# Project Office

Schedule from MS Project, 2000-01-03 to 2000-08-04.

## Calendars

- Standard: Mon-Fri 08:00-12:00, 13:00-17:00; Sat-Sun off.

## Resources

| Resource |
| --- |
| Corporate management |
| Project Office coordinator |
| Analyst |
| Developer |
| Project Office staff analyst |

## Schedule

| ID | WBS | Task | Type | Duration | Start | Finish | Predecessors | Total slack | Resources | Work |
| --- | --- | --- | --- | --- | --- | --- | --- | --- | --- | --- |
| 1 | 1 | **Project Office template** |  | 155d | 2000-01-03 | 2000-08-04 |  | 0d |  | 2308h |
| 2 | 1.1 | **Scope** |  | 10d | 2000-01-03 | 2000-01-14 |  | 0d |  | 160h |
| 3 | 1.1.1 | Determine project office scope |  | 3d | 2000-01-03 | 2000-01-05 |  | 0d | Corporate management; Project Office coordinator | 48h |
| 4 | 1.1.2 | Document high-level Project Office requirements including resources |  | 2d | 2000-01-06 | 2000-01-07 | 3 | 0d | Corporate management; Project Office coordinator | 32h |
| 5 | 1.1.3 | Justify Project Office via business model |  | 3d | 2000-01-10 | 2000-01-12 | 4 | 0d | Corporate management; Project Office coordinator | 48h |
| 6 | 1.1.4 | Secure executive sponsorship |  | 2d | 2000-01-13 | 2000-01-14 | 5 | 0d | Corporate management; Project Office coordinator | 32h |
| 7 | 1.1.5 | Scope complete | milestone | 0d | 2000-01-14 | 2000-01-14 | 6 | 0d |  |  |
| 8 | 1.2 | **Planning** |  | 66.5d | 2000-01-17 | 2000-04-18 |  | 0d |  | 1192h |
| 9 | 1.2.1 | **Analysis/Logistics** |  | 17d | 2000-01-17 | 2000-02-08 |  | 0d |  | 160h |
| 10 | 1.2.1.1 | Review Project Office scope documentation |  | 1d | 2000-01-17 | 2000-01-17 | 7 | 0d | Project Office coordinator | 8h |
| 11 | 1.2.1.2 | Establish a management Framework |  | 3d | 2000-01-18 | 2000-01-20 | 10 | 0d | Corporate management; Project Office coordinator | 48h |
| 12 | 1.2.1.3 | Analyze business objectives |  | 2d | 2000-01-21 | 2000-01-24 | 11 | 0d | Project Office coordinator | 16h |
| 13 | 1.2.1.4 | Define mission statement |  | 2d | 2000-01-25 | 2000-01-26 | 12 | 0d | Project Office coordinator | 16h |
| 14 | 1.2.1.5 | Define goals |  | 3d | 2000-01-27 | 2000-01-31 | 13 | 0d | Project Office coordinator | 24h |
| 15 | 1.2.1.6 | Establish communications plan |  | 1d | 2000-02-01 | 2000-02-01 | 14 | 0d | Project Office coordinator | 8h |
| 16 | 1.2.1.7 | Secure Project Office core resources |  | 1w | 2000-02-02 | 2000-02-08 | 15 | 0d | Project Office coordinator | 40h |
| 17 | 1.2.1.8 | Logistics complete | milestone | 0d | 2000-02-08 | 2000-02-08 | 16 | 128d |  |  |
| 18 | 1.2.2 | **Policies and Procedures** |  | 20d | 2000-02-09 | 2000-03-07 |  | 0d |  | 640h |
| 19 | 1.2.2.1 | Define "best of breed" processes |  | 1w | 2000-02-09 | 2000-02-15 | 16 | 0d | Project Office coordinator; Analyst | 80h |
| 20 | 1.2.2.2 | Define "best of breed" tools |  | 1w | 2000-02-09 | 2000-02-15 | 16 | 0d | Project Office coordinator; Analyst | 80h |
| 21 | 1.2.2.3 | Define "best of breed" techniques |  | 1w | 2000-02-09 | 2000-02-15 | 16 | 0d | Project Office coordinator; Analyst | 80h |
| 22 | 1.2.2.4 | Establish resource relationships |  | 1w | 2000-02-09 | 2000-02-15 | 16 | 0d | Project Office coordinator; Analyst | 80h |
| 23 | 1.2.2.5 | Define compliance criteria |  | 1w | 2000-02-09 | 2000-02-15 | 16 | 0d | Project Office coordinator; Analyst | 80h |
| 24 | 1.2.2.6 | Define project test processes |  | 1w | 2000-02-16 | 2000-02-22 | 19, 20, 21, 23, 22 | 0d | Project Office coordinator; Analyst | 80h |
| 25 | 1.2.2.7 | Define reporting requirements |  | 1w | 2000-02-23 | 2000-02-29 | 24 | 0d | Project Office coordinator; Analyst | 80h |
| 26 | 1.2.2.8 | Define Project Office priorities |  | 1w | 2000-03-01 | 2000-03-07 | 25 | 0d | Project Office coordinator; Analyst | 80h |
| 27 | 1.2.2.9 | Policies and procedures complete | milestone | 0d | 2000-03-07 | 2000-03-07 | 26 | 0d |  |  |

| ID | WBS | Task | Type | Duration | Start | Finish | Predecessors | Total slack | Free slack | Resources | Work |
| --- | --- | --- | --- | --- | --- | --- | --- | --- | --- | --- | --- |
| 28 | 1.2.3 | **Project Standards and Controls** |  | 28d | 2000-03-08 | 2000-04-14 |  | 0d |  |  | 368h |
| 29 | 1.2.3.1 | Define security/roles/responsibilities |  | 3d | 2000-03-08 | 2000-03-10 | 27 | 0d |  | Project Office coordinator; Analyst | 48h |
| 30 | 1.2.3.2 | Define system parameters |  | 5d | 2000-03-13 | 2000-03-17 | 29 | 0d |  | Project Office coordinator; Analyst | 80h |
| 31 | 1.2.3.3 | Create project numbering schema |  | 2d | 2000-03-20 | 2000-03-21 | 30 | 0d |  | Project Office coordinator; Analyst | 32h |
| 32 | 1.2.3.4 | Define financial reporting integration |  | 1w | 2000-03-22 | 2000-03-28 | 31 | 0d |  | Project Office coordinator; Analyst | 80h |
| 33 | 1.2.3.5 | Identify project categories for template creation |  | 3d | 2000-03-29 | 2000-03-31 | 32 | 0d |  | Project Office coordinator; Analyst | 48h |
| 34 | 1.2.3.6 | Create project templates |  | 2w | 2000-04-03 | 2000-04-14 | 33 | 0d |  | Developer | 80h |
| 35 | 1.2.3.7 | Project standards and controls complete | milestone | 0d | 2000-04-14 | 2000-04-14 | 34 | 0d |  |  |  |
| 36 | 1.2.4 | Empower Project Office |  | 1d | 2000-04-17 | 2000-04-17 | 35 | 0d |  | Corporate management; Project Office coordinator | 16h |
| 37 | 1.2.5 | Announce Project Office |  | 4h | 2000-04-18 | 2000-04-18 | 36 | 0d |  | Corporate management; Project Office coordinator | 8h |
| 38 | 1.2.6 | Planning complete | milestone | 0d | 2000-04-18 | 2000-04-18 | 37 | 0d |  |  |  |
| 39 | 1.3 | **Initiate Project Office** |  | 27d | 2000-04-18 | 2000-05-25 |  | 0d |  |  | 400h |
| 40 | 1.3.1 | Staff Project Office personnel |  | 1w | 2000-04-18 | 2000-04-25 | 38 | 11d | 0d | Project Office coordinator | 40h |
| 41 | 1.3.2 | **Project Office Support for Existing Projects** |  | 11d | 2000-04-25 | 2000-05-10 |  | 11d |  |  | 104h |
| 42 | 1.3.2.1 | Determine existing projects for Project Office |  | 2d | 2000-04-25 | 2000-04-27 | 40 | 11d | 0d | Project Office coordinator; Project Office staff analyst | 32h |
| 43 | 1.3.2.2 | Audit projects |  | 1w | 2000-04-27 | 2000-05-04 | 42 | 11d | 0d | Project Office staff analyst | 40h |
| 44 | 1.3.2.3 | Modify projects for compliance |  | 3d | 2000-05-04 | 2000-05-09 | 43 | 11d | 0d | Project Office staff analyst | 24h |
| 45 | 1.3.2.4 | Enter projects into Project Office management |  | 1d | 2000-05-09 | 2000-05-10 | 44 | 11d | 0d | Project Office staff analyst | 8h |
| 46 | 1.3.2.5 | Project Office support for existing projects complete | milestone | 0d | 2000-05-10 | 2000-05-10 | 45 | 11d |  |  |  |
| 47 | 1.3.3 | **Project Office support for new projects** |  | 27d | 2000-04-18 | 2000-05-25 |  | 0d |  |  | 256h |
| 48 | 1.3.3.1 | Identify new projects for Project Office |  | 1w | 2000-04-18 | 2000-04-25 | 38 | 0d |  | Project Office coordinator; Project Office staff analyst | 80h |
| 49 | 1.3.3.2 | Create project using Project Office criteria/templates |  | 2w | 2000-04-25 | 2000-05-09 | 48 | 0d |  | Project Office staff analyst | 80h |
| 50 | 1.3.3.3 | Establish monitoring criteria |  | 3d | 2000-05-09 | 2000-05-12 | 49 | 0d |  | Project Office staff analyst | 24h |
| 51 | 1.3.3.4 | Establish performance metrics |  | 4d | 2000-05-12 | 2000-05-18 | 50 | 0d |  | Project Office staff analyst | 32h |
| 52 | 1.3.3.5 | Establish budget guidelines |  | 3d | 2000-05-18 | 2000-05-23 | 51 | 0d |  | Project Office staff analyst | 24h |
| 53 | 1.3.3.6 | Enter project into Project Office management |  | 2d | 2000-05-23 | 2000-05-25 | 52 | 0d |  | Project Office staff analyst | 16h |
| 54 | 1.3.3.7 | Project Office support for new projects complete | milestone | 0d | 2000-05-25 | 2000-05-25 | 53 | 0d |  |  |  |
| 55 | 1.3.4 | Initiate Project Office complete | milestone | 0d | 2000-05-25 | 2000-05-25 | 54, 46 | 0d |  |  |  |

| ID | WBS | Task | Type | Duration | Start | Finish | Predecessors | Total slack | Resources | Work |
| --- | --- | --- | --- | --- | --- | --- | --- | --- | --- | --- |
| 56 | 1.4 | **Management (ongoing)** |  | 25.5d | 2000-05-25 | 2000-06-29 |  | 0d |  | 204h |
| 57 | 1.4.1 | Review business priorities applicable to projects |  | 1w | 2000-05-25 | 2000-06-01 | 55 | 0d | Project Office staff analyst | 40h |
| 58 | 1.4.2 | **Risk Assessment** |  | 9d | 2000-06-01 | 2000-06-14 |  | 0d |  | 72h |
| 59 | 1.4.2.1 | Perform risk assessment |  | 1w | 2000-06-01 | 2000-06-08 | 57 | 0d | Project Office staff analyst | 40h |
| 60 | 1.4.2.2 | Evaluate risk assessment against project priorities |  | 3d | 2000-06-08 | 2000-06-13 | 59 | 0d | Project Office staff analyst | 24h |
| 61 | 1.4.2.3 | Prepare contingency plans |  | 1d | 2000-06-13 | 2000-06-14 | 60 | 0d | Project Office staff analyst | 8h |
| 62 | 1.4.2.4 | Risk assessment complete | milestone | 0d | 2000-06-14 | 2000-06-14 | 61 | 0d |  |  |
| 63 | 1.4.3 | **Monitoring** |  | 11.5d | 2000-06-14 | 2000-06-29 |  | 0d |  | 92h |
| 64 | 1.4.3.1 | Prepare project review meeting agenda |  | 1d | 2000-06-14 | 2000-06-15 | 62 | 0d | Project Office staff analyst | 8h |
| 65 | 1.4.3.2 | Conduct project review meetings |  | 4h | 2000-06-15 | 2000-06-15 | 64 | 0d | Project Office staff analyst | 4h |
| 66 | 1.4.3.3 | Create reports for critical issues, budgets, allocating resources, tracking progress, etc. |  | 2d | 2000-06-16 | 2000-06-19 | 65 | 0d | Project Office staff analyst | 16h |
| 67 | 1.4.3.4 | Work to mitigate critical Issues |  | 2d | 2000-06-20 | 2000-06-21 | 66 | 0d | Project Office staff analyst | 16h |
| 68 | 1.4.3.5 | Assist with allocating resources |  | 2d | 2000-06-22 | 2000-06-23 | 67 | 0d | Project Office staff analyst | 16h |
| 69 | 1.4.3.6 | Freeze/release project baselines |  | 2d | 2000-06-26 | 2000-06-27 | 68 | 0d | Project Office staff analyst | 16h |
| 70 | 1.4.3.7 | Establish change management control |  | 1d | 2000-06-28 | 2000-06-28 | 69 | 0d | Project Office staff analyst | 8h |
| 71 | 1.4.3.8 | Freeze/release project budgets |  | 1d | 2000-06-29 | 2000-06-29 | 70 | 0d | Project Office staff analyst | 8h |
| 72 | 1.4.3.9 | Monitoring complete | milestone | 0d | 2000-06-29 | 2000-06-29 | 71 | 0d |  |  |
| 73 | 1.5 | **Historical/Archival** |  | 13d | 2000-06-30 | 2000-07-18 |  | 0d |  | 144h |
| 74 | 1.5.1 | Establish project archives |  | 1w | 2000-06-30 | 2000-07-06 | 72 | 0d | Project Office coordinator; Project Office staff analyst | 80h |
| 75 | 1.5.2 | Establish lessons learned repository |  | 1w | 2000-07-07 | 2000-07-13 | 74 | 0d | Project Office staff analyst | 40h |
| 76 | 1.5.3 | Manage project archives |  | 3d | 2000-07-14 | 2000-07-18 | 75 | 0d | Project Office staff analyst | 24h |
| 77 | 1.5.4 | Historical complete | milestone | 0d | 2000-07-18 | 2000-07-18 | 76 | 0d |  |  |
| 78 | 1.6 | **Post Implementation Review** |  | 13d | 2000-07-19 | 2000-08-04 |  | 0d |  | 208h |
| 79 | 1.6.1 | Obtain user feedback |  | 3d | 2000-07-19 | 2000-07-21 | 77 | 0d | Project Office coordinator; Project Office staff analyst | 48h |
| 80 | 1.6.2 | Evaluate lessons learned |  | 1w | 2000-07-24 | 2000-07-28 | 79 | 0d | Project Office coordinator; Project Office staff analyst | 80h |
| 81 | 1.6.3 | Modify Items as necessary |  | 1w | 2000-07-31 | 2000-08-04 | 80 | 0d | Project Office coordinator; Project Office staff analyst | 80h |
| 82 | 1.6.4 | Post implementation review complete | milestone | 0d | 2000-08-04 | 2000-08-04 | 81 | 0d |  |  |
| 83 | 1.7 | Project Office template complete | milestone | 0d | 2000-08-04 | 2000-08-04 | 82 | 0d |  |  |
