# Brine Plant

Schedule from MS Project, 2012-08-04 to 2014-01-13.
CAL

## Calendars

- Pry Brine: Mon-Fri 08:00-12:00, 13:00-17:00; Sat-Sun off. Exceptions (off unless hours are given): 2012-08-04 08:00-12:00, 13:00-17:00, 2012-08-07 08:00-12:00, 13:00-17:00, 2012-08-11 08:00-12:00, 13:00-17:00, 2012-08-18 08:00-12:00, 13:00-17:00, 2012-08-25 08:00-12:00, 13:00-17:00, 2012-09-01 08:00-12:00, 13:00-17:00, 2012-09-04 08:00-12:00, 13:00-17:00, 2012-09-08 08:00-12:00, 13:00-17:00, 2012-09-15 08:00-12:00, 13:00-17:00, 2012-09-22 08:00-12:00, 13:00-17:00, 2012-09-29 08:00-12:00, 13:00-17:00, 2012-10-06 08:00-12:00, 13:00-17:00, 2012-10-13 08:00-12:00, 13:00-17:00, 2012-10-20 08:00-12:00, 13:00-17:00, 2012-10-27 08:00-12:00, 13:00-17:00, 2012-11-03 08:00-12:00, 13:00-17:00, 2012-11-10 08:00-12:00, 13:00-17:00, 2012-11-17 08:00-12:00, 13:00-17:00, 2012-11-24 08:00-12:00, 13:00-17:00, 2012-12-01 08:00-12:00, 13:00-17:00, 2012-12-08 08:00-12:00, 13:00-17:00, 2012-12-15 08:00-12:00, 13:00-17:00, 2012-12-22 08:00-12:00, 13:00-17:00, 2012-12-29 08:00-12:00, 13:00-17:00, 2013-01-05 08:00-12:00, 13:00-17:00, 2013-01-12 08:00-12:00, 13:00-17:00, 2013-01-19 08:00-12:00, 13:00-17:00, 2013-01-26 08:00-12:00, 13:00-17:00, 2013-02-02 08:00-12:00, 13:00-17:00, 2013-02-09 08:00-12:00, 13:00-17:00, 2013-02-16 08:00-12:00, 13:00-17:00, 2013-02-23 08:00-12:00, 13:00-17:00, 2013-03-02 08:00-12:00, 13:00-17:00, 2013-03-09 08:00-12:00, 13:00-17:00, 2013-03-16 08:00-12:00, 13:00-17:00, 2013-03-23 08:00-12:00, 13:00-17:00, 2013-03-30 08:00-12:00, 13:00-17:00, 2013-04-06 08:00-12:00, 13:00-17:00, 2013-04-13 08:00-12:00, 13:00-17:00, 2013-04-20 08:00-12:00, 13:00-17:00, 2013-04-27 08:00-12:00, 13:00-17:00, 2013-05-04 08:00-12:00, 13:00-17:00, 2013-05-11 08:00-12:00, 13:00-17:00, 2013-05-18 08:00-12:00, 13:00-17:00, 2013-05-25 08:00-12:00, 13:00-17:00, 2013-06-01 08:00-12:00, 13:00-17:00, 2013-06-08 08:00-12:00, 13:00-17:00, 2013-06-15 08:00-12:00, 13:00-17:00, 2013-06-22 08:00-12:00, 13:00-17:00, 2013-06-29 08:00-12:00, 13:00-17:00, 2013-07-06 08:00-12:00, 13:00-17:00, 2013-07-13 08:00-12:00, 13:00-17:00, 2013-07-20 08:00-12:00, 13:00-17:00, 2013-07-27 08:00-12:00, 13:00-17:00, 2013-08-03 08:00-12:00, 13:00-17:00, 2013-08-10 08:00-12:00, 13:00-17:00, 2013-08-17 08:00-12:00, 13:00-17:00, 2013-08-24 08:00-12:00, 13:00-17:00, 2013-08-31 08:00-12:00, 13:00-17:00, 2013-09-07 08:00-12:00, 13:00-17:00, 2013-09-14 08:00-12:00, 13:00-17:00, 2013-09-21 08:00-12:00, 13:00-17:00, 2013-09-28 08:00-12:00, 13:00-17:00, 2013-10-05 08:00-12:00, 13:00-17:00, 2013-10-12 08:00-12:00, 13:00-17:00, 2013-10-19 08:00-12:00, 13:00-17:00, 2013-10-26 08:00-12:00, 13:00-17:00, 2013-11-02 08:00-12:00, 13:00-17:00, 2013-11-09 08:00-12:00, 13:00-17:00, 2013-11-16 08:00-12:00, 13:00-17:00, 2013-11-23 08:00-12:00, 13:00-17:00, 2013-11-30 08:00-12:00, 13:00-17:00, 2013-12-07 08:00-12:00, 13:00-17:00, 2013-12-14 08:00-12:00, 13:00-17:00, 2013-12-21 08:00-12:00, 13:00-17:00, 2013-12-28 08:00-12:00, 13:00-17:00, 2014-01-04 08:00-12:00, 13:00-17:00, 2014-01-11 08:00-12:00, 13:00-17:00.

## Schedule

| ID | WBS | Task | Duration | Start | Finish | Predecessors | Total slack | Free slack | Constraint |
| --- | --- | --- | --- | --- | --- | --- | --- | --- | --- |
| 2 | 1 | **1. Critical Equipment Ordering** | 112d | 2012-08-04 | 2012-12-12 |  | 85d |  |  |
| 3 | 1.1 | Clarifier | 112d | 2012-08-04 | 2012-12-12 |  | 85d | 22d | start no earlier than 2012-08-04 |
| 4 | 2 | **2. Other equipment ordering** | 226d | 2012-12-12 | 2013-08-31 |  | 86d |  |  |
| 5 | 2.1 | Saturator | 45d | 2013-01-08 | 2013-02-28 | 3 | 63d | 3d | finish no earlier than 2013-02-28 |
| 6 | 2.2 | CBT tank | 45d | 2013-02-02 | 2013-03-26 | 3 | 105d | 0d | finish no earlier than 2013-03-26 |
| 7 | 2.3 | Brine pumps | 60d | 2013-01-28 | 2013-04-06 | 3 | 158d | 54d | start no earlier than 2013-01-28 |
| 8 | 2.4 | Filter press | 145d | 2012-12-12 | 2013-05-29 |  | 104d | 0d | finish no earlier than 2013-05-29 |
| 9 | 2.5 | BOQ receipt from M/s Protech | 91d | 2013-04-15 | 2013-07-29 |  | 144d |  | finish no earlier than 2013-07-29 |
| 10 | 2.6 | Structural | 45d | 2013-07-01 | 2013-08-21 |  | 126d |  | start no earlier than 2013-07-01 |
| 11 | 2.7 | Pipings and fittings | 45d | 2013-07-01 | 2013-08-21 |  | 126d |  | start no earlier than 2013-07-01 |
| 12 | 2.8 | Valves | 42d | 2013-04-08 | 2013-05-25 |  | 110d | 0d | finish no earlier than 2013-05-25 |
| 13 | 2.9 | MCC | 61d | 2013-05-07 | 2013-07-16 |  | 50d | 0d | finish no earlier than 2013-07-16 |
| 14 | 2.10 | Cables and Cable tray | 20d | 2013-08-09 | 2013-08-31 | 13 | 99d | 6d | finish no earlier than 2013-08-31 |
| 15 | 2.11 | Motors | 45d | 2013-04-20 | 2013-06-11 |  | 132d | 0d | finish no earlier than 2013-06-11 |
| 16 | 2.12 | Light fittings | 20d | 2013-08-06 | 2013-08-28 | 13 | 120d |  | start no earlier than 2013-08-06 |
| 17 | 2.13 | Instruments | 129d | 2013-03-01 | 2013-07-29 |  | 94d | 0d | finish no earlier than 2013-07-29 |
| 18 | 3 | **3. Other equipment Receipts** | 206d | 2013-03-05 | 2013-10-30 |  | 60d |  |  |
| 19 | 3.1 | Saturator | 206d | 2013-03-05 | 2013-10-30 | 5 | 60d | 0d | finish no earlier than 2013-10-30 |
| 20 | 3.2 | Clear Brine Tank | 146d | 2013-03-27 | 2013-09-12 | 6 | 105d |  | start no earlier than 2013-03-27 |
| 21 | 3.3 | Brine pumps | 83d | 2013-06-10 | 2013-09-13 | 7 | 104d |  | start no earlier than 2013-06-10 |
| 22 | 3.4 | Filter press | 92d | 2013-05-30 | 2013-09-13 | 8 | 104d |  | start no earlier than 2013-05-30 |
| 23 | 3.5 | Structurals | 25d | 2013-08-09 | 2013-09-06 |  | 110d |  | finish no earlier than 2013-09-06 |
| 24 | 3.6 | Pipings and fittings | 25d | 2013-08-06 | 2013-09-03 |  | 113d |  | start no earlier than 2013-08-06 |
| 25 | 3.7 | Valves | 90d | 2013-05-27 | 2013-09-07 | 12 | 109d |  |  |
| 26 | 3.8 | MCC | 70d | 2013-07-17 | 2013-10-05 | 13 | 85d |  |  |
| 27 | 3.9 | Cable and Cable tray | 16d | 2013-09-09 | 2013-09-26 | 14 | 96d |  | start no earlier than 2013-09-09 |
| 28 | 3.10 | Motors | 55d | 2013-06-12 | 2013-08-14 | 15 | 130d |  | start no earlier than 2013-06-12 |
| 29 | 3.11 | Light fittings | 25d | 2013-08-29 | 2013-09-26 | 16 | 32d | 4d | finish no earlier than 2013-09-26 |
| 30 | 3.12 | Instruments | 51d | 2013-07-30 | 2013-09-26 | 17 | 93d |  | finish no earlier than 2013-09-26 |

| ID | WBS | Task | Duration | Start | Finish | Predecessors | Total slack | Free slack | Constraint |
| --- | --- | --- | --- | --- | --- | --- | --- | --- | --- |
| 31 | 4 | **4. CIVIL and Erection** | 250d | 2013-03-28 | 2014-01-13 |  | 0d |  |  |
| 32 | 4.1 | **4.1 Saturator** | 53d | 2013-09-04 | 2013-11-04 |  | 60d |  |  |
| 33 | 4.1.1 | a) Dismantling | 10d | 2013-09-04 | 2013-09-14 |  | 86d | 0d | start no earlier than 2013-09-04 |
| 34 | 4.1.2 | b) Excavation | 5d | 2013-09-16 | 2013-09-20 | 33 | 86d | 0d | start no earlier than 2013-08-06 |
| 35 | 4.1.3 | c) Foundation | 15d | 2013-09-21 | 2013-10-08 | 34 | 86d |  | start no earlier than 2013-08-06 |
| 36 | 4.1.4 | d) Positioning of Saturator | 2d | 2013-10-31 | 2013-11-01 | 19 | 63d | 0d |  |
| 37 | 4.1.5 | e) Filling and Leak Testing | 2d | 2013-11-02 | 2013-11-04 | 36 | 60d |  |  |
| 38 | 4.2 | **4.2 Reactor** | 6d | 2013-12-10 | 2013-12-16 |  | 24d |  |  |
| 39 | 4.2.1 | **Reactor tank elevation correction** | 6d | 2013-12-10 | 2013-12-16 |  | 24d |  |  |
| 40 | 4.2.1.1 | Draining and Cleaning of Reactors | 1d | 2013-12-10 | 2013-12-10 |  | 33d | 0d | start no earlier than 2013-12-10 |
| 41 | 4.2.1.2 | Lifting of reactors to suit clarifier inlet | 3d | 2013-12-11 | 2013-12-13 | 40 | 33d | 0d |  |
| 42 | 4.2.1.3 | Connecting FRP trough from reactor to clarifier | 2d | 2013-12-14 | 2013-12-16 | 41 | 24d |  |  |
| 43 | 4.2.1.4 | Chemical Dosing Piping | 2d | 2013-12-14 | 2013-12-16 | 41 | 24d |  |  |
| 44 | 4.3 | **4.3 New Clarifier** | 250d | 2013-03-28 | 2014-01-13 |  | 0d |  |  |
| 45 | 4.3.1 | Dismantling | 10d | 2013-03-28 | 2013-04-08 |  | 0d |  | start no earlier than 2013-03-28 |
| 46 | 4.3.2 | Excavation | 10d | 2013-04-09 | 2013-04-19 | 45 | 0d |  |  |
| 47 | 4.3.3 | Footings and column construction | 75d | 2013-04-20 | 2013-07-16 | 46 | 0d |  |  |
| 48 | 4.3.4 | Roof Slab construction | 25d | 2013-07-17 | 2013-08-14 | 47 | 0d |  |  |
| 49 | 4.3.5 | Curing | 15d | 2013-08-15 | 2013-08-31 | 48 | 0d |  |  |
| 50 | 4.3.6 | Deshuttering | 10d | 2013-09-02 | 2013-09-12 | 49 | 23d | 0d |  |
| 51 | 4.3.7 | Mastic Lining | 10d | 2013-09-02 | 2013-09-12 | 49 | 0d |  | start no earlier than 2013-08-28 |
| 52 | 4.3.8 | Plinth Beam construction | 5d | 2013-09-13 | 2013-09-18 | 50 | 100d |  |  |
| 53 | 4.3.9 | Filling & consolidation | 30d | 2013-09-13 | 2013-10-17 | 50 | 75d |  |  |
| 54 | 4.3.10 | Bottom cone & shell fabrication | 30d | 2013-09-13 | 2013-10-17 | 51 | 0d |  |  |
| 55 | 4.3.11 | Water filling and testing | 10d | 2013-10-18 | 2013-10-29 | 54 | 0d |  |  |
| 56 | 4.3.12 | Water Draining | 5d | 2013-10-30 | 2013-11-04 | 55 | 40d | 0d |  |
| 57 | 4.3.13 | Walk way erection | 10d | 2013-11-05 | 2013-11-15 | 56 | 50d |  |  |
| 58 | 4.3.14 | Super structure erection | 5d | 2013-11-05 | 2013-11-09 | 56 | 55d |  |  |
| 59 | 4.3.15 | Sand blasting, Rubber lining and Spark test | 45d | 2013-10-30 | 2013-12-20 | 55 | 0d |  |  |
| 60 | 4.3.16 | Raker arm erection | 10d | 2013-12-21 | 2014-01-01 | 56, 59 | 0d |  |  |
| 61 | 4.3.17 | Filling and Leak testing | 10d | 2014-01-02 | 2014-01-13 | 60 | 0d |  |  |

| ID | WBS | Task | Duration | Start | Finish | Predecessors | Total slack | Free slack | Constraint |
| --- | --- | --- | --- | --- | --- | --- | --- | --- | --- |
| 62 | 4.4 | **4.4 Tanks and Pumps (CBT& UF feed Tank & Pump )** | 36d | 2013-09-13 | 2013-10-24 |  | 23d |  |  |
| 63 | 4.4.1 | Area clearing | 5d | 2013-09-13 | 2013-09-18 | 50 | 23d | 0d | start no earlier than 2013-08-19 |
| 64 | 4.4.2 | Dismantling | 5d | 2013-09-19 | 2013-09-24 | 63 | 23d | 0d |  |
| 65 | 4.4.3 | Excavation | 5d | 2013-09-25 | 2013-09-30 | 64 | 23d | 0d |  |
| 66 | 4.4.4 | Bed construction | 10d | 2013-10-01 | 2013-10-11 | 65 | 23d | 0d |  |
| 67 | 4.4.5 | Curing | 7d | 2013-10-12 | 2013-10-19 | 66 | 23d | 0d |  |
| 68 | 4.4.6 | Receipt and Positioning of storage tanks | 1d | 2013-10-21 | 2013-10-21 | 67 | 23d | 0d |  |
| 69 | 4.4.7 | Receipt and Positioning of Pumps | 1d | 2013-10-22 | 2013-10-22 | 68 | 23d | 0d |  |
| 70 | 4.4.8 | Filling and leak testing | 2d | 2013-10-23 | 2013-10-24 | 69 | 69d |  |  |
| 71 | 5 | **5. Erection of structurals, pipes, fittings, Electrical equipment and Instruments** | 100d | 2013-08-05 | 2013-11-28 |  | 21d | 0d |  |
| 72 | 5.1 | Erection contract Finalization | 20d | 2013-08-05 | 2013-08-27 |  | 99d |  | start no earlier than 2013-08-05 |
| 73 | 5.2 | Piping Layout | 20d | 2013-08-05 | 2013-08-27 |  | 19d | 0d | start no earlier than 2013-08-05 |
| 74 | 5.3 | Mobilization of erection material | 15d | 2013-08-28 | 2013-09-13 | 73 | 21d | 0d |  |
| 75 | 5.4 | Pipe rack and supports | 30d | 2013-09-14 | 2013-10-18 | 74 | 21d | 0d |  |
| 76 | 5.5 | Process Piping | 30d | 2013-10-23 | 2013-11-26 | 69 | 23d |  | start no earlier than 2013-10-10 |
| 77 | 5.6 | Utility Piping | 30d | 2013-10-10 | 2013-11-13 |  | 34d |  | start no earlier than 2013-10-10 |
| 78 | 5.7 | Erection of cable tray ( Electrical and Instrument ) | 10d | 2013-10-19 | 2013-10-30 | 75 | 21d | 0d | start no earlier than 2013-10-02 |
| 79 | 5.8 | Laying of cables (Electrical and Instrument) | 25d | 2013-10-31 | 2013-11-28 | 78 | 21d |  | start no earlier than 2013-10-02 |
| 80 | 5.9 | Erection of instruments , Testing | 43d | 2013-10-02 | 2013-11-20 | 74 | 28d |  | start no earlier than 2013-10-02 |
| 81 | 5.10 | Erection of MCC and Motors | 43d | 2013-10-02 | 2013-11-20 | 74 | 28d |  | start no earlier than 2013-10-02 |
| 82 | 5.11 | Installation of Light fittings with LDB | 43d | 2013-10-02 | 2013-11-20 | 74, 29 | 28d |  | start no earlier than 2013-10-02 |
| 84 | 6 | **6. Pre-commissioning** | 13d | 2013-11-29 | 2013-12-13 |  | 21d |  |  |
| 85 | 6.1 | Cleaning and Flushing ( Tanks, equipment and Pipe lines ) | 2d | 2013-11-29 | 2013-11-30 | 71 | 21d | 0d |  |
| 86 | 6.2 | Hook up with Existing set up (Process and utilities) | 4d | 2013-12-02 | 2013-12-05 | 85 | 21d | 0d |  |
| 87 | 6.3 | Trial run of equipment | 2d | 2013-12-06 | 2013-12-07 | 86 | 21d | 0d |  |
| 88 | 6.4 | Brine filling and circulation | 5d | 2013-12-09 | 2013-12-13 | 87 | 21d | 0d |  |
| 90 | 7 | 7. Commissioning of plant | 5d | 2013-12-14 | 2013-12-19 | 88 | 21d |  |  |
