# Brine Plant

Schedule from MS Project, 2012-12-13 to 2014-01-02.
CAL

## Calendars

- CAL: Mon-Fri 08:00-12:00, 13:00-17:00; Sat-Sun off. Exceptions (off unless hours are given): 2012-12-15 08:00-12:00, 13:00-17:00, 2012-12-22 08:00-12:00, 13:00-17:00, 2012-12-29 08:00-12:00, 13:00-17:00, 2013-01-05 08:00-12:00, 13:00-17:00, 2013-01-12 08:00-12:00, 13:00-17:00, 2013-01-19 08:00-12:00, 13:00-17:00, 2013-01-26 08:00-12:00, 13:00-17:00, 2013-02-02 08:00-12:00, 13:00-17:00, 2013-02-09 08:00-12:00, 13:00-17:00, 2013-02-16 08:00-12:00, 13:00-17:00, 2013-02-23 08:00-12:00, 13:00-17:00, 2013-03-02 08:00-12:00, 13:00-17:00, 2013-03-09 08:00-12:00, 13:00-17:00, 2013-03-16 08:00-12:00, 13:00-17:00, 2013-03-23 08:00-12:00, 13:00-17:00, 2013-03-30 08:00-12:00, 13:00-17:00, 2013-04-06 08:00-12:00, 13:00-17:00, 2013-04-13 08:00-12:00, 13:00-17:00, 2013-04-20 08:00-12:00, 13:00-17:00, 2013-04-27 08:00-12:00, 13:00-17:00, 2013-05-04 08:00-12:00, 13:00-17:00, 2013-05-11 08:00-12:00, 13:00-17:00, 2013-05-18 08:00-12:00, 13:00-17:00, 2013-05-25 08:00-12:00, 13:00-17:00, 2013-06-01 08:00-12:00, 13:00-17:00, 2013-06-08 08:00-12:00, 13:00-17:00, 2013-06-15 08:00-12:00, 13:00-17:00, 2013-06-22 08:00-12:00, 13:00-17:00, 2013-06-29 08:00-12:00, 13:00-17:00, 2013-07-06 08:00-12:00, 13:00-17:00, 2013-07-13 08:00-12:00, 13:00-17:00, 2013-07-20 08:00-12:00, 13:00-17:00, 2013-07-27 08:00-12:00, 13:00-17:00, 2013-08-03 08:00-12:00, 13:00-17:00, 2013-08-10 08:00-12:00, 13:00-17:00, 2013-08-17 08:00-12:00, 13:00-17:00, 2013-08-24 08:00-12:00, 13:00-17:00, 2013-08-31 08:00-12:00, 13:00-17:00, 2013-09-07 08:00-12:00, 13:00-17:00, 2013-09-14 08:00-12:00, 13:00-17:00, 2013-09-21 08:00-12:00, 13:00-17:00, 2013-09-28 08:00-12:00, 13:00-17:00, 2013-10-05 08:00-12:00, 13:00-17:00, 2013-10-12 08:00-12:00, 13:00-17:00, 2013-10-19 08:00-12:00, 13:00-17:00, 2013-10-26 08:00-12:00, 13:00-17:00, 2013-11-02 08:00-12:00, 13:00-17:00, 2013-11-09 08:00-12:00, 13:00-17:00, 2013-11-16 08:00-12:00, 13:00-17:00, 2013-11-23 08:00-12:00, 13:00-17:00, 2013-11-30 08:00-12:00, 13:00-17:00, 2013-12-07 08:00-12:00, 13:00-17:00, 2013-12-14 08:00-12:00, 13:00-17:00, 2013-12-21 08:00-12:00, 13:00-17:00, 2013-12-28 08:00-12:00, 13:00-17:00.

## Schedule

| ID | WBS | Task | Duration | Start | Finish | Predecessors | Total slack | Free slack | Constraint |
| --- | --- | --- | --- | --- | --- | --- | --- | --- | --- |
| 2 | 1 | **1. Critical Equipment Ordering** | 38d | 2013-06-01 | 2013-07-15 |  | 48d |  |  |
| 3 | 1.1 | Ion exchange column | 38d | 2013-06-01 | 2013-07-15 |  | 22d | 0d | start no earlier than 2013-06-01 |
| 5 | 2 | **2. Other equipment ordering** | 235d | 2012-12-13 | 2013-09-12 |  | 82d |  |  |
| 6 | 2.1 | Polished Brine tank | 58d | 2012-12-13 | 2013-02-18 |  | 123d | 0d | start no earlier than 2012-12-13 |
| 7 | 2.2 | Pure Brine tank | 89d | 2012-12-13 | 2013-03-26 |  | 163d | 0d | start no earlier than 2012-12-13 |
| 8 | 2.3 | Brine pumps | 52d | 2013-02-13 | 2013-04-13 |  | 162d | 96d | finish no earlier than 2013-04-13 |
| 9 | 2.4 | BOQ receipt from M/s Protech | 54d | 2013-05-29 | 2013-07-30 |  | 53d | 0d | finish no earlier than 2013-07-30 |
| 10 | 2.5 | Structural | 38d | 2013-07-31 | 2013-09-12 | 9 | 53d | 0d | finish no earlier than 2013-08-21 |
| 11 | 2.6 | Pipings and fittings | 38d | 2013-07-09 | 2013-08-21 |  | 72d | 0d | finish no earlier than 2013-08-21 |
| 12 | 2.7 | Valves | 36d | 2013-04-15 | 2013-05-25 |  | 70d | 4d | finish no earlier than 2013-05-25 |
| 13 | 2.8 | MCC | 53d | 2013-05-16 | 2013-07-16 |  | 66d | 12d | finish no earlier than 2013-07-16 |
| 14 | 2.9 | Cables and Cable tray | 17d | 2013-08-13 | 2013-08-31 |  | 71d | 8d | finish no earlier than 2013-08-31 |
| 15 | 2.10 | Motors | 38d | 2013-04-29 | 2013-06-11 |  | 88d | 3d | finish no earlier than 2013-06-11 |
| 16 | 2.11 | Light fittings | 17d | 2013-08-09 | 2013-08-28 |  | 0d |  | finish no earlier than 2013-08-28 |
| 17 | 2.12 | Instruments | 111d | 2013-03-22 | 2013-07-29 |  | 71d | 8d | finish no earlier than 2013-07-29 |
| 19 | 3 | **3. equipment Receipts** | 212d | 2013-02-19 | 2013-10-23 |  | 61d |  |  |
| 20 | 3.1 | Ion exchange column | 80d | 2013-07-16 | 2013-10-16 | 3 | 48d | 0d | start no earlier than 2013-07-15 |
| 21 | 3.2 | Polished Brine tank | 89d | 2013-02-19 | 2013-06-01 | 6 | 119d | 0d | finish no earlier than 2013-06-01 |
| 22 | 3.3 | Pure Brine Tank | 58d | 2013-03-27 | 2013-06-01 | 7 | 184d |  | start no earlier than 2013-03-27 |
| 23 | 3.4 | Brine pumps | 22d | 2013-08-16 | 2013-09-10 | 8 | 98d |  | finish no earlier than 2013-09-10 |
| 24 | 3.5 | Structurals | 22d | 2013-09-13 | 2013-10-08 | 10 | 74d |  | finish no earlier than 2013-09-06 |
| 25 | 3.6 | Pipings and fittings | 22d | 2013-08-22 | 2013-09-16 | 11 | 93d |  | finish no earlier than 2013-09-04 |
| 26 | 3.7 | Valves | 78d | 2013-06-12 | 2013-09-10 | 12 | 98d |  | finish no earlier than 2013-09-10 |
| 27 | 3.8 | MCC | 59d | 2013-07-31 | 2013-10-07 | 13 | 75d |  | finish no earlier than 2013-10-07 |
| 28 | 3.9 | Cable and Cable tray | 14d | 2013-09-11 | 2013-09-26 | 14 | 84d |  | finish no earlier than 2013-09-26 |
| 29 | 3.10 | Motors | 55d | 2013-06-12 | 2013-08-14 | 15 | 121d |  | start no earlier than 2013-06-12 |
| 30 | 3.11 | Light fittings | 48d | 2013-08-29 | 2013-10-23 | 16 | 0d |  | start no earlier than 2013-08-29 |
| 31 | 3.12 | Instruments | 51d | 2013-07-30 | 2013-09-26 | 17 | 84d |  | start no earlier than 2013-07-30 |

| ID | WBS | Task | Duration | Start | Finish | Predecessors | Total slack | Free slack | Constraint |
| --- | --- | --- | --- | --- | --- | --- | --- | --- | --- |
| 32 | 4 | **4. CIVIL and Erection** | 136d | 2013-06-03 | 2013-11-07 |  | 48d |  |  |
| 33 | 4.1 | **4.1 Polished Brine storage tank and pumps** | 65d | 2013-06-03 | 2013-08-16 |  | 119d |  |  |
| 34 | 4.1.1 | a) Removal of Old Polished Brine tank | 10d | 2013-06-20 | 2013-07-01 |  | 149d | 0d | finish no earlier than 2013-07-01 |
| 35 | 4.1.2 | b) Excavation | 5d | 2013-07-02 | 2013-07-06 | 34 | 149d | 0d |  |
| 36 | 4.1.3 | c) Foundation | 5d | 2013-07-08 | 2013-07-12 | 35 | 149d |  |  |
| 37 | 4.1.4 | d) Positioning of Brine Storage tank | 50d | 2013-06-03 | 2013-07-30 | 21 | 119d | 0d |  |
| 38 | 4.1.5 | e) Filling and Leak Testing | 15d | 2013-07-31 | 2013-08-16 | 37 | 119d |  |  |
| 39 | 4.2 | **4.2 IEC** | 58d | 2013-09-02 | 2013-11-07 |  | 48d |  |  |
| 40 | 4.2.1 | a)Dismantling | 2d | 2013-09-02 | 2013-09-03 |  | 81d | 0d | start no earlier than 2013-09-02 |
| 41 | 4.2.2 | b)Excavation | 2d | 2013-09-04 | 2013-09-05 | 40 | 81d | 0d |  |
| 42 | 4.2.3 | c)Footings and column construction | 2d | 2013-09-06 | 2013-09-07 | 41 | 81d | 33d |  |
| 43 | 4.2.4 | d)Positioning of Ion exchange column | 1d | 2013-10-17 | 2013-10-17 | 20, 42 | 48d | 0d |  |
| 44 | 4.2.5 | e)Internal Piping | 15d | 2013-10-18 | 2013-11-04 | 43 | 48d | 0d |  |
| 45 | 4.2.6 | f) Ion exchange column strainer erection | 1d | 2013-11-05 | 2013-11-05 | 44 | 48d | 0d |  |
| 46 | 4.2.7 | g)filling of Ion exchange column with resin | 1d | 2013-11-06 | 2013-11-06 | 45 | 48d | 0d |  |
| 47 | 4.2.8 | i) Leak testing of resins | 1d | 2013-11-07 | 2013-11-07 | 46 | 48d |  |  |
| 48 | 4.3 | **4.3 Tanks and Pumps ( Pure Brine tank )** | 46d | 2013-09-02 | 2013-10-24 |  | 17d |  |  |
| 49 | 4.3.1 | a)Removal of old Pure brine tank | 10d | 2013-09-02 | 2013-09-12 |  | 17d | 0d | start no earlier than 2013-09-02 |
| 50 | 4.3.2 | b)Old Bed Dismantling | 5d | 2013-09-13 | 2013-09-18 | 49 | 17d | 0d |  |
| 51 | 4.3.3 | c)Excavation | 5d | 2013-09-19 | 2013-09-24 | 50 | 17d | 0d |  |
| 52 | 4.3.4 | d)Bed Construction | 12d | 2013-09-25 | 2013-10-08 | 51 | 17d | 0d |  |
| 53 | 4.3.5 | Curing | 7d | 2013-10-09 | 2013-10-16 | 52 | 17d | 0d |  |
| 54 | 4.3.6 | e) Receipt and Positioning of storage tanks | 1d | 2013-10-17 | 2013-10-17 | 53 | 17d | 0d |  |
| 55 | 4.3.7 | e) Receipt and Positioning of pumps | 1d | 2013-10-18 | 2013-10-18 | 54 | 17d | 0d |  |
| 56 | 4.3.8 | f) Filling and leak testing | 5d | 2013-10-19 | 2013-10-24 | 55 | 60d |  |  |

| ID | WBS | Task | Duration | Start | Finish | Predecessors | Total slack | Free slack | Constraint |
| --- | --- | --- | --- | --- | --- | --- | --- | --- | --- |
| 57 | 5 | **5. Erection of structurals, pipes, fittings, Electrical Equipments and Instruments** | 112d | 2013-08-05 | 2013-12-12 |  | 0d |  |  |
| 58 | 5.1 | Erection contract Finalization | 20d | 2013-08-05 | 2013-08-27 |  | 92d |  | start no earlier than 2013-08-05 |
| 59 | 5.2 | Piping Layout | 20d | 2013-08-05 | 2013-08-27 |  | 12d | 0d | start no earlier than 2013-08-05 |
| 60 | 5.3 | Mobilization of erection material | 15d | 2013-08-28 | 2013-09-13 | 59 | 12d | 0d | start no earlier than 2013-08-28 |
| 61 | 5.4 | Pipe rack and supports | 30d | 2013-09-14 | 2013-10-18 | 60 | 12d | 0d | start no earlier than 2013-09-14 |
| 62 | 5.5 | Process Piping | 30d | 2013-10-23 | 2013-11-26 | 55 | 14d |  | start no earlier than 2013-10-23 |
| 63 | 5.6 | Utility Piping | 30d | 2013-10-10 | 2013-11-13 |  | 25d |  | start no earlier than 2013-10-10 |
| 64 | 5.7 | Erection of cable tray ( Electrical and Instrument ) | 10d | 2013-10-19 | 2013-10-30 | 61 | 12d | 0d | start no earlier than 2013-10-19 |
| 65 | 5.8 | Laying of cables (Electrical and Instrument) | 25d | 2013-10-31 | 2013-11-28 | 64 | 12d |  | start no earlier than 2013-10-31 |
| 66 | 5.9 | Erection of instruments , Testing | 43d | 2013-10-02 | 2013-11-20 | 60 | 19d |  | start no earlier than 2013-10-02 |
| 67 | 5.10 | Erection of MCC and Motors | 43d | 2013-10-02 | 2013-11-20 | 60 | 19d |  | start no earlier than 2013-10-02 |
| 68 | 5.11 | Installation of Light fittings with LDB | 43d | 2013-10-24 | 2013-12-12 | 60, 30 | 0d |  | start no earlier than 2013-10-02 |
| 69 | 6 | **6. Precommissioning** | 13d | 2013-12-13 | 2013-12-27 |  | 0d |  |  |
| 70 | 6.1 | a) Cleaning and Flushing ( Tanks, equipment and Pipe lines ) | 2d | 2013-12-13 | 2013-12-14 | 57 | 0d |  | start no earlier than 2013-11-25 |
| 71 | 6.2 | b) Hook up with Existing set up (Process and utilities) | 4d | 2013-12-16 | 2013-12-19 | 70 | 0d |  | start no earlier than 2013-11-25 |
| 72 | 6.3 | c) Trial run of equipment | 2d | 2013-12-20 | 2013-12-21 | 71 | 0d |  | start no earlier than 2013-11-25 |
| 73 | 6.4 | d) Brine filling and circulation | 5d | 2013-12-23 | 2013-12-27 | 72 | 0d |  | start no earlier than 2013-11-25 |
| 75 | 7 | 7. Commissioning of plant | 5d | 2013-12-28 | 2014-01-02 | 69 | 0d |  |  |
