# Brine Plant

Schedule from MS Project, 2012-11-16 to 2013-12-23.
CAL

## Calendars

- Cell House: Mon-Fri 08:00-12:00, 13:00-17:00; Sat-Sun off. Exceptions (off unless hours are given): 2012-11-17 08:00-12:00, 13:00-17:00, 2012-11-24 08:00-12:00, 13:00-17:00, 2012-12-01 08:00-12:00, 13:00-17:00, 2012-12-08 08:00-12:00, 13:00-17:00, 2012-12-15 08:00-12:00, 13:00-17:00, 2012-12-22 08:00-12:00, 13:00-17:00, 2012-12-29 08:00-12:00, 13:00-17:00, 2013-01-05 08:00-12:00, 13:00-17:00, 2013-01-12 08:00-12:00, 13:00-17:00, 2013-01-19 08:00-12:00, 13:00-17:00, 2013-01-26 08:00-12:00, 13:00-17:00, 2013-02-02 08:00-12:00, 13:00-17:00, 2013-02-09 08:00-12:00, 13:00-17:00, 2013-02-16 08:00-12:00, 13:00-17:00, 2013-02-23 08:00-12:00, 13:00-17:00, 2013-03-02 08:00-12:00, 13:00-17:00, 2013-03-09 08:00-12:00, 13:00-17:00, 2013-03-16 08:00-12:00, 13:00-17:00, 2013-03-23 08:00-12:00, 13:00-17:00, 2013-03-30 08:00-12:00, 13:00-17:00, 2013-04-06 08:00-12:00, 13:00-17:00, 2013-04-13 08:00-12:00, 13:00-17:00, 2013-04-20 08:00-12:00, 13:00-17:00, 2013-04-27 08:00-12:00, 13:00-17:00, 2013-05-04 08:00-12:00, 13:00-17:00, 2013-05-11 08:00-12:00, 13:00-17:00, 2013-05-18 08:00-12:00, 13:00-17:00, 2013-05-25 08:00-12:00, 13:00-17:00, 2013-06-01 08:00-12:00, 13:00-17:00, 2013-06-08 08:00-12:00, 13:00-17:00, 2013-06-15 08:00-12:00, 13:00-17:00, 2013-06-22 08:00-12:00, 13:00-17:00, 2013-06-29 08:00-12:00, 13:00-17:00, 2013-07-06 08:00-12:00, 13:00-17:00, 2013-07-13 08:00-12:00, 13:00-17:00, 2013-07-20 08:00-12:00, 13:00-17:00, 2013-07-27 08:00-12:00, 13:00-17:00, 2013-08-03 08:00-12:00, 13:00-17:00, 2013-08-10 08:00-12:00, 13:00-17:00, 2013-08-17 08:00-12:00, 13:00-17:00, 2013-08-24 08:00-12:00, 13:00-17:00, 2013-08-31 08:00-12:00, 13:00-17:00, 2013-09-07 08:00-12:00, 13:00-17:00, 2013-09-14 08:00-12:00, 13:00-17:00, 2013-09-21 08:00-12:00, 13:00-17:00, 2013-09-28 08:00-12:00, 13:00-17:00, 2013-10-05 08:00-12:00, 13:00-17:00, 2013-10-12 08:00-12:00, 13:00-17:00, 2013-10-19 08:00-12:00, 13:00-17:00, 2013-10-26 08:00-12:00, 13:00-17:00, 2013-11-02 08:00-12:00, 13:00-17:00, 2013-11-09 08:00-12:00, 13:00-17:00, 2013-11-16 08:00-12:00, 13:00-17:00, 2013-11-23 08:00-12:00, 13:00-17:00, 2013-11-30 to 2013-12-01 08:00-12:00, 13:00-17:00, 2013-12-07 08:00-12:00, 13:00-17:00, 2013-12-14 08:00-12:00, 13:00-17:00, 2013-12-21 08:00-12:00, 13:00-17:00.

## Schedule

| ID | WBS | Task | Duration | Start | Finish | Predecessors | Total slack | Free slack | Constraint |
| --- | --- | --- | --- | --- | --- | --- | --- | --- | --- |
| 2 | 1 | **1. Critical Equipment Ordering** | 90d | 2012-11-16 | 2013-02-28 |  | 201d | 0d |  |
| 3 | 1.1 | Elements and its accessories | 90d | 2012-11-16 | 2013-02-28 |  | 197d |  | finish no earlier than 2013-02-28 |
| 4 | 1.2 | Membrane | 90d | 2012-11-16 | 2013-02-28 |  | 197d |  | finish no earlier than 2013-02-28 |
| 6 | 2 | **2. Other Equipments ordering** | 158d | 2013-03-01 | 2013-08-31 |  | 98d |  |  |
| 7 | 2.1 | Pumps | 10d | 2013-03-01 | 2013-03-12 | 2 | 197d | 0d |  |
| 8 | 2.2 | Tanks | 15d | 2013-03-13 | 2013-03-29 | 7 | 197d | 0d |  |
| 9 | 2.3 | Heat Exchangers | 15d | 2013-03-30 | 2013-04-16 | 8 | 197d | 0d |  |
| 10 | 2.4 | Platform BOQ | 15d | 2013-04-17 | 2013-05-03 | 9 | 197d |  |  |
| 11 | 2.5 | BOQ receipt from M/s Protech | 20d | 2013-06-07 | 2013-06-29 |  | 114d | 0d | finish no earlier than 2013-06-29 |
| 12 | 2.6 | Structurals BOQ from Jayam | 24d | 2013-07-01 | 2013-07-27 | 11 | 114d | 0d |  |
| 13 | 2.7 | Structurals for Head tank Building | 10d | 2013-07-29 | 2013-08-08 | 12 | 114d |  |  |
| 14 | 2.8 | Pipe rack inside and outside cell House area | 10d | 2013-07-29 | 2013-08-08 | 12 | 114d |  |  |
| 15 | 2.9 | Pipings and fittings | 22d | 2013-07-15 | 2013-08-08 |  | 114d |  | start no earlier than 2013-07-15 |
| 16 | 2.10 | Valves | 21d | 2013-06-06 | 2013-06-29 |  | 148d |  | finish no earlier than 2013-06-29 |
| 17 | 2.11 | Fasteners and Gaskets | 22d | 2013-08-07 | 2013-08-31 |  | 94d |  | finish no earlier than 2013-08-31 |
| 18 | 2.12 | Pipe Supports BOQ receipt and ordering | 26d | 2013-07-25 | 2013-08-23 |  | 101d |  | finish no earlier than 2013-08-23 |
| 19 | 2.13 | Bus bar inside cell house | 24d | 2013-07-22 | 2013-08-17 |  | 106d |  | start no earlier than 2013-07-22 |
| 20 | 2.14 | Bus bar outside cell house | 21d | 2013-06-03 | 2013-06-26 |  | 151d |  | start no earlier than 2013-06-03 |
| 21 | 2.15 | Insulator | 21d | 2013-06-03 | 2013-06-26 |  | 151d |  | start no earlier than 2013-06-03 |
| 22 | 2.16 | MCC | 33d | 2013-06-08 | 2013-07-16 |  | 134d |  | finish no earlier than 2013-07-16 |
| 23 | 2.17 | Cables and Cable tray | 15d | 2013-07-25 | 2013-08-10 |  | 112d |  | start no earlier than 2013-07-25 |
| 24 | 2.18 | Motors | 15d | 2013-06-03 | 2013-06-19 |  | 157d |  | start no earlier than 2013-06-03 |
| 25 | 2.19 | Mechanical tender document receipt and contract finalization | 20d | 2013-07-17 | 2013-08-08 |  | 114d |  | start no earlier than 2013-07-17 |
| 26 | 2.20 | Electrical tender document receipt and contract finalization | 20d | 2013-07-17 | 2013-08-08 |  | 114d |  | start no earlier than 2013-07-17 |
| 27 | 2.21 | Instruments | 20d | 2013-07-17 | 2013-08-08 |  | 114d |  | start no earlier than 2013-07-17 |
| 28 | 2.22 | Instruments tender document receipt and contract finalization | 20d | 2013-07-17 | 2013-08-08 |  | 114d |  | start no earlier than 2013-07-17 |

| ID | WBS | Task | Duration | Start | Finish | Predecessors | Total slack | Free slack | Constraint |
| --- | --- | --- | --- | --- | --- | --- | --- | --- | --- |
| 29 | 3 | **3. Other Equipments Receipts** | 48d | 2013-09-02 | 2013-10-26 |  | 50d |  |  |
| 30 | 3.1 | Pumps | 22d | 2013-09-05 | 2013-09-30 |  | 69d |  | finish no earlier than 2013-09-30 |
| 31 | 3.2 | Tanks | 22d | 2013-09-02 | 2013-09-26 |  | 72d |  | start no earlier than 2013-09-02 |
| 32 | 3.3 | Heat Exchangers | 22d | 2013-09-02 | 2013-09-26 |  | 72d |  | start no earlier than 2013-09-02 |
| 33 | 3.4 | Structurals for Head tank Building | 22d | 2013-09-02 | 2013-09-26 |  | 72d |  | start no earlier than 2013-09-02 |
| 34 | 3.5 | Pipe rack inside and outside cell House area | 22d | 2013-09-02 | 2013-09-26 |  | 72d |  | start no earlier than 2013-09-02 |
| 35 | 3.6 | Pipings and fittings | 22d | 2013-09-02 | 2013-09-26 |  | 72d |  | start no earlier than 2013-09-02 |
| 36 | 3.7 | Valves | 22d | 2013-09-02 | 2013-09-26 |  | 72d |  | start no earlier than 2013-09-02 |
| 37 | 3.8 | Fasteners and Gaskets | 22d | 2013-09-02 | 2013-09-26 |  | 72d |  | start no earlier than 2013-09-02 |
| 38 | 3.9 | Pipe Supports receipt | 22d | 2013-09-02 | 2013-09-26 |  | 72d |  | start no earlier than 2013-09-02 |
| 39 | 3.10 | Bus bar inside cell house | 22d | 2013-09-16 | 2013-10-10 |  | 60d |  | start no earlier than 2013-09-16 |
| 40 | 3.11 | Bus bar outside cell house | 22d | 2013-10-02 | 2013-10-26 |  | 46d |  | start no earlier than 2013-10-02 |
| 41 | 3.12 | Insulator | 27d | 2013-09-06 | 2013-10-07 |  | 63d |  | finish no earlier than 2013-10-07 |
| 42 | 3.13 | MCC | 27d | 2013-09-02 | 2013-10-02 |  | 67d |  | start no earlier than 2013-09-02 |
| 43 | 3.14 | Cables and Cable tray | 27d | 2013-09-02 | 2013-10-02 |  | 67d |  | start no earlier than 2013-09-02 |
| 44 | 3.15 | Motors | 27d | 2013-09-02 | 2013-10-02 |  | 67d |  | start no earlier than 2013-09-02 |
| 45 | 3.16 | Instruments | 27d | 2013-09-02 | 2013-10-02 |  | 67d |  | start no earlier than 2013-09-02 |
| 46 | 4 | **4. CIVIL and Erection** | 211d | 2013-04-23 | 2013-12-23 |  | 0d |  |  |
| 47 | 4.1 | **4.1 Electrolyser area** | 211d | 2013-04-23 | 2013-12-23 |  | 0d |  |  |
| 48 | 4.1.1 | a) Dismantling | 15d | 2013-04-23 | 2013-05-09 |  | 35d | 0d | start no earlier than 2013-04-23 |
| 49 | 4.1.2 | b) Excavation | 20d | 2013-05-10 | 2013-06-01 | 48 | 24d | 0d |  |
| 50 | 4.1.3 | c) PCC | 10d | 2013-06-03 | 2013-06-13 | 49 | 24d | 0d |  |
| 51 | 4.1.4 | d) Column and footing | 15d | 2013-06-14 | 2013-07-01 | 50 | 24d | 0d |  |
| 52 | 4.1.5 | e) Soil consolidation | 10d | 2013-07-02 | 2013-07-12 | 51 | 24d | 0d |  |
| 53 | 4.1.6 | f) PCC and RCC of flooring | 10d | 2013-07-13 | 2013-07-24 | 52 | 24d | 0d |  |
| 54 | 4.1.7 | g) Plastering of flooring | 11d | 2013-07-25 | 2013-08-06 | 53 | 24d | 0d |  |
| 55 | 4.1.8 | Mobilization of erection material | 17d | 2013-08-07 | 2013-08-26 | 54 | 24d | 0d |  |
| 56 | 4.1.9 | f) Pipe rack erection at inside cell house | 10d | 2013-08-27 | 2013-09-06 | 55 | 24d | 0d |  |
| 57 | 4.1.10 | g) Erection of cell platform | 10d | 2013-09-07 | 2013-09-18 | 56 | 24d | 0d |  |
| 58 | 4.1.11 | h) Positioning of cell frame | 10d | 2013-09-19 | 2013-09-30 | 57 | 24d | 0d |  |
| 59 | 4.1.12 | i) Positioning of cell manifold (Inlet and outlet) | 2d | 2013-10-01 | 2013-10-02 | 58 | 24d | 0d |  |
| 60 | 4.1.13 | j) Pipe line laying and erection | 33d | 2013-10-03 | 2013-11-09 | 59 | 24d | 0d |  |
| 61 | 4.1.14 | e) Filling and Leak Testing | 10d | 2013-11-11 | 2013-11-21 | 60 | 24d |  |  |

| ID | WBS | Task | Duration | Start | Finish | Predecessors | Total slack | Free slack | Constraint |
| --- | --- | --- | --- | --- | --- | --- | --- | --- | --- |
| 62 | 4.1.15 | **4.2 Out side cell house** | 151d | 2013-07-02 | 2013-12-23 |  | 0d |  |  |
| 63 | 4.1.15.1 | **4.2.1 Tanks and Pumps ( Cell drain tank and individual Catholyte circulation tank)** | 86d | 2013-07-02 | 2013-10-09 |  | 65d |  |  |
| 64 | 4.1.15.1.1 | a) Shifting of existing Hydrogen Handling system | 20d | 2013-07-02 | 2013-07-24 |  | 122d | 0d | start no earlier than 2013-07-02 |
| 65 | 4.1.15.1.2 | b) Shifting of existing product cooler and Caustic heater | 5d | 2013-07-25 | 2013-07-30 | 64 | 122d |  |  |
| 66 | 4.1.15.1.3 | c)Existing Floor Dismantling | 10d | 2013-08-12 | 2013-08-22 |  | 42d | 0d | start no earlier than 2013-08-12 |
| 67 | 4.1.15.1.4 | d)Excavation | 20d | 2013-08-23 | 2013-09-14 | 66 | 42d | 0d |  |
| 68 | 4.1.15.1.5 | f)Bed Construction | 10d | 2013-09-16 | 2013-09-26 | 67 | 49d | 0d |  |
| 69 | 4.1.15.1.6 | Curing | 7d | 2013-09-27 | 2013-10-04 | 68 | 49d | 0d |  |
| 70 | 4.1.15.1.7 | g)Positioning of New storage tanks and pumps | 2d | 2013-10-05 | 2013-10-07 | 69 | 65d | 0d |  |
| 71 | 4.1.15.1.8 | f)Filling and leak testing | 2d | 2013-10-08 | 2013-10-09 | 70 | 65d |  |  |
| 72 | 4.1.15.2 | **4.2.2 Tanks and Pumps ( Anolyte circulation tank and Catholyte circulation tank)** | 19d | 2013-12-02 | 2013-12-23 |  | 0d |  |  |
| 73 | 4.1.15.2.1 | a)Removal of old storage tanks and pumps | 2d | 2013-12-02 | 2013-12-03 |  | 0d |  | start no earlier than 2013-12-02 |
| 74 | 4.1.15.2.2 | b)Dismantling of existing tank foundations and pumps | 2d | 2013-12-04 | 2013-12-05 | 73 | 0d |  | start no earlier than 2013-12-02 |
| 75 | 4.1.15.2.3 | c)Excavation | 2d | 2013-12-06 | 2013-12-07 | 74 | 0d |  | start no earlier than 2013-12-02 |
| 76 | 4.1.15.2.4 | d) construction of Bed Foundation for tanks and pumps | 2d | 2013-12-09 | 2013-12-10 | 75 | 0d |  | start no earlier than 2013-12-02 |
| 77 | 4.1.15.2.5 | Curing | 7d | 2013-12-11 | 2013-12-18 | 76 | 0d |  |  |
| 78 | 4.1.15.2.6 | e) Receipt and Positioning of tanks with pumps | 2d | 2013-12-19 | 2013-12-20 | 77 | 0d |  | start no earlier than 2013-12-02 |
| 79 | 4.1.15.2.7 | f) Filling and leak testing | 2d | 2013-12-21 | 2013-12-23 | 78 | 0d |  | start no earlier than 2013-12-02 |
| 80 | 4.2 | **4.3 Erection of structurals, Brine over head tank and catholyte head tank.** | 71d | 2013-08-01 | 2013-10-22 |  | 54d |  |  |
| 81 | 4.2.1 | i) Drawing receipt from M/s Jayam consultants | 6d | 2013-08-01 | 2013-08-07 |  | 54d | 0d | start no earlier than 2013-08-01 |
| 82 | 4.2.2 | ii) Floating Enquiry for structural contractor | 10d | 2013-08-08 | 2013-08-19 | 81 | 54d | 0d |  |
| 83 | 4.2.3 | iii) Finalizing the erection contractor | 10d | 2013-08-20 | 2013-08-30 | 82 | 54d | 0d |  |
| 84 | 4.2.4 | iv) Strengtheing of existing over head tank structure | 20d | 2013-08-31 | 2013-09-23 | 83 | 54d | 0d |  |
| 85 | 4.2.5 | v) Positioning of Brine head tank and Catholyte head tank | 20d | 2013-09-24 | 2013-10-16 | 84 | 54d | 0d |  |
| 86 | 4.2.6 | vi) Water filling and leak testing | 5d | 2013-10-17 | 2013-10-22 | 85 | 54d |  |  |

| ID | WBS | Task | Duration | Start | Finish | Predecessors | Total slack | Free slack | Constraint |
| --- | --- | --- | --- | --- | --- | --- | --- | --- | --- |
| 87 | 4.3 | **4.4 Erection of structurals, Chlorate destruction tank and Brine Heat exchanger** | 55d | 2013-08-01 | 2013-10-03 |  | 70d |  |  |
| 88 | 4.3.1 | i) Drawing receipt from M/s Jayam consultants | 5d | 2013-08-01 | 2013-08-06 |  | 55d | 0d | start no earlier than 2013-08-01 |
| 89 | 4.3.2 | ii) Floating Enquiry for structural contractor | 10d | 2013-08-07 | 2013-08-17 | 88 | 55d | 0d |  |
| 90 | 4.3.3 | iii) Finalizing the erection contractor | 10d | 2013-08-19 | 2013-08-29 | 89 | 55d | 0d |  |
| 91 | 4.3.4 | iv) Strengtheing of existing over head tank structure | 20d | 2013-08-30 | 2013-09-21 | 90 | 55d | 0d |  |
| 92 | 4.3.5 | v) Positioning of Chlorate decomposition tank and Brine Heat exchanger | 5d | 2013-09-23 | 2013-09-27 | 91 | 70d | 0d |  |
| 93 | 4.3.6 | vi) Water filling and leak testing | 5d | 2013-09-28 | 2013-10-03 | 92 | 70d |  |  |
| 94 | 5 | **5. Erection of structurals, pipes, fittings, Electrical Equipments and Instruments** | 100d | 2013-08-05 | 2013-11-28 |  | 4d | 0d |  |
| 95 | 5.1 | Erection contract Finalization | 20d | 2013-08-05 | 2013-08-27 |  | 84d |  | start no earlier than 2013-08-05 |
| 96 | 5.2 | Piping Layout | 20d | 2013-08-05 | 2013-08-27 |  | 4d | 0d | start no earlier than 2013-08-05 |
| 97 | 5.3 | Mobilization of erection material | 15d | 2013-08-28 | 2013-09-13 | 96 | 4d | 0d |  |
| 98 | 5.4 | Pipe rack and supports | 30d | 2013-09-14 | 2013-10-18 | 97 | 4d | 0d |  |
| 99 | 5.5 | Process Piping | 30d | 2013-10-10 | 2013-11-13 |  | 17d |  | start no earlier than 2013-10-10 |
| 100 | 5.6 | Utility Piping | 30d | 2013-10-10 | 2013-11-13 |  | 17d |  | start no earlier than 2013-10-10 |
| 101 | 5.7 | Erection of cable tray ( Electrical and Instrument ) | 10d | 2013-10-19 | 2013-10-30 | 98 | 4d | 0d | start no earlier than 2013-10-02 |
| 102 | 5.8 | Laying of cables (Electrical and Instrument) | 25d | 2013-10-31 | 2013-11-28 | 101 | 4d |  | start no earlier than 2013-10-02 |
| 103 | 5.9 | Erection of instruments , Testing | 43d | 2013-10-02 | 2013-11-20 | 97 | 11d |  | start no earlier than 2013-10-02 |
| 104 | 5.10 | Erection of MCC and Motors | 43d | 2013-10-02 | 2013-11-20 | 97 | 11d |  | start no earlier than 2013-10-02 |
| 105 | 5.11 | Installation of Light fittings with LDB | 43d | 2013-10-02 | 2013-11-20 | 97 | 11d |  | start no earlier than 2013-10-02 |
| 107 | 6 | **6. Pre-commissioning** | 13d | 2013-11-29 | 2013-12-12 |  | 4d |  |  |
| 108 | 6.1 | a) Cleaning and Flushing ( Tanks, Equipments and Pipe lines ) | 2d | 2013-11-29 | 2013-11-30 | 94 | 4d | 0d |  |
| 109 | 6.2 | b) Hook up with Existing set up (Process and utilities) | 4d | 2013-12-01 | 2013-12-04 | 108 | 4d | 0d |  |
| 110 | 6.3 | c) Trial run of Equipments | 2d | 2013-12-05 | 2013-12-06 | 109 | 4d | 0d |  |
| 111 | 6.4 | d) Brine filling and circulation | 5d | 2013-12-07 | 2013-12-12 | 110 | 4d | 0d |  |
| 113 | 7 | 7. Commissioning of plant | 5d | 2013-12-13 | 2013-12-18 | 111 | 4d |  |  |
