# Brine Plant

Schedule from MS Project, 2013-02-04 to 2013-12-14.
CAL

## Calendars

- Cl2, H2 Handling Section: Mon-Fri 08:00-12:00, 13:00-17:00; Sat-Sun off. Exceptions (off unless hours are given): 2013-02-09 08:00-12:00, 13:00-17:00, 2013-02-16 08:00-12:00, 13:00-17:00, 2013-02-23 08:00-12:00, 13:00-17:00, 2013-03-02 08:00-12:00, 13:00-17:00, 2013-03-09 08:00-12:00, 13:00-17:00, 2013-03-16 08:00-12:00, 13:00-17:00, 2013-03-23 08:00-12:00, 13:00-17:00, 2013-03-30 08:00-12:00, 13:00-17:00, 2013-04-06 08:00-12:00, 13:00-17:00, 2013-04-13 08:00-12:00, 13:00-17:00, 2013-04-20 08:00-12:00, 13:00-17:00, 2013-04-27 08:00-12:00, 13:00-17:00, 2013-05-04 08:00-12:00, 13:00-17:00, 2013-05-11 08:00-12:00, 13:00-17:00, 2013-05-18 08:00-12:00, 13:00-17:00, 2013-05-25 08:00-12:00, 13:00-17:00, 2013-06-01 08:00-12:00, 13:00-17:00, 2013-06-08 08:00-12:00, 13:00-17:00, 2013-06-15 08:00-12:00, 13:00-17:00, 2013-06-22 08:00-12:00, 13:00-17:00, 2013-06-29 08:00-12:00, 13:00-17:00, 2013-07-06 08:00-12:00, 13:00-17:00, 2013-07-13 08:00-12:00, 13:00-17:00, 2013-07-20 08:00-12:00, 13:00-17:00, 2013-07-27 08:00-12:00, 13:00-17:00, 2013-08-03 08:00-12:00, 13:00-17:00, 2013-08-10 08:00-12:00, 13:00-17:00, 2013-08-17 08:00-12:00, 13:00-17:00, 2013-08-24 08:00-12:00, 13:00-17:00, 2013-08-31 08:00-12:00, 13:00-17:00, 2013-09-07 08:00-12:00, 13:00-17:00, 2013-09-14 08:00-12:00, 13:00-17:00, 2013-09-21 08:00-12:00, 13:00-17:00, 2013-09-28 08:00-12:00, 13:00-17:00, 2013-10-05 08:00-12:00, 13:00-17:00, 2013-10-12 08:00-12:00, 13:00-17:00, 2013-10-19 08:00-12:00, 13:00-17:00, 2013-10-26 08:00-12:00, 13:00-17:00, 2013-11-02 08:00-12:00, 13:00-17:00, 2013-11-09 08:00-12:00, 13:00-17:00, 2013-11-16 08:00-12:00, 13:00-17:00, 2013-11-23 08:00-12:00, 13:00-17:00, 2013-11-30 to 2013-12-01 08:00-12:00, 13:00-17:00, 2013-12-07 08:00-12:00, 13:00-17:00, 2013-12-14 08:00-12:00, 13:00-17:00.

## Schedule

| ID | WBS | Task | Duration | Start | Finish | Predecessors | Total slack | Free slack | Constraint |
| --- | --- | --- | --- | --- | --- | --- | --- | --- | --- |
| 2 | 1 | **1. Equipments ordering** | 180d | 2013-02-04 | 2013-08-31 |  | 69d |  |  |
| 3 | 1.1 | Dechlorination tower | 107d | 2013-02-26 | 2013-06-29 |  | 123d | 54d | finish no earlier than 2013-06-29 |
| 4 | 1.2 | Chlorine wash tower 1 & 2 | 107d | 2013-02-04 | 2013-06-07 |  | 142d | 73d | start no earlier than 2013-02-04 |
| 5 | 1.3 | Hydrogen Wash Tower 1 & 2 | 107d | 2013-02-04 | 2013-06-07 |  | 142d | 73d | start no earlier than 2013-02-04 |
| 6 | 1.4 | Chlorine gas mist eliminator | 107d | 2013-02-04 | 2013-06-07 |  | 142d | 73d | start no earlier than 2013-02-04 |
| 7 | 1.5 | Hydrogen gas mist eliminator | 107d | 2013-02-04 | 2013-06-07 |  | 142d | 73d | start no earlier than 2013-02-04 |
| 8 | 1.6 | Hydrogen Buffer vessel | 107d | 2013-02-04 | 2013-06-07 |  | 142d | 73d | start no earlier than 2013-02-04 |
| 9 | 1.7 | Sodium sulphite tank | 107d | 2013-02-04 | 2013-06-07 |  | 120d | 73d | start no earlier than 2013-02-04 |
| 10 | 1.8 | Pumps and Blowers | 107d | 2013-02-04 | 2013-06-07 |  | 97d | 0d | start no earlier than 2013-02-04 |
| 11 | 1.9 | Pipings and fittings | 45d | 2013-06-08 | 2013-07-30 | 10 | 97d | 28d |  |
| 12 | 1.10 | Valves | 43d | 2013-05-11 | 2013-06-29 |  | 123d | 54d | finish no earlier than 2013-06-29 |
| 13 | 1.11 | Gaskets and fasteners | 22d | 2013-08-07 | 2013-08-31 |  | 69d | 0d | finish no earlier than 2013-08-31 |
| 14 | 1.12 | Pipe support and valve support materials | 15d | 2013-08-02 | 2013-08-19 |  | 80d | 11d | start no earlier than 2013-08-02 |
| 15 | 1.13 | MCC | 33d | 2013-06-08 | 2013-07-16 |  | 109d | 40d | finish no earlier than 2013-07-16 |
| 16 | 1.14 | Cable tray | 15d | 2013-08-02 | 2013-08-19 |  | 80d | 11d | start no earlier than 2013-08-02 |
| 17 | 1.15 | Motors | 15d | 2013-06-03 | 2013-06-19 |  | 132d | 63d | start no earlier than 2013-06-03 |
| 18 | 1.16 | Light fittings | 15d | 2013-08-02 | 2013-08-19 |  | 80d | 11d | start no earlier than 2013-08-02 |
| 19 | 1.17 | Instruments | 131d | 2013-03-01 | 2013-07-31 |  | 96d | 27d | finish no earlier than 2013-07-31 |
| 20 | 2 | **2. Equipment Receipts** | 44d | 2013-09-02 | 2013-10-22 |  | 47d |  |  |
| 21 | 2.1 | Dechlorination tower | 22d | 2013-09-02 | 2013-09-26 | 3 | 69d |  | start no earlier than 2013-09-02 |
| 22 | 2.2 | Chlorine wash tower 1 & 2 | 22d | 2013-09-02 | 2013-09-26 | 4 | 69d |  | start no earlier than 2013-09-02 |
| 23 | 2.3 | Hydrogen Wash Tower 1 & 2 | 22d | 2013-09-02 | 2013-09-26 | 5 | 69d |  | start no earlier than 2013-09-02 |
| 24 | 2.4 | Chlorine gas mist eliminator | 22d | 2013-09-02 | 2013-09-26 | 6 | 69d |  | start no earlier than 2013-09-02 |
| 25 | 2.5 | Hydrogen gas mist eliminator | 22d | 2013-09-02 | 2013-09-26 | 7 | 69d |  | start no earlier than 2013-09-02 |
| 26 | 2.6 | Hydrogen Buffer vessel | 22d | 2013-09-02 | 2013-09-26 | 8 | 69d |  | start no earlier than 2013-09-02 |
| 27 | 2.7 | Sodium sulphite tank | 22d | 2013-09-02 | 2013-09-26 | 9 | 47d | 0d | start no earlier than 2013-09-02 |
| 28 | 2.8 | Pumps and Blowers | 22d | 2013-09-27 | 2013-10-22 | 10, 27 | 47d |  | start no earlier than 2013-09-02 |
| 29 | 2.9 | Pipings and fittings | 22d | 2013-09-02 | 2013-09-26 | 11 | 69d |  | start no earlier than 2013-09-02 |
| 30 | 2.10 | Valves | 22d | 2013-09-02 | 2013-09-26 | 12 | 69d |  | start no earlier than 2013-09-02 |
| 31 | 2.11 | Gaskets and fasteners | 22d | 2013-09-02 | 2013-09-26 | 13 | 69d |  |  |
| 32 | 2.12 | Pipe support and valve support materials | 22d | 2013-09-02 | 2013-09-26 | 14 | 69d |  | start no earlier than 2013-09-02 |
| 33 | 2.13 | MCC | 22d | 2013-09-02 | 2013-09-26 | 15 | 69d |  | start no earlier than 2013-09-02 |
| 34 | 2.14 | Cable tray | 22d | 2013-09-02 | 2013-09-26 | 16 | 69d |  | start no earlier than 2013-09-02 |
| 35 | 2.15 | Motors | 22d | 2013-09-02 | 2013-09-26 | 17 | 69d |  | start no earlier than 2013-09-02 |
| 36 | 2.16 | Light fittings | 22d | 2013-09-02 | 2013-09-26 | 18 | 69d |  | start no earlier than 2013-09-02 |
| 37 | 2.17 | Instruments | 22d | 2013-09-02 | 2013-09-26 | 19 | 69d |  | start no earlier than 2013-09-02 |

| ID | WBS | Task | Duration | Start | Finish | Predecessors | Total slack | Free slack | Constraint |
| --- | --- | --- | --- | --- | --- | --- | --- | --- | --- |
| 38 | 3 | **3. Civil and Erection** | 81d | 2013-08-19 | 2013-11-20 |  | 19d |  |  |
| 39 | 3.1 | **3.1 Structurals Civil foundation** | 30d | 2013-08-19 | 2013-09-21 |  | 73d |  |  |
| 40 | 3.1.1 | a) Dismantling | 5d | 2013-08-19 | 2013-08-23 |  | 25d | 0d | start no earlier than 2013-08-19 |
| 41 | 3.1.2 | b) Excavation | 5d | 2013-08-24 | 2013-08-29 | 40 | 73d | 0d |  |
| 42 | 3.1.3 | c) PCC | 5d | 2013-08-30 | 2013-09-04 | 41 | 73d | 0d |  |
| 43 | 3.1.4 | d) Footing and column construction | 5d | 2013-09-05 | 2013-09-10 | 42 | 73d | 0d |  |
| 44 | 3.1.5 | e) Soil consolidation | 5d | 2013-09-11 | 2013-09-16 | 43 | 73d | 0d |  |
| 45 | 3.1.6 | f) PCC and RCC flooring | 5d | 2013-09-17 | 2013-09-21 | 44 | 73d |  |  |
| 46 | 3.2 | **3.2 Equipments civil foundation** | 33d | 2013-08-19 | 2013-09-25 |  | 70d |  |  |
| 47 | 3.2.1 | a) Dismantling | 5d | 2013-08-19 | 2013-08-23 |  | 22d | 0d | start no earlier than 2013-08-19 |
| 48 | 3.2.2 | b) Exacavation | 5d | 2013-08-24 | 2013-08-29 | 47 | 70d | 0d |  |
| 49 | 3.2.3 | c) PCC | 5d | 2013-08-30 | 2013-09-04 | 48 | 70d | 0d |  |
| 50 | 3.2.4 | d) Footing and column construction | 5d | 2013-09-05 | 2013-09-10 | 49 | 70d | 0d |  |
| 51 | 3.2.5 | e) Soil consolidation | 3d | 2013-09-11 | 2013-09-13 | 50 | 70d | 0d |  |
| 52 | 3.2.6 | f) PCC and RCC flooring | 5d | 2013-09-14 | 2013-09-19 | 51 | 70d | 0d |  |
| 53 | 3.2.7 | g) Plastering of flooring | 5d | 2013-09-20 | 2013-09-25 | 52 | 70d |  |  |
| 54 | 3.3 | **3.3 Erection of equipments and Structurals** | 45d | 2013-09-09 | 2013-10-30 |  | 40d |  |  |
| 55 | 3.3.1 | a) Erection of Structurals | 20d | 2013-09-09 | 2013-10-01 |  | 40d | 0d | start no earlier than 2013-09-09 |
| 56 | 3.3.2 | b) Positioing of Equipments and pumps | 20d | 2013-10-02 | 2013-10-24 | 55 | 40d | 0d |  |
| 57 | 3.3.3 | c)Filling and Leak testing | 5d | 2013-10-25 | 2013-10-30 | 56 | 40d |  |  |
| 58 | 3.4 | **3.4 Erection of structurals, pipes, fittings, Electrical Equipments and Instruments** | 63d | 2013-09-09 | 2013-11-20 |  | 0d |  |  |
| 59 | 3.4.1 | a) Pipe rack and supports | 18d | 2013-09-09 | 2013-09-28 |  | 1d | 0d | start no earlier than 2013-09-09 |
| 60 | 3.4.2 | b) Process Piping | 44d | 2013-09-30 | 2013-11-19 | 59 | 1d |  |  |
| 61 | 3.4.3 | c) Utility Piping | 44d | 2013-10-01 | 2013-11-20 |  | 0d |  | start no earlier than 2013-10-01 |
| 62 | 3.4.4 | d) Erection of cable tray ( Electrical and Instrument ) | 44d | 2013-10-01 | 2013-11-20 |  | 0d |  | start no earlier than 2013-10-01 |
| 63 | 3.4.5 | e) Laying of Electrical cables and Instrument cables | 44d | 2013-10-01 | 2013-11-20 |  | 0d |  | start no earlier than 2013-10-01 |
| 64 | 3.4.6 | f) Erection of equipments and instruments | 44d | 2013-10-01 | 2013-11-20 |  | 0d |  | start no earlier than 2013-10-01 |
| 65 | 3.4.7 | g) Erection of MCC and Motors | 44d | 2013-10-01 | 2013-11-20 |  | 0d |  | start no earlier than 2013-10-01 |
| 66 | 3.4.8 | h) Installation of Light fittings with LDB | 44d | 2013-10-01 | 2013-11-20 |  | 0d |  | start no earlier than 2013-10-01 |

| ID | WBS | Task | Duration | Start | Finish | Predecessors | Total slack |
| --- | --- | --- | --- | --- | --- | --- | --- |
| 67 | 4 | **4. Pre-commissioning** | 17d | 2013-11-21 | 2013-12-09 |  | 0d |
| 68 | 4.1 | a) Cleaning and Flushing ( Tanks, Equipments and Pipe lines ) | 5d | 2013-11-21 | 2013-11-26 | 58 | 0d |
| 69 | 4.2 | b) Hook up with Existing set up (Process and utilities) | 5d | 2013-11-27 | 2013-12-01 | 68 | 0d |
| 70 | 4.3 | c) Trial run of Equipments | 4d | 2013-12-02 | 2013-12-05 | 69 | 0d |
| 71 | 4.4 | d) Brine filling and circulation | 3d | 2013-12-06 | 2013-12-09 | 70 | 0d |
| 73 | 5 | 5. Commissioning of plant | 5d | 2013-12-10 | 2013-12-14 | 71 | 0d |
