# Brine Plant

Schedule from MS Project, 2013-02-04 to 2013-12-17.
CAL

## Calendars

- Dry Cl2 Handling: Mon-Fri 08:00-12:00, 13:00-17:00; Sat-Sun off. Exceptions (off unless hours are given): 2013-02-09 08:00-12:00, 13:00-17:00, 2013-02-16 08:00-12:00, 13:00-17:00, 2013-02-23 08:00-12:00, 13:00-17:00, 2013-03-02 08:00-12:00, 13:00-17:00, 2013-03-09 08:00-12:00, 13:00-17:00, 2013-03-16 08:00-12:00, 13:00-17:00, 2013-03-23 08:00-12:00, 13:00-17:00, 2013-03-30 08:00-12:00, 13:00-17:00, 2013-04-06 08:00-12:00, 13:00-17:00, 2013-04-13 08:00-12:00, 13:00-17:00, 2013-04-20 08:00-12:00, 13:00-17:00, 2013-04-27 08:00-12:00, 13:00-17:00, 2013-05-04 08:00-12:00, 13:00-17:00, 2013-05-11 08:00-12:00, 13:00-17:00, 2013-05-18 08:00-12:00, 13:00-17:00, 2013-05-25 08:00-12:00, 13:00-17:00, 2013-06-01 08:00-12:00, 13:00-17:00, 2013-06-08 08:00-12:00, 13:00-17:00, 2013-06-15 08:00-12:00, 13:00-17:00, 2013-06-22 08:00-12:00, 13:00-17:00, 2013-06-29 08:00-12:00, 13:00-17:00, 2013-07-06 08:00-12:00, 13:00-17:00, 2013-07-13 08:00-12:00, 13:00-17:00, 2013-07-20 08:00-12:00, 13:00-17:00, 2013-07-27 08:00-12:00, 13:00-17:00, 2013-08-03 08:00-12:00, 13:00-17:00, 2013-08-10 08:00-12:00, 13:00-17:00, 2013-08-17 08:00-12:00, 13:00-17:00, 2013-08-24 08:00-12:00, 13:00-17:00, 2013-08-31 08:00-12:00, 13:00-17:00, 2013-09-07 08:00-12:00, 13:00-17:00, 2013-09-14 08:00-12:00, 13:00-17:00, 2013-09-21 08:00-12:00, 13:00-17:00, 2013-09-28 08:00-12:00, 13:00-17:00, 2013-10-05 08:00-12:00, 13:00-17:00, 2013-10-12 08:00-12:00, 13:00-17:00, 2013-10-19 08:00-12:00, 13:00-17:00, 2013-10-26 08:00-12:00, 13:00-17:00, 2013-11-02 08:00-12:00, 13:00-17:00, 2013-11-09 08:00-12:00, 13:00-17:00, 2013-11-16 08:00-12:00, 13:00-17:00, 2013-11-23 08:00-12:00, 13:00-17:00, 2013-11-30 to 2013-12-01 08:00-12:00, 13:00-17:00, 2013-12-07 08:00-12:00, 13:00-17:00, 2013-12-14 08:00-12:00, 13:00-17:00.

## Schedule

| ID | WBS | Task | Duration | Start | Finish | Predecessors | Total slack | Free slack | Constraint |
| --- | --- | --- | --- | --- | --- | --- | --- | --- | --- |
| 2 | 1 | **1. Equipment ordering** | 180d? | 2013-02-04 | 2013-08-31 |  | 93d |  |  |
| 3 | 1.1 | Drying tower | 50d | 2013-02-14 | 2013-04-12 |  | 214d |  | finish no earlier than 2013-04-12 |
| 4 | 1.2 | 78 % Acid circulation pumps | 27d? | 2013-07-06 | 2013-08-06 |  | 96d | 55d | finish no earlier than 2013-08-06 |
| 5 | 1.3 | Chlorine compressor | 19d | 2013-02-07 | 2013-02-28 |  | 229d | 158d | finish no earlier than 2013-02-28 |
| 6 | 1.4 | Chiller | 50d | 2013-02-04 | 2013-04-02 |  | 201d | 130d | start no earlier than 2013-02-04 |
| 7 | 1.5 | Chilled water circulation pumps | 33d | 2013-07-08 | 2013-08-14 |  | 89d | 45d | finish no earlier than 2013-08-14 |
| 8 | 1.6 | Pipings and fittings | 33d | 2013-07-02 | 2013-08-08 |  | 87d | 20d | start no earlier than 2013-07-02 |
| 9 | 1.7 | Valves | 21d | 2013-06-06 | 2013-06-29 |  | 121d | 54d | finish no earlier than 2013-06-29 |
| 10 | 1.8 | Gaskets and fasteners | 22d | 2013-08-07 | 2013-08-31 |  | 71d | 0d | finish no earlier than 2013-08-31 |
| 11 | 1.9 | Pipe support and valve support materials | 22d | 2013-08-02 | 2013-08-27 |  | 75d | 0d | start no earlier than 2013-08-02 |
| 12 | 1.10 | MCC | 33d | 2013-06-08 | 2013-07-16 |  | 111d | 40d | finish no earlier than 2013-07-16 |
| 13 | 1.11 | Cables and Cable tray | 14d | 2013-08-06 | 2013-08-21 |  | 80d | 9d | start no earlier than 2013-08-06 |
| 14 | 1.12 | Motors | 21d | 2013-06-03 | 2013-06-26 |  | 128d | 57d | start no earlier than 2013-06-03 |
| 15 | 1.13 | Light fittings | 14d | 2013-08-06 | 2013-08-21 |  | 80d | 9d | start no earlier than 2013-08-06 |
| 16 | 1.14 | Instruments, Cables and Cable tray | 154d | 2013-03-06 | 2013-08-31 |  | 71d | 0d | finish no earlier than 2013-08-31 |
| 17 | 2 | **2. Equipment Receipts** | 56d | 2013-08-28 | 2013-10-31 |  | 41d |  |  |
| 18 | 2.1 | Drying tower | 22d | 2013-09-05 | 2013-09-30 |  | 68d |  | finish no earlier than 2013-09-30 |
| 19 | 2.2 | 78 % Acid circulation pumps | 19d | 2013-10-10 | 2013-10-31 | 4 | 41d |  | finish no earlier than 2013-10-31 |
| 20 | 2.3 | Chlorine compressor | 22d | 2013-09-02 | 2013-09-26 | 5 | 71d |  | start no earlier than 2013-09-02 |
| 21 | 2.4 | Chiller | 22d | 2013-09-02 | 2013-09-26 | 6 | 71d |  | start no earlier than 2013-09-02 |
| 22 | 2.5 | Chilled water circulation pumps | 19d | 2013-10-07 | 2013-10-28 | 7 | 44d |  | start no earlier than 2013-10-07 |
| 23 | 2.6 | Pipings and fittings | 26d | 2013-09-02 | 2013-10-01 | 8 | 67d |  | start no earlier than 2013-09-02 |
| 24 | 2.7 | Valves | 26d | 2013-09-02 | 2013-10-01 | 9 | 67d |  | start no earlier than 2013-09-02 |
| 25 | 2.8 | Gaskets and fasteners | 22d | 2013-09-02 | 2013-09-26 | 10 | 71d |  |  |
| 26 | 2.9 | Pipe support and valve support materials | 22d | 2013-08-28 | 2013-09-21 | 11 | 75d |  |  |
| 27 | 2.10 | MCC | 22d | 2013-09-02 | 2013-09-26 | 12 | 71d |  | start no earlier than 2013-09-02 |
| 28 | 2.11 | Cables and Cable tray | 22d | 2013-09-02 | 2013-09-26 | 13 | 71d |  | start no earlier than 2013-09-02 |
| 29 | 2.12 | Motors | 22d | 2013-09-02 | 2013-09-26 | 14 | 71d |  | start no earlier than 2013-09-02 |
| 30 | 2.13 | Light fittings | 22d | 2013-09-02 | 2013-09-26 | 15 | 71d |  | start no earlier than 2013-09-02 |
| 31 | 2.14 | Instruments, Cables and Cable tray | 22d | 2013-09-02 | 2013-09-26 | 16 | 71d |  |  |

| ID | WBS | Task | Duration | Start | Finish | Predecessors | Total slack | Free slack | Constraint |
| --- | --- | --- | --- | --- | --- | --- | --- | --- | --- |
| 32 | 3 | **3. Civil and Erection** | 84d | 2013-09-02 | 2013-12-06 |  | 9d |  |  |
| 33 | 3.1 | **3.1 Drying tower system** | 5d | 2013-12-02 | 2013-12-06 |  | 9d |  |  |
| 34 | 3.1.1 | a) Removal of old drying tower system | 1d | 2013-12-02 | 2013-12-02 |  | 17d | 0d | start no earlier than 2013-12-02 |
| 35 | 3.1.2 | b) Positioning of new drying tower system | 1d | 2013-12-03 | 2013-12-03 | 34 | 17d | 0d |  |
| 36 | 3.1.3 | c) Positioning of tunnel tray, Pumps and Heat Exchanges | 1d | 2013-12-04 | 2013-12-04 | 35 | 17d | 0d |  |
| 37 | 3.1.4 | d) Filling of packings | 1d | 2013-12-05 | 2013-12-05 | 36 | 17d | 0d |  |
| 38 | 3.1.5 | e) Leak testing | 1d | 2013-12-06 | 2013-12-06 | 37 | 17d |  |  |
| 39 | 3.2 | **3.2 Chlorine compressor system** | 4d | 2013-12-02 | 2013-12-05 |  | 10d |  |  |
| 40 | 3.2.1 | a) Removal of Old Chlorine compressor | 1d | 2013-12-02 | 2013-12-02 |  | 1d | 0d | start no earlier than 2013-12-02 |
| 41 | 3.2.2 | b) Positioning of new chlorine compressor | 1d | 2013-12-03 | 2013-12-03 | 40 | 1d | 0d |  |
| 42 | 3.2.3 | c) Positioning of suction knock out drum, acid separator and Heat exchanger | 1d | 2013-12-04 | 2013-12-04 | 41 | 1d | 0d |  |
| 43 | 3.2.4 | d) idle run test | 1d | 2013-12-05 | 2013-12-05 | 42 | 1d |  |  |
| 44 | 3.3 | **3.3 Chiller and chilled water storage tank** | 28d | 2013-09-02 | 2013-10-03 |  | 65d |  |  |
| 45 | 3.3.1 | b) Excavation | 10d | 2013-09-02 | 2013-09-12 |  | 65d | 0d | start no earlier than 2013-09-02 |
| 46 | 3.3.2 | c) PCC | 4d | 2013-09-13 | 2013-09-17 | 45 | 65d | 0d |  |
| 47 | 3.3.3 | d) Footing and column construction | 5d | 2013-09-18 | 2013-09-23 | 46 | 65d | 0d |  |
| 48 | 3.3.4 | e) Soil consolidation | 5d | 2013-09-24 | 2013-09-28 | 47 | 65d | 0d |  |
| 49 | 3.3.5 | f) PCC and RCC flooring | 4d | 2013-09-30 | 2013-10-03 | 48 | 65d |  |  |
| 50 | 3.4 | **3.4 Erection of Chiller and chilled water storage tank** | 52d | 2013-10-02 | 2013-11-30 |  | 15d |  |  |
| 51 | 3.4.1 | a) Positioing of Equipmnets | 44d | 2013-10-11 | 2013-11-30 |  | 15d |  | finish no earlier than 2013-11-30 |
| 52 | 3.4.2 | b)Erection of equipments | 44d | 2013-10-02 | 2013-11-21 |  | 23d |  | start no earlier than 2013-10-02 |
| 53 | 3.4.3 | c)Filling and Leak testing | 44d | 2013-10-02 | 2013-11-21 |  | 23d |  | start no earlier than 2013-10-02 |
| 54 | 4 | **4. Erection of structurals, pipes, fittings, Electrical Equipments and Instruments** | 67d | 2013-09-05 | 2013-11-21 |  | 0d |  |  |
| 55 | 4.1 | a) Pipe rack and supports | 22d | 2013-09-05 | 2013-09-30 |  | 1d |  | finish no earlier than 2013-09-30 |
| 56 | 4.2 | b) Process Piping | 44d | 2013-10-02 | 2013-11-21 | 55 | 0d |  | start no earlier than 2013-10-02 |
| 57 | 4.3 | c) Utility Piping | 44d | 2013-10-02 | 2013-11-21 |  | 0d |  | start no earlier than 2013-10-02 |
| 58 | 4.4 | d) Erection of cable tray ( Electrical and Instrument ) | 44d | 2013-10-02 | 2013-11-21 |  | 0d |  | start no earlier than 2013-10-02 |
| 59 | 4.5 | e) Laying of Electrical cables and Instrument cables | 44d | 2013-10-02 | 2013-11-21 |  | 0d |  | start no earlier than 2013-10-02 |
| 60 | 4.6 | f) Erection of equipments and instruments | 44d | 2013-10-02 | 2013-11-21 |  | 0d |  | start no earlier than 2013-10-02 |
| 61 | 4.7 | g) Erection of MCC and Motors | 44d | 2013-10-02 | 2013-11-21 |  | 0d |  | start no earlier than 2013-10-02 |
| 62 | 4.8 | h) Installation of Light fittings with LDB | 44d | 2013-10-02 | 2013-11-21 |  | 0d |  | start no earlier than 2013-10-02 |

| ID | WBS | Task | Duration | Start | Finish | Predecessors | Total slack |
| --- | --- | --- | --- | --- | --- | --- | --- |
| 63 | 5 | **5. Precommissioning** | 18d | 2013-11-22 | 2013-12-11 |  | 0d |
| 64 | 5.1 | a) Cleaning and Flushing ( Tanks, Equipments and Pipe lines ) | 8d | 2013-11-22 | 2013-11-30 | 54 | 0d |
| 65 | 5.2 | b) Hook up with Existing set up (Process and utilities) | 5d | 2013-12-01 | 2013-12-05 | 64 | 0d |
| 66 | 5.3 | c) Trial run of Equipments | 5d | 2013-12-06 | 2013-12-11 | 65 | 0d |
| 68 | 6 | 6. Commissioning of plant | 5d | 2013-12-12 | 2013-12-17 | 66 | 0d |
