# Brine Plant

Schedule from MS Project, 2013-12-10 to 2014-01-01.
CAL

## Calendars

- Standard: Mon-Fri 08:00-12:00, 13:00-17:00; Sat-Sun off.

## Schedule

| ID | WBS | Task | Duration | Start | Finish | Predecessors | Total slack | Free slack | Constraint |
| --- | --- | --- | --- | --- | --- | --- | --- | --- | --- |
| 2 | 1 | **Cell house** | 10d | 2013-12-10 | 2013-12-23 |  | 0.5d |  |  |
| 3 | 1.1 | Removal of Old line connected to Equipments | 0.5d | 2013-12-10 | 2013-12-10 |  | 0.5d | 0d | start no earlier than 2013-12-10 |
| 4 | 1.2 | Removal of Anolyte circulation tank and pump | 0.5d | 2013-12-10 | 2013-12-10 | 3 | 0.5d | 0d |  |
| 5 | 1.3 | Removal of Catholyte circulation tank and pump | 0.5d | 2013-12-11 | 2013-12-11 | 4 | 0.5d | 0d |  |
| 6 | 1.4 | Dismantling | 0.5d | 2013-12-11 | 2013-12-11 | 5 | 0.5d | 0d |  |
| 7 | 1.5 | Exacavation | 0.5d | 2013-12-12 | 2013-12-12 | 6 | 0.5d | 0d |  |
| 8 | 1.6 | PCC | 0.5d | 2013-12-12 | 2013-12-12 | 7 | 0.5d | 0d |  |
| 9 | 1.7 | RCC | 0.5d | 2013-12-13 | 2013-12-13 | 8 | 0.5d | 0d |  |
| 10 | 1.8 | Anolyte tank and its pump positioning | 0.5d | 2013-12-13 | 2013-12-13 | 9 | 0.5d | 0d |  |
| 11 | 1.9 | Catholyte tank and its pump positioning | 1d | 2013-12-16 | 2013-12-16 | 10 | 0.5d | 0d |  |
| 12 | 1.10 | Erection of motor and cable | 1d | 2013-12-17 | 2013-12-17 | 11 | 0.5d | 0d |  |
| 13 | 1.11 | Pipe line laying and erection | 1d | 2013-12-18 | 2013-12-18 | 12 | 0.5d | 0d |  |
| 14 | 1.12 | Process line Hook up | 1d | 2013-12-19 | 2013-12-19 | 13 | 0.5d | 0d |  |
| 15 | 1.13 | Utility line hook up | 1d | 2013-12-20 | 2013-12-20 | 14 | 0.5d | 0d |  |
| 16 | 1.14 | Cleaning and Flushing of tanks and pipe lines | 1d | 2013-12-23 | 2013-12-23 | 15 | 0.5d | 0d |  |
| 17 | 2 | Pre-commissioning | 1d | 2013-12-24 | 2013-12-24 | 16 | 0.5d | 0d |  |
| 18 | 3 | Commissioning | 5d | 2013-12-25 | 2013-12-31 | 17 | 0.5d |  |  |
| 20 | 4 | **Hydrogen Handling system** | 11d | 2013-12-10 | 2013-12-24 |  | 0.5d |  |  |
| 21 | 4.1 | Removal of Product cooler and catholyte Heater | 0.5d | 2013-12-10 | 2013-12-10 |  | 0.5d | 0d | start no earlier than 2013-12-10 |
| 22 | 4.2 | Modification of Civil Bed - Hydrogen Vent stack | 0.5d | 2013-12-10 | 2013-12-10 | 21 | 0.5d | 0d |  |
| 23 | 4.3 | Hydrogen gas vent stack positioning | 1d | 2013-12-11 | 2013-12-11 | 22 | 0.5d | 0d |  |
| 24 | 4.4 | Chlorine seal pot positioning | 1d | 2013-12-12 | 2013-12-12 | 23 | 0.5d | 0d |  |
| 25 | 4.5 | E 201 and E 203 Positioning | 1d | 2013-12-13 | 2013-12-13 | 24 | 0.5d | 0d |  |
| 26 | 4.6 | Pipe line laying and erection | 4d | 2013-12-16 | 2013-12-19 | 25 | 0.5d | 0d |  |
| 27 | 4.7 | Process line Hook up | 1d | 2013-12-20 | 2013-12-20 | 26 | 0.5d | 0d |  |
| 28 | 4.8 | Utility line hook up | 1d | 2013-12-23 | 2013-12-23 | 27 | 0.5d | 0d |  |
| 29 | 4.9 | Cleaning and Flushing of tanks and pipe lines | 1d | 2013-12-24 | 2013-12-24 | 28 | 0.5d | 0d |  |
| 30 | 5 | Commissioning | 5d | 2013-12-25 | 2013-12-31 | 29 | 0.5d |  |  |

| ID | WBS | Task | Duration | Start | Finish | Predecessors | Total slack | Free slack | Constraint |
| --- | --- | --- | --- | --- | --- | --- | --- | --- | --- |
| 32 | 6 | **Chlorine and Hydrogen Handling** | 10d | 2013-12-10 | 2013-12-23 |  | 0.5d |  |  |
| 33 | 6.1 | Process line hook up | 5d | 2013-12-10 | 2013-12-16 |  | 0.5d | 0d | start no earlier than 2013-12-10 |
| 34 | 6.2 | Utility line hook up | 5d | 2013-12-17 | 2013-12-23 | 33 | 0.5d | 0d |  |
| 35 | 7 | Precommissioning | 1d | 2013-12-24 | 2013-12-24 | 34 | 0.5d | 0d |  |
| 36 | 8 | Commissioning | 5d | 2013-12-25 | 2013-12-31 | 35 | 0.5d |  |  |
| 38 | 9 | **Dry chlorine section** | 11d | 2013-12-10 | 2013-12-24 |  | 0.5d |  |  |
| 39 | 9.1 | **Drying tower system** | 11d | 2013-12-10 | 2013-12-24 |  | 0.5d |  |  |
| 40 | 9.1.1 | Removal of Old drying tower and its connected lines | 0.5d | 2013-12-10 | 2013-12-10 |  | 0.5d | 0d | start no earlier than 2013-12-10 |
| 41 | 9.1.2 | Drying tower circulation pumps | 0.5d | 2013-12-10 | 2013-12-10 | 40 | 0.5d | 0d |  |
| 42 | 9.1.3 | Plate Heat Exchanger | 0.5d | 2013-12-11 | 2013-12-11 | 41 | 0.5d | 0d |  |
| 43 | 9.1.4 | Positioning of new drying tower | 0.5d | 2013-12-11 | 2013-12-11 | 42 | 0.5d | 0d |  |
| 44 | 9.1.5 | Positiong of tunnel tray | 0.5d | 2013-12-12 | 2013-12-12 | 43 | 0.5d | 0d |  |
| 45 | 9.1.6 | Filling of packing material | 0.5d | 2013-12-12 | 2013-12-12 | 44 | 0.5d | 0d |  |
| 46 | 9.1.7 | Leak testing of Drying Tower | 1d | 2013-12-13 | 2013-12-13 | 45 | 0.5d | 0d |  |
| 47 | 9.1.8 | Modification of Civil Bed - Drying tower circulation pumps | 1d | 2013-12-16 | 2013-12-16 | 46 | 0.5d | 0d |  |
| 48 | 9.1.9 | Positioning of Acid Circulation pumps | 1d | 2013-12-17 | 2013-12-17 | 47 | 0.5d | 0d |  |
| 49 | 9.1.10 | Positioning of Heat Exchanger - Drying Tower | 1d | 2013-12-18 | 2013-12-18 | 48 | 0.5d | 0d |  |
| 50 | 9.1.11 | Pipe line laying and erection | 1d | 2013-12-19 | 2013-12-19 | 49 | 0.5d | 0d |  |
| 51 | 9.1.12 | Process line Hook up | 1d | 2013-12-20 | 2013-12-20 | 50 | 0.5d | 0d |  |
| 52 | 9.1.13 | Utility line hook up | 1d | 2013-12-23 | 2013-12-23 | 51 | 0.5d | 0d |  |
| 53 | 9.1.14 | Cleaning and Flushing of tanks and pipe lines | 1d | 2013-12-24 | 2013-12-24 | 52 | 0.5d | 0d |  |
| 54 | 10 | Commissioning | 5d | 2013-12-25 | 2013-12-31 | 53 | 0.5d |  |  |
| 56 | 11 | **Chlorine compressor system** | 11.5d | 2013-12-10 | 2013-12-25 |  | 0d |  |  |
| 57 | 11.1 | Removal of Old Chlorine compressor and its connected lines | 0.5d | 2013-12-10 | 2013-12-10 |  | 0d |  | start no earlier than 2013-12-10 |
| 58 | 11.2 | Suction Knock out drum and Delivery separator | 0.5d | 2013-12-10 | 2013-12-10 | 57 | 0d |  |  |
| 59 | 11.3 | Chlorine compressor Heat Exchanger | 0.5d | 2013-12-11 | 2013-12-11 | 58 | 0d |  |  |
| 60 | 11.4 | Modification of Civil Bed - Chlorine compressor | 0.5d | 2013-12-11 | 2013-12-11 | 59 | 0d |  |  |
| 61 | 11.5 | Civil foundation for suction Knock out drum and Delivery separator | 0.5d | 2013-12-12 | 2013-12-12 | 60 | 0d |  |  |
| 62 | 11.6 | Positioning of New chlorine compressor | 1d | 2013-12-12 | 2013-12-13 | 61 | 0d |  |  |
| 63 | 11.7 | Positioning of suction Knock out drum, Delivery separator and Heat Exchanger | 1d | 2013-12-13 | 2013-12-16 | 62 | 0d |  |  |
| 64 | 11.8 | Pipe line laying and erection | 2d | 2013-12-16 | 2013-12-18 | 63 | 0d |  |  |
| 65 | 11.9 | Process line Hook up | 2d | 2013-12-18 | 2013-12-20 | 64 | 0d |  |  |
| 66 | 11.10 | Utility line hook up | 1d | 2013-12-20 | 2013-12-23 | 65 | 0d |  |  |
| 67 | 11.11 | Cleaning and Flushing of tanks and pipe lines | 2d | 2013-12-23 | 2013-12-25 | 66 | 0d |  |  |
| 68 | 12 | Commissioning | 5d | 2013-12-25 | 2014-01-01 | 67 | 0d |  |  |

| ID | WBS | Task | Duration | Start | Finish | Predecessors | Total slack | Free slack | Constraint |
| --- | --- | --- | --- | --- | --- | --- | --- | --- | --- |
| 70 | 13 | **Chilled water System** | 10d | 2013-12-10 | 2013-12-23 |  | 0.5d |  |  |
| 71 | 13.1 | Removal of Old chilled water pumps | 1d | 2013-12-10 | 2013-12-10 |  | 0.5d | 0d | start no earlier than 2013-12-10 |
| 72 | 13.2 | Modification of Civil Bed - Chilled water pump | 1d | 2013-12-11 | 2013-12-11 | 71 | 0.5d | 0d |  |
| 73 | 13.3 | Positioning of New chilled water pump | 2d | 2013-12-12 | 2013-12-13 | 72 | 0.5d | 0d |  |
| 74 | 13.4 | Intercconnecting chilled water system | 2d | 2013-12-16 | 2013-12-17 | 73 | 0.5d | 0d |  |
| 75 | 13.5 | Pipe line laying and Erection | 2d | 2013-12-18 | 2013-12-19 | 74 | 0.5d | 0d |  |
| 76 | 13.6 | Utility line Hook up | 2d | 2013-12-20 | 2013-12-23 | 75 | 0.5d | 0d |  |
| 77 | 14 | Precommissioning | 1d | 2013-12-24 | 2013-12-24 | 76 | 0.5d | 0d |  |
| 78 | 15 | Commissioning | 5d | 2013-12-25 | 2013-12-31 | 77 | 0.5d |  |  |
| 80 | 16 | **Primary Brine** | 10d | 2013-12-10 | 2013-12-23 |  | 0.5d |  |  |
| 81 | 16.1 | Draining and Cleaning of Reactors | 1d | 2013-12-10 | 2013-12-10 |  | 0.5d | 0d | start no earlier than 2013-12-10 |
| 82 | 16.2 | Lifting of reactors to suit clarifier inlet | 2d | 2013-12-11 | 2013-12-12 | 81 | 0.5d | 0d |  |
| 83 | 16.3 | Connecting FRP trough from reactor to clarifier | 2d | 2013-12-13 | 2013-12-16 | 82 | 0.5d | 0d |  |
| 84 | 16.4 | Hooking up of Clear Brine line to Anthracite filter | 1d | 2013-12-17 | 2013-12-17 | 83 | 0.5d | 0d |  |
| 85 | 16.5 | Hooking up of Filtered Brine to UF filter | 1d | 2013-12-18 | 2013-12-18 | 84 | 0.5d | 0d |  |
| 86 | 16.6 | Hooking up of Reagents Dosing line | 1d | 2013-12-19 | 2013-12-19 | 85 | 0.5d | 0d |  |
| 87 | 16.7 | Utility line Hook up | 2d | 2013-12-20 | 2013-12-23 | 86 | 0.5d | 0d | finish no earlier than 2013-08-01 |
| 88 | 17 | Precommissioning | 1d | 2013-12-24 | 2013-12-24 | 87 | 0.5d | 0d |  |
| 89 | 18 | Commissioning | 5d | 2013-12-25 | 2013-12-31 | 88 | 0.5d |  |  |
| 91 | 19 | **Secondary Brine** | 10d | 2013-12-10 | 2013-12-23 |  | 0.5d |  |  |
| 92 | 19.1 | Removal of polished Brine pumps and its connected lines | 0.5d | 2013-12-10 | 2013-12-10 |  | 0.5d | 0d | start no earlier than 2013-12-10 |
| 93 | 19.2 | Removal of pure Brine pumps and its connected lines | 0.5d | 2013-12-10 | 2013-12-10 | 92 | 0.5d | 0d |  |
| 94 | 19.3 | Modification of Polished Brine pump Bed and Pure Brine pump bed | 1d | 2013-12-11 | 2013-12-11 | 93 | 0.5d | 0d |  |
| 95 | 19.4 | Positioning of polished and Pure Brine pumps | 1d | 2013-12-12 | 2013-12-12 | 94 | 0.5d | 0d |  |
| 96 | 19.5 | Hook up with New storage tank | 1d | 2013-12-13 | 2013-12-13 | 95 | 0.5d | 0d |  |
| 97 | 19.6 | Modification of Existing of Lines at IEC | 1d | 2013-12-16 | 2013-12-16 | 96 | 0.5d | 0d |  |
| 98 | 19.7 | Pipe line laying and Erection | 1d | 2013-12-17 | 2013-12-17 | 97 | 0.5d | 0d |  |
| 99 | 19.8 | Connection of New pipe lines with Existing system | 1d | 2013-12-18 | 2013-12-18 | 98 | 0.5d | 0d |  |
| 100 | 19.9 | Regeneration cycle checking for IEC | 1d | 2013-12-19 | 2013-12-19 | 99 | 0.5d | 0d |  |
| 101 | 19.10 | Process lines hook up | 1d | 2013-12-20 | 2013-12-20 | 100 | 0.5d | 0d |  |
| 102 | 19.11 | Utility lines hook up | 1d | 2013-12-23 | 2013-12-23 | 101 | 0.5d | 0d |  |
| 103 | 20 | Precommissioning | 1d | 2013-12-24 | 2013-12-24 | 102 | 0.5d | 0d |  |
| 104 | 21 | Commissioning | 5d | 2013-12-25 | 2013-12-31 | 103 | 0.5d |  |  |

| ID | WBS | Task | Duration | Start | Finish | Predecessors | Total slack | Free slack | Constraint |
| --- | --- | --- | --- | --- | --- | --- | --- | --- | --- |
| 106 | 22 | **Hypo plant** | 11d | 2013-12-10 | 2013-12-24 |  | 0.5d |  |  |
| 107 | 22.1 | **Acidic wash Tower System** | 11d | 2013-12-10 | 2013-12-24 |  | 0.5d |  |  |
| 108 | 22.1.1 | Removal old acidic wash tower | 1d | 2013-12-10 | 2013-12-10 |  | 0.5d | 0d | start no earlier than 2013-12-10 |
| 109 | 22.1.2 | Removal old acidic wash tower pumps | 1d | 2013-12-11 | 2013-12-11 | 108 | 0.5d | 0d |  |
| 110 | 22.1.3 | Modification of Civil Bed - tower and pumps | 1d | 2013-12-12 | 2013-12-12 | 109 | 0.5d | 0d |  |
| 111 | 22.1.4 | Positioning new acidic wash tower and pumps | 1d | 2013-12-13 | 2013-12-13 | 110 | 0.5d | 0d |  |
| 112 | 22.1.5 | Pipe line laying and Erection | 1d | 2013-12-16 | 2013-12-16 | 111 | 0.5d | 0d |  |
| 113 | 22.1.6 | Leak testing and commissioning | 1d | 2013-12-17 | 2013-12-17 | 112 | 0.5d | 0d |  |
| 114 | 22.1.7 | Caustic Over Head System | 1d | 2013-12-18 | 2013-12-18 | 113 | 0.5d | 0d |  |
| 115 | 22.1.8 | Removal old caustic over head tank | 1d | 2013-12-19 | 2013-12-19 | 114 | 0.5d | 0d |  |
| 116 | 22.1.9 | Strengthening the structurals | 1d | 2013-12-20 | 2013-12-20 | 115 | 0.5d | 0d |  |
| 117 | 22.1.10 | Positioning new caustic overhead tank wash tower | 1d | 2013-12-23 | 2013-12-23 | 116 | 0.5d | 0d |  |
| 118 | 22.1.11 | Pipe line laying and Erection | 1d | 2013-12-24 | 2013-12-24 | 117 | 0.5d | 0d |  |
| 119 | 23 | Precommissioning | 5d | 2013-12-25 | 2013-12-31 | 118 | 0.5d |  |  |
| 121 | 24 | **Hypo Circulation system** | 9.5d | 2013-12-10 | 2013-12-23 |  | 6d |  |  |
| 122 | 24.1 | Removal of Hypo heatexchangers | 0.5d | 2013-12-10 | 2013-12-10 |  | 6d | 0d | start no earlier than 2013-12-10 |
| 123 | 24.2 | Positioning of New Heat exchangers | 0.5d | 2013-12-10 | 2013-12-10 | 122 | 6d | 0d |  |
| 124 | 24.3 | Removal of Hypo circulation pumps | 0.5d | 2013-12-11 | 2013-12-11 | 123 | 6d | 0d |  |
| 125 | 24.4 | Civil bed modification | 0.5d | 2013-12-11 | 2013-12-11 | 124 | 6d | 0d |  |
| 126 | 24.5 | Positioning of new Hypo Pumps | 0.5d | 2013-12-12 | 2013-12-12 | 125 | 6d | 0d |  |
| 127 | 24.6 | Pipe line laying and Erection | 5d | 2013-12-12 | 2013-12-19 | 126 | 6d | 0d |  |
| 128 | 24.7 | Utility line Hook up | 2d | 2013-12-19 | 2013-12-23 | 127 | 6d | 0d |  |
| 129 | 25 | Precommissioning | 1d | 2013-12-23 | 2013-12-24 | 128 | 6d |  |  |
| 130 | 26 | Commissioning | 5d | 2013-12-25 | 2013-12-31 |  | 0.5d |  | start no earlier than 2013-12-25 |

| ID | WBS | Task | Duration | Start | Finish | Predecessors | Total slack | Free slack | Constraint |
| --- | --- | --- | --- | --- | --- | --- | --- | --- | --- |
| 132 | 27 | **Guard tower Hypo circulation system** | 9.5d | 2013-12-10 | 2013-12-23 |  | 1d |  |  |
| 133 | 27.1 | Removal of Hypo heatexchangers | 0.5d | 2013-12-10 | 2013-12-10 |  | 1d | 0d | start no earlier than 2013-12-10 |
| 134 | 27.2 | Positioning of New Heat exchangers | 0.5d | 2013-12-10 | 2013-12-10 | 133 | 1d | 0d | start no earlier than 2013-12-10 |
| 135 | 27.3 | Removal of Hypo circulation pumps | 0.5d | 2013-12-11 | 2013-12-11 | 134 | 1d | 0d | start no earlier than 2013-12-11 |
| 136 | 27.4 | Civil bed modification | 0.5d | 2013-12-11 | 2013-12-11 | 135 | 1d | 0d | start no earlier than 2013-12-11 |
| 137 | 27.5 | Positioning of new Hypo Pumps | 0.5d | 2013-12-12 | 2013-12-12 | 136 | 1d | 0d | start no earlier than 2013-12-12 |
| 138 | 27.6 | Pipe line laying and Erection | 5d | 2013-12-12 | 2013-12-19 | 137 | 1d | 0d | start no earlier than 2013-12-12 |
| 139 | 27.7 | Utility line Hook up | 2d | 2013-12-19 | 2013-12-23 | 138 | 1d | 0d | start no earlier than 2013-12-19 |
| 140 | 28 | Precommissioning | 1d | 2013-12-23 | 2013-12-24 | 139 | 1d | 0.5d | start no earlier than 2013-12-23 |
| 141 | 29 | Commissioning | 5d | 2013-12-25 | 2013-12-31 | 140 | 0.5d |  | start no earlier than 2013-12-25 |
| 143 | 30 | **Hypo Blower** | 6d | 2013-12-16 | 2013-12-23 |  | 0.5d |  |  |
| 144 | 30.1 | Removal of Old Hypo Blower - one no | 1d | 2013-12-16 | 2013-12-16 |  | 0.5d | 0d | start no earlier than 2013-12-16 |
| 145 | 30.2 | Modification of Civil Bed for Hypo Blower | 1d | 2013-12-17 | 2013-12-17 | 144 | 0.5d | 0d |  |
| 146 | 30.3 | Positioning of Hypo Blower | 1d | 2013-12-18 | 2013-12-18 | 145 | 0.5d | 0d |  |
| 147 | 30.4 | Pipe line laying and Erection | 1d | 2013-12-19 | 2013-12-19 | 146 | 0.5d | 0d |  |
| 148 | 30.5 | Process lines hook up | 1d | 2013-12-20 | 2013-12-20 | 147 | 0.5d | 0d |  |
| 149 | 30.6 | Utility lines hook up | 1d | 2013-12-23 | 2013-12-23 | 148 | 0.5d | 0d |  |
| 150 | 31 | Precommissioning | 1d | 2013-12-24 | 2013-12-24 | 149 | 0.5d | 0d |  |
| 151 | 32 | Commissioning | 5d | 2013-12-25 | 2013-12-31 | 150 | 0.5d |  |  |
