# Brine Plant

Schedule from MS Project, 2012-08-04 to 2014-01-13.
CAL

## Calendars

- Pry Brine: Mon-Fri 08:00-12:00, 13:00-17:00; Sat-Sun off. Exceptions (off unless hours are given): 2012-08-04 08:00-12:00, 13:00-17:00, 2012-08-07 08:00-12:00, 13:00-17:00, 2012-08-11 08:00-12:00, 13:00-17:00, 2012-08-18 08:00-12:00, 13:00-17:00, 2012-08-25 08:00-12:00, 13:00-17:00, 2012-09-01 08:00-12:00, 13:00-17:00, 2012-09-04 08:00-12:00, 13:00-17:00, 2012-09-08 08:00-12:00, 13:00-17:00, 2012-09-15 08:00-12:00, 13:00-17:00, 2012-09-22 08:00-12:00, 13:00-17:00, 2012-09-29 08:00-12:00, 13:00-17:00, 2012-10-06 08:00-12:00, 13:00-17:00, 2012-10-13 08:00-12:00, 13:00-17:00, 2012-10-20 08:00-12:00, 13:00-17:00, 2012-10-27 08:00-12:00, 13:00-17:00, 2012-11-03 08:00-12:00, 13:00-17:00, 2012-11-10 08:00-12:00, 13:00-17:00, 2012-11-17 08:00-12:00, 13:00-17:00, 2012-11-24 08:00-12:00, 13:00-17:00, 2012-12-01 08:00-12:00, 13:00-17:00, 2012-12-08 08:00-12:00, 13:00-17:00, 2012-12-15 08:00-12:00, 13:00-17:00, 2012-12-22 08:00-12:00, 13:00-17:00, 2012-12-29 08:00-12:00, 13:00-17:00, 2013-01-05 08:00-12:00, 13:00-17:00, 2013-01-12 08:00-12:00, 13:00-17:00, 2013-01-19 08:00-12:00, 13:00-17:00, 2013-01-26 08:00-12:00, 13:00-17:00, 2013-02-02 08:00-12:00, 13:00-17:00, 2013-02-09 08:00-12:00, 13:00-17:00, 2013-02-16 08:00-12:00, 13:00-17:00, 2013-02-23 08:00-12:00, 13:00-17:00, 2013-03-02 08:00-12:00, 13:00-17:00, 2013-03-09 08:00-12:00, 13:00-17:00, 2013-03-16 08:00-12:00, 13:00-17:00, 2013-03-23 08:00-12:00, 13:00-17:00, 2013-03-30 08:00-12:00, 13:00-17:00, 2013-04-06 08:00-12:00, 13:00-17:00, 2013-04-13 08:00-12:00, 13:00-17:00, 2013-04-20 08:00-12:00, 13:00-17:00, 2013-04-27 08:00-12:00, 13:00-17:00, 2013-05-04 08:00-12:00, 13:00-17:00, 2013-05-11 08:00-12:00, 13:00-17:00, 2013-05-18 08:00-12:00, 13:00-17:00, 2013-05-25 08:00-12:00, 13:00-17:00, 2013-06-01 08:00-12:00, 13:00-17:00, 2013-06-08 08:00-12:00, 13:00-17:00, 2013-06-15 08:00-12:00, 13:00-17:00, 2013-06-22 08:00-12:00, 13:00-17:00, 2013-06-29 08:00-12:00, 13:00-17:00, 2013-07-06 08:00-12:00, 13:00-17:00, 2013-07-13 08:00-12:00, 13:00-17:00, 2013-07-20 08:00-12:00, 13:00-17:00, 2013-07-27 08:00-12:00, 13:00-17:00, 2013-08-03 08:00-12:00, 13:00-17:00, 2013-08-10 08:00-12:00, 13:00-17:00, 2013-08-17 08:00-12:00, 13:00-17:00, 2013-08-24 08:00-12:00, 13:00-17:00, 2013-08-31 08:00-12:00, 13:00-17:00, 2013-09-07 08:00-12:00, 13:00-17:00, 2013-09-14 08:00-12:00, 13:00-17:00, 2013-09-21 08:00-12:00, 13:00-17:00, 2013-09-28 08:00-12:00, 13:00-17:00, 2013-10-05 08:00-12:00, 13:00-17:00, 2013-10-12 08:00-12:00, 13:00-17:00, 2013-10-19 08:00-12:00, 13:00-17:00, 2013-10-26 08:00-12:00, 13:00-17:00, 2013-11-02 08:00-12:00, 13:00-17:00, 2013-11-09 08:00-12:00, 13:00-17:00, 2013-11-16 08:00-12:00, 13:00-17:00, 2013-11-23 08:00-12:00, 13:00-17:00, 2013-11-30 08:00-12:00, 13:00-17:00, 2013-12-07 08:00-12:00, 13:00-17:00, 2013-12-14 08:00-12:00, 13:00-17:00, 2013-12-21 08:00-12:00, 13:00-17:00, 2013-12-28 08:00-12:00, 13:00-17:00, 2014-01-04 08:00-12:00, 13:00-17:00, 2014-01-11 08:00-12:00, 13:00-17:00.

## Schedule

| ID | WBS | Task | Duration | Start | Finish | Predecessors | Total slack | Free slack | Constraint |
| --- | --- | --- | --- | --- | --- | --- | --- | --- | --- |
| 1 | 1 | **01-Py-Brine** | 452d | 2012-08-04 | 2014-01-13 |  | 0d |  |  |
| 2 | 1.1 | **1. Critical Equipment Ordering** | 112d | 2012-08-04 | 2012-12-12 |  | 76d |  |  |
| 3 | 1.1.1 | Clarifier | 112d | 2012-08-04 | 2012-12-12 |  | 85d | 22d | start no earlier than 2012-08-04 |
| 4 | 1.2 | Saturator | 45d | 2013-01-08 | 2013-02-28 | 3 | 54d | 3d | finish no earlier than 2013-02-28 |
| 5 | 1.3 | CBT tank | 45d | 2013-02-02 | 2013-03-26 | 3 | 105d | 0d | finish no earlier than 2013-03-26 |
| 6 | 1.4 | Brine pumps | 60d | 2013-01-28 | 2013-04-06 | 3 | 158d | 54d | start no earlier than 2013-01-28 |
| 7 | 1.5 | Filter press | 145d | 2012-12-12 | 2013-05-29 |  | 104d | 0d | finish no earlier than 2013-05-29 |
| 8 | 1.6 | BOQ receipt from M/s Protech | 91d | 2013-04-15 | 2013-07-29 |  | 144d |  | finish no earlier than 2013-07-29 |
| 9 | 1.7 | Structural | 45d | 2013-07-01 | 2013-08-21 |  | 124d |  | start no earlier than 2013-07-01 |
| 10 | 1.8 | Pipings and fittings | 45d | 2013-07-01 | 2013-08-21 |  | 124d |  | start no earlier than 2013-07-01 |
| 11 | 1.9 | Valves | 42d | 2013-04-08 | 2013-05-25 |  | 109d | 0d | finish no earlier than 2013-05-25 |
| 12 | 1.10 | MCC | 61d | 2013-05-07 | 2013-07-16 |  | 49d | 0d | finish no earlier than 2013-07-16 |
| 13 | 1.11 | Cables and Cable tray | 20d | 2013-08-09 | 2013-08-31 | 12 | 99d | 6d | finish no earlier than 2013-08-31 |
| 14 | 1.12 | Motors | 45d | 2013-04-20 | 2013-06-11 |  | 130d | 0d | finish no earlier than 2013-06-11 |
| 15 | 1.13 | Light fittings | 20d | 2013-08-06 | 2013-08-28 | 12 | 32d | 0d | start no earlier than 2013-08-06 |
| 16 | 1.14 | Instruments | 129d | 2013-03-01 | 2013-07-29 |  | 93d | 0d | finish no earlier than 2013-07-29 |
| 17 | 1.15 | **3. Other equipment Receipts** | 206d | 2013-03-05 | 2013-10-30 |  | 51d |  |  |
| 18 | 1.15.1 | Saturator | 206d | 2013-03-05 | 2013-10-30 | 4 | 51d | 0d | finish no earlier than 2013-10-30 |
| 19 | 1.15.2 | Clear Brine Tank | 146d | 2013-03-27 | 2013-09-12 | 5 | 105d |  | start no earlier than 2013-03-27 |
| 20 | 1.15.3 | Brine pumps | 83d | 2013-06-10 | 2013-09-13 | 6 | 104d |  | start no earlier than 2013-06-10 |
| 21 | 1.15.4 | Filter press | 92d | 2013-05-30 | 2013-09-13 | 7 | 104d |  | start no earlier than 2013-05-30 |
| 22 | 1.15.5 | Structurals | 25d | 2013-08-09 | 2013-09-06 |  | 110d |  | finish no earlier than 2013-09-06 |
| 23 | 1.15.6 | Pipings and fittings | 25d | 2013-08-06 | 2013-09-03 |  | 113d |  | start no earlier than 2013-08-06 |
| 24 | 1.15.7 | Valves | 90d | 2013-05-27 | 2013-09-07 | 11 | 109d |  |  |
| 25 | 1.15.8 | MCC | 70d | 2013-07-17 | 2013-10-05 | 12 | 85d |  |  |
| 26 | 1.15.9 | Cable and Cable tray | 16d | 2013-09-09 | 2013-09-26 | 13 | 93d |  | start no earlier than 2013-09-09 |
| 27 | 1.15.10 | Motors | 55d | 2013-06-12 | 2013-08-14 | 14 | 130d |  | start no earlier than 2013-06-12 |
| 28 | 1.15.11 | Light fittings | 25d | 2013-08-29 | 2013-09-26 | 15 | 32d | 4d | finish no earlier than 2013-09-26 |
| 29 | 1.15.12 | Instruments | 51d | 2013-07-30 | 2013-09-26 | 16 | 93d |  | finish no earlier than 2013-09-26 |

| ID | WBS | Task | Duration | Start | Finish | Predecessors | Total slack | Free slack | Constraint |
| --- | --- | --- | --- | --- | --- | --- | --- | --- | --- |
| 30 | 1.16 | **4. CIVIL and Erection** | 250d | 2013-03-28 | 2014-01-13 |  | 0d |  |  |
| 31 | 1.16.1 | **4.1 Saturator** | 39d | 2013-10-01 | 2013-11-14 |  | 51d |  |  |
| 32 | 1.16.1.1 | a) Dismantling, excvation, PCC, Reinforcement work | 26d | 2013-10-01 | 2013-10-30 |  | 59d | 0d | start no earlier than 2013-10-01 |
| 33 | 1.16.1.2 | c) Foundation | 5d | 2013-10-31 | 2013-11-05 | 32 | 59d |  | start no earlier than 2013-08-06 |
| 34 | 1.16.1.3 | d)Receipt of Saturator | 10d | 2013-10-31 | 2013-11-11 | 18 | 51d | 0d |  |
| 35 | 1.16.1.4 | Positioning of saturator | 1d | 2013-11-12 | 2013-11-12 | 34 | 51d | 0d |  |
| 36 | 1.16.1.5 | e) Filling and Leak Testing | 2d | 2013-11-13 | 2013-11-14 | 35 | 51d |  |  |
| 37 | 1.16.2 | **4.2 Reactor** | 6d | 2013-12-10 | 2013-12-16 |  | 24d |  |  |
| 38 | 1.16.2.1 | **Reactor tank elevation correction** | 6d | 2013-12-10 | 2013-12-16 |  | 24d |  |  |
| 39 | 1.16.2.1.1 | Draining and Cleaning of Reactors | 1d | 2013-12-10 | 2013-12-10 |  | 24d | 0d | start no earlier than 2013-12-10 |
| 40 | 1.16.2.1.2 | Lifting of reactors to suit clarifier inlet | 3d | 2013-12-11 | 2013-12-13 | 39 | 24d | 0d |  |
| 41 | 1.16.2.1.3 | Connecting FRP trough from reactor to clarifier | 2d | 2013-12-14 | 2013-12-16 | 40 | 24d |  |  |
| 42 | 1.16.2.1.4 | Chemical Dosing Piping | 2d | 2013-12-14 | 2013-12-16 | 40 | 24d |  |  |
| 43 | 1.16.3 | **4.3 New Clarifier** | 250d | 2013-03-28 | 2014-01-13 |  | 0d |  |  |
| 44 | 1.16.3.1 | Dismantling | 10d | 2013-03-28 | 2013-04-08 |  | 0d |  | start no earlier than 2013-03-28 |
| 45 | 1.16.3.2 | Excavation | 10d | 2013-04-09 | 2013-04-19 | 44 | 0d |  |  |
| 46 | 1.16.3.3 | Footings and column construction | 75d | 2013-04-20 | 2013-07-16 | 45 | 0d |  |  |
| 47 | 1.16.3.4 | Roof Slab construction | 25d | 2013-07-17 | 2013-08-14 | 46 | 0d |  |  |
| 48 | 1.16.3.5 | Curing | 15d | 2013-08-15 | 2013-08-31 | 47 | 0d |  |  |
| 49 | 1.16.3.6 | Deshuttering | 10d | 2013-09-02 | 2013-09-12 | 48 | 23d | 0d |  |
| 50 | 1.16.3.7 | Mastic Lining | 10d | 2013-09-02 | 2013-09-12 | 48 | 0d |  | start no earlier than 2013-08-28 |
| 51 | 1.16.3.8 | Plinth Beam construction | 5d | 2013-09-13 | 2013-09-18 | 49 | 100d |  |  |
| 52 | 1.16.3.9 | Filling & consolidation | 30d | 2013-09-13 | 2013-10-17 | 49 | 75d |  |  |
| 53 | 1.16.3.10 | Bottom cone & shell fabrication | 30d | 2013-09-13 | 2013-10-17 | 50 | 0d |  |  |
| 54 | 1.16.3.11 | Water filling and testing | 10d | 2013-10-18 | 2013-10-29 | 53 | 0d |  |  |
| 55 | 1.16.3.12 | Water Draining | 5d | 2013-10-30 | 2013-11-04 | 54 | 40d | 0d |  |
| 56 | 1.16.3.13 | Walk way erection | 10d | 2013-11-05 | 2013-11-15 | 55 | 50d |  |  |
| 57 | 1.16.3.14 | Super structure erection | 5d | 2013-11-05 | 2013-11-09 | 55 | 55d |  |  |
| 58 | 1.16.3.15 | Sand blasting, Rubber lining and Spark test | 45d | 2013-10-30 | 2013-12-20 | 54 | 0d |  |  |
| 59 | 1.16.3.16 | Raker arm erection | 10d | 2013-12-21 | 2014-01-01 | 55, 58 | 0d |  |  |
| 60 | 1.16.3.17 | Filling and Leak testing | 10d | 2014-01-02 | 2014-01-13 | 59 | 0d |  |  |

| ID | WBS | Task | Duration | Start | Finish | Predecessors | Total slack | Free slack | Constraint |
| --- | --- | --- | --- | --- | --- | --- | --- | --- | --- |
| 61 | 1.16.4 | **4.4 Tanks and Pumps (CBT& UF feed Tank & Pump )** | 36d | 2013-09-13 | 2013-10-24 |  | 23d |  |  |
| 62 | 1.16.4.1 | Area clearing | 5d | 2013-09-13 | 2013-09-18 | 49 | 23d | 0d | start no earlier than 2013-08-19 |
| 63 | 1.16.4.2 | Dismantling | 5d | 2013-09-19 | 2013-09-24 | 62 | 23d | 0d |  |
| 64 | 1.16.4.3 | Excavation | 5d | 2013-09-25 | 2013-09-30 | 63 | 23d | 0d |  |
| 65 | 1.16.4.4 | Bed construction | 10d | 2013-10-01 | 2013-10-11 | 64 | 23d | 0d |  |
| 66 | 1.16.4.5 | Curing | 7d | 2013-10-12 | 2013-10-19 | 65 | 23d | 0d |  |
| 67 | 1.16.4.6 | Receipt and Positioning of storage tanks | 1d | 2013-10-21 | 2013-10-21 | 66 | 23d | 0d |  |
| 68 | 1.16.4.7 | Receipt and Positioning of Pumps | 1d | 2013-10-22 | 2013-10-22 | 67 | 23d | 0d |  |
| 69 | 1.16.4.8 | Filling and leak testing | 2d | 2013-10-23 | 2013-10-24 | 68 | 69d |  |  |
| 70 | 1.17 | **5. Erection of structurals, pipes, fittings, Electrical equipment and Instruments** | 100d | 2013-08-05 | 2013-11-28 |  | 21d | 0d |  |
| 71 | 1.17.1 | Erection contract Finalization | 20d | 2013-08-05 | 2013-08-27 |  | 101d |  | start no earlier than 2013-08-05 |
| 72 | 1.17.2 | Piping Layout | 20d | 2013-08-05 | 2013-08-27 |  | 21d | 0d | start no earlier than 2013-08-05 |
| 73 | 1.17.3 | Mobilization of erection material | 15d | 2013-08-28 | 2013-09-13 | 72 | 21d | 0d |  |
| 74 | 1.17.4 | Pipe rack and supports | 30d | 2013-09-14 | 2013-10-18 | 73 | 21d | 0d |  |
| 75 | 1.17.5 | Process Piping | 30d | 2013-10-23 | 2013-11-26 | 68 | 23d |  | start no earlier than 2013-10-10 |
| 76 | 1.17.6 | Utility Piping | 30d | 2013-10-10 | 2013-11-13 |  | 34d |  | start no earlier than 2013-10-10 |
| 77 | 1.17.7 | Erection of cable tray ( Electrical and Instrument ) | 10d | 2013-10-19 | 2013-10-30 | 74 | 21d | 0d | start no earlier than 2013-10-02 |
| 78 | 1.17.8 | Laying of cables (Electrical and Instrument) | 25d | 2013-10-31 | 2013-11-28 | 77 | 21d |  | start no earlier than 2013-10-02 |
| 79 | 1.17.9 | Erection of instruments , Testing | 43d | 2013-10-02 | 2013-11-20 | 73 | 28d |  | start no earlier than 2013-10-02 |
| 80 | 1.17.10 | Erection of MCC and Motors | 43d | 2013-10-02 | 2013-11-20 | 73 | 28d |  | start no earlier than 2013-10-02 |
| 81 | 1.17.11 | Installation of Light fittings with LDB | 43d | 2013-10-02 | 2013-11-20 | 73, 28 | 28d |  | start no earlier than 2013-10-02 |
| 82 | 1.18 | **6. Pre-commissioning** | 13d | 2013-11-29 | 2013-12-13 |  | 21d |  |  |
| 83 | 1.18.1 | Cleaning and Flushing ( Tanks, equipment and Pipe lines ) | 2d | 2013-11-29 | 2013-11-30 | 70 | 21d | 0d |  |
| 84 | 1.18.2 | Hook up with Existing set up (Process and utilities) | 4d | 2013-12-02 | 2013-12-05 | 83 | 21d | 0d |  |
| 85 | 1.18.3 | Trial run of equipment | 2d | 2013-12-06 | 2013-12-07 | 84 | 21d | 0d |  |
| 86 | 1.18.4 | Brine filling and circulation | 5d | 2013-12-09 | 2013-12-13 | 85 | 21d | 0d |  |
| 87 | 1.19 | 7. Commissioning of plant | 5d | 2013-12-14 | 2013-12-19 | 86 | 21d |  |  |
