# Brine Plant

Schedule from MS Project, 2012-12-13 to 2014-01-02.
CAL

## Calendars

- CAL: Mon-Fri 08:00-12:00, 13:00-17:00; Sat-Sun off. Exceptions (off unless hours are given): 2012-12-15 08:00-12:00, 13:00-17:00, 2012-12-22 08:00-12:00, 13:00-17:00, 2012-12-29 08:00-12:00, 13:00-17:00, 2013-01-05 08:00-12:00, 13:00-17:00, 2013-01-12 08:00-12:00, 13:00-17:00, 2013-01-19 08:00-12:00, 13:00-17:00, 2013-01-26 08:00-12:00, 13:00-17:00, 2013-02-02 08:00-12:00, 13:00-17:00, 2013-02-09 08:00-12:00, 13:00-17:00, 2013-02-16 08:00-12:00, 13:00-17:00, 2013-02-23 08:00-12:00, 13:00-17:00, 2013-03-02 08:00-12:00, 13:00-17:00, 2013-03-09 08:00-12:00, 13:00-17:00, 2013-03-16 08:00-12:00, 13:00-17:00, 2013-03-23 08:00-12:00, 13:00-17:00, 2013-03-30 08:00-12:00, 13:00-17:00, 2013-04-06 08:00-12:00, 13:00-17:00, 2013-04-13 08:00-12:00, 13:00-17:00, 2013-04-20 08:00-12:00, 13:00-17:00, 2013-04-27 08:00-12:00, 13:00-17:00, 2013-05-04 08:00-12:00, 13:00-17:00, 2013-05-11 08:00-12:00, 13:00-17:00, 2013-05-18 08:00-12:00, 13:00-17:00, 2013-05-25 08:00-12:00, 13:00-17:00, 2013-06-01 08:00-12:00, 13:00-17:00, 2013-06-08 08:00-12:00, 13:00-17:00, 2013-06-15 08:00-12:00, 13:00-17:00, 2013-06-22 08:00-12:00, 13:00-17:00, 2013-06-29 08:00-12:00, 13:00-17:00, 2013-07-06 08:00-12:00, 13:00-17:00, 2013-07-13 08:00-12:00, 13:00-17:00, 2013-07-20 08:00-12:00, 13:00-17:00, 2013-07-27 08:00-12:00, 13:00-17:00, 2013-08-03 08:00-12:00, 13:00-17:00, 2013-08-10 08:00-12:00, 13:00-17:00, 2013-08-17 08:00-12:00, 13:00-17:00, 2013-08-24 08:00-12:00, 13:00-17:00, 2013-08-31 08:00-12:00, 13:00-17:00, 2013-09-07 08:00-12:00, 13:00-17:00, 2013-09-14 08:00-12:00, 13:00-17:00, 2013-09-21 08:00-12:00, 13:00-17:00, 2013-09-28 08:00-12:00, 13:00-17:00, 2013-10-05 08:00-12:00, 13:00-17:00, 2013-10-12 08:00-12:00, 13:00-17:00, 2013-10-19 08:00-12:00, 13:00-17:00, 2013-10-26 08:00-12:00, 13:00-17:00, 2013-11-02 08:00-12:00, 13:00-17:00, 2013-11-09 08:00-12:00, 13:00-17:00, 2013-11-16 08:00-12:00, 13:00-17:00, 2013-11-23 08:00-12:00, 13:00-17:00, 2013-11-30 08:00-12:00, 13:00-17:00, 2013-12-07 08:00-12:00, 13:00-17:00, 2013-12-14 08:00-12:00, 13:00-17:00, 2013-12-21 08:00-12:00, 13:00-17:00, 2013-12-28 08:00-12:00, 13:00-17:00.

## Schedule

| ID | WBS | Task | Duration | Start | Finish | Predecessors | Total slack | Free slack | Constraint |
| --- | --- | --- | --- | --- | --- | --- | --- | --- | --- |
| 1 | 1 | **02-Sec-Brine-Plant** | 331d | 2012-12-13 | 2014-01-02 |  | 49d |  |  |
| 2 | 1.1 | **1. Critical Equipment Ordering** | 38d | 2013-06-01 | 2013-07-15 |  | 97d |  |  |
| 3 | 1.1.1 | Ion exchange column | 38d | 2013-06-01 | 2013-07-15 |  | 97d | 0d | start no earlier than 2013-06-01 |
| 4 | 1.2 | **2. Other equipment ordering** | 235d | 2012-12-13 | 2013-09-12 |  | 131d |  |  |
| 5 | 1.2.1 | Polished Brine tank | 58d | 2012-12-13 | 2013-02-18 |  | 168d | 0d | start no earlier than 2012-12-13 |
| 6 | 1.2.2 | Pure Brine tank | 89d | 2012-12-13 | 2013-03-26 |  | 233d | 0d | start no earlier than 2012-12-13 |
| 7 | 1.2.3 | Brine pumps | 52d | 2013-02-13 | 2013-04-13 |  | 253d | 106d | finish no earlier than 2013-04-13 |
| 8 | 1.2.4 | BOQ receipt from M/s Protech | 54d | 2013-05-29 | 2013-07-30 |  | 123d | 0d | finish no earlier than 2013-07-30 |
| 9 | 1.2.5 | Structural | 38d | 2013-07-31 | 2013-09-12 | 8 | 123d | 0d | finish no earlier than 2013-08-21 |
| 10 | 1.2.6 | Pipings and fittings | 38d | 2013-07-09 | 2013-08-21 |  | 142d | 0d | finish no earlier than 2013-08-21 |
| 11 | 1.2.7 | Valves | 36d | 2013-04-15 | 2013-05-25 |  | 161d | 14d | finish no earlier than 2013-05-25 |
| 12 | 1.2.8 | MCC | 53d | 2013-05-16 | 2013-07-16 |  | 136d | 12d | finish no earlier than 2013-07-16 |
| 13 | 1.2.9 | Cables and Cable tray | 17d | 2013-08-13 | 2013-08-31 |  | 141d | 8d | finish no earlier than 2013-08-31 |
| 14 | 1.2.10 | Motors | 38d | 2013-04-29 | 2013-06-11 |  | 170d | 0d | finish no earlier than 2013-06-11 |
| 15 | 1.2.11 | Light fittings | 17d | 2013-08-09 | 2013-08-28 |  | 49d | 0d | finish no earlier than 2013-08-28 |
| 16 | 1.2.12 | Instruments | 111d | 2013-03-22 | 2013-07-29 |  | 133d | 0d | finish no earlier than 2013-07-29 |
| 17 | 1.3 | **3. equipment Receipts** | 212d | 2013-02-19 | 2013-10-23 |  | 110d |  |  |
| 18 | 1.3.1 | Ion exchange column | 80d | 2013-07-16 | 2013-10-16 | 3 | 97d | 0d | start no earlier than 2013-07-15 |
| 19 | 1.3.2 | Polished Brine tank | 89d | 2013-02-19 | 2013-06-01 | 5 | 168d | 0d | finish no earlier than 2013-06-01 |
| 20 | 1.3.3 | Pure Brine Tank | 58d | 2013-03-27 | 2013-06-01 | 6 | 233d |  | start no earlier than 2013-03-27 |
| 21 | 1.3.4 | Brine pumps | 22d | 2013-08-16 | 2013-09-10 | 7 | 147d |  | finish no earlier than 2013-09-10 |
| 22 | 1.3.5 | Structurals | 22d | 2013-09-13 | 2013-10-08 | 9 | 123d |  | finish no earlier than 2013-09-06 |
| 23 | 1.3.6 | Pipings and fittings | 22d | 2013-08-22 | 2013-09-16 | 10 | 142d |  | finish no earlier than 2013-09-04 |
| 24 | 1.3.7 | Valves | 78d | 2013-06-12 | 2013-09-10 | 11 | 147d |  | finish no earlier than 2013-09-10 |
| 25 | 1.3.8 | MCC | 59d | 2013-07-31 | 2013-10-07 | 12 | 124d |  | finish no earlier than 2013-10-07 |
| 26 | 1.3.9 | Cable and Cable tray | 14d | 2013-09-11 | 2013-09-26 | 13 | 133d |  | finish no earlier than 2013-09-26 |
| 27 | 1.3.10 | Motors | 55d | 2013-06-12 | 2013-08-14 | 14 | 170d |  | start no earlier than 2013-06-12 |
| 28 | 1.3.11 | Light fittings | 48d | 2013-08-29 | 2013-10-23 | 15 | 49d | 0d | start no earlier than 2013-08-29 |
| 29 | 1.3.12 | Instruments | 51d | 2013-07-30 | 2013-09-26 | 16 | 133d |  | start no earlier than 2013-07-30 |

| ID | WBS | Task | Duration | Start | Finish | Predecessors | Total slack | Free slack | Constraint |
| --- | --- | --- | --- | --- | --- | --- | --- | --- | --- |
| 30 | 1.4 | **4. CIVIL and Erection** | 136d | 2013-06-03 | 2013-11-07 |  | 97d |  |  |
| 31 | 1.4.1 | **4.1 Polished Brine storage tank and pumps** | 65d | 2013-06-03 | 2013-08-16 |  | 168d |  |  |
| 32 | 1.4.1.1 | a) Removal of Old Polished Brine tank | 10d | 2013-06-20 | 2013-07-01 |  | 198d | 0d | finish no earlier than 2013-07-01 |
| 33 | 1.4.1.2 | b) Excavation | 5d | 2013-07-02 | 2013-07-06 | 32 | 198d | 0d |  |
| 34 | 1.4.1.3 | c) Foundation | 5d | 2013-07-08 | 2013-07-12 | 33 | 198d |  |  |
| 35 | 1.4.1.4 | d) Positioning of Brine Storage tank | 50d | 2013-06-03 | 2013-07-30 | 19 | 168d | 0d |  |
| 36 | 1.4.1.5 | e) Filling and Leak Testing | 15d | 2013-07-31 | 2013-08-16 | 35 | 168d |  |  |
| 37 | 1.4.2 | **4.2 IEC** | 58d | 2013-09-02 | 2013-11-07 |  | 97d |  |  |
| 38 | 1.4.2.1 | a)Dismantling | 2d | 2013-09-02 | 2013-09-03 |  | 130d | 0d | start no earlier than 2013-09-02 |
| 39 | 1.4.2.2 | b)Excavation | 2d | 2013-09-04 | 2013-09-05 | 38 | 130d | 0d |  |
| 40 | 1.4.2.3 | c)Footings and column construction | 2d | 2013-09-06 | 2013-09-07 | 39 | 130d | 33d |  |
| 41 | 1.4.2.4 | d)Positioning of Ion exchange column | 1d | 2013-10-17 | 2013-10-17 | 18, 40 | 97d | 0d |  |
| 42 | 1.4.2.5 | e)Internal Piping | 15d | 2013-10-18 | 2013-11-04 | 41 | 97d | 0d |  |
| 43 | 1.4.2.6 | f) Ion exchange column strainer erection | 1d | 2013-11-05 | 2013-11-05 | 42 | 97d | 0d |  |
| 44 | 1.4.2.7 | g)filling of Ion exchange column with resin | 1d | 2013-11-06 | 2013-11-06 | 43 | 97d | 0d |  |
| 45 | 1.4.2.8 | i) Leak testing of resins | 1d | 2013-11-07 | 2013-11-07 | 44 | 97d |  |  |
| 46 | 1.4.3 | **4.3 Tanks and Pumps ( Pure Brine tank )** | 46d | 2013-09-02 | 2013-10-24 |  | 66d |  |  |
| 47 | 1.4.3.1 | a)Removal of old Pure brine tank | 10d | 2013-09-02 | 2013-09-12 |  | 66d | 0d | start no earlier than 2013-09-02 |
| 48 | 1.4.3.2 | b)Old Bed Dismantling | 5d | 2013-09-13 | 2013-09-18 | 47 | 66d | 0d |  |
| 49 | 1.4.3.3 | c)Excavation | 5d | 2013-09-19 | 2013-09-24 | 48 | 66d | 0d |  |
| 50 | 1.4.3.4 | d)Bed Construction | 12d | 2013-09-25 | 2013-10-08 | 49 | 66d | 0d |  |
| 51 | 1.4.3.5 | Curing | 7d | 2013-10-09 | 2013-10-16 | 50 | 66d | 0d |  |
| 52 | 1.4.3.6 | e) Receipt and Positioning of storage tanks | 1d | 2013-10-17 | 2013-10-17 | 51 | 66d | 0d |  |
| 53 | 1.4.3.7 | e) Receipt and Positioning of pumps | 1d | 2013-10-18 | 2013-10-18 | 52 | 66d | 0d |  |
| 54 | 1.4.3.8 | f) Filling and leak testing | 5d | 2013-10-19 | 2013-10-24 | 53 | 109d |  |  |

| ID | WBS | Task | Duration | Start | Finish | Predecessors | Total slack | Free slack | Constraint |
| --- | --- | --- | --- | --- | --- | --- | --- | --- | --- |
| 55 | 1.5 | **5. Erection of structurals, pipes, fittings, Electrical Equipments and Instruments** | 112d | 2013-08-05 | 2013-12-12 |  | 49d | 0d |  |
| 56 | 1.5.1 | Erection contract Finalization | 20d | 2013-08-05 | 2013-08-27 |  | 141d |  | start no earlier than 2013-08-05 |
| 57 | 1.5.2 | Piping Layout | 20d | 2013-08-05 | 2013-08-27 |  | 61d | 0d | start no earlier than 2013-08-05 |
| 58 | 1.5.3 | Mobilization of erection material | 15d | 2013-08-28 | 2013-09-13 | 57 | 61d | 0d | start no earlier than 2013-08-28 |
| 59 | 1.5.4 | Pipe rack and supports | 30d | 2013-09-14 | 2013-10-18 | 58 | 61d | 0d | start no earlier than 2013-09-14 |
| 60 | 1.5.5 | Process Piping | 30d | 2013-10-23 | 2013-11-26 | 53 | 63d |  | start no earlier than 2013-10-23 |
| 61 | 1.5.6 | Utility Piping | 30d | 2013-10-10 | 2013-11-13 |  | 74d |  | start no earlier than 2013-10-10 |
| 62 | 1.5.7 | Erection of cable tray ( Electrical and Instrument ) | 10d | 2013-10-19 | 2013-10-30 | 59 | 61d | 0d | start no earlier than 2013-10-19 |
| 63 | 1.5.8 | Laying of cables (Electrical and Instrument) | 25d | 2013-10-31 | 2013-11-28 | 62 | 61d |  | start no earlier than 2013-10-31 |
| 64 | 1.5.9 | Erection of instruments , Testing | 43d | 2013-10-02 | 2013-11-20 | 58 | 68d |  | start no earlier than 2013-10-02 |
| 65 | 1.5.10 | Erection of MCC and Motors | 43d | 2013-10-02 | 2013-11-20 | 58 | 68d |  | start no earlier than 2013-10-02 |
| 66 | 1.5.11 | Installation of Light fittings with LDB | 43d | 2013-10-24 | 2013-12-12 | 58, 28 | 49d |  | start no earlier than 2013-10-02 |
| 67 | 1.6 | **6. Precommissioning** | 13d | 2013-12-13 | 2013-12-27 |  | 49d | 0d |  |
| 68 | 1.6.1 | a) Cleaning and Flushing ( Tanks, equipment and Pipe lines ) | 2d | 2013-12-13 | 2013-12-14 | 55 | 49d | 0d | start no earlier than 2013-11-25 |
| 69 | 1.6.2 | b) Hook up with Existing set up (Process and utilities) | 4d | 2013-12-16 | 2013-12-19 | 68 | 49d | 0d | start no earlier than 2013-11-25 |
| 70 | 1.6.3 | c) Trial run of equipment | 2d | 2013-12-20 | 2013-12-21 | 69 | 49d | 0d | start no earlier than 2013-11-25 |
| 71 | 1.6.4 | d) Brine filling and circulation | 5d | 2013-12-23 | 2013-12-27 | 70 | 49d |  | start no earlier than 2013-11-25 |
| 72 | 1.7 | 7. Commissioning of plant | 5d | 2013-12-28 | 2014-01-02 | 67 | 9d |  |  |
