# Brine Plant

Schedule from MS Project, 2012-11-16 to 2013-12-23.
CAL

## Calendars

- Cell House: Mon-Fri 08:00-12:00, 13:00-17:00; Sat-Sun off. Exceptions (off unless hours are given): 2012-11-17 08:00-12:00, 13:00-17:00, 2012-11-24 08:00-12:00, 13:00-17:00, 2012-12-01 08:00-12:00, 13:00-17:00, 2012-12-08 08:00-12:00, 13:00-17:00, 2012-12-15 08:00-12:00, 13:00-17:00, 2012-12-22 08:00-12:00, 13:00-17:00, 2012-12-29 08:00-12:00, 13:00-17:00, 2013-01-05 08:00-12:00, 13:00-17:00, 2013-01-12 08:00-12:00, 13:00-17:00, 2013-01-19 08:00-12:00, 13:00-17:00, 2013-01-26 08:00-12:00, 13:00-17:00, 2013-02-02 08:00-12:00, 13:00-17:00, 2013-02-09 08:00-12:00, 13:00-17:00, 2013-02-16 08:00-12:00, 13:00-17:00, 2013-02-23 08:00-12:00, 13:00-17:00, 2013-03-02 08:00-12:00, 13:00-17:00, 2013-03-09 08:00-12:00, 13:00-17:00, 2013-03-16 08:00-12:00, 13:00-17:00, 2013-03-23 08:00-12:00, 13:00-17:00, 2013-03-30 08:00-12:00, 13:00-17:00, 2013-04-06 08:00-12:00, 13:00-17:00, 2013-04-13 08:00-12:00, 13:00-17:00, 2013-04-20 08:00-12:00, 13:00-17:00, 2013-04-27 08:00-12:00, 13:00-17:00, 2013-05-04 08:00-12:00, 13:00-17:00, 2013-05-11 08:00-12:00, 13:00-17:00, 2013-05-18 08:00-12:00, 13:00-17:00, 2013-05-25 08:00-12:00, 13:00-17:00, 2013-06-01 08:00-12:00, 13:00-17:00, 2013-06-08 08:00-12:00, 13:00-17:00, 2013-06-15 08:00-12:00, 13:00-17:00, 2013-06-22 08:00-12:00, 13:00-17:00, 2013-06-29 08:00-12:00, 13:00-17:00, 2013-07-06 08:00-12:00, 13:00-17:00, 2013-07-13 08:00-12:00, 13:00-17:00, 2013-07-20 08:00-12:00, 13:00-17:00, 2013-07-27 08:00-12:00, 13:00-17:00, 2013-08-03 08:00-12:00, 13:00-17:00, 2013-08-10 08:00-12:00, 13:00-17:00, 2013-08-17 08:00-12:00, 13:00-17:00, 2013-08-24 08:00-12:00, 13:00-17:00, 2013-08-31 08:00-12:00, 13:00-17:00, 2013-09-07 08:00-12:00, 13:00-17:00, 2013-09-14 08:00-12:00, 13:00-17:00, 2013-09-21 08:00-12:00, 13:00-17:00, 2013-09-28 08:00-12:00, 13:00-17:00, 2013-10-05 08:00-12:00, 13:00-17:00, 2013-10-12 08:00-12:00, 13:00-17:00, 2013-10-19 08:00-12:00, 13:00-17:00, 2013-10-26 08:00-12:00, 13:00-17:00, 2013-11-02 08:00-12:00, 13:00-17:00, 2013-11-09 08:00-12:00, 13:00-17:00, 2013-11-16 08:00-12:00, 13:00-17:00, 2013-11-23 08:00-12:00, 13:00-17:00, 2013-11-30 to 2013-12-01 08:00-12:00, 13:00-17:00, 2013-12-07 08:00-12:00, 13:00-17:00, 2013-12-14 08:00-12:00, 13:00-17:00, 2013-12-21 08:00-12:00, 13:00-17:00.

## Schedule

| ID | WBS | Task | Duration | Start | Finish | Predecessors | Total slack | Free slack | Constraint |
| --- | --- | --- | --- | --- | --- | --- | --- | --- | --- |
| 1 | 1 | **03-Cell-House** | 346d? | 2012-11-16 | 2013-12-23 |  | 22d |  |  |
| 2 | 1.1 | **1. Critical Equipment Ordering** | 90d | 2012-11-16 | 2013-02-28 |  | 223d | 0d |  |
| 3 | 1.1.1 | Elements and its accessories | 90d | 2012-11-16 | 2013-02-28 |  | 219d |  | finish no earlier than 2013-02-28 |
| 4 | 1.1.2 | Membrane | 90d | 2012-11-16 | 2013-02-28 |  | 219d |  | finish no earlier than 2013-02-28 |
| 5 | 1.2 | **2. Other Equipments ordering** | 158d | 2013-03-01 | 2013-08-31 |  | 120d |  |  |
| 6 | 1.2.1 | Pumps | 10d | 2013-03-01 | 2013-03-12 | 2 | 219d | 0d |  |
| 7 | 1.2.2 | Tanks | 15d | 2013-03-13 | 2013-03-29 | 6 | 219d | 0d |  |
| 8 | 1.2.3 | Heat Exchangers | 15d | 2013-03-30 | 2013-04-16 | 7 | 219d | 0d |  |
| 9 | 1.2.4 | Platform BOQ | 15d | 2013-04-17 | 2013-05-03 | 8 | 219d |  |  |
| 10 | 1.2.5 | BOQ receipt from M/s Protech | 20d | 2013-06-07 | 2013-06-29 |  | 136d | 0d | finish no earlier than 2013-06-29 |
| 11 | 1.2.6 | Structurals BOQ from Jayam | 24d | 2013-07-01 | 2013-07-27 | 10 | 136d | 0d |  |
| 12 | 1.2.7 | Structurals for Head tank Building | 10d | 2013-07-29 | 2013-08-08 | 11 | 136d |  |  |
| 13 | 1.2.8 | Pipe rack inside and outside cell House area | 10d | 2013-07-29 | 2013-08-08 | 11 | 136d |  |  |
| 14 | 1.2.9 | Pipings and fittings | 22d | 2013-07-15 | 2013-08-08 |  | 136d |  | start no earlier than 2013-07-15 |
| 15 | 1.2.10 | Valves | 21d | 2013-06-06 | 2013-06-29 |  | 170d |  | finish no earlier than 2013-06-29 |
| 16 | 1.2.11 | Fasteners and Gaskets | 22d | 2013-08-07 | 2013-08-31 |  | 116d |  | finish no earlier than 2013-08-31 |
| 17 | 1.2.12 | Pipe Supports BOQ receipt and ordering | 26d | 2013-07-25 | 2013-08-23 |  | 123d |  | finish no earlier than 2013-08-23 |
| 18 | 1.2.13 | Bus bar inside cell house | 24d | 2013-07-22 | 2013-08-17 |  | 128d |  | start no earlier than 2013-07-22 |
| 19 | 1.2.14 | Bus bar outside cell house | 21d | 2013-06-03 | 2013-06-26 |  | 173d |  | start no earlier than 2013-06-03 |
| 20 | 1.2.15 | Insulator | 21d | 2013-06-03 | 2013-06-26 |  | 173d |  | start no earlier than 2013-06-03 |
| 21 | 1.2.16 | MCC | 33d | 2013-06-08 | 2013-07-16 |  | 156d |  | finish no earlier than 2013-07-16 |
| 22 | 1.2.17 | Cables and Cable tray | 15d | 2013-07-25 | 2013-08-10 |  | 134d |  | start no earlier than 2013-07-25 |
| 23 | 1.2.18 | Motors | 15d | 2013-06-03 | 2013-06-19 |  | 179d |  | start no earlier than 2013-06-03 |
| 24 | 1.2.19 | Mechanical tender document receipt and contract finalization | 20d | 2013-07-17 | 2013-08-08 |  | 136d |  | start no earlier than 2013-07-17 |
| 25 | 1.2.20 | Electrical tender document receipt and contract finalization | 20d | 2013-07-17 | 2013-08-08 |  | 136d |  | start no earlier than 2013-07-17 |
| 26 | 1.2.21 | Instruments | 20d | 2013-07-17 | 2013-08-08 |  | 136d |  | start no earlier than 2013-07-17 |
| 27 | 1.2.22 | Instruments tender document receipt and contract finalization | 20d | 2013-07-17 | 2013-08-08 |  | 136d |  | start no earlier than 2013-07-17 |

| ID | WBS | Task | Duration | Start | Finish | Predecessors | Total slack | Free slack | Constraint |
| --- | --- | --- | --- | --- | --- | --- | --- | --- | --- |
| 28 | 1.3 | **3. Other Equipments Receipts** | 48d | 2013-09-02 | 2013-10-26 |  | 72d |  |  |
| 29 | 1.3.1 | Pumps | 22d | 2013-09-05 | 2013-09-30 |  | 91d |  | finish no earlier than 2013-09-30 |
| 30 | 1.3.2 | Tanks | 22d | 2013-09-02 | 2013-09-26 |  | 94d |  | start no earlier than 2013-09-02 |
| 31 | 1.3.3 | Heat Exchangers | 22d | 2013-09-02 | 2013-09-26 |  | 94d |  | start no earlier than 2013-09-02 |
| 32 | 1.3.4 | Structurals for Head tank Building | 22d | 2013-09-02 | 2013-09-26 |  | 94d |  | start no earlier than 2013-09-02 |
| 33 | 1.3.5 | Pipe rack inside and outside cell House area | 22d | 2013-09-02 | 2013-09-26 |  | 94d |  | start no earlier than 2013-09-02 |
| 34 | 1.3.6 | Pipings and fittings | 22d | 2013-09-02 | 2013-09-26 |  | 94d |  | start no earlier than 2013-09-02 |
| 35 | 1.3.7 | Valves | 22d | 2013-09-02 | 2013-09-26 |  | 94d |  | start no earlier than 2013-09-02 |
| 36 | 1.3.8 | Fasteners and Gaskets | 22d | 2013-09-02 | 2013-09-26 |  | 94d |  | start no earlier than 2013-09-02 |
| 37 | 1.3.9 | Pipe Supports receipt | 22d | 2013-09-02 | 2013-09-26 |  | 94d |  | start no earlier than 2013-09-02 |
| 38 | 1.3.10 | Bus bar inside cell house | 22d | 2013-09-16 | 2013-10-10 |  | 82d |  | start no earlier than 2013-09-16 |
| 39 | 1.3.11 | Bus bar outside cell house | 22d | 2013-10-02 | 2013-10-26 |  | 68d |  | start no earlier than 2013-10-02 |
| 40 | 1.3.12 | Insulator | 27d | 2013-09-06 | 2013-10-07 |  | 85d |  | finish no earlier than 2013-10-07 |
| 41 | 1.3.13 | MCC | 27d | 2013-09-02 | 2013-10-02 |  | 89d |  | start no earlier than 2013-09-02 |
| 42 | 1.3.14 | Cables and Cable tray | 27d | 2013-09-02 | 2013-10-02 |  | 89d |  | start no earlier than 2013-09-02 |
| 43 | 1.3.15 | Motors | 27d | 2013-09-02 | 2013-10-02 |  | 89d |  | start no earlier than 2013-09-02 |
| 44 | 1.3.16 | Instruments | 27d | 2013-09-02 | 2013-10-02 |  | 89d |  | start no earlier than 2013-09-02 |
| 45 | 1.4 | **4. CIVIL and Erection** | 211d | 2013-04-23 | 2013-12-23 |  | 22d |  |  |
| 46 | 1.4.1 | **4.1 Electrolyser area** | 211d | 2013-04-23 | 2013-12-23 |  | 22d |  |  |
| 47 | 1.4.1.1 | a) Dismantling | 15d | 2013-04-23 | 2013-05-09 |  | 46d | 0d | start no earlier than 2013-04-23 |
| 48 | 1.4.1.2 | b) Excavation | 20d | 2013-05-10 | 2013-06-01 | 47 | 46d | 0d |  |
| 49 | 1.4.1.3 | c) PCC | 10d | 2013-06-03 | 2013-06-13 | 48 | 46d | 0d |  |
| 50 | 1.4.1.4 | d) Column and footing | 15d | 2013-06-14 | 2013-07-01 | 49 | 46d | 0d |  |
| 51 | 1.4.1.5 | e) Soil consolidation | 10d | 2013-07-02 | 2013-07-12 | 50 | 46d | 0d |  |
| 52 | 1.4.1.6 | f) PCC and RCC of flooring | 10d | 2013-07-13 | 2013-07-24 | 51 | 46d | 0d |  |
| 53 | 1.4.1.7 | g) Plastering of flooring | 11d | 2013-07-25 | 2013-08-06 | 52 | 46d | 0d |  |
| 54 | 1.4.1.8 | Mobilization of erection material | 17d | 2013-08-07 | 2013-08-26 | 53 | 46d | 0d |  |
| 55 | 1.4.1.9 | f) Pipe rack erection at inside cell house | 10d | 2013-08-27 | 2013-09-06 | 54 | 46d | 0d |  |
| 56 | 1.4.1.10 | g) Erection of cell platform | 10d | 2013-09-07 | 2013-09-18 | 55 | 46d | 0d |  |
| 57 | 1.4.1.11 | h) Positioning of cell frame | 10d | 2013-09-19 | 2013-09-30 | 56 | 46d | 0d |  |
| 58 | 1.4.1.12 | i) Positioning of cell manifold (Inlet and outlet) | 2d | 2013-10-01 | 2013-10-02 | 57 | 46d | 0d |  |
| 59 | 1.4.1.13 | j) Pipe line laying and erection | 33d | 2013-10-03 | 2013-11-09 | 58 | 46d | 0d |  |
| 60 | 1.4.1.14 | e) Filling and Leak Testing | 10d | 2013-11-11 | 2013-11-21 | 59 | 46d |  |  |

| ID | WBS | Task | Duration | Start | Finish | Predecessors | Total slack | Free slack | Constraint |
| --- | --- | --- | --- | --- | --- | --- | --- | --- | --- |
| 61 | 1.4.1.15 | **4.2 Out side cell house** | 151d | 2013-07-02 | 2013-12-23 |  | 22d |  |  |
| 62 | 1.4.1.15.1 | **4.2.1 Tanks and Pumps ( Cell drain tank and individual Catholyte circulation tank)** | 86d | 2013-07-02 | 2013-10-09 |  | 87d |  |  |
| 63 | 1.4.1.15.1.1 | a) Shifting of existing Hydrogen Handling system | 20d | 2013-07-02 | 2013-07-24 |  | 144d | 0d | start no earlier than 2013-07-02 |
| 64 | 1.4.1.15.1.2 | b) Shifting of existing product cooler and Caustic heater | 5d | 2013-07-25 | 2013-07-30 | 63 | 144d |  |  |
| 65 | 1.4.1.15.1.3 | c)Existing Floor Dismantling | 10d | 2013-08-12 | 2013-08-22 |  | 83d | 0d | start no earlier than 2013-08-12 |
| 66 | 1.4.1.15.1.4 | d)Excavation | 20d | 2013-08-23 | 2013-09-14 | 65 | 83d | 0d |  |
| 67 | 1.4.1.15.1.5 | f)Bed Construction | 10d | 2013-09-16 | 2013-09-26 | 66 | 83d | 0d |  |
| 68 | 1.4.1.15.1.6 | Curing | 7d | 2013-09-27 | 2013-10-04 | 67 | 83d | 0d |  |
| 69 | 1.4.1.15.1.7 | g)Positioning of New storage tanks and pumps | 2d | 2013-10-05 | 2013-10-07 | 68 | 83d | 0d |  |
| 70 | 1.4.1.15.1.8 | f)Filling and leak testing | 2d | 2013-10-08 | 2013-10-09 | 69 | 83d |  |  |
| 71 | 1.4.1.15.2 | **4.2.2 Tanks and Pumps ( Anolyte circulation tank and Catholyte circulation tank)** | 19d | 2013-12-02 | 2013-12-23 |  | 22d |  |  |
| 72 | 1.4.1.15.2.1 | a)Removal of old storage tanks and pumps | 2d | 2013-12-02 | 2013-12-03 |  | 22d | 0d | start no earlier than 2013-12-02 |
| 73 | 1.4.1.15.2.2 | b)Dismantling of existing tank foundations and pumps | 2d | 2013-12-04 | 2013-12-05 | 72 | 22d | 0d | start no earlier than 2013-12-02 |
| 74 | 1.4.1.15.2.3 | c)Excavation | 2d | 2013-12-06 | 2013-12-07 | 73 | 22d | 0d | start no earlier than 2013-12-02 |
| 75 | 1.4.1.15.2.4 | d) construction of Bed Foundation for tanks and pumps | 2d | 2013-12-09 | 2013-12-10 | 74 | 22d | 0d | start no earlier than 2013-12-02 |
| 76 | 1.4.1.15.2.5 | Curing | 7d | 2013-12-11 | 2013-12-18 | 75 | 22d | 0d |  |
| 77 | 1.4.1.15.2.6 | e) Receipt and Positioning of tanks with pumps | 2d | 2013-12-19 | 2013-12-20 | 76 | 22d | 0d | start no earlier than 2013-12-02 |
| 78 | 1.4.1.15.2.7 | f) Filling and leak testing | 2d | 2013-12-21 | 2013-12-23 | 77 | 22d |  | start no earlier than 2013-12-02 |
| 79 | 1.4.2 | **4.3 Erection of structurals, Brine over head tank and catholyte head tank.** | 71d | 2013-08-01 | 2013-10-22 |  | 76d |  |  |
| 80 | 1.4.2.1 | i) Drawing receipt from M/s Jayam consultants | 6d | 2013-08-01 | 2013-08-07 |  | 72d | 0d | start no earlier than 2013-08-01 |
| 81 | 1.4.2.2 | ii) Floating Enquiry for structural contractor | 10d | 2013-08-08 | 2013-08-19 | 80 | 72d | 0d |  |
| 82 | 1.4.2.3 | iii) Finalizing the erection contractor | 10d | 2013-08-20 | 2013-08-30 | 81 | 72d | 0d |  |
| 83 | 1.4.2.4 | iv) Strengtheing of existing over head tank structure | 20d | 2013-08-31 | 2013-09-23 | 82 | 72d | 0d |  |
| 84 | 1.4.2.5 | v) Positioning of Brine head tank and Catholyte head tank | 20d | 2013-09-24 | 2013-10-16 | 83 | 72d | 0d |  |
| 85 | 1.4.2.6 | vi) Water filling and leak testing | 5d | 2013-10-17 | 2013-10-22 | 84 | 72d |  |  |

| ID | WBS | Task | Duration | Start | Finish | Predecessors | Total slack | Free slack | Constraint |
| --- | --- | --- | --- | --- | --- | --- | --- | --- | --- |
| 86 | 1.4.3 | **4.4 Erection of structurals, Chlorate destruction tank and Brine Heat exchanger** | 55d | 2013-08-01 | 2013-10-03 |  | 92d |  |  |
| 87 | 1.4.3.1 | i) Drawing receipt from M/s Jayam consultants | 5d | 2013-08-01 | 2013-08-06 |  | 88d | 0d | start no earlier than 2013-08-01 |
| 88 | 1.4.3.2 | ii) Floating Enquiry for structural contractor | 10d | 2013-08-07 | 2013-08-17 | 87 | 88d | 0d |  |
| 89 | 1.4.3.3 | iii) Finalizing the erection contractor | 10d | 2013-08-19 | 2013-08-29 | 88 | 88d | 0d |  |
| 90 | 1.4.3.4 | iv) Strengtheing of existing over head tank structure | 20d | 2013-08-30 | 2013-09-21 | 89 | 88d | 0d |  |
| 91 | 1.4.3.5 | v) Positioning of Chlorate decomposition tank and Brine Heat exchanger | 5d | 2013-09-23 | 2013-09-27 | 90 | 88d | 0d |  |
| 92 | 1.4.3.6 | vi) Water filling and leak testing | 5d | 2013-09-28 | 2013-10-03 | 91 | 88d |  |  |
| 93 | 1.5 | **5. Erection of structurals, pipes, fittings, Electrical Equipments and Instruments** | 100d | 2013-08-05 | 2013-11-28 |  | 26d | 0d |  |
| 94 | 1.5.1 | Erection contract Finalization | 20d | 2013-08-05 | 2013-08-27 |  | 102d |  | start no earlier than 2013-08-05 |
| 95 | 1.5.2 | Piping Layout | 20d | 2013-08-05 | 2013-08-27 |  | 22d | 0d | start no earlier than 2013-08-05 |
| 96 | 1.5.3 | Mobilization of erection material | 15d | 2013-08-28 | 2013-09-13 | 95 | 26d | 0d |  |
| 97 | 1.5.4 | Pipe rack and supports | 30d | 2013-09-14 | 2013-10-18 | 96 | 26d | 0d |  |
| 98 | 1.5.5 | Process Piping | 30d | 2013-10-10 | 2013-11-13 |  | 35d |  | start no earlier than 2013-10-10 |
| 99 | 1.5.6 | Utility Piping | 30d | 2013-10-10 | 2013-11-13 |  | 35d |  | start no earlier than 2013-10-10 |
| 100 | 1.5.7 | Erection of cable tray ( Electrical and Instrument ) | 10d | 2013-10-19 | 2013-10-30 | 97 | 26d | 0d | start no earlier than 2013-10-02 |
| 101 | 1.5.8 | Laying of cables (Electrical and Instrument) | 25d | 2013-10-31 | 2013-11-28 | 100 | 26d |  | start no earlier than 2013-10-02 |
| 102 | 1.5.9 | Erection of instruments , Testing | 43d | 2013-10-02 | 2013-11-20 | 96 | 33d |  | start no earlier than 2013-10-02 |
| 103 | 1.5.10 | Erection of MCC and Motors | 43d | 2013-10-02 | 2013-11-20 | 96 | 33d |  | start no earlier than 2013-10-02 |
| 104 | 1.5.11 | Installation of Light fittings with LDB | 43d | 2013-10-02 | 2013-11-20 | 96 | 33d |  | start no earlier than 2013-10-02 |
| 105 | 1.6 | 6-Electrolyser and Memberane Assembly | 1d? | 2013-07-31 | 2013-07-31 |  | 143d |  |  |
| 106 | 1.7 | **7. Pre-commissioning** | 13d | 2013-11-29 | 2013-12-12 |  | 26d |  |  |
| 107 | 1.7.1 | a) Cleaning and Flushing ( Tanks, Equipments and Pipe lines ) | 2d | 2013-11-29 | 2013-11-30 | 93 | 22d | 0d |  |
| 108 | 1.7.2 | b) Hook up with Existing set up (Process and utilities) | 4d | 2013-12-01 | 2013-12-04 | 107 | 22d | 0d |  |
| 109 | 1.7.3 | c) Trial run of Equipments | 2d | 2013-12-05 | 2013-12-06 | 108 | 22d | 0d |  |
| 110 | 1.7.4 | d) Brine filling and circulation | 5d | 2013-12-07 | 2013-12-12 | 109 | 22d | 0d |  |
| 111 | 1.8 | 8. Commissioning of plant | 5d | 2013-12-13 | 2013-12-18 | 110 | 22d |  |  |
