# Brine Plant

Schedule from MS Project, 2013-02-04 to 2013-12-14.
CAL

## Calendars

- Cl2, H2 Handling Section: Mon-Fri 08:00-12:00, 13:00-17:00; Sat-Sun off. Exceptions (off unless hours are given): 2013-02-09 08:00-12:00, 13:00-17:00, 2013-02-16 08:00-12:00, 13:00-17:00, 2013-02-23 08:00-12:00, 13:00-17:00, 2013-03-02 08:00-12:00, 13:00-17:00, 2013-03-09 08:00-12:00, 13:00-17:00, 2013-03-16 08:00-12:00, 13:00-17:00, 2013-03-23 08:00-12:00, 13:00-17:00, 2013-03-30 08:00-12:00, 13:00-17:00, 2013-04-06 08:00-12:00, 13:00-17:00, 2013-04-13 08:00-12:00, 13:00-17:00, 2013-04-20 08:00-12:00, 13:00-17:00, 2013-04-27 08:00-12:00, 13:00-17:00, 2013-05-04 08:00-12:00, 13:00-17:00, 2013-05-11 08:00-12:00, 13:00-17:00, 2013-05-18 08:00-12:00, 13:00-17:00, 2013-05-25 08:00-12:00, 13:00-17:00, 2013-06-01 08:00-12:00, 13:00-17:00, 2013-06-08 08:00-12:00, 13:00-17:00, 2013-06-15 08:00-12:00, 13:00-17:00, 2013-06-22 08:00-12:00, 13:00-17:00, 2013-06-29 08:00-12:00, 13:00-17:00, 2013-07-06 08:00-12:00, 13:00-17:00, 2013-07-13 08:00-12:00, 13:00-17:00, 2013-07-20 08:00-12:00, 13:00-17:00, 2013-07-27 08:00-12:00, 13:00-17:00, 2013-08-03 08:00-12:00, 13:00-17:00, 2013-08-10 08:00-12:00, 13:00-17:00, 2013-08-17 08:00-12:00, 13:00-17:00, 2013-08-24 08:00-12:00, 13:00-17:00, 2013-08-31 08:00-12:00, 13:00-17:00, 2013-09-07 08:00-12:00, 13:00-17:00, 2013-09-14 08:00-12:00, 13:00-17:00, 2013-09-21 08:00-12:00, 13:00-17:00, 2013-09-28 08:00-12:00, 13:00-17:00, 2013-10-05 08:00-12:00, 13:00-17:00, 2013-10-12 08:00-12:00, 13:00-17:00, 2013-10-19 08:00-12:00, 13:00-17:00, 2013-10-26 08:00-12:00, 13:00-17:00, 2013-11-02 08:00-12:00, 13:00-17:00, 2013-11-09 08:00-12:00, 13:00-17:00, 2013-11-16 08:00-12:00, 13:00-17:00, 2013-11-23 08:00-12:00, 13:00-17:00, 2013-11-30 to 2013-12-01 08:00-12:00, 13:00-17:00, 2013-12-07 08:00-12:00, 13:00-17:00, 2013-12-14 08:00-12:00, 13:00-17:00.

## Schedule

| ID | WBS | Task | Duration | Start | Finish | Predecessors | Total slack | Free slack | Constraint |
| --- | --- | --- | --- | --- | --- | --- | --- | --- | --- |
| 1 | 1 | **04-Cl2-H2-Handling** | 271d | 2013-02-04 | 2013-12-14 |  | 65d |  |  |
| 2 | 1.1 | **1. Equipments ordering** | 180d | 2013-02-04 | 2013-08-31 |  | 134d |  |  |
| 3 | 1.1.1 | Dechlorination tower | 107d | 2013-02-26 | 2013-06-29 |  | 148d | 54d | finish no earlier than 2013-06-29 |
| 4 | 1.1.2 | Chlorine wash tower 1 & 2 | 107d | 2013-02-04 | 2013-06-07 |  | 167d | 73d | start no earlier than 2013-02-04 |
| 5 | 1.1.3 | Hydrogen Wash Tower 1 & 2 | 107d | 2013-02-04 | 2013-06-07 |  | 167d | 73d | start no earlier than 2013-02-04 |
| 6 | 1.1.4 | Chlorine gas mist eliminator | 107d | 2013-02-04 | 2013-06-07 |  | 167d | 73d | start no earlier than 2013-02-04 |
| 7 | 1.1.5 | Hydrogen gas mist eliminator | 107d | 2013-02-04 | 2013-06-07 |  | 167d | 73d | start no earlier than 2013-02-04 |
| 8 | 1.1.6 | Hydrogen Buffer vessel | 107d | 2013-02-04 | 2013-06-07 |  | 167d | 73d | start no earlier than 2013-02-04 |
| 9 | 1.1.7 | Sodium sulphite tank | 107d | 2013-02-04 | 2013-06-07 |  | 145d | 73d | start no earlier than 2013-02-04 |
| 10 | 1.1.8 | Pumps and Blowers | 107d | 2013-02-04 | 2013-06-07 |  | 122d | 0d | start no earlier than 2013-02-04 |
| 11 | 1.1.9 | Pipings and fittings | 45d | 2013-06-08 | 2013-07-30 | 10 | 122d | 28d |  |
| 12 | 1.1.10 | Valves | 43d | 2013-05-11 | 2013-06-29 |  | 148d | 54d | finish no earlier than 2013-06-29 |
| 13 | 1.1.11 | Gaskets and fasteners | 22d | 2013-08-07 | 2013-08-31 |  | 94d | 0d | finish no earlier than 2013-08-31 |
| 14 | 1.1.12 | Pipe support and valve support materials | 15d | 2013-08-02 | 2013-08-19 |  | 105d | 11d | start no earlier than 2013-08-02 |
| 15 | 1.1.13 | MCC | 33d | 2013-06-08 | 2013-07-16 |  | 134d | 40d | finish no earlier than 2013-07-16 |
| 16 | 1.1.14 | Cable tray | 15d | 2013-08-02 | 2013-08-19 |  | 105d | 11d | start no earlier than 2013-08-02 |
| 17 | 1.1.15 | Motors | 15d | 2013-06-03 | 2013-06-19 |  | 157d | 63d | start no earlier than 2013-06-03 |
| 18 | 1.1.16 | Light fittings | 15d | 2013-08-02 | 2013-08-19 |  | 105d | 11d | start no earlier than 2013-08-02 |
| 19 | 1.1.17 | Instruments | 131d | 2013-03-01 | 2013-07-31 |  | 121d | 27d | finish no earlier than 2013-07-31 |
| 20 | 1.2 | **2. Equipment Receipts** | 44d | 2013-09-02 | 2013-10-22 |  | 112d |  |  |
| 21 | 1.2.1 | Dechlorination tower | 22d | 2013-09-02 | 2013-09-26 | 3 | 94d |  | start no earlier than 2013-09-02 |
| 22 | 1.2.2 | Chlorine wash tower 1 & 2 | 22d | 2013-09-02 | 2013-09-26 | 4 | 94d |  | start no earlier than 2013-09-02 |
| 23 | 1.2.3 | Hydrogen Wash Tower 1 & 2 | 22d | 2013-09-02 | 2013-09-26 | 5 | 94d |  | start no earlier than 2013-09-02 |
| 24 | 1.2.4 | Chlorine gas mist eliminator | 22d | 2013-09-02 | 2013-09-26 | 6 | 94d |  | start no earlier than 2013-09-02 |
| 25 | 1.2.5 | Hydrogen gas mist eliminator | 22d | 2013-09-02 | 2013-09-26 | 7 | 94d |  | start no earlier than 2013-09-02 |
| 26 | 1.2.6 | Hydrogen Buffer vessel | 22d | 2013-09-02 | 2013-09-26 | 8 | 94d |  | start no earlier than 2013-09-02 |
| 27 | 1.2.7 | Sodium sulphite tank | 22d | 2013-09-02 | 2013-09-26 | 9 | 72d | 0d | start no earlier than 2013-09-02 |
| 28 | 1.2.8 | Pumps and Blowers | 22d | 2013-09-27 | 2013-10-22 | 10, 27 | 72d |  | start no earlier than 2013-09-02 |
| 29 | 1.2.9 | Pipings and fittings | 22d | 2013-09-02 | 2013-09-26 | 11 | 94d |  | start no earlier than 2013-09-02 |
| 30 | 1.2.10 | Valves | 22d | 2013-09-02 | 2013-09-26 | 12 | 94d |  | start no earlier than 2013-09-02 |
| 31 | 1.2.11 | Gaskets and fasteners | 22d | 2013-09-02 | 2013-09-26 | 13 | 94d |  |  |
| 32 | 1.2.12 | Pipe support and valve support materials | 22d | 2013-09-02 | 2013-09-26 | 14 | 94d |  | start no earlier than 2013-09-02 |
| 33 | 1.2.13 | MCC | 22d | 2013-09-02 | 2013-09-26 | 15 | 94d |  | start no earlier than 2013-09-02 |
| 34 | 1.2.14 | Cable tray | 22d | 2013-09-02 | 2013-09-26 | 16 | 94d |  | start no earlier than 2013-09-02 |
| 35 | 1.2.15 | Motors | 22d | 2013-09-02 | 2013-09-26 | 17 | 94d |  | start no earlier than 2013-09-02 |
| 36 | 1.2.16 | Light fittings | 22d | 2013-09-02 | 2013-09-26 | 18 | 94d |  | start no earlier than 2013-09-02 |
| 37 | 1.2.17 | Instruments | 22d | 2013-09-02 | 2013-09-26 | 19 | 94d |  | start no earlier than 2013-09-02 |

| ID | WBS | Task | Duration | Start | Finish | Predecessors | Total slack | Free slack | Constraint |
| --- | --- | --- | --- | --- | --- | --- | --- | --- | --- |
| 38 | 1.3 | **3. Civil and Erection** | 81d | 2013-08-19 | 2013-11-20 |  | 84d |  |  |
| 39 | 1.3.1 | **3.1 Structurals Civil foundation** | 30d | 2013-08-19 | 2013-09-21 |  | 138d |  |  |
| 40 | 1.3.1.1 | a) Dismantling | 5d | 2013-08-19 | 2013-08-23 |  | 98d | 0d | start no earlier than 2013-08-19 |
| 41 | 1.3.1.2 | b) Excavation | 5d | 2013-08-24 | 2013-08-29 | 40 | 98d | 0d |  |
| 42 | 1.3.1.3 | c) PCC | 5d | 2013-08-30 | 2013-09-04 | 41 | 98d | 0d |  |
| 43 | 1.3.1.4 | d) Footing and column construction | 5d | 2013-09-05 | 2013-09-10 | 42 | 98d | 0d |  |
| 44 | 1.3.1.5 | e) Soil consolidation | 5d | 2013-09-11 | 2013-09-16 | 43 | 98d | 0d |  |
| 45 | 1.3.1.6 | f) PCC and RCC flooring | 5d | 2013-09-17 | 2013-09-21 | 44 | 98d |  |  |
| 46 | 1.3.2 | **3.2 Equipments civil foundation** | 33d | 2013-08-19 | 2013-09-25 |  | 135d |  |  |
| 47 | 1.3.2.1 | a) Dismantling | 5d | 2013-08-19 | 2013-08-23 |  | 95d | 0d | start no earlier than 2013-08-19 |
| 48 | 1.3.2.2 | b) Exacavation | 5d | 2013-08-24 | 2013-08-29 | 47 | 95d | 0d |  |
| 49 | 1.3.2.3 | c) PCC | 5d | 2013-08-30 | 2013-09-04 | 48 | 95d | 0d |  |
| 50 | 1.3.2.4 | d) Footing and column construction | 5d | 2013-09-05 | 2013-09-10 | 49 | 95d | 0d |  |
| 51 | 1.3.2.5 | e) Soil consolidation | 3d | 2013-09-11 | 2013-09-13 | 50 | 95d | 0d |  |
| 52 | 1.3.2.6 | f) PCC and RCC flooring | 5d | 2013-09-14 | 2013-09-19 | 51 | 95d | 0d |  |
| 53 | 1.3.2.7 | g) Plastering of flooring | 5d | 2013-09-20 | 2013-09-25 | 52 | 95d |  |  |
| 54 | 1.3.3 | **3.3 Erection of equipments and Structurals** | 45d | 2013-09-09 | 2013-10-30 |  | 105d |  |  |
| 55 | 1.3.3.1 | a) Erection of Structurals | 20d | 2013-09-09 | 2013-10-01 |  | 65d | 0d | start no earlier than 2013-09-09 |
| 56 | 1.3.3.2 | b) Positioing of Equipments and pumps | 20d | 2013-10-02 | 2013-10-24 | 55 | 65d | 0d |  |
| 57 | 1.3.3.3 | c)Filling and Leak testing | 5d | 2013-10-25 | 2013-10-30 | 56 | 65d |  |  |
| 58 | 1.3.4 | **3.4 Erection of structurals, pipes, fittings, Electrical Equipments and Instruments** | 63d | 2013-09-09 | 2013-11-20 |  | 65d | 0d |  |
| 59 | 1.3.4.1 | a) Pipe rack and supports | 18d | 2013-09-09 | 2013-09-28 |  | 26d | 0d | start no earlier than 2013-09-09 |
| 60 | 1.3.4.2 | b) Process Piping | 44d | 2013-09-30 | 2013-11-19 | 59 | 26d |  |  |
| 61 | 1.3.4.3 | c) Utility Piping | 44d | 2013-10-01 | 2013-11-20 |  | 25d |  | start no earlier than 2013-10-01 |
| 62 | 1.3.4.4 | d) Erection of cable tray ( Electrical and Instrument ) | 44d | 2013-10-01 | 2013-11-20 |  | 25d |  | start no earlier than 2013-10-01 |
| 63 | 1.3.4.5 | e) Laying of Electrical cables and Instrument cables | 44d | 2013-10-01 | 2013-11-20 |  | 25d |  | start no earlier than 2013-10-01 |
| 64 | 1.3.4.6 | f) Erection of equipments and instruments | 44d | 2013-10-01 | 2013-11-20 |  | 25d |  | start no earlier than 2013-10-01 |
| 65 | 1.3.4.7 | g) Erection of MCC and Motors | 44d | 2013-10-01 | 2013-11-20 |  | 25d |  | start no earlier than 2013-10-01 |
| 66 | 1.3.4.8 | h) Installation of Light fittings with LDB | 44d | 2013-10-01 | 2013-11-20 |  | 25d |  | start no earlier than 2013-10-01 |

| ID | WBS | Task | Duration | Start | Finish | Predecessors | Total slack | Free slack |
| --- | --- | --- | --- | --- | --- | --- | --- | --- |
| 67 | 1.4 | **4. Pre-commissioning** | 17d | 2013-11-21 | 2013-12-09 |  | 65d |  |
| 68 | 1.4.1 | a) Cleaning and Flushing ( Tanks, Equipments and Pipe lines ) | 5d | 2013-11-21 | 2013-11-26 | 58 | 25d | 0d |
| 69 | 1.4.2 | b) Hook up with Existing set up (Process and utilities) | 5d | 2013-11-27 | 2013-12-01 | 68 | 25d | 0d |
| 70 | 1.4.3 | c) Trial run of Equipments | 4d | 2013-12-02 | 2013-12-05 | 69 | 25d | 0d |
| 71 | 1.4.4 | d) Brine filling and circulation | 3d | 2013-12-06 | 2013-12-09 | 70 | 25d | 0d |
| 72 | 1.5 | 5. Commissioning of plant | 5d | 2013-12-10 | 2013-12-14 | 71 | 65d |  |
