# Brine Plant

Schedule from MS Project, 2013-02-04 to 2013-12-31.
CAL

## Calendars

- Standard: Mon-Fri 08:00-12:00, 13:00-17:00; Sat-Sun off. Exceptions (off unless hours are given): 2013-04-13 08:00-12:00, 13:00-17:00, 2013-06-29 08:00-12:00, 13:00-17:00, 2013-07-27 08:00-12:00, 13:00-17:00, 2013-08-31 08:00-12:00, 13:00-17:00, 2013-09-28 08:00-12:00, 13:00-17:00, 2013-11-02 08:00-12:00, 13:00-17:00, 2013-11-30 to 2013-12-01 08:00-12:00, 13:00-17:00.

## Schedule

| ID | WBS | Task | Duration | Start | Finish | Predecessors | Total slack | Free slack | Constraint |
| --- | --- | --- | --- | --- | --- | --- | --- | --- | --- |
| 1 | 1 | **06-Hypo** | 245d? | 2013-02-04 | 2013-12-31 |  | 9d |  |  |
| 2 | 1.1 | **1. Equipments ordering** | 154d? | 2013-02-04 | 2013-08-31 |  | 100d |  |  |
| 3 | 1.1.1 | Hypo circulation pumps | 51d | 2013-02-04 | 2013-04-13 |  | 203d |  | finish no earlier than 2013-04-13 |
| 4 | 1.1.2 | Guard tower circulation pumps | 51d | 2013-02-04 | 2013-04-13 |  | 203d |  | start no earlier than 2013-02-04 |
| 5 | 1.1.3 | Heat Exchanger | 51d | 2013-02-04 | 2013-04-13 |  | 203d |  | start no earlier than 2013-02-04 |
| 6 | 1.1.4 | Acidic Wash Tower | 51d | 2013-02-04 | 2013-04-13 |  | 203d |  | start no earlier than 2013-02-04 |
| 7 | 1.1.5 | Hypo Blower | 1d? | 2013-07-31 | 2013-07-31 |  | 123d |  |  |
| 8 | 1.1.6 | Caustic Over Head Tank | 51d | 2013-02-04 | 2013-04-13 |  | 203d |  | start no earlier than 2013-02-04 |
| 9 | 1.1.7 | Pipings and fittings | 23d | 2013-08-01 | 2013-08-31 |  | 40d | 0d | finish no earlier than 2013-08-31 |
| 10 | 1.1.8 | Valves | 21d | 2013-06-03 | 2013-06-29 |  | 147d |  | finish no earlier than 2013-06-29 |
| 11 | 1.1.9 | Gaskets and fasteners | 23d | 2013-08-01 | 2013-08-31 |  | 100d |  | start no earlier than 2013-08-01 |
| 12 | 1.1.10 | Pipe support and valve support materials | 23d | 2013-08-01 | 2013-08-31 |  | 100d |  | start no earlier than 2013-08-01 |
| 13 | 1.1.11 | MCC | 33d | 2013-06-03 | 2013-07-16 |  | 114d | 35d | finish no earlier than 2013-07-16 |
| 14 | 1.1.12 | Cables and Cable tray | 15d | 2013-07-22 | 2013-08-08 |  | 117d |  | start no earlier than 2013-07-22 |
| 15 | 1.1.13 | Motors | 15d | 2013-05-27 | 2013-06-14 |  | 158d |  | start no earlier than 2013-05-27 |
| 16 | 1.1.14 | Light fittings | 15d | 2013-07-22 | 2013-08-08 |  | 117d |  | start no earlier than 2013-07-22 |
| 17 | 1.1.15 | Instruments, Cables and Cable tray | 137d | 2013-02-04 | 2013-08-08 |  | 117d |  | start no earlier than 2013-02-04 |
| 18 | 1.2 | **2. Equipments Receipts** | 84d? | 2013-07-31 | 2013-11-20 |  | 40d |  |  |
| 19 | 1.2.1 | Hypo circulation pumps | 31d | 2013-09-02 | 2013-10-11 |  | 69d |  | finish no earlier than 2013-10-11 |
| 20 | 1.2.2 | Guard tower circulation pumps | 31d | 2013-09-02 | 2013-10-11 |  | 69d |  | start no earlier than 2013-09-02 |
| 21 | 1.2.3 | Heat Exchanger | 31d | 2013-09-02 | 2013-10-11 |  | 69d |  | start no earlier than 2013-09-02 |
| 22 | 1.2.4 | Acidic Wash Tower | 31d | 2013-09-02 | 2013-10-11 |  | 69d |  | start no earlier than 2013-09-02 |
| 23 | 1.2.5 | Hypo Blower | 1d? | 2013-07-31 | 2013-07-31 |  | 123d |  |  |
| 24 | 1.2.6 | Caustic Over Head Tank | 31d | 2013-09-02 | 2013-10-11 |  | 69d |  | start no earlier than 2013-09-02 |
| 25 | 1.2.7 | Pipings and fittings | 60d | 2013-09-02 | 2013-11-20 | 9 | 40d |  | start no earlier than 2013-09-02 |
| 26 | 1.2.8 | Valves | 31d | 2013-09-02 | 2013-10-11 |  | 69d |  | start no earlier than 2013-09-02 |
| 27 | 1.2.9 | Gaskets and fasteners | 21d | 2013-09-02 | 2013-09-28 |  | 79d |  | start no earlier than 2013-09-02 |
| 28 | 1.2.10 | Pipe support and valve support materials | 21d | 2013-09-02 | 2013-09-28 |  | 79d |  | start no earlier than 2013-09-02 |
| 29 | 1.2.11 | MCC | 21d | 2013-09-02 | 2013-09-28 | 13 | 79d |  | start no earlier than 2013-09-02 |
| 30 | 1.2.12 | Cables and Cable tray | 21d | 2013-09-02 | 2013-09-28 |  | 79d |  | start no earlier than 2013-09-02 |
| 31 | 1.2.13 | Motors | 21d | 2013-09-02 | 2013-09-28 |  | 79d |  | start no earlier than 2013-09-02 |
| 32 | 1.2.14 | Light fittings | 21d | 2013-09-02 | 2013-09-28 |  | 79d |  | start no earlier than 2013-09-02 |
| 33 | 1.2.15 | Instruments, Cables and Cable tray | 21d | 2013-09-02 | 2013-09-28 |  | 79d |  | start no earlier than 2013-09-02 |

| ID | WBS | Task | Duration | Start | Finish | Predecessors | Total slack | Free slack | Constraint |
| --- | --- | --- | --- | --- | --- | --- | --- | --- | --- |
| 34 | 1.3 | **3. Civil and Erection** | 27d | 2013-11-02 | 2013-12-05 |  | 27d |  |  |
| 35 | 1.3.1 | **3.1 Hypo circulation System** | 4d | 2013-12-02 | 2013-12-05 |  | 27d |  |  |
| 36 | 1.3.1.1 | a)Removal of old Hypo circulation pumps and Heat Exchanger | 1d | 2013-12-02 | 2013-12-02 |  | 27d | 0d | start no earlier than 2013-12-02 |
| 37 | 1.3.1.2 | b)Civil Bed Modification | 1d | 2013-12-03 | 2013-12-03 | 36 | 27d | 0d |  |
| 38 | 1.3.1.3 | c) Positioning of new hypo circulation pumps and Heat Exchanger | 1d | 2013-12-04 | 2013-12-04 | 37 | 27d | 0d |  |
| 39 | 1.3.1.4 | d) idle run test | 1d | 2013-12-05 | 2013-12-05 | 38 | 27d |  |  |
| 40 | 1.3.2 | **3.2 Acidic Wash Tower system** | 4d | 2013-12-02 | 2013-12-05 |  | 27d |  |  |
| 41 | 1.3.2.1 | a) Removal of Old acidic wash tower circulation pumps and tower | 1d | 2013-12-02 | 2013-12-02 |  | 27d | 0d | start no earlier than 2013-12-02 |
| 42 | 1.3.2.2 | b) Civil Bed Modification | 1d | 2013-12-03 | 2013-12-03 | 41 | 27d | 0d | start no earlier than 2013-12-03 |
| 43 | 1.3.2.3 | c) Positioning of acidic wash tower and Circulation pumps | 1d | 2013-12-04 | 2013-12-04 | 42 | 27d | 0d | start no earlier than 2013-12-04 |
| 44 | 1.3.2.4 | d) idle run test | 1d | 2013-12-05 | 2013-12-05 | 43 | 27d |  | start no earlier than 2013-12-05 |
| 45 | 1.3.3 | **3.3 Caustic Over Head Tank** | 26d | 2013-11-02 | 2013-12-04 |  | 28d |  |  |
| 46 | 1.3.3.1 | a) Strengthening of Existing structure | 22d | 2013-11-02 | 2013-11-30 |  | 28d | 0d | finish no earlier than 2013-11-30 |
| 47 | 1.3.3.2 | b) Removal of Old Tank | 2d | 2013-12-01 | 2013-12-02 | 46 | 28d | 0d |  |
| 48 | 1.3.3.3 | d) Positioning of new tanks | 1d | 2013-12-03 | 2013-12-03 | 47 | 28d | 0d |  |
| 49 | 1.3.3.4 | e) leak testing | 1d | 2013-12-04 | 2013-12-04 | 48 | 28d |  |  |
| 50 | 1.4 | **4. Erection of structurals, pipes, fittings, Electrical Equipments and Instruments** | 68d | 2013-09-02 | 2013-11-30 |  | 9d | 0d |  |
| 51 | 1.4.1 | a) Pipe rack and supports | 22d | 2013-09-02 | 2013-09-30 |  | 55d |  | finish no earlier than 2013-09-30 |
| 52 | 1.4.2 | b) Process Piping | 45d | 2013-10-02 | 2013-11-30 |  | 9d |  | finish no earlier than 2013-11-30 |
| 53 | 1.4.3 | c) Utility Piping | 45d | 2013-10-02 | 2013-11-30 |  | 9d |  | start no earlier than 2013-10-02 |
| 54 | 1.4.4 | d) Erection of cable tray ( Electrical and Instrument ) | 45d | 2013-10-02 | 2013-11-30 |  | 9d |  | start no earlier than 2013-10-02 |
| 55 | 1.4.5 | e) Laying of Electrical cables and Instrument cables | 45d | 2013-10-02 | 2013-11-30 |  | 9d |  | start no earlier than 2013-10-02 |
| 56 | 1.4.6 | f) Erection of equipments and instruments | 45d | 2013-10-02 | 2013-11-30 |  | 9d |  | start no earlier than 2013-10-02 |
| 57 | 1.4.7 | g) Erection of MCC and Motors | 45d | 2013-10-02 | 2013-11-30 |  | 9d |  | start no earlier than 2013-10-02 |
| 58 | 1.4.8 | h) Installation of Light fittings with LDB | 45d | 2013-10-02 | 2013-11-30 |  | 9d |  | start no earlier than 2013-10-02 |

| ID | WBS | Task | Duration | Start | Finish | Predecessors | Total slack | Free slack |
| --- | --- | --- | --- | --- | --- | --- | --- | --- |
| 59 | 1.5 | **5. Precommissioning** | 18d | 2013-12-01 | 2013-12-24 |  | 9d |  |
| 60 | 1.5.1 | a) Cleaning and Flushing ( Tanks, Equipments and Pipe lines ) | 7d | 2013-12-01 | 2013-12-09 | 50 | 9d | 0d |
| 61 | 1.5.2 | b) Hook up with Existing set up (Process and utilities) | 6d | 2013-12-10 | 2013-12-17 | 60 | 9d | 0d |
| 62 | 1.5.3 | c) Trial run of Equipments | 5d | 2013-12-18 | 2013-12-24 | 61 | 9d | 0d |
| 63 | 1.6 | 6. Commissioning of plant | 5d | 2013-12-25 | 2013-12-31 | 62 | 9d |  |
