# Brine Plant

Schedule from MS Project, 2013-12-10 to 2014-01-01.
CAL

## Calendars

- Standard: Mon-Fri 08:00-12:00, 13:00-17:00; Sat-Sun off.

## Schedule

| ID | WBS | Task | Duration | Start | Finish | Predecessors | Total slack | Free slack | Constraint |
| --- | --- | --- | --- | --- | --- | --- | --- | --- | --- |
| 1 | 1 | **08-Process-Hookup** | 16.5d | 2013-12-10 | 2014-01-01 |  | 8.5d |  |  |
| 2 | 1.1 | **Cell house** | 10d | 2013-12-10 | 2013-12-23 |  | 9d |  |  |
| 3 | 1.1.1 | Removal of Old line connected to Equipments | 0.5d | 2013-12-10 | 2013-12-10 |  | 9d | 0d | start no earlier than 2013-12-10 |
| 4 | 1.1.2 | Removal of Anolyte circulation tank and pump | 0.5d | 2013-12-10 | 2013-12-10 | 3 | 9d | 0d |  |
| 5 | 1.1.3 | Removal of Catholyte circulation tank and pump | 0.5d | 2013-12-11 | 2013-12-11 | 4 | 9d | 0d |  |
| 6 | 1.1.4 | Dismantling | 0.5d | 2013-12-11 | 2013-12-11 | 5 | 9d | 0d |  |
| 7 | 1.1.5 | Exacavation | 0.5d | 2013-12-12 | 2013-12-12 | 6 | 9d | 0d |  |
| 8 | 1.1.6 | PCC | 0.5d | 2013-12-12 | 2013-12-12 | 7 | 9d | 0d |  |
| 9 | 1.1.7 | RCC | 0.5d | 2013-12-13 | 2013-12-13 | 8 | 9d | 0d |  |
| 10 | 1.1.8 | Anolyte tank and its pump positioning | 0.5d | 2013-12-13 | 2013-12-13 | 9 | 9d | 0d |  |
| 11 | 1.1.9 | Catholyte tank and its pump positioning | 1d | 2013-12-16 | 2013-12-16 | 10 | 9d | 0d |  |
| 12 | 1.1.10 | Erection of motor and cable | 1d | 2013-12-17 | 2013-12-17 | 11 | 9d | 0d |  |
| 13 | 1.1.11 | Pipe line laying and erection | 1d | 2013-12-18 | 2013-12-18 | 12 | 9d | 0d |  |
| 14 | 1.1.12 | Process line Hook up | 1d | 2013-12-19 | 2013-12-19 | 13 | 9d | 0d |  |
| 15 | 1.1.13 | Utility line hook up | 1d | 2013-12-20 | 2013-12-20 | 14 | 9d | 0d |  |
| 16 | 1.1.14 | Cleaning and Flushing of tanks and pipe lines | 1d | 2013-12-23 | 2013-12-23 | 15 | 9d | 0d |  |
| 17 | 1.2 | Pre-commissioning | 1d | 2013-12-24 | 2013-12-24 | 16 | 9d | 0d |  |
| 18 | 1.3 | Commissioning | 5d | 2013-12-25 | 2013-12-31 | 17 | 9d |  |  |
| 19 | 1.4 | **Hydrogen Handling system** | 11d | 2013-12-10 | 2013-12-24 |  | 9d |  |  |
| 20 | 1.4.1 | Removal of Product cooler and catholyte Heater | 0.5d | 2013-12-10 | 2013-12-10 |  | 9d | 0d | start no earlier than 2013-12-10 |
| 21 | 1.4.2 | Modification of Civil Bed - Hydrogen Vent stack | 0.5d | 2013-12-10 | 2013-12-10 | 20 | 9d | 0d |  |
| 22 | 1.4.3 | Hydrogen gas vent stack positioning | 1d | 2013-12-11 | 2013-12-11 | 21 | 9d | 0d |  |
| 23 | 1.4.4 | Chlorine seal pot positioning | 1d | 2013-12-12 | 2013-12-12 | 22 | 9d | 0d |  |
| 24 | 1.4.5 | E 201 and E 203 Positioning | 1d | 2013-12-13 | 2013-12-13 | 23 | 9d | 0d |  |
| 25 | 1.4.6 | Pipe line laying and erection | 4d | 2013-12-16 | 2013-12-19 | 24 | 9d | 0d |  |
| 26 | 1.4.7 | Process line Hook up | 1d | 2013-12-20 | 2013-12-20 | 25 | 9d | 0d |  |
| 27 | 1.4.8 | Utility line hook up | 1d | 2013-12-23 | 2013-12-23 | 26 | 9d | 0d |  |
| 28 | 1.4.9 | Cleaning and Flushing of tanks and pipe lines | 1d | 2013-12-24 | 2013-12-24 | 27 | 9d | 0d |  |
| 29 | 1.5 | Commissioning | 5d | 2013-12-25 | 2013-12-31 | 28 | 9d |  |  |

| ID | WBS | Task | Duration | Start | Finish | Predecessors | Total slack | Free slack | Constraint |
| --- | --- | --- | --- | --- | --- | --- | --- | --- | --- |
| 30 | 1.6 | **Chlorine and Hydrogen Handling** | 10d | 2013-12-10 | 2013-12-23 |  | 9d |  |  |
| 31 | 1.6.1 | Process line hook up | 5d | 2013-12-10 | 2013-12-16 |  | 9d | 0d | start no earlier than 2013-12-10 |
| 32 | 1.6.2 | Utility line hook up | 5d | 2013-12-17 | 2013-12-23 | 31 | 9d | 0d |  |
| 33 | 1.7 | Precommissioning | 1d | 2013-12-24 | 2013-12-24 | 32 | 9d | 0d |  |
| 34 | 1.8 | Commissioning | 5d | 2013-12-25 | 2013-12-31 | 33 | 9d |  |  |
| 35 | 1.9 | **Dry chlorine section** | 11d | 2013-12-10 | 2013-12-24 |  | 9d |  |  |
| 36 | 1.9.1 | **Drying tower system** | 11d | 2013-12-10 | 2013-12-24 |  | 9d |  |  |
| 37 | 1.9.1.1 | Removal of Old drying tower and its connected lines | 0.5d | 2013-12-10 | 2013-12-10 |  | 9d | 0d | start no earlier than 2013-12-10 |
| 38 | 1.9.1.2 | Drying tower circulation pumps | 0.5d | 2013-12-10 | 2013-12-10 | 37 | 9d | 0d |  |
| 39 | 1.9.1.3 | Plate Heat Exchanger | 0.5d | 2013-12-11 | 2013-12-11 | 38 | 9d | 0d |  |
| 40 | 1.9.1.4 | Positioning of new drying tower | 0.5d | 2013-12-11 | 2013-12-11 | 39 | 9d | 0d |  |
| 41 | 1.9.1.5 | Positiong of tunnel tray | 0.5d | 2013-12-12 | 2013-12-12 | 40 | 9d | 0d |  |
| 42 | 1.9.1.6 | Filling of packing material | 0.5d | 2013-12-12 | 2013-12-12 | 41 | 9d | 0d |  |
| 43 | 1.9.1.7 | Leak testing of Drying Tower | 1d | 2013-12-13 | 2013-12-13 | 42 | 9d | 0d |  |
| 44 | 1.9.1.8 | Modification of Civil Bed - Drying tower circulation pumps | 1d | 2013-12-16 | 2013-12-16 | 43 | 9d | 0d |  |
| 45 | 1.9.1.9 | Positioning of Acid Circulation pumps | 1d | 2013-12-17 | 2013-12-17 | 44 | 9d | 0d |  |
| 46 | 1.9.1.10 | Positioning of Heat Exchanger - Drying Tower | 1d | 2013-12-18 | 2013-12-18 | 45 | 9d | 0d |  |
| 47 | 1.9.1.11 | Pipe line laying and erection | 1d | 2013-12-19 | 2013-12-19 | 46 | 9d | 0d |  |
| 48 | 1.9.1.12 | Process line Hook up | 1d | 2013-12-20 | 2013-12-20 | 47 | 9d | 0d |  |
| 49 | 1.9.1.13 | Utility line hook up | 1d | 2013-12-23 | 2013-12-23 | 48 | 9d | 0d |  |
| 50 | 1.9.1.14 | Cleaning and Flushing of tanks and pipe lines | 1d | 2013-12-24 | 2013-12-24 | 49 | 9d | 0d |  |
| 51 | 1.10 | Commissioning | 5d | 2013-12-25 | 2013-12-31 | 50 | 9d |  |  |
| 52 | 1.11 | **Chlorine compressor system** | 11.5d | 2013-12-10 | 2013-12-25 |  | 8.5d |  |  |
| 53 | 1.11.1 | Removal of Old Chlorine compressor and its connected lines | 0.5d | 2013-12-10 | 2013-12-10 |  | 8.5d | 0d | start no earlier than 2013-12-10 |
| 54 | 1.11.2 | Suction Knock out drum and Delivery separator | 0.5d | 2013-12-10 | 2013-12-10 | 53 | 8.5d | 0d |  |
| 55 | 1.11.3 | Chlorine compressor Heat Exchanger | 0.5d | 2013-12-11 | 2013-12-11 | 54 | 8.5d | 0d |  |
| 56 | 1.11.4 | Modification of Civil Bed - Chlorine compressor | 0.5d | 2013-12-11 | 2013-12-11 | 55 | 8.5d | 0d |  |
| 57 | 1.11.5 | Civil foundation for suction Knock out drum and Delivery separator | 0.5d | 2013-12-12 | 2013-12-12 | 56 | 8.5d | 0d |  |
| 58 | 1.11.6 | Positioning of New chlorine compressor | 1d | 2013-12-12 | 2013-12-13 | 57 | 8.5d | 0d |  |
| 59 | 1.11.7 | Positioning of suction Knock out drum, Delivery separator and Heat Exchanger | 1d | 2013-12-13 | 2013-12-16 | 58 | 8.5d | 0d |  |
| 60 | 1.11.8 | Pipe line laying and erection | 2d | 2013-12-16 | 2013-12-18 | 59 | 8.5d | 0d |  |
| 61 | 1.11.9 | Process line Hook up | 2d | 2013-12-18 | 2013-12-20 | 60 | 8.5d | 0d |  |
| 62 | 1.11.10 | Utility line hook up | 1d | 2013-12-20 | 2013-12-23 | 61 | 8.5d | 0d |  |
| 63 | 1.11.11 | Cleaning and Flushing of tanks and pipe lines | 2d | 2013-12-23 | 2013-12-25 | 62 | 8.5d | 0d |  |
| 64 | 1.12 | Commissioning | 5d | 2013-12-25 | 2014-01-01 | 63 | 8.5d |  |  |

| ID | WBS | Task | Duration | Start | Finish | Predecessors | Total slack | Free slack | Constraint |
| --- | --- | --- | --- | --- | --- | --- | --- | --- | --- |
| 65 | 1.13 | **Chilled water System** | 10d | 2013-12-10 | 2013-12-23 |  | 9d |  |  |
| 66 | 1.13.1 | Removal of Old chilled water pumps | 1d | 2013-12-10 | 2013-12-10 |  | 9d | 0d | start no earlier than 2013-12-10 |
| 67 | 1.13.2 | Modification of Civil Bed - Chilled water pump | 1d | 2013-12-11 | 2013-12-11 | 66 | 9d | 0d |  |
| 68 | 1.13.3 | Positioning of New chilled water pump | 2d | 2013-12-12 | 2013-12-13 | 67 | 9d | 0d |  |
| 69 | 1.13.4 | Intercconnecting chilled water system | 2d | 2013-12-16 | 2013-12-17 | 68 | 9d | 0d |  |
| 70 | 1.13.5 | Pipe line laying and Erection | 2d | 2013-12-18 | 2013-12-19 | 69 | 9d | 0d |  |
| 71 | 1.13.6 | Utility line Hook up | 2d | 2013-12-20 | 2013-12-23 | 70 | 9d | 0d |  |
| 72 | 1.14 | Precommissioning | 1d | 2013-12-24 | 2013-12-24 | 71 | 9d | 0d |  |
| 73 | 1.15 | Commissioning | 5d | 2013-12-25 | 2013-12-31 | 72 | 9d |  |  |
| 74 | 1.16 | **Primary Brine** | 10d | 2013-12-10 | 2013-12-23 |  | 9d |  |  |
| 75 | 1.16.1 | Draining and Cleaning of Reactors | 1d | 2013-12-10 | 2013-12-10 |  | 9d | 0d | start no earlier than 2013-12-10 |
| 76 | 1.16.2 | Lifting of reactors to suit clarifier inlet | 2d | 2013-12-11 | 2013-12-12 | 75 | 9d | 0d |  |
| 77 | 1.16.3 | Connecting FRP trough from reactor to clarifier | 2d | 2013-12-13 | 2013-12-16 | 76 | 9d | 0d |  |
| 78 | 1.16.4 | Hooking up of Clear Brine line to Anthracite filter | 1d | 2013-12-17 | 2013-12-17 | 77 | 9d | 0d |  |
| 79 | 1.16.5 | Hooking up of Filtered Brine to UF filter | 1d | 2013-12-18 | 2013-12-18 | 78 | 9d | 0d |  |
| 80 | 1.16.6 | Hooking up of Reagents Dosing line | 1d | 2013-12-19 | 2013-12-19 | 79 | 9d | 0d |  |
| 81 | 1.16.7 | Utility line Hook up | 2d | 2013-12-20 | 2013-12-23 | 80 | 9d | 0d | finish no earlier than 2013-08-01 |
| 82 | 1.17 | Precommissioning | 1d | 2013-12-24 | 2013-12-24 | 81 | 9d | 0d |  |
| 83 | 1.18 | Commissioning | 5d | 2013-12-25 | 2013-12-31 | 82 | 9d |  |  |
| 84 | 1.19 | **Secondary Brine** | 10d | 2013-12-10 | 2013-12-23 |  | 9d |  |  |
| 85 | 1.19.1 | Removal of polished Brine pumps and its connected lines | 0.5d | 2013-12-10 | 2013-12-10 |  | 9d | 0d | start no earlier than 2013-12-10 |
| 86 | 1.19.2 | Removal of pure Brine pumps and its connected lines | 0.5d | 2013-12-10 | 2013-12-10 | 85 | 9d | 0d |  |
| 87 | 1.19.3 | Modification of Polished Brine pump Bed and Pure Brine pump bed | 1d | 2013-12-11 | 2013-12-11 | 86 | 9d | 0d |  |
| 88 | 1.19.4 | Positioning of polished and Pure Brine pumps | 1d | 2013-12-12 | 2013-12-12 | 87 | 9d | 0d |  |
| 89 | 1.19.5 | Hook up with New storage tank | 1d | 2013-12-13 | 2013-12-13 | 88 | 9d | 0d |  |
| 90 | 1.19.6 | Modification of Existing of Lines at IEC | 1d | 2013-12-16 | 2013-12-16 | 89 | 9d | 0d |  |
| 91 | 1.19.7 | Pipe line laying and Erection | 1d | 2013-12-17 | 2013-12-17 | 90 | 9d | 0d |  |
| 92 | 1.19.8 | Connection of New pipe lines with Existing system | 1d | 2013-12-18 | 2013-12-18 | 91 | 9d | 0d |  |
| 93 | 1.19.9 | Regeneration cycle checking for IEC | 1d | 2013-12-19 | 2013-12-19 | 92 | 9d | 0d |  |
| 94 | 1.19.10 | Process lines hook up | 1d | 2013-12-20 | 2013-12-20 | 93 | 9d | 0d |  |
| 95 | 1.19.11 | Utility lines hook up | 1d | 2013-12-23 | 2013-12-23 | 94 | 9d | 0d |  |
| 96 | 1.20 | Precommissioning | 1d | 2013-12-24 | 2013-12-24 | 95 | 9d | 0d |  |
| 97 | 1.21 | Commissioning | 5d | 2013-12-25 | 2013-12-31 | 96 | 9d |  |  |

| ID | WBS | Task | Duration | Start | Finish | Predecessors | Total slack | Free slack | Constraint |
| --- | --- | --- | --- | --- | --- | --- | --- | --- | --- |
| 98 | 1.22 | **Hypo plant** | 11d | 2013-12-10 | 2013-12-24 |  | 9d |  |  |
| 99 | 1.22.1 | **Acidic wash Tower System** | 11d | 2013-12-10 | 2013-12-24 |  | 9d |  |  |
| 100 | 1.22.1.1 | Removal old acidic wash tower | 1d | 2013-12-10 | 2013-12-10 |  | 9d | 0d | start no earlier than 2013-12-10 |
| 101 | 1.22.1.2 | Removal old acidic wash tower pumps | 1d | 2013-12-11 | 2013-12-11 | 100 | 9d | 0d |  |
| 102 | 1.22.1.3 | Modification of Civil Bed - tower and pumps | 1d | 2013-12-12 | 2013-12-12 | 101 | 9d | 0d |  |
| 103 | 1.22.1.4 | Positioning new acidic wash tower and pumps | 1d | 2013-12-13 | 2013-12-13 | 102 | 9d | 0d |  |
| 104 | 1.22.1.5 | Pipe line laying and Erection | 1d | 2013-12-16 | 2013-12-16 | 103 | 9d | 0d |  |
| 105 | 1.22.1.6 | Leak testing and commissioning | 1d | 2013-12-17 | 2013-12-17 | 104 | 9d | 0d |  |
| 106 | 1.22.1.7 | Caustic Over Head System | 1d | 2013-12-18 | 2013-12-18 | 105 | 9d | 0d |  |
| 107 | 1.22.1.8 | Removal old caustic over head tank | 1d | 2013-12-19 | 2013-12-19 | 106 | 9d | 0d |  |
| 108 | 1.22.1.9 | Strengthening the structurals | 1d | 2013-12-20 | 2013-12-20 | 107 | 9d | 0d |  |
| 109 | 1.22.1.10 | Positioning new caustic overhead tank wash tower | 1d | 2013-12-23 | 2013-12-23 | 108 | 9d | 0d |  |
| 110 | 1.22.1.11 | Pipe line laying and Erection | 1d | 2013-12-24 | 2013-12-24 | 109 | 9d | 0d |  |
| 111 | 1.23 | Precommissioning | 5d | 2013-12-25 | 2013-12-31 | 110 | 9d |  |  |
| 112 | 1.24 | **Hypo Circulation system** | 9.5d | 2013-12-10 | 2013-12-23 |  | 14.5d |  |  |
| 113 | 1.24.1 | Removal of Hypo heatexchangers | 0.5d | 2013-12-10 | 2013-12-10 |  | 14.5d | 0d | start no earlier than 2013-12-10 |
| 114 | 1.24.2 | Positioning of New Heat exchangers | 0.5d | 2013-12-10 | 2013-12-10 | 113 | 14.5d | 0d |  |
| 115 | 1.24.3 | Removal of Hypo circulation pumps | 0.5d | 2013-12-11 | 2013-12-11 | 114 | 14.5d | 0d |  |
| 116 | 1.24.4 | Civil bed modification | 0.5d | 2013-12-11 | 2013-12-11 | 115 | 14.5d | 0d |  |
| 117 | 1.24.5 | Positioning of new Hypo Pumps | 0.5d | 2013-12-12 | 2013-12-12 | 116 | 14.5d | 0d |  |
| 118 | 1.24.6 | Pipe line laying and Erection | 5d | 2013-12-12 | 2013-12-19 | 117 | 14.5d | 0d |  |
| 119 | 1.24.7 | Utility line Hook up | 2d | 2013-12-19 | 2013-12-23 | 118 | 14.5d | 0d |  |
| 120 | 1.25 | Precommissioning | 1d | 2013-12-23 | 2013-12-24 | 119 | 14.5d |  |  |
| 121 | 1.26 | Commissioning | 5d | 2013-12-25 | 2013-12-31 |  | 9d |  | start no earlier than 2013-12-25 |

| ID | WBS | Task | Duration | Start | Finish | Predecessors | Total slack | Free slack | Constraint |
| --- | --- | --- | --- | --- | --- | --- | --- | --- | --- |
| 122 | 1.27 | **Guard tower Hypo circulation system** | 9.5d | 2013-12-10 | 2013-12-23 |  | 9.5d |  |  |
| 123 | 1.27.1 | Removal of Hypo heatexchangers | 0.5d | 2013-12-10 | 2013-12-10 |  | 9.5d | 0d | start no earlier than 2013-12-10 |
| 124 | 1.27.2 | Positioning of New Heat exchangers | 0.5d | 2013-12-10 | 2013-12-10 | 123 | 9.5d | 0d | start no earlier than 2013-12-10 |
| 125 | 1.27.3 | Removal of Hypo circulation pumps | 0.5d | 2013-12-11 | 2013-12-11 | 124 | 9.5d | 0d | start no earlier than 2013-12-11 |
| 126 | 1.27.4 | Civil bed modification | 0.5d | 2013-12-11 | 2013-12-11 | 125 | 9.5d | 0d | start no earlier than 2013-12-11 |
| 127 | 1.27.5 | Positioning of new Hypo Pumps | 0.5d | 2013-12-12 | 2013-12-12 | 126 | 9.5d | 0d | start no earlier than 2013-12-12 |
| 128 | 1.27.6 | Pipe line laying and Erection | 5d | 2013-12-12 | 2013-12-19 | 127 | 9.5d | 0d | start no earlier than 2013-12-12 |
| 129 | 1.27.7 | Utility line Hook up | 2d | 2013-12-19 | 2013-12-23 | 128 | 9.5d | 0d | start no earlier than 2013-12-19 |
| 130 | 1.28 | Precommissioning | 1d | 2013-12-23 | 2013-12-24 | 129 | 9.5d | 0.5d | start no earlier than 2013-12-23 |
| 131 | 1.29 | Commissioning | 5d | 2013-12-25 | 2013-12-31 | 130 | 9d |  | start no earlier than 2013-12-25 |
| 132 | 1.30 | **Hypo Blower** | 6d | 2013-12-16 | 2013-12-23 |  | 9d |  |  |
| 133 | 1.30.1 | Removal of Old Hypo Blower - one no | 1d | 2013-12-16 | 2013-12-16 |  | 9d | 0d | start no earlier than 2013-12-16 |
| 134 | 1.30.2 | Modification of Civil Bed for Hypo Blower | 1d | 2013-12-17 | 2013-12-17 | 133 | 9d | 0d |  |
| 135 | 1.30.3 | Positioning of Hypo Blower | 1d | 2013-12-18 | 2013-12-18 | 134 | 9d | 0d |  |
| 136 | 1.30.4 | Pipe line laying and Erection | 1d | 2013-12-19 | 2013-12-19 | 135 | 9d | 0d |  |
| 137 | 1.30.5 | Process lines hook up | 1d | 2013-12-20 | 2013-12-20 | 136 | 9d | 0d |  |
| 138 | 1.30.6 | Utility lines hook up | 1d | 2013-12-23 | 2013-12-23 | 137 | 9d | 0d |  |
| 139 | 1.31 | Precommissioning | 1d | 2013-12-24 | 2013-12-24 | 138 | 9d | 0d |  |
| 140 | 1.32 | Commissioning | 5d | 2013-12-25 | 2013-12-31 | 139 | 9d |  |  |
