# CEC-156 TPD

Schedule from MS Project, 2012-12-04 to 2014-02-28, status date 2013-08-09, A marks actual dates.
MS-Project
CAL

## Calendars

- CAL Org Calendar: Mon-Sat 08:00-12:00, 13:00-17:00; Sun off. Exceptions (off unless hours are given): 2013-08-15 (Independece Day), 2013-10-12 (Ayudha Pooja), 2013-11-02 (Diwali), 2013-12-25 (Christmas).

## Resources

| Resource |
| --- |
| RP.ABB |
| RP.Purchase |

## Schedule

| ID | WBS | Task | Duration | Start | Finish | Predecessors | Complete | Remaining | Baseline start | Baseline finish | Baseline duration | Total slack | Free slack | Constraint | Resources | Work |
| --- | --- | --- | --- | --- | --- | --- | --- | --- | --- | --- | --- | --- | --- | --- | --- | --- |
| 1 | 1 | **10-Electricals** | 384d | 2012-12-04 A | 2014-02-28 |  | 48% | 200.72d |  |  |  | 0d |  |  |  | 8h |
| 2 | 1.1 | **1.1 Electrical** | 305d | 2012-12-04 A | 2013-11-27 |  | 55% | 135.74d | 2012-12-04 | 2013-11-25 | 306d | 79d |  |  |  |  |
| 3 | 1.1.1 | New Rectifier (ABB) | 198d | 2012-12-04 | 2013-07-22 |  |  |  | 2012-12-04 | 2013-07-22 | 198d | 186d |  | start no earlier than 2012-12-04 | RP.ABB [0.1%] |  |
| 4 | 1.1.2 | New Transformer(ABB) | 252d | 2012-12-04 A | 2013-09-23 A |  | 100% |  | 2012-12-04 | 2013-09-23 | 252d |  |  | start no earlier than 2012-12-04 |  |  |
| 5 | 1.1.3 | HT PANEL 22 KV 1600 AMPS, 31.5 KA | 124d | 2013-04-05 A | 2013-08-27 A |  | 100% |  | 2013-04-05 | 2013-08-27 | 124d |  |  | start no earlier than 2013-04-05 |  |  |
| 6 | 1.1.4 | Siemens Make Motors - 18 Nos | 43d | 2013-06-11 A | 2013-07-30 A |  | 100% |  | 2013-06-11 | 2013-07-30 | 43d |  |  | start no earlier than 2013-06-11 |  |  |
| 7 | 1.1.5 | Siemens Make Motors - 5 Nos | 74d | 2013-06-11 A | 2013-09-04 A |  | 100% |  | 2013-06-11 | 2013-09-04 | 74d |  |  | start no earlier than 2013-06-11 |  |  |
| 8 | 1.1.6 | HT Cables | 100d | 2013-06-14 A | 2013-10-08 A |  | 100% |  | 2013-06-14 | 2013-10-08 | 100d |  |  | start no earlier than 2013-06-14 |  |  |
| 9 | 1.1.7 | LT cables | 60d | 2013-08-19 | 2013-10-28 |  |  |  | 2013-08-19 | 2013-10-26 | 60d | 104d |  | start no earlier than 2013-08-19 |  |  |
| 10 | 1.1.8 | Copper Bus Bars and Flexibles and accessories-Cell House | 91d | 2013-06-18 A | 2013-10-01 A |  | 100% |  | 2013-06-18 | 2013-10-01 | 91d |  |  |  |  |  |
| 11 | 1.1.9 | Copper Bus Bars and Flexibles and accessories- Rectifier | 94d | 2013-08-03 A | 2013-11-22 |  | 43% | 54d | 2013-08-03 | 2013-11-20 | 94d | 67d | 0d | finish no earlier than 2013-11-20 |  |  |
| 12 | 1.1.10 | 2 x 20 kVA UPS | 110d | 2013-06-21 A | 2013-10-29 |  | 32% | 75d | 2013-06-21 | 2013-10-26 | 110d | 103d |  | start no earlier than 2013-06-21 |  |  |
| 13 | 1.1.11 | PCC & MCC Panels | 80d | 2013-07-16 A | 2013-10-17 |  | 50% | 40d | 2013-07-16 | 2013-10-16 | 80d | 113d |  | start no earlier than 2013-07-16 |  |  |
| 14 | 1.1.12 | DG Set 1010 KVA with accessories | 120d | 2013-06-26 A | 2013-11-15 |  | 31% | 82.5d | 2013-06-26 | 2013-11-12 | 120d | 89d |  | start no earlier than 2013-06-26 |  |  |
| 15 | 1.1.13 | Fabrication and supply MS Insert Plates - 221 Nos | 24d | 2013-05-29 A | 2013-06-25 A |  | 100% |  | 2013-05-29 | 2013-06-25 | 24d |  |  | start no earlier than 2013-05-29 |  |  |
| 16 | 1.1.14 | Cable Trays | 42d | 2013-09-13 | 2013-11-01 |  |  |  | 2013-09-13 | 2013-10-31 | 42d | 100d |  | start no earlier than 2013-09-13 |  |  |
| 17 | 1.1.15 | Supply of Bus duct for DG set | 40d | 2013-10-10 | 2013-11-27 |  |  |  | 2013-10-10 | 2013-11-25 | 40d | 79d |  | start no earlier than 2013-10-10 |  |  |
| 18 | 1.1.16 | UPS for ABB (2*5 KVA) rectifier system | 45d | 2013-09-20 | 2013-11-13 |  |  |  | 2013-09-20 | 2013-11-11 | 45d | 91d |  | start no earlier than 2013-09-20 |  |  |
| 19 | 1.1.17 | Supply of MCCB 4 pole, 250 amps for CPU transformer isolation at new RT room | 8d | 2013-09-11 A | 2013-09-19 A |  | 100% |  | 2013-09-11 | 2013-09-19 | 8d |  |  | start no earlier than 2013-09-11 |  |  |
| 20 | 1.1.18 | Supply of bus duct for auxiliary transformer | 30d | 2013-10-17 | 2013-11-21 |  |  |  | 2013-10-17 | 2013-11-20 | 30d | 84d |  | start no earlier than 2013-10-17 |  |  |
| 21 | 1.1.19 | FRP Local Control Station | 30d | 2013-10-17 | 2013-11-21 |  |  |  | 2013-10-17 | 2013-11-20 | 30d | 84d |  | start no earlier than 2013-10-17 |  |  |
| 22 | 1.2 | **2 Tender Documents / BOQ** | 1d | 2013-07-17 A | 2013-07-17 A |  | 100% |  | 2013-02-02 | 2013-09-07 | 187d |  |  |  |  |  |
| 23 | 1.2.1 | Elec | 1d | 2013-07-17 A | 2013-07-17 A |  | 100% |  | 2013-07-17 | 2013-07-17 | 1d |  |  | start no earlier than 2012-07-17 |  |  |
| 24 | 1.3 | **3 Contractor Finalization** | 86d | 2013-07-18 A | 2013-10-28 |  | 78% | 18.97d | 2013-02-18 | 2013-10-26 | 216d | 104d |  |  |  |  |
| 25 | 1.3.1 | Elec - Erection contractor (M/s Sudhan Powertech) | 53d | 2013-07-18 A | 2013-09-17 A | 23 | 100% |  | 2013-07-18 | 2013-09-17 | 53d |  |  | start no earlier than 2012-07-18 |  |  |
| 26 | 1.3.2 | Elec- Copper Bus Bar | 15d | 2013-10-10 | 2013-10-28 |  |  |  | 2013-10-10 | 2013-10-26 | 15d | 104d |  | start no earlier than 2013-10-10 |  |  |

| ID | WBS | Task | Duration | Start | Finish | Predecessors | Complete | Remaining | Baseline start | Baseline finish | Baseline duration | Total slack | Free slack | Constraint | Work |
| --- | --- | --- | --- | --- | --- | --- | --- | --- | --- | --- | --- | --- | --- | --- | --- |
| 27 | 1.4 | **4 Erection of Electrical Equipments** | 264d | 2013-04-23 A | 2014-02-28 |  | 33% | 176.22d | 2013-04-01 | 2014-01-17 | 251d | 0d |  |  | 8h |
| 28 | 1.4.1 | **Rectifier** | 81d | 2013-04-23 A | 2013-07-25 A |  | 100% |  | 2013-04-23 | 2013-07-25 | 81d |  |  |  |  |
| 29 | 1.4.1.1 | New Rectifier civil | 80d | 2013-04-23 A | 2013-07-24 A |  | 100% |  | 2013-04-23 | 2013-07-24 | 80d |  |  | start no earlier than 2013-03-11 |  |
| 30 | 1.4.1.2 | New Rectifier positioning | 1d | 2013-07-25 A | 2013-07-25 A | 29, 3 | 100% |  | 2013-07-25 | 2013-07-25 | 1d |  |  |  |  |
| 31 | 1.4.2 | **Transformer** | 135d | 2013-04-23 A | 2013-09-27 A |  | 100% |  | 2013-04-23 | 2013-09-27 | 136d |  |  |  |  |
| 32 | 1.4.2.1 | New Transformer Civil | 80d | 2013-04-23 A | 2013-07-24 A | 4 | 100% |  | 2013-04-23 | 2013-07-24 | 80d |  |  |  |  |
| 33 | 1.4.2.2 | New Transformer positioning | 3d | 2013-09-25 A | 2013-09-27 A | 32, 4 | 100% |  | 2013-09-25 | 2013-09-27 | 3d |  |  | start no earlier than 2013-09-25 |  |
| 34 | 1.4.3 | **New 22KV HT Panel Erection** | 104d | 2013-08-23 A | 2013-12-24 |  | 61% | 40.99d | 2013-08-23 | 2013-11-26 | 82d | 56d |  |  |  |
| 35 | 1.4.3.1 | Contractor finalization for erection | 1d | 2013-08-23 A | 2013-08-23 A |  | 100% |  | 2013-08-23 | 2013-08-23 | 1d |  |  | start no earlier than 2013-08-23 |  |
| 36 | 1.4.3.2 | Procurement of materials (Channels & Angle) | 1d | 2013-08-27 A | 2013-08-27 A |  | 100% |  | 2013-08-27 | 2013-08-27 | 1d |  |  | start no earlier than 2013-08-27 |  |
| 37 | 1.4.3.3 | Fabrication of base frame | 1d | 2013-08-28 A | 2013-08-28 A | 36 | 100% |  | 2013-08-28 | 2013-08-28 | 1d |  |  |  |  |
| 38 | 1.4.3.4 | Erection of base frame and grouting | 1d | 2013-08-29 A | 2013-08-29 A | 37 | 100% |  | 2013-08-29 | 2013-08-29 | 1d |  |  |  |  |
| 39 | 1.4.3.5 | Receipt of HT panel | 1d | 2013-08-24 A | 2013-08-24 A |  | 100% |  | 2013-08-24 | 2013-08-24 | 1d |  |  | start no earlier than 2013-08-24 |  |
| 40 | 1.4.3.6 | Unloading, leading and positioning of panels in HT room | 4d | 2013-08-26 A | 2013-08-29 A | 39 | 100% |  | 2013-08-26 | 2013-08-29 | 4d |  |  |  |  |
| 41 | 1.4.3.7 | Interconnection between panels, Tightness checking | 1d | 2013-08-30 A | 2013-08-30 A | 40 | 100% |  | 2013-08-30 | 2013-08-30 | 1d |  |  |  |  |
| 42 | 1.4.3.8 | Formation of earth pits and HT panel earthing | 10d | 2013-10-21 A | 2013-10-31 A |  | 100% |  | 2013-10-10 | 2013-10-16 | 6d |  |  | start no earlier than 2013-10-21 |  |
| 43 | 1.4.3.9 | Fixing of supports for Cable Trays | 13d | 2013-10-05 A | 2013-10-19 A |  | 100% |  | 2013-10-05 | 2013-10-11 | 6d |  |  | finish no earlier than 2013-10-19 |  |
| 44 | 1.4.3.10 | Erection of cable trays for Top entry | 4d | 2013-10-21 A | 2013-10-24 A | 43 | 100% |  | 2013-10-12 | 2013-10-16 | 4d |  |  | start no earlier than 2013-08-30 |  |
| 45 | 1.4.3.11 | Dispatch signoff for HT Cable, Approval | 20d | 2013-09-02 A | 2013-09-24 A |  | 100% |  | 2013-09-02 | 2013-09-24 | 20d |  |  | start no earlier than 2013-09-02 |  |
| 46 | 1.4.3.12 | Receipt of HT cable | 20d | 2013-09-16 A | 2013-10-08 A |  | 100% |  | 2013-09-16 | 2013-10-08 | 20d |  |  | start no earlier than 2013-09-16 |  |
| 47 | 1.4.3.13 | Laying of HT cables for incomer - 3 Runs | 4d | 2013-10-25 A | 2013-10-29 A | 44 | 100% |  | 2013-10-17 | 2013-11-02 | 15d |  |  |  |  |
| 48 | 1.4.3.14 | Laying of HT cable O/G 2 - New RT | 2d | 2013-10-31 A | 2013-11-01 A | 47 | 100% |  |  |  |  |  |  |  |  |
| 49 | 1.4.3.15 | Laying of HT cables for O/G 1- Old HT I/C, | 2d | 2013-11-04 | 2013-11-05 | 48 |  |  |  |  |  | 96d | 0d |  |  |
| 50 | 1.4.3.16 | Laying of HT cables for OG 3 - New Aux Transformer | 2d | 2013-11-26 | 2013-11-27 | 122 |  |  |  |  |  | 79d |  |  |  |
| 51 | 1.4.3.17 | Termination of HT cables in I/C | 1d | 2013-10-30 | 2013-10-30 | 47 |  |  | 2013-11-04 | 2013-11-07 | 4d | 102d |  |  |  |
| 52 | 1.4.3.18 | Termination of HT cables of O/G 2 - New RT | 1d | 2013-11-04 | 2013-11-04 | 48 |  |  |  |  |  | 99d |  |  |  |
| 53 | 1.4.3.19 | Termination of HT cables of O/G 1 - Old HT I/C | 1d | 2013-11-06 | 2013-11-06 | 49 |  |  |  |  |  | 96d | 0d |  |  |
| 54 | 1.4.3.20 | Termination of HT cables of O/G 3 - New Aux. Transformer | 1d | 2013-11-07 | 2013-11-07 | 53 |  |  |  |  |  | 96d |  |  |  |
| 55 | 1.4.3.21 | Submission of Drawing, work completion report to CEA for Inspection | 1d | 2013-11-04 | 2013-11-04 |  |  |  | 2013-11-08 | 2013-11-25 | 15d | 56d | 0d | start no earlier than 2013-11-04 |  |
| 56 | 1.4.3.22 | CEA Inspection | 15d | 2013-11-05 | 2013-11-21 | 55 |  |  |  |  |  | 56d | 0d |  |  |
| 57 | 1.4.3.23 | Completion of compliance and submission | 6d | 2013-11-22 | 2013-11-28 | 56 |  |  |  |  |  | 56d | 0d |  |  |
| 58 | 1.4.3.24 | Obtaining Safety certifcate and approval for operation | 6d | 2013-11-29 | 2013-12-05 | 57 |  |  |  |  |  | 56d | 0d |  |  |
| 59 | 1.4.3.25 | PED Approval | 15d | 2013-12-06 | 2013-12-23 | 58 |  |  | 2013-11-08 | 2013-11-25 | 15d | 56d | 0d | start no earlier than 2013-10-09 |  |
| 60 | 1.4.3.26 | Precommissioning Tests by Supplier | 2d | 2013-11-07 | 2013-11-08 |  |  |  | 2013-10-21 | 2013-10-23 | 3d | 95d |  | start no earlier than 2013-11-07 |  |
| 61 | 1.4.3.27 | Termination of HT cables in 22KV yard I/C and Energizing the HT panel and put into service | 1d | 2013-12-24 | 2013-12-24 | 59 |  |  | 2013-11-26 | 2013-11-26 | 1d | 56d |  | start no earlier than 2013-10-09 |  |

Notes:
- 27: Civil Construction / Equipment Positioning / Erection

| ID | WBS | Task | Duration | Start | Finish | Predecessors | Complete | Remaining | Baseline start | Baseline finish | Baseline duration | Total slack | Free slack | Constraint |
| --- | --- | --- | --- | --- | --- | --- | --- | --- | --- | --- | --- | --- | --- | --- |
| 62 | 1.4.4 | **Erection of Rectifier Transformer, Rectifier unit and accessories** | 104d | 2013-07-22 A | 2013-11-22 |  | 57% | 44.97d | 2013-07-22 | 2013-11-06 | 93d | 83d |  |  |
| 63 | 1.4.4.1 | Service indent for Rectifier erection | 1d | 2013-08-02 A | 2013-08-02 A |  | 100% |  | 2013-08-02 | 2013-08-02 | 1d |  |  | start no earlier than 2013-08-02 |
| 64 | 1.4.4.2 | Approval & Contractor finalization for erection | 6d | 2013-08-03 A | 2013-08-09 A | 63 | 100% |  | 2013-08-03 | 2013-08-09 | 6d |  |  |  |
| 65 | 1.4.4.3 | Receipt of Rectifier after clearance | 1d | 2013-07-22 A | 2013-07-22 A | 64 | 100% |  | 2013-07-22 | 2013-07-22 | 1d |  |  |  |
| 66 | 1.4.4.4 | Unloading, leading and positioning of Rectifier cubicle in New RT room | 3d | 2013-07-23 A | 2013-07-25 A | 65 | 100% |  | 2013-07-23 | 2013-07-25 | 3d |  |  |  |
| 67 | 1.4.4.5 | Fabrication of J bolt, fixing and grouting in rectifier bed. | 3d | 2013-10-08 A | 2013-10-10 A |  | 100% |  | 2013-10-08 | 2013-10-10 | 3d |  |  | start no earlier than 2013-10-08 |
| 68 | 1.4.4.6 | Service indent for Transformer erection | 1d | 2013-08-17 A | 2013-08-17 A |  | 100% |  | 2013-08-17 | 2013-08-17 | 1d |  |  | start no earlier than 2013-08-17 |
| 69 | 1.4.4.7 | Approval & Contractor finalization for erection | 10d | 2013-08-19 A | 2013-08-29 A | 68 | 100% |  | 2013-08-19 | 2013-08-29 | 10d |  |  |  |
| 70 | 1.4.4.8 | Receipt of Transformer after clearance | 21d | 2013-08-30 A | 2013-09-23 A | 69 | 100% |  | 2013-08-30 | 2013-09-23 | 21d |  |  |  |
| 71 | 1.4.4.9 | Fixing of Rails in the Transformer bed | 3d | 2013-09-24 A | 2013-09-26 A | 70 | 100% |  | 2013-09-24 | 2013-09-26 | 3d |  |  |  |
| 72 | 1.4.4.10 | Unloading, leading and positioning of Rectifier transformer in New RT room | 2d | 2013-09-27 A | 2013-09-28 A | 71 | 100% |  | 2013-09-27 | 2013-09-28 | 2d |  |  |  |
| 73 | 1.4.4.11 | Erection of Oil heat exchanger, piping connection, Oil conservator, HT panel Adaptor box | 3d | 2013-09-30 A | 2013-10-02 A | 72 | 100% |  | 2013-09-30 | 2013-10-02 | 3d |  |  |  |
| 74 | 1.4.4.12 | Oil Filtration for Transformer | 4d | 2013-10-03 A | 2013-10-07 A | 73 | 100% |  | 2013-10-03 | 2013-10-07 | 4d |  |  |  |
| 75 | 1.4.4.13 | Positioning Rectifier in Rectifier bed and alignment with Transformer | 2d | 2013-10-10 A | 2013-10-11 A |  | 100% |  | 2013-10-10 | 2013-10-11 | 2d |  |  | start no earlier than 2013-10-10 |
| 76 | 1.4.4.14 | Fixing of copper flexible connecting between Rectifier cubicle and Transformer. | 2d | 2013-11-01 | 2013-11-04 |  |  |  | 2013-11-01 | 2013-11-02 | 2d | 99d |  | start no earlier than 2013-11-01 |
| 77 | 1.4.4.15 | Drain line pipe connecting to Soak pit | 7d | 2013-11-11 | 2013-11-18 |  |  |  | 2013-10-12 | 2013-10-19 | 7d | 87d |  | start no earlier than 2013-11-11 |
| 78 | 1.4.4.16 | Construction of waste oil collection pit and interconnecting with pipe line. | 10d | 2013-11-04 | 2013-11-14 |  |  |  | 2013-10-21 | 2013-10-31 | 10d | 90d |  | start no earlier than 2013-11-04 |
| 79 | 1.4.4.17 | New Trench connectivity with the existing trench | 2d | 2013-10-05 | 2013-10-07 |  |  |  | 2013-10-05 | 2013-10-07 | 2d | 121d |  | start no earlier than 2013-10-05 |
| 80 | 1.4.4.18 | Fabrication of base frame for erection of Rectifier panel, Polarization panel, AC DC Panel, UPS | 3d | 2013-10-03 A | 2013-10-05 A |  | 100% |  | 2013-10-03 | 2013-10-05 | 3d |  |  |  |
| 81 | 1.4.4.19 | Fabrication and Connecting Raw water, DM water Inlet, out let pipe line with Rectifier and Transformer. | 7d | 2013-11-15 | 2013-11-22 |  |  |  | 2013-10-15 | 2013-10-22 | 7d | 83d |  | start no earlier than 2013-11-15 |
| 82 | 1.4.4.20 | Aluminium and Glass partition construction and provision of Air conditioning. | 7d | 2013-11-07 | 2013-11-14 |  |  |  | 2013-10-23 | 2013-10-30 | 7d | 90d |  | start no earlier than 2013-11-07 |
| 83 | 1.4.4.21 | Fabrication of Cable tray supports, laying of cable trays in the new trenches provided in RT room | 4d | 2013-10-30 | 2013-11-04 |  |  |  | 2013-10-07 | 2013-10-10 | 4d | 93d | 0d | start no earlier than 2013-10-30 |
| 84 | 1.4.4.22 | Laying of Power, Control, communication cable between RCP, PCP, RT, Rectifier cubicle, Polarization Transformer, AC DC panel, Cooling cubicle | 3d | 2013-11-05 | 2013-11-07 | 83 |  |  | 2013-10-11 | 2013-10-15 | 4d | 93d | 0d |  |
| 85 | 1.4.4.23 | Laying of GI earth flats and connecting with Transformer, RT cubicle, Control panel & AC DC panels. | 2d | 2013-11-05 | 2013-11-06 | 83 |  |  | 2013-10-16 | 2013-10-17 | 2d | 97d |  |  |
| 86 | 1.4.4.24 | Glanding, Termination and loop check of all power, control and communication cables | 1d | 2013-11-08 | 2013-11-08 | 84 |  |  | 2013-10-16 | 2013-10-17 | 2d | 93d | 0d |  |
| 87 | 1.4.4.25 | Laying of Incomer Power cable from MCC 3 to AC DC Panel and Termination | 1d | 2013-11-05 | 2013-11-05 |  |  |  | 2013-11-05 | 2013-11-06 | 2d | 98d |  | start no earlier than 2013-11-05 |
| 88 | 1.4.4.26 | Energising the panels, Checking of controls and interlocks | 2d | 2013-11-09 | 2013-11-11 | 86 |  |  | 2013-10-18 | 2013-10-19 | 2d | 93d |  |  |

| ID | WBS | Task | Duration | Start | Finish | Predecessors | Baseline start | Baseline finish | Baseline duration | Total slack | Free slack | Constraint | Resources | Work |
| --- | --- | --- | --- | --- | --- | --- | --- | --- | --- | --- | --- | --- | --- | --- |
| 89 | 1.4.5 | **Copper bus bar, Flexibles for Inside Rectifier room & Cell house** | 59d | 2013-10-02 | 2013-12-11 |  | 2013-10-02 | 2013-12-09 | 59d | 67d |  |  |  | 8h |
| 90 | 1.4.5.1 | Finalization Erection contractor | 10d | 2013-11-01 | 2013-11-13 |  | 2013-10-21 | 2013-10-21 | 1d | 76d | 0d | start no earlier than 2013-11-01 | RP.Purchase | 8h |
| 91 | 1.4.5.2 | Receipt of material inside cell house | 1d | 2013-10-02 | 2013-10-02 | 10 | 2013-10-02 | 2013-10-02 | 1d | 110d | 34d |  |  |  |
| 92 | 1.4.5.3 | Receipt of material inside rectifier room | 1d | 2013-11-23 | 2013-11-23 | 11 | 2013-11-21 | 2013-11-21 | 1d | 67d | 0d | start no earlier than 2013-11-01 |  |  |
| 93 | 1.4.5.4 | Civil - opening for interconnection between cell house and rectifier room | 1d | 2013-11-25 | 2013-11-25 | 92 | 2013-11-22 | 2013-11-22 | 1d | 81d |  |  |  |  |
| 94 | 1.4.5.5 | Erection of Hallmar CT | 1d | 2013-11-25 | 2013-11-25 | 92 | 2013-11-22 | 2013-11-22 | 1d | 81d |  |  |  |  |
| 95 | 1.4.5.6 | Providing Supports for DC isolators and erection | 2d | 2013-11-25 | 2013-11-26 | 92 | 2013-11-22 | 2013-11-23 | 2d | 80d |  |  |  |  |
| 96 | 1.4.5.7 | Supports erection for Copper bus bar both on rectifier room and cell house | 5d | 2013-11-25 | 2013-11-29 | 92 | 2013-11-22 | 2013-11-27 | 5d | 67d | 0d |  |  |  |
| 97 | 1.4.5.8 | Erection of Copper bus bar and flexibles inside Cell house | 15d | 2013-11-14 | 2013-11-30 | 91, 90 | 2013-10-22 | 2013-11-25 | 30d | 76d |  |  |  |  |
| 98 | 1.4.5.9 | Erection of Copper bus bar and flexibles inside Rectifier room | 10d | 2013-11-30 | 2013-12-11 | 96 | 2013-11-28 | 2013-12-09 | 10d | 67d |  |  |  |  |
| 99 | 1.4.6 | **Approval & Contractor finalization for electrical equipments erection** | 33d | 2013-11-01 | 2013-12-10 |  | 2013-10-15 | 2013-12-14 | 53d | 68d |  |  |  |  |
| 100 | 1.4.6.1 | Receipt of LT cables | 7d | 2013-11-01 | 2013-11-09 |  | 2013-10-28 | 2013-11-01 | 5d | 94d |  | start no earlier than 2013-11-01 |  |  |
| 101 | 1.4.6.2 | Receipt of Cable trays | 7d | 2013-11-01 | 2013-11-09 |  | 2013-10-15 | 2013-10-19 | 5d | 94d |  | start no earlier than 2013-11-01 |  |  |
| 102 | 1.4.6.3 | Fabrication of cable tray supports in the pipe rack | 12d | 2013-11-15 | 2013-11-28 |  | 2013-11-22 | 2013-12-03 | 10d | 57d | 0d | start no earlier than 2013-11-15 |  |  |
| 103 | 1.4.6.4 | Laying of cable trays and connecting with supports | 10d | 2013-11-29 | 2013-12-10 | 102 | 2013-12-04 | 2013-12-14 | 10d | 68d |  |  |  |  |
| 104 | 1.4.7 | **Laying LT cable** | 40d | 2013-11-04 | 2013-12-19 |  | 2013-12-04 | 2013-12-14 | 10d | 49d |  |  |  |  |
| 105 | 1.4.7.1 | From LT PCC to Aux PCC | 1d | 2013-11-29 | 2013-11-29 | 102 | 2013-12-04 | 2013-12-04 | 1d | 77d |  |  |  |  |
| 106 | 1.4.7.2 | Cable trench formation from LT PCC existing trench | 10d | 2013-11-07 | 2013-11-18 |  |  |  |  | 80d | 0d | start no earlier than 2013-11-07 |  |  |
| 107 | 1.4.7.3 | Finalising contractor for Cable rack fabrication and erection | 10d | 2013-11-04 | 2013-11-14 |  |  |  |  | 49d | 0d | start no earlier than 2013-11-04 |  |  |
| 108 | 1.4.7.4 | Civil Foundation for cable rack | 7d | 2013-11-19 | 2013-11-26 | 106 |  |  |  | 80d |  |  |  |  |
| 109 | 1.4.7.5 | Cable rack Fabrication and erection | 15d | 2013-11-15 | 2013-12-02 | 107 |  |  |  | 49d | 0d |  |  |  |
| 110 | 1.4.7.6 | Fabrication of tray supports | 3d | 2013-12-03 | 2013-12-05 | 109 |  |  |  | 49d | 0d |  |  |  |
| 111 | 1.4.7.7 | erection of Cable trays | 2d | 2013-12-06 | 2013-12-07 | 110 |  |  |  | 49d | 0d |  |  |  |
| 112 | 1.4.7.8 | From LT PCC to DG Aux PCC | 4d | 2013-12-09 | 2013-12-12 | 111 | 2013-12-04 | 2013-12-07 | 4d | 55d | 6d |  |  |  |
| 113 | 1.4.7.9 | From LT PCC to MCC 1 | 2d | 2013-12-09 | 2013-12-10 | 111, 102 | 2013-12-04 | 2013-12-05 | 2d | 49d | 0d |  |  |  |
| 114 | 1.4.7.10 | From LT PCC to MCC 4A | 4d | 2013-12-11 | 2013-12-14 | 113 | 2013-12-06 | 2013-12-10 | 4d | 49d | 0d |  |  |  |
| 115 | 1.4.7.11 | From LT PCC to MCC 6 | 4d | 2013-12-16 | 2013-12-19 | 114 | 2013-12-11 | 2013-12-14 | 4d | 49d | 0d |  |  |  |
| 116 | 1.4.7.12 | From DG Aux PCC to MCC 3A | 1d | 2013-12-11 | 2013-12-11 | 113 | 2013-12-06 | 2013-12-06 | 1d | 56d | 7d |  |  |  |
| 117 | 1.4.7.13 | From DG Aux PCC to existing 380KVA PCC | 1d | 2013-12-11 | 2013-12-11 | 113 | 2013-12-06 | 2013-12-06 | 1d | 56d | 7d |  |  |  |

| ID | WBS | Task | Duration | Start | Finish | Predecessors | Baseline start | Baseline finish | Baseline duration | Total slack | Free slack | Constraint |
| --- | --- | --- | --- | --- | --- | --- | --- | --- | --- | --- | --- | --- |
| 118 | 1.4.8 | **Auxilliary Transformer** | 36d | 2013-10-16 | 2013-11-27 |  | 2013-10-14 | 2013-11-12 | 26d | 32d |  |  |
| 119 | 1.4.8.1 | Civil foundation for Aux Transformer | 15d | 2013-10-16 | 2013-11-01 |  | 2013-10-14 | 2013-10-30 | 15d | 32d | 0d | start no earlier than 2013-10-16 |
| 120 | 1.4.8.2 | Curing of Foundation | 10d | 2013-11-04 | 2013-11-14 | 119 |  |  |  | 32d | 0d |  |
| 121 | 1.4.8.3 | Neutral & Body earth pits formation for Transformer | 7d | 2013-11-15 | 2013-11-22 | 120 | 2013-10-31 | 2013-11-07 | 7d | 32d | 0d |  |
| 122 | 1.4.8.4 | Installation of Aux. Transformer | 2d | 2013-11-23 | 2013-11-25 | 121 | 2013-11-08 | 2013-11-09 | 2d | 32d | 0d |  |
| 123 | 1.4.8.5 | Laying and connecting earth flats from earth pits to Transformer | 2d | 2013-11-26 | 2013-11-27 | 122 | 2013-11-11 | 2013-11-12 | 2d | 79d |  |  |
| 124 | 1.4.9 | **Bus duct for LT PCC 2** | 51d | 2013-11-23 | 2014-01-22 |  | 2013-11-08 | 2014-01-06 | 51d | 32d |  |  |
| 125 | 1.4.9.1 | Measurement with Transformer & LT PCC drg. | 1d | 2013-11-23 | 2013-11-23 | 121 | 2013-11-08 | 2013-11-08 | 1d | 82d |  |  |
| 126 | 1.4.9.2 | Floating enquiry, Receiving offers, Technical sign off, negotiation, Finalization of vendor, Approval and ordering | 15d | 2013-11-26 | 2013-12-12 | 122 | 2013-11-11 | 2013-11-27 | 15d | 32d | 0d |  |
| 127 | 1.4.9.3 | Receipt of bus duct at site after clearance | 30d | 2013-12-13 | 2014-01-17 | 126 | 2013-11-28 | 2014-01-01 | 30d | 32d | 0d | start no earlier than 2013-10-29 |
| 128 | 1.4.9.4 | Erection of bus duct, supports, connecting with PCC 2 | 4d | 2014-01-18 | 2014-01-22 | 127 | 2014-01-02 | 2014-01-06 | 4d | 32d |  |  |
| 129 | 1.4.10 | **Erection of LT PCC, Aux PCC** | 33d | 2013-11-20 | 2013-12-28 |  | 2013-10-17 | 2013-12-09 | 46d | 49d | 0d |  |
| 130 | 1.4.10.1 | Recipt of LT PCC Panel | 2d | 2013-11-20 | 2013-11-21 |  |  |  |  | 74d | 0d | start no earlier than 2013-11-20 |
| 131 | 1.4.10.2 | Fabrication of Base frame for LT PCC, Aux PCC | 2d | 2013-11-22 | 2013-11-23 | 130 | 2013-10-17 | 2013-10-18 | 2d | 74d | 0d |  |
| 132 | 1.4.10.3 | Fixing of frames and erection of LT PCC - Partial | 1d | 2013-11-25 | 2013-11-25 | 131 | 2013-10-21 | 2013-10-21 | 1d | 74d | 0d | start no earlier than 2013-10-21 |
| 133 | 1.4.10.4 | Erection of LT PCC - Partial | 3d | 2013-11-26 | 2013-11-28 | 132 | 2013-10-22 | 2013-10-24 | 3d | 74d |  | start no earlier than 2013-10-21 |
| 134 | 1.4.10.5 | Removal of power and control cables from the outgoing feeders in existing old PCC and tagging. | 2d | 2013-12-20 | 2013-12-21 | 102, 112, 113, 114, 115, 116, 117 | 2013-12-04 | 2013-12-05 | 2d | 49d | 0d |  |
| 135 | 1.4.10.6 | Removal of old panels in existing PCC | 1d | 2013-12-23 | 2013-12-23 | 134 | 2013-12-04 | 2013-12-04 | 1d | 49d | 0d |  |
| 136 | 1.4.10.7 | Fixing of frames and erection of LT PCC | 1d | 2013-12-24 | 2013-12-24 | 135 | 2013-12-05 | 2013-12-05 | 1d | 49d | 0d |  |
| 137 | 1.4.10.8 | Interconnecting old and new PCC bus bars | 1d | 2013-12-26 | 2013-12-26 | 136 | 2013-12-06 | 2013-12-06 | 1d | 51d |  |  |
| 138 | 1.4.10.9 | Panel earthing connections | 1d | 2013-12-26 | 2013-12-26 | 136 | 2013-12-06 | 2013-12-06 | 1d | 51d |  |  |
| 139 | 1.4.10.10 | Power and control cable termination to new PCC | 2d | 2013-12-26 | 2013-12-27 | 136 | 2013-12-06 | 2013-12-07 | 2d | 49d | 0d |  |
| 140 | 1.4.10.11 | Power and control check, interlock checking in new PCC | 1d | 2013-12-28 | 2013-12-28 | 139 | 2013-12-09 | 2013-12-09 | 1d | 49d |  |  |
| 141 | 1.4.10.12 | Shifting of old battery charger panel, spare VCB, to other location and lining up. | 1d | 2013-12-26 | 2013-12-26 | 136 | 2013-12-06 | 2013-12-06 | 1d | 50d | 0d |  |
| 142 | 1.4.10.13 | Fixing of frames and erection of LT Aux PCC | 1d | 2013-12-27 | 2013-12-27 | 141 | 2013-12-07 | 2013-12-07 | 1d | 50d |  |  |
| 143 | 1.4.10.14 | Panel earthing connections | 1d | 2013-12-26 | 2013-12-26 | 136 | 2013-12-06 | 2013-12-06 | 1d | 51d |  |  |
| 144 | 1.4.10.15 | Power and control cable termination to new Aux PCC | 1d | 2013-12-26 | 2013-12-26 | 136 | 2013-12-06 | 2013-12-06 | 1d | 51d |  |  |

| ID | WBS | Task | Duration | Start | Finish | Predecessors | Complete | Remaining | Baseline start | Baseline finish | Baseline duration | Total slack | Free slack | Constraint |
| --- | --- | --- | --- | --- | --- | --- | --- | --- | --- | --- | --- | --- | --- | --- |
| 145 | 1.4.11 | **Erection of MCC 1** | 81d | 2013-09-20 A | 2013-12-26 |  | 34% | 53.21d | 2013-09-20 | 2013-11-09 | 44d | 55d |  |  |
| 146 | 1.4.11.1 | Shifting of lab from Brine plant to other location | 10d | 2013-09-20 A | 2013-10-01 A |  | 100% |  | 2013-09-20 | 2013-10-01 | 10d |  |  | start no earlier than 2013-09-20 |
| 147 | 1.4.11.2 | Civil work - Removal of wall, excavation for cable trenches, Fixing of insert plate, provision for panel erection | 30d | 2013-11-07 A | 2013-12-11 | 146 | 25% | 22.5d | 2013-10-02 | 2013-11-05 | 30d | 65d | 0d |  |
| 148 | 1.4.11.3 | Dispatch clearance and receipt of MCC 1 | 3d | 2013-11-11 | 2013-11-13 |  |  |  | 2013-10-17 | 2013-10-19 | 3d | 90d | 24d | start no earlier than 2013-11-11 |
| 149 | 1.4.11.4 | Base frame fabrication | 1d | 2013-12-12 | 2013-12-12 | 148, 147 |  |  | 2013-10-21 | 2013-10-21 | 1d | 66d |  |  |
| 150 | 1.4.11.5 | Fixing of base frame and erection of MCC 1 | 1d | 2013-12-12 | 2013-12-12 | 147 |  |  | 2013-11-06 | 2013-11-06 | 1d | 65d | 0d |  |
| 151 | 1.4.11.6 | Busbar tightness checking, control check | 1d | 2013-12-13 | 2013-12-13 | 150 |  |  | 2013-11-07 | 2013-11-07 | 1d | 65d |  |  |
| 152 | 1.4.11.7 | Removal of all power and control cables from existing MCC 1 and tagging | 2d | 2013-12-23 | 2013-12-24 | 134 |  |  | 2013-11-07 | 2013-11-08 | 2d | 56d |  |  |
| 153 | 1.4.11.8 | Rerouting of Power and control cables and termination in the new mcc on respective feeders | 2d | 2013-12-23 | 2013-12-24 | 134 |  |  | 2013-11-07 | 2013-11-08 | 2d | 55d | 0d |  |
| 154 | 1.4.11.9 | Individual motors trial for direction check, equipment confirmation. | 1d | 2013-12-26 | 2013-12-26 | 153 |  |  | 2013-11-09 | 2013-11-09 | 1d | 55d |  |  |
| 155 | 1.4.12 | **Erection of MCC 3A** | 31d | 2013-11-11 | 2013-12-16 |  |  |  | 2013-10-10 | 2013-11-14 | 31d | 63d |  |  |
| 156 | 1.4.12.1 | Civil - Extension of DG room towards toilet | 20d | 2013-11-11 | 2013-12-03 |  |  |  | 2013-10-10 | 2013-11-01 | 20d | 63d | 0d | start no earlier than 2013-11-11 |
| 157 | 1.4.12.2 | Excavation for cable trenches, Fixing of insert plate, provision for panel erection | 10d | 2013-12-04 | 2013-12-14 | 156 |  |  | 2013-11-02 | 2013-11-13 | 10d | 64d |  |  |
| 158 | 1.4.12.3 | Dispatch clearance and receipt of MCC 3A | 2d | 2013-11-11 | 2013-11-12 |  |  |  | 2013-10-17 | 2013-10-22 | 5d | 91d | 0d | start no earlier than 2013-11-11 |
| 159 | 1.4.12.4 | Base frame fabrication | 1d | 2013-11-13 | 2013-11-13 | 158 |  |  | 2013-10-23 | 2013-10-23 | 1d | 91d |  |  |
| 160 | 1.4.12.5 | Fixing of base frame and erection of MCC 3A | 1d | 2013-12-04 | 2013-12-04 | 156 |  |  | 2013-11-02 | 2013-11-02 | 1d | 63d | 0d |  |
| 161 | 1.4.12.6 | Busbar tightness checking, control check | 1d | 2013-12-05 | 2013-12-05 | 160 |  |  | 2013-11-04 | 2013-11-04 | 1d | 72d |  |  |
| 162 | 1.4.12.7 | Laying of power and control cables from MCC3A to respective motors | 7d | 2013-12-05 | 2013-12-12 | 160 |  |  | 2013-11-04 | 2013-11-11 | 7d | 63d | 0d |  |
| 163 | 1.4.12.8 | Power & control cables and termination in the new mcc on respective feeders and motors | 2d | 2013-12-13 | 2013-12-14 | 162 |  |  | 2013-11-12 | 2013-11-13 | 2d | 63d | 0d |  |
| 164 | 1.4.12.9 | Individual motors trial for direction check, equipment confirmation. | 1d | 2013-12-16 | 2013-12-16 | 163 |  |  | 2013-11-14 | 2013-11-14 | 1d | 63d |  |  |
| 165 | 1.4.13 | **Erection of MCC 3** | 31d | 2013-11-25 | 2013-12-31 |  |  |  | 2013-10-17 | 2013-11-06 | 18d | 50d | 0d |  |
| 166 | 1.4.13.1 | Dispatch clearance and receipt of MCC 3 | 3d | 2013-11-25 | 2013-11-27 |  |  |  | 2013-10-17 | 2013-10-19 | 3d | 77d | 0d | start no earlier than 2013-11-25 |
| 167 | 1.4.13.2 | Removal of all power and control cables from existing MCC 3 and tagging | 1d | 2013-12-26 | 2013-12-26 | 136 |  |  | 2013-11-01 | 2013-11-01 | 1d | 50d | 0d | start no earlier than 2013-11-01 |
| 168 | 1.4.13.3 | Removal of old MCC3 from its position | 1d | 2013-12-27 | 2013-12-27 | 167 |  |  | 2013-11-02 | 2013-11-02 | 1d | 53d |  |  |
| 169 | 1.4.13.4 | Base frame fabrication | 1d | 2013-11-28 | 2013-11-28 | 166 |  |  | 2013-10-21 | 2013-10-21 | 1d | 77d |  |  |
| 170 | 1.4.13.5 | Fixing of base frame and erection of MCC 3 | 1d | 2013-12-27 | 2013-12-27 | 167 |  |  | 2013-11-02 | 2013-11-02 | 1d | 50d | 0d |  |
| 171 | 1.4.13.6 | Busbar tightness checking, control check | 1d | 2013-12-28 | 2013-12-28 | 170 |  |  | 2013-11-04 | 2013-11-04 | 1d | 52d |  |  |
| 172 | 1.4.13.7 | Power & control cables and termination in the new mcc on respective feeders and motors | 2d | 2013-12-28 | 2013-12-30 | 170 |  |  | 2013-11-04 | 2013-11-05 | 2d | 50d | 0d |  |
| 173 | 1.4.13.8 | Individual motors trial for direction check, equipment confirmation. | 1d | 2013-12-31 | 2013-12-31 | 172 |  |  | 2013-11-06 | 2013-11-06 | 1d | 50d |  |  |

| ID | WBS | Task | Duration | Start | Finish | Predecessors | Baseline start | Baseline finish | Baseline duration | Total slack | Free slack | Constraint |
| --- | --- | --- | --- | --- | --- | --- | --- | --- | --- | --- | --- | --- |
| 174 | 1.4.14 | **Erection of MCC 4** | 4d | 2013-12-30 | 2014-01-02 |  | 2013-11-07 | 2013-12-13 | 32d | 49d |  |  |
| 175 | 1.4.14.1 | Removal of all power and control cables from existing MCC 4 partially and tagging | 2d | 2013-12-30 | 2013-12-31 | 129 | 2013-12-10 | 2013-12-11 | 2d | 51d |  |  |
| 176 | 1.4.14.2 | Removal of old MCC4 partial from its position | 1d | 2013-12-30 | 2013-12-30 | 129 | 2013-12-10 | 2013-12-10 | 1d | 52d |  |  |
| 177 | 1.4.14.3 | Base frame fabrication | 1d | 2014-01-01 | 2014-01-01 | 165 | 2013-11-07 | 2013-11-07 | 1d | 50d |  |  |
| 178 | 1.4.14.4 | Fixing of base frame and erection of MCC 4 | 1d | 2013-12-30 | 2013-12-30 | 129 | 2013-12-10 | 2013-12-10 | 1d | 49d | 0d |  |
| 179 | 1.4.14.5 | Busbar tightness checking, control check | 1d | 2013-12-31 | 2013-12-31 | 178 | 2013-12-11 | 2013-12-11 | 1d | 51d |  |  |
| 180 | 1.4.14.6 | Power & control cables and termination in the new mcc on respective feeders and motors | 2d | 2013-12-31 | 2014-01-01 | 178 | 2013-12-11 | 2013-12-12 | 2d | 49d | 0d |  |
| 181 | 1.4.14.7 | Individual motors trial for direction check, equipment confirmation. | 1d | 2014-01-02 | 2014-01-02 | 180 | 2013-12-13 | 2013-12-13 | 1d | 49d |  |  |
| 182 | 1.4.15 | **Erection of MCC 6** | 67d | 2013-09-06 | 2013-11-25 |  | 2013-09-06 | 2013-11-02 | 50d | 81d |  |  |
| 183 | 1.4.15.1 | Civil - Removal of wall, cupboards, Extension of MCC area by 2.5mtrs in Mechanical shed by Frame work, chequered plate and provision for cabling | 40d | 2013-09-06 | 2013-10-23 |  | 2013-09-06 | 2013-10-22 | 40d | 108d |  | start no earlier than 2013-09-06 |
| 184 | 1.4.15.2 | Dispatch clearance and receipt of MCC 6 | 3d | 2013-11-11 | 2013-11-13 |  | 2013-10-17 | 2013-10-19 | 3d | 81d | 0d | start no earlier than 2013-11-11 |
| 185 | 1.4.15.3 | Base frame fabrication | 1d | 2013-11-14 | 2013-11-14 | 184 | 2013-10-23 | 2013-10-23 | 1d | 81d | 0d |  |
| 186 | 1.4.15.4 | Fixing of base frame and erection of MCC 6 | 2d | 2013-11-15 | 2013-11-16 | 185 | 2013-10-24 | 2013-10-25 | 2d | 81d | 0d |  |
| 187 | 1.4.15.5 | Busbar tightness checking, control check | 1d | 2013-11-18 | 2013-11-18 | 186 | 2013-10-26 | 2013-10-26 | 1d | 81d | 0d |  |
| 188 | 1.4.15.6 | Laying of power and control cables from MCC6 to respective motors | 2d | 2013-11-19 | 2013-11-20 | 187 | 2013-10-28 | 2013-10-29 | 2d | 81d | 0d |  |
| 189 | 1.4.15.7 | Power & control cables termination in the new mcc on respective feeders and motors | 2d | 2013-11-21 | 2013-11-22 | 188 | 2013-10-30 | 2013-10-31 | 2d | 81d | 0d |  |
| 190 | 1.4.15.8 | Individual motors trial for direction check, equipment confirmation. | 2d | 2013-11-23 | 2013-11-25 | 189 | 2013-11-01 | 2013-11-02 | 2d | 81d |  |  |
| 191 | 1.4.16 | **Erection of MCC 10** | 31d | 2013-11-25 | 2013-12-31 |  | 2013-10-17 | 2013-12-06 | 44d | 51d |  |  |
| 192 | 1.4.16.1 | Dispatch clearance and receipt of MCC 10 | 3d | 2013-11-25 | 2013-11-27 |  | 2013-10-17 | 2013-10-19 | 3d | 77d | 0d | start no earlier than 2013-11-25 |
| 193 | 1.4.16.2 | Removal of all power and control cables from existing MCC 10 and tagging | 1d | 2013-12-26 | 2013-12-26 | 136 | 2013-12-02 | 2013-12-02 | 1d | 51d | 0d | start no earlier than 2013-12-02 |
| 194 | 1.4.16.3 | Removal of old MCC 10 from its position | 1d | 2013-12-27 | 2013-12-27 | 193 | 2013-12-03 | 2013-12-03 | 1d | 51d | 0d |  |
| 195 | 1.4.16.4 | Base frame fabrication | 2d | 2013-11-28 | 2013-11-29 | 192 | 2013-10-25 | 2013-10-26 | 2d | 77d |  | start no earlier than 2013-10-25 |
| 196 | 1.4.16.5 | Fixing of base frame and erection of MCC 10 | 1d | 2013-12-28 | 2013-12-28 | 194 | 2013-12-04 | 2013-12-04 | 1d | 51d | 0d |  |
| 197 | 1.4.16.6 | Busbar tightness checking, control check | 1d | 2013-12-30 | 2013-12-30 | 196 | 2013-12-05 | 2013-12-05 | 1d | 52d |  |  |
| 198 | 1.4.16.7 | Power & control cables and termination in the new mcc on respective feeders and motors | 1d | 2013-12-30 | 2013-12-30 | 196 | 2013-12-05 | 2013-12-05 | 1d | 51d | 0d |  |
| 199 | 1.4.16.8 | Individual motors trial for direction check, equipment confirmation. | 1d | 2013-12-31 | 2013-12-31 | 198 | 2013-12-06 | 2013-12-06 | 1d | 51d |  |  |

| ID | WBS | Task | Duration | Start | Finish | Predecessors | Baseline start | Baseline finish | Baseline duration | Total slack | Free slack | Constraint |
| --- | --- | --- | --- | --- | --- | --- | --- | --- | --- | --- | --- | --- |
| 200 | 1.4.17 | **Erection of MCC 12** | 14d | 2013-11-25 | 2013-12-10 |  | 2013-10-17 | 2013-12-10 | 47d | 68d |  |  |
| 201 | 1.4.17.1 | Dispatch clearance and receipt of MCC 12 | 3d | 2013-11-25 | 2013-11-27 |  | 2013-10-17 | 2013-10-19 | 3d | 71d | 3d | start no earlier than 2013-11-25 |
| 202 | 1.4.17.2 | Base frame fabrication | 2d | 2013-12-02 | 2013-12-03 | 201 | 2013-12-02 | 2013-12-03 | 2d | 68d | 0d | start no earlier than 2013-12-02 |
| 203 | 1.4.17.3 | Fixing of base frame and erection of MCC 12 | 1d | 2013-12-04 | 2013-12-04 | 202 | 2013-12-04 | 2013-12-04 | 1d | 68d | 0d | start no earlier than 2013-10-28 |
| 204 | 1.4.17.4 | Busbar tightness checking, control check | 1d | 2013-12-05 | 2013-12-05 | 203 | 2013-12-05 | 2013-12-05 | 1d | 68d | 0d |  |
| 205 | 1.4.17.5 | Laying of power and control cables from MCC 12 to respective motors | 2d | 2013-12-06 | 2013-12-07 | 204 | 2013-12-06 | 2013-12-07 | 2d | 68d | 0d |  |
| 206 | 1.4.17.6 | Power & control cables and termination in the new mcc on respective feeders and motors | 1d | 2013-12-09 | 2013-12-09 | 205 | 2013-12-09 | 2013-12-09 | 1d | 68d | 0d |  |
| 207 | 1.4.17.7 | Individual motors trial for direction check, equipment confirmation. | 1d | 2013-12-10 | 2013-12-10 | 206 | 2013-12-10 | 2013-12-10 | 1d | 68d |  |  |
| 208 | 1.4.18 | **Erection of 1010KVA DG set & DG Aux PCC** | 148d | 2013-09-06 | 2014-02-28 |  | 2013-09-06 | 2014-01-17 | 115d | 0d |  |  |
| 209 | 1.4.18.1 | Fabrication of base frame for Aux PCC | 2d | 2013-12-02 | 2013-12-03 |  | 2013-12-02 | 2013-12-03 | 2d | 74d |  | start no earlier than 2013-12-02 |
| 210 | 1.4.18.2 | Provision for emergency source from new 380KVA DG to 1010KVA DG Aux PCC | 1d | 2013-09-06 | 2013-09-06 |  | 2013-09-06 | 2013-09-06 | 1d | 147d |  | start no earlier than 2013-09-06 |
| 211 | 1.4.18.3 | Finalisation of Civil contract & approval | 15d | 2013-11-04 | 2013-11-20 |  | 2013-10-10 | 2013-10-26 | 15d | 0d |  | start no earlier than 2013-11-04 |
| 212 | 1.4.18.4 | Civil work - Excavation for DG foundation | 20d | 2013-11-21 | 2013-12-13 | 211 | 2013-10-28 | 2013-11-19 | 20d | 0d |  |  |
| 213 | 1.4.18.5 | Foundation and curing | 25d | 2013-12-14 | 2014-01-13 | 212 | 2013-11-20 | 2013-12-18 | 25d | 0d |  |  |
| 214 | 1.4.18.6 | Removal of existing old 380KVA DG set | 1d | 2013-11-21 | 2013-11-21 | 211 | 2013-12-19 | 2013-12-19 | 1d | 77d | 0d |  |
| 215 | 1.4.18.7 | Dispatch clearance for DG set and approval | 5d | 2013-11-22 | 2013-11-27 | 214 | 2013-12-20 | 2013-12-20 | 1d | 77d | 0d |  |
| 216 | 1.4.18.8 | Receipt of DG set & AMF panel at site | 2d | 2013-11-28 | 2013-11-29 | 215 | 2013-12-21 | 2013-12-21 | 1d | 77d |  |  |
| 217 | 1.4.18.9 | Erection of DG set, Accoustic enclosure, accessories, AMF panel | 5d | 2014-01-14 | 2014-01-18 | 213 | 2013-12-23 | 2013-12-27 | 5d | 0d |  |  |
| 218 | 1.4.18.10 | Erection of DG Aux PCC | 3d | 2014-01-20 | 2014-01-22 | 217 | 2013-12-28 | 2013-12-31 | 3d | 17d | 0d |  |
| 219 | 1.4.18.11 | Erection of chimney and pipe connection with DG exhaust | 20d | 2014-01-20 | 2014-02-11 | 217 | 2013-10-28 | 2013-11-19 | 20d | 0d |  | start no earlier than 2013-10-28 |
| 220 | 1.4.18.12 | CEA Inspection & Approval for 1010KVA DG, LT PCC, MCC's | 15d | 2014-02-12 | 2014-02-28 | 219 | 2014-01-01 | 2014-01-17 | 15d | 0d |  |  |
| 221 | 1.4.18.13 | PED Inspection & Approval for 1010KVA DG, LT PCC, MCC's | 15d | 2014-01-23 | 2014-02-08 | 218 | 2014-01-01 | 2014-01-17 | 15d | 17d |  |  |
