# 11-Instrumentation

Schedule from MS Project, 2013-10-29 to 2013-12-31.

## Calendars

- CAL Org Calendar: Mon-Sat 08:00-12:00, 13:00-17:00; Sun off. Exceptions (off unless hours are given): 2013-11-02 (Diwali), 2013-12-25 (Christmas).

## Resources

| Resource |
| --- |
| RP.IE Contractor |
| RP.CAL Elec |
| RP.Yokogawa |
| RP.Finance |
| RP.CAL Inst |

## Schedule

| ID | WBS | Task | Duration | Start | Finish | Predecessors | Total slack | Free slack | Constraint | Resources | Work |
| --- | --- | --- | --- | --- | --- | --- | --- | --- | --- | --- | --- |
| 1 | 1 | **11-Instrumentation** | 53d | 2013-10-29 | 2013-12-31 |  | 0d |  |  |  | 680h |
| 2 | 1.1 | **DCS** | 23d | 2013-10-29 | 2013-11-25 |  | 30d |  |  |  | 128h |
| 3 | 1.1.1 | 1.1.Positioning of DCS Panels in room | 3d | 2013-10-29 | 2013-10-31 |  | 50d |  |  | RP.IE Contractor | 24h |
| 4 | 1.1.2 | 1.2. Moving DCS consoles to CR & removing existing consoles | 1d | 2013-11-15 | 2013-11-15 |  | 38d |  | start no earlier than 2013-11-15 | RP.CAL Inst | 8h |
| 5 | 1.1.3 | 1.3.Power up of Existing DCS Consoles | 1d | 2013-11-16 | 2013-11-16 |  | 37d |  | start no earlier than 2013-11-16 | RP.CAL Inst; RP.IE Contractor | 16h |
| 6 | 1.1.4 | 1.4 Power up of new DCS work stations | 2d | 2013-11-20 | 2013-11-21 |  | 30d | 0d | start no earlier than 2013-11-20 | RP.CAL Elec; RP.CAL Inst | 32h |
| 7 | 1.1.5 | 1.5 Power up of new DCS panels | 2d | 2013-11-22 | 2013-11-23 | 6 | 30d | 0d |  | RP.CAL Elec; RP.CAL Inst | 32h |
| 8 | 1.1.6 | 1.6. Commissioning of New DCS | 1d | 2013-11-25 | 2013-11-25 | 7 | 30d |  |  | RP.CAL Inst; RP.Yokogawa | 16h |
| 9 | 1.2 | **2.Instruments Cabling & Termination- Main cable** | 47d | 2013-10-31 | 2013-12-26 |  | 4d |  |  |  | 552h |
| 10 | 1.2.1 | 2.1.Mobillisation of site by Erection Contractor | 1d | 2013-11-08 | 2013-11-08 |  | 29d | 0d | start no earlier than 2013-11-08 | RP.IE Contractor | 8h |
| 11 | 1.2.2 | 2.2 Fabrication of tray support for main cables | 5d | 2013-11-09 | 2013-11-14 | 10 | 29d | 0d |  | RP.IE Contractor | 40h |
| 12 | 1.2.3 | 2.3. Erection of Main cable trays | 10d | 2013-11-15 | 2013-11-26 | 11 | 29d |  |  | RP.IE Contractor | 80h |
| 13 | 1.2.4 | 2.4. Fabrication and Erection of JB support | 5d | 2013-11-20 | 2013-11-25 |  | 30d |  | start no earlier than 2013-11-20 | RP.IE Contractor | 40h |
| 14 | 1.2.5 | 2.5. Receipt of I & C cables at site | 10d | 2013-10-31 | 2013-11-12 |  | 41d |  | start no earlier than 2013-10-31 | RP.Finance | 80h |
| 15 | 1.2.6 | 2.6 Laying & dressing of Main cables from JB to CR | 12d | 2013-11-25 | 2013-12-07 |  | 4d | 0d | start no earlier than 2013-11-25 | RP.IE Contractor | 96h |
| 16 | 1.2.7 | 2.7. Cable Glanding & Termination of Main cables | 15d | 2013-12-09 | 2013-12-26 | 15 | 4d |  |  | RP.IE Contractor | 120h |
| 17 | 1.2.8 | 2.8 Loop check from JB end to DCS | 11d | 2013-12-06 | 2013-12-18 |  | 10d |  | start no earlier than 2013-12-06 | RP.IE Contractor | 88h |
| 18 | 1.3 | **3. Field Inst erection** | 44d | 2013-11-09 | 2013-12-31 |  | 0d |  |  |  |  |
| 19 | 1.3.1 | 3.1 Fabrication of stancheon for remote mounted instruments | 4d | 2013-11-09 | 2013-11-13 |  | 40d |  | start no earlier than 2013-11-09 |  |  |
| 20 | 1.3.2 | 3.2 Erection of stancheons at required place | 5d | 2013-11-25 | 2013-11-29 |  | 16d | 0d | start no earlier than 2013-11-25 |  |  |
| 21 | 1.3.3 | 3.3 Branch cable tray fabrication, erection | 10d | 2013-11-30 | 2013-12-11 | 20 | 16d |  |  |  |  |
| 22 | 1.3.4 | 3.4 Branch cable laying & Termination at JB end | 15d | 2013-12-03 | 2013-12-19 |  | 9d |  | start no earlier than 2013-12-03 |  |  |
| 23 | 1.3.5 | 3.5.Receipt of all control valves, flowmeters, RTD, TG & PG | 12d | 2013-12-05 | 2013-12-18 |  | 10d |  | start no earlier than 2013-12-05 |  |  |
| 24 | 1.3.6 | 3.6 Installation of all field Instruments | 12d | 2013-12-16 | 2013-12-30 |  | 1d |  | start no earlier than 2013-12-16 |  |  |
| 25 | 1.3.7 | 3.7. Glanding &Termination branch cables of all field Instruments at Inst end | 11d | 2013-12-18 | 2013-12-31 |  | 0d |  | start no earlier than 2013-12-18 |  |  |

| ID | WBS | Task | Duration | Start | Finish | Total slack | Constraint |
| --- | --- | --- | --- | --- | --- | --- | --- |
| 26 | 1.4 | **Loop Check & Calibration** | 9d | 2013-12-20 | 2013-12-31 | 0d |  |
| 27 | 1.4.1 | 4.1. Loop check of all instruments from field Inst end | 9d | 2013-12-20 | 2013-12-31 | 0d | start no earlier than 2013-12-20 |
| 28 | 1.4.2 | 4.2. Calibration of all field Instruments | 5d | 2013-12-26 | 2013-12-31 | 0d | start no earlier than 2013-12-26 |
| 29 | 1.4.3 | 4.3 Calibration /Stroke check of all Control valves & On/Off valves from DCS | 5d | 2013-12-26 | 2013-12-31 | 0d | start no earlier than 2013-12-26 |
| 30 | 1.5 | **Pre-commissioning** | 8d | 2013-12-21 | 2013-12-31 | 0d |  |
| 31 | 1.5.1 | Tripchecks, Graphics modification , IEC sequence check etc | 8d | 2013-12-21 | 2013-12-31 | 0d | start no earlier than 2013-12-21 |
