# CEC-156 TPD

Schedule from MS Project, 2012-06-01 to 2013-12-25, status date 2013-08-09, A marks actual dates.
MS-Project
CAL

## Calendars

- CEC: Mon-Fri 08:00-12:00, 13:00-17:00; Sat-Sun off. Exceptions (off unless hours are given): 2012-06-02 08:00-12:00, 13:00-17:00, 2012-06-09 08:00-12:00, 13:00-17:00, 2012-06-16 08:00-12:00, 13:00-17:00, 2012-06-23 08:00-12:00, 13:00-17:00, 2012-06-30 08:00-12:00, 13:00-17:00, 2012-07-07 08:00-12:00, 13:00-17:00, 2012-07-14 08:00-12:00, 13:00-17:00, 2012-07-21 08:00-12:00, 13:00-17:00, 2012-07-28 08:00-12:00, 13:00-17:00, 2012-08-04 08:00-12:00, 13:00-17:00, 2012-08-11 08:00-12:00, 13:00-17:00, 2012-08-18 08:00-12:00, 13:00-17:00, 2012-08-25 08:00-12:00, 13:00-17:00, 2012-09-01 08:00-12:00, 13:00-17:00, 2012-09-08 08:00-12:00, 13:00-17:00, 2012-09-15 08:00-12:00, 13:00-17:00, 2012-09-22 08:00-12:00, 13:00-17:00, 2012-09-29 08:00-12:00, 13:00-17:00, 2012-10-06 08:00-12:00, 13:00-17:00, 2012-10-13 08:00-12:00, 13:00-17:00, 2012-10-20 08:00-12:00, 13:00-17:00, 2012-10-27 08:00-12:00, 13:00-17:00, 2012-11-03 08:00-12:00, 13:00-17:00, 2012-11-10 08:00-12:00, 13:00-17:00, 2012-11-17 08:00-12:00, 13:00-17:00, 2012-11-24 08:00-12:00, 13:00-17:00, 2012-12-01 08:00-12:00, 13:00-17:00, 2012-12-08 08:00-12:00, 13:00-17:00, 2012-12-15 08:00-12:00, 13:00-17:00, 2012-12-22 08:00-12:00, 13:00-17:00, 2012-12-29 08:00-12:00, 13:00-17:00, 2013-01-05 08:00-12:00, 13:00-17:00, 2013-01-12 08:00-12:00, 13:00-17:00, 2013-01-19 08:00-12:00, 13:00-17:00, 2013-01-26 08:00-12:00, 13:00-17:00, 2013-02-02 08:00-12:00, 13:00-17:00, 2013-02-09 08:00-12:00, 13:00-17:00, 2013-02-16 08:00-12:00, 13:00-17:00, 2013-02-23 08:00-12:00, 13:00-17:00, 2013-03-02 08:00-12:00, 13:00-17:00, 2013-03-09 08:00-12:00, 13:00-17:00, 2013-03-16 08:00-12:00, 13:00-17:00, 2013-03-23 08:00-12:00, 13:00-17:00, 2013-03-30 08:00-12:00, 13:00-17:00, 2013-04-06 08:00-12:00, 13:00-17:00, 2013-04-13 08:00-12:00, 13:00-17:00, 2013-04-20 08:00-12:00, 13:00-17:00, 2013-04-27 08:00-12:00, 13:00-17:00, 2013-05-03 to 2013-05-04 08:00-12:00, 13:00-17:00, 2013-05-11 08:00-12:00, 13:00-17:00, 2013-05-18 08:00-12:00, 13:00-17:00, 2013-05-25 08:00-12:00, 13:00-17:00, 2013-06-01 08:00-12:00, 13:00-17:00, 2013-06-08 08:00-12:00, 13:00-17:00, 2013-06-15 08:00-12:00, 13:00-17:00, 2013-06-22 08:00-12:00, 13:00-17:00, 2013-06-29 08:00-12:00, 13:00-17:00, 2013-07-06 08:00-12:00, 13:00-17:00, 2013-07-13 08:00-12:00, 13:00-17:00, 2013-07-20 08:00-12:00, 13:00-17:00, 2013-07-27 08:00-12:00, 13:00-17:00, 2013-08-03 08:00-12:00, 13:00-17:00, 2013-08-10 08:00-12:00, 13:00-17:00, 2013-08-17 08:00-12:00, 13:00-17:00, 2013-08-24 08:00-12:00, 13:00-17:00, 2013-08-31 08:00-12:00, 13:00-17:00, 2013-09-07 08:00-12:00, 13:00-17:00, 2013-09-14 08:00-12:00, 13:00-17:00, 2013-09-21 08:00-12:00, 13:00-17:00, 2013-09-28 08:00-12:00, 13:00-17:00, 2013-10-05 08:00-12:00, 13:00-17:00, 2013-10-12 08:00-12:00, 13:00-17:00, 2013-10-19 08:00-12:00, 13:00-17:00, 2013-10-26 08:00-12:00, 13:00-17:00, 2013-11-02 08:00-12:00, 13:00-17:00, 2013-11-09 08:00-12:00, 13:00-17:00, 2013-11-16 08:00-12:00, 13:00-17:00, 2013-11-23 08:00-12:00, 13:00-17:00, 2013-11-30 08:00-12:00, 13:00-17:00, 2013-12-07 08:00-12:00, 13:00-17:00, 2013-12-14 08:00-12:00, 13:00-17:00, 2013-12-21 08:00-12:00, 13:00-17:00.

## Resources

| Resource |
| --- |
| IoF |
| IoF-II |
| IoF-I |
| ABB |
| T & R |
| CEC |
| KCP |
| Protech |
| CAL |
| Venu |
| PCA |
| NJ |
| PCA/MMC |
| VRK |
| Sarfu |
| VS |
| VB |
| Close |
| Finish |

## Schedule

| ID | WBS | Task | Duration | Start | Finish | Predecessors | Complete | Remaining | Baseline start | Baseline finish | Baseline duration | Total slack | Constraint |
| --- | --- | --- | --- | --- | --- | --- | --- | --- | --- | --- | --- | --- | --- |
| 1 | 1 | **12-Civil** | 491d | 2012-06-01 A | 2013-12-25 |  | 51% | 240.06d |  |  |  | 56d |  |
| 2 | 1.1 | **2 Tender Documents / BOQ** | 187d | 2013-02-02 A | 2013-09-07 A |  | 100% |  | 2013-02-02 | 2013-09-07 | 187d |  |  |
| 3 | 1.1.1 | BOQ for calrifier,Cell House & RT | 10d | 2013-02-02 A | 2013-02-13 A |  | 100% |  | 2013-02-02 | 2013-02-13 | 10d |  | start no earlier than 2013-02-02 |
| 4 | 1.1.2 | BOQ for Civil - Anolyte Pit | 15d | 2013-07-10 A | 2013-07-26 A |  | 100% |  | 2013-07-10 | 2013-07-26 | 15d |  |  |
| 5 | 1.1.3 | BOQ for Civil - OHT Building extension | 15d | 2013-07-27 A | 2013-08-13 A | 4 | 100% |  | 2013-07-27 | 2013-08-13 | 15d |  |  |
| 6 | 1.1.4 | BOQ for Civil - Cl2/H2 building section | 5d | 2013-07-01 A | 2013-07-05 A | 5 | 100% |  | 2013-07-01 | 2013-07-05 | 5d |  |  |
| 7 | 1.1.5 | BOQ-Hypo OHT Structure | 25d | 2013-08-10 A | 2013-09-07 A |  | 100% |  | 2013-08-10 | 2013-09-07 | 25d |  | start no earlier than 2013-08-10 |
| 8 | 1.2 | **3 Contractor Finalization** | 213d | 2013-02-18 A | 2013-10-23 |  | 87% | 27.39d | 2013-02-18 | 2013-10-26 | 216d | 110d |  |
| 9 | 1.2.1 | Civil (Clarifier, Cell house & RT) | 20d | 2013-02-18 A | 2013-03-12 A | 3 | 100% |  | 2013-02-18 | 2013-03-12 | 20d |  | start no earlier than 2013-02-18 |
| 10 | 1.2.2 | Civil- Anolyte Pit | 21d | 2013-07-27 A | 2013-08-20 A | 4 | 100% |  | 2013-07-27 | 2013-08-20 | 21d |  |  |
| 11 | 1.2.3 | Civil - Cl2/H2 building section | 49d | 2013-07-06 A | 2013-08-31 A | 6 | 100% |  | 2013-07-06 | 2013-08-31 | 49d |  |  |
| 12 | 1.2.4 | Civil - Chiller, N2 Unit | 10d | 2013-10-01 A | 2013-10-11 A |  | 100% |  | 2013-10-01 | 2013-10-11 | 10d |  | finish no earlier than 2013-10-11 |
| 13 | 1.2.5 | Civil - Auxiliary transformer etc | 7d | 2013-10-01 A | 2013-10-08 A |  | 100% |  | 2013-10-01 | 2013-10-08 | 7d |  |  |
| 14 | 1.2.6 | Civil-CBT, UF & Saturator | 15d | 2013-09-02 A | 2013-09-18 A |  | 100% |  | 2013-09-02 | 2013-09-18 | 15d |  | start no earlier than 2013-09-02 |
| 15 | 1.2.7 | Civil- Related to Electrical Work | 9d | 2013-10-14 | 2013-10-23 |  |  |  | 2013-10-14 | 2013-10-23 | 9d | 110d | start no earlier than 2013-10-14 |
| 16 | 1.2.8 | Civil- Pump Foundation work & Miscellaneous work | 9d | 2013-10-14 | 2013-10-23 |  |  |  | 2013-10-14 | 2013-10-23 | 9d | 110d | start no earlier than 2013-10-14 |
| 17 | 1.3 | **4 Structural Fabrication completion** | 66d | 2013-09-16 A | 2013-11-30 |  | 31% | 45.58d | 2013-09-16 | 2013-11-30 | 66d | 77d |  |
| 18 | 1.3.1 | OHT Structural Modification-( All materials received at site). | 42d | 2013-09-26 A | 2013-11-13 |  | 50% | 21d | 2013-09-26 | 2013-11-13 | 42d | 92d | start no earlier than 2013-09-26 |
| 19 | 1.3.2 | Cl2 / H2 washing section Strcture | 50d | 2013-09-20 A | 2013-11-16 |  | 50% | 25d | 2013-09-20 | 2013-11-16 | 50d | 89d | start no earlier than 2013-04-01 |
| 20 | 1.3.3 | Cell House Platform & Pipe Rack Inside Cell house | 35d | 2013-09-16 A | 2013-10-25 |  | 29% | 25d | 2013-09-16 | 2013-10-25 | 35d | 108d |  |
| 21 | 1.3.4 | Filter Press Structure | 30d | 2013-10-28 | 2013-11-30 |  |  |  | 2013-10-28 | 2013-11-30 | 30d | 21d | start no earlier than 2013-10-28 |
| 22 | 4.5 | Hypo OHT fabrication | 24d | 2013-10-21 | 2013-11-16 | 7 |  |  | 2013-10-21 | 2013-11-16 | 24d | 33d | start no earlier than 2013-10-21 |
| 23 | 1.4 | **6 Civil Construction / Equipment Positioning / Erection** | 491d | 2012-06-01 A | 2013-12-25 |  | 47% | 258.54d | 2013-04-01 | 2014-01-17 | 251d | 56d |  |
| 24 | 1.4.1 | **Rectifier** | 81d | 2013-04-23 A | 2013-07-25 A |  | 100% |  | 2013-04-23 | 2013-07-25 | 81d |  |  |
| 25 | 1.4.1.1 | New Rectifier civil | 80d | 2013-04-23 A | 2013-07-24 A | 9 | 100% |  | 2013-04-23 | 2013-07-24 | 80d |  | start no earlier than 2013-03-11 |
| 26 | 1.4.1.2 | New Rectifier positioning | 1d | 2013-07-25 A | 2013-07-25 A | 25 | 100% |  | 2013-07-25 | 2013-07-25 | 1d |  |  |

| ID | WBS | Task | Duration | Start | Finish | Predecessors | Complete | Remaining | Baseline start | Baseline finish | Baseline duration | Total slack | Free slack | Constraint |
| --- | --- | --- | --- | --- | --- | --- | --- | --- | --- | --- | --- | --- | --- | --- |
| 27 | 1.4.2 | **Transformer** | 136d | 2013-04-23 A | 2013-09-27 A |  | 100% |  | 2013-04-23 | 2013-09-27 | 136d |  |  |  |
| 28 | 1.4.2.1 | New Transformer Civil | 80d | 2013-04-23 A | 2013-07-24 A |  | 100% |  | 2013-04-23 | 2013-07-24 | 80d |  |  |  |
| 29 | 1.4.2.2 | New Transformer positioning | 3d | 2013-09-25 A | 2013-09-27 A | 28 | 100% |  | 2013-09-25 | 2013-09-27 | 3d |  |  | start no earlier than 2013-09-25 |
| 30 | 1.4.3 | **Electrolyzer area** | 128d | 2013-04-23 A | 2013-09-18 A |  | 100% |  | 2013-04-23 | 2014-01-07 | 223d |  |  |  |
| 31 | 1.4.3.1 | Dismantling | 15d | 2013-04-23 A | 2013-05-09 A |  | 100% |  | 2013-04-23 | 2013-05-09 | 15d |  |  | start no earlier than 2013-04-23 |
| 32 | 1.4.3.2 | Excavation | 20d | 2013-05-10 A | 2013-06-01 A | 31 | 100% |  | 2013-05-10 | 2013-06-01 | 20d |  |  |  |
| 33 | 1.4.3.3 | PCC | 10d | 2013-06-03 A | 2013-06-13 A | 32 | 100% |  | 2013-06-03 | 2013-06-13 | 10d |  |  |  |
| 34 | 1.4.3.4 | Column and footing | 15d | 2013-06-14 A | 2013-07-01 A | 33 | 100% |  | 2013-06-14 | 2013-07-01 | 15d |  |  |  |
| 35 | 1.4.3.5 | Soil consolidation | 10d | 2013-07-02 A | 2013-07-12 A | 34 | 100% |  | 2013-07-02 | 2013-07-12 | 10d |  |  |  |
| 36 | 1.4.3.6 | PCC and RCC of flooring | 10d | 2013-07-13 A | 2013-07-24 A | 35 | 100% |  | 2013-07-13 | 2013-07-24 | 10d |  |  |  |
| 37 | 1.4.3.7 | Plastering of flooring | 48d | 2013-07-25 A | 2013-09-18 A | 36 | 100% |  | 2013-07-25 | 2013-09-18 | 48d |  |  |  |
| 38 | 1.4.4 | **Clarifier** | 192d | 2013-04-01 A | 2013-11-09 |  | 81% | 36.89d | 2013-04-01 | 2014-01-17 | 251d | 95d |  |  |
| 39 | 1.4.4.1 | Dismantling | 10d | 2013-04-01 A | 2013-04-11 A | 9 | 100% |  | 2013-04-01 | 2013-04-11 | 10d |  |  | start no earlier than 2013-03-28 |
| 40 | 1.4.4.2 | Excavation | 10d | 2013-04-12 A | 2013-04-23 A | 39 | 100% |  | 2013-04-12 | 2013-04-23 | 10d |  |  |  |
| 41 | 1.4.4.3 | Footings and column construction | 75d | 2013-04-24 A | 2013-07-19 A | 40 | 100% |  | 2013-04-24 | 2013-07-19 | 75d |  |  |  |
| 42 | 1.4.4.4 | Roof Slab construction | 36d | 2013-07-20 A | 2013-08-30 A | 41 | 100% |  | 2013-07-20 | 2013-08-30 | 36d |  |  |  |
| 43 | 1.4.4.5 | Curing | 12d | 2013-08-31 A | 2013-09-13 A | 42 | 100% |  | 2013-08-31 | 2013-09-13 | 12d |  |  |  |
| 44 | 1.4.4.6 | Deshuttering | 11d | 2013-09-14 A | 2013-09-26 A | 43 | 100% |  | 2013-09-14 | 2013-09-26 | 11d |  |  |  |
| 45 | 1.4.4.7 | Mastic Lining | 10d | 2013-09-14 A | 2013-09-25 A | 43 | 100% |  | 2013-09-14 | 2013-09-25 | 10d |  |  |  |
| 46 | 1.4.4.8 | Filling & consolidation | 19d | 2013-09-26 | 2013-10-17 | 45 |  |  | 2013-09-26 | 2013-10-17 | 19d | 39d | 0d | start no earlier than 2013-09-26 |
| 47 | 1.4.4.9 | Plinth Beam construction | 20d | 2013-10-18 | 2013-11-09 | 46 |  |  | 2013-10-18 | 2013-11-09 | 20d | 39d |  |  |
| 48 | 1.4.5 | **Saturator** | 35d | 2013-09-25 | 2013-11-04 |  |  |  | 2013-09-25 | 2013-11-05 | 36d | 100d |  |  |
| 49 | 1.4.5.1 | Excavation | 20d | 2013-09-25 | 2013-10-17 |  |  |  | 2013-09-25 | 2013-10-17 | 20d | 44d | 0d | start no earlier than 2013-09-25 |
| 50 | 1.4.5.2 | Foundation | 5d | 2013-10-18 | 2013-10-23 | 49 |  |  | 2013-10-18 | 2013-10-23 | 5d | 44d | 0d |  |
| 51 | 1.4.5.3 | Curing | 10d | 2013-10-24 | 2013-11-04 | 50 |  |  | 2013-10-24 | 2013-11-04 | 10d | 44d |  |  |

| ID | WBS | Task | Duration | Start | Finish | Predecessors | Complete | Remaining | Baseline start | Baseline finish | Baseline duration | Total slack | Free slack | Constraint |
| --- | --- | --- | --- | --- | --- | --- | --- | --- | --- | --- | --- | --- | --- | --- |
| 52 | 1.4.6 | **CBT Tank** | 25d | 2013-09-25 A | 2013-10-23 |  | 30% | 17.5d | 2013-09-25 | 2013-10-30 | 31d | 110d |  |  |
| 53 | 1.4.6.1 | Dismantling | 2d | 2013-09-25 A | 2013-09-26 A |  | 100% |  | 2013-09-25 | 2013-09-26 | 2d |  |  |  |
| 54 | 1.4.6.2 | Bed construction | 16d | 2013-09-27 A | 2013-10-15 | 53 | 34% | 10.5d | 2013-09-27 | 2013-10-15 | 16d | 110d | 0d |  |
| 55 | 1.4.6.3 | Curing | 5d | 2013-10-16 | 2013-10-21 | 54 |  |  | 2013-10-16 | 2013-10-21 | 5d | 54d | 0d |  |
| 56 | 1.4.6.4 | Tar Mastic | 2d | 2013-10-22 | 2013-10-23 | 55 |  |  | 2013-10-22 | 2013-10-23 | 2d | 54d |  |  |
| 57 | 1.4.7 | **UF Feed Tank & Pump** | 18d | 2013-09-19 A | 2013-10-09 |  | 85% | 2.77d | 2013-09-19 | 2013-11-13 | 48d | 122d |  |  |
| 58 | 1.4.7.1 | Bed construction | 6d | 2013-09-19 A | 2013-09-25 A |  | 100% |  | 2013-09-19 | 2013-09-25 | 6d |  |  | start no earlier than 2013-09-19 |
| 59 | 1.4.7.2 | Curing | 5d | 2013-09-26 A | 2013-10-01 A | 58 | 100% |  | 2013-09-26 | 2013-10-01 | 5d |  |  |  |
| 60 | 1.4.7.3 | Tar mastic | 2d | 2013-10-08 | 2013-10-09 |  |  |  | 2013-10-08 | 2013-10-09 | 2d | 66d |  | start no earlier than 2013-10-08 |
| 61 | 1.4.8 | **Polished Brine tank and pump** | 36d | 2013-06-01 A | 2013-07-12 A |  | 100% |  | 2013-06-01 | 2013-11-04 | 134d |  |  |  |
| 62 | 1.4.8.1 | Removal of Old Polished Brine tank | 10d | 2013-06-01 A | 2013-06-12 A |  | 100% |  | 2013-06-01 | 2013-06-12 | 10d |  |  | finish no earlier than 2013-07-01 |
| 63 | 1.4.8.2 | Excavation | 5d | 2013-07-02 A | 2013-07-06 A | 62 | 100% |  | 2013-07-02 | 2013-07-06 | 5d |  |  |  |
| 64 | 1.4.8.3 | Foundation | 5d | 2013-07-08 A | 2013-07-12 A | 63 | 100% |  | 2013-07-08 | 2013-07-12 | 5d |  |  |  |
| 65 | 1.4.9 | **IEC** | 14d | 2013-10-21 | 2013-11-05 |  |  |  | 2013-10-21 | 2013-12-19 | 52d | 99d |  |  |
| 66 | 1.4.9.1 | Dismantling | 5d | 2013-10-21 | 2013-10-25 |  |  |  | 2013-10-21 | 2013-10-25 | 5d | 43d | 0d | start no earlier than 2013-10-21 |
| 67 | 1.4.9.2 | Excavation | 2d | 2013-10-26 | 2013-10-28 | 66 |  |  | 2013-10-26 | 2013-10-28 | 2d | 43d | 0d |  |
| 68 | 1.4.9.3 | Footings and column construction | 2d | 2013-10-29 | 2013-10-30 | 67 |  |  | 2013-10-29 | 2013-10-30 | 2d | 43d | 0d |  |
| 69 | 1.4.9.4 | Curing | 5d | 2013-10-31 | 2013-11-05 | 68 |  |  | 2013-10-31 | 2013-11-05 | 5d | 43d |  |  |
| 70 | 1.4.10 | **Pure Brine tank & Pump** | 1d | 2013-08-27 A | 2013-08-27 A |  | 100% |  | 2013-08-27 | 2013-11-08 | 64d |  |  |  |
| 71 | 1.4.10.1 | Removal of old Pure brine tank & positioning new pure brine tank | 1d | 2013-08-27 A | 2013-08-27 A |  | 100% |  | 2013-08-27 | 2013-08-27 | 1d |  |  | start no earlier than 2013-09-02 |
| 72 | 1.4.11 | **Cell drain tank and individual Catholyte circulation tank & Pump** | 116d | 2013-07-02 A | 2013-11-13 |  | 42% | 67.47d | 2013-07-02 | 2013-11-15 | 118d | 92d |  |  |
| 73 | 1.4.11.1 | Shifting of existing Hydrogen Handling system | 20d | 2013-07-02 A | 2013-07-24 A |  | 100% |  | 2013-07-02 | 2013-07-24 | 20d |  |  | start no earlier than 2013-07-02 |
| 74 | 1.4.11.2 | Shifting of existing product cooler and Caustic heater | 5d | 2013-07-25 A | 2013-07-30 A | 73 | 100% |  | 2013-07-25 | 2013-07-30 | 5d |  |  |  |
| 75 | 1.4.11.3 | Existing Floor Dismantling | 16d | 2013-08-21 A | 2013-09-07 A | 74, 10 | 100% |  | 2013-08-21 | 2013-09-07 | 16d |  |  | start no earlier than 2013-08-12 |
| 76 | 1.4.11.4 | Excavation | 35d | 2013-09-09 | 2013-10-18 | 75 |  |  | 2013-09-09 | 2013-10-18 | 35d | 36d | 0d |  |
| 77 | 1.4.11.5 | Bed Construction | 15d | 2013-10-19 | 2013-11-05 | 76 |  |  | 2013-10-19 | 2013-11-05 | 15d | 36d | 0d |  |
| 78 | 1.4.11.6 | Curing | 7d | 2013-11-06 | 2013-11-13 | 77 |  |  | 2013-11-06 | 2013-11-13 | 7d | 36d |  |  |

| ID | WBS | Task | Duration | Start | Finish | Predecessors | Complete | Remaining | Baseline start | Baseline finish | Baseline duration | Total slack | Free slack | Constraint |
| --- | --- | --- | --- | --- | --- | --- | --- | --- | --- | --- | --- | --- | --- | --- |
| 79 | 1.4.12 | **Cl2 / H2 handling section** | 59d | 2013-09-02 A | 2013-11-08 |  | 26% | 43.75d | 2013-09-02 | 2013-11-21 | 70d | 96d |  |  |
| 80 | 1.4.12.1 | **Structural Civil foundation / Positioning** | 58d | 2013-09-02 A | 2013-11-07 |  | 35% | 37.79d | 2013-09-02 | 2013-11-07 | 58d | 97d |  |  |
| 81 | 1.4.12.1.1 | a) Dismantling | 6d | 2013-09-02 A | 2013-09-07 A | 11 | 100% |  | 2013-09-02 | 2013-09-07 | 6d |  |  | start no earlier than 2013-08-19 |
| 82 | 1.4.12.1.2 | b) Excavation | 12d | 2013-09-09 A | 2013-09-21 A | 81, 11 | 100% |  | 2013-09-09 | 2013-09-21 | 12d |  |  |  |
| 83 | 1.4.12.1.3 | c) PCC | 5d | 2013-09-23 A | 2013-09-27 A | 82 | 100% |  | 2013-09-23 | 2013-09-27 | 5d |  |  |  |
| 84 | 1.4.12.1.4 | d) Footing and column construction | 13d | 2013-09-28 | 2013-10-12 | 83 |  |  | 2013-09-28 | 2013-10-12 | 13d | 40d | 0d |  |
| 85 | 1.4.12.1.5 | e) Curing | 3d | 2013-10-14 | 2013-10-16 | 84 |  |  | 2013-10-14 | 2013-10-16 | 3d | 60d |  |  |
| 86 | 1.4.12.1.6 | f) Soil consolidation | 5d | 2013-10-12 | 2013-10-17 |  |  |  | 2013-10-12 | 2013-10-17 | 5d | 59d |  | start no earlier than 2013-10-12 |
| 87 | 1.4.12.1.7 | g) Structure Positioning | 22d | 2013-10-14 | 2013-11-07 | 84 |  |  | 2013-10-14 | 2013-11-07 | 22d | 41d |  |  |
| 88 | 1.4.12.2 | **Equipment civil foundation** | 23d | 2013-10-14 | 2013-11-08 |  |  |  | 2013-10-14 | 2013-11-08 | 23d | 96d |  |  |
| 89 | 1.4.12.2.1 | a) Excavation | 5d | 2013-10-14 | 2013-10-18 | 84 |  |  | 2013-10-14 | 2013-10-18 | 5d | 40d | 0d |  |
| 90 | 1.4.12.2.2 | b) PCC | 3d | 2013-10-19 | 2013-10-22 | 89 |  |  | 2013-10-19 | 2013-10-22 | 3d | 40d | 0d |  |
| 91 | 1.4.12.2.3 | c) Foundations | 10d | 2013-10-23 | 2013-11-02 | 90 |  |  | 2013-10-23 | 2013-11-02 | 10d | 40d | 0d |  |
| 92 | 1.4.12.2.4 | d) Curing | 5d | 2013-11-04 | 2013-11-08 | 91 |  |  | 2013-11-04 | 2013-11-08 | 5d | 40d |  |  |
| 93 | 1.4.13 | **Chiller and chilled water storage tank** | 24d | 2013-10-15 | 2013-11-11 |  |  |  | 2013-10-15 | 2013-11-13 | 26d | 94d |  |  |
| 94 | 1.4.13.1 | a) Excavation | 10d | 2013-10-15 | 2013-10-25 |  |  |  | 2013-10-15 | 2013-10-25 | 10d | 38d | 0d | start no earlier than 2013-10-15 |
| 95 | 1.4.13.2 | b) PCC | 4d | 2013-10-26 | 2013-10-30 | 94 |  |  | 2013-10-26 | 2013-10-30 | 4d | 38d | 0d |  |
| 96 | 1.4.13.3 | c) Footing and column construction | 5d | 2013-10-31 | 2013-11-05 | 95 |  |  | 2013-10-31 | 2013-11-05 | 5d | 38d | 0d |  |
| 97 | 1.4.13.4 | d) Soil consolidation | 5d | 2013-11-06 | 2013-11-11 | 96 |  |  | 2013-11-06 | 2013-11-11 | 5d | 38d |  |  |
| 98 | 1.4.14 | **Hypo circulation System** | 2d | 2013-12-02 | 2013-12-03 |  |  |  | 2013-12-02 | 2013-12-04 | 3d | 75d |  |  |
| 99 | 1.4.14.1 | a) Removal of old Hypo circulation pumps and Heat Exchanger | 1d | 2013-12-02 | 2013-12-02 |  |  |  | 2013-12-02 | 2013-12-02 | 1d | 19d | 0d | start no earlier than 2013-12-02 |
| 100 | 1.4.14.2 | b)Civil Bed Modification | 1d | 2013-12-03 | 2013-12-03 | 99 |  |  | 2013-12-03 | 2013-12-03 | 1d | 19d |  |  |
| 101 | 1.4.15 | **Acidic Wash Tower system** | 2d | 2013-12-03 | 2013-12-04 |  |  |  | 2013-12-03 | 2013-12-05 | 3d | 74d |  |  |
| 102 | 1.4.15.1 | a) Removal of Old acidic wash tower circulation pumps and tower | 1d | 2013-12-03 | 2013-12-03 |  |  |  | 2013-12-03 | 2013-12-03 | 1d | 18d | 0d | start no earlier than 2013-12-03 |
| 103 | 1.4.15.2 | b) Civil Bed Modification | 1d | 2013-12-04 | 2013-12-04 | 102 |  |  | 2013-12-04 | 2013-12-04 | 1d | 18d |  | start no earlier than 2013-12-03 |

| ID | WBS | Task | Duration | Start | Finish | Predecessors | Complete | Remaining | Baseline start | Baseline finish | Baseline duration | Total slack | Free slack | Constraint |
| --- | --- | --- | --- | --- | --- | --- | --- | --- | --- | --- | --- | --- | --- | --- |
| 104 | 1.4.16 | **Caustic Over Head Tank** | 29d | 2013-11-01 | 2013-12-04 |  |  |  | 2013-11-01 | 2013-12-05 | 30d | 74d |  |  |
| 105 | 1.4.16.1 | a) Strengthening of Existing structure | 28d | 2013-11-01 | 2013-12-03 |  |  |  | 2013-11-01 | 2013-12-03 | 28d | 18d | 0d | start no earlier than 2013-11-01 |
| 106 | 1.4.16.2 | b) Removal of Old Tank | 1d | 2013-12-04 | 2013-12-04 | 105 |  |  | 2013-12-04 | 2013-12-04 | 1d | 18d |  |  |
| 107 | 1.4.17 | **New 22KV HT Panel Erection** | 82d | 2013-08-23 A | 2013-11-26 |  | 24% | 62.02d | 2013-08-23 | 2013-11-26 | 82d | 81d |  |  |
| 108 | 1.4.17.1 | Contractor finalization for erection | 1d | 2013-08-23 | 2013-08-23 |  |  |  | 2013-08-23 | 2013-08-23 | 1d | 106d |  | start no earlier than 2013-08-23 |
| 109 | 1.4.17.2 | Procurement of materials (Channels & Angle) | 1d | 2013-08-27 A | 2013-08-27 A |  | 100% |  | 2013-08-27 | 2013-08-27 | 1d |  |  | start no earlier than 2013-08-27 |
| 110 | 1.4.17.3 | Fabrication of base frame | 1d | 2013-08-28 A | 2013-08-28 A | 109 | 100% |  | 2013-08-28 | 2013-08-28 | 1d |  |  |  |
| 111 | 1.4.17.4 | Erection of base frame and grouting | 1d | 2013-08-29 A | 2013-08-29 A | 110 | 100% |  | 2013-08-29 | 2013-08-29 | 1d |  |  |  |
| 112 | 1.4.17.5 | Receipt of HT panel | 1d | 2013-08-24 A | 2013-08-24 A |  | 100% |  | 2013-08-24 | 2013-08-24 | 1d |  |  | start no earlier than 2013-08-24 |
| 113 | 1.4.17.6 | Unloading, leading and positioning of panels in HT room | 4d | 2013-08-26 A | 2013-08-29 A | 112 | 100% |  | 2013-08-26 | 2013-08-29 | 4d |  |  |  |
| 114 | 1.4.17.7 | Interconnection between panels, Tightness checking | 1d | 2013-08-30 A | 2013-08-30 A | 113 | 100% |  | 2013-08-30 | 2013-08-30 | 1d |  |  |  |
| 115 | 1.4.17.8 | Formation of earth pits and HT panel earthing | 6d | 2013-10-10 | 2013-10-16 |  |  |  | 2013-10-10 | 2013-10-16 | 6d | 60d |  | start no earlier than 2013-10-10 |
| 116 | 1.4.17.9 | Fixing of supports for Cable Trays | 6d | 2013-10-05 | 2013-10-11 |  |  |  | 2013-10-05 | 2013-10-11 | 6d | 25d | 0d | start no earlier than 2013-10-05 |
| 117 | 1.4.17.10 | Erection of cable trays for Top entry | 4d | 2013-10-12 | 2013-10-16 | 116 |  |  | 2013-10-12 | 2013-10-16 | 4d | 25d | 0d | start no earlier than 2013-08-30 |
| 118 | 1.4.17.11 | Dispatch signoff for HT Cable, Approval | 20d | 2013-09-02 A | 2013-09-24 A |  | 100% |  | 2013-09-02 | 2013-09-24 | 20d |  |  | start no earlier than 2013-09-02 |
| 119 | 1.4.17.12 | Receipt of HT cable | 20d | 2013-09-16 | 2013-10-08 |  |  |  | 2013-09-16 | 2013-10-08 | 20d | 67d |  | start no earlier than 2013-09-16 |
| 120 | 1.4.17.13 | Laying of HT cables for incomer, O/G 1- Old HT I/C, O/G 2 - New RT, O/G 3 - New Aux Transformer | 15d | 2013-10-17 | 2013-11-02 | 117 |  |  | 2013-10-17 | 2013-11-02 | 15d | 25d | 0d |  |
| 121 | 1.4.17.14 | Termination of HT cables in I/C and O/G | 4d | 2013-11-04 | 2013-11-07 | 120 |  |  | 2013-11-04 | 2013-11-07 | 4d | 25d | 0d |  |
| 122 | 1.4.17.15 | CEA Inspection, completion of compliance, Approval | 15d | 2013-11-08 | 2013-11-25 | 121 |  |  | 2013-11-08 | 2013-11-25 | 15d | 26d |  |  |
| 123 | 1.4.17.16 | PED Approval | 15d | 2013-11-08 | 2013-11-25 | 121 |  |  | 2013-11-08 | 2013-11-25 | 15d | 25d | 0d | start no earlier than 2013-10-09 |
| 124 | 1.4.17.17 | Precommissioning Tests by Supplier | 3d | 2013-10-21 | 2013-10-23 |  |  |  | 2013-10-21 | 2013-10-23 | 3d | 54d |  | start no earlier than 2013-10-21 |
| 125 | 1.4.17.18 | Termination of HT cables in 22KV yard I/C and Energizing the HT panel and put into service | 1d | 2013-11-26 | 2013-11-26 | 123 |  |  | 2013-11-26 | 2013-11-26 | 1d | 25d |  | start no earlier than 2013-10-09 |
| 126 | 1.4.18 | **Erection of Rectifier Transformer, Rectifier unit and accessories** | 423d | 2012-06-01 | 2013-10-07 |  |  |  | 2013-07-22 | 2013-11-06 | 93d | 124d |  |  |
| 127 | 1.4.18.1 | Drain line pipe connecting to Soak pit | 7d | 2012-06-01 | 2012-06-08 |  |  |  | 2013-10-12 | 2013-10-19 | 7d | 474d | 0d |  |
| 128 | 1.4.18.2 | Construction of waste oil collection pit and interconnecting with pipe line. | 10d | 2012-06-09 | 2012-06-20 | 127 |  |  | 2013-10-21 | 2013-10-31 | 10d | 474d |  |  |
| 129 | 1.4.18.3 | New Trench connectivity with the existing trench | 2d | 2013-10-05 | 2013-10-07 |  |  |  | 2013-10-05 | 2013-10-07 | 2d | 68d |  | start no earlier than 2013-10-05 |

| ID | WBS | Task | Duration | Start | Finish | Predecessors | Complete | Remaining | Baseline start | Baseline finish | Baseline duration | Total slack | Free slack | Constraint |
| --- | --- | --- | --- | --- | --- | --- | --- | --- | --- | --- | --- | --- | --- | --- |
| 130 | 1.4.19 | **Auxilliary Transformer** | 15d | 2013-10-14 | 2013-10-30 |  |  |  | 2013-10-14 | 2013-11-12 | 26d | 104d |  |  |
| 131 | 1.4.19.1 | Civil foundation for Aux Transformer | 15d | 2013-10-14 | 2013-10-30 |  |  |  | 2013-10-14 | 2013-10-30 | 15d | 48d |  | start no earlier than 2013-10-14 |
| 132 | 1.4.20 | **Erection of MCC 1** | 40d | 2013-09-20 A | 2013-11-05 |  | 44% | 22.5d | 2013-09-20 | 2013-11-09 | 44d | 99d |  |  |
| 133 | 1.4.20.1 | Shifting of lab from Brine plant to other location | 10d | 2013-09-20 A | 2013-10-01 A |  | 100% |  | 2013-09-20 | 2013-10-01 | 10d |  |  | start no earlier than 2013-09-20 |
| 134 | 1.4.20.2 | Civil work - Removal of wall, excavation for cable trenches, Fixing of insert plate, provision for panel erection | 30d | 2013-10-02 A | 2013-11-05 | 133 | 25% | 22.5d | 2013-10-02 | 2013-11-05 | 30d | 99d |  |  |
| 135 | 1.4.21 | **Erection of MCC 3A** | 30d | 2013-10-10 | 2013-11-13 |  |  |  | 2013-10-10 | 2013-11-14 | 31d | 92d |  |  |
| 136 | 1.4.21.1 | Civil - Extension of DG room towards toilet | 20d | 2013-10-10 | 2013-11-01 |  |  |  | 2013-10-10 | 2013-11-01 | 20d | 36d | 0d | start no earlier than 2013-10-10 |
| 137 | 1.4.21.2 | Excavation for cable trenches, Fixing of insert plate, provision for panel erection | 10d | 2013-11-02 | 2013-11-13 | 136 |  |  | 2013-11-02 | 2013-11-13 | 10d | 36d |  |  |
| 138 | 1.4.22 | **Erection of MCC 6** | 40d | 2013-09-06 | 2013-10-22 |  |  |  | 2013-09-06 | 2013-11-02 | 50d | 111d |  |  |
| 139 | 1.4.22.1 | Civil - Removal of wall, cupboards, Extension of MCC area by 2.5mtrs in Mechanical shed by Frame work, chequered plate and provision for cabling | 40d | 2013-09-06 | 2013-10-22 |  |  |  | 2013-09-06 | 2013-10-22 | 40d | 55d |  | start no earlier than 2013-09-06 |
| 140 | 1.4.23 | **Erection of 1010KVA DG set & DG Aux PCC** | 60d | 2013-10-10 | 2013-12-18 |  |  |  | 2013-09-06 | 2014-01-17 | 115d | 62d |  |  |
| 141 | 1.4.23.1 | Finalisation of Civil contract & approval | 15d | 2013-10-10 | 2013-10-26 |  |  |  | 2013-10-10 | 2013-10-26 | 15d | 6d | 0d | start no earlier than 2013-10-10 |
| 142 | 1.4.23.2 | Civil work - Excavation for DG foundation | 20d | 2013-10-28 | 2013-11-19 | 141 |  |  | 2013-10-28 | 2013-11-19 | 20d | 6d | 0d |  |
| 143 | 1.4.23.3 | Foundation and curing | 25d | 2013-11-20 | 2013-12-18 | 142 |  |  | 2013-11-20 | 2013-12-18 | 25d | 6d |  |  |
| 144 | 1.4.24 | **Instrument Erection** | 76d | 2013-09-02 | 2013-11-28 |  |  |  | 2013-09-16 | 2013-12-20 | 83d | 79d |  |  |
| 145 | 1.4.24.1 | Control room Extension | 28d | 2013-09-02 | 2013-10-03 |  |  |  | 2013-09-16 | 2013-10-17 | 28d | 23d | 0d | start no earlier than 2013-09-02 |
| 146 | 1.4.24.2 | DCS | 18d | 2013-10-04 | 2013-10-24 | 145 |  |  | 2013-10-25 | 2013-11-14 | 18d | 23d | 0d | start no earlier than 2013-06-18 |
| 147 | 1.4.24.3 | Field Instrument | 15d | 2013-10-25 | 2013-11-11 | 146 |  |  | 2013-11-16 | 2013-12-03 | 15d | 38d |  | start no earlier than 2013-10-01 |
| 148 | 1.4.24.4 | Cable Trays & Cabling | 30d | 2013-10-25 | 2013-11-28 | 146 |  |  | 2013-11-16 | 2013-12-20 | 30d | 23d |  | start no earlier than 2013-06-24 |
| 149 | 1.4.25 | **Anolyte / Catholyte circulation tank / Pump * This work can be taken up during shut down only.** | 14d | 2013-12-10 | 2013-12-25 |  |  |  | 2013-12-10 | 2014-01-17 | 34d | 56d |  |  |
| 150 | 1.4.25.1 | Removal of old circulation tanks and pumps | 1d | 2013-12-10 | 2013-12-10 |  |  |  | 2013-12-10 | 2013-12-10 | 1d | 56d | 0d | start no earlier than 2013-12-10 |
| 151 | 1.4.25.2 | Dismantling of existing tank foundations and pumps | 3d | 2013-12-11 | 2013-12-13 | 150 |  |  | 2013-12-11 | 2013-12-13 | 3d | 56d | 0d | start no earlier than 2013-12-02 |
| 152 | 1.4.25.3 | Excavation | 3d | 2013-12-14 | 2013-12-17 | 151 |  |  | 2013-12-14 | 2013-12-17 | 3d | 56d | 0d | start no earlier than 2013-12-02 |
| 153 | 1.4.25.4 | Construction of Bed Foundation for tanks and pumps | 5d | 2013-12-18 | 2013-12-23 | 152 |  |  | 2013-12-18 | 2013-12-23 | 5d | 56d | 0d | start no earlier than 2013-12-02 |
| 154 | 1.4.25.5 | Curing | 2d | 2013-12-24 | 2013-12-25 | 153 |  |  | 2013-12-24 | 2013-12-25 | 2d | 56d |  |  |

| ID | WBS | Task | Duration | Start | Finish | Predecessors | Baseline start | Baseline finish | Baseline duration | Total slack | Free slack | Constraint |
| --- | --- | --- | --- | --- | --- | --- | --- | --- | --- | --- | --- | --- |
| 155 | 1.4.26 | **Hydrogen Handling system** | 3d | 2013-12-10 | 2013-12-12 |  | 2013-12-10 | 2013-12-24 | 13d | 67d |  |  |
| 156 | 1.4.26.1 | Removal of Existing H2 Handling system | 2d | 2013-12-10 | 2013-12-11 |  | 2013-12-10 | 2013-12-11 | 2d | 11d | 0d | start no earlier than 2013-12-10 |
| 157 | 1.4.26.2 | Modification of Civil Bed - Hydrogen Vent stack & Cl2 seal pot | 1d | 2013-12-12 | 2013-12-12 | 156 | 2013-12-12 | 2013-12-12 | 1d | 11d |  | start no earlier than 2012-12-10 |
| 158 | 1.4.27 | **Cell House Pipe rack** | 2d | 2013-12-02 | 2013-12-03 |  | 2013-12-02 | 2013-12-09 | 7d | 75d |  |  |
| 159 | 1.4.27.1 | Removal of Cl2 wash tower & Pumps., Cl2 Blowers & Recuperator | 1d | 2013-12-02 | 2013-12-02 |  | 2013-12-02 | 2013-12-02 | 1d | 19d | 0d | start no earlier than 2013-12-02 |
| 160 | 1.4.27.2 | Civil Foundation for pipe rack | 1d | 2013-12-03 | 2013-12-03 | 159 | 2013-12-03 | 2013-12-03 | 1d | 19d |  |  |
