# Brine Plant

Schedule from MS Project, 2013-06-20 to 2014-08-25, A marks actual dates.
CAL

## Calendars

- CAL: Mon-Fri 08:00-12:00, 13:00-17:00; Sat-Sun off. Exceptions (off unless hours are given): 2013-06-22 08:00-12:00, 13:00-17:00, 2013-06-29 08:00-12:00, 13:00-17:00, 2013-07-06 08:00-12:00, 13:00-17:00, 2013-07-13 08:00-12:00, 13:00-17:00, 2013-07-20 08:00-12:00, 13:00-17:00, 2013-07-27 08:00-12:00, 13:00-17:00, 2013-08-03 08:00-12:00, 13:00-17:00, 2013-08-10 08:00-12:00, 13:00-17:00, 2013-08-17 08:00-12:00, 13:00-17:00, 2013-08-24 08:00-12:00, 13:00-17:00, 2013-08-31 08:00-12:00, 13:00-17:00, 2013-09-07 08:00-12:00, 13:00-17:00, 2013-09-14 08:00-12:00, 13:00-17:00, 2013-09-21 08:00-12:00, 13:00-17:00, 2013-09-28 08:00-12:00, 13:00-17:00, 2013-10-05 08:00-12:00, 13:00-17:00, 2013-10-12 08:00-12:00, 13:00-17:00, 2013-10-19 08:00-12:00, 13:00-17:00, 2013-10-26 08:00-12:00, 13:00-17:00, 2013-11-02 08:00-12:00, 13:00-17:00, 2013-11-09 08:00-12:00, 13:00-17:00, 2013-11-16 08:00-12:00, 13:00-17:00, 2013-11-23 08:00-12:00, 13:00-17:00, 2013-11-30 08:00-12:00, 13:00-17:00, 2013-12-07 08:00-12:00, 13:00-17:00, 2013-12-14 08:00-12:00, 13:00-17:00, 2013-12-21 08:00-12:00, 13:00-17:00, 2013-12-28 08:00-12:00, 13:00-17:00, 2014-01-04 08:00-12:00, 13:00-17:00, 2014-01-11 08:00-12:00, 13:00-17:00, 2014-01-18 08:00-12:00, 13:00-17:00, 2014-01-25 08:00-12:00, 13:00-17:00, 2014-02-01 08:00-12:00, 13:00-17:00, 2014-02-08 08:00-12:00, 13:00-17:00, 2014-02-15 08:00-12:00, 13:00-17:00, 2014-02-22 08:00-12:00, 13:00-17:00, 2014-03-01 08:00-12:00, 13:00-17:00, 2014-03-08 08:00-12:00, 13:00-17:00, 2014-03-15 08:00-12:00, 13:00-17:00, 2014-03-22 08:00-12:00, 13:00-17:00, 2014-03-29 08:00-12:00, 13:00-17:00.

## Schedule

| ID | WBS | Task | Duration | Start | Finish | Predecessors | Complete | Remaining | Total slack | Free slack | Constraint |
| --- | --- | --- | --- | --- | --- | --- | --- | --- | --- | --- | --- |
| 1 | 1 | **02-Sec-Brine-Plant** | 347d | 2013-06-20 A | 2014-08-21 |  | 25% | 259.37d | 0d |  |  |
| 2 | 1.1 | **4. CIVIL and Erection** | 176d | 2013-06-20 A | 2014-01-10 |  | 61% | 68.4d | -63d | 0d |  |
| 3 | 1.1.1 | **4.1 Polished Brine storage tank and pumps** | 173d | 2013-06-20 A | 2014-01-07 |  | 86% | 24.46d | -73d | 0d |  |
| 4 | 1.1.1.1 | a) Removal of Old Polished Brine tank | 10d | 2013-06-20 A | 2013-07-01 A |  | 100% |  |  |  | finish no earlier than 2013-07-01 |
| 5 | 1.1.1.2 | b) Excavation | 5d | 2013-07-02 A | 2013-07-06 A | 4 | 100% |  |  |  |  |
| 6 | 1.1.1.3 | c) Foundation | 5d | 2013-07-08 A | 2013-07-12 A | 5 | 100% |  |  |  |  |
| 7 | 1.1.1.4 | d) Positioning of Brine Storage tank | 50d | 2013-07-31 A | 2013-09-26 A |  | 100% |  |  |  |  |
| 8 | 1.1.1.5 | e) Filling and Leak Testing | 15d | 2013-09-27 A | 2013-10-14 A | 7 | 100% |  |  |  |  |
| 9 | 1.1.1.6 | Removal of Old Polished Brine pump-A | 1d | 2013-12-23 | 2013-12-23 |  |  |  | -92d | 0d | start no earlier than 2013-12-23 |
| 10 | 1.1.1.7 | Civil bed modification | 2d | 2013-12-24 | 2013-12-25 | 9 |  |  | -92d | 0d |  |
| 11 | 1.1.1.8 | d) Positioning of new pump-A | 1d | 2013-12-26 | 2013-12-26 | 10 |  |  | -92d | 0d | start no earlier than 2013-11-07 |
| 12 | 1.1.1.9 | Piping | 2d | 2013-12-27 | 2013-12-28 | 11 |  |  | -92d | 0d |  |
| 13 | 1.1.1.10 | Commissioning | 1d | 2013-12-30 | 2013-12-30 | 12 |  |  | -92d | 0d |  |
| 14 | 1.1.1.11 | Removal of Old Polished Brine pump-B | 1d | 2013-12-31 | 2013-12-31 | 13 |  |  | -92d | 0d | start no earlier than 2013-11-04 |
| 15 | 1.1.1.12 | Civil bed modification | 2d | 2014-01-01 | 2014-01-02 | 14 |  |  | -92d | 0d |  |
| 16 | 1.1.1.13 | d) Positioning of new pump - B | 1d | 2014-01-03 | 2014-01-03 | 15 |  |  | -92d | 0d | start no earlier than 2013-11-07 |
| 17 | 1.1.1.14 | Piping | 2d | 2014-01-04 | 2014-01-06 | 16 |  |  | -92d | 0d |  |
| 18 | 1.1.1.15 | Commissioning | 1d | 2014-01-07 | 2014-01-07 | 17 |  |  | -92d | 0d |  |
| 19 | 1.1.2 | **4.3Pure Brine Tank and Pumps** | 106d | 2013-09-02 A | 2014-01-02 |  | 74% | 27.48d | -66d | 0d |  |
| 20 | 1.1.2.1 | a)Removal of old Pure brine tank | 10d | 2013-09-02 A | 2013-09-12 A |  | 100% |  |  |  | start no earlier than 2013-09-02 |
| 21 | 1.1.2.2 | b)Old Bed Dismantling | 5d | 2013-09-13 A | 2013-09-18 A | 20 | 100% |  |  |  |  |
| 22 | 1.1.2.3 | c)Excavation | 5d | 2013-09-19 A | 2013-09-24 A | 21 | 100% |  |  |  |  |
| 23 | 1.1.2.4 | d)Bed Construction | 12d | 2013-09-25 A | 2013-10-08 A | 22 | 100% |  |  |  |  |
| 24 | 1.1.2.5 | Curing | 7d | 2013-10-09 A | 2013-10-16 A | 23 | 100% |  |  |  |  |
| 25 | 1.1.2.6 | e) Receipt , Positioning & commissioning | 1d | 2013-10-17 A | 2013-10-17 A | 24 | 100% |  |  |  |  |
| 26 | 1.1.2.7 | Removal of Old Pure Brine pump-A | 1d | 2013-12-18 | 2013-12-18 |  |  |  | -88d | 0d | start no earlier than 2013-12-18 |
| 27 | 1.1.2.8 | Civil bed modification | 2d | 2013-12-19 | 2013-12-20 | 26 |  |  | -88d | 0d |  |
| 28 | 1.1.2.9 | d) Positioning of new pump-A | 1d | 2013-12-21 | 2013-12-21 | 27 |  |  | -88d | 0d | start no earlier than 2013-11-07 |
| 29 | 1.1.2.10 | Piping | 2d | 2013-12-23 | 2013-12-24 | 28 |  |  | -88d | 0d |  |
| 30 | 1.1.2.11 | Commissioning | 1d | 2013-12-25 | 2013-12-25 | 29 |  |  | -88d | 0d |  |
| 31 | 1.1.2.12 | Removal of Old Pure Brine pump-B | 1d | 2013-12-26 | 2013-12-26 | 30 |  |  | -88d | 0d | start no earlier than 2013-11-04 |
| 32 | 1.1.2.13 | Civil bed modification | 2d | 2013-12-27 | 2013-12-28 | 31 |  |  | -88d | 0d |  |
| 33 | 1.1.2.14 | d) Positioning of new pump - B | 1d | 2013-12-30 | 2013-12-30 | 32 |  |  | -88d | 0d | start no earlier than 2013-11-07 |
| 34 | 1.1.2.15 | Piping | 2d | 2013-12-31 | 2014-01-01 | 33 |  |  | -88d | 0d |  |
| 35 | 1.1.2.16 | Commissioning | 1d | 2014-01-02 | 2014-01-02 | 34 |  |  | -88d | 0d |  |

| ID | WBS | Task | Duration | Start | Finish | Predecessors | Complete | Remaining | Total slack | Free slack | Constraint |
| --- | --- | --- | --- | --- | --- | --- | --- | --- | --- | --- | --- |
| 36 | 1.1.3 | **4.2 IEC** | 67d | 2013-10-25 A | 2014-01-10 |  | 7% | 62.38d | -63d | 0d |  |
| 37 | 1.1.3.1 | a)Dismantling | 3d | 2013-10-25 A | 2013-10-28 A |  | 100% |  |  |  | start no earlier than 2013-09-02 |
| 38 | 1.1.3.2 | b)Excavation | 1d | 2013-10-29 A | 2013-10-29 A | 37 | 100% |  |  |  |  |
| 39 | 1.1.3.3 | c)Footings and column construction | 5d | 2013-10-30 | 2013-11-04 | 38 |  |  | -79d | 0d |  |
| 40 | 1.1.3.4 | d)Positioning of Ion exchange column | 5d | 2013-11-05 | 2013-11-09 | 39 |  |  | -79d | 0d |  |
| 41 | 1.1.3.5 | f) Ion exchange column strainer erection | 1d | 2013-11-11 | 2013-11-11 | 40 |  |  | -79d | 0d |  |
| 42 | 1.1.3.6 | g)filling of Ion exchange column with resin | 5d | 2013-11-12 | 2013-11-16 | 41 |  |  | -79d | 0d |  |
| 43 | 1.1.3.7 | i) Leak testing of resins | 1d | 2013-11-18 | 2013-11-18 | 42 |  |  | -79d | 0d |  |
| 44 | 1.1.3.8 | e)Internal Piping | 30d | 2013-11-19 | 2013-12-23 | 43 |  |  | -79d | 0d |  |
| 45 | 1.1.3.9 | Control valve receipts & positioning | 3d | 2014-01-03 | 2014-01-06 |  |  |  | -95d | 0d | start no earlier than 2014-01-03 |
| 46 | 1.1.3.10 | Loop & regeneration Checking | 3d | 2014-01-07 | 2014-01-09 | 45 |  |  | -95d | 0d |  |
| 47 | 1.1.3.11 | Commissioning | 1d | 2014-01-10 | 2014-01-10 | 46 |  |  | -95d | 0d |  |
| 48 | 1.2.1.2 | Cleaning and Flushing ( Tanks, equipment and Pipe lines ) | 2d | 2014-08-22 | 2014-08-25 | 49 |  |  | 0d |  | start no earlier than 2014-01-04 |
| 49 | 1.3 | **5. Erection of structurals, pipes, fittings, Electrical equipment and Instruments** | 266d | 2013-09-23 A | 2014-08-21 | 2 | 5% | 251.96d | 0d |  |  |
| 50 | 1.3.1 | Erection contract Finalization | 20d | 2013-09-23 A | 2013-10-15 A |  | 100% |  |  |  | finish no earlier than 2013-10-15 |
| 51 | 1.3.2 | Mobilization of erection material | 15d | 2014-01-11 | 2014-01-28 | 50 |  |  | 0d |  | start no earlier than 2013-11-01 |
| 52 | 1.3.3 | Pipe rack and supports | 30d | 2014-01-29 | 2014-03-04 | 51 |  |  | 0d |  | start no earlier than 2013-11-01 |
| 53 | 1.3.4 | Process Piping | 40d | 2014-03-05 | 2014-04-23 | 52 |  |  | 86d |  | start no earlier than 2013-11-20 |
| 54 | 1.3.5 | Utility Piping | 40d | 2014-03-05 | 2014-04-23 | 52 |  |  | 86d |  | start no earlier than 2013-11-20 |
| 55 | 1.3.6 | Erection of cable tray ( Electrical and Instrument ) | 12d | 2014-03-05 | 2014-03-18 | 52 |  |  | 0d |  | start no earlier than 2013-11-15 |
| 56 | 1.3.7 | Laying of cables (Electrical and Instrument) | 10d | 2014-03-19 | 2014-03-29 | 55 |  |  | 0d |  | start no earlier than 2013-10-02 |
| 57 | 1.3.8 | Erection of instruments , Testing | 45d | 2014-03-31 | 2014-05-30 | 56 |  |  | 59d |  | finish no earlier than 2013-12-31 |
| 58 | 1.3.9 | **Erection of MCC and Motors** | 84d | 2014-03-31 | 2014-07-24 |  |  |  | 0d |  |  |
| 59 | 1.3.9.1 | MCC-1 | 84d | 2014-03-31 | 2014-07-24 | 56 |  |  | 0d |  | finish no earlier than 2013-12-26 |
| 60 | 1.3.9.2 | MCC-3 | 32d | 2014-03-31 | 2014-05-13 | 56 |  |  | 21d | 0d | finish no earlier than 2013-12-31 |
| 61 | 1.3.9.3 | MCC-3A | 31d | 2014-05-14 | 2014-06-25 | 56, 60 |  |  | 21d |  | finish no earlier than 2013-12-16 |
| 62 | 1.3.10 | Installation of Light fittings with LDB | 20d | 2014-07-25 | 2014-08-21 | 58 |  |  | 0d |  | start no earlier than 2013-12-02 |
