# Brine Plant

Schedule from MS Project, 2013-07-31 to 2014-01-27, A marks actual dates.
CAL

## Calendars

- Cl2, H2 Handling Section: Mon-Fri 08:00-12:00, 13:00-17:00; Sat-Sun off. Exceptions (off unless hours are given): 2013-08-03 08:00-12:00, 13:00-17:00, 2013-08-10 08:00-12:00, 13:00-17:00, 2013-08-17 08:00-12:00, 13:00-17:00, 2013-08-24 08:00-12:00, 13:00-17:00, 2013-08-31 08:00-12:00, 13:00-17:00, 2013-09-07 08:00-12:00, 13:00-17:00, 2013-09-14 08:00-12:00, 13:00-17:00, 2013-09-21 08:00-12:00, 13:00-17:00, 2013-09-28 08:00-12:00, 13:00-17:00, 2013-10-05 08:00-12:00, 13:00-17:00, 2013-10-12 08:00-12:00, 13:00-17:00, 2013-10-19 08:00-12:00, 13:00-17:00, 2013-10-26 08:00-12:00, 13:00-17:00, 2013-11-02 08:00-12:00, 13:00-17:00, 2013-11-09 08:00-12:00, 13:00-17:00, 2013-11-16 08:00-12:00, 13:00-17:00, 2013-11-23 08:00-12:00, 13:00-17:00, 2013-11-30 to 2013-12-01 08:00-12:00, 13:00-17:00, 2013-12-07 08:00-12:00, 13:00-17:00, 2013-12-14 08:00-12:00, 13:00-17:00, 2013-12-21 08:00-12:00, 13:00-17:00, 2013-12-28 08:00-12:00, 13:00-17:00, 2014-01-04 08:00-12:00, 13:00-17:00, 2014-01-11 08:00-12:00, 13:00-17:00, 2014-01-18 08:00-12:00, 13:00-17:00, 2014-01-25 08:00-12:00, 13:00-17:00.

## Schedule

| ID | WBS | Task | Duration | Start | Finish | Predecessors | Total slack | Free slack |
| --- | --- | --- | --- | --- | --- | --- | --- | --- |
| 1 | 1 | **04-Cl2-H2-Handling** | 155.12d? | 2013-07-31 | 2014-01-27 |  | 0d |  |
| 2 | 1.1 | **3. Civil and Erection** | 77d | 2013-07-31 | 2013-10-28 |  | 60.12d |  |
| 3 | 1.1.1 | **3.1 Structurals Civil foundation** | 44d | 2013-07-31 | 2013-09-19 |  | 60.12d |  |
| 4 | 1.1.1.1 | a) Dismantling | 10d | 2013-07-31 | 2013-08-10 |  | 60.12d | 0d |
| 5 | 1.1.1.2 | b) Excavation | 10d | 2013-08-12 | 2013-08-22 | 4 | 60.12d | 0d |
| 6 | 1.1.1.3 | c) PCC | 10d | 2013-08-23 | 2013-09-03 | 5 | 60.12d | 0d |
| 7 | 1.1.1.4 | d) Footing and column construction | 14d | 2013-09-04 | 2013-09-19 | 6 | 60.12d | 0d |
| 8 | 1.1.2 | **3.2 Equipments civil foundation** | 33d | 2013-09-20 | 2013-10-28 |  | 60.12d |  |
| 9 | 1.1.2.1 | a) Dismantling | 5d | 2013-09-20 | 2013-09-25 | 7 | 60.12d | 0d |
| 10 | 1.1.2.2 | b) Exacavation | 5d | 2013-09-26 | 2013-10-01 | 9 | 60.12d | 0d |
| 11 | 1.1.2.3 | c) PCC | 5d | 2013-10-02 | 2013-10-07 | 10 | 60.12d | 0d |
| 12 | 1.1.2.4 | d) Civil bed construction | 5d | 2013-10-08 | 2013-10-12 | 11 | 60.12d | 0d |
| 13 | 1.1.2.5 | e) Soil consolidation | 3d | 2013-10-14 | 2013-10-16 | 12 | 78.12d | 0d |
| 14 | 1.1.2.6 | f) PCC and RCC flooring | 5d | 2013-10-17 | 2013-10-22 | 13 | 78.12d | 0d |
| 15 | 1.1.2.7 | g) Plastering of flooring | 5d | 2013-10-23 | 2013-10-28 | 14 | 78.12d |  |
| 16 | 1.1.3 | **3.3 Erection of equipments and Structurals** | 26d | 2013-09-20 | 2013-10-19 |  | 63.12d |  |
| 17 | 1.1.3.1 | **a) Erection of Structurals** | 26d | 2013-09-20 | 2013-10-19 |  | 63.12d |  |
| 18 | 1.1.3.1.1 | Column Erection | 9d | 2013-09-20 | 2013-09-30 | 7 | 63.12d | 0d |
| 19 | 1.1.3.1.2 | Tie beam erection - 3.65 m level | 2d | 2013-10-01 | 2013-10-02 | 18 | 63.12d | 0d |
| 20 | 1.1.3.1.3 | Tie beam erection - 6.4 m level | 2d | 2013-10-03 | 2013-10-04 | 19 | 63.12d | 0d |
| 21 | 1.1.3.1.4 | Tie beam erection - 9.5 m level | 2d | 2013-10-05 | 2013-10-07 | 20 | 63.12d | 0d |
| 22 | 1.1.3.1.5 | Tie beam erection - 13 m level | 2d | 2013-10-08 | 2013-10-09 | 21 | 63.12d | 0d |
| 23 | 1.1.3.1.6 | Cross member erection - 3.65 m | 3d | 2013-10-03 | 2013-10-05 | 19 | 97.12d |  |
| 24 | 1.1.3.1.7 | Cross member erection -6.4 m | 3d | 2013-10-05 | 2013-10-08 | 20 | 95.12d |  |
| 25 | 1.1.3.1.8 | Cross member erection - 9.5 | 3d | 2013-10-08 | 2013-10-10 | 21 | 87.12d | 2d |
| 26 | 1.1.3.1.9 | Cross member erection- 13 m | 3d | 2013-10-10 | 2013-10-12 | 22 | 85.12d | 0d |
| 27 | 1.1.3.1.10 | staircase erection | 2d | 2013-10-14 | 2013-10-15 | 25, 26 | 85.12d | 0d |
| 28 | 1.1.3.1.11 | Handrail erection | 4d | 2013-10-16 | 2013-10-19 | 26, 27 | 85.12d |  |

| ID | WBS | Task | Type | Duration | Start | Finish | Predecessors | Total slack | Free slack | Constraint |
| --- | --- | --- | --- | --- | --- | --- | --- | --- | --- | --- |
| 29 | 1.1.3.1.12 | **b) Positioing of Equipment and pumps** |  | 6d | 2013-10-08 | 2013-10-14 |  | 60.12d | 35.12d |  |
| 30 | 1.1.3.1.12.1 | Cl2 / H2 gas mist eliminator |  | 1d | 2013-10-10 | 2013-10-10 | 22 | 63.12d |  |  |
| 31 | 1.1.3.1.12.2 | H2 buffer vessel , SP-401 , E-402, T-403, E-501, T-401 |  | 1d | 2013-10-08 | 2013-10-08 | 21 | 65.12d |  |  |
| 32 | 1.1.3.1.12.3 | T-501, T-502 , T-601 , T-602 , T-402 |  | 1d | 2013-10-14 | 2013-10-14 | 12 | 60.12d |  |  |
| 33 | 1.1.3.1.12.4 | Heat Exchangers |  | 1d | 2013-10-14 | 2013-10-14 | 12 | 60.12d |  |  |
| 34 | 1.1.3.1.12.5 | Pumps |  | 1d | 2013-10-14 | 2013-10-14 | 12 | 60.12d |  |  |
| 35 | 1.1.3.1.12.6 | Blower |  | 1d | 2013-10-14 | 2013-10-14 | 12 | 60.12d |  |  |
| 36 | 1.2 | **3.4 Erection of structurals, pipes, fittings, Electrical Equipments and Instruments** |  | 100d? | 2013-10-03 | 2014-01-27 |  | 0d |  |  |
| 37 | 1.2.1 | a) Pipe rack and supports |  | 45d | 2013-10-03 | 2013-11-25 |  | 3d | 0d | start no earlier than 2013-10-03 |
| 38 | 1.2.2 | b) Process Piping |  | 30d | 2013-11-25 | 2013-12-28 | 29, 37 | 25d |  |  |
| 39 | 1.2.3 | c) Utility Piping |  | 30d | 2013-11-25 | 2013-12-28 | 29, 37 | 25d |  |  |
| 40 | 1.2.4 | d) Erection of cable tray ( Electrical and Instrument ) |  | 12d | 2013-11-25 | 2013-12-07 | 37 | 3d | 0d |  |
| 41 | 1.2.5 | e) Laying of Electrical cables and Instrument cables |  | 25d | 2013-12-07 | 2014-01-06 | 40 | 3d | 1d |  |
| 42 | 1.2.6 | f) Erection of instruments |  | 35d | 2013-12-09 | 2014-01-18 | 40 | 7d |  | start no earlier than 2013-12-09 |
| 43 | 1.2.7 | **Erection of MCC and Motors** |  | 30d? | 2013-12-09 | 2014-01-13 |  | 0d |  |  |
| 44 | 1.2.7.1 | Erection of MCC and Motors | milestone | 0d? | 2013-12-09 | 2013-12-09 |  | 0d |  | must start on 2013-12-09 |
| 45 | 1.2.7.2 | MCC-6 |  | 30d | 2013-12-09 | 2014-01-13 | 40 | 12d |  | start no earlier than 2013-12-09 |
| 46 | 1.2.7.3 | MCC-3 |  | 30d | 2013-12-09 | 2014-01-13 | 40 | 12d |  | start no earlier than 2013-12-09 |
| 47 | 1.2.7.4 | MCC-3A |  | 30d | 2013-12-09 | 2014-01-13 | 40 | 2d |  | start no earlier than 2013-12-09 |
| 48 | 1.2.8 | h) Installation of Light fittings with LDB |  | 15d | 2014-01-07 | 2014-01-24 | 41 | 2d |  | start no earlier than 2014-01-07 |
| 49 | 1.2.9 | **4. Pre-commissioning** |  | 6d? | 2014-01-15 | 2014-01-22 |  | 0d |  |  |
| 50 | 1.2.9.1 | 4. Pre-commissioning | milestone | 0d? | 2014-01-15 | 2014-01-15 | 47 | 0d |  | must start on 2014-01-15 |
| 51 | 1.2.9.2 | b) Hook up with Existing set up (Process and utilities) |  | 2d | 2014-01-15 | 2014-01-17 | 50 | 0d |  | start no earlier than 2014-01-15 |
| 53 | 1.2.9.3 | c) Trial run of Equipments |  | 2d | 2014-01-15 | 2014-01-17 | 29, 47 | 0d |  | start no earlier than 2014-01-15 |
| 54 | 1.2.9.4 | d) Brine filling and circulation |  | 4d | 2014-01-17 | 2014-01-22 | 51, 53 | 0d |  | finish no earlier than 2014-01-18 |
| 55 | 1.2.10 | 5. Commissioning of plant |  | 4d | 2014-01-22 | 2014-01-27 | 49, 54 | 0d |  | start no earlier than 2014-01-19 |

| ID | WBS | Task | Duration | Start | Finish | Predecessors | Complete | Remaining | Total slack | Free slack | Constraint |
| --- | --- | --- | --- | --- | --- | --- | --- | --- | --- | --- | --- |
| 56 | 2 | **04-Cl2-H2-Handling** | 105d | 2013-09-05 A | 2014-01-03 |  | 8% | 96.52d | 19.12d |  |  |
| 57 | 2.1 | **3. Civil and Erection** | 81d | 2013-09-05 A | 2013-12-06 |  | 29% | 57.66d | 43.12d |  |  |
| 58 | 2.1.1 | **3.1 Structurals Civil foundation** | 34d | 2013-09-05 A | 2013-10-14 A |  | 100% |  |  |  |  |
| 59 | 2.1.1.1 | a) Dismantling | 5d | 2013-09-05 A | 2013-09-10 A |  | 100% |  |  |  | start no earlier than 2013-08-19 |
| 60 | 2.1.1.2 | b) Excavation | 10d | 2013-09-11 A | 2013-09-21 A | 59 | 100% |  |  |  |  |
| 61 | 2.1.1.3 | c) PCC | 10d | 2013-09-23 A | 2013-10-03 A | 60 | 100% |  |  |  |  |
| 62 | 2.1.1.4 | d) Footing and column construction | 9d | 2013-10-04 A | 2013-10-14 A | 61 | 100% |  |  |  |  |
| 63 | 2.1.2 | **3.2 Equipments civil foundation** | 43d | 2013-10-19 | 2013-12-06 |  |  |  | 43.12d |  |  |
| 64 | 2.1.2.1 | a) Dismantling | 15d | 2013-10-19 | 2013-11-05 |  |  |  | 43.12d | 0d | start no earlier than 2013-10-19 |
| 65 | 2.1.2.2 | b) Exacavation | 5d | 2013-11-06 | 2013-11-11 | 64 |  |  | 43.12d | 0d |  |
| 66 | 2.1.2.3 | c) PCC | 5d | 2013-11-12 | 2013-11-16 | 65 |  |  | 43.12d | 0d |  |
| 67 | 2.1.2.4 | d) Civil bed construction | 5d | 2013-11-18 | 2013-11-22 | 66 |  |  | 43.12d | 0d |  |
| 68 | 2.1.2.5 | e) Soil consolidation | 3d | 2013-11-23 | 2013-11-26 | 67 |  |  | 43.12d | 0d |  |
| 69 | 2.1.2.6 | f) PCC and RCC flooring | 5d | 2013-11-27 | 2013-12-01 | 68 |  |  | 43.12d | 0d |  |
| 70 | 2.1.2.7 | g) Plastering of flooring | 5d | 2013-12-02 | 2013-12-06 | 69 |  |  | 43.12d |  |  |
| 71 | 2.1.3 | **3.3 Erection of equipments and Structurals** | 30d | 2013-10-25 | 2013-11-28 |  |  |  | 1d |  |  |
| 72 | 2.1.3.1 | **a) Erection of Structurals** | 23d | 2013-10-25 | 2013-11-20 |  |  |  | 1d |  |  |
| 73 | 2.1.3.1.1 | Column Erection | 9d | 2013-10-25 | 2013-11-04 |  |  |  | 1d | 0d | start no earlier than 2013-10-25 |
| 74 | 2.1.3.1.2 | Tie beam erection - 3.65 m level | 2d | 2013-11-05 | 2013-11-06 | 73 |  |  | 70.12d |  |  |
| 75 | 2.1.3.1.3 | Tie beam erection - 6.4 m level | 2d | 2013-11-05 | 2013-11-06 | 73 |  |  | 70.12d |  |  |
| 76 | 2.1.3.1.4 | Tie beam erection - 9.5 m level | 2d | 2013-11-05 | 2013-11-06 | 73 |  |  | 1d | 0d |  |
| 77 | 2.1.3.1.5 | Tie beam erection - 13 m level | 2d | 2013-11-07 | 2013-11-08 | 76 |  |  | 1d | 0d |  |
| 78 | 2.1.3.1.6 | Cross member erection - 3.65 m | 3d | 2013-11-09 | 2013-11-12 | 77 |  |  | 1d | 0d |  |
| 79 | 2.1.3.1.7 | Cross member erection -6.4 m | 3d | 2013-11-13 | 2013-11-15 | 78 |  |  | 62.12d |  |  |
| 80 | 2.1.3.1.8 | Cross member erection - 9.5 | 3d | 2013-11-13 | 2013-11-15 | 78 |  |  | 62.12d |  |  |
| 81 | 2.1.3.1.9 | Cross member erection- 13 m | 3d | 2013-11-13 | 2013-11-15 | 78 |  |  | 1d | 0d |  |
| 82 | 2.1.3.1.10 | staircase erection | 2d | 2013-11-16 | 2013-11-18 | 81 |  |  | 60.12d |  |  |
| 83 | 2.1.3.1.11 | Handrail erection | 4d | 2013-11-16 | 2013-11-20 | 81 |  |  | 58.12d |  |  |

| ID | WBS | Task | Duration | Start | Finish | Predecessors | Total slack | Free slack | Constraint |
| --- | --- | --- | --- | --- | --- | --- | --- | --- | --- |
| 84 | 2.1.3.2 | **b) Positioing of Equipment and pumps** | 11d | 2013-11-16 | 2013-11-28 |  | 1d |  |  |
| 85 | 2.1.3.2.1 | Cl2 / H2 gas mist eliminator | 1d | 2013-11-16 | 2013-11-16 | 81 | 1d | 0d |  |
| 86 | 2.1.3.2.2 | H2 buffer vessel , SP-401 , E-402, T-403, E-501, T-401 | 1d | 2013-11-23 | 2013-11-23 | 67 | 51.12d | 0d |  |
| 87 | 2.1.3.2.3 | T-501, T-502 , T-601 , T-602 , T-402 | 1d | 2013-11-25 | 2013-11-25 | 86 | 51.12d | 0d |  |
| 88 | 2.1.3.2.4 | Heat Exchangers | 1d | 2013-11-26 | 2013-11-26 | 87 | 51.12d | 0d |  |
| 89 | 2.1.3.2.5 | Pumps | 1d | 2013-11-27 | 2013-11-27 | 85, 88 | 51.12d | 0d |  |
| 90 | 2.1.3.2.6 | Blower | 1d | 2013-11-28 | 2013-11-28 | 89 | 51.12d |  |  |
| 91 | 1.4.1.2 | a) Cleaning and Flushing ( Tanks, Equipments and Pipe lines ) | 2d | 2014-01-04 | 2014-01-06 | 92 | 1d |  |  |
| 92 | 2.3 | **3.4 Erection of structurals, pipes, fittings, Electrical Equipments and Instruments** | 75d | 2013-10-10 | 2014-01-03 |  | 1d | 0d |  |
| 93 | 2.3.1 | a) Pipe rack and supports | 25d | 2013-10-10 | 2013-11-07 |  | 9d | 8d | start no earlier than 2013-10-10 |
| 94 | 2.3.2 | b) Process Piping | 42d | 2013-11-18 | 2014-01-03 | 93, 85 | 1d |  |  |
| 95 | 2.3.3 | c) Utility Piping | 42d | 2013-11-18 | 2014-01-03 | 93, 85 | 1d |  | start no earlier than 2013-10-01 |
| 96 | 2.3.4 | d) Erection of cable tray ( Electrical and Instrument ) | 12d | 2013-11-15 | 2013-11-28 |  | 33d |  | finish no earlier than 2013-11-28 |
| 97 | 2.3.5 | e) Laying of Electrical cables and Instrument cables | 41d | 2013-11-04 | 2013-12-19 |  | 14d |  | finish no earlier than 2013-12-19 |
| 98 | 2.3.6 | f) Erection of instruments | 45d | 2013-11-09 | 2013-12-30 |  | 5d |  | start no earlier than 2013-11-09 |
| 99 | 2.3.7 | **Erection of MCC and Motors** | 45d | 2013-11-11 | 2013-12-31 |  | 4d |  |  |
| 100 | 2.3.7.1 | MCC-6 | 13d | 2013-11-11 | 2013-11-25 |  | 36d |  | start no earlier than 2013-11-11 |
| 101 | 2.3.7.2 | MCC-3 | 32d | 2013-11-26 | 2013-12-31 |  | 4d |  | finish no earlier than 2013-12-31 |
| 102 | 2.3.7.3 | MCC-3A | 31d | 2013-11-12 | 2013-12-16 |  | 17d |  | finish no earlier than 2013-12-16 |
| 103 | 2.3.8 | h) Installation of Light fittings with LDB | 20d | 2013-12-02 | 2013-12-24 |  | 10d |  | finish no earlier than 2013-12-24 |
