# 11-Instrumentation

Schedule from MS Project, 2013-10-29 to 2014-01-04.

## Calendars

- CAL Org Calendar: Mon-Sat 08:00-12:00, 13:00-17:00; Sun off. Exceptions (off unless hours are given): 2013-11-02 (Diwali), 2013-12-25 (Christmas).

## Resources

| Resource |
| --- |
| CON.IE Contractor |
| EMP.CAL Elec |
| SUP.Yokogawa |
| EMP.Finance |
| EMP.CAL Inst |

## Schedule

| ID | WBS | Task | Duration | Start | Finish | Predecessors | Total slack | Free slack | Constraint | Resources | Work |
| --- | --- | --- | --- | --- | --- | --- | --- | --- | --- | --- | --- |
| 1 | 1 | **11-Instrumentation** | 57d | 2013-10-29 | 2014-01-04 |  | 0d |  |  |  | 696h |
| 2 | 1.1 | **DCS** | 57d | 2013-10-29 | 2014-01-04 |  | 0d |  |  |  | 144h |
| 3 | 1.1.1 | Positioning of DCS Panels in room | 3d | 2013-10-29 | 2013-10-31 |  | 54d |  |  | CON.IE Contractor | 24h |
| 4 | 1.1.2 | Moving DCS consoles to CR & removing existing consoles | 1d | 2013-11-15 | 2013-11-15 |  | 42d |  | start no earlier than 2013-11-15 | EMP.CAL Inst | 8h |
| 5 | 1.1.3 | Power up of Existing DCS Consoles | 1d | 2013-11-16 | 2013-11-16 |  | 41d |  | start no earlier than 2013-11-16 | EMP.CAL Inst; CON.IE Contractor | 16h |
| 6 | 1.1.4 | Power up of new DCS work stations | 2d | 2013-11-20 | 2013-11-21 |  | 35d | 0d | start no earlier than 2013-11-20 | EMP.CAL Elec; EMP.CAL Inst | 32h |
| 7 | 1.1.5 | Power up of new DCS panels | 2d | 2013-11-22 | 2013-11-23 | 6 | 35d |  |  | EMP.CAL Elec; EMP.CAL Inst | 32h |
| 8 | 1.1.6 | Commissioning of New DCS | 2d | 2014-01-03 | 2014-01-04 |  | 0d |  | start no earlier than 2014-01-03 | EMP.CAL Inst; SUP.Yokogawa | 32h |
| 9 | 1.2 | **2.Instruments Cabling & Termination- Main cable** | 47d | 2013-10-31 | 2013-12-26 |  | 8d |  |  |  | 552h |
| 10 | 1.2.1 | Mobillisation of site by Erection Contractor | 1d | 2013-11-08 | 2013-11-08 |  | 33d | 0d | start no earlier than 2013-11-08 | CON.IE Contractor | 8h |
| 11 | 1.2.2 | Fabrication of tray support for main cables | 5d | 2013-11-09 | 2013-11-14 | 10 | 33d | 0d |  | CON.IE Contractor | 40h |
| 12 | 1.2.3 | Erection of Main cable trays | 10d | 2013-11-15 | 2013-11-26 | 11 | 33d |  |  | CON.IE Contractor | 80h |
| 13 | 1.2.4 | Fabrication and Erection of JB support | 5d | 2013-11-20 | 2013-11-25 |  | 34d |  | start no earlier than 2013-11-20 | CON.IE Contractor | 40h |
| 14 | 1.2.5 | Receipt of I & C cables at site | 10d | 2013-10-31 | 2013-11-12 |  | 45d |  | start no earlier than 2013-10-31 | EMP.Finance | 80h |
| 15 | 1.2.6 | Laying & dressing of Main cables from JB to CR | 12d | 2013-11-25 | 2013-12-07 |  | 8d | 0d | start no earlier than 2013-11-25 | CON.IE Contractor | 96h |
| 16 | 1.2.7 | Cable Glanding & Termination of Main cables | 15d | 2013-12-09 | 2013-12-26 | 15 | 8d |  |  | CON.IE Contractor | 120h |
| 17 | 1.2.8 | Loop check from JB end to DCS | 11d | 2013-12-06 | 2013-12-18 |  | 14d |  | start no earlier than 2013-12-06 | CON.IE Contractor | 88h |
| 18 | 1.3 | **3. Field Inst erection** | 44d | 2013-11-09 | 2013-12-31 |  | 4d |  |  |  |  |
| 19 | 1.3.1 | Fabrication of stancheon for remote mounted instruments | 4d | 2013-11-09 | 2013-11-13 |  | 44d |  | start no earlier than 2013-11-09 |  |  |
| 20 | 1.3.2 | Erection of stancheons at required place | 5d | 2013-11-25 | 2013-11-29 |  | 20d | 0d | start no earlier than 2013-11-25 |  |  |
| 21 | 1.3.3 | Branch cable tray fabrication, erection | 10d | 2013-11-30 | 2013-12-11 | 20 | 20d |  |  |  |  |
| 22 | 1.3.4 | Branch cable laying & Termination at JB end | 15d | 2013-12-03 | 2013-12-19 |  | 13d |  | start no earlier than 2013-12-03 |  |  |
| 23 | 1.3.5 | Receipt of all control valves, flowmeters, RTD, TG & PG | 12d | 2013-12-05 | 2013-12-18 |  | 14d |  | start no earlier than 2013-12-05 |  |  |
| 24 | 1.3.6 | Installation of all field Instruments | 12d | 2013-12-16 | 2013-12-30 |  | 5d |  | start no earlier than 2013-12-16 |  |  |
| 25 | 1.3.7 | Glanding &Termination branch cables of all field Instruments at Inst end | 11d | 2013-12-18 | 2013-12-31 |  | 4d |  | start no earlier than 2013-12-18 |  |  |

| ID | WBS | Task | Duration | Start | Finish | Total slack | Constraint |
| --- | --- | --- | --- | --- | --- | --- | --- |
| 26 | 1.4 | **Loop Check & Calibration** | 9d | 2013-12-20 | 2013-12-31 | 4d |  |
| 27 | 1.4.1 | Loop check of all instruments from field Inst end | 9d | 2013-12-20 | 2013-12-31 | 4d | start no earlier than 2013-12-20 |
| 28 | 1.4.2 | Calibration of all field Instruments | 5d | 2013-12-26 | 2013-12-31 | 4d | start no earlier than 2013-12-26 |
| 29 | 1.4.3 | Calibration /Stroke check of all Control valves & On/Off valves from DCS | 5d | 2013-12-26 | 2013-12-31 | 4d | start no earlier than 2013-12-26 |
| 30 | 1.5 | **Pre-commissioning** | 8d | 2013-12-21 | 2013-12-31 | 4d |  |
| 31 | 1.5.1 | Tripchecks, Graphics modification , IEC sequence check etc | 8d | 2013-12-21 | 2013-12-31 | 4d | start no earlier than 2013-12-21 |
