# 14-Commissioning

Schedule from MS Project, 2013-09-05 to 2014-09-11, A marks actual dates.

## Calendars

- Standard: Mon-Sat 08:00-12:00, 13:00-17:00; Sun off.

## Schedule

| ID | WBS | Task | Duration | Start | Finish | Predecessors | Complete | Remaining | Total slack | Free slack | Constraint |
| --- | --- | --- | --- | --- | --- | --- | --- | --- | --- | --- | --- |
| 1 | 1 | **Commissioning** | 244d | 2013-12-02 | 2014-09-11 |  |  |  | 0d |  |  |
| 2 | 1.1 | **Primary-Brine** | 18d | 2014-01-04 | 2014-01-24 |  |  |  | 197d |  |  |
| 3 | 1.1.1 | **6. Pre-commissioning** | 13d | 2014-01-04 | 2014-01-18 |  |  |  | 197d |  |  |
| 4 | 1.3 | 5. Erection of structurals, pipes, fittings, Electrical equipment and Instruments | 86d | 2013-09-23 A | 2013-12-31 |  | 7% | 79.75d | 200d | 3d |  |
| 5 | 1.1.1.2 | Cleaning and Flushing ( Tanks, equipment and Pipe lines ) | 2d | 2014-01-04 | 2014-01-06 | 4 |  |  | 197d | 0d | start no earlier than 2014-01-04 |
| 6 | 1.1.1.3 | Hook up with Existing set up (Process and utilities) | 4d | 2014-01-07 | 2014-01-10 | 5 |  |  | 197d | 0d |  |
| 7 | 1.1.1.4 | Trial run of equipment | 2d | 2014-01-11 | 2014-01-13 | 5, 6 |  |  | 197d | 0d |  |
| 8 | 1.1.1.5 | Brine filling and circulation | 5d | 2014-01-14 | 2014-01-18 | 7 |  |  | 197d | 0d |  |
| 9 | 1.1.2 | 7. Commissioning of plant | 5d | 2014-01-20 | 2014-01-24 | 8 |  |  | 197d |  |  |
| 10 | 1.2 | **Secondary-Briner** | 18d | 2014-08-22 | 2014-09-11 |  |  |  | 0d |  |  |
| 11 | 1.2.1 | **6. Pre-commissioning** | 13d | 2014-08-22 | 2014-09-05 |  |  |  | 0d |  |  |
| 12 | 1.3 | 5. Erection of structurals, pipes, fittings, Electrical equipment and Instruments | 266d | 2013-09-23 A | 2014-08-21 |  | 5% | 251.96d | 0d |  |  |
| 13 | 1.2.1.2 | Cleaning and Flushing ( Tanks, equipment and Pipe lines ) | 2d | 2014-08-22 | 2014-08-23 | 12 |  |  | 0d |  | start no earlier than 2014-01-04 |
| 14 | 1.2.1.3 | Hook up with Existing set up (Process and utilities) | 4d | 2014-08-25 | 2014-08-28 | 13 |  |  | 0d |  |  |
| 15 | 1.2.1.4 | Trial run of equipment | 2d | 2014-08-29 | 2014-08-30 | 13, 14 |  |  | 0d |  |  |
| 16 | 1.2.1.5 | Brine filling and circulation | 5d | 2014-09-01 | 2014-09-05 | 15 |  |  | 0d |  |  |
| 17 | 1.2.2 | 7. Commissioning of plant | 5d | 2014-09-06 | 2014-09-11 | 16 |  |  | 0d |  |  |
| 18 | 1.3 | **Cell-House** | 18d | 2014-05-21 | 2014-06-11 |  |  |  | 79.5d |  |  |
| 19 | 1.3.1 | **7. Pre-commissioning** | 13d | 2014-05-21 | 2014-06-05 |  |  |  | 79.5d |  |  |
| 20 | 1.3 | 5. Erection of structurals, pipes, fittings, Electrical Equipments and Instruments | 195.5d | 2013-09-23 A | 2014-05-21 |  | 9% | 178.79d | 79.5d | 0d |  |
| 21 | 1.3.1.2 | a) Cleaning and Flushing ( Tanks, Equipments and Pipe lines ) | 2d | 2014-05-21 | 2014-05-23 | 20 |  |  | 79.5d | 0d |  |
| 22 | 1.3.1.3 | b) Hook up with Existing set up (Process and utilities) | 4d | 2014-05-23 | 2014-05-28 | 21 |  |  | 79.5d | 0d |  |
| 23 | 1.3.1.4 | c) Trial run of Equipments | 2d | 2014-05-28 | 2014-05-30 | 21, 22 |  |  | 79.5d | 0d |  |
| 24 | 1.3.1.5 | d) Brine filling and circulation | 5d | 2014-05-30 | 2014-06-05 | 23 |  |  | 79.5d | 0d |  |
| 25 | 1.3.2 | 8. Commissioning of plant | 5d | 2014-06-05 | 2014-06-11 | 24 |  |  | 79.5d |  |  |

| ID | WBS | Task | Duration | Start | Finish | Predecessors | Total slack | Free slack |
| --- | --- | --- | --- | --- | --- | --- | --- | --- |
| 26 | 1.4 | **Cl2-H2** | 18d | 2014-01-04 | 2014-01-24 |  | 197d |  |
| 27 | 1.4.1 | **4. Pre-commissioning** | 13d | 2014-01-04 | 2014-01-18 |  | 197d |  |
| 28 | 1.3 | 3.4 Erection of structurals, pipes, fittings, Electrical Equipments and Instruments | 75d | 2013-10-10 | 2014-01-03 |  | 191d | 0d |
| 29 | 1.4.1.2 | a) Cleaning and Flushing ( Tanks, Equipments and Pipe lines ) | 2d | 2014-01-04 | 2014-01-06 | 28 | 197d | 0d |
| 30 | 1.4.1.3 | b) Hook up with Existing set up (Process and utilities) | 4d | 2014-01-07 | 2014-01-10 | 29 | 197d | 0d |
| 31 | 1.4.1.4 | c) Trial run of Equipments | 2d | 2014-01-11 | 2014-01-13 | 30 | 197d | 0d |
| 32 | 1.4.1.5 | d) Brine filling and circulation | 5d | 2014-01-14 | 2014-01-18 | 30, 31 | 197d | 0d |
| 33 | 1.4.2 | 5. Commissioning of plant | 5d | 2014-01-20 | 2014-01-24 | 32 | 197d |  |
| 34 | 1.5 | **Dry Cl2** | 7d | 2014-01-01 | 2014-01-08 |  | 211d |  |
| 35 | 1.5.1 | **5. Precommissioning** | 2d | 2014-01-01 | 2014-01-02 |  | 211d |  |
| 36 | 1.3 | 4. Erection of structurals, pipes, fittings, Electrical Equipments and Instruments | 45d | 2013-11-11 | 2013-12-31 |  | 201d | 0d |
| 37 | 1.5.1.2 | b) Hook up with Existing set up (Process and utilities) | 1d | 2014-01-01 | 2014-01-01 | 36 | 211d | 0d |
| 38 | 1.5.1.3 | c) Trial run of Equipments | 1d | 2014-01-02 | 2014-01-02 | 37 | 211d | 0d |
| 39 | 1.5.2 | 6. Commissioning of plant | 5d | 2014-01-03 | 2014-01-08 | 38 | 211d |  |
| 40 | 1.6 | **Hypo** | 18d | 2013-12-02 | 2013-12-21 |  | 226d |  |
| 41 | 1.6.1 | **5. Precommissioning** | 13d | 2013-12-02 | 2013-12-16 |  | 226d |  |
| 42 | 1.3 | 4. Erection of structurals, pipes, fittings, Electrical Equipments and Instruments | 73d | 2013-09-05 | 2013-11-30 |  | 226d | 0d |
| 43 | 1.6.1.2 | a) Cleaning and Flushing ( Tanks, Equipments and Pipe lines ) | 2d | 2013-12-02 | 2013-12-03 | 42 | 226d | 0d |
| 44 | 1.6.1.3 | b) Hook up with Existing set up (Process and utilities) | 6d | 2013-12-04 | 2013-12-10 | 43 | 226d | 0d |
| 45 | 1.6.1.4 | c) Trial run of Equipments | 5d | 2013-12-11 | 2013-12-16 | 43, 44 | 226d | 0d |
| 46 | 1.6.2 | 6. Commissioning of plant | 5d | 2013-12-17 | 2013-12-21 | 45 | 226d |  |
| 47 | 1.7 | **Utilities** | 13d | 2014-01-03 | 2014-01-17 |  | 203d |  |
| 48 | 1.7.1 | **5. Precommissioning** | 8d | 2014-01-03 | 2014-01-11 |  | 203d |  |
| 49 | 1.3 | 4. Erection of structurals, pipes, fittings, Electrical Equipments and Instruments | 47d | 2013-11-04 | 2014-01-02 |  | 201d | 0d |
| 50 | 1.7.1.2 | a) Cleaning and Flushing ( Tanks, Equipments and Pipe lines ) | 2d | 2014-01-03 | 2014-01-04 | 49 | 203d | 0d |
| 51 | 1.7.1.3 | b) Hook up with Existing set up (Process and utilities) | 4d | 2014-01-06 | 2014-01-09 | 50 | 203d | 0d |
| 52 | 1.7.1.4 | c) Trial run of Equipments | 2d | 2014-01-10 | 2014-01-11 | 50, 51 | 203d | 0d |
| 53 | 1.7.2 | 6. Commissioning of plant | 5d | 2014-01-13 | 2014-01-17 | 52 | 203d |  |
