# EVAPORATION UNIT

Schedule from MS Project, 2012-12-17 to 2014-09-27, costs in रु.

## Calendars

- CAL Calendar: Mon-Sat 08:00-12:00, 13:00-17:00; Sun off.

## Resources

| Resource | Rate | Cost per use |
| --- | --- | --- |
| Bertrams Supply |  | 12354000 |
| KSJ Engg |  | 1400000 |
| Civil Desig |  | 400000 |
| P-1101 A/B |  | 478000 |
| P-1201 A/B |  | 1495194 |
| P-1301 A/B |  | 838377 |
| P-7102 A/B |  | 540000 |
| T-1201 |  | 148258 |
| T-7101 |  | 362978 |
| HE-1511 |  | 638972 |
| HE-1531 |  | 517266 |
| HE-1541 |  | 493521 |
| D-1101 |  | 400000 |
| D-1201 |  | 300000 |
| D-1301 |  | 300000 |
| Nickel Valve |  | 818612 |
| SS Valve |  | 277673 |
| Other Valve |  | 2148575 |
| PS Valve |  | 122534 |
| PC Valve |  | 200000 |
| CS Pipes & fittings |  | 1200000 |
| Ni pipes and fittings |  | 7139032 |
| Valve & Pipe supports |  | 1600000 |
| Waste water pit pump |  | 120000 |
| Gaskets |  | 200000 |
| Fasteners |  | 200000 |
| Strainers |  | 200000 |
| Safety shower |  | 80000 |
| Octobus crane |  | 120000 |
| MCC |  | 600000 |
| PDB & LDB |  | 48000 |
| Cables |  | 400000 |
| Cable tray |  | 160000 |
| LCP - FRP |  | 32000 |
| Earthing |  | 80000 |
| Lightening |  | 60000 |
| Structural |  | 80000 |
| Motors |  | 40000 |
| Light Fittings |  | 320000 |
| Controlvalves |  | 1198075 |
| Pr. Trans. |  | 236500 |
| Temp. Trans. |  | 315400 |
| Flow meters |  | 560550 |
| Sidemounted LT |  | 328623 |
| Rotameter |  | 227127 |
| Pr.switch |  | 60000 |
| Levelswitch |  | 269196 |
| Pr.gauge |  | 40000 |
| Temp.gauge |  | 120000 |
| RTD |  | 80000 |
| Radar LT |  | 1200352 |
| Cable |  | 120000 |
| MS Structurals for building | 13333.3 |  |
| Inspection |  | 1000000 |
| Misc. |  | 3342400 |
| Insulation | 13333.3 |  |
| Painting | 2500 |  |
| Piping. Erection | 5357.14 |  |
| Elect. Erection | 2054.8 |  |
| Inst. Erection | 1103.45 |  |
| Bldg Fdn | 6250 |  |
| Eqpt Fdn | 1136.36 |  |
| z.Bertrams Supply |  |  |
| z.P-1101 A/B |  |  |
| z.P-1201 A/B |  |  |
| z.P-1301 A/B |  |  |
| z.P-7102 A/B |  |  |
| z.T-1201 |  |  |
| z.T-7101 |  |  |
| z.HE-1511 |  |  |
| z.HE-1531 |  |  |
| z.HE-1541 |  |  |
| z.D-1101 |  |  |
| z.D-1201 |  |  |
| z.D-1301 |  |  |
| z.Nickel Valve |  |  |
| z.SS Valve |  |  |
| z.Other Valve |  |  |
| z.PS Valve |  |  |
| z.PC Valve |  |  |
| z.CS Pipes & fittings |  |  |
| z.Ni pipes and fittings |  |  |
| z.Valve & Pipe supports |  |  |
| z.Waste water pit pump |  |  |
| z.Gaskets |  |  |
| z.Fasteners |  |  |
| z.Strainers |  |  |
| z.Safety shower |  |  |
| z.MCC |  |  |
| z.PDB & LDB |  |  |
| z.Cables |  |  |
| z.Cable tray |  |  |
| z.LCP - FRP |  |  |
| z.Earthing |  |  |
| z.Lightening |  |  |
| z.Structural |  |  |
| z.Motors |  |  |
| z.Light Fittings |  |  |
| z.Controlvalves |  |  |
| z.Pr. Trans. |  |  |
| z.Temp. Trans. |  |  |
| z.Flow meters |  |  |
| z.Sidemounted LT |  |  |
| z.Rotameter |  |  |
| z.Pr.switch |  |  |
| z.Levelswitch |  |  |
| z.Pr.gauge |  |  |
| z.Temp.gauge |  |  |
| z.RTD |  |  |
| z.Radar LT |  |  |
| z.Cable |  |  |
| SS Pipes & fittings |  | 1200000 |
| C-7101 |  | 2779693 |
| z.C-7101 |  |  |
| z.SS Pipes & fittings |  |  |
| Eqpt. Erection | 4310.35 |  |

## Schedule

| ID | WBS | Task | Type | Duration | Start | Finish | Predecessors | Baseline start | Baseline finish | Baseline duration | Total slack | Free slack | Resources | Cost | Baseline cost |
| --- | --- | --- | --- | --- | --- | --- | --- | --- | --- | --- | --- | --- | --- | --- | --- |
| 1 | 1 | **Project Management** |  | 557.5d | 2012-12-17 | 2014-09-27 |  | 2012-12-17 | 2014-09-27 | 557.5d | 0d |  |  | 4,342,400 | 4,342,400 |
| 2 | 1.1 | **Project Initiation** |  | 434d | 2012-12-17 | 2014-05-06 |  | 2012-12-17 | 2014-05-06 | 434d | 0d |  |  |  |  |
| 3 | 1.1.1 | Project Zero Date | milestone | 0d | 2012-12-17 | 2012-12-17 |  | 2012-12-17 | 2012-12-17 |  | 0d |  |  |  |  |
| 4 | 1.1.2 | Develop Project Vision & objective |  | 1d | 2014-05-02 | 2014-05-02 | 3FS+430d | 2014-05-02 | 2014-05-02 | 1d | 0.5d | 0d |  |  |  |
| 5 | 1.1.3 | Develop Project Charter |  | 1d | 2014-05-03 | 2014-05-03 | 4 | 2014-05-03 | 2014-05-03 | 1d | 0.5d | 0d |  |  |  |
| 6 | 1.1.4 | Kick-Off Meeting between Bertrams and CAL |  | 2d | 2013-01-16 | 2013-01-17 | 3FS+26d | 2013-01-16 | 2013-01-17 | 2d | 0d |  |  |  |  |
| 7 | 1.1.5 | Identify Stakeholders |  | 1d | 2014-05-05 | 2014-05-05 | 5 | 2014-05-05 | 2014-05-05 | 1d | 0.5d | 0d |  |  |  |
| 8 | 1.1.6 | Internal Project kick-off Meeting |  | 1d | 2014-05-06 | 2014-05-06 | 7 | 2014-05-06 | 2014-05-06 | 1d | 0.5d | 0d |  |  |  |
| 9 | 1.2 | **Project planning** |  | 27d | 2014-05-07 | 2014-06-06 |  | 2014-05-07 | 2014-06-06 | 27d | 96.5d |  |  |  |  |
| 10 | 1.2.1 | Configuration Management Plan |  | 5d | 2014-05-07 | 2014-05-12 | 8 | 2014-05-07 | 2014-05-12 | 5d | 96.5d | 0d |  |  |  |
| 11 | 1.2.2 | Project Schedule |  | 7d | 2014-05-13 | 2014-05-20 | 10 | 2014-05-13 | 2014-05-20 | 7d | 96.5d | 0d |  |  |  |
| 12 | 1.2.3 | Project Cost Estimation |  | 5d | 2014-05-21 | 2014-05-26 | 11 | 2014-05-21 | 2014-05-26 | 5d | 96.5d | 0d |  |  |  |
| 13 | 1.2.4 | Scope management Plan |  | 2d | 2014-05-27 | 2014-05-28 | 12 | 2014-05-27 | 2014-05-28 | 2d | 96.5d | 0d |  |  |  |
| 14 | 1.2.5 | Requirement Management Plan |  | 2d | 2014-05-29 | 2014-05-30 | 13 | 2014-05-29 | 2014-05-30 | 2d | 96.5d | 0d |  |  |  |
| 15 | 1.2.6 | Risk Management Plan |  | 2d | 2014-05-31 | 2014-06-02 | 14 | 2014-05-31 | 2014-06-02 | 2d | 96.5d | 0d |  |  |  |
| 16 | 1.2.7 | Communication management plan |  | 2d | 2014-06-03 | 2014-06-04 | 15 | 2014-06-03 | 2014-06-04 | 2d | 96.5d | 0d |  |  |  |
| 17 | 1.2.8 | Stakeholder Management Plan |  | 2d | 2014-06-05 | 2014-06-06 | 16 | 2014-06-05 | 2014-06-06 | 2d | 96.5d |  |  |  |  |
| 18 | 1.3 | **Statutory Approvals** |  | 60d | 2014-02-21 | 2014-05-01 |  | 2014-02-21 | 2014-05-01 | 60d | 0d |  |  |  |  |
| 19 | 1.3.1 | Approval from IOF |  | 45d | 2014-02-21 | 2014-04-14 | 6FS+342d | 2014-02-21 | 2014-04-14 | 45d | 0d |  |  |  |  |
| 20 | 1.3.2 | Receipt of Approval from IOF | milestone | 0d | 2014-04-14 | 2014-04-14 | 19 | 2014-04-14 | 2014-04-14 | 0d | 0d |  |  |  |  |
| 21 | 1.3.3 | Approval from PPA |  | 15d | 2014-04-15 | 2014-05-01 | 20 | 2014-04-15 | 2014-05-01 | 15d | 0d |  |  |  |  |
| 22 | 1.3.4 | Receipt of Approval from PPA | milestone | 0d | 2014-05-01 | 2014-05-01 | 21 | 2014-05-01 | 2014-05-01 | 0d | 0d |  |  |  |  |
| 23 | 1.4 | **Project Monitoring & Contriol** |  | 540d | 2012-12-17 | 2014-09-06 |  | 2012-12-17 | 2014-09-06 | 540d | 17.5d |  |  | 4,342,400 | 4,342,400 |
| 24 | 1.4.1 | Project Process Audits |  | 540d | 2012-12-17 | 2014-09-06 |  | 2012-12-17 | 2014-09-06 | 540d | 17.5d |  |  |  |  |
| 25 | 1.4.2 | Daily Reporting |  | 540d | 2012-12-17 | 2014-09-06 |  | 2012-12-17 | 2014-09-06 | 540d | 17.5d |  |  |  |  |
| 26 | 1.4.3 | Weekly Reporting |  | 540d | 2012-12-17 | 2014-09-06 |  | 2012-12-17 | 2014-09-06 | 540d | 17.5d |  |  |  |  |
| 27 | 1.4.4 | Monthly Reporting |  | 540d | 2012-12-17 | 2014-09-06 |  | 2012-12-17 | 2014-09-06 | 540d | 17.5d |  |  |  |  |
| 28 | 1.4.5 | Project Work Inspection |  | 540d | 2012-12-17 | 2014-09-06 |  | 2012-12-17 | 2014-09-06 | 540d | 17.5d |  | Inspection; Misc. | 4,342,400 | 4,342,400 |

| ID | WBS | Task | Type | Duration | Start | Finish | Predecessors | Baseline start | Baseline finish | Baseline duration | Total slack | Free slack | Resources | Cost | Baseline cost |
| --- | --- | --- | --- | --- | --- | --- | --- | --- | --- | --- | --- | --- | --- | --- | --- |
| 29 | 1.5 | **Project Closing** |  | 7d | 2014-09-19 | 2014-09-27 |  | 2014-09-19 | 2014-09-27 | 7d | 0d |  |  |  |  |
| 30 | 1.5.1 | Close all procurement contracts |  | 1d | 2014-09-19 | 2014-09-20 | 68 | 2014-09-19 | 2014-09-20 | 1d | 0d |  |  |  |  |
| 31 | 1.5.2 | Take sign-off from Stakeholders |  | 1d | 2014-09-20 | 2014-09-22 | 30 | 2014-09-20 | 2014-09-22 | 1d | 0d |  |  |  |  |
| 32 | 1.5.3 | Conduct Project closing sessions |  | 1d | 2014-09-22 | 2014-09-23 | 31 | 2014-09-22 | 2014-09-23 | 1d | 0d |  |  |  |  |
| 33 | 1.5.4 | Develop and share closure report with all stakeholders |  | 1d | 2014-09-23 | 2014-09-24 | 32 | 2014-09-23 | 2014-09-24 | 1d | 0d |  |  |  |  |
| 34 | 1.5.5 | Share lessons learnt to PMO |  | 1d | 2014-09-24 | 2014-09-25 | 33 | 2014-09-24 | 2014-09-25 | 1d | 0d |  |  |  |  |
| 35 | 1.5.6 | Archive all project documents |  | 1d | 2014-09-25 | 2014-09-26 | 34 | 2014-09-25 | 2014-09-26 | 1d | 0d |  |  |  |  |
| 36 | 1.5.7 | Release project resources |  | 1d | 2014-09-26 | 2014-09-27 | 35 | 2014-09-26 | 2014-09-27 | 1d | 0d |  |  |  |  |
| 37 | 1.5.8 | Close project | milestone | 0d | 2014-09-27 | 2014-09-27 | 36 | 2014-09-27 | 2014-09-27 |  | 0d |  |  |  |  |
| 38 | 2 | **Process** |  | 550.5d | 2012-12-17 | 2014-09-19 |  | 2012-12-17 | 2014-09-19 | 550.5d | 7d |  |  | 63,570,000 | 63,570,000 |
| 39 | 2.1 | **Procurement** |  | 460d | 2012-12-17 | 2014-06-05 |  | 2012-12-17 | 2014-06-05 | 460d | 97.5d |  |  | 63,570,000 | 63,570,000 |
| 40 | 2.1.1 | **Engineering** |  | 15d | 2014-05-20 | 2014-06-05 |  | 2014-05-20 | 2014-06-05 | 15d | 19.5d |  |  | 1,800,000 | 1,800,000 |
| 41 | 2.1.1.1 | Detailed Engineering |  | 15d | 2014-05-20 | 2014-06-05 | 19FS+30d | 2014-05-20 | 2014-06-05 | 15d | 19.5d | 19d | KSJ Engg; Civil Desig | 1,800,000 | 1,800,000 |
| 42 | 2.1.2 | **Equipments (Bertrams Supply)** |  | 300d | 2012-12-17 | 2013-11-30 |  | 2012-12-17 | 2013-11-30 | 300d | 257.5d |  |  | 61,770,000 | 61,770,000 |
| 43 | 2.1.2.1 | Purchase of EV-1101 - SS |  | 300d | 2012-12-17 | 2013-11-30 |  | 2012-12-17 | 2013-11-30 | 300d | 257.5d | 0d | Bertrams Supply; z.Bertrams Supply | 12,354,000 | 12,354,000 |
| 44 | 2.1.2.2 | Receipt of EV-1101 at site | milestone | 0d | 2013-11-30 | 2013-11-30 | 43 | 2013-11-30 | 2013-11-30 | 0d | 257.5d |  |  |  |  |
| 45 | 2.1.2.3 | Purchase of EV-1201 - Ni/SS |  | 300d | 2012-12-17 | 2013-11-30 |  | 2012-12-17 | 2013-11-30 | 300d | 257.5d | 0d | Bertrams Supply; z.Bertrams Supply | 12,354,000 | 12,354,000 |
| 46 | 2.1.2.4 | Receipt of EV-1201 at site | milestone | 0d | 2013-11-30 | 2013-11-30 | 45 | 2013-11-30 | 2013-11-30 | 0d | 257.5d |  |  |  |  |
| 47 | 2.1.2.5 | Purchase of EV-1301 - SS |  | 300d | 2012-12-17 | 2013-11-30 |  | 2012-12-17 | 2013-11-30 | 300d | 257.5d | 0d | Bertrams Supply; z.Bertrams Supply | 12,354,000 | 12,354,000 |
| 48 | 2.1.2.6 | Receipt of EV-1301at site | milestone | 0d | 2013-11-30 | 2013-11-30 | 47 | 2013-11-30 | 2013-11-30 | 0d | 257.5d |  |  |  |  |
| 49 | 2.1.2.7 | Purchase of HE-1521 - Ni/CS |  | 300d | 2012-12-17 | 2013-11-30 |  | 2012-12-17 | 2013-11-30 | 300d | 257.5d | 0d | Bertrams Supply; z.Bertrams Supply | 12,354,000 | 12,354,000 |
| 50 | 2.1.2.8 | Receipt of HE-1521at site | milestone | 0d | 2013-11-30 | 2013-11-30 | 49 | 2013-11-30 | 2013-11-30 | 0d | 257.5d | 0d |  |  |  |
| 51 | 2.1.2.9 | Purchase of HE-1551 - Ni/CS |  | 300d | 2012-12-17 | 2013-11-30 |  | 2012-12-17 | 2013-11-30 | 300d | 257.5d |  | Bertrams Supply; z.Bertrams Supply | 12,354,000 | 12,354,000 |
| 52 | 2.1.2.10 | Receipt of HE-1551 at site | milestone | 0d | 2013-11-30 | 2013-11-30 | 50 | 2013-11-30 | 2013-11-30 | 0d | 257.5d |  |  |  |  |

| ID | WBS | Task | Type | Duration | Start | Finish | Predecessors | Baseline start | Baseline finish | Baseline duration | Total slack | Free slack | Resources | Work | Cost | Baseline cost |
| --- | --- | --- | --- | --- | --- | --- | --- | --- | --- | --- | --- | --- | --- | --- | --- | --- |
| 53 | 2.2 | **Commissioning** |  | 5d | 2014-09-13 | 2014-09-19 |  | 2014-09-13 | 2014-09-19 | 5d | 0d |  |  |  |  |  |
| 54 | 2.2.1 | Unit-1100 Evaporation First Effect |  | 5d | 2014-09-13 | 2014-09-19 | 279, 280, 281, 527 | 2014-09-13 | 2014-09-19 | 5d | 7d | 0d |  |  |  |  |
| 55 | 2.2.2 | Commissioning of Unit-1100 | milestone | 0d | 2014-09-19 | 2014-09-19 | 54 | 2014-09-19 | 2014-09-19 | 0d | 7d |  |  |  |  |  |
| 56 | 2.2.3 | Unit-1200 Evaporation Second Effect |  | 5d | 2014-09-13 | 2014-09-19 | 279, 280, 281, 527 | 2014-09-13 | 2014-09-19 | 5d | 7d | 0d |  |  |  |  |
| 57 | 2.2.4 | Commissioning of Unit-1200 | milestone | 0d | 2014-09-19 | 2014-09-19 | 56 | 2014-09-19 | 2014-09-19 | 0d | 7d |  |  |  |  |  |
| 58 | 2.2.5 | Unit-1300 Evaporation Third Effect |  | 5d | 2014-09-13 | 2014-09-19 | 279, 280, 281, 527 | 2014-09-13 | 2014-09-19 | 5d | 7d | 0d |  |  |  |  |
| 59 | 2.2.6 | Commissioning of Unit-1300 | milestone | 0d | 2014-09-19 | 2014-09-19 | 58 | 2014-09-19 | 2014-09-19 | 0d | 7d |  |  |  |  |  |
| 60 | 2.2.7 | Unit-1500 Heat Exchangers |  | 5d | 2014-09-13 | 2014-09-19 | 279, 280, 281, 527 | 2014-09-13 | 2014-09-19 | 5d | 7d | 0d |  |  |  |  |
| 61 | 2.2.8 | Commissioning of Unit-1500 | milestone | 0d | 2014-09-19 | 2014-09-19 | 60 | 2014-09-19 | 2014-09-19 | 0d | 7d |  |  |  |  |  |
| 62 | 2.2.9 | Unit-7100 Condensation / Vaccum System |  | 5d | 2014-09-13 | 2014-09-19 | 279, 280, 281, 527 | 2014-09-13 | 2014-09-19 | 5d | 7d | 0d |  |  |  |  |
| 63 | 2.2.10 | Commissioning of Unit-7100 | milestone | 0d | 2014-09-19 | 2014-09-19 | 62 | 2014-09-19 | 2014-09-19 | 0d | 7d |  |  |  |  |  |
| 64 | 2.2.11 | Unit-8200 Utilities (Others) |  | 5d | 2014-09-13 | 2014-09-19 | 279, 280, 281, 527 | 2014-09-13 | 2014-09-19 | 5d | 7d | 0d |  |  |  |  |
| 65 | 2.2.12 | Commissioning of Unit-8200 | milestone | 0d | 2014-09-19 | 2014-09-19 | 64 | 2014-09-19 | 2014-09-19 | 0d | 7d |  |  |  |  |  |
| 66 | 2.2.13 | Unit-9100 Utility Station / Safety Devices |  | 5d | 2014-09-13 | 2014-09-19 | 279, 280, 281, 527 | 2014-09-13 | 2014-09-19 | 5d | 0d |  |  |  |  |  |
| 67 | 2.2.14 | Commissioning of Unit-9100 | milestone | 0d | 2014-09-19 | 2014-09-19 | 66 | 2014-09-19 | 2014-09-19 | 0d | 0d |  |  |  |  |  |
| 68 | 2.2.15 | Completion of Commissioning activities | milestone | 0d | 2014-09-19 | 2014-09-19 | 67 | 2014-09-19 | 2014-09-19 | 0d | 0d |  |  |  |  |  |
| 69 | 3 | **Civil** |  | 90d | 2014-05-02 | 2014-08-14 |  | 2014-05-02 | 2014-08-14 | 90d | 2d |  |  | 1408h | 5,200,000.08 | 5,200,000.08 |
| 70 | 3.1 | **Procurement** |  | 8d | 2014-05-02 | 2014-05-10 |  | 2014-05-02 | 2014-05-10 | 8d | 119.5d |  |  |  |  |  |
| 71 | 3.1.1 | **Contract Finalization** |  | 8d | 2014-05-02 | 2014-05-10 |  | 2014-05-02 | 2014-05-10 | 8d | 119.5d |  |  |  |  |  |
| 72 | 3.1.1.1 | Civil - Column Foundation |  | 2d | 2014-05-02 | 2014-05-03 | 22 | 2014-05-02 | 2014-05-03 | 2d | 119.5d | 0d |  |  |  |  |
| 73 | 3.1.1.2 | Civil - Equipment Foundation |  | 2d | 2014-05-05 | 2014-05-06 | 72 | 2014-05-05 | 2014-05-06 | 2d | 119.5d | 0d |  |  |  |  |
| 74 | 3.1.1.3 | Civil - Wet Cooling Tower Foundation |  | 2d | 2014-05-07 | 2014-05-08 | 73 | 2014-05-07 | 2014-05-08 | 2d | 119.5d | 0d |  |  |  |  |
| 75 | 3.1.1.4 | Civil - Electrical related Civil Work |  | 2d | 2014-05-09 | 2014-05-10 | 74 | 2014-05-09 | 2014-05-10 | 2d | 119.5d |  |  |  |  |  |
| 76 | 3.2 | **Execution** |  | 88d | 2014-05-03 | 2014-08-14 |  | 2014-05-03 | 2014-08-14 | 88d | 0d |  | Bldg Fdn; Eqpt Fdn | 1408h | 5,200,000.08 | 5,200,000.08 |
| 77 | 3.2.1 | **Preparatory Works** |  | 6d | 2014-05-03 | 2014-05-10 |  | 2014-05-03 | 2014-05-10 | 6d | 0d |  |  |  |  |  |
| 78 | 3.2.1.1 | Mobilization of Materials and Labour | milestone | 0d | 2014-05-03 | 2014-05-03 | 22FS+2d | 2014-05-03 | 2014-05-03 | 0d | 0d |  |  |  |  |  |
| 79 | 3.2.1.2 | Site Clearing and Removal of Debris |  | 1d | 2014-05-05 | 2014-05-05 | 78 | 2014-05-05 | 2014-05-05 | 1d | 0d |  |  |  |  |  |
| 80 | 3.2.1.3 | Boundary Marking |  | 1d | 2014-05-06 | 2014-05-06 | 79 | 2014-05-06 | 2014-05-06 | 1d | 0d |  |  |  |  |  |
| 81 | 3.2.1.4 | Removal and Stacking of RR Stones |  | 2d | 2014-05-07 | 2014-05-08 | 80 | 2014-05-07 | 2014-05-08 | 2d | 0d |  |  |  |  |  |
| 82 | 3.2.1.5 | Foundation Centre line marking |  | 1d | 2014-05-09 | 2014-05-09 | 81 | 2014-05-09 | 2014-05-09 | 1d | 0d |  |  |  |  |  |
| 83 | 3.2.1.6 | Foundation Pit Marking |  | 1d | 2014-05-10 | 2014-05-10 | 82 | 2014-05-10 | 2014-05-10 | 1d | 0d |  |  |  |  |  |

| ID | WBS | Task | Duration | Start | Finish | Predecessors | Baseline start | Baseline finish | Baseline duration | Total slack | Free slack |
| --- | --- | --- | --- | --- | --- | --- | --- | --- | --- | --- | --- |
| 84 | 3.2.2 | **Excavation** | 4.5d | 2014-05-12 | 2014-05-16 |  | 2014-05-12 | 2014-05-16 | 4.5d | 0d |  |
| 85 | 3.2.2.1 | Excavation of Foundation Pits | 2d | 2014-05-12 | 2014-05-13 | 83 | 2014-05-12 | 2014-05-13 | 2d | 0d |  |
| 86 | 3.2.2.2 | Disposal of Excavated earth | 1d | 2014-05-14 | 2014-05-14 | 85 | 2014-05-14 | 2014-05-14 | 1d | 0d |  |
| 87 | 3.2.2.3 | Consolidation of Subgrade | 1d | 2014-05-15 | 2014-05-15 | 86 | 2014-05-15 | 2014-05-15 | 1d | 0d |  |
| 88 | 3.2.2.4 | Filling of River Sand | 0.5d | 2014-05-16 | 2014-05-16 | 87 | 2014-05-16 | 2014-05-16 | 0.5d | 0d |  |
| 89 | 3.2.3 | **Foundation Works** | 23.5d | 2014-05-07 | 2014-06-03 |  | 2014-05-07 | 2014-06-03 | 23.5d | 1.5d |  |
| 90 | 3.2.3.1 | Plain Cement Concrete Laying | 2d | 2014-05-16 | 2014-05-19 | 88 | 2014-05-16 | 2014-05-19 | 2d | 0d |  |
| 91 | 3.2.3.2 | Centreline Marking of Columns | 1d | 2014-05-19 | 2014-05-20 | 90 | 2014-05-19 | 2014-05-20 | 1d | 0d |  |
| 92 | 3.2.3.3 | Steel mat preparation | 10d | 2014-05-07 | 2014-05-17 | 80 | 2014-05-07 | 2014-05-17 | 10d | 1.5d |  |
| 93 | 3.2.3.4 | Erection of Steel mats and columns | 2d | 2014-05-20 | 2014-05-22 | 91, 92 | 2014-05-20 | 2014-05-22 | 2d | 0d |  |
| 94 | 3.2.3.5 | Side shuttering work | 1d | 2014-05-22 | 2014-05-23 | 93 | 2014-05-22 | 2014-05-23 | 1d | 0d |  |
| 95 | 3.2.3.6 | Mat concreting work | 2d | 2014-05-23 | 2014-05-26 | 94 | 2014-05-23 | 2014-05-26 | 2d | 0d |  |
| 96 | 3.2.3.7 | Curing Work | 7d | 2014-05-26 | 2014-06-03 | 95 | 2014-05-26 | 2014-06-03 | 7d | 100d |  |
| 97 | 3.2.4 | **Pedestal Works** | 15d | 2014-05-26 | 2014-06-12 |  | 2014-05-26 | 2014-06-12 | 15d | 0d |  |
| 98 | 3.2.4.1 | Column shoe marking | 1d | 2014-05-26 | 2014-05-27 | 95 | 2014-05-26 | 2014-05-27 | 1d | 0d |  |
| 99 | 3.2.4.2 | Column shoe laying | 1d | 2014-05-27 | 2014-05-28 | 98 | 2014-05-27 | 2014-05-28 | 1d | 105d |  |
| 100 | 3.2.4.3 | Column rigs fixing | 1d | 2014-05-27 | 2014-05-28 | 95, 98 | 2014-05-27 | 2014-05-28 | 1d | 0d |  |
| 101 | 3.2.4.4 | Shuttering for 1.2M Ht | 1d | 2014-05-28 | 2014-05-29 | 100 | 2014-05-28 | 2014-05-29 | 1d | 0d |  |
| 102 | 3.2.4.5 | Concreting for 1.2M Ht | 1d | 2014-05-29 | 2014-05-30 | 101 | 2014-05-29 | 2014-05-30 | 1d | 0d |  |
| 103 | 3.2.4.6 | Column Curing | 3d | 2014-05-30 | 2014-06-03 | 102 | 2014-05-30 | 2014-06-03 | 3d | 0d |  |
| 104 | 3.2.4.7 | Applying Bentolian Paint (2 Coats) | 1d | 2014-06-03 | 2014-06-04 | 103 | 2014-06-03 | 2014-06-04 | 1d | 99d |  |
| 105 | 3.2.4.8 | Rings tying upto 0M lvl | 1d | 2014-06-03 | 2014-06-04 | 103 | 2014-06-03 | 2014-06-04 | 1d | 79d | 0d |
| 106 | 3.2.4.9 | Shuttering for 2.4M Ht | 1d | 2014-06-04 | 2014-06-05 | 105 | 2014-06-04 | 2014-06-05 | 1d | 79d | 0d |
| 107 | 3.2.4.10 | Concreting for 2.4M Ht | 1d | 2014-06-05 | 2014-06-06 | 102, 106 | 2014-06-05 | 2014-06-06 | 1d | 79d | 0d |
| 108 | 3.2.4.11 | Column Curing | 3d | 2014-06-06 | 2014-06-10 | 107 | 2014-06-06 | 2014-06-10 | 3d | 79d | 0d |
| 109 | 3.2.4.12 | Applying Bentolian Paint upto Plinth Beam | 1d | 2014-06-10 | 2014-06-11 | 108 | 2014-06-10 | 2014-06-11 | 1d | 79d | 0d |
| 110 | 3.2.4.13 | refilling earth and consolidation upto Plinth Beam | 1d | 2014-06-11 | 2014-06-12 | 109 | 2014-06-11 | 2014-06-12 | 1d | 79d | 0d |

| ID | WBS | Task | Type | Duration | Start | Finish | Predecessors | Baseline start | Baseline finish | Baseline duration | Total slack | Free slack |
| --- | --- | --- | --- | --- | --- | --- | --- | --- | --- | --- | --- | --- |
| 111 | 3.2.5 | **Plinth Beam Works** |  | 24d | 2014-05-30 | 2014-06-27 |  | 2014-05-30 | 2014-06-27 | 24d | 79d |  |
| 112 | 3.2.5.1 | Earth excavation for Plinth Beam |  | 0.5d | 2014-06-12 | 2014-06-12 | 110 | 2014-06-12 | 2014-06-12 | 0.5d | 79d | 0d |
| 113 | 3.2.5.2 | Levelling and Earth Ramming |  | 0.5d | 2014-06-13 | 2014-06-13 | 112 | 2014-06-13 | 2014-06-13 | 0.5d | 79d | 0d |
| 114 | 3.2.5.3 | PCC Laying |  | 1d | 2014-06-13 | 2014-06-14 | 113 | 2014-06-13 | 2014-06-14 | 1d | 79d | 0d |
| 115 | 3.2.5.4 | Steel cage and beam marking |  | 1d | 2014-05-30 | 2014-05-31 | 102, 92 | 2014-05-30 | 2014-05-31 | 1d | 91d | 12d |
| 116 | 3.2.5.5 | positioning steel cage for Beam |  | 1d | 2014-06-14 | 2014-06-16 | 114, 115 | 2014-06-14 | 2014-06-16 | 1d | 79d | 0d |
| 117 | 3.2.5.6 | Side shuttering work |  | 1d | 2014-06-16 | 2014-06-17 | 116 | 2014-06-16 | 2014-06-17 | 1d | 79d | 0d |
| 118 | 3.2.5.7 | Concreting for Beams |  | 1d | 2014-06-17 | 2014-06-18 | 117 | 2014-06-17 | 2014-06-18 | 1d | 79d | 0d |
| 119 | 3.2.5.8 | Curing of Beams |  | 7d | 2014-06-18 | 2014-06-26 | 118 | 2014-06-18 | 2014-06-26 | 7d | 79d | 0d |
| 120 | 3.2.5.9 | Applying Bentolian Paint (2 Coats) |  | 1d | 2014-06-26 | 2014-06-27 | 118, 119 | 2014-06-26 | 2014-06-27 | 1d | 79d |  |
| 121 | 3.2.6 | **Foundation for Equipments** |  | 19.5d | 2014-06-24 | 2014-07-16 |  | 2014-06-24 | 2014-07-16 | 19.5d | 19.5d |  |
| 122 | 3.2.6.1 | Marking |  | 1d | 2014-06-24 | 2014-06-25 | 147 | 2014-06-24 | 2014-06-25 | 1d | 19.5d | 0d |
| 123 | 3.2.6.2 | Excavation |  | 1d | 2014-06-25 | 2014-06-26 | 122 | 2014-06-25 | 2014-06-26 | 1d | 19.5d | 0d |
| 124 | 3.2.6.3 | Levelling Work |  | 1d | 2014-06-26 | 2014-06-27 | 123 | 2014-06-26 | 2014-06-27 | 1d | 19.5d | 0d |
| 125 | 3.2.6.4 | Soling Work |  | 2d | 2014-06-27 | 2014-06-30 | 124 | 2014-06-27 | 2014-06-30 | 2d | 19.5d | 0d |
| 126 | 3.2.6.5 | PCC Laying |  | 1d | 2014-06-30 | 2014-07-01 | 125 | 2014-06-30 | 2014-07-01 | 1d | 19.5d | 0d |
| 127 | 3.2.6.6 | Steel cage making |  | 0.5d | 2014-07-01 | 2014-07-01 | 126 | 2014-07-01 | 2014-07-01 | 0.5d | 72.5d | 0d |
| 128 | 3.2.6.7 | Side shuttering work |  | 1d | 2014-07-02 | 2014-07-02 | 127 | 2014-07-02 | 2014-07-02 | 1d | 72.5d | 0d |
| 129 | 3.2.6.8 | Mat Concreting work |  | 1d | 2014-07-03 | 2014-07-03 | 128 | 2014-07-03 | 2014-07-03 | 1d | 72.5d | 0d |
| 130 | 3.2.6.9 | Pedestal marking works |  | 1d | 2014-07-04 | 2014-07-04 | 129 | 2014-07-04 | 2014-07-04 | 1d | 72.5d |  |
| 131 | 3.2.6.10 | Steel cage making |  | 1d | 2014-07-01 | 2014-07-02 | 126 | 2014-07-01 | 2014-07-02 | 1d | 19.5d | 0d |
| 132 | 3.2.6.11 | Side shuttering work |  | 1d | 2014-07-02 | 2014-07-03 | 131 | 2014-07-02 | 2014-07-03 | 1d | 19.5d | 0d |
| 133 | 3.2.6.12 | Concreting Work |  | 1d | 2014-07-03 | 2014-07-04 | 132 | 2014-07-03 | 2014-07-04 | 1d | 19.5d | 0d |
| 134 | 3.2.6.13 | Curing of Foundation |  | 7d | 2014-07-04 | 2014-07-12 | 133 | 2014-07-04 | 2014-07-12 | 7d | 19.5d | 0d |
| 135 | 3.2.6.14 | Applying Bentolian Paint |  | 1d | 2014-07-12 | 2014-07-14 | 134 | 2014-07-12 | 2014-07-14 | 1d | 19.5d | 0d |
| 136 | 3.2.6.15 | Refilling Work |  | 0.5d | 2014-07-14 | 2014-07-14 | 135 | 2014-07-14 | 2014-07-14 | 0.5d | 19.5d | 0d |
| 137 | 3.2.6.16 | Consolidation work |  | 2d | 2014-07-15 | 2014-07-16 | 136 | 2014-07-15 | 2014-07-16 | 2d | 19.5d | 0d |
| 138 | 3.2.6.17 | Completion of Equipment foundation | milestone | 0d | 2014-07-16 | 2014-07-16 | 137 | 2014-07-16 | 2014-07-16 | 0d | 19.5d | 0d |

| ID | WBS | Task | Type | Duration | Start | Finish | Predecessors | Baseline start | Baseline finish | Baseline duration | Total slack | Free slack |
| --- | --- | --- | --- | --- | --- | --- | --- | --- | --- | --- | --- | --- |
| 139 | 3.2.7 | **Foundation for Structures** |  | 22d | 2014-06-03 | 2014-06-28 |  | 2014-06-03 | 2014-06-28 | 22d | 0d |  |
| 140 | 3.2.7.1 | Supply of Foundation Bolts and Base Plates |  | 1d | 2014-06-03 | 2014-06-04 | 103 | 2014-06-03 | 2014-06-04 | 1d | 0d |  |
| 141 | 3.2.7.2 | Fixing and positioning of Foundation Bolts |  | 2d | 2014-06-04 | 2014-06-06 | 140 | 2014-06-04 | 2014-06-06 | 2d | 0d |  |
| 142 | 3.2.7.3 | Side shuttering work |  | 1d | 2014-06-06 | 2014-06-07 | 141 | 2014-06-06 | 2014-06-07 | 1d | 0d |  |
| 143 | 3.2.7.4 | Concreting Work |  | 1d | 2014-06-07 | 2014-06-09 | 142 | 2014-06-07 | 2014-06-09 | 1d | 0d |  |
| 144 | 3.2.7.5 | Removal of PVC Pipe Sleeves |  | 1d | 2014-06-09 | 2014-06-10 | 143 | 2014-06-09 | 2014-06-10 | 1d | 0d |  |
| 145 | 3.2.7.6 | Curing |  | 3d | 2014-06-10 | 2014-06-13 | 144 | 2014-06-10 | 2014-06-13 | 3d | 0d |  |
| 146 | 3.2.7.7 | De-shuttering for the Plinth Beam |  | 1d | 2014-06-13 | 2014-06-14 | 145 | 2014-06-13 | 2014-06-14 | 1d | 90d |  |
| 147 | 3.2.7.8 | Grouting of Foundation Bolts |  | 1d | 2014-06-23 | 2014-06-24 | 236 | 2014-06-23 | 2014-06-24 | 1d | 19.5d | 0d |
| 148 | 3.2.7.9 | Column Shoe marking |  | 1d | 2014-06-24 | 2014-06-25 | 147 | 2014-06-24 | 2014-06-25 | 1d | 29d | 0d |
| 149 | 3.2.7.10 | Column shoe laying |  | 1d | 2014-06-25 | 2014-06-26 | 148 | 2014-06-25 | 2014-06-26 | 1d | 29d | 0d |
| 150 | 3.2.7.11 | Side shuttering work |  | 1d | 2014-06-26 | 2014-06-27 | 149 | 2014-06-26 | 2014-06-27 | 1d | 29d | 0d |
| 151 | 3.2.7.12 | Column Concreting upto +300 mm |  | 1d | 2014-06-27 | 2014-06-28 | 150 | 2014-06-27 | 2014-06-28 | 1d | 29d | 0d |
| 152 | 3.2.7.13 | Completion of Structure foundation | milestone | 0d | 2014-06-28 | 2014-06-28 | 151 | 2014-06-28 | 2014-06-28 | 0d | 29d | 0d |
| 153 | 3.2.8 | **Dyke WallBuilding** |  | 14d | 2014-06-28 | 2014-07-15 |  | 2014-06-28 | 2014-07-15 | 14d | 29d |  |
| 154 | 3.2.8.1 | Earth refilling |  | 2d | 2014-06-28 | 2014-07-01 | 152 | 2014-06-28 | 2014-07-01 | 2d | 29d | 0d |
| 155 | 3.2.8.2 | Consolidating |  | 2d | 2014-07-01 | 2014-07-03 | 154 | 2014-07-01 | 2014-07-03 | 2d | 29d | 0d |
| 156 | 3.2.8.3 | Red Gravel filling |  | 1d | 2014-07-03 | 2014-07-04 | 155 | 2014-07-03 | 2014-07-04 | 1d | 29d | 0d |
| 157 | 3.2.8.4 | Consolidating |  | 1d | 2014-07-04 | 2014-07-05 | 156 | 2014-07-04 | 2014-07-05 | 1d | 29d | 0d |
| 158 | 3.2.8.5 | End wall marking |  | 1d | 2014-07-05 | 2014-07-07 | 157 | 2014-07-05 | 2014-07-07 | 1d | 29d | 0d |
| 159 | 3.2.8.6 | PCC Laying |  | 1d | 2014-07-07 | 2014-07-08 | 158 | 2014-07-07 | 2014-07-08 | 1d | 29d | 0d |
| 160 | 3.2.8.7 | Side Brick wall upto FFL |  | 4d | 2014-07-08 | 2014-07-12 | 159 | 2014-07-08 | 2014-07-12 | 4d | 29d | 0d |
| 161 | 3.2.8.8 | Earth / Crusheer powder / Riversand Filling |  | 1d | 2014-07-12 | 2014-07-14 | 160 | 2014-07-12 | 2014-07-14 | 1d | 29d | 0d |
| 162 | 3.2.8.9 | Consolidating |  | 1d | 2014-07-14 | 2014-07-15 | 161 | 2014-07-14 | 2014-07-15 | 1d | 29d | 0d |

| ID | WBS | Task | Duration | Start | Finish | Predecessors | Baseline start | Baseline finish | Baseline duration | Total slack | Free slack | Work | Cost | Baseline cost |
| --- | --- | --- | --- | --- | --- | --- | --- | --- | --- | --- | --- | --- | --- | --- |
| 163 | 3.2.9 | **Trench Works** | 9d | 2014-07-15 | 2014-07-25 |  | 2014-07-15 | 2014-07-25 | 9d | 29d |  |  |  |  |
| 164 | 3.2.9.1 | Marking of Trenches and Gutters | 1d | 2014-07-15 | 2014-07-16 | 162 | 2014-07-15 | 2014-07-16 | 1d | 29d | 0d |  |  |  |
| 165 | 3.2.9.2 | Soling Work | 1d | 2014-07-16 | 2014-07-17 | 164 | 2014-07-16 | 2014-07-17 | 1d | 29d | 0d |  |  |  |
| 166 | 3.2.9.3 | PCC Laying | 1d | 2014-07-17 | 2014-07-18 | 165 | 2014-07-17 | 2014-07-18 | 1d | 29d | 0d |  |  |  |
| 167 | 3.2.9.4 | HDPE Sheet Laying | 1d | 2014-07-18 | 2014-07-19 | 166 | 2014-07-18 | 2014-07-19 | 1d | 29d | 0d |  |  |  |
| 168 | 3.2.9.5 | Steel Mat making and Side Wall | 1d | 2014-07-19 | 2014-07-21 | 167 | 2014-07-19 | 2014-07-21 | 1d | 29d | 0d |  |  |  |
| 169 | 3.2.9.6 | Mat Concreting work | 1d | 2014-07-21 | 2014-07-22 | 168 | 2014-07-21 | 2014-07-22 | 1d | 29d | 0d |  |  |  |
| 170 | 3.2.9.7 | Side shuttering work | 1d | 2014-07-22 | 2014-07-23 | 169 | 2014-07-22 | 2014-07-23 | 1d | 29d | 0d |  |  |  |
| 171 | 3.2.9.8 | Concreting for Trench Sides | 2d | 2014-07-23 | 2014-07-25 | 170 | 2014-07-23 | 2014-07-25 | 2d | 29d | 0d |  |  |  |
| 172 | 3.2.10 | **Flooring Work** | 8d | 2014-07-25 | 2014-08-04 |  | 2014-07-25 | 2014-08-04 | 8d | 29d |  |  |  |  |
| 173 | 3.2.10.1 | PCC Laying | 2d | 2014-07-25 | 2014-07-28 | 171 | 2014-07-25 | 2014-07-28 | 2d | 29d | 0d |  |  |  |
| 174 | 3.2.10.2 | HDPE Sheet Laying | 1d | 2014-07-28 | 2014-07-29 | 173 | 2014-07-28 | 2014-07-29 | 1d | 29d | 0d |  |  |  |
| 175 | 3.2.10.3 | Steel Mat laying | 1d | 2014-07-29 | 2014-07-30 | 174 | 2014-07-29 | 2014-07-30 | 1d | 29d | 0d |  |  |  |
| 176 | 3.2.10.4 | Concreting the Floor | 2d | 2014-07-30 | 2014-08-01 | 175 | 2014-07-30 | 2014-08-01 | 2d | 29d | 0d |  |  |  |
| 177 | 3.2.10.5 | Grano-flooring at the Top | 2d | 2014-08-01 | 2014-08-04 | 176 | 2014-08-01 | 2014-08-04 | 2d | 29d | 0d |  |  |  |
| 178 | 3.2.11 | **Civil Work related to Electrical Items** | 28.5d | 2014-07-12 | 2014-08-14 |  | 2014-07-12 | 2014-08-14 | 28.5d | 37.5d |  |  |  |  |
| 179 | 3.2.11.1 | Excavation | 7d | 2014-07-12 | 2014-07-21 | 160 | 2014-07-12 | 2014-07-21 | 7d | 46d | 14.5d |  |  |  |
| 180 | 3.2.11.2 | Earth pit Brick wall Construction | 4d | 2014-08-11 | 2014-08-14 | 317 | 2014-08-11 | 2014-08-14 | 4d | 37.5d |  |  |  |  |
| 181 | 3.2.11.3 | Trench work | 1d | 2014-07-25 | 2014-07-26 | 171 | 2014-07-25 | 2014-07-26 | 1d | 50d | 18.5d |  |  |  |
| 182 | 4 | **Mechanical** | 110.5d | 2014-05-07 | 2014-09-12 |  | 2014-05-07 | 2014-09-12 | 110.5d | 0.5d |  | 1456h | 39,318,685.3 | 39,318,685.3 |
| 183 | 4.1 | **Procurement** | 30d | 2014-05-07 | 2014-06-10 |  | 2014-05-07 | 2014-06-10 | 30d | 0.5d |  |  | 24,918,685 | 24,918,685 |
| 184 | 4.1.1 | **Contractor Finalization** | 2d | 2014-05-07 | 2014-05-08 |  | 2014-05-07 | 2014-05-08 | 2d | 0.5d |  |  |  |  |
| 185 | 4.1.1.1 | Structural Fabrication and Erection Contractor | 2d | 2014-05-07 | 2014-05-08 | 8, 41FS-45d | 2014-05-07 | 2014-05-08 | 2d | 0.5d | 0d |  |  |  |
| 186 | 4.1.1.2 | Equipment Erection Contrator | 2d | 2014-05-07 | 2014-05-08 | 8, 41FS-45d | 2014-05-07 | 2014-05-08 | 2d | 121.5d |  |  |  |  |
| 187 | 4.1.1.3 | Piping Erection Contractor - CS | 2d | 2014-05-07 | 2014-05-08 | 8, 41FS-45d | 2014-05-07 | 2014-05-08 | 2d | 79.5d | 73.5d |  |  |  |
| 188 | 4.1.1.4 | Piping Erection Contractor - SS | 2d | 2014-05-07 | 2014-05-08 | 8, 41FS-45d | 2014-05-07 | 2014-05-08 | 2d | 121.5d |  |  |  |  |
| 189 | 4.1.1.5 | Piping Erection Contractor - GI | 2d | 2014-05-07 | 2014-05-08 | 8, 41FS-45d | 2014-05-07 | 2014-05-08 | 2d | 121.5d |  |  |  |  |
| 190 | 4.1.1.6 | Piping Erection Contractor - Ni | 2d | 2014-05-07 | 2014-05-08 | 8, 41FS-45d | 2014-05-07 | 2014-05-08 | 2d | 121.5d |  |  |  |  |
| 191 | 4.1.1.7 | Piping Erection Contractor - Non-metallic | 2d | 2014-05-07 | 2014-05-08 | 8, 41FS-45d | 2014-05-07 | 2014-05-08 | 2d | 121.5d |  |  |  |  |

| ID | WBS | Task | Duration | Start | Finish | Predecessors | Baseline start | Baseline finish | Baseline duration | Total slack | Resources | Cost | Baseline cost |
| --- | --- | --- | --- | --- | --- | --- | --- | --- | --- | --- | --- | --- | --- |
| 192 | 4.1.2 | **Equipment Procurement (CAL Supply)** | 30d | 2014-05-07 | 2014-06-10 |  | 2014-05-07 | 2014-06-10 | 30d | 93.5d |  | 9,292,259 | 9,292,259 |
| 193 | 4.1.2.1 | Purchase of D-1101 | 30d | 2014-05-07 | 2014-06-10 | 41FS-45d, 8 | 2014-05-07 | 2014-06-10 | 30d | 93.5d | D-1101; z.D-1101 | 400,000 | 400,000 |
| 194 | 4.1.2.2 | Purchase of P-1101 A/B | 15d | 2014-05-07 | 2014-05-23 | 41FS-45d, 8 | 2014-05-07 | 2014-05-23 | 15d | 108.5d | P-1101 A/B; z.P-1101 A/B | 478,000 | 478,000 |
| 195 | 4.1.2.3 | Purchase of D-1201 | 30d | 2014-05-07 | 2014-06-10 | 41FS-45d, 8 | 2014-05-07 | 2014-06-10 | 30d | 93.5d | D-1201; z.D-1201 | 300,000 | 300,000 |
| 196 | 4.1.2.4 | Purchase of P-1201 A/B | 15d | 2014-05-07 | 2014-05-23 | 41FS-45d, 8 | 2014-05-07 | 2014-05-23 | 15d | 108.5d | P-1201 A/B; z.P-1201 A/B | 1,495,194 | 1,495,194 |
| 197 | 4.1.2.5 | Purchase of T-1201 | 30d | 2014-05-07 | 2014-06-10 | 41FS-45d, 8 | 2014-05-07 | 2014-06-10 | 30d | 93.5d | T-1201; z.T-1201 | 148,258 | 148,258 |
| 198 | 4.1.2.6 | Purchase of D-1301 | 30d | 2014-05-07 | 2014-06-10 | 41FS-45d, 8 | 2014-05-07 | 2014-06-10 | 30d | 93.5d | D-1301; z.D-1301 | 300,000 | 300,000 |
| 199 | 4.1.2.7 | Purchase of P-1301 A/B | 15d | 2014-05-07 | 2014-05-23 | 41FS-45d, 8 | 2014-05-07 | 2014-05-23 | 15d | 108.5d | P-1301 A/B; z.P-1301 A/B | 838,377 | 838,377 |
| 200 | 4.1.2.8 | Purchase of HE-1511 | 30d | 2014-05-07 | 2014-06-10 | 41FS-45d, 8 | 2014-05-07 | 2014-06-10 | 30d | 93.5d | HE-1511; z.HE-1511 | 638,972 | 638,972 |
| 201 | 4.1.2.9 | Purchase of HE-1531 | 30d | 2014-05-07 | 2014-06-10 | 41FS-45d, 8 | 2014-05-07 | 2014-06-10 | 30d | 93.5d | HE-1531; z.HE-1531 | 517,266 | 517,266 |
| 202 | 4.1.2.10 | Purchase of HE-1541 | 30d | 2014-05-07 | 2014-06-10 | 41FS-45d, 8 | 2014-05-07 | 2014-06-10 | 30d | 93.5d | HE-1541; z.HE-1541 | 493,521 | 493,521 |
| 203 | 4.1.2.11 | Purchase of T-7101 | 30d | 2014-05-07 | 2014-06-10 | 41FS-45d, 8 | 2014-05-07 | 2014-06-10 | 30d | 93.5d | T-7101 | 362,978 | 362,978 |
| 204 | 4.1.2.12 | Purchase of P-7102 A/B | 15d | 2014-05-07 | 2014-05-23 | 41FS-45d, 8 | 2014-05-07 | 2014-05-23 | 15d | 108.5d | P-7102 A/B; z.P-7102 A/B | 540,000 | 540,000 |
| 205 | 4.1.2.13 | Purchase of C-7101 | 15d | 2014-05-07 | 2014-05-23 | 41FS-45d, 8 | 2014-05-07 | 2014-05-23 | 15d | 108.5d | C-7101; z.C-7101 | 2,779,693 | 2,779,693 |
| 206 | 4.1.3 | **Procurement of Pipes & Fittings** | 10d | 2014-05-07 | 2014-05-17 |  | 2014-05-07 | 2014-05-17 | 10d | 113.5d |  | 15,626,426 | 15,626,426 |
| 207 | 4.1.3.1 | Purchase of Pipes & Fittings - CS | 10d | 2014-05-07 | 2014-05-17 | 41FS-45d, 8 | 2014-05-07 | 2014-05-17 | 10d | 113.5d | CS Pipes & fittings; z.CS Pipes & fittings | 1,200,000 | 1,200,000 |
| 208 | 4.1.3.2 | Purchase of Pipes & Fittings - SS | 10d | 2014-05-07 | 2014-05-17 | 41FS-45d, 8 | 2014-05-07 | 2014-05-17 | 10d | 113.5d | SS Pipes & fittings; z.SS Pipes & fittings | 1,200,000 | 1,200,000 |
| 209 | 4.1.3.3 | Purchase of Pipes & Fittings - Ni | 10d | 2014-05-07 | 2014-05-17 | 41FS-45d, 8 | 2014-05-07 | 2014-05-17 | 10d | 113.5d | Ni pipes and fittings; z.Ni pipes and fittings | 7,139,032 | 7,139,032 |
| 210 | 4.1.3.4 | Purchase of Ni Plug Valves - 26 Nos | 10d | 2014-05-07 | 2014-05-17 | 41FS-45d, 8 | 2014-05-07 | 2014-05-17 | 10d | 113.5d | Nickel Valve; z.Nickel Valve | 818,612 | 818,612 |
| 211 | 4.1.3.5 | Purchase of SS Plug Valves - 33 Nos | 10d | 2014-05-07 | 2014-05-17 | 41FS-45d, 8 | 2014-05-07 | 2014-05-17 | 10d | 113.5d | SS Valve; z.SS Valve | 277,673 | 277,673 |
| 212 | 4.1.3.6 | Purchase of Other Type Valves | 10d | 2014-05-07 | 2014-05-17 | 41FS-45d, 8 | 2014-05-07 | 2014-05-17 | 10d | 113.5d | Other Valve; z.Other Valve | 2,148,575 | 2,148,575 |
| 213 | 4.1.3.7 | Purchase of PSV - 4 Nos | 10d | 2014-05-07 | 2014-05-17 | 41FS-45d, 8 | 2014-05-07 | 2014-05-17 | 10d | 113.5d | PS Valve; z.PS Valve | 122,534 | 122,534 |
| 214 | 4.1.3.8 | Purchase of PCV | 10d | 2014-05-07 | 2014-05-17 | 41FS-45d, 8 | 2014-05-07 | 2014-05-17 | 10d | 113.5d | PC Valve; z.PC Valve | 200,000 | 200,000 |
| 215 | 4.1.3.9 | Purchase of Strainers | 10d | 2014-05-07 | 2014-05-17 | 41FS-45d, 8 | 2014-05-07 | 2014-05-17 | 10d | 113.5d | Strainers; z.Strainers | 200,000 | 200,000 |
| 216 | 4.1.3.10 | Purchase of Gaskets | 10d | 2014-05-07 | 2014-05-17 | 41FS-45d, 8 | 2014-05-07 | 2014-05-17 | 10d | 113.5d | Gaskets; z.Gaskets | 200,000 | 200,000 |
| 217 | 4.1.3.11 | Purchase of Fasteners | 10d | 2014-05-07 | 2014-05-17 | 41FS-45d, 8 | 2014-05-07 | 2014-05-17 | 10d | 113.5d | Fasteners; z.Fasteners | 200,000 | 200,000 |
| 218 | 4.1.3.12 | Purchase of Waste water pit pump | 10d | 2014-05-07 | 2014-05-17 | 41FS-45d, 8 | 2014-05-07 | 2014-05-17 | 10d | 113.5d | Waste water pit pump; z.Waste water pit pump | 120,000 | 120,000 |
| 219 | 4.1.3.13 | Purchase of Valve & Pipe Supports | 10d | 2014-05-07 | 2014-05-17 | 41FS-45d, 8 | 2014-05-07 | 2014-05-17 | 10d | 113.5d | Valve & Pipe supports; z.Valve & Pipe supports | 1,600,000 | 1,600,000 |
| 220 | 4.1.3.14 | Purchase of Cooling Water Pump - 2 nos. | 10d | 2014-05-07 | 2014-05-17 | 41FS-45d, 8 | 2014-05-07 | 2014-05-17 | 10d | 113.5d |  |  |  |
| 221 | 4.1.3.15 | Purchase of Safety Showers | 10d | 2014-05-07 | 2014-05-17 | 41FS-45d, 8 | 2014-05-07 | 2014-05-17 | 10d | 113.5d | Safety shower; z.Safety shower | 80,000 | 80,000 |
| 222 | 4.1.3.16 | Hiring of Octopus Crane | 10d | 2014-05-07 | 2014-05-17 | 41FS-45d, 8 | 2014-05-07 | 2014-05-17 | 10d | 113.5d | Octobus crane | 120,000 | 120,000 |
| 223 | 4.1.3.17 | Purchase of Paints | 10d | 2014-05-07 | 2014-05-17 | 41FS-45d, 8 | 2014-05-07 | 2014-05-17 | 10d | 113.5d |  |  |  |
| 224 | 4.1.3.18 | Purchase of Anchor Fasteners | 10d | 2014-05-07 | 2014-05-17 | 41FS-45d, 8 | 2014-05-07 | 2014-05-17 | 10d | 113.5d |  |  |  |
| 225 | 4.1.3.19 | Purchase of Insulation (Hot / Cold) | 10d | 2014-05-07 | 2014-05-17 | 41FS-45d, 8 | 2014-05-07 | 2014-05-17 | 10d | 113.5d |  |  |  |
| 226 | 4.1.3.20 | Purchase of Grease | 10d | 2014-05-07 | 2014-05-17 | 41FS-45d, 8 | 2014-05-07 | 2014-05-17 | 10d | 113.5d |  |  |  |
| 227 | 4.1.3.21 | Purchase of Foundation Bolts | 10d | 2014-05-07 | 2014-05-17 | 41FS-45d, 8 | 2014-05-07 | 2014-05-17 | 10d | 113.5d |  |  |  |

| ID | WBS | Task | Type | Duration | Start | Finish | Predecessors | Baseline start | Baseline finish | Baseline duration | Total slack | Free slack | Resources | Work | Cost | Baseline cost |
| --- | --- | --- | --- | --- | --- | --- | --- | --- | --- | --- | --- | --- | --- | --- | --- | --- |
| 228 | 4.2 | **Execution** |  | 108.5d | 2014-05-09 | 2014-09-12 |  | 2014-05-09 | 2014-09-12 | 108.5d | 0.5d |  |  | 1456h | 14,400,000.29 | 14,400,000.29 |
| 229 | 4.2.1 | **Structural Fabrication & Erection** |  | 97.5d | 2014-05-09 | 2014-08-30 |  | 2014-05-09 | 2014-08-30 | 97.5d | 0.5d |  | MS Structurals for building | 780h | 10,400,000.33 | 10,400,000.33 |
| 230 | 4.2.1.1 | Pre-Fabrication of Structures (Vendor's Place) |  | 30d | 2014-05-09 | 2014-06-12 | 185, 19 | 2014-05-09 | 2014-06-12 | 30d | 0.5d | 0d |  |  |  |  |
| 231 | 4.2.1.2 | Receipt of Pre-fabricated Structures |  | 20d | 2014-05-21 | 2014-06-12 | 230FS-20d | 2014-05-21 | 2014-06-12 | 20d | 0.5d | 0d |  |  |  |  |
| 232 | 4.2.1.3 | Mobilization of Erection Team | milestone | 0d | 2014-05-21 | 2014-05-21 | 231FS-20d | 2014-05-21 | 2014-05-21 | 0d | 111.5d |  |  |  |  |  |
| 233 | 4.2.1.4 | Foundation Checks |  | 2d | 2014-06-13 | 2014-06-16 | 231, 145 | 2014-06-13 | 2014-06-16 | 2d | 0d |  |  |  |  |  |
| 234 | 4.2.1.5 | Erection of Columns (1 to 3) |  | 2d | 2014-06-16 | 2014-06-18 | 233 | 2014-06-16 | 2014-06-18 | 2d | 0d |  |  |  |  |  |
| 235 | 4.2.1.6 | Erection of Columns (4 to 6) |  | 2d | 2014-06-18 | 2014-06-20 | 234 | 2014-06-18 | 2014-06-20 | 2d | 0d |  |  |  |  |  |
| 236 | 4.2.1.7 | Erection of Columns (7 to 9) |  | 2d | 2014-06-20 | 2014-06-23 | 235 | 2014-06-20 | 2014-06-23 | 2d | 0d |  |  |  |  |  |
| 237 | 4.2.1.8 | Erection of Columns (9 to 12) |  | 2d | 2014-06-23 | 2014-06-25 | 236 | 2014-06-23 | 2014-06-25 | 2d | 0d |  |  |  |  |  |
| 238 | 4.2.1.9 | Erection of Tie Beams - EL+5.000M Lvl |  | 3d | 2014-06-25 | 2014-06-28 | 237 | 2014-06-25 | 2014-06-28 | 3d | 0d |  |  |  |  |  |
| 239 | 4.2.1.10 | Erection of Tie Beams - EL+7.000M Lvl |  | 3d | 2014-06-28 | 2014-07-02 | 238 | 2014-06-28 | 2014-07-02 | 3d | 0d |  |  |  |  |  |
| 240 | 4.2.1.11 | Erection of Tie Beams - EL+13.500M Lvl |  | 3d | 2014-07-02 | 2014-07-05 | 239 | 2014-07-02 | 2014-07-05 | 3d | 0d |  |  |  |  |  |
| 241 | 4.2.1.12 | Erection of Tie Beams - EL+20.400M Lvl |  | 3d | 2014-07-05 | 2014-07-09 | 240 | 2014-07-05 | 2014-07-09 | 3d | 0d |  |  |  |  |  |
| 242 | 4.2.1.13 | Erection of Floor Beams - EL+5.000M Lvl |  | 5d | 2014-07-09 | 2014-07-15 | 241 | 2014-07-09 | 2014-07-15 | 5d | 0d |  |  |  |  |  |
| 243 | 4.2.1.14 | Erection of Floor Beams - EL+7.000M Lvl |  | 5d | 2014-07-15 | 2014-07-21 | 242 | 2014-07-15 | 2014-07-21 | 5d | 0d |  |  |  |  |  |
| 244 | 4.2.1.15 | Erection of Floor Beams - EL+13.500M Lvl |  | 5d | 2014-07-21 | 2014-07-26 | 243 | 2014-07-21 | 2014-07-26 | 5d | 0d |  |  |  |  |  |
| 245 | 4.2.1.16 | Erection of Floor Beams - EL+20.400M Lvl |  | 5d | 2014-07-26 | 2014-08-01 | 244 | 2014-07-26 | 2014-08-01 | 5d | 6d | 0d |  |  |  |  |
| 246 | 4.2.1.17 | Erection of Chequered Plates - EL+5.000M Lvl |  | 3d | 2014-07-15 | 2014-07-18 | 242 | 2014-07-15 | 2014-07-18 | 3d | 42d | 10.5d |  |  |  |  |
| 247 | 4.2.1.18 | Erection of Chequered Plates - EL+7.000M Lvl |  | 3d | 2014-07-21 | 2014-07-24 | 243 | 2014-07-21 | 2014-07-24 | 3d | 56d |  |  |  |  |  |
| 248 | 4.2.1.19 | Erection of Chequered Plates - EL+13.500M Lvl |  | 3d | 2014-07-26 | 2014-07-30 | 244 | 2014-07-26 | 2014-07-30 | 3d | 51d |  |  |  |  |  |
| 249 | 4.2.1.20 | Erection of Chequered Plates - EL+20.400M Lvl |  | 3d | 2014-08-01 | 2014-08-05 | 245 | 2014-08-01 | 2014-08-05 | 3d | 46d |  |  |  |  |  |
| 250 | 4.2.1.21 | Erection of Bracings - EL+5.000M Lvl |  | 3d | 2014-08-01 | 2014-08-05 | 245 | 2014-08-01 | 2014-08-05 | 3d | 37d | 0d |  |  |  |  |
| 251 | 4.2.1.22 | Erection of Bracings - EL+7.000M Lvl |  | 3d | 2014-08-05 | 2014-08-08 | 250 | 2014-08-05 | 2014-08-08 | 3d | 37d | 0d |  |  |  |  |
| 252 | 4.2.1.23 | Erection of Bracings - EL+13.500M Lvl |  | 3d | 2014-08-08 | 2014-08-12 | 251 | 2014-08-08 | 2014-08-12 | 3d | 37d | 0d |  |  |  |  |
| 253 | 4.2.1.24 | Erection of Bracings - EL+20.400M Lvl |  | 3d | 2014-08-12 | 2014-08-15 | 252 | 2014-08-12 | 2014-08-15 | 3d | 37d |  |  |  |  |  |
| 254 | 4.2.1.25 | Erection of Staircase |  | 15d | 2014-07-26 | 2014-08-13 | 244 | 2014-07-26 | 2014-08-13 | 15d | 0d |  |  |  |  |  |
| 255 | 4.2.1.26 | Erection of Handrails |  | 15d | 2014-08-13 | 2014-08-30 | 254 | 2014-08-13 | 2014-08-30 | 15d | 0d |  |  |  |  |  |
| 256 | 4.2.1.27 | Completion of Structure Erection | milestone | 0d | 2014-08-30 | 2014-08-30 | 255 | 2014-08-30 | 2014-08-30 |  | 0d |  | MS Structurals for building |  |  |  |

| ID | WBS | Task | Type | Duration | Start | Finish | Predecessors | Baseline start | Baseline finish | Baseline duration | Total slack | Free slack | Resources | Work | Cost | Baseline cost |
| --- | --- | --- | --- | --- | --- | --- | --- | --- | --- | --- | --- | --- | --- | --- | --- | --- |
| 257 | 4.2.2 | **Equipment Erection** |  | 14.5d | 2014-07-17 | 2014-08-02 |  | 2014-07-17 | 2014-08-02 | 14.5d | 19.5d |  | Eqpt. Erection | 116h | 500,000.02 | 500,000.02 |
| 258 | 4.2.2.1 | Erection of EV-1101 |  | 1d | 2014-07-26 | 2014-07-28 | 244, 138 | 2014-07-26 | 2014-07-28 | 1d | 26d | 0d |  |  |  |  |
| 259 | 4.2.2.2 | Erection of D-1101 |  | 2d | 2014-07-28 | 2014-07-30 | 258, 138 | 2014-07-28 | 2014-07-30 | 2d | 51d |  |  |  |  |  |
| 260 | 4.2.2.3 | Erection of P-1101 A/B |  | 1d | 2014-07-17 | 2014-07-17 | 138 | 2014-07-17 | 2014-07-17 | 1d | 55.5d | 0d |  |  |  |  |
| 261 | 4.2.2.4 | Erection of EV-1201 |  | 1d | 2014-07-26 | 2014-07-28 | 244, 138 | 2014-07-26 | 2014-07-28 | 1d | 50d | 0d |  |  |  |  |
| 262 | 4.2.2.5 | Erection of D-1201 |  | 2d | 2014-07-28 | 2014-07-30 | 261, 138 | 2014-07-28 | 2014-07-30 | 2d | 50d | 0d |  |  |  |  |
| 263 | 4.2.2.6 | Erection of P-1201 A/B |  | 1d | 2014-07-17 | 2014-07-17 | 233, 138 | 2014-07-17 | 2014-07-17 | 1d | 55.5d | 0d |  |  |  |  |
| 264 | 4.2.2.7 | Erection of T-1201 |  | 1d | 2014-07-30 | 2014-07-31 | 262, 138 | 2014-07-30 | 2014-07-31 | 1d | 50d |  |  |  |  |  |
| 265 | 4.2.2.8 | Erection of EV-1301 |  | 1d | 2014-07-26 | 2014-07-28 | 244, 138 | 2014-07-26 | 2014-07-28 | 1d | 51d | 0d |  |  |  |  |
| 266 | 4.2.2.9 | Erection of D-1301 |  | 2d | 2014-07-28 | 2014-07-30 | 265, 138 | 2014-07-28 | 2014-07-30 | 2d | 51d |  |  |  |  |  |
| 267 | 4.2.2.10 | Erection of P-1301 A/B |  | 1d | 2014-07-17 | 2014-07-17 | 233, 138 | 2014-07-17 | 2014-07-17 | 1d | 55.5d | 0d |  |  |  |  |
| 268 | 4.2.2.11 | Erection of HE-1511 |  | 1d | 2014-07-26 | 2014-07-28 | 244, 138 | 2014-07-26 | 2014-07-28 | 1d | 18d | 5d |  |  |  |  |
| 269 | 4.2.2.12 | Erection of HE-1521 |  | 1d | 2014-07-26 | 2014-07-28 | 244, 138 | 2014-07-26 | 2014-07-28 | 1d | 53d |  |  |  |  |  |
| 270 | 4.2.2.13 | Erection of HE-1531 |  | 1d | 2014-07-26 | 2014-07-28 | 244, 138 | 2014-07-26 | 2014-07-28 | 1d | 53d |  |  |  |  |  |
| 271 | 4.2.2.14 | Erection of HE-1541 |  | 1d | 2014-07-26 | 2014-07-28 | 244, 138 | 2014-07-26 | 2014-07-28 | 1d | 53d |  |  |  |  |  |
| 272 | 4.2.2.15 | Erection of HE-1551 |  | 1d | 2014-07-26 | 2014-07-28 | 244, 138 | 2014-07-26 | 2014-07-28 | 1d | 53d |  |  |  |  |  |
| 273 | 4.2.2.16 | Erection of T-7101 |  | 1d | 2014-07-17 | 2014-07-17 | 233, 138 | 2014-07-17 | 2014-07-17 | 1d | 61.5d |  |  |  |  |  |
| 274 | 4.2.2.17 | Erection of P-7101 A/B |  | 1d | 2014-07-17 | 2014-07-17 | 234, 138 | 2014-07-17 | 2014-07-17 | 1d | 55.5d | 0d |  |  |  |  |
| 275 | 4.2.2.18 | Erection of P-7102 A/B |  | 1d | 2014-07-17 | 2014-07-17 | 234, 138 | 2014-07-17 | 2014-07-17 | 1d | 55.5d | 13.5d |  |  |  |  |
| 276 | 4.2.2.19 | Erection of C-7101 |  | 1d | 2014-08-01 | 2014-08-02 | 138, 245 | 2014-08-01 | 2014-08-02 | 1d | 6d | 0d |  |  |  |  |
| 277 | 4.2.2.20 | Completion of Equipment Erection | milestone | 0d | 2014-08-02 | 2014-08-02 | 276 | 2014-08-02 | 2014-08-02 | 0d | 6d | 0d |  |  |  |  |
| 278 | 4.2.3 | **Piping Erection** |  | 35d | 2014-08-02 | 2014-09-12 |  | 2014-08-02 | 2014-09-12 | 35d | 6d |  | Piping. Erection | 560h | 3,499,999.95 | 3,499,999.95 |
| 279 | 4.2.3.1 | Erection of CS Piping |  | 30d | 2014-08-02 | 2014-09-06 | 187, 277 | 2014-08-02 | 2014-09-06 | 30d | 6d | 0d |  |  |  |  |
| 280 | 4.2.3.2 | Erection of SS Piping |  | 15d | 2014-08-02 | 2014-08-20 | 258, 277 | 2014-08-02 | 2014-08-20 | 15d | 21d |  |  |  |  |  |
| 281 | 4.2.3.3 | Erection of NI Piping |  | 20d | 2014-08-02 | 2014-08-26 | 268, 277 | 2014-08-02 | 2014-08-26 | 20d | 13d | 0d |  |  |  |  |
| 282 | 4.2.3.4 | Erection of Insultions |  | 15d | 2014-08-26 | 2014-09-12 | 281 | 2014-08-26 | 2014-09-12 | 15d | 13d |  | Insulation | 120h | 1,600,000.05 | 1,600,000.05 |
| 283 | 4.2.3.5 | Painting of Piping & Structures |  | 20d | 2014-08-19 | 2014-09-11 | 256FS-10d | 2014-08-19 | 2014-09-11 | 20d | 0d |  | Painting | 160h | 400,000 | 400,000 |
| 284 | 4.2.3.6 | Completion of Piping Erection | milestone | 0d | 2014-09-11 | 2014-09-11 | 283 | 2014-09-11 | 2014-09-11 | 0d | 0d |  |  |  |  |  |

| ID | WBS | Task | Duration | Start | Finish | Predecessors | Baseline start | Baseline finish | Baseline duration | Total slack | Free slack | Resources | Work | Cost | Baseline cost |
| --- | --- | --- | --- | --- | --- | --- | --- | --- | --- | --- | --- | --- | --- | --- | --- |
| 285 | 5 | **Electrical** | 98.5d | 2014-05-07 | 2014-08-29 |  | 2014-05-07 | 2014-08-29 | 98.5d | 25d |  |  | 292h | 2,420,000.14 | 2,420,000.14 |
| 286 | 5.1 | **Procurement** | 84d | 2014-05-07 | 2014-08-12 |  | 2014-05-07 | 2014-08-12 | 84d | 31.5d |  |  |  | 1,820,000 | 1,820,000 |
| 287 | 5.1.1 | **MCC Panels** | 73d | 2014-05-07 | 2014-07-30 |  | 2014-05-07 | 2014-07-30 | 73d | 31.5d |  |  |  | 640,000 | 640,000 |
| 288 | 5.1.1.1 | Preparation of Tech Spec. & BOQ | 1d | 2014-05-07 | 2014-05-07 | 8 | 2014-05-07 | 2014-05-07 | 1d | 31.5d | 0d |  |  |  |  |
| 289 | 5.1.1.2 | Raising Indent | 1d | 2014-05-08 | 2014-05-08 | 288 | 2014-05-08 | 2014-05-08 | 1d | 31.5d | 0d |  |  |  |  |
| 290 | 5.1.1.3 | Floating enquiry and getting offers | 12d | 2014-05-09 | 2014-05-22 | 289 | 2014-05-09 | 2014-05-22 | 12d | 31.5d | 0d |  |  |  |  |
| 291 | 5.1.1.4 | Techno-commercial negotiation | 7d | 2014-05-23 | 2014-05-30 | 290 | 2014-05-23 | 2014-05-30 | 7d | 31.5d | 0d |  |  |  |  |
| 292 | 5.1.1.5 | Management approval & ordering | 3d | 2014-05-31 | 2014-06-03 | 291 | 2014-05-31 | 2014-06-03 | 3d | 31.5d | 0d |  |  |  |  |
| 293 | 5.1.1.6 | Receipt of drawing from supplier & approval | 7d | 2014-06-04 | 2014-06-11 | 292 | 2014-06-04 | 2014-06-11 | 7d | 31.5d | 0d |  |  |  |  |
| 294 | 5.1.1.7 | Delivery of MCC panel | 42d | 2014-06-12 | 2014-07-30 | 293 | 2014-06-12 | 2014-07-30 | 42d | 31.5d | 0d | MCC; Motors; z.Motors; z.MCC |  | 640,000 | 640,000 |
| 295 | 5.1.2 | **LT Cables and Trays** | 61d | 2014-05-07 | 2014-07-16 |  | 2014-05-07 | 2014-07-16 | 61d | 62.5d |  |  |  | 640,000 | 640,000 |
| 296 | 5.1.2.1 | Preparation of Tech Spec. & BOQ | 30d | 2014-05-07 | 2014-06-10 | 8 | 2014-05-07 | 2014-06-10 | 30d | 62.5d | 0d |  |  |  |  |
| 297 | 5.1.2.2 | Raising Indent | 1d | 2014-06-11 | 2014-06-11 | 296 | 2014-06-11 | 2014-06-11 | 1d | 62.5d | 0d |  |  |  |  |
| 298 | 5.1.2.3 | Floating enquiry and getting offers | 12d | 2014-06-12 | 2014-06-25 | 297 | 2014-06-12 | 2014-06-25 | 12d | 62.5d | 0d |  |  |  |  |
| 299 | 5.1.2.4 | Techno-commercial negotiation | 7d | 2014-06-26 | 2014-07-03 | 298 | 2014-06-26 | 2014-07-03 | 7d | 62.5d | 0d |  |  |  |  |
| 300 | 5.1.2.5 | Management approval & ordering | 3d | 2014-07-04 | 2014-07-07 | 299 | 2014-07-04 | 2014-07-07 | 3d | 62.5d | 0d |  |  |  |  |
| 301 | 5.1.2.6 | Receipt of drawing from supplier & approval | 3d | 2014-07-08 | 2014-07-10 | 300 | 2014-07-08 | 2014-07-10 | 3d | 67.5d |  |  |  |  |  |
| 302 | 5.1.2.7 | Delivery of LT Cables and Trays | 8d | 2014-07-08 | 2014-07-16 | 299, 300 | 2014-07-08 | 2014-07-16 | 8d | 62.5d |  | Cables; Cable tray; PDB & LDB; LCP - FRP; z.Cables; z.Cable tray; z.PDB & LDB; z.LCP - FRP |  | 640,000 | 640,000 |
| 303 | 5.1.3 | **Lighting materials** | 84d | 2014-05-07 | 2014-08-12 |  | 2014-05-07 | 2014-08-12 | 84d | 39.5d |  |  |  | 540,000 | 540,000 |
| 304 | 5.1.3.1 | Preparation of Tech Spec. & BOQ | 30d | 2014-05-07 | 2014-06-10 | 8 | 2014-05-07 | 2014-06-10 | 30d | 39.5d | 0d |  |  |  |  |
| 305 | 5.1.3.2 | Raising Indent | 1d | 2014-06-11 | 2014-06-11 | 304 | 2014-06-11 | 2014-06-11 | 1d | 39.5d | 0d |  |  |  |  |
| 306 | 5.1.3.3 | Floating enquiry and getting offers | 12d | 2014-06-12 | 2014-06-25 | 305 | 2014-06-12 | 2014-06-25 | 12d | 39.5d | 0d |  |  |  |  |
| 307 | 5.1.3.4 | Techno-commercial negotiation | 7d | 2014-06-26 | 2014-07-03 | 306 | 2014-06-26 | 2014-07-03 | 7d | 39.5d | 0d |  |  |  |  |
| 308 | 5.1.3.5 | Management approval & ordering | 3d | 2014-07-04 | 2014-07-07 | 307 | 2014-07-04 | 2014-07-07 | 3d | 39.5d | 0d |  |  |  |  |
| 309 | 5.1.3.6 | Receipt of drawing from supplier & approval | 3d | 2014-07-08 | 2014-07-10 | 308 | 2014-07-08 | 2014-07-10 | 3d | 39.5d | 0d |  |  |  |  |
| 310 | 5.1.3.7 | Delivery of Lighting materials | 28d | 2014-07-11 | 2014-08-12 | 308, 309 | 2014-07-11 | 2014-08-12 | 28d | 39.5d |  | Earthing; Lightening; Light Fittings; Structural; z.Earthing; z.Lightening; z.Light Fittings; z.Structural |  | 540,000 | 540,000 |

| ID | WBS | Task | Duration | Start | Finish | Predecessors | Baseline start | Baseline finish | Baseline duration | Total slack | Free slack | Resources | Work | Cost | Baseline cost |
| --- | --- | --- | --- | --- | --- | --- | --- | --- | --- | --- | --- | --- | --- | --- | --- |
| 311 | 5.2 | **Execution** | 36.5d | 2014-07-18 | 2014-08-29 |  | 2014-07-18 | 2014-08-29 | 36.5d | 25d |  | Elect. Erection | 292h | 600,000.14 | 600,000.14 |
| 312 | 5.2.1 | **Erection of MCC Panel** | 6d | 2014-07-31 | 2014-08-06 |  | 2014-07-31 | 2014-08-06 | 6d | 31.5d |  |  |  |  |  |
| 313 | 5.2.1.1 | Base Frame Fabrication for MCC Panel | 2d | 2014-07-31 | 2014-08-01 | 294, 19, 22, 246 | 2014-07-31 | 2014-08-01 | 2d | 31.5d | 0d |  |  |  |  |
| 314 | 5.2.1.2 | Erection of Base Frame | 1d | 2014-08-02 | 2014-08-02 | 313 | 2014-08-02 | 2014-08-02 | 1d | 31.5d | 0d |  |  |  |  |
| 315 | 5.2.1.3 | Erection of MCC Panel | 3d | 2014-08-04 | 2014-08-06 | 314 | 2014-08-04 | 2014-08-06 | 3d | 31.5d | 0d |  |  |  |  |
| 316 | 5.2.2 | **Earth Pit Construction** | 9d | 2014-08-07 | 2014-08-16 |  | 2014-08-07 | 2014-08-16 | 9d | 31.5d |  |  |  |  |  |
| 317 | 5.2.2.1 | Erection of CI pipe with GI Flat | 3d | 2014-08-07 | 2014-08-09 | 179, 315 | 2014-08-07 | 2014-08-09 | 3d | 31.5d | 0d |  |  |  |  |
| 318 | 5.2.2.2 | Filling of Coal and Salt | 1d | 2014-08-11 | 2014-08-11 | 317 | 2014-08-11 | 2014-08-11 | 1d | 31.5d | 0d |  |  |  |  |
| 319 | 5.2.2.3 | Connecting Earthflats to Cable Trays | 5d | 2014-08-12 | 2014-08-16 | 318 | 2014-08-12 | 2014-08-16 | 5d | 31.5d | 0d |  |  |  |  |
| 320 | 5.2.3 | **Cable Tray** | 4d | 2014-08-18 | 2014-08-21 |  | 2014-08-18 | 2014-08-21 | 4d | 31.5d |  |  |  |  |  |
| 321 | 5.2.3.1 | Fabrication of Cable Tray Supports | 2d | 2014-08-18 | 2014-08-19 | 181, 319 | 2014-08-18 | 2014-08-19 | 2d | 31.5d | 0d |  |  |  |  |
| 322 | 5.2.3.2 | Laying of Cable Trays | 1d | 2014-08-20 | 2014-08-20 | 321 | 2014-08-20 | 2014-08-20 | 1d | 31.5d | 0d |  |  |  |  |
| 323 | 5.2.3.3 | laying of Earth flats along with Trays | 1d | 2014-08-21 | 2014-08-21 | 322 | 2014-08-21 | 2014-08-21 | 1d | 31.5d |  |  |  |  |  |
| 324 | 5.2.4 | **Pump Motors** | 20.5d | 2014-07-18 | 2014-08-11 |  | 2014-07-18 | 2014-08-11 | 20.5d | 41d |  |  |  |  |  |
| 325 | 5.2.4.1 | **P-1101 A - Pump for Caustic Lye (36%)** | 19.5d | 2014-07-18 | 2014-08-09 |  | 2014-07-18 | 2014-08-09 | 19.5d | 42d |  |  |  |  |  |
| 326 | 5.2.4.1.1 | Erection of Motor | 1d | 2014-07-18 | 2014-07-18 | 260 | 2014-07-18 | 2014-07-18 | 1d | 55.5d | 13.5d |  |  |  |  |
| 327 | 5.2.4.1.2 | Erection of Push Button Station | 1d | 2014-08-04 | 2014-08-05 | 326, 177 | 2014-08-04 | 2014-08-05 | 1d | 42d | 0d |  |  |  |  |
| 328 | 5.2.4.1.3 | Power Cable Laying | 1d | 2014-08-05 | 2014-08-06 | 327 | 2014-08-05 | 2014-08-06 | 1d | 42d | 0d |  |  |  |  |
| 329 | 5.2.4.1.4 | Control Cable Laying | 1d | 2014-08-06 | 2014-08-07 | 328 | 2014-08-06 | 2014-08-07 | 1d | 42d | 0d |  |  |  |  |
| 330 | 5.2.4.1.5 | Termination of Power & Control Cables | 1d | 2014-08-07 | 2014-08-08 | 329 | 2014-08-07 | 2014-08-08 | 1d | 42d | 0d |  |  |  |  |
| 331 | 5.2.4.1.6 | No Load Trail | 1d | 2014-08-08 | 2014-08-09 | 330 | 2014-08-08 | 2014-08-09 | 1d | 42d |  |  |  |  |  |
| 332 | 5.2.4.2 | **P-1101 B - Pump for Caustic Lye (36%)** | 19.5d | 2014-07-18 | 2014-08-09 |  | 2014-07-18 | 2014-08-09 | 19.5d | 42d |  |  |  |  |  |
| 333 | 5.2.4.2.1 | Erection of Motor | 1d | 2014-07-18 | 2014-07-18 | 260 | 2014-07-18 | 2014-07-18 | 1d | 55.5d | 13.5d |  |  |  |  |
| 334 | 5.2.4.2.2 | Erection of Push Button Station | 1d | 2014-08-04 | 2014-08-05 | 333, 177 | 2014-08-04 | 2014-08-05 | 1d | 42d | 0d |  |  |  |  |
| 335 | 5.2.4.2.3 | Power Cable Laying | 1d | 2014-08-05 | 2014-08-06 | 334 | 2014-08-05 | 2014-08-06 | 1d | 42d | 0d |  |  |  |  |
| 336 | 5.2.4.2.4 | Control Cable Laying | 1d | 2014-08-06 | 2014-08-07 | 335 | 2014-08-06 | 2014-08-07 | 1d | 42d | 0d |  |  |  |  |
| 337 | 5.2.4.2.5 | Termination of Power & Control Cables | 1d | 2014-08-07 | 2014-08-08 | 336 | 2014-08-07 | 2014-08-08 | 1d | 42d | 0d |  |  |  |  |
| 338 | 5.2.4.2.6 | No Load Trail | 1d | 2014-08-08 | 2014-08-09 | 337 | 2014-08-08 | 2014-08-09 | 1d | 42d |  |  |  |  |  |

| ID | WBS | Task | Duration | Start | Finish | Predecessors | Baseline start | Baseline finish | Baseline duration | Total slack | Free slack |
| --- | --- | --- | --- | --- | --- | --- | --- | --- | --- | --- | --- |
| 339 | 5.2.4.3 | **P-1201 A - Pump for Caustic Lye (41%)** | 19.5d | 2014-07-18 | 2014-08-09 |  | 2014-07-18 | 2014-08-09 | 19.5d | 42d |  |
| 340 | 5.2.4.3.1 | Erection of Motor | 1d | 2014-07-18 | 2014-07-18 | 263 | 2014-07-18 | 2014-07-18 | 1d | 55.5d | 13.5d |
| 341 | 5.2.4.3.2 | Erection of Push Button Station | 1d | 2014-08-04 | 2014-08-05 | 340, 177 | 2014-08-04 | 2014-08-05 | 1d | 42d | 0d |
| 342 | 5.2.4.3.3 | Power Cable Laying | 1d | 2014-08-05 | 2014-08-06 | 341 | 2014-08-05 | 2014-08-06 | 1d | 42d | 0d |
| 343 | 5.2.4.3.4 | Control Cable Laying | 1d | 2014-08-06 | 2014-08-07 | 342 | 2014-08-06 | 2014-08-07 | 1d | 42d | 0d |
| 344 | 5.2.4.3.5 | Termination of Power & Control Cables | 1d | 2014-08-07 | 2014-08-08 | 343 | 2014-08-07 | 2014-08-08 | 1d | 42d | 0d |
| 345 | 5.2.4.3.6 | No Load Trail | 1d | 2014-08-08 | 2014-08-09 | 344 | 2014-08-08 | 2014-08-09 | 1d | 42d |  |
| 346 | 5.2.4.4 | **P-1201 B - Pump for Caustic Lye (41%)** | 19.5d | 2014-07-18 | 2014-08-09 |  | 2014-07-18 | 2014-08-09 | 19.5d | 42d |  |
| 347 | 5.2.4.4.1 | Erection of Motor | 1d | 2014-07-18 | 2014-07-18 | 263 | 2014-07-18 | 2014-07-18 | 1d | 55.5d | 13.5d |
| 348 | 5.2.4.4.2 | Erection of Push Button Station | 1d | 2014-08-04 | 2014-08-05 | 347, 177 | 2014-08-04 | 2014-08-05 | 1d | 42d | 0d |
| 349 | 5.2.4.4.3 | Power Cable Laying | 1d | 2014-08-05 | 2014-08-06 | 348 | 2014-08-05 | 2014-08-06 | 1d | 42d | 0d |
| 350 | 5.2.4.4.4 | Control Cable Laying | 1d | 2014-08-06 | 2014-08-07 | 349 | 2014-08-06 | 2014-08-07 | 1d | 42d | 0d |
| 351 | 5.2.4.4.5 | Termination of Power & Control Cables | 1d | 2014-08-07 | 2014-08-08 | 350 | 2014-08-07 | 2014-08-08 | 1d | 42d | 0d |
| 352 | 5.2.4.4.6 | No Load Trail | 1d | 2014-08-08 | 2014-08-09 | 351 | 2014-08-08 | 2014-08-09 | 1d | 42d |  |
| 353 | 5.2.4.5 | **P-1301 A - Pump for Caustic Lye (48%)** | 19.5d | 2014-07-18 | 2014-08-09 |  | 2014-07-18 | 2014-08-09 | 19.5d | 42d |  |
| 354 | 5.2.4.5.1 | Erection of Motor | 1d | 2014-07-18 | 2014-07-18 | 267 | 2014-07-18 | 2014-07-18 | 1d | 55.5d | 13.5d |
| 355 | 5.2.4.5.2 | Erection of Push Button Station | 1d | 2014-08-04 | 2014-08-05 | 354, 177 | 2014-08-04 | 2014-08-05 | 1d | 42d | 0d |
| 356 | 5.2.4.5.3 | Power Cable Laying | 1d | 2014-08-05 | 2014-08-06 | 355 | 2014-08-05 | 2014-08-06 | 1d | 42d | 0d |
| 357 | 5.2.4.5.4 | Control Cable Laying | 1d | 2014-08-06 | 2014-08-07 | 356 | 2014-08-06 | 2014-08-07 | 1d | 42d | 0d |
| 358 | 5.2.4.5.5 | Termination of Power & Control Cables | 1d | 2014-08-07 | 2014-08-08 | 357 | 2014-08-07 | 2014-08-08 | 1d | 42d | 0d |
| 359 | 5.2.4.5.6 | No Load Trail | 1d | 2014-08-08 | 2014-08-09 | 358 | 2014-08-08 | 2014-08-09 | 1d | 42d |  |
| 360 | 5.2.4.6 | **P-1301 B - Pump for Caustic Lye (48%)** | 19.5d | 2014-07-18 | 2014-08-09 |  | 2014-07-18 | 2014-08-09 | 19.5d | 42d |  |
| 361 | 5.2.4.6.1 | Erection of Motor | 1d | 2014-07-18 | 2014-07-18 | 267 | 2014-07-18 | 2014-07-18 | 1d | 55.5d | 13.5d |
| 362 | 5.2.4.6.2 | Erection of Push Button Station | 1d | 2014-08-04 | 2014-08-05 | 361, 177 | 2014-08-04 | 2014-08-05 | 1d | 42d | 0d |
| 363 | 5.2.4.6.3 | Power Cable Laying | 1d | 2014-08-05 | 2014-08-06 | 362 | 2014-08-05 | 2014-08-06 | 1d | 42d | 0d |
| 364 | 5.2.4.6.4 | Control Cable Laying | 1d | 2014-08-06 | 2014-08-07 | 363 | 2014-08-06 | 2014-08-07 | 1d | 42d | 0d |
| 365 | 5.2.4.6.5 | Termination of Power & Control Cables | 1d | 2014-08-07 | 2014-08-08 | 364 | 2014-08-07 | 2014-08-08 | 1d | 42d | 0d |
| 366 | 5.2.4.6.6 | No Load Trail | 1d | 2014-08-08 | 2014-08-09 | 365 | 2014-08-08 | 2014-08-09 | 1d | 42d |  |

| ID | WBS | Task | Duration | Start | Finish | Predecessors | Baseline start | Baseline finish | Baseline duration | Total slack | Free slack |
| --- | --- | --- | --- | --- | --- | --- | --- | --- | --- | --- | --- |
| 367 | 5.2.4.7 | **P-7101 A - Pump for Vapour Condensate** | 19.5d | 2014-07-18 | 2014-08-09 |  | 2014-07-18 | 2014-08-09 | 19.5d | 42d |  |
| 368 | 5.2.4.7.1 | Erection of Motor | 1d | 2014-07-18 | 2014-07-18 | 274 | 2014-07-18 | 2014-07-18 | 1d | 55.5d | 13.5d |
| 369 | 5.2.4.7.2 | Erection of Push Button Station | 1d | 2014-08-04 | 2014-08-05 | 368, 177 | 2014-08-04 | 2014-08-05 | 1d | 42d | 0d |
| 370 | 5.2.4.7.3 | Power Cable Laying | 1d | 2014-08-05 | 2014-08-06 | 369 | 2014-08-05 | 2014-08-06 | 1d | 42d | 0d |
| 371 | 5.2.4.7.4 | Control Cable Laying | 1d | 2014-08-06 | 2014-08-07 | 370 | 2014-08-06 | 2014-08-07 | 1d | 42d | 0d |
| 372 | 5.2.4.7.5 | Termination of Power & Control Cables | 1d | 2014-08-07 | 2014-08-08 | 371 | 2014-08-07 | 2014-08-08 | 1d | 42d | 0d |
| 373 | 5.2.4.7.6 | No Load Trail | 1d | 2014-08-08 | 2014-08-09 | 372 | 2014-08-08 | 2014-08-09 | 1d | 42d |  |
| 374 | 5.2.4.8 | **P-7101 B - Pump for Vapour Condensate** | 19.5d | 2014-07-18 | 2014-08-09 |  | 2014-07-18 | 2014-08-09 | 19.5d | 42d |  |
| 375 | 5.2.4.8.1 | Erection of Motor | 1d | 2014-07-18 | 2014-07-18 | 274 | 2014-07-18 | 2014-07-18 | 1d | 55.5d | 13.5d |
| 376 | 5.2.4.8.2 | Erection of Push Button Station | 1d | 2014-08-04 | 2014-08-05 | 375, 177 | 2014-08-04 | 2014-08-05 | 1d | 42d | 0d |
| 377 | 5.2.4.8.3 | Power Cable Laying | 1d | 2014-08-05 | 2014-08-06 | 376 | 2014-08-05 | 2014-08-06 | 1d | 42d | 0d |
| 378 | 5.2.4.8.4 | Control Cable Laying | 1d | 2014-08-06 | 2014-08-07 | 377 | 2014-08-06 | 2014-08-07 | 1d | 42d | 0d |
| 379 | 5.2.4.8.5 | Termination of Power & Control Cables | 1d | 2014-08-07 | 2014-08-08 | 378 | 2014-08-07 | 2014-08-08 | 1d | 42d | 0d |
| 380 | 5.2.4.8.6 | No Load Trail | 1d | 2014-08-08 | 2014-08-09 | 379 | 2014-08-08 | 2014-08-09 | 1d | 42d |  |
| 381 | 5.2.4.9 | **P-7102 A - Pump for Water ring Vaccum** | 6d | 2014-08-02 | 2014-08-09 |  | 2014-08-02 | 2014-08-09 | 6d | 42d |  |
| 382 | 5.2.4.9.1 | Erection of Motor | 1d | 2014-08-02 | 2014-08-04 | 275, 276 | 2014-08-02 | 2014-08-04 | 1d | 42d | 0d |
| 383 | 5.2.4.9.2 | Erection of Push Button Station | 1d | 2014-08-04 | 2014-08-05 | 382, 177 | 2014-08-04 | 2014-08-05 | 1d | 42d | 0d |
| 384 | 5.2.4.9.3 | Power Cable Laying | 1d | 2014-08-05 | 2014-08-06 | 383 | 2014-08-05 | 2014-08-06 | 1d | 42d | 0d |
| 385 | 5.2.4.9.4 | Control Cable Laying | 1d | 2014-08-06 | 2014-08-07 | 384 | 2014-08-06 | 2014-08-07 | 1d | 42d | 0d |
| 386 | 5.2.4.9.5 | Termination of Power & Control Cables | 1d | 2014-08-07 | 2014-08-08 | 385 | 2014-08-07 | 2014-08-08 | 1d | 42d | 0d |
| 387 | 5.2.4.9.6 | No Load Trail | 1d | 2014-08-08 | 2014-08-09 | 386 | 2014-08-08 | 2014-08-09 | 1d | 42d |  |
| 388 | 5.2.4.10 | **P-7102 B - Pump for Water ring Vaccum** | 6d | 2014-08-02 | 2014-08-09 |  | 2014-08-02 | 2014-08-09 | 6d | 42d |  |
| 389 | 5.2.4.10.1 | Erection of Motor | 1d | 2014-08-02 | 2014-08-04 | 275, 276 | 2014-08-02 | 2014-08-04 | 1d | 42d | 0d |
| 390 | 5.2.4.10.2 | Erection of Push Button Station | 1d | 2014-08-04 | 2014-08-05 | 389, 177 | 2014-08-04 | 2014-08-05 | 1d | 42d | 0d |
| 391 | 5.2.4.10.3 | Power Cable Laying | 1d | 2014-08-05 | 2014-08-06 | 390 | 2014-08-05 | 2014-08-06 | 1d | 42d | 0d |
| 392 | 5.2.4.10.4 | Control Cable Laying | 1d | 2014-08-06 | 2014-08-07 | 391 | 2014-08-06 | 2014-08-07 | 1d | 42d | 0d |
| 393 | 5.2.4.10.5 | Termination of Power & Control Cables | 1d | 2014-08-07 | 2014-08-08 | 392 | 2014-08-07 | 2014-08-08 | 1d | 42d | 0d |
| 394 | 5.2.4.10.6 | No Load Trail | 1d | 2014-08-08 | 2014-08-09 | 393 | 2014-08-08 | 2014-08-09 | 1d | 42d |  |

| ID | WBS | Task | Duration | Start | Finish | Predecessors | Baseline start | Baseline finish | Baseline duration | Total slack | Free slack |
| --- | --- | --- | --- | --- | --- | --- | --- | --- | --- | --- | --- |
| 395 | 5.2.4.11 | **P-802 A - Pump for Cooling Water - 90KW** | 6d | 2014-08-02 | 2014-08-09 |  | 2014-08-02 | 2014-08-09 | 6d | 42d |  |
| 396 | 5.2.4.11.1 | Erection of Motor | 1d | 2014-08-02 | 2014-08-04 | 275, 276 | 2014-08-02 | 2014-08-04 | 1d | 42d | 0d |
| 397 | 5.2.4.11.2 | Erection of Push Button Station | 1d | 2014-08-04 | 2014-08-05 | 396, 177 | 2014-08-04 | 2014-08-05 | 1d | 42d | 0d |
| 398 | 5.2.4.11.3 | Power Cable Laying | 1d | 2014-08-05 | 2014-08-06 | 397 | 2014-08-05 | 2014-08-06 | 1d | 42d | 0d |
| 399 | 5.2.4.11.4 | Control Cable Laying | 1d | 2014-08-06 | 2014-08-07 | 398 | 2014-08-06 | 2014-08-07 | 1d | 42d | 0d |
| 400 | 5.2.4.11.5 | Termination of Power & Control Cables | 1d | 2014-08-07 | 2014-08-08 | 399 | 2014-08-07 | 2014-08-08 | 1d | 42d | 0d |
| 401 | 5.2.4.11.6 | No Load Trail | 1d | 2014-08-08 | 2014-08-09 | 400 | 2014-08-08 | 2014-08-09 | 1d | 42d |  |
| 402 | 5.2.4.12 | **P-802 B - Pump for Cooling Water - 90KW** | 6d | 2014-08-02 | 2014-08-09 |  | 2014-08-02 | 2014-08-09 | 6d | 42d |  |
| 403 | 5.2.4.12.1 | Erection of Motor | 1d | 2014-08-02 | 2014-08-04 | 275, 276 | 2014-08-02 | 2014-08-04 | 1d | 42d | 0d |
| 404 | 5.2.4.12.2 | Erection of Push Button Station | 1d | 2014-08-04 | 2014-08-05 | 403, 177 | 2014-08-04 | 2014-08-05 | 1d | 42d | 0d |
| 405 | 5.2.4.12.3 | Power Cable Laying | 1d | 2014-08-05 | 2014-08-06 | 404 | 2014-08-05 | 2014-08-06 | 1d | 42d | 0d |
| 406 | 5.2.4.12.4 | Control Cable Laying | 1d | 2014-08-06 | 2014-08-07 | 405 | 2014-08-06 | 2014-08-07 | 1d | 42d | 0d |
| 407 | 5.2.4.12.5 | Termination of Power & Control Cables | 1d | 2014-08-07 | 2014-08-08 | 406 | 2014-08-07 | 2014-08-08 | 1d | 42d | 0d |
| 408 | 5.2.4.12.6 | No Load Trail | 1d | 2014-08-08 | 2014-08-09 | 407 | 2014-08-08 | 2014-08-09 | 1d | 42d |  |
| 409 | 5.2.4.13 | **F-802 - Cooling Tower Fan - 30KW** | 6d | 2014-08-04 | 2014-08-11 |  | 2014-08-04 | 2014-08-11 | 6d | 41d |  |
| 410 | 5.2.4.13.1 | Erection of Motor | 1d | 2014-08-04 | 2014-08-05 | 275, 177, 276 | 2014-08-04 | 2014-08-05 | 1d | 41d | 0d |
| 411 | 5.2.4.13.2 | Erection of Push Button Station | 1d | 2014-08-05 | 2014-08-06 | 410 | 2014-08-05 | 2014-08-06 | 1d | 41d | 0d |
| 412 | 5.2.4.13.3 | Power Cable Laying | 1d | 2014-08-06 | 2014-08-07 | 411 | 2014-08-06 | 2014-08-07 | 1d | 41d | 0d |
| 413 | 5.2.4.13.4 | Control Cable Laying | 1d | 2014-08-07 | 2014-08-08 | 412 | 2014-08-07 | 2014-08-08 | 1d | 41d | 0d |
| 414 | 5.2.4.13.5 | Termination of Power & Control Cables | 1d | 2014-08-08 | 2014-08-09 | 413 | 2014-08-08 | 2014-08-09 | 1d | 41d | 0d |
| 415 | 5.2.4.13.6 | No Load Trail | 1d | 2014-08-09 | 2014-08-11 | 414 | 2014-08-09 | 2014-08-11 | 1d | 41d |  |
| 416 | 5.2.4.14 | **Pump for Waste Water** | 6d | 2014-08-02 | 2014-08-09 |  | 2014-08-02 | 2014-08-09 | 6d | 42d |  |
| 417 | 5.2.4.14.1 | Erection of Motor | 1d | 2014-08-02 | 2014-08-04 | 275, 276 | 2014-08-02 | 2014-08-04 | 1d | 42d | 0d |
| 418 | 5.2.4.14.2 | Erection of Push Button Station | 1d | 2014-08-04 | 2014-08-05 | 417, 177 | 2014-08-04 | 2014-08-05 | 1d | 42d | 0d |
| 419 | 5.2.4.14.3 | Power Cable Laying | 1d | 2014-08-05 | 2014-08-06 | 418 | 2014-08-05 | 2014-08-06 | 1d | 42d | 0d |
| 420 | 5.2.4.14.4 | Control Cable Laying | 1d | 2014-08-06 | 2014-08-07 | 419 | 2014-08-06 | 2014-08-07 | 1d | 42d | 0d |
| 421 | 5.2.4.14.5 | Termination of Power & Control Cables | 1d | 2014-08-07 | 2014-08-08 | 420 | 2014-08-07 | 2014-08-08 | 1d | 42d | 0d |
| 422 | 5.2.4.14.6 | No Load Trail | 1d | 2014-08-08 | 2014-08-09 | 421 | 2014-08-08 | 2014-08-09 | 1d | 42d |  |

| ID | WBS | Task | Duration | Start | Finish | Predecessors | Baseline start | Baseline finish | Baseline duration | Total slack | Free slack |
| --- | --- | --- | --- | --- | --- | --- | --- | --- | --- | --- | --- |
| 423 | 5.2.5 | **Lighting** | 24d | 2014-08-01 | 2014-08-29 |  | 2014-08-01 | 2014-08-29 | 24d | 25d |  |
| 424 | 5.2.5.1 | **Ground Floor** | 4d | 2014-08-01 | 2014-08-06 |  | 2014-08-01 | 2014-08-06 | 4d | 45d |  |
| 425 | 5.2.5.1.1 | Fixing of PDB | 1d | 2014-08-01 | 2014-08-02 | 176 | 2014-08-01 | 2014-08-02 | 1d | 48d |  |
| 426 | 5.2.5.1.2 | Fixing of LDB | 1d | 2014-08-01 | 2014-08-02 | 176 | 2014-08-01 | 2014-08-02 | 1d | 48d |  |
| 427 | 5.2.5.1.3 | Fixing of Junction Boxes | 1d | 2014-08-01 | 2014-08-02 | 176 | 2014-08-01 | 2014-08-02 | 1d | 48d |  |
| 428 | 5.2.5.1.4 | Fabrication of Supports for Fixing of Lights | 1d | 2014-08-01 | 2014-08-02 | 176 | 2014-08-01 | 2014-08-02 | 1d | 45d | 0d |
| 429 | 5.2.5.1.5 | Fixing of Light Fittings | 2d | 2014-08-02 | 2014-08-05 | 428 | 2014-08-02 | 2014-08-05 | 2d | 45d | 0d |
| 430 | 5.2.5.1.6 | Fabrication of Cable Tray Supports | 2d | 2014-08-01 | 2014-08-04 | 176 | 2014-08-01 | 2014-08-04 | 2d | 46d | 0d |
| 431 | 5.2.5.1.7 | Laying of Cable Trays and Fixing | 1d | 2014-08-04 | 2014-08-05 | 430 | 2014-08-04 | 2014-08-05 | 1d | 46d |  |
| 432 | 5.2.5.1.8 | Laying of Power Cables for PDB & LDB | 1d | 2014-08-04 | 2014-08-05 | 430 | 2014-08-04 | 2014-08-05 | 1d | 46d |  |
| 433 | 5.2.5.1.9 | Laying of Lighting Cables and Termination | 1d | 2014-08-05 | 2014-08-06 | 429, 430 | 2014-08-05 | 2014-08-06 | 1d | 45d |  |
| 434 | 5.2.5.2 | **EL+5.000 M LVL** | 9d | 2014-08-01 | 2014-08-12 |  | 2014-08-01 | 2014-08-12 | 9d | 25d |  |
| 435 | 5.2.5.2.1 | Fixing of LDB | 1d | 2014-08-01 | 2014-08-02 | 242FS+15d | 2014-08-01 | 2014-08-02 | 1d | 25d | 0d |
| 436 | 5.2.5.2.2 | Fixing of Junction Boxes | 1d | 2014-08-02 | 2014-08-04 | 435 | 2014-08-02 | 2014-08-04 | 1d | 25d | 0d |
| 437 | 5.2.5.2.3 | Fabrication of Supports for Fixing of Lights | 1d | 2014-08-04 | 2014-08-05 | 436 | 2014-08-04 | 2014-08-05 | 1d | 25d | 0d |
| 438 | 5.2.5.2.4 | Fixing of Light Fittings | 1d | 2014-08-05 | 2014-08-06 | 437 | 2014-08-05 | 2014-08-06 | 1d | 25d | 0d |
| 439 | 5.2.5.2.5 | Fabrication of Cable Tray Supports | 2d | 2014-08-06 | 2014-08-08 | 438 | 2014-08-06 | 2014-08-08 | 2d | 25d | 0d |
| 440 | 5.2.5.2.6 | Laying of Cable Trays and Fixing | 2d | 2014-08-08 | 2014-08-11 | 439 | 2014-08-08 | 2014-08-11 | 2d | 25d | 0d |
| 441 | 5.2.5.2.7 | Laying of Power Cables for LDB | 1d | 2014-08-08 | 2014-08-09 | 439 | 2014-08-08 | 2014-08-09 | 1d | 42d |  |
| 442 | 5.2.5.2.8 | Laying of Lighting Cables and Termination | 1d | 2014-08-11 | 2014-08-12 | 439, 440 | 2014-08-11 | 2014-08-12 | 1d | 25d | 0d |
| 443 | 5.2.5.3 | **EL+7.000 M LVL** | 11d | 2014-08-12 | 2014-08-25 |  | 2014-08-12 | 2014-08-25 | 11d | 29d |  |
| 444 | 5.2.5.3.1 | Fixing of LDB | 1d | 2014-08-12 | 2014-08-13 | 442 | 2014-08-12 | 2014-08-13 | 1d | 29d | 0d |
| 445 | 5.2.5.3.2 | Fixing of Junction Boxes | 1d | 2014-08-13 | 2014-08-14 | 444 | 2014-08-13 | 2014-08-14 | 1d | 29d | 0d |
| 446 | 5.2.5.3.3 | Fabrication of Supports for Fixing of Lights | 1d | 2014-08-14 | 2014-08-15 | 445 | 2014-08-14 | 2014-08-15 | 1d | 29d | 0d |
| 447 | 5.2.5.3.4 | Fixing of Light Fittings | 1d | 2014-08-15 | 2014-08-16 | 446 | 2014-08-15 | 2014-08-16 | 1d | 29d | 0d |
| 448 | 5.2.5.3.5 | Fabrication of Cable Tray Supports | 2d | 2014-08-16 | 2014-08-19 | 447 | 2014-08-16 | 2014-08-19 | 2d | 29d | 0d |
| 449 | 5.2.5.3.6 | Laying of Cable Trays and Fixing | 2d | 2014-08-19 | 2014-08-21 | 448 | 2014-08-19 | 2014-08-21 | 2d | 32d |  |
| 450 | 5.2.5.3.7 | Laying of Power Cables for LDB | 1d | 2014-08-19 | 2014-08-20 | 448 | 2014-08-19 | 2014-08-20 | 1d | 33d |  |
| 451 | 5.2.5.3.8 | Laying of Lighting Cables and Termination | 1d | 2014-08-19 | 2014-08-20 | 448 | 2014-08-19 | 2014-08-20 | 1d | 29d | 0d |
| 452 | 5.2.5.3.9 | Fixing of False Floor fittings in DCS Room | 1d | 2014-08-20 | 2014-08-21 | 451 | 2014-08-20 | 2014-08-21 | 1d | 29d | 0d |
| 453 | 5.2.5.3.10 | Fixing of LDB in DCS Room | 1d | 2014-08-21 | 2014-08-22 | 452 | 2014-08-21 | 2014-08-22 | 1d | 29d | 0d |
| 454 | 5.2.5.3.11 | Laying of Lighting Cables and Termination | 1d | 2014-08-22 | 2014-08-23 | 453 | 2014-08-22 | 2014-08-23 | 1d | 29d | 0d |
| 455 | 5.2.5.3.12 | Laying of Power Cables and Termination | 1d | 2014-08-23 | 2014-08-25 | 454 | 2014-08-23 | 2014-08-25 | 1d | 29d |  |

| ID | WBS | Task | Duration | Start | Finish | Predecessors | Baseline start | Baseline finish | Baseline duration | Total slack | Free slack |
| --- | --- | --- | --- | --- | --- | --- | --- | --- | --- | --- | --- |
| 456 | 5.2.5.4 | **EL+12.000 M LVL** | 10d | 2014-08-12 | 2014-08-23 |  | 2014-08-12 | 2014-08-23 | 10d | 30d |  |
| 457 | 5.2.5.4.1 | Fixing of LDB | 1d | 2014-08-12 | 2014-08-13 | 442 | 2014-08-12 | 2014-08-13 | 1d | 30d | 0d |
| 458 | 5.2.5.4.2 | Fixing of Junction Boxes | 1d | 2014-08-13 | 2014-08-14 | 457 | 2014-08-13 | 2014-08-14 | 1d | 30d | 0d |
| 459 | 5.2.5.4.3 | Fabrication of Supports for Fixing of Lights | 1d | 2014-08-14 | 2014-08-15 | 458 | 2014-08-14 | 2014-08-15 | 1d | 30d | 0d |
| 460 | 5.2.5.4.4 | Fixing of Light Fittings | 1d | 2014-08-15 | 2014-08-16 | 459 | 2014-08-15 | 2014-08-16 | 1d | 30d | 0d |
| 461 | 5.2.5.4.5 | Fabrication of Cable Tray Supports | 2d | 2014-08-16 | 2014-08-19 | 460 | 2014-08-16 | 2014-08-19 | 2d | 30d | 0d |
| 462 | 5.2.5.4.6 | Laying of Cable Trays and Fixing | 2d | 2014-08-19 | 2014-08-21 | 461 | 2014-08-19 | 2014-08-21 | 2d | 30d | 0d |
| 463 | 5.2.5.4.7 | Laying of Power Cables for LDB | 1d | 2014-08-21 | 2014-08-22 | 462 | 2014-08-21 | 2014-08-22 | 1d | 30d | 0d |
| 464 | 5.2.5.4.8 | Laying of Lighting Cables and Termination | 1d | 2014-08-22 | 2014-08-23 | 463 | 2014-08-22 | 2014-08-23 | 1d | 30d |  |
| 465 | 5.2.5.5 | **EL+14.000 M LVL** | 10d | 2014-08-18 | 2014-08-29 |  | 2014-08-18 | 2014-08-29 | 10d | 25d |  |
| 466 | 5.2.5.5.1 | Fixing of LDB | 1d | 2014-08-18 | 2014-08-19 | 442FS+5d | 2014-08-18 | 2014-08-19 | 1d | 25d | 0d |
| 467 | 5.2.5.5.2 | Fixing of Junction Boxes | 1d | 2014-08-19 | 2014-08-20 | 466 | 2014-08-19 | 2014-08-20 | 1d | 25d | 0d |
| 468 | 5.2.5.5.3 | Fabrication of Supports for Fixing of Lights | 1d | 2014-08-20 | 2014-08-21 | 467 | 2014-08-20 | 2014-08-21 | 1d | 25d | 0d |
| 469 | 5.2.5.5.4 | Fixing of Light Fittings | 1d | 2014-08-21 | 2014-08-22 | 468 | 2014-08-21 | 2014-08-22 | 1d | 25d | 0d |
| 470 | 5.2.5.5.5 | Fabrication of Cable Tray Supports | 2d | 2014-08-22 | 2014-08-25 | 469 | 2014-08-22 | 2014-08-25 | 2d | 25d | 0d |
| 471 | 5.2.5.5.6 | Laying of Cable Trays and Fixing | 2d | 2014-08-25 | 2014-08-27 | 470 | 2014-08-25 | 2014-08-27 | 2d | 25d | 0d |
| 472 | 5.2.5.5.7 | Laying of Power Cables for LDB | 1d | 2014-08-27 | 2014-08-28 | 471 | 2014-08-27 | 2014-08-28 | 1d | 25d | 0d |
| 473 | 5.2.5.5.8 | Laying of Lighting Cables and Termination | 1d | 2014-08-28 | 2014-08-29 | 472 | 2014-08-28 | 2014-08-29 | 1d | 25d |  |
| 474 | 5.2.5.6 | **EL+17.500 M LVL** | 10d | 2014-08-18 | 2014-08-29 |  | 2014-08-18 | 2014-08-29 | 10d | 25d |  |
| 475 | 5.2.5.6.1 | Fixing of LDB | 1d | 2014-08-18 | 2014-08-19 | 442FS+5d | 2014-08-18 | 2014-08-19 | 1d | 25d | 0d |
| 476 | 5.2.5.6.2 | Fixing of Junction Boxes | 1d | 2014-08-19 | 2014-08-20 | 475 | 2014-08-19 | 2014-08-20 | 1d | 25d | 0d |
| 477 | 5.2.5.6.3 | Fabrication of Supports for Fixing of Lights | 1d | 2014-08-20 | 2014-08-21 | 476 | 2014-08-20 | 2014-08-21 | 1d | 25d | 0d |
| 478 | 5.2.5.6.4 | Fixing of Light Fittings | 1d | 2014-08-21 | 2014-08-22 | 477 | 2014-08-21 | 2014-08-22 | 1d | 25d | 0d |
| 479 | 5.2.5.6.5 | Fabrication of Cable Tray Supports | 2d | 2014-08-22 | 2014-08-25 | 478 | 2014-08-22 | 2014-08-25 | 2d | 25d | 0d |
| 480 | 5.2.5.6.6 | Laying of Cable Trays and Fixing | 2d | 2014-08-25 | 2014-08-27 | 479 | 2014-08-25 | 2014-08-27 | 2d | 25d | 0d |
| 481 | 5.2.5.6.7 | Laying of Power Cables for LDB | 1d | 2014-08-27 | 2014-08-28 | 480 | 2014-08-27 | 2014-08-28 | 1d | 25d | 0d |
| 482 | 5.2.5.6.8 | Laying of Lighting Cables and Termination | 1d | 2014-08-28 | 2014-08-29 | 481 | 2014-08-28 | 2014-08-29 | 1d | 25d |  |

| ID | WBS | Task | Type | Duration | Start | Finish | Predecessors | Baseline start | Baseline finish | Baseline duration | Total slack | Free slack | Resources | Work | Cost | Baseline cost |
| --- | --- | --- | --- | --- | --- | --- | --- | --- | --- | --- | --- | --- | --- | --- | --- | --- |
| 483 | 6 | **Instrumentation** |  | 227.5d | 2013-12-23 | 2014-09-13 |  | 2013-12-23 | 2014-09-13 | 227.5d | 12d |  |  | 580h | 5,395,823.28 | 5,395,823.28 |
| 484 | 6.1 | **Procurement** |  | 120d | 2013-12-23 | 2014-05-10 |  | 2013-12-23 | 2014-05-10 | 120d | 57.5d |  |  |  | 4,755,823 | 4,755,823 |
| 485 | 6.1.1 | Purchase of Control Valves |  | 5d | 2013-12-23 | 2013-12-27 | 6FS+290d | 2013-12-23 | 2013-12-27 | 5d | 57.5d | 0d | Controlvalves; z.Controlvalves |  | 1,198,075 | 1,198,075 |
| 486 | 6.1.2 | Purchase of Pr. Transmitters |  | 10d | 2013-12-28 | 2014-01-08 | 485 | 2013-12-28 | 2014-01-08 | 10d | 224.5d |  | Pr. Trans.; z.Pr. Trans. |  | 236,500 | 236,500 |
| 487 | 6.1.3 | Purchase of Flow meters |  | 10d | 2013-12-28 | 2014-01-08 | 485 | 2013-12-28 | 2014-01-08 | 10d | 224.5d |  | Flow meters; z.Flow meters |  | 560,550 | 560,550 |
| 488 | 6.1.4 | Purchase of Temp. Transmitters |  | 10d | 2013-12-28 | 2014-01-08 | 485 | 2013-12-28 | 2014-01-08 | 10d | 224.5d |  | Temp. Trans.; z.Temp. Trans. |  | 315,400 | 315,400 |
| 489 | 6.1.5 | Purchase of Thermowells (RTD) |  | 10d | 2013-12-28 | 2014-01-08 | 485 | 2013-12-28 | 2014-01-08 | 10d | 224.5d |  | RTD; z.RTD |  | 80,000 | 80,000 |
| 490 | 6.1.6 | Purchase of Level Transmitters |  | 10d | 2013-12-28 | 2014-01-08 | 485 | 2013-12-28 | 2014-01-08 | 10d | 224.5d |  | Sidemounted LT; Radar LT; z.Radar LT; z.Sidemounted LT |  | 1,528,975 | 1,528,975 |
| 491 | 6.1.7 | Purchase of Level Switches |  | 10d | 2013-12-28 | 2014-01-08 | 485 | 2013-12-28 | 2014-01-08 | 10d | 224.5d |  | Levelswitch; z.Levelswitch |  | 269,196 | 269,196 |
| 492 | 6.1.8 | Purchase of Rotameter with Switch |  | 10d | 2013-12-28 | 2014-01-08 | 485 | 2013-12-28 | 2014-01-08 | 10d | 224.5d |  | Rotameter; z.Rotameter |  | 227,127 | 227,127 |
| 493 | 6.1.9 | Purchase of Pr. Gauges |  | 10d | 2014-04-30 | 2014-05-10 | 6FS+400d | 2014-04-30 | 2014-05-10 | 10d | 119.5d |  | Pr.gauge; z.Pr.gauge |  | 40,000 | 40,000 |
| 494 | 6.1.10 | Purchase of Temp. Gauges |  | 10d | 2014-04-30 | 2014-05-10 | 6FS+400d | 2014-04-30 | 2014-05-10 | 10d | 119.5d |  | Temp.gauge; z.Temp.gauge |  | 120,000 | 120,000 |
| 495 | 6.1.11 | Purchase of Pr. Switches |  | 10d | 2014-04-30 | 2014-05-10 | 6FS+400d | 2014-04-30 | 2014-05-10 | 10d | 119.5d |  | Pr.switch; z.Pr.switch |  | 60,000 | 60,000 |
| 496 | 6.1.12 | Purchase of Instrument Cables |  | 4d | 2014-04-30 | 2014-05-03 | 6FS+400d | 2014-04-30 | 2014-05-03 | 4d | 56.5d | 0d | Cable; z.Cable |  | 120,000 | 120,000 |
| 497 | 6.1.13 | Purchase of Instrument cable tray |  | 4d | 2014-04-30 | 2014-05-03 | 6FS+400d | 2014-04-30 | 2014-05-03 | 4d | 125.5d |  |  |  |  |  |
| 498 | 6.1.14 | Finalisation of Inst Erection Contractor |  | 5d | 2014-04-30 | 2014-05-05 | 6FS+400d | 2014-04-30 | 2014-05-05 | 5d | 119.5d | 85.5d |  |  |  |  |
| 499 | 6.1.15 | Purchase of Erection Hardwares |  | 5d | 2014-04-30 | 2014-05-05 | 6FS+400d | 2014-04-30 | 2014-05-05 | 5d | 106.5d | 84.5d |  |  |  |  |
| 500 | 6.2 | **Execution** |  | 72.5d | 2014-06-21 | 2014-09-13 |  | 2014-06-21 | 2014-09-13 | 72.5d | 12d |  | Inst. Erection | 580h | 640,000.28 | 640,000.28 |
| 501 | 6.2.1 | **DCS** |  | 15d | 2014-08-04 | 2014-08-21 |  | 2014-08-04 | 2014-08-21 | 15d | 29d |  |  |  |  |  |
| 502 | 6.2.1.1 | DCS Room Civil Work Completion | milestone | 0d | 2014-08-04 | 2014-08-04 | 177 | 2014-08-04 | 2014-08-04 | 0d | 29d | 7d |  |  |  |  |
| 503 | 6.2.1.2 | Mobillisation of Erection Contractor at Site |  | 1d | 2014-08-12 | 2014-08-13 | 499, 19, 22, 279SS+8d, 502 | 2014-08-12 | 2014-08-13 | 1d | 22d | 0d |  |  |  |  |
| 504 | 6.2.1.3 | Positioning of DCS Panel and Consoles Local CR |  | 2d | 2014-08-13 | 2014-08-15 | 503 | 2014-08-13 | 2014-08-15 | 2d | 32d | 0d |  |  |  |  |
| 505 | 6.2.1.4 | Interconnection cabling of Main DCS and Local DCS for CCU |  | 4d | 2014-08-15 | 2014-08-20 | 504 | 2014-08-15 | 2014-08-20 | 4d | 32d | 0d |  |  |  |  |
| 506 | 6.2.1.5 | Power up of new DCS Consoles & Commissioniong |  | 1d | 2014-08-20 | 2014-08-21 | 505 | 2014-08-20 | 2014-08-21 | 1d | 32d |  |  |  |  |  |

| ID | WBS | Task | Duration | Start | Finish | Predecessors | Baseline start | Baseline finish | Baseline duration | Total slack | Free slack |
| --- | --- | --- | --- | --- | --- | --- | --- | --- | --- | --- | --- |
| 507 | 6.2.2 | **Instruments Cabling & Termination- Main cable** | 58.5d | 2014-06-26 | 2014-09-02 |  | 2014-06-26 | 2014-09-02 | 58.5d | 22d |  |
| 508 | 6.2.2.1 | Fabrication of tray support for main cables | 2d | 2014-08-13 | 2014-08-15 | 503 | 2014-08-13 | 2014-08-15 | 2d | 37d |  |
| 509 | 6.2.2.2 | Erection of Main cable trays | 10d | 2014-08-13 | 2014-08-25 | 503 | 2014-08-13 | 2014-08-25 | 10d | 29d |  |
| 510 | 6.2.2.3 | Fabrication and Erection of JB support and erection of JB's | 5d | 2014-08-13 | 2014-08-19 | 498, 503 | 2014-08-13 | 2014-08-19 | 5d | 34d |  |
| 511 | 6.2.2.4 | Receipt of I & C cables at site | 7d | 2014-06-26 | 2014-07-03 | 496FS+45d, 22 | 2014-06-26 | 2014-07-03 | 7d | 56.5d | 34.5d |
| 512 | 6.2.2.5 | Laying & dressing of Main cables from JB to CR | 9d | 2014-08-13 | 2014-08-23 | 511, 503 | 2014-08-13 | 2014-08-23 | 9d | 22d | 0d |
| 513 | 6.2.2.6 | Cable Glanding & Termination of Main cables at both ends | 6d | 2014-08-23 | 2014-08-30 | 512 | 2014-08-23 | 2014-08-30 | 6d | 22d | 0d |
| 514 | 6.2.2.7 | Loop check from JB end to DCS | 2d | 2014-08-30 | 2014-09-02 | 513 | 2014-08-30 | 2014-09-02 | 2d | 22d |  |
| 515 | 6.2.3 | **Field Inst erection** | 64.5d | 2014-06-21 | 2014-09-04 |  | 2014-06-21 | 2014-09-04 | 64.5d | 20d |  |
| 516 | 6.2.3.1 | Receipt of all control valves, Transmitters, flowmeters, RTD, TG & PG | 10d | 2014-06-21 | 2014-07-02 | 485FS+150d | 2014-06-21 | 2014-07-02 | 10d | 57.5d | 35.5d |
| 517 | 6.2.3.2 | Fabrication of stancheon for remote mounted instruments | 4d | 2014-08-13 | 2014-08-18 | 503, 516 | 2014-08-13 | 2014-08-18 | 4d | 22d | 0d |
| 518 | 6.2.3.3 | Erection of stancheons at required place | 3d | 2014-08-18 | 2014-08-21 | 517 | 2014-08-18 | 2014-08-21 | 3d | 22d | 0d |
| 519 | 6.2.3.4 | Branch cable tray fabrication, erection | 5d | 2014-08-21 | 2014-08-27 | 518 | 2014-08-21 | 2014-08-27 | 5d | 22d | 0d |
| 520 | 6.2.3.5 | Branch cable laying & Termination at JB end | 5d | 2014-08-27 | 2014-09-02 | 519 | 2014-08-27 | 2014-09-02 | 5d | 22d |  |
| 521 | 6.2.3.6 | Installation of all field Instruments | 9d | 2014-08-25 | 2014-09-04 | 284FS-15d | 2014-08-25 | 2014-09-04 | 9d | 0d |  |
| 522 | 6.2.3.7 | Glanding &Termination branch cables of all field Instruments at Inst end | 5d | 2014-08-29 | 2014-09-04 | 521FS-5d | 2014-08-29 | 2014-09-04 | 5d | 15d | 0d |
| 523 | 6.2.4 | **Loop Check & Calibration** | 8d | 2014-09-04 | 2014-09-13 |  | 2014-09-04 | 2014-09-13 | 8d | 0d |  |
| 524 | 6.2.4.1 | Loop check of all instruments from field Inst end | 5d | 2014-09-04 | 2014-09-10 | 521, 522 | 2014-09-04 | 2014-09-10 | 5d | 15d |  |
| 525 | 6.2.4.2 | Calibration of all field Instruments | 5d | 2014-09-04 | 2014-09-10 | 521 | 2014-09-04 | 2014-09-10 | 5d | 0d |  |
| 526 | 6.2.4.3 | Calibration /Stroke check of all Control valves & On/Off valves from DCS | 2d | 2014-09-10 | 2014-09-12 | 525 | 2014-09-10 | 2014-09-12 | 2d | 0d |  |
| 527 | 6.2.4.4 | Tripchecks, Graphics modification etc | 1d | 2014-09-12 | 2014-09-13 | 526 | 2014-09-12 | 2014-09-13 | 1d | 0d |  |
