# EVAPORATION UNIT

Schedule from MS Project, 2012-12-17 to 2014-11-13, costs in रु.

## Calendars

- CAL Calendar: Mon-Sat 08:00-12:00, 13:00-17:00; Sun off.

## Resources

| Resource | Rate | Cost per use |
| --- | --- | --- |
| Bertrams Supply |  | 12354000 |
| KSJ Engg |  | 1400000 |
| Civil Desig |  | 400000 |
| P-1101 A/B |  | 478000 |
| P-1201 A/B |  | 1495194 |
| P-1301 A/B |  | 838377 |
| P-7102 A/B |  | 540000 |
| T-1201 |  | 148258 |
| T-7101 |  | 362978 |
| HE-1511 |  | 638972 |
| HE-1531 |  | 517266 |
| HE-1541 |  | 493521 |
| D-1101 |  | 400000 |
| D-1201 |  | 300000 |
| D-1301 |  | 300000 |
| Nickel Valve |  | 818612 |
| SS Valve |  | 277673 |
| Other Valve |  | 2148575 |
| PS Valve |  | 122534 |
| PC Valve |  | 200000 |
| CS Pipes & fittings |  | 1200000 |
| Ni pipes and fittings |  | 7139032 |
| Valve & Pipe supports |  | 1600000 |
| Waste water pit pump |  | 120000 |
| Gaskets |  | 200000 |
| Fasteners |  | 200000 |
| Strainers |  | 200000 |
| Safety shower |  | 80000 |
| Octobus crane |  | 120000 |
| MCC |  | 600000 |
| PDB & LDB |  | 48000 |
| Cables |  | 14285.7 |
| Cable tray |  | 160000 |
| LCP - FRP |  | 32000 |
| Earthing |  | 80000 |
| Lightening |  | 60000 |
| Structural |  | 80000 |
| Motors |  | 2857.14 |
| Light Fittings |  | 53333.3 |
| Controlvalves |  | 1198075 |
| Pr. Trans. |  | 236500 |
| Temp. Trans. |  | 315400 |
| Flow meters |  | 560550 |
| Sidemounted LT |  | 328623 |
| Rotameter |  | 227127 |
| Pr.switch |  | 60000 |
| Levelswitch |  | 269196 |
| Pr.gauge |  | 40000 |
| Temp.gauge |  | 120000 |
| RTD |  | 80000 |
| Radar LT |  | 1200352 |
| Cable |  | 120000 |
| MS Structurals for building | 13684.2 |  |
| Inspection |  | 1000000 |
| Misc. |  | 3342400 |
| Insulation | 13333.3 |  |
| Painting | 2500 |  |
| CS Piping. Erection | 2734.38 |  |
| Elect. Erection | 2083.33 |  |
| Inst. Erection | 711.11 |  |
| Bldg Fdn | 6748.5 |  |
| Eqpt Fdn | 1226.99 |  |
| z.Bertrams Supply |  |  |
| z.P-1101 A/B |  |  |
| z.P-1201 A/B |  |  |
| z.P-1301 A/B |  |  |
| z.P-7102 A/B |  |  |
| z.T-1201 |  |  |
| z.T-7101 |  |  |
| z.HE-1511 |  |  |
| z.HE-1531 |  |  |
| z.HE-1541 |  |  |
| z.D-1101 |  |  |
| z.D-1201 |  |  |
| z.D-1301 |  |  |
| z.Nickel Valve |  |  |
| z.SS Valve |  |  |
| z.Other Valve |  |  |
| z.PS Valve |  |  |
| z.PC Valve |  |  |
| z.CS Pipes & fittings |  |  |
| z.Ni pipes and fittings |  |  |
| z.Valve & Pipe supports |  |  |
| z.Waste water pit pump |  |  |
| z.Gaskets |  |  |
| z.Fasteners |  |  |
| z.Strainers |  |  |
| z.Safety shower |  |  |
| z.MCC |  |  |
| z.PDB & LDB |  |  |
| z.Cables |  |  |
| z.Cable tray |  |  |
| z.LCP - FRP |  |  |
| z.Earthing |  |  |
| z.Lightening |  |  |
| z.Structural |  |  |
| z.Motors |  |  |
| z.Light Fittings |  |  |
| z.Controlvalves |  |  |
| z.Pr. Trans. |  |  |
| z.Temp. Trans. |  |  |
| z.Flow meters |  |  |
| z.Sidemounted LT |  |  |
| z.Rotameter |  |  |
| z.Pr.switch |  |  |
| z.Levelswitch |  |  |
| z.Pr.gauge |  |  |
| z.Temp.gauge |  |  |
| z.RTD |  |  |
| z.Radar LT |  |  |
| z.Cable |  |  |
| SS Pipes & fittings |  | 1200000 |
| C-7101 |  | 2779693 |
| z.C-7101 |  |  |
| z.SS Pipes & fittings |  |  |
| Eqpt. Erection | 2840.91 |  |
| SS Piping. Erection | 5468.75 |  |
| Ni Piping. Erection | 3515.62 |  |

## Schedule

| ID | WBS | Task | Type | Duration | Start | Finish | Predecessors | Baseline start | Baseline finish | Baseline duration | Total slack | Free slack | Resources | Cost | Baseline cost |
| --- | --- | --- | --- | --- | --- | --- | --- | --- | --- | --- | --- | --- | --- | --- | --- |
| 1 | 1 | **Project Management** |  | 597.5d | 2012-12-17 | 2014-11-13 |  | 2012-12-17 | 2014-11-13 | 597.5d | 0d |  |  | 4,342,400 | 4,342,400 |
| 2 | 1.1 | **Project Initiation** |  | 434d | 2012-12-17 | 2014-05-06 |  | 2012-12-17 | 2014-05-06 | 434d | 0d |  |  |  |  |
| 3 | 1.1.1 | Project Zero Date | milestone | 0d | 2012-12-17 | 2012-12-17 |  | 2012-12-17 | 2012-12-17 |  | 0d |  |  |  |  |
| 4 | 1.1.2 | Develop Project Vision & objective |  | 1d | 2014-05-02 | 2014-05-02 | 3FS+430d | 2014-05-02 | 2014-05-02 | 1d | 52.5d | 0d |  |  |  |
| 5 | 1.1.3 | Develop Project Charter |  | 1d | 2014-05-03 | 2014-05-03 | 4 | 2014-05-03 | 2014-05-03 | 1d | 52.5d | 0d |  |  |  |
| 6 | 1.1.4 | Kick-Off Meeting between Bertrams and CAL |  | 2d | 2013-01-16 | 2013-01-17 | 3FS+26d | 2013-01-16 | 2013-01-17 | 2d | 0d |  |  |  |  |
| 7 | 1.1.5 | Identify Stakeholders |  | 1d | 2014-05-05 | 2014-05-05 | 5 | 2014-05-05 | 2014-05-05 | 1d | 52.5d | 0d |  |  |  |
| 8 | 1.1.6 | Internal Project kick-off Meeting |  | 1d | 2014-05-06 | 2014-05-06 | 7 | 2014-05-06 | 2014-05-06 | 1d | 52.5d | 0d |  |  |  |
| 9 | 1.2 | **Project planning** |  | 439d | 2012-12-17 | 2014-05-12 |  | 2014-05-07 | 2014-06-06 | 27d | 158.5d |  |  |  |  |
| 10 | 1.2.1 | Configuration Management Plan |  | 5d | 2014-05-07 | 2014-05-12 | 8 | 2014-05-07 | 2014-05-12 | 5d | 158.5d |  |  |  |  |
| 11 | 1.2.2 | Project Cost Estimation |  | 5d | 2012-12-17 | 2012-12-21 |  | 2014-05-21 | 2014-05-26 | 5d | 575.5d | 0d |  |  |  |
| 12 | 1.2.3 | Project Schedule |  | 7d | 2012-12-22 | 2012-12-29 | 11 | 2014-05-13 | 2014-05-20 | 7d | 575.5d | 0d |  |  |  |
| 13 | 1.2.4 | Scope management Plan |  | 2d | 2012-12-31 | 2013-01-01 | 11, 12 | 2014-05-27 | 2014-05-28 | 2d | 575.5d | 0d |  |  |  |
| 14 | 1.2.5 | Requirement Management Plan |  | 2d | 2013-01-02 | 2013-01-03 | 13 | 2014-05-29 | 2014-05-30 | 2d | 575.5d | 0d |  |  |  |
| 15 | 1.2.6 | Risk Management Plan |  | 2d | 2013-01-04 | 2013-01-05 | 14 | 2014-05-31 | 2014-06-02 | 2d | 575.5d | 0d |  |  |  |
| 16 | 1.2.7 | Communication management plan |  | 2d | 2013-01-07 | 2013-01-08 | 15 | 2014-06-03 | 2014-06-04 | 2d | 575.5d | 0d |  |  |  |
| 17 | 1.2.8 | Stakeholder Management Plan |  | 2d | 2013-01-09 | 2013-01-10 | 16 | 2014-06-05 | 2014-06-06 | 2d | 575.5d |  |  |  |  |
| 18 | 1.3 | **Statutory Approvals** |  | 112d | 2014-02-21 | 2014-07-01 |  | 2014-02-21 | 2014-07-01 | 112d | 0d |  |  |  |  |
| 19 | 1.3.1 | Approval from IOF |  | 112d | 2014-02-21 | 2014-07-01 | 6FS+342d | 2014-02-21 | 2014-07-01 | 112d | 4.5d | 0d |  |  |  |
| 20 | 1.3.2 | Receipt of Approval from IOF | milestone | 0d | 2014-07-01 | 2014-07-01 | 19 | 2014-07-01 | 2014-07-01 | 0d | 115.5d |  |  |  |  |
| 21 | 1.3.3 | Approval from PPA |  | 112d | 2014-02-21 | 2014-07-01 | 6FS+342d | 2014-02-21 | 2014-07-01 | 112d | 0d |  |  |  |  |
| 22 | 1.3.4 | Receipt of Approval from PPA | milestone | 0d | 2014-07-01 | 2014-07-01 | 21 | 2014-07-01 | 2014-07-01 | 0d | 0d |  |  |  |  |
| 23 | 1.4 | **Project Monitoring & Contriol** |  | 540d | 2012-12-17 | 2014-09-06 |  | 2012-12-17 | 2014-09-06 | 540d | 57.5d |  |  | 4,342,400 | 4,342,400 |
| 24 | 1.4.1 | Project Process Audits |  | 540d | 2012-12-17 | 2014-09-06 |  | 2012-12-17 | 2014-09-06 | 540d | 57.5d |  |  |  |  |
| 25 | 1.4.2 | Daily Reporting |  | 540d | 2012-12-17 | 2014-09-06 |  | 2012-12-17 | 2014-09-06 | 540d | 57.5d |  |  |  |  |
| 26 | 1.4.3 | Weekly Reporting |  | 540d | 2012-12-17 | 2014-09-06 |  | 2012-12-17 | 2014-09-06 | 540d | 57.5d |  |  |  |  |
| 27 | 1.4.4 | Monthly Reporting |  | 540d | 2012-12-17 | 2014-09-06 |  | 2012-12-17 | 2014-09-06 | 540d | 57.5d |  |  |  |  |
| 28 | 1.4.5 | Project Work Inspection |  | 540d | 2012-12-17 | 2014-09-06 |  | 2012-12-17 | 2014-09-06 | 540d | 57.5d |  | Inspection; Misc. | 4,342,400 | 4,342,400 |

| ID | WBS | Task | Type | Duration | Start | Finish | Predecessors | Baseline start | Baseline finish | Baseline duration | Total slack | Free slack | Resources | Cost | Baseline cost |
| --- | --- | --- | --- | --- | --- | --- | --- | --- | --- | --- | --- | --- | --- | --- | --- |
| 29 | 1.5 | **Project Closing** |  | 7d | 2014-11-05 | 2014-11-13 |  | 2014-11-05 | 2014-11-13 | 7d | 0d |  |  |  |  |
| 30 | 1.5.1 | Close all procurement contracts |  | 1d | 2014-11-05 | 2014-11-06 | 68 | 2014-11-05 | 2014-11-06 | 1d | 0d |  |  |  |  |
| 31 | 1.5.2 | Take sign-off from Stakeholders |  | 1d | 2014-11-06 | 2014-11-07 | 30 | 2014-11-06 | 2014-11-07 | 1d | 0d |  |  |  |  |
| 32 | 1.5.3 | Conduct Project closing sessions |  | 1d | 2014-11-07 | 2014-11-08 | 31 | 2014-11-07 | 2014-11-08 | 1d | 0d |  |  |  |  |
| 33 | 1.5.4 | Develop and share closure report with all stakeholders |  | 1d | 2014-11-08 | 2014-11-10 | 32 | 2014-11-08 | 2014-11-10 | 1d | 0d |  |  |  |  |
| 34 | 1.5.5 | Share lessons learnt to PMO |  | 1d | 2014-11-10 | 2014-11-11 | 33 | 2014-11-10 | 2014-11-11 | 1d | 0d |  |  |  |  |
| 35 | 1.5.6 | Archive all project documents |  | 1d | 2014-11-11 | 2014-11-12 | 34 | 2014-11-11 | 2014-11-12 | 1d | 0d |  |  |  |  |
| 36 | 1.5.7 | Release project resources |  | 1d | 2014-11-12 | 2014-11-13 | 35 | 2014-11-12 | 2014-11-13 | 1d | 0d |  |  |  |  |
| 37 | 1.5.8 | Close project | milestone | 0d | 2014-11-13 | 2014-11-13 | 36 | 2014-11-13 | 2014-11-13 |  | 0d |  |  |  |  |
| 38 | 2 | **Process** |  | 590.5d | 2012-12-17 | 2014-11-05 |  | 2012-12-17 | 2014-11-05 | 590.5d | 7d |  |  | 1,800,000 | 1,800,000 |
| 39 | 2.1 | **Procurement** |  | 527d | 2012-12-17 | 2014-08-22 |  | 2012-12-17 | 2014-08-22 | 527d | 70.5d |  |  | 1,800,000 | 1,800,000 |
| 40 | 2.1.1 | **Engineering** |  | 15d | 2014-08-06 | 2014-08-22 |  | 2014-08-06 | 2014-08-22 | 15d | 4.5d |  |  | 1,800,000 | 1,800,000 |
| 41 | 2.1.1.1 | Detailed Engineering |  | 15d | 2014-08-06 | 2014-08-22 | 19FS+30d | 2014-08-06 | 2014-08-22 | 15d | 4.5d | 0d | KSJ Engg; Civil Desig | 1,800,000 | 1,800,000 |
| 42 | 2.1.2 | **Equipments (Bertrams Supply)** |  | 300d | 2012-12-17 | 2013-11-30 |  | 2012-12-17 | 2013-11-30 | 300d | 297.5d |  |  |  |  |
| 43 | 2.1.2.1 | Purchase of EV-1101 - SS |  | 300d | 2012-12-17 | 2013-11-30 |  | 2012-12-17 | 2013-11-30 | 300d | 297.5d | 0d | z.Bertrams Supply |  |  |
| 44 | 2.1.2.2 | Receipt of EV-1101 at site | milestone | 0d | 2013-11-30 | 2013-11-30 | 43 | 2013-11-30 | 2013-11-30 | 0d | 297.5d |  |  |  |  |
| 45 | 2.1.2.3 | Purchase of EV-1201 - Ni/SS |  | 300d | 2012-12-17 | 2013-11-30 |  | 2012-12-17 | 2013-11-30 | 300d | 297.5d | 0d | z.Bertrams Supply |  |  |
| 46 | 2.1.2.4 | Receipt of EV-1201 at site | milestone | 0d | 2013-11-30 | 2013-11-30 | 45 | 2013-11-30 | 2013-11-30 | 0d | 297.5d |  |  |  |  |
| 47 | 2.1.2.5 | Purchase of EV-1301 - SS |  | 300d | 2012-12-17 | 2013-11-30 |  | 2012-12-17 | 2013-11-30 | 300d | 297.5d | 0d | z.Bertrams Supply |  |  |
| 48 | 2.1.2.6 | Receipt of EV-1301at site | milestone | 0d | 2013-11-30 | 2013-11-30 | 47 | 2013-11-30 | 2013-11-30 | 0d | 297.5d |  |  |  |  |
| 49 | 2.1.2.7 | Purchase of HE-1521 - Ni/CS |  | 300d | 2012-12-17 | 2013-11-30 |  | 2012-12-17 | 2013-11-30 | 300d | 297.5d | 0d | z.Bertrams Supply |  |  |
| 50 | 2.1.2.8 | Receipt of HE-1521at site | milestone | 0d | 2013-11-30 | 2013-11-30 | 49 | 2013-11-30 | 2013-11-30 | 0d | 297.5d | 0d |  |  |  |
| 51 | 2.1.2.9 | Purchase of HE-1551 - Ni/CS |  | 300d | 2012-12-17 | 2013-11-30 |  | 2012-12-17 | 2013-11-30 | 300d | 297.5d |  | z.Bertrams Supply |  |  |
| 52 | 2.1.2.10 | Receipt of HE-1551 at site | milestone | 0d | 2013-11-30 | 2013-11-30 | 50 | 2013-11-30 | 2013-11-30 | 0d | 297.5d |  |  |  |  |

| ID | WBS | Task | Type | Duration | Start | Finish | Predecessors | Baseline start | Baseline finish | Baseline duration | Total slack | Free slack | Resources | Work | Cost | Baseline cost |
| --- | --- | --- | --- | --- | --- | --- | --- | --- | --- | --- | --- | --- | --- | --- | --- | --- |
| 53 | 2.2 | **Commissioning** |  | 5d | 2014-10-30 | 2014-11-05 |  | 2014-10-30 | 2014-11-05 | 5d | 0d |  |  |  |  |  |
| 54 | 2.2.1 | Unit-1100 Evaporation First Effect |  | 5d | 2014-10-30 | 2014-11-05 | 278, 279, 280, 526 | 2014-10-30 | 2014-11-05 | 5d | 7d | 0d |  |  |  |  |
| 55 | 2.2.2 | Commissioning of Unit-1100 | milestone | 0d | 2014-11-05 | 2014-11-05 | 54 | 2014-11-05 | 2014-11-05 | 0d | 7d |  |  |  |  |  |
| 56 | 2.2.3 | Unit-1200 Evaporation Second Effect |  | 5d | 2014-10-30 | 2014-11-05 | 278, 279, 280, 526 | 2014-10-30 | 2014-11-05 | 5d | 7d | 0d |  |  |  |  |
| 57 | 2.2.4 | Commissioning of Unit-1200 | milestone | 0d | 2014-11-05 | 2014-11-05 | 56 | 2014-11-05 | 2014-11-05 | 0d | 7d |  |  |  |  |  |
| 58 | 2.2.5 | Unit-1300 Evaporation Third Effect |  | 5d | 2014-10-30 | 2014-11-05 | 278, 279, 280, 526 | 2014-10-30 | 2014-11-05 | 5d | 7d | 0d |  |  |  |  |
| 59 | 2.2.6 | Commissioning of Unit-1300 | milestone | 0d | 2014-11-05 | 2014-11-05 | 58 | 2014-11-05 | 2014-11-05 | 0d | 7d |  |  |  |  |  |
| 60 | 2.2.7 | Unit-1500 Heat Exchangers |  | 5d | 2014-10-30 | 2014-11-05 | 278, 279, 280, 526 | 2014-10-30 | 2014-11-05 | 5d | 7d | 0d |  |  |  |  |
| 61 | 2.2.8 | Commissioning of Unit-1500 | milestone | 0d | 2014-11-05 | 2014-11-05 | 60 | 2014-11-05 | 2014-11-05 | 0d | 7d |  |  |  |  |  |
| 62 | 2.2.9 | Unit-7100 Condensation / Vaccum System |  | 5d | 2014-10-30 | 2014-11-05 | 278, 279, 280, 526 | 2014-10-30 | 2014-11-05 | 5d | 7d | 0d |  |  |  |  |
| 63 | 2.2.10 | Commissioning of Unit-7100 | milestone | 0d | 2014-11-05 | 2014-11-05 | 62 | 2014-11-05 | 2014-11-05 | 0d | 7d |  |  |  |  |  |
| 64 | 2.2.11 | Unit-8200 Utilities (Others) |  | 5d | 2014-10-30 | 2014-11-05 | 278, 279, 280, 526 | 2014-10-30 | 2014-11-05 | 5d | 7d | 0d |  |  |  |  |
| 65 | 2.2.12 | Commissioning of Unit-8200 | milestone | 0d | 2014-11-05 | 2014-11-05 | 64 | 2014-11-05 | 2014-11-05 | 0d | 7d |  |  |  |  |  |
| 66 | 2.2.13 | Unit-9100 Utility Station / Safety Devices |  | 5d | 2014-10-30 | 2014-11-05 | 278, 279, 280, 526 | 2014-10-30 | 2014-11-05 | 5d | 0d |  |  |  |  |  |
| 67 | 2.2.14 | Commissioning of Unit-9100 | milestone | 0d | 2014-11-05 | 2014-11-05 | 66 | 2014-11-05 | 2014-11-05 | 0d | 0d |  |  |  |  |  |
| 68 | 2.2.15 | Completion of Commissioning activities | milestone | 0d | 2014-11-05 | 2014-11-05 | 67 | 2014-11-05 | 2014-11-05 | 0d | 0d |  |  |  |  |  |
| 69 | 3 | **Civil** |  | 83.5d | 2014-07-02 | 2014-10-07 |  | 2014-07-02 | 2014-10-07 | 83.5d | 2d |  |  | 1304h | 5,200,021.92 | 5,200,021.92 |
| 70 | 3.1 | **Procurement** |  | 8d | 2014-07-02 | 2014-07-10 |  | 2014-07-02 | 2014-07-10 | 8d | 107.5d |  |  |  |  |  |
| 71 | 3.1.1 | **Contract Finalization** |  | 8d | 2014-07-02 | 2014-07-10 |  | 2014-07-02 | 2014-07-10 | 8d | 107.5d |  |  |  |  |  |
| 72 | 3.1.1.1 | Civil - Column Foundation |  | 2d | 2014-07-02 | 2014-07-03 | 22 | 2014-07-02 | 2014-07-03 | 2d | 107.5d | 0d |  |  |  |  |
| 73 | 3.1.1.2 | Civil - Equipment Foundation |  | 2d | 2014-07-04 | 2014-07-05 | 72 | 2014-07-04 | 2014-07-05 | 2d | 107.5d | 0d |  |  |  |  |
| 74 | 3.1.1.3 | Civil - Wet Cooling Tower Foundation |  | 2d | 2014-07-07 | 2014-07-08 | 73 | 2014-07-07 | 2014-07-08 | 2d | 107.5d | 0d |  |  |  |  |
| 75 | 3.1.1.4 | Civil - Electrical related Civil Work |  | 2d | 2014-07-09 | 2014-07-10 | 74 | 2014-07-09 | 2014-07-10 | 2d | 107.5d |  |  |  |  |  |
| 76 | 3.2 | **Execution** |  | 81.5d | 2014-07-03 | 2014-10-07 |  | 2014-07-03 | 2014-10-07 | 81.5d | 0d |  | Bldg Fdn; Eqpt Fdn | 1304h | 5,200,021.92 | 5,200,021.92 |
| 77 | 3.2.1 | **Preparatory Works** |  | 6d | 2014-07-03 | 2014-07-10 |  | 2014-07-03 | 2014-07-10 | 6d | 0d |  |  |  |  |  |
| 78 | 3.2.1.1 | Mobilization of Materials and Labour | milestone | 0d | 2014-07-03 | 2014-07-03 | 22FS+2d | 2014-07-03 | 2014-07-03 | 0d | 0d |  |  |  |  |  |
| 79 | 3.2.1.2 | Site Clearing and Removal of Debris |  | 1d | 2014-07-04 | 2014-07-04 | 78 | 2014-07-04 | 2014-07-04 | 1d | 0d |  |  |  |  |  |
| 80 | 3.2.1.3 | Boundary Marking |  | 1d | 2014-07-05 | 2014-07-05 | 79 | 2014-07-05 | 2014-07-05 | 1d | 0d |  |  |  |  |  |
| 81 | 3.2.1.4 | Removal and Stacking of RR Stones |  | 2d | 2014-07-07 | 2014-07-08 | 80 | 2014-07-07 | 2014-07-08 | 2d | 0d |  |  |  |  |  |
| 82 | 3.2.1.5 | Foundation Centre line marking |  | 1d | 2014-07-09 | 2014-07-09 | 81 | 2014-07-09 | 2014-07-09 | 1d | 0d |  |  |  |  |  |
| 83 | 3.2.1.6 | Foundation Pit Marking |  | 1d | 2014-07-10 | 2014-07-10 | 82 | 2014-07-10 | 2014-07-10 | 1d | 0d |  |  |  |  |  |

| ID | WBS | Task | Duration | Start | Finish | Predecessors | Baseline start | Baseline finish | Baseline duration | Total slack | Free slack |
| --- | --- | --- | --- | --- | --- | --- | --- | --- | --- | --- | --- |
| 84 | 3.2.2 | **Excavation** | 4.5d | 2014-07-11 | 2014-07-16 |  | 2014-07-11 | 2014-07-16 | 4.5d | 0d |  |
| 85 | 3.2.2.1 | Excavation of Foundation Pits | 2d | 2014-07-11 | 2014-07-12 | 83 | 2014-07-11 | 2014-07-12 | 2d | 0d |  |
| 86 | 3.2.2.2 | Disposal of Excavated earth | 1d | 2014-07-14 | 2014-07-14 | 85 | 2014-07-14 | 2014-07-14 | 1d | 0d |  |
| 87 | 3.2.2.3 | Consolidation of Subgrade | 1d | 2014-07-15 | 2014-07-15 | 86 | 2014-07-15 | 2014-07-15 | 1d | 0d |  |
| 88 | 3.2.2.4 | Filling of River Sand | 0.5d | 2014-07-16 | 2014-07-16 | 87 | 2014-07-16 | 2014-07-16 | 0.5d | 0d |  |
| 89 | 3.2.3 | **Foundation Works** | 23.5d | 2014-07-07 | 2014-08-02 |  | 2014-07-07 | 2014-08-02 | 23.5d | 1.5d |  |
| 90 | 3.2.3.1 | Plain Cement Concrete Laying | 2d | 2014-07-16 | 2014-07-18 | 88 | 2014-07-16 | 2014-07-18 | 2d | 0d |  |
| 91 | 3.2.3.2 | Centreline Marking of Columns | 1d | 2014-07-18 | 2014-07-19 | 90 | 2014-07-18 | 2014-07-19 | 1d | 0d |  |
| 92 | 3.2.3.3 | Steel mat preparation | 10d | 2014-07-07 | 2014-07-17 | 80 | 2014-07-07 | 2014-07-17 | 10d | 1.5d |  |
| 93 | 3.2.3.4 | Erection of Steel mats and columns | 2d | 2014-07-19 | 2014-07-22 | 91, 92 | 2014-07-19 | 2014-07-22 | 2d | 0d |  |
| 94 | 3.2.3.5 | Side shuttering work | 1d | 2014-07-22 | 2014-07-23 | 93 | 2014-07-22 | 2014-07-23 | 1d | 0d |  |
| 95 | 3.2.3.6 | Mat concreting work | 2d | 2014-07-23 | 2014-07-25 | 94 | 2014-07-23 | 2014-07-25 | 2d | 0d |  |
| 96 | 3.2.3.7 | Curing Work | 7d | 2014-07-25 | 2014-08-02 | 95 | 2014-07-25 | 2014-08-02 | 7d | 88d |  |
| 97 | 3.2.4 | **Pedestal Works** | 15d | 2014-07-25 | 2014-08-12 |  | 2014-07-25 | 2014-08-12 | 15d | 0d |  |
| 98 | 3.2.4.1 | Column shoe marking | 1d | 2014-07-25 | 2014-07-26 | 95 | 2014-07-25 | 2014-07-26 | 1d | 0d |  |
| 99 | 3.2.4.2 | Column shoe laying | 1d | 2014-07-26 | 2014-07-28 | 98 | 2014-07-26 | 2014-07-28 | 1d | 93d |  |
| 100 | 3.2.4.3 | Column rigs fixing | 1d | 2014-07-26 | 2014-07-28 | 95, 98 | 2014-07-26 | 2014-07-28 | 1d | 0d |  |
| 101 | 3.2.4.4 | Shuttering for 1.2M Ht | 1d | 2014-07-28 | 2014-07-29 | 100 | 2014-07-28 | 2014-07-29 | 1d | 0d |  |
| 102 | 3.2.4.5 | Concreting for 1.2M Ht | 1d | 2014-07-29 | 2014-07-30 | 101 | 2014-07-29 | 2014-07-30 | 1d | 0d |  |
| 103 | 3.2.4.6 | Column Curing | 3d | 2014-07-30 | 2014-08-02 | 102 | 2014-07-30 | 2014-08-02 | 3d | 0d |  |
| 104 | 3.2.4.7 | Applying Bentolian Paint (2 Coats) | 1d | 2014-08-02 | 2014-08-04 | 103 | 2014-08-02 | 2014-08-04 | 1d | 87d |  |
| 105 | 3.2.4.8 | Rings tying upto 0M lvl | 1d | 2014-08-02 | 2014-08-04 | 103 | 2014-08-02 | 2014-08-04 | 1d | 67d | 0d |
| 106 | 3.2.4.9 | Shuttering for 2.4M Ht | 1d | 2014-08-04 | 2014-08-05 | 105 | 2014-08-04 | 2014-08-05 | 1d | 67d | 0d |
| 107 | 3.2.4.10 | Concreting for 2.4M Ht | 1d | 2014-08-05 | 2014-08-06 | 102, 106 | 2014-08-05 | 2014-08-06 | 1d | 67d | 0d |
| 108 | 3.2.4.11 | Column Curing | 3d | 2014-08-06 | 2014-08-09 | 107 | 2014-08-06 | 2014-08-09 | 3d | 67d | 0d |
| 109 | 3.2.4.12 | Applying Bentolian Paint upto Plinth Beam | 1d | 2014-08-09 | 2014-08-11 | 108 | 2014-08-09 | 2014-08-11 | 1d | 67d | 0d |
| 110 | 3.2.4.13 | refilling earth and consolidation upto Plinth Beam | 1d | 2014-08-11 | 2014-08-12 | 109 | 2014-08-11 | 2014-08-12 | 1d | 67d | 0d |

| ID | WBS | Task | Type | Duration | Start | Finish | Predecessors | Baseline start | Baseline finish | Baseline duration | Total slack | Free slack |
| --- | --- | --- | --- | --- | --- | --- | --- | --- | --- | --- | --- | --- |
| 111 | 3.2.5 | **Plinth Beam Works** |  | 24d | 2014-07-30 | 2014-08-27 |  | 2014-07-30 | 2014-08-27 | 24d | 67d |  |
| 112 | 3.2.5.1 | Earth excavation for Plinth Beam |  | 0.5d | 2014-08-12 | 2014-08-12 | 110 | 2014-08-12 | 2014-08-12 | 0.5d | 67d | 0d |
| 113 | 3.2.5.2 | Levelling and Earth Ramming |  | 0.5d | 2014-08-13 | 2014-08-13 | 112 | 2014-08-13 | 2014-08-13 | 0.5d | 67d | 0d |
| 114 | 3.2.5.3 | PCC Laying |  | 1d | 2014-08-13 | 2014-08-14 | 113 | 2014-08-13 | 2014-08-14 | 1d | 67d | 0d |
| 115 | 3.2.5.4 | Steel cage and beam marking |  | 1d | 2014-07-30 | 2014-07-31 | 102, 92 | 2014-07-30 | 2014-07-31 | 1d | 79d | 12d |
| 116 | 3.2.5.5 | positioning steel cage for Beam |  | 1d | 2014-08-14 | 2014-08-15 | 114, 115 | 2014-08-14 | 2014-08-15 | 1d | 67d | 0d |
| 117 | 3.2.5.6 | Side shuttering work |  | 1d | 2014-08-15 | 2014-08-16 | 116 | 2014-08-15 | 2014-08-16 | 1d | 67d | 0d |
| 118 | 3.2.5.7 | Concreting for Beams |  | 1d | 2014-08-16 | 2014-08-18 | 117 | 2014-08-16 | 2014-08-18 | 1d | 67d | 0d |
| 119 | 3.2.5.8 | Curing of Beams |  | 7d | 2014-08-18 | 2014-08-26 | 118 | 2014-08-18 | 2014-08-26 | 7d | 67d | 0d |
| 120 | 3.2.5.9 | Applying Bentolian Paint (2 Coats) |  | 1d | 2014-08-26 | 2014-08-27 | 118, 119 | 2014-08-26 | 2014-08-27 | 1d | 67d |  |
| 121 | 3.2.6 | **Foundation for Equipments** |  | 19.5d | 2014-08-27 | 2014-09-18 |  | 2014-08-27 | 2014-09-18 | 19.5d | 0.5d |  |
| 122 | 3.2.6.1 | Marking |  | 1d | 2014-08-27 | 2014-08-28 | 147 | 2014-08-27 | 2014-08-28 | 1d | 0.5d | 0d |
| 123 | 3.2.6.2 | Excavation |  | 1d | 2014-08-28 | 2014-08-29 | 122 | 2014-08-28 | 2014-08-29 | 1d | 0.5d | 0d |
| 124 | 3.2.6.3 | Levelling Work |  | 1d | 2014-08-29 | 2014-08-30 | 123 | 2014-08-29 | 2014-08-30 | 1d | 0.5d | 0d |
| 125 | 3.2.6.4 | Soling Work |  | 2d | 2014-08-30 | 2014-09-02 | 124 | 2014-08-30 | 2014-09-02 | 2d | 0.5d | 0d |
| 126 | 3.2.6.5 | PCC Laying |  | 1d | 2014-09-02 | 2014-09-03 | 125 | 2014-09-02 | 2014-09-03 | 1d | 0.5d | 0d |
| 127 | 3.2.6.6 | Steel cage making |  | 0.5d | 2014-09-03 | 2014-09-03 | 126 | 2014-09-03 | 2014-09-03 | 0.5d | 57.5d | 0d |
| 128 | 3.2.6.7 | Side shuttering work |  | 1d | 2014-09-04 | 2014-09-04 | 127 | 2014-09-04 | 2014-09-04 | 1d | 57.5d | 0d |
| 129 | 3.2.6.8 | Mat Concreting work |  | 1d | 2014-09-05 | 2014-09-05 | 128 | 2014-09-05 | 2014-09-05 | 1d | 57.5d | 0d |
| 130 | 3.2.6.9 | Pedestal marking works |  | 1d | 2014-09-06 | 2014-09-06 | 129 | 2014-09-06 | 2014-09-06 | 1d | 57.5d |  |
| 131 | 3.2.6.10 | Steel cage making |  | 1d | 2014-09-03 | 2014-09-04 | 126 | 2014-09-03 | 2014-09-04 | 1d | 0.5d | 0d |
| 132 | 3.2.6.11 | Side shuttering work |  | 1d | 2014-09-04 | 2014-09-05 | 131 | 2014-09-04 | 2014-09-05 | 1d | 0.5d | 0d |
| 133 | 3.2.6.12 | Concreting Work |  | 1d | 2014-09-05 | 2014-09-06 | 132 | 2014-09-05 | 2014-09-06 | 1d | 0.5d | 0d |
| 134 | 3.2.6.13 | Curing of Foundation |  | 7d | 2014-09-06 | 2014-09-15 | 133 | 2014-09-06 | 2014-09-15 | 7d | 0.5d | 0d |
| 135 | 3.2.6.14 | Applying Bentolian Paint |  | 1d | 2014-09-15 | 2014-09-16 | 134 | 2014-09-15 | 2014-09-16 | 1d | 0.5d | 0d |
| 136 | 3.2.6.15 | Refilling Work |  | 0.5d | 2014-09-16 | 2014-09-16 | 135 | 2014-09-16 | 2014-09-16 | 0.5d | 0.5d | 0d |
| 137 | 3.2.6.16 | Consolidation work |  | 2d | 2014-09-17 | 2014-09-18 | 136 | 2014-09-17 | 2014-09-18 | 2d | 0.5d | 0d |
| 138 | 3.2.6.17 | Completion of Equipment foundation | milestone | 0d | 2014-09-18 | 2014-09-18 | 137 | 2014-09-18 | 2014-09-18 | 0d | 0.5d | 0d |

| ID | WBS | Task | Type | Duration | Start | Finish | Predecessors | Baseline start | Baseline finish | Baseline duration | Total slack | Free slack |
| --- | --- | --- | --- | --- | --- | --- | --- | --- | --- | --- | --- | --- |
| 139 | 3.2.7 | **Foundation for Structures** |  | 25d | 2014-08-02 | 2014-09-01 |  | 2014-08-02 | 2014-09-01 | 25d | 0d |  |
| 140 | 3.2.7.1 | Supply of Foundation Bolts and Base Plates |  | 1d | 2014-08-02 | 2014-08-04 | 103 | 2014-08-02 | 2014-08-04 | 1d | 0d |  |
| 141 | 3.2.7.2 | Fixing and positioning of Foundation Bolts |  | 2d | 2014-08-04 | 2014-08-06 | 140 | 2014-08-04 | 2014-08-06 | 2d | 0d |  |
| 142 | 3.2.7.3 | Side shuttering work |  | 1d | 2014-08-06 | 2014-08-07 | 141 | 2014-08-06 | 2014-08-07 | 1d | 0d |  |
| 143 | 3.2.7.4 | Concreting Work |  | 1d | 2014-08-07 | 2014-08-08 | 142 | 2014-08-07 | 2014-08-08 | 1d | 0d |  |
| 144 | 3.2.7.5 | Removal of PVC Pipe Sleeves |  | 1d | 2014-08-08 | 2014-08-09 | 143 | 2014-08-08 | 2014-08-09 | 1d | 0d |  |
| 145 | 3.2.7.6 | Curing |  | 3d | 2014-08-09 | 2014-08-13 | 144 | 2014-08-09 | 2014-08-13 | 3d | 0d |  |
| 146 | 3.2.7.7 | De-shuttering for the Plinth Beam |  | 1d | 2014-08-13 | 2014-08-14 | 145 | 2014-08-13 | 2014-08-14 | 1d | 78d |  |
| 147 | 3.2.7.8 | Grouting of Foundation Bolts |  | 1d | 2014-08-26 | 2014-08-27 | 236 | 2014-08-26 | 2014-08-27 | 1d | 0.5d | 0d |
| 148 | 3.2.7.9 | Column Shoe marking |  | 1d | 2014-08-27 | 2014-08-28 | 147 | 2014-08-27 | 2014-08-28 | 1d | 14d | 0d |
| 149 | 3.2.7.10 | Column shoe laying |  | 1d | 2014-08-28 | 2014-08-29 | 148 | 2014-08-28 | 2014-08-29 | 1d | 14d | 0d |
| 150 | 3.2.7.11 | Side shuttering work |  | 1d | 2014-08-29 | 2014-08-30 | 149 | 2014-08-29 | 2014-08-30 | 1d | 14d | 0d |
| 151 | 3.2.7.12 | Column Concreting upto +300 mm |  | 1d | 2014-08-30 | 2014-09-01 | 150 | 2014-08-30 | 2014-09-01 | 1d | 14d | 0d |
| 152 | 3.2.7.13 | Completion of Structure foundation | milestone | 0d | 2014-09-01 | 2014-09-01 | 151 | 2014-09-01 | 2014-09-01 | 0d | 14d | 0d |
| 153 | 3.2.8 | **Dyke WallBuilding** |  | 14d | 2014-09-01 | 2014-09-17 |  | 2014-09-01 | 2014-09-17 | 14d | 14d |  |
| 154 | 3.2.8.1 | Earth refilling |  | 2d | 2014-09-01 | 2014-09-03 | 152 | 2014-09-01 | 2014-09-03 | 2d | 14d | 0d |
| 155 | 3.2.8.2 | Consolidating |  | 2d | 2014-09-03 | 2014-09-05 | 154 | 2014-09-03 | 2014-09-05 | 2d | 14d | 0d |
| 156 | 3.2.8.3 | Red Gravel filling |  | 1d | 2014-09-05 | 2014-09-06 | 155 | 2014-09-05 | 2014-09-06 | 1d | 14d | 0d |
| 157 | 3.2.8.4 | Consolidating |  | 1d | 2014-09-06 | 2014-09-08 | 156 | 2014-09-06 | 2014-09-08 | 1d | 14d | 0d |
| 158 | 3.2.8.5 | End wall marking |  | 1d | 2014-09-08 | 2014-09-09 | 157 | 2014-09-08 | 2014-09-09 | 1d | 14d | 0d |
| 159 | 3.2.8.6 | PCC Laying |  | 1d | 2014-09-09 | 2014-09-10 | 158 | 2014-09-09 | 2014-09-10 | 1d | 14d | 0d |
| 160 | 3.2.8.7 | Side Brick wall upto FFL |  | 4d | 2014-09-10 | 2014-09-15 | 159 | 2014-09-10 | 2014-09-15 | 4d | 14d | 0d |
| 161 | 3.2.8.8 | Earth / Crusheer powder / Riversand Filling |  | 1d | 2014-09-15 | 2014-09-16 | 160 | 2014-09-15 | 2014-09-16 | 1d | 14d | 0d |
| 162 | 3.2.8.9 | Consolidating |  | 1d | 2014-09-16 | 2014-09-17 | 161 | 2014-09-16 | 2014-09-17 | 1d | 14d | 0d |

| ID | WBS | Task | Duration | Start | Finish | Predecessors | Baseline start | Baseline finish | Baseline duration | Total slack | Free slack | Work | Cost | Baseline cost |
| --- | --- | --- | --- | --- | --- | --- | --- | --- | --- | --- | --- | --- | --- | --- |
| 163 | 3.2.9 | **Trench Works** | 9d | 2014-09-17 | 2014-09-27 |  | 2014-09-17 | 2014-09-27 | 9d | 14d |  |  |  |  |
| 164 | 3.2.9.1 | Marking of Trenches and Gutters | 1d | 2014-09-17 | 2014-09-18 | 162 | 2014-09-17 | 2014-09-18 | 1d | 14d | 0d |  |  |  |
| 165 | 3.2.9.2 | Soling Work | 1d | 2014-09-18 | 2014-09-19 | 164 | 2014-09-18 | 2014-09-19 | 1d | 14d | 0d |  |  |  |
| 166 | 3.2.9.3 | PCC Laying | 1d | 2014-09-19 | 2014-09-20 | 165 | 2014-09-19 | 2014-09-20 | 1d | 14d | 0d |  |  |  |
| 167 | 3.2.9.4 | HDPE Sheet Laying | 1d | 2014-09-20 | 2014-09-22 | 166 | 2014-09-20 | 2014-09-22 | 1d | 14d | 0d |  |  |  |
| 168 | 3.2.9.5 | Steel Mat making and Side Wall | 1d | 2014-09-22 | 2014-09-23 | 167 | 2014-09-22 | 2014-09-23 | 1d | 14d | 0d |  |  |  |
| 169 | 3.2.9.6 | Mat Concreting work | 1d | 2014-09-23 | 2014-09-24 | 168 | 2014-09-23 | 2014-09-24 | 1d | 14d | 0d |  |  |  |
| 170 | 3.2.9.7 | Side shuttering work | 1d | 2014-09-24 | 2014-09-25 | 169 | 2014-09-24 | 2014-09-25 | 1d | 14d | 0d |  |  |  |
| 171 | 3.2.9.8 | Concreting for Trench Sides | 2d | 2014-09-25 | 2014-09-27 | 170 | 2014-09-25 | 2014-09-27 | 2d | 14d | 0d |  |  |  |
| 172 | 3.2.10 | **Flooring Work** | 8d | 2014-09-27 | 2014-10-07 |  | 2014-09-27 | 2014-10-07 | 8d | 14d |  |  |  |  |
| 173 | 3.2.10.1 | PCC Laying | 2d | 2014-09-27 | 2014-09-30 | 171 | 2014-09-27 | 2014-09-30 | 2d | 14d | 0d |  |  |  |
| 174 | 3.2.10.2 | HDPE Sheet Laying | 1d | 2014-09-30 | 2014-10-01 | 173 | 2014-09-30 | 2014-10-01 | 1d | 14d | 0d |  |  |  |
| 175 | 3.2.10.3 | Steel Mat laying | 1d | 2014-10-01 | 2014-10-02 | 174 | 2014-10-01 | 2014-10-02 | 1d | 14d | 0d |  |  |  |
| 176 | 3.2.10.4 | Concreting the Floor | 2d | 2014-10-02 | 2014-10-04 | 175 | 2014-10-02 | 2014-10-04 | 2d | 14d | 0d |  |  |  |
| 177 | 3.2.10.5 | Grano-flooring at the Top | 2d | 2014-10-04 | 2014-10-07 | 176 | 2014-10-04 | 2014-10-07 | 2d | 14d | 0d |  |  |  |
| 178 | 3.2.11 | **Civil Work related to Electrical Items** | 14d | 2014-09-15 | 2014-10-01 |  | 2014-09-15 | 2014-10-01 | 14d | 31d |  |  |  |  |
| 179 | 3.2.11.1 | Excavation | 7d | 2014-09-15 | 2014-09-23 | 160 | 2014-09-15 | 2014-09-23 | 7d | 31d | 0d |  |  |  |
| 180 | 3.2.11.2 | Earth pit Brick wall Construction | 4d | 2014-09-26 | 2014-10-01 | 316 | 2014-09-26 | 2014-10-01 | 4d | 37d |  |  |  |  |
| 181 | 3.2.11.3 | Trench work | 1d | 2014-09-27 | 2014-09-29 | 171 | 2014-09-27 | 2014-09-29 | 1d | 35d | 4d |  |  |  |
| 182 | 4 | **Mechanical** | 108.5d | 2014-07-02 | 2014-11-05 |  | 2014-07-02 | 2014-11-05 | 108.5d | 4.5d |  | 1736h | 101,463,684.59 | 101,463,684.59 |
| 183 | 4.1 | **Procurement** | 30d | 2014-07-02 | 2014-08-05 |  | 2014-07-02 | 2014-08-05 | 30d | 4.5d |  |  |  |  |
| 184 | 4.1.1 | **Contractor Finalization** | 2d | 2014-07-02 | 2014-07-03 |  | 2014-07-02 | 2014-07-03 | 2d | 4.5d |  |  |  |  |
| 185 | 4.1.1.1 | Structural Fabrication and Erection Contractor | 2d | 2014-07-02 | 2014-07-03 | 8, 41FS-45d | 2014-07-02 | 2014-07-03 | 2d | 4.5d | 0d |  |  |  |
| 186 | 4.1.1.2 | Equipment Erection Contrator | 2d | 2014-07-02 | 2014-07-03 | 8, 41FS-45d | 2014-07-02 | 2014-07-03 | 2d | 113.5d |  |  |  |  |
| 187 | 4.1.1.3 | Piping Erection Contractor - CS | 2d | 2014-07-02 | 2014-07-03 | 8, 41FS-45d | 2014-07-02 | 2014-07-03 | 2d | 71.5d | 68.5d |  |  |  |
| 188 | 4.1.1.4 | Piping Erection Contractor - SS | 2d | 2014-07-02 | 2014-07-03 | 8, 41FS-45d | 2014-07-02 | 2014-07-03 | 2d | 113.5d |  |  |  |  |
| 189 | 4.1.1.5 | Piping Erection Contractor - GI | 2d | 2014-07-02 | 2014-07-03 | 8, 41FS-45d | 2014-07-02 | 2014-07-03 | 2d | 113.5d |  |  |  |  |
| 190 | 4.1.1.6 | Piping Erection Contractor - Ni | 2d | 2014-07-02 | 2014-07-03 | 8, 41FS-45d | 2014-07-02 | 2014-07-03 | 2d | 113.5d |  |  |  |  |
| 191 | 4.1.1.7 | Piping Erection Contractor - Non-metallic | 2d | 2014-07-02 | 2014-07-03 | 8, 41FS-45d | 2014-07-02 | 2014-07-03 | 2d | 113.5d |  |  |  |  |

| ID | WBS | Task | Duration | Start | Finish | Predecessors | Baseline start | Baseline finish | Baseline duration | Total slack | Resources |
| --- | --- | --- | --- | --- | --- | --- | --- | --- | --- | --- | --- |
| 192 | 4.1.2 | **Equipment Procurement (CAL Supply)** | 30d | 2014-07-02 | 2014-08-05 |  | 2014-07-02 | 2014-08-05 | 30d | 85.5d |  |
| 193 | 4.1.2.1 | Purchase of D-1101 | 30d | 2014-07-02 | 2014-08-05 | 41FS-45d, 8 | 2014-07-02 | 2014-08-05 | 30d | 85.5d | z.D-1101 |
| 194 | 4.1.2.2 | Purchase of P-1101 A/B | 15d | 2014-07-02 | 2014-07-18 | 41FS-45d, 8 | 2014-07-02 | 2014-07-18 | 15d | 100.5d | z.P-1101 A/B |
| 195 | 4.1.2.3 | Purchase of D-1201 | 30d | 2014-07-02 | 2014-08-05 | 41FS-45d, 8 | 2014-07-02 | 2014-08-05 | 30d | 85.5d | z.D-1201 |
| 196 | 4.1.2.4 | Purchase of P-1201 A/B | 15d | 2014-07-02 | 2014-07-18 | 41FS-45d, 8 | 2014-07-02 | 2014-07-18 | 15d | 100.5d | z.P-1201 A/B |
| 197 | 4.1.2.5 | Purchase of T-1201 | 30d | 2014-07-02 | 2014-08-05 | 41FS-45d, 8 | 2014-07-02 | 2014-08-05 | 30d | 85.5d | z.T-1201 |
| 198 | 4.1.2.6 | Purchase of D-1301 | 30d | 2014-07-02 | 2014-08-05 | 41FS-45d, 8 | 2014-07-02 | 2014-08-05 | 30d | 85.5d | z.D-1301 |
| 199 | 4.1.2.7 | Purchase of P-1301 A/B | 15d | 2014-07-02 | 2014-07-18 | 41FS-45d, 8 | 2014-07-02 | 2014-07-18 | 15d | 100.5d | z.P-1301 A/B |
| 200 | 4.1.2.8 | Purchase of HE-1511 | 30d | 2014-07-02 | 2014-08-05 | 41FS-45d, 8 | 2014-07-02 | 2014-08-05 | 30d | 85.5d | z.HE-1511 |
| 201 | 4.1.2.9 | Purchase of HE-1531 | 30d | 2014-07-02 | 2014-08-05 | 41FS-45d, 8 | 2014-07-02 | 2014-08-05 | 30d | 85.5d | z.HE-1531 |
| 202 | 4.1.2.10 | Purchase of HE-1541 | 30d | 2014-07-02 | 2014-08-05 | 41FS-45d, 8 | 2014-07-02 | 2014-08-05 | 30d | 85.5d | z.HE-1541 |
| 203 | 4.1.2.11 | Purchase of T-7101 | 30d | 2014-07-02 | 2014-08-05 | 41FS-45d, 8 | 2014-07-02 | 2014-08-05 | 30d | 85.5d | z.T-7101 |
| 204 | 4.1.2.12 | Purchase of P-7102 A/B | 15d | 2014-07-02 | 2014-07-18 | 41FS-45d, 8 | 2014-07-02 | 2014-07-18 | 15d | 100.5d | z.P-7102 A/B |
| 205 | 4.1.2.13 | Purchase of C-7101 | 15d | 2014-07-02 | 2014-07-18 | 41FS-45d, 8 | 2014-07-02 | 2014-07-18 | 15d | 100.5d | z.C-7101 |
| 206 | 4.1.3 | **Procurement of Pipes & Fittings** | 10d | 2014-07-02 | 2014-07-12 |  | 2014-07-02 | 2014-07-12 | 10d | 105.5d |  |
| 207 | 4.1.3.1 | Purchase of Pipes & Fittings - CS | 10d | 2014-07-02 | 2014-07-12 | 41FS-45d, 8 | 2014-07-02 | 2014-07-12 | 10d | 105.5d | z.CS Pipes & fittings |
| 208 | 4.1.3.2 | Purchase of Pipes & Fittings - SS | 10d | 2014-07-02 | 2014-07-12 | 41FS-45d, 8 | 2014-07-02 | 2014-07-12 | 10d | 105.5d | z.SS Pipes & fittings |
| 209 | 4.1.3.3 | Purchase of Pipes & Fittings - Ni | 10d | 2014-07-02 | 2014-07-12 | 41FS-45d, 8 | 2014-07-02 | 2014-07-12 | 10d | 105.5d | z.Ni pipes and fittings |
| 210 | 4.1.3.4 | Purchase of Ni Plug Valves - 26 Nos | 10d | 2014-07-02 | 2014-07-12 | 41FS-45d, 8 | 2014-07-02 | 2014-07-12 | 10d | 105.5d | z.Nickel Valve |
| 211 | 4.1.3.5 | Purchase of SS Plug Valves - 33 Nos | 10d | 2014-07-02 | 2014-07-12 | 41FS-45d, 8 | 2014-07-02 | 2014-07-12 | 10d | 105.5d | z.SS Valve |
| 212 | 4.1.3.6 | Purchase of Other Type Valves | 10d | 2014-07-02 | 2014-07-12 | 41FS-45d, 8 | 2014-07-02 | 2014-07-12 | 10d | 105.5d | z.Other Valve |
| 213 | 4.1.3.7 | Purchase of PSV - 4 Nos | 10d | 2014-07-02 | 2014-07-12 | 41FS-45d, 8 | 2014-07-02 | 2014-07-12 | 10d | 105.5d | z.PS Valve |
| 214 | 4.1.3.8 | Purchase of PCV | 10d | 2014-07-02 | 2014-07-12 | 41FS-45d, 8 | 2014-07-02 | 2014-07-12 | 10d | 105.5d | z.PC Valve |
| 215 | 4.1.3.9 | Purchase of Strainers | 10d | 2014-07-02 | 2014-07-12 | 41FS-45d, 8 | 2014-07-02 | 2014-07-12 | 10d | 105.5d | z.Strainers |
| 216 | 4.1.3.10 | Purchase of Gaskets | 10d | 2014-07-02 | 2014-07-12 | 41FS-45d, 8 | 2014-07-02 | 2014-07-12 | 10d | 105.5d | z.Gaskets |
| 217 | 4.1.3.11 | Purchase of Fasteners | 10d | 2014-07-02 | 2014-07-12 | 41FS-45d, 8 | 2014-07-02 | 2014-07-12 | 10d | 105.5d | z.Fasteners |
| 218 | 4.1.3.12 | Purchase of Waste water pit pump | 10d | 2014-07-02 | 2014-07-12 | 41FS-45d, 8 | 2014-07-02 | 2014-07-12 | 10d | 105.5d | z.Waste water pit pump |
| 219 | 4.1.3.13 | Purchase of Valve & Pipe Supports | 10d | 2014-07-02 | 2014-07-12 | 41FS-45d, 8 | 2014-07-02 | 2014-07-12 | 10d | 105.5d | z.Valve & Pipe supports |
| 220 | 4.1.3.14 | Purchase of Cooling Water Pump - 2 nos. | 10d | 2014-07-02 | 2014-07-12 | 41FS-45d, 8 | 2014-07-02 | 2014-07-12 | 10d | 105.5d |  |
| 221 | 4.1.3.15 | Purchase of Safety Showers | 10d | 2014-07-02 | 2014-07-12 | 41FS-45d, 8 | 2014-07-02 | 2014-07-12 | 10d | 105.5d | z.Safety shower |
| 222 | 4.1.3.16 | Hiring of Octopus Crane | 10d | 2014-07-02 | 2014-07-12 | 41FS-45d, 8 | 2014-07-02 | 2014-07-12 | 10d | 105.5d |  |
| 223 | 4.1.3.17 | Purchase of Paints | 10d | 2014-07-02 | 2014-07-12 | 41FS-45d, 8 | 2014-07-02 | 2014-07-12 | 10d | 105.5d |  |
| 224 | 4.1.3.18 | Purchase of Anchor Fasteners | 10d | 2014-07-02 | 2014-07-12 | 41FS-45d, 8 | 2014-07-02 | 2014-07-12 | 10d | 105.5d |  |
| 225 | 4.1.3.19 | Purchase of Insulation (Hot / Cold) | 10d | 2014-07-02 | 2014-07-12 | 41FS-45d, 8 | 2014-07-02 | 2014-07-12 | 10d | 105.5d |  |
| 226 | 4.1.3.20 | Purchase of Grease | 10d | 2014-07-02 | 2014-07-12 | 41FS-45d, 8 | 2014-07-02 | 2014-07-12 | 10d | 105.5d |  |
| 227 | 4.1.3.21 | Purchase of Foundation Bolts | 10d | 2014-07-02 | 2014-07-12 | 41FS-45d, 8 | 2014-07-02 | 2014-07-12 | 10d | 105.5d |  |

| ID | WBS | Task | Type | Duration | Start | Finish | Predecessors | Baseline start | Baseline finish | Baseline duration | Total slack | Free slack | Resources | Work | Cost | Baseline cost |
| --- | --- | --- | --- | --- | --- | --- | --- | --- | --- | --- | --- | --- | --- | --- | --- | --- |
| 228 | 4.2 | **Execution** |  | 106.5d | 2014-07-04 | 2014-11-05 |  | 2014-07-04 | 2014-11-05 | 106.5d | 4.5d |  |  | 1736h | 101,463,684.59 | 101,463,684.59 |
| 229 | 4.2.1 | **Structural Fabrication & Erection** |  | 96.5d | 2014-07-04 | 2014-10-24 |  | 2014-07-04 | 2014-10-24 | 96.5d | 4.5d |  |  | 760h | 10,399,999.6 | 10,399,999.6 |
| 230 | 4.2.1.1 | Pre-Fabrication of Structures (Vendor's Place) |  | 30d | 2014-07-04 | 2014-08-07 | 185, 19 | 2014-07-04 | 2014-08-07 | 30d | 4.5d | 0d |  |  |  |  |
| 231 | 4.2.1.2 | Receipt of Pre-fabricated Structures |  | 20d | 2014-07-16 | 2014-08-07 | 230FS-20d | 2014-07-16 | 2014-08-07 | 20d | 4.5d | 0d |  |  |  |  |
| 232 | 4.2.1.3 | Mobilization of Erection Team | milestone | 0d | 2014-07-16 | 2014-07-16 | 231FS-20d | 2014-07-16 | 2014-07-16 | 0d | 103.5d |  |  |  |  |  |
| 233 | 4.2.1.4 | Foundation Checks |  | 2d | 2014-08-13 | 2014-08-15 | 231, 145 | 2014-08-13 | 2014-08-15 | 2d | 0d |  |  |  |  |  |
| 234 | 4.2.1.5 | Erection of Columns (Grid A) |  | 3d | 2014-08-15 | 2014-08-19 | 233 | 2014-08-15 | 2014-08-19 | 3d | 0d |  | MS Structurals for building | 24h | 328,421.04 | 328,421.04 |
| 235 | 4.2.1.6 | Erection of Columns (Grid B) |  | 3d | 2014-08-19 | 2014-08-22 | 234 | 2014-08-19 | 2014-08-22 | 3d | 0.5d | 0d | MS Structurals for building | 24h | 328,421.04 | 328,421.04 |
| 236 | 4.2.1.7 | Erection of Columns (Grid C) |  | 3d | 2014-08-22 | 2014-08-26 | 235 | 2014-08-22 | 2014-08-26 | 3d | 0.5d | 0d | MS Structurals for building | 24h | 328,421.04 | 328,421.04 |
| 237 | 4.2.1.8 | Erection of Tie Beams - EL+5.000M Lvl |  | 3d | 2014-08-19 | 2014-08-22 | 234 | 2014-08-19 | 2014-08-22 | 3d | 0d |  | MS Structurals for building | 24h | 328,421.04 | 328,421.04 |
| 238 | 4.2.1.9 | Erection of Tie Beams - EL+7.000M Lvl |  | 3d | 2014-08-22 | 2014-08-26 | 237 | 2014-08-22 | 2014-08-26 | 3d | 0d |  | MS Structurals for building | 24h | 328,421.04 | 328,421.04 |
| 239 | 4.2.1.10 | Erection of Tie Beams - EL+13.500M Lvl |  | 3d | 2014-08-26 | 2014-08-29 | 238 | 2014-08-26 | 2014-08-29 | 3d | 0d |  | MS Structurals for building | 24h | 328,421.04 | 328,421.04 |
| 240 | 4.2.1.11 | Erection of Tie Beams - EL+20.400M Lvl |  | 3d | 2014-08-29 | 2014-09-02 | 239 | 2014-08-29 | 2014-09-02 | 3d | 0d |  | MS Structurals for building | 24h | 328,421.04 | 328,421.04 |
| 241 | 4.2.1.12 | Erection of Floor Beams - EL+5.000M Lvl |  | 5d | 2014-09-02 | 2014-09-08 | 240 | 2014-09-02 | 2014-09-08 | 5d | 0d |  | MS Structurals for building | 40h | 547,368.4 | 547,368.4 |
| 242 | 4.2.1.13 | Erection of Floor Beams - EL+7.000M Lvl |  | 5d | 2014-09-08 | 2014-09-13 | 241 | 2014-09-08 | 2014-09-13 | 5d | 0d |  | MS Structurals for building | 40h | 547,368.4 | 547,368.4 |
| 243 | 4.2.1.14 | Erection of Floor Beams - EL+13.500M Lvl |  | 5d | 2014-09-13 | 2014-09-19 | 242 | 2014-09-13 | 2014-09-19 | 5d | 0d |  | MS Structurals for building | 40h | 547,368.4 | 547,368.4 |
| 244 | 4.2.1.15 | Erection of Floor Beams - EL+20.400M Lvl |  | 5d | 2014-09-19 | 2014-09-25 | 243 | 2014-09-19 | 2014-09-25 | 5d | 30d | 0d | MS Structurals for building | 40h | 547,368.4 | 547,368.4 |
| 245 | 4.2.1.16 | Erection of Chequered Plates - EL+5.000M Lvl |  | 3d | 2014-09-08 | 2014-09-11 | 241 | 2014-09-08 | 2014-09-11 | 3d | 35d | 0d | MS Structurals for building | 24h | 328,421.04 | 328,421.04 |
| 246 | 4.2.1.17 | Erection of Chequered Plates - EL+7.000M Lvl |  | 3d | 2014-09-13 | 2014-09-17 | 242 | 2014-09-13 | 2014-09-17 | 3d | 49d |  | MS Structurals for building | 24h | 328,421.04 | 328,421.04 |
| 247 | 4.2.1.18 | Erection of Chequered Plates - EL+13.500M Lvl |  | 3d | 2014-09-19 | 2014-09-23 | 243 | 2014-09-19 | 2014-09-23 | 3d | 44d |  | MS Structurals for building | 24h | 328,421.04 | 328,421.04 |
| 248 | 4.2.1.19 | Erection of Chequered Plates - EL+20.400M Lvl |  | 3d | 2014-09-25 | 2014-09-29 | 244 | 2014-09-25 | 2014-09-29 | 3d | 39d |  | MS Structurals for building | 24h | 328,421.04 | 328,421.04 |
| 249 | 4.2.1.20 | Erection of Bracings - EL+5.000M Lvl |  | 3d | 2014-09-25 | 2014-09-29 | 244 | 2014-09-25 | 2014-09-29 | 3d | 30d | 0d | MS Structurals for building | 24h | 328,421.04 | 328,421.04 |
| 250 | 4.2.1.21 | Erection of Bracings - EL+7.000M Lvl |  | 3d | 2014-09-29 | 2014-10-02 | 249 | 2014-09-29 | 2014-10-02 | 3d | 30d | 0d | MS Structurals for building | 24h | 328,421.04 | 328,421.04 |
| 251 | 4.2.1.22 | Erection of Bracings - EL+13.500M Lvl |  | 3d | 2014-10-02 | 2014-10-06 | 250 | 2014-10-02 | 2014-10-06 | 3d | 30d | 0d | MS Structurals for building | 24h | 328,421.04 | 328,421.04 |
| 252 | 4.2.1.23 | Erection of Bracings - EL+20.400M Lvl |  | 3d | 2014-10-06 | 2014-10-09 | 251 | 2014-10-06 | 2014-10-09 | 3d | 30d |  | MS Structurals for building | 24h | 328,421.04 | 328,421.04 |
| 253 | 4.2.1.24 | Erection of Staircase |  | 15d | 2014-09-19 | 2014-10-07 | 243 | 2014-09-19 | 2014-10-07 | 15d | 7d | 0d | MS Structurals for building | 120h | 1,642,105.2 | 1,642,105.2 |
| 254 | 4.2.1.25 | Erection of Handrails |  | 15d | 2014-10-07 | 2014-10-24 | 253 | 2014-10-07 | 2014-10-24 | 15d | 7d | 0d | MS Structurals for building | 120h | 1,642,105.2 | 1,642,105.2 |
| 255 | 4.2.1.26 | Completion of Structure Erection | milestone | 0d | 2014-10-24 | 2014-10-24 | 254 | 2014-10-24 | 2014-10-24 |  | 7d | 0d | MS Structurals for building |  |  |  |

| ID | WBS | Task | Type | Duration | Start | Finish | Predecessors | Baseline start | Baseline finish | Baseline duration | Total slack | Free slack | Resources | Work | Cost | Baseline cost |
| --- | --- | --- | --- | --- | --- | --- | --- | --- | --- | --- | --- | --- | --- | --- | --- | --- |
| 256 | 4.2.2 | **Equipment Erection** |  | 4.5d | 2014-09-19 | 2014-09-24 |  | 2014-09-19 | 2014-09-24 | 4.5d | 0.5d |  |  | 176h | 71,682,258.94 | 71,682,258.94 |
| 257 | 4.2.2.1 | Erection of EV-1101 |  | 1d | 2014-09-19 | 2014-09-20 | 243, 138 | 2014-09-19 | 2014-09-20 | 1d | 0d |  | Bertrams Supply; Eqpt. Erection | 8h | 12,376,727.27 | 12,376,727.27 |
| 258 | 4.2.2.2 | Erection of D-1101 |  | 2d | 2014-09-20 | 2014-09-23 | 257, 138 | 2014-09-20 | 2014-09-23 | 2d | 44d |  | D-1101; Eqpt. Erection | 16h | 445,454.54 | 445,454.54 |
| 259 | 4.2.2.3 | Erection of P-1101 A/B |  | 1d | 2014-09-19 | 2014-09-19 | 138 | 2014-09-19 | 2014-09-19 | 1d | 40.5d | 0d | P-1101 A/B; Eqpt. Erection | 8h | 500,727.27 | 500,727.27 |
| 260 | 4.2.2.4 | Erection of EV-1201 |  | 1d | 2014-09-19 | 2014-09-20 | 243, 138 | 2014-09-19 | 2014-09-20 | 1d | 43d | 0d | Bertrams Supply; Eqpt. Erection | 8h | 12,376,727.27 | 12,376,727.27 |
| 261 | 4.2.2.5 | Erection of D-1201 |  | 2d | 2014-09-20 | 2014-09-23 | 260, 138 | 2014-09-20 | 2014-09-23 | 2d | 43d | 0d | D-1201; Eqpt. Erection | 16h | 345,454.54 | 345,454.54 |
| 262 | 4.2.2.6 | Erection of P-1201 A/B |  | 1d | 2014-09-19 | 2014-09-19 | 233, 138 | 2014-09-19 | 2014-09-19 | 1d | 40.5d | 0d | P-1201 A/B; Eqpt. Erection | 8h | 1,517,921.27 | 1,517,921.27 |
| 263 | 4.2.2.7 | Erection of T-1201 |  | 1d | 2014-09-23 | 2014-09-24 | 261, 138 | 2014-09-23 | 2014-09-24 | 1d | 43d |  | T-1201; Eqpt. Erection | 8h | 170,985.27 | 170,985.27 |
| 264 | 4.2.2.8 | Erection of EV-1301 |  | 1d | 2014-09-19 | 2014-09-20 | 243, 138 | 2014-09-19 | 2014-09-20 | 1d | 44d | 0d | Bertrams Supply; Eqpt. Erection | 8h | 12,376,727.27 | 12,376,727.27 |
| 265 | 4.2.2.9 | Erection of D-1301 |  | 2d | 2014-09-20 | 2014-09-23 | 264, 138 | 2014-09-20 | 2014-09-23 | 2d | 44d |  | D-1301; Eqpt. Erection | 16h | 345,454.54 | 345,454.54 |
| 266 | 4.2.2.10 | Erection of P-1301 A/B |  | 1d | 2014-09-19 | 2014-09-19 | 233, 138 | 2014-09-19 | 2014-09-19 | 1d | 40.5d | 0d | P-1301 A/B; Eqpt. Erection | 8h | 861,104.27 | 861,104.27 |
| 267 | 4.2.2.11 | Erection of HE-1511 |  | 1d | 2014-09-19 | 2014-09-20 | 243, 138 | 2014-09-19 | 2014-09-20 | 1d | 1d |  | HE-1511; Eqpt. Erection | 8h | 661,699.27 | 661,699.27 |
| 268 | 4.2.2.12 | Erection of HE-1521 |  | 1d | 2014-09-19 | 2014-09-20 | 243, 138 | 2014-09-19 | 2014-09-20 | 1d | 46d |  | Bertrams Supply; Eqpt. Erection | 8h | 12,376,727.27 | 12,376,727.27 |
| 269 | 4.2.2.13 | Erection of HE-1531 |  | 1d | 2014-09-19 | 2014-09-20 | 243, 138 | 2014-09-19 | 2014-09-20 | 1d | 46d |  | HE-1531; Eqpt. Erection | 8h | 539,993.27 | 539,993.27 |
| 270 | 4.2.2.14 | Erection of HE-1541 |  | 1d | 2014-09-19 | 2014-09-20 | 243, 138 | 2014-09-19 | 2014-09-20 | 1d | 46d |  | HE-1541; Eqpt. Erection | 8h | 516,248.27 | 516,248.27 |
| 271 | 4.2.2.15 | Erection of HE-1551 |  | 1d | 2014-09-19 | 2014-09-20 | 243, 138 | 2014-09-19 | 2014-09-20 | 1d | 46d |  | Bertrams Supply; Eqpt. Erection | 8h | 12,376,727.27 | 12,376,727.27 |
| 272 | 4.2.2.16 | Erection of T-7101 |  | 1d | 2014-09-19 | 2014-09-19 | 233, 138 | 2014-09-19 | 2014-09-19 | 1d | 46.5d |  | T-7101; Eqpt. Erection | 8h | 385,705.27 | 385,705.27 |
| 273 | 4.2.2.17 | Erection of P-7101 A/B |  | 1d | 2014-09-19 | 2014-09-19 | 234, 138 | 2014-09-19 | 2014-09-19 | 1d | 40.5d | 0d | Eqpt. Erection | 8h | 22,727.27 | 22,727.27 |
| 274 | 4.2.2.18 | Erection of P-7102 A/B |  | 1d | 2014-09-19 | 2014-09-19 | 234, 138 | 2014-09-19 | 2014-09-19 | 1d | 40.5d | 1.5d | P-7102 A/B; Eqpt. Erection | 8h | 562,727.27 | 562,727.27 |
| 275 | 4.2.2.19 | Erection of C-7101 |  | 1d | 2014-09-20 | 2014-09-22 | 138, 257 | 2014-09-20 | 2014-09-22 | 1d | 0d |  | C-7101; Eqpt. Erection | 8h | 2,802,420.27 | 2,802,420.27 |
| 276 | 4.2.2.20 | Completion of Equipment Erection | milestone | 0d | 2014-09-22 | 2014-09-22 | 275 | 2014-09-22 | 2014-09-22 | 0d | 0d |  | Octobus crane |  | 120,000 | 120,000 |
| 277 | 4.2.3 | **Piping Erection** |  | 38d | 2014-09-22 | 2014-11-05 |  | 2014-09-22 | 2014-11-05 | 38d | 0d |  |  | 800h | 19,381,426.05 | 19,381,426.05 |
| 278 | 4.2.3.1 | Erection of CS Piping |  | 30d | 2014-09-22 | 2014-10-27 | 187, 276 | 2014-09-22 | 2014-10-27 | 30d | 3d |  | CS Pipes & fittings; Other Valve; PS Valve; Gaskets; Valve & Pipe supports; CS Piping. Erection | 240h | 5,927,359 | 5,927,359 |
| 279 | 4.2.3.2 | Erection of SS Piping |  | 15d | 2014-09-22 | 2014-10-09 | 257, 276 | 2014-09-22 | 2014-10-09 | 15d | 18d |  | SS Pipes & fittings; SS Valve; PC Valve; Strainers; Fasteners; Safety shower; Waste water pit pump; SS Piping. Erection | 120h | 2,933,923 | 2,933,923 |
| 280 | 4.2.3.3 | Erection of NI Piping |  | 20d | 2014-09-22 | 2014-10-15 | 267, 276 | 2014-09-22 | 2014-10-15 | 20d | 0d |  | Ni pipes and fittings; Nickel Valve; Ni Piping. Erection | 160h | 8,520,144 | 8,520,144 |
| 281 | 4.2.3.4 | Erection of Insultions |  | 15d | 2014-10-15 | 2014-11-01 | 280 | 2014-10-15 | 2014-11-01 | 15d | 0d |  | Insulation | 120h | 1,600,000.05 | 1,600,000.05 |
| 282 | 4.2.3.5 | Painting of Piping & Structures |  | 20d | 2014-10-13 | 2014-11-05 | 255FS-10d | 2014-10-13 | 2014-11-05 | 20d | 7d | 0d | Painting | 160h | 400,000 | 400,000 |
| 283 | 4.2.3.6 | Completion of Piping Erection | milestone | 0d | 2014-11-05 | 2014-11-05 | 282 | 2014-11-05 | 2014-11-05 | 0d | 7d |  |  |  |  |  |

| ID | WBS | Task | Duration | Start | Finish | Predecessors | Baseline start | Baseline finish | Baseline duration | Total slack | Free slack | Resources | Work | Cost | Baseline cost |
| --- | --- | --- | --- | --- | --- | --- | --- | --- | --- | --- | --- | --- | --- | --- | --- |
| 284 | 5 | **Electrical** | 145.5d | 2014-05-07 | 2014-10-23 |  | 2014-05-07 | 2014-10-23 | 145.5d | 18d |  |  | 288h | 2,419,999.66 | 2,419,999.66 |
| 285 | 5.1 | **Procurement** | 84d | 2014-05-07 | 2014-08-12 |  | 2014-05-07 | 2014-08-12 | 84d | 71.5d |  |  |  |  |  |
| 286 | 5.1.1 | **MCC Panels** | 73d | 2014-05-07 | 2014-07-30 |  | 2014-05-07 | 2014-07-30 | 73d | 71.5d |  |  |  |  |  |
| 287 | 5.1.1.1 | Preparation of Tech Spec. & BOQ | 1d | 2014-05-07 | 2014-05-07 | 8 | 2014-05-07 | 2014-05-07 | 1d | 71.5d | 0d |  |  |  |  |
| 288 | 5.1.1.2 | Raising Indent | 1d | 2014-05-08 | 2014-05-08 | 287 | 2014-05-08 | 2014-05-08 | 1d | 71.5d | 0d |  |  |  |  |
| 289 | 5.1.1.3 | Floating enquiry and getting offers | 12d | 2014-05-09 | 2014-05-22 | 288 | 2014-05-09 | 2014-05-22 | 12d | 71.5d | 0d |  |  |  |  |
| 290 | 5.1.1.4 | Techno-commercial negotiation | 7d | 2014-05-23 | 2014-05-30 | 289 | 2014-05-23 | 2014-05-30 | 7d | 71.5d | 0d |  |  |  |  |
| 291 | 5.1.1.5 | Management approval & ordering | 3d | 2014-05-31 | 2014-06-03 | 290 | 2014-05-31 | 2014-06-03 | 3d | 71.5d | 0d |  |  |  |  |
| 292 | 5.1.1.6 | Receipt of drawing from supplier & approval | 7d | 2014-06-04 | 2014-06-11 | 291 | 2014-06-04 | 2014-06-11 | 7d | 71.5d | 0d |  |  |  |  |
| 293 | 5.1.1.7 | Delivery of MCC panel | 42d | 2014-06-12 | 2014-07-30 | 292 | 2014-06-12 | 2014-07-30 | 42d | 71.5d | 36.5d | z.Motors; z.MCC |  |  |  |
| 294 | 5.1.2 | **LT Cables and Trays** | 61d | 2014-05-07 | 2014-07-16 |  | 2014-05-07 | 2014-07-16 | 61d | 102.5d |  |  |  |  |  |
| 295 | 5.1.2.1 | Preparation of Tech Spec. & BOQ | 30d | 2014-05-07 | 2014-06-10 | 8 | 2014-05-07 | 2014-06-10 | 30d | 102.5d | 0d |  |  |  |  |
| 296 | 5.1.2.2 | Raising Indent | 1d | 2014-06-11 | 2014-06-11 | 295 | 2014-06-11 | 2014-06-11 | 1d | 102.5d | 0d |  |  |  |  |
| 297 | 5.1.2.3 | Floating enquiry and getting offers | 12d | 2014-06-12 | 2014-06-25 | 296 | 2014-06-12 | 2014-06-25 | 12d | 102.5d | 0d |  |  |  |  |
| 298 | 5.1.2.4 | Techno-commercial negotiation | 7d | 2014-06-26 | 2014-07-03 | 297 | 2014-06-26 | 2014-07-03 | 7d | 102.5d | 0d |  |  |  |  |
| 299 | 5.1.2.5 | Management approval & ordering | 3d | 2014-07-04 | 2014-07-07 | 298 | 2014-07-04 | 2014-07-07 | 3d | 102.5d | 0d |  |  |  |  |
| 300 | 5.1.2.6 | Receipt of drawing from supplier & approval | 3d | 2014-07-08 | 2014-07-10 | 299 | 2014-07-08 | 2014-07-10 | 3d | 107.5d |  |  |  |  |  |
| 301 | 5.1.2.7 | Delivery of LT Cables and Trays | 8d | 2014-07-08 | 2014-07-16 | 298, 299 | 2014-07-08 | 2014-07-16 | 8d | 102.5d |  | z.Cables; z.Cable tray; z.PDB & LDB; z.LCP - FRP |  |  |  |
| 302 | 5.1.3 | **Lighting materials** | 84d | 2014-05-07 | 2014-08-12 |  | 2014-05-07 | 2014-08-12 | 84d | 79.5d |  |  |  |  |  |
| 303 | 5.1.3.1 | Preparation of Tech Spec. & BOQ | 30d | 2014-05-07 | 2014-06-10 | 8 | 2014-05-07 | 2014-06-10 | 30d | 79.5d | 0d |  |  |  |  |
| 304 | 5.1.3.2 | Raising Indent | 1d | 2014-06-11 | 2014-06-11 | 303 | 2014-06-11 | 2014-06-11 | 1d | 79.5d | 0d |  |  |  |  |
| 305 | 5.1.3.3 | Floating enquiry and getting offers | 12d | 2014-06-12 | 2014-06-25 | 304 | 2014-06-12 | 2014-06-25 | 12d | 79.5d | 0d |  |  |  |  |
| 306 | 5.1.3.4 | Techno-commercial negotiation | 7d | 2014-06-26 | 2014-07-03 | 305 | 2014-06-26 | 2014-07-03 | 7d | 79.5d | 0d |  |  |  |  |
| 307 | 5.1.3.5 | Management approval & ordering | 3d | 2014-07-04 | 2014-07-07 | 306 | 2014-07-04 | 2014-07-07 | 3d | 79.5d | 0d |  |  |  |  |
| 308 | 5.1.3.6 | Receipt of drawing from supplier & approval | 3d | 2014-07-08 | 2014-07-10 | 307 | 2014-07-08 | 2014-07-10 | 3d | 79.5d | 0d |  |  |  |  |
| 309 | 5.1.3.7 | Delivery of Lighting materials | 28d | 2014-07-11 | 2014-08-12 | 307, 308 | 2014-07-11 | 2014-08-12 | 28d | 79.5d |  | z.Earthing; z.Lightening; z.Light Fittings; z.Structural |  |  |  |

| ID | WBS | Task | Duration | Start | Finish | Predecessors | Baseline start | Baseline finish | Baseline duration | Total slack | Free slack | Resources | Work | Cost | Baseline cost |
| --- | --- | --- | --- | --- | --- | --- | --- | --- | --- | --- | --- | --- | --- | --- | --- |
| 310 | 5.2 | **Execution** | 36d | 2014-09-11 | 2014-10-23 |  | 2014-09-11 | 2014-10-23 | 36d | 18d |  | Elect. Erection | 288h | 2,419,999.66 | 2,419,999.66 |
| 311 | 5.2.1 | **Erection of MCC Panel** | 6d | 2014-09-11 | 2014-09-18 |  | 2014-09-11 | 2014-09-18 | 6d | 35d |  |  |  | 680,000 | 680,000 |
| 312 | 5.2.1.1 | Base Frame Fabrication for MCC Panel | 2d | 2014-09-11 | 2014-09-13 | 293, 19, 22, 245 | 2014-09-11 | 2014-09-13 | 2d | 35d | 0d |  |  |  |  |
| 313 | 5.2.1.2 | Erection of Base Frame | 1d | 2014-09-13 | 2014-09-15 | 312 | 2014-09-13 | 2014-09-15 | 1d | 35d | 0d | Structural |  | 80,000 | 80,000 |
| 314 | 5.2.1.3 | Erection of MCC Panel | 3d | 2014-09-15 | 2014-09-18 | 313 | 2014-09-15 | 2014-09-18 | 3d | 35d | 4d | MCC |  | 600,000 | 600,000 |
| 315 | 5.2.2 | **Earth Pit Construction** | 9d | 2014-09-23 | 2014-10-03 |  | 2014-09-23 | 2014-10-03 | 9d | 31d |  |  |  |  |  |
| 316 | 5.2.2.1 | Erection of CI pipe with GI Flat | 3d | 2014-09-23 | 2014-09-26 | 179, 314 | 2014-09-23 | 2014-09-26 | 3d | 31d | 0d |  |  |  |  |
| 317 | 5.2.2.2 | Filling of Coal and Salt | 1d | 2014-09-26 | 2014-09-27 | 316 | 2014-09-26 | 2014-09-27 | 1d | 31d | 0d |  |  |  |  |
| 318 | 5.2.2.3 | Connecting Earthflats to Cable Trays | 5d | 2014-09-27 | 2014-10-03 | 317 | 2014-09-27 | 2014-10-03 | 5d | 31d | 0d |  |  |  |  |
| 319 | 5.2.3 | **Cable Tray** | 4d | 2014-10-03 | 2014-10-08 |  | 2014-10-03 | 2014-10-08 | 4d | 31d |  |  |  | 332,000 | 332,000 |
| 320 | 5.2.3.1 | Fabrication of Cable Tray Supports | 2d | 2014-10-03 | 2014-10-06 | 181, 318 | 2014-10-03 | 2014-10-06 | 2d | 31d | 0d |  |  |  |  |
| 321 | 5.2.3.2 | Laying of Cable Trays | 1d | 2014-10-06 | 2014-10-07 | 320 | 2014-10-06 | 2014-10-07 | 1d | 31d | 0d | Cable tray; LCP - FRP |  | 192,000 | 192,000 |
| 322 | 5.2.3.3 | laying of Earth flats along with Trays | 1d | 2014-10-07 | 2014-10-08 | 321 | 2014-10-07 | 2014-10-08 | 1d | 31d |  | Earthing; Lightening |  | 140,000 | 140,000 |
| 323 | 5.2.4 | **Pump Motors** | 20.5d | 2014-09-20 | 2014-10-14 |  | 2014-09-20 | 2014-10-14 | 20.5d | 26d |  |  |  | 439,999.56 | 439,999.56 |
| 324 | 5.2.4.1 | **P-1101 A - Pump for Caustic Lye (36%)** | 19.5d | 2014-09-20 | 2014-10-13 |  | 2014-09-20 | 2014-10-13 | 19.5d | 27d |  |  |  | 31,428.54 | 31,428.54 |
| 325 | 5.2.4.1.1 | Erection of Motor | 1d | 2014-09-20 | 2014-09-20 | 259 | 2014-09-20 | 2014-09-20 | 1d | 40.5d | 13.5d | Motors |  | 2,857.14 | 2,857.14 |
| 326 | 5.2.4.1.2 | Erection of Push Button Station | 1d | 2014-10-07 | 2014-10-08 | 325, 177 | 2014-10-07 | 2014-10-08 | 1d | 27d | 0d |  |  |  |  |
| 327 | 5.2.4.1.3 | Power Cable Laying | 1d | 2014-10-08 | 2014-10-09 | 326 | 2014-10-08 | 2014-10-09 | 1d | 27d | 0d | Cables |  | 14,285.7 | 14,285.7 |
| 328 | 5.2.4.1.4 | Control Cable Laying | 1d | 2014-10-09 | 2014-10-10 | 327 | 2014-10-09 | 2014-10-10 | 1d | 27d | 0d | Cables |  | 14,285.7 | 14,285.7 |
| 329 | 5.2.4.1.5 | Termination of Power & Control Cables | 1d | 2014-10-10 | 2014-10-11 | 328 | 2014-10-10 | 2014-10-11 | 1d | 27d | 0d |  |  |  |  |
| 330 | 5.2.4.1.6 | No Load Trail | 1d | 2014-10-11 | 2014-10-13 | 329 | 2014-10-11 | 2014-10-13 | 1d | 27d |  |  |  |  |  |
| 331 | 5.2.4.2 | **P-1101 B - Pump for Caustic Lye (36%)** | 19.5d | 2014-09-20 | 2014-10-13 |  | 2014-09-20 | 2014-10-13 | 19.5d | 27d |  |  |  | 31,428.54 | 31,428.54 |
| 332 | 5.2.4.2.1 | Erection of Motor | 1d | 2014-09-20 | 2014-09-20 | 259 | 2014-09-20 | 2014-09-20 | 1d | 40.5d | 13.5d | Motors |  | 2,857.14 | 2,857.14 |
| 333 | 5.2.4.2.2 | Erection of Push Button Station | 1d | 2014-10-07 | 2014-10-08 | 332, 177 | 2014-10-07 | 2014-10-08 | 1d | 27d | 0d |  |  |  |  |
| 334 | 5.2.4.2.3 | Power Cable Laying | 1d | 2014-10-08 | 2014-10-09 | 333 | 2014-10-08 | 2014-10-09 | 1d | 27d | 0d | Cables |  | 14,285.7 | 14,285.7 |
| 335 | 5.2.4.2.4 | Control Cable Laying | 1d | 2014-10-09 | 2014-10-10 | 334 | 2014-10-09 | 2014-10-10 | 1d | 27d | 0d | Cables |  | 14,285.7 | 14,285.7 |
| 336 | 5.2.4.2.5 | Termination of Power & Control Cables | 1d | 2014-10-10 | 2014-10-11 | 335 | 2014-10-10 | 2014-10-11 | 1d | 27d | 0d |  |  |  |  |
| 337 | 5.2.4.2.6 | No Load Trail | 1d | 2014-10-11 | 2014-10-13 | 336 | 2014-10-11 | 2014-10-13 | 1d | 27d |  |  |  |  |  |

| ID | WBS | Task | Duration | Start | Finish | Predecessors | Baseline start | Baseline finish | Baseline duration | Total slack | Free slack | Resources | Cost | Baseline cost |
| --- | --- | --- | --- | --- | --- | --- | --- | --- | --- | --- | --- | --- | --- | --- |
| 338 | 5.2.4.3 | **P-1201 A - Pump for Caustic Lye (41%)** | 19.5d | 2014-09-20 | 2014-10-13 |  | 2014-09-20 | 2014-10-13 | 19.5d | 27d |  |  | 31,428.54 | 31,428.54 |
| 339 | 5.2.4.3.1 | Erection of Motor | 1d | 2014-09-20 | 2014-09-20 | 262 | 2014-09-20 | 2014-09-20 | 1d | 40.5d | 13.5d | Motors | 2,857.14 | 2,857.14 |
| 340 | 5.2.4.3.2 | Erection of Push Button Station | 1d | 2014-10-07 | 2014-10-08 | 339, 177 | 2014-10-07 | 2014-10-08 | 1d | 27d | 0d |  |  |  |
| 341 | 5.2.4.3.3 | Power Cable Laying | 1d | 2014-10-08 | 2014-10-09 | 340 | 2014-10-08 | 2014-10-09 | 1d | 27d | 0d | Cables | 14,285.7 | 14,285.7 |
| 342 | 5.2.4.3.4 | Control Cable Laying | 1d | 2014-10-09 | 2014-10-10 | 341 | 2014-10-09 | 2014-10-10 | 1d | 27d | 0d | Cables | 14,285.7 | 14,285.7 |
| 343 | 5.2.4.3.5 | Termination of Power & Control Cables | 1d | 2014-10-10 | 2014-10-11 | 342 | 2014-10-10 | 2014-10-11 | 1d | 27d | 0d |  |  |  |
| 344 | 5.2.4.3.6 | No Load Trail | 1d | 2014-10-11 | 2014-10-13 | 343 | 2014-10-11 | 2014-10-13 | 1d | 27d |  |  |  |  |
| 345 | 5.2.4.4 | **P-1201 B - Pump for Caustic Lye (41%)** | 19.5d | 2014-09-20 | 2014-10-13 |  | 2014-09-20 | 2014-10-13 | 19.5d | 27d |  |  | 31,428.54 | 31,428.54 |
| 346 | 5.2.4.4.1 | Erection of Motor | 1d | 2014-09-20 | 2014-09-20 | 262 | 2014-09-20 | 2014-09-20 | 1d | 40.5d | 13.5d | Motors | 2,857.14 | 2,857.14 |
| 347 | 5.2.4.4.2 | Erection of Push Button Station | 1d | 2014-10-07 | 2014-10-08 | 346, 177 | 2014-10-07 | 2014-10-08 | 1d | 27d | 0d |  |  |  |
| 348 | 5.2.4.4.3 | Power Cable Laying | 1d | 2014-10-08 | 2014-10-09 | 347 | 2014-10-08 | 2014-10-09 | 1d | 27d | 0d | Cables | 14,285.7 | 14,285.7 |
| 349 | 5.2.4.4.4 | Control Cable Laying | 1d | 2014-10-09 | 2014-10-10 | 348 | 2014-10-09 | 2014-10-10 | 1d | 27d | 0d | Cables | 14,285.7 | 14,285.7 |
| 350 | 5.2.4.4.5 | Termination of Power & Control Cables | 1d | 2014-10-10 | 2014-10-11 | 349 | 2014-10-10 | 2014-10-11 | 1d | 27d | 0d |  |  |  |
| 351 | 5.2.4.4.6 | No Load Trail | 1d | 2014-10-11 | 2014-10-13 | 350 | 2014-10-11 | 2014-10-13 | 1d | 27d |  |  |  |  |
| 352 | 5.2.4.5 | **P-1301 A - Pump for Caustic Lye (48%)** | 19.5d | 2014-09-20 | 2014-10-13 |  | 2014-09-20 | 2014-10-13 | 19.5d | 27d |  |  | 31,428.54 | 31,428.54 |
| 353 | 5.2.4.5.1 | Erection of Motor | 1d | 2014-09-20 | 2014-09-20 | 266 | 2014-09-20 | 2014-09-20 | 1d | 40.5d | 13.5d | Motors | 2,857.14 | 2,857.14 |
| 354 | 5.2.4.5.2 | Erection of Push Button Station | 1d | 2014-10-07 | 2014-10-08 | 353, 177 | 2014-10-07 | 2014-10-08 | 1d | 27d | 0d |  |  |  |
| 355 | 5.2.4.5.3 | Power Cable Laying | 1d | 2014-10-08 | 2014-10-09 | 354 | 2014-10-08 | 2014-10-09 | 1d | 27d | 0d | Cables | 14,285.7 | 14,285.7 |
| 356 | 5.2.4.5.4 | Control Cable Laying | 1d | 2014-10-09 | 2014-10-10 | 355 | 2014-10-09 | 2014-10-10 | 1d | 27d | 0d | Cables | 14,285.7 | 14,285.7 |
| 357 | 5.2.4.5.5 | Termination of Power & Control Cables | 1d | 2014-10-10 | 2014-10-11 | 356 | 2014-10-10 | 2014-10-11 | 1d | 27d | 0d |  |  |  |
| 358 | 5.2.4.5.6 | No Load Trail | 1d | 2014-10-11 | 2014-10-13 | 357 | 2014-10-11 | 2014-10-13 | 1d | 27d |  |  |  |  |
| 359 | 5.2.4.6 | **P-1301 B - Pump for Caustic Lye (48%)** | 19.5d | 2014-09-20 | 2014-10-13 |  | 2014-09-20 | 2014-10-13 | 19.5d | 27d |  |  | 31,428.54 | 31,428.54 |
| 360 | 5.2.4.6.1 | Erection of Motor | 1d | 2014-09-20 | 2014-09-20 | 266 | 2014-09-20 | 2014-09-20 | 1d | 40.5d | 13.5d | Motors | 2,857.14 | 2,857.14 |
| 361 | 5.2.4.6.2 | Erection of Push Button Station | 1d | 2014-10-07 | 2014-10-08 | 360, 177 | 2014-10-07 | 2014-10-08 | 1d | 27d | 0d |  |  |  |
| 362 | 5.2.4.6.3 | Power Cable Laying | 1d | 2014-10-08 | 2014-10-09 | 361 | 2014-10-08 | 2014-10-09 | 1d | 27d | 0d | Cables | 14,285.7 | 14,285.7 |
| 363 | 5.2.4.6.4 | Control Cable Laying | 1d | 2014-10-09 | 2014-10-10 | 362 | 2014-10-09 | 2014-10-10 | 1d | 27d | 0d | Cables | 14,285.7 | 14,285.7 |
| 364 | 5.2.4.6.5 | Termination of Power & Control Cables | 1d | 2014-10-10 | 2014-10-11 | 363 | 2014-10-10 | 2014-10-11 | 1d | 27d | 0d |  |  |  |
| 365 | 5.2.4.6.6 | No Load Trail | 1d | 2014-10-11 | 2014-10-13 | 364 | 2014-10-11 | 2014-10-13 | 1d | 27d |  |  |  |  |

| ID | WBS | Task | Duration | Start | Finish | Predecessors | Baseline start | Baseline finish | Baseline duration | Total slack | Free slack | Resources | Cost | Baseline cost |
| --- | --- | --- | --- | --- | --- | --- | --- | --- | --- | --- | --- | --- | --- | --- |
| 366 | 5.2.4.7 | **P-7101 A - Pump for Vapour Condensate** | 19.5d | 2014-09-20 | 2014-10-13 |  | 2014-09-20 | 2014-10-13 | 19.5d | 27d |  |  | 31,428.54 | 31,428.54 |
| 367 | 5.2.4.7.1 | Erection of Motor | 1d | 2014-09-20 | 2014-09-20 | 273 | 2014-09-20 | 2014-09-20 | 1d | 40.5d | 13.5d | Motors | 2,857.14 | 2,857.14 |
| 368 | 5.2.4.7.2 | Erection of Push Button Station | 1d | 2014-10-07 | 2014-10-08 | 367, 177 | 2014-10-07 | 2014-10-08 | 1d | 27d | 0d |  |  |  |
| 369 | 5.2.4.7.3 | Power Cable Laying | 1d | 2014-10-08 | 2014-10-09 | 368 | 2014-10-08 | 2014-10-09 | 1d | 27d | 0d | Cables | 14,285.7 | 14,285.7 |
| 370 | 5.2.4.7.4 | Control Cable Laying | 1d | 2014-10-09 | 2014-10-10 | 369 | 2014-10-09 | 2014-10-10 | 1d | 27d | 0d | Cables | 14,285.7 | 14,285.7 |
| 371 | 5.2.4.7.5 | Termination of Power & Control Cables | 1d | 2014-10-10 | 2014-10-11 | 370 | 2014-10-10 | 2014-10-11 | 1d | 27d | 0d |  |  |  |
| 372 | 5.2.4.7.6 | No Load Trail | 1d | 2014-10-11 | 2014-10-13 | 371 | 2014-10-11 | 2014-10-13 | 1d | 27d |  |  |  |  |
| 373 | 5.2.4.8 | **P-7101 B - Pump for Vapour Condensate** | 19.5d | 2014-09-20 | 2014-10-13 |  | 2014-09-20 | 2014-10-13 | 19.5d | 27d |  |  | 31,428.54 | 31,428.54 |
| 374 | 5.2.4.8.1 | Erection of Motor | 1d | 2014-09-20 | 2014-09-20 | 273 | 2014-09-20 | 2014-09-20 | 1d | 40.5d | 13.5d | Motors | 2,857.14 | 2,857.14 |
| 375 | 5.2.4.8.2 | Erection of Push Button Station | 1d | 2014-10-07 | 2014-10-08 | 374, 177 | 2014-10-07 | 2014-10-08 | 1d | 27d | 0d |  |  |  |
| 376 | 5.2.4.8.3 | Power Cable Laying | 1d | 2014-10-08 | 2014-10-09 | 375 | 2014-10-08 | 2014-10-09 | 1d | 27d | 0d | Cables | 14,285.7 | 14,285.7 |
| 377 | 5.2.4.8.4 | Control Cable Laying | 1d | 2014-10-09 | 2014-10-10 | 376 | 2014-10-09 | 2014-10-10 | 1d | 27d | 0d | Cables | 14,285.7 | 14,285.7 |
| 378 | 5.2.4.8.5 | Termination of Power & Control Cables | 1d | 2014-10-10 | 2014-10-11 | 377 | 2014-10-10 | 2014-10-11 | 1d | 27d | 0d |  |  |  |
| 379 | 5.2.4.8.6 | No Load Trail | 1d | 2014-10-11 | 2014-10-13 | 378 | 2014-10-11 | 2014-10-13 | 1d | 27d |  |  |  |  |
| 380 | 5.2.4.9 | **P-7102 A - Pump for Water ring Vaccum** | 18d | 2014-09-22 | 2014-10-13 |  | 2014-09-22 | 2014-10-13 | 18d | 27d |  |  | 31,428.54 | 31,428.54 |
| 381 | 5.2.4.9.1 | Erection of Motor | 1d | 2014-09-22 | 2014-09-23 | 274, 275 | 2014-09-22 | 2014-09-23 | 1d | 39d | 12d | Motors | 2,857.14 | 2,857.14 |
| 382 | 5.2.4.9.2 | Erection of Push Button Station | 1d | 2014-10-07 | 2014-10-08 | 381, 177 | 2014-10-07 | 2014-10-08 | 1d | 27d | 0d |  |  |  |
| 383 | 5.2.4.9.3 | Power Cable Laying | 1d | 2014-10-08 | 2014-10-09 | 382 | 2014-10-08 | 2014-10-09 | 1d | 27d | 0d | Cables | 14,285.7 | 14,285.7 |
| 384 | 5.2.4.9.4 | Control Cable Laying | 1d | 2014-10-09 | 2014-10-10 | 383 | 2014-10-09 | 2014-10-10 | 1d | 27d | 0d | Cables | 14,285.7 | 14,285.7 |
| 385 | 5.2.4.9.5 | Termination of Power & Control Cables | 1d | 2014-10-10 | 2014-10-11 | 384 | 2014-10-10 | 2014-10-11 | 1d | 27d | 0d |  |  |  |
| 386 | 5.2.4.9.6 | No Load Trail | 1d | 2014-10-11 | 2014-10-13 | 385 | 2014-10-11 | 2014-10-13 | 1d | 27d |  |  |  |  |
| 387 | 5.2.4.10 | **P-7102 B - Pump for Water ring Vaccum** | 18d | 2014-09-22 | 2014-10-13 |  | 2014-09-22 | 2014-10-13 | 18d | 27d |  |  | 31,428.54 | 31,428.54 |
| 388 | 5.2.4.10.1 | Erection of Motor | 1d | 2014-09-22 | 2014-09-23 | 274, 275 | 2014-09-22 | 2014-09-23 | 1d | 39d | 12d | Motors | 2,857.14 | 2,857.14 |
| 389 | 5.2.4.10.2 | Erection of Push Button Station | 1d | 2014-10-07 | 2014-10-08 | 388, 177 | 2014-10-07 | 2014-10-08 | 1d | 27d | 0d |  |  |  |
| 390 | 5.2.4.10.3 | Power Cable Laying | 1d | 2014-10-08 | 2014-10-09 | 389 | 2014-10-08 | 2014-10-09 | 1d | 27d | 0d | Cables | 14,285.7 | 14,285.7 |
| 391 | 5.2.4.10.4 | Control Cable Laying | 1d | 2014-10-09 | 2014-10-10 | 390 | 2014-10-09 | 2014-10-10 | 1d | 27d | 0d | Cables | 14,285.7 | 14,285.7 |
| 392 | 5.2.4.10.5 | Termination of Power & Control Cables | 1d | 2014-10-10 | 2014-10-11 | 391 | 2014-10-10 | 2014-10-11 | 1d | 27d | 0d |  |  |  |
| 393 | 5.2.4.10.6 | No Load Trail | 1d | 2014-10-11 | 2014-10-13 | 392 | 2014-10-11 | 2014-10-13 | 1d | 27d |  |  |  |  |

| ID | WBS | Task | Duration | Start | Finish | Predecessors | Baseline start | Baseline finish | Baseline duration | Total slack | Free slack | Resources | Cost | Baseline cost |
| --- | --- | --- | --- | --- | --- | --- | --- | --- | --- | --- | --- | --- | --- | --- |
| 394 | 5.2.4.11 | **P-802 A - Pump for Cooling Water - 90KW** | 18d | 2014-09-22 | 2014-10-13 |  | 2014-09-22 | 2014-10-13 | 18d | 27d |  |  | 31,428.54 | 31,428.54 |
| 395 | 5.2.4.11.1 | Erection of Motor | 1d | 2014-09-22 | 2014-09-23 | 274, 275 | 2014-09-22 | 2014-09-23 | 1d | 39d | 12d | Motors | 2,857.14 | 2,857.14 |
| 396 | 5.2.4.11.2 | Erection of Push Button Station | 1d | 2014-10-07 | 2014-10-08 | 395, 177 | 2014-10-07 | 2014-10-08 | 1d | 27d | 0d |  |  |  |
| 397 | 5.2.4.11.3 | Power Cable Laying | 1d | 2014-10-08 | 2014-10-09 | 396 | 2014-10-08 | 2014-10-09 | 1d | 27d | 0d | Cables | 14,285.7 | 14,285.7 |
| 398 | 5.2.4.11.4 | Control Cable Laying | 1d | 2014-10-09 | 2014-10-10 | 397 | 2014-10-09 | 2014-10-10 | 1d | 27d | 0d | Cables | 14,285.7 | 14,285.7 |
| 399 | 5.2.4.11.5 | Termination of Power & Control Cables | 1d | 2014-10-10 | 2014-10-11 | 398 | 2014-10-10 | 2014-10-11 | 1d | 27d | 0d |  |  |  |
| 400 | 5.2.4.11.6 | No Load Trail | 1d | 2014-10-11 | 2014-10-13 | 399 | 2014-10-11 | 2014-10-13 | 1d | 27d |  |  |  |  |
| 401 | 5.2.4.12 | **P-802 B - Pump for Cooling Water - 90KW** | 18d | 2014-09-22 | 2014-10-13 |  | 2014-09-22 | 2014-10-13 | 18d | 27d |  |  | 31,428.54 | 31,428.54 |
| 402 | 5.2.4.12.1 | Erection of Motor | 1d | 2014-09-22 | 2014-09-23 | 274, 275 | 2014-09-22 | 2014-09-23 | 1d | 39d | 12d | Motors | 2,857.14 | 2,857.14 |
| 403 | 5.2.4.12.2 | Erection of Push Button Station | 1d | 2014-10-07 | 2014-10-08 | 402, 177 | 2014-10-07 | 2014-10-08 | 1d | 27d | 0d |  |  |  |
| 404 | 5.2.4.12.3 | Power Cable Laying | 1d | 2014-10-08 | 2014-10-09 | 403 | 2014-10-08 | 2014-10-09 | 1d | 27d | 0d | Cables | 14,285.7 | 14,285.7 |
| 405 | 5.2.4.12.4 | Control Cable Laying | 1d | 2014-10-09 | 2014-10-10 | 404 | 2014-10-09 | 2014-10-10 | 1d | 27d | 0d | Cables | 14,285.7 | 14,285.7 |
| 406 | 5.2.4.12.5 | Termination of Power & Control Cables | 1d | 2014-10-10 | 2014-10-11 | 405 | 2014-10-10 | 2014-10-11 | 1d | 27d | 0d |  |  |  |
| 407 | 5.2.4.12.6 | No Load Trail | 1d | 2014-10-11 | 2014-10-13 | 406 | 2014-10-11 | 2014-10-13 | 1d | 27d |  |  |  |  |
| 408 | 5.2.4.13 | **F-802 - Cooling Tower Fan - 30KW** | 6d | 2014-10-07 | 2014-10-14 |  | 2014-10-07 | 2014-10-14 | 6d | 26d |  |  | 31,428.54 | 31,428.54 |
| 409 | 5.2.4.13.1 | Erection of Motor | 1d | 2014-10-07 | 2014-10-08 | 274, 177, 275 | 2014-10-07 | 2014-10-08 | 1d | 26d | 0d | Motors | 2,857.14 | 2,857.14 |
| 410 | 5.2.4.13.2 | Erection of Push Button Station | 1d | 2014-10-08 | 2014-10-09 | 409 | 2014-10-08 | 2014-10-09 | 1d | 26d | 0d |  |  |  |
| 411 | 5.2.4.13.3 | Power Cable Laying | 1d | 2014-10-09 | 2014-10-10 | 410 | 2014-10-09 | 2014-10-10 | 1d | 26d | 0d | Cables | 14,285.7 | 14,285.7 |
| 412 | 5.2.4.13.4 | Control Cable Laying | 1d | 2014-10-10 | 2014-10-11 | 411 | 2014-10-10 | 2014-10-11 | 1d | 26d | 0d | Cables | 14,285.7 | 14,285.7 |
| 413 | 5.2.4.13.5 | Termination of Power & Control Cables | 1d | 2014-10-11 | 2014-10-13 | 412 | 2014-10-11 | 2014-10-13 | 1d | 26d | 0d |  |  |  |
| 414 | 5.2.4.13.6 | No Load Trail | 1d | 2014-10-13 | 2014-10-14 | 413 | 2014-10-13 | 2014-10-14 | 1d | 26d |  |  |  |  |
| 415 | 5.2.4.14 | **Pump for Waste Water** | 18d | 2014-09-22 | 2014-10-13 |  | 2014-09-22 | 2014-10-13 | 18d | 27d |  |  | 31,428.54 | 31,428.54 |
| 416 | 5.2.4.14.1 | Erection of Motor | 1d | 2014-09-22 | 2014-09-23 | 274, 275 | 2014-09-22 | 2014-09-23 | 1d | 39d | 12d | Motors | 2,857.14 | 2,857.14 |
| 417 | 5.2.4.14.2 | Erection of Push Button Station | 1d | 2014-10-07 | 2014-10-08 | 416, 177 | 2014-10-07 | 2014-10-08 | 1d | 27d | 0d |  |  |  |
| 418 | 5.2.4.14.3 | Power Cable Laying | 1d | 2014-10-08 | 2014-10-09 | 417 | 2014-10-08 | 2014-10-09 | 1d | 27d | 0d | Cables | 14,285.7 | 14,285.7 |
| 419 | 5.2.4.14.4 | Control Cable Laying | 1d | 2014-10-09 | 2014-10-10 | 418 | 2014-10-09 | 2014-10-10 | 1d | 27d | 0d | Cables | 14,285.7 | 14,285.7 |
| 420 | 5.2.4.14.5 | Termination of Power & Control Cables | 1d | 2014-10-10 | 2014-10-11 | 419 | 2014-10-10 | 2014-10-11 | 1d | 27d | 0d |  |  |  |
| 421 | 5.2.4.14.6 | No Load Trail | 1d | 2014-10-11 | 2014-10-13 | 420 | 2014-10-11 | 2014-10-13 | 1d | 27d |  |  |  |  |

| ID | WBS | Task | Duration | Start | Finish | Predecessors | Baseline start | Baseline finish | Baseline duration | Total slack | Free slack | Resources | Cost | Baseline cost |
| --- | --- | --- | --- | --- | --- | --- | --- | --- | --- | --- | --- | --- | --- | --- |
| 422 | 5.2.5 | **Lighting** | 24d | 2014-09-25 | 2014-10-23 |  | 2014-09-25 | 2014-10-23 | 24d | 18d |  |  | 367,999.98 | 367,999.98 |
| 423 | 5.2.5.1 | **Ground Floor** | 4d | 2014-10-04 | 2014-10-09 |  | 2014-10-04 | 2014-10-09 | 4d | 30d |  |  | 101,333.33 | 101,333.33 |
| 424 | 5.2.5.1.1 | Fixing of PDB | 1d | 2014-10-04 | 2014-10-06 | 176 | 2014-10-04 | 2014-10-06 | 1d | 33d |  | PDB & LDB | 48,000 | 48,000 |
| 425 | 5.2.5.1.2 | Fixing of LDB | 1d | 2014-10-04 | 2014-10-06 | 176 | 2014-10-04 | 2014-10-06 | 1d | 33d |  |  |  |  |
| 426 | 5.2.5.1.3 | Fixing of Junction Boxes | 1d | 2014-10-04 | 2014-10-06 | 176 | 2014-10-04 | 2014-10-06 | 1d | 33d |  |  |  |  |
| 427 | 5.2.5.1.4 | Fabrication of Supports for Fixing of Lights | 1d | 2014-10-04 | 2014-10-06 | 176 | 2014-10-04 | 2014-10-06 | 1d | 30d | 0d |  |  |  |
| 428 | 5.2.5.1.5 | Fixing of Light Fittings | 2d | 2014-10-06 | 2014-10-08 | 427 | 2014-10-06 | 2014-10-08 | 2d | 30d | 0d | Light Fittings | 53,333.33 | 53,333.33 |
| 429 | 5.2.5.1.6 | Fabrication of Cable Tray Supports | 2d | 2014-10-04 | 2014-10-07 | 176 | 2014-10-04 | 2014-10-07 | 2d | 31d | 0d |  |  |  |
| 430 | 5.2.5.1.7 | Laying of Cable Trays and Fixing | 1d | 2014-10-07 | 2014-10-08 | 429 | 2014-10-07 | 2014-10-08 | 1d | 31d |  |  |  |  |
| 431 | 5.2.5.1.8 | Laying of Power Cables for PDB & LDB | 1d | 2014-10-07 | 2014-10-08 | 429 | 2014-10-07 | 2014-10-08 | 1d | 31d |  |  |  |  |
| 432 | 5.2.5.1.9 | Laying of Lighting Cables and Termination | 1d | 2014-10-08 | 2014-10-09 | 428, 429 | 2014-10-08 | 2014-10-09 | 1d | 30d |  |  |  |  |
| 433 | 5.2.5.2 | **EL+5.000 M LVL** | 9d | 2014-09-25 | 2014-10-06 |  | 2014-09-25 | 2014-10-06 | 9d | 18d |  |  | 53,333.33 | 53,333.33 |
| 434 | 5.2.5.2.1 | Fixing of LDB | 1d | 2014-09-25 | 2014-09-26 | 241FS+15d | 2014-09-25 | 2014-09-26 | 1d | 18d | 0d |  |  |  |
| 435 | 5.2.5.2.2 | Fixing of Junction Boxes | 1d | 2014-09-26 | 2014-09-27 | 434 | 2014-09-26 | 2014-09-27 | 1d | 18d | 0d |  |  |  |
| 436 | 5.2.5.2.3 | Fabrication of Supports for Fixing of Lights | 1d | 2014-09-27 | 2014-09-29 | 435 | 2014-09-27 | 2014-09-29 | 1d | 18d | 0d |  |  |  |
| 437 | 5.2.5.2.4 | Fixing of Light Fittings | 1d | 2014-09-29 | 2014-09-30 | 436 | 2014-09-29 | 2014-09-30 | 1d | 18d | 0d | Light Fittings | 53,333.33 | 53,333.33 |
| 438 | 5.2.5.2.5 | Fabrication of Cable Tray Supports | 2d | 2014-09-30 | 2014-10-02 | 437 | 2014-09-30 | 2014-10-02 | 2d | 18d | 0d |  |  |  |
| 439 | 5.2.5.2.6 | Laying of Cable Trays and Fixing | 2d | 2014-10-02 | 2014-10-04 | 438 | 2014-10-02 | 2014-10-04 | 2d | 18d | 0d |  |  |  |
| 440 | 5.2.5.2.7 | Laying of Power Cables for LDB | 1d | 2014-10-02 | 2014-10-03 | 438 | 2014-10-02 | 2014-10-03 | 1d | 35d |  |  |  |  |
| 441 | 5.2.5.2.8 | Laying of Lighting Cables and Termination | 1d | 2014-10-04 | 2014-10-06 | 438, 439 | 2014-10-04 | 2014-10-06 | 1d | 18d | 0d |  |  |  |
| 442 | 5.2.5.3 | **EL+7.000 M LVL** | 11d | 2014-10-06 | 2014-10-18 |  | 2014-10-06 | 2014-10-18 | 11d | 22d |  |  | 53,333.33 | 53,333.33 |
| 443 | 5.2.5.3.1 | Fixing of LDB | 1d | 2014-10-06 | 2014-10-07 | 441 | 2014-10-06 | 2014-10-07 | 1d | 22d | 0d |  |  |  |
| 444 | 5.2.5.3.2 | Fixing of Junction Boxes | 1d | 2014-10-07 | 2014-10-08 | 443 | 2014-10-07 | 2014-10-08 | 1d | 22d | 0d |  |  |  |
| 445 | 5.2.5.3.3 | Fabrication of Supports for Fixing of Lights | 1d | 2014-10-08 | 2014-10-09 | 444 | 2014-10-08 | 2014-10-09 | 1d | 22d | 0d |  |  |  |
| 446 | 5.2.5.3.4 | Fixing of Light Fittings | 1d | 2014-10-09 | 2014-10-10 | 445 | 2014-10-09 | 2014-10-10 | 1d | 22d | 0d | Light Fittings | 53,333.33 | 53,333.33 |
| 447 | 5.2.5.3.5 | Fabrication of Cable Tray Supports | 2d | 2014-10-10 | 2014-10-13 | 446 | 2014-10-10 | 2014-10-13 | 2d | 22d | 0d |  |  |  |
| 448 | 5.2.5.3.6 | Laying of Cable Trays and Fixing | 2d | 2014-10-13 | 2014-10-15 | 447 | 2014-10-13 | 2014-10-15 | 2d | 25d |  |  |  |  |
| 449 | 5.2.5.3.7 | Laying of Power Cables for LDB | 1d | 2014-10-13 | 2014-10-14 | 447 | 2014-10-13 | 2014-10-14 | 1d | 26d |  |  |  |  |
| 450 | 5.2.5.3.8 | Laying of Lighting Cables and Termination | 1d | 2014-10-13 | 2014-10-14 | 447 | 2014-10-13 | 2014-10-14 | 1d | 22d | 0d |  |  |  |
| 451 | 5.2.5.3.9 | Fixing of False Floor fittings in DCS Room | 1d | 2014-10-14 | 2014-10-15 | 450 | 2014-10-14 | 2014-10-15 | 1d | 22d | 0d |  |  |  |
| 452 | 5.2.5.3.10 | Fixing of LDB in DCS Room | 1d | 2014-10-15 | 2014-10-16 | 451 | 2014-10-15 | 2014-10-16 | 1d | 22d | 0d |  |  |  |
| 453 | 5.2.5.3.11 | Laying of Lighting Cables and Termination | 1d | 2014-10-16 | 2014-10-17 | 452 | 2014-10-16 | 2014-10-17 | 1d | 22d | 0d |  |  |  |
| 454 | 5.2.5.3.12 | Laying of Power Cables and Termination | 1d | 2014-10-17 | 2014-10-18 | 453 | 2014-10-17 | 2014-10-18 | 1d | 22d |  |  |  |  |

| ID | WBS | Task | Duration | Start | Finish | Predecessors | Baseline start | Baseline finish | Baseline duration | Total slack | Free slack | Resources | Cost | Baseline cost |
| --- | --- | --- | --- | --- | --- | --- | --- | --- | --- | --- | --- | --- | --- | --- |
| 455 | 5.2.5.4 | **EL+12.000 M LVL** | 10d | 2014-10-06 | 2014-10-17 |  | 2014-10-06 | 2014-10-17 | 10d | 23d |  |  | 53,333.33 | 53,333.33 |
| 456 | 5.2.5.4.1 | Fixing of LDB | 1d | 2014-10-06 | 2014-10-07 | 441 | 2014-10-06 | 2014-10-07 | 1d | 23d | 0d |  |  |  |
| 457 | 5.2.5.4.2 | Fixing of Junction Boxes | 1d | 2014-10-07 | 2014-10-08 | 456 | 2014-10-07 | 2014-10-08 | 1d | 23d | 0d |  |  |  |
| 458 | 5.2.5.4.3 | Fabrication of Supports for Fixing of Lights | 1d | 2014-10-08 | 2014-10-09 | 457 | 2014-10-08 | 2014-10-09 | 1d | 23d | 0d |  |  |  |
| 459 | 5.2.5.4.4 | Fixing of Light Fittings | 1d | 2014-10-09 | 2014-10-10 | 458 | 2014-10-09 | 2014-10-10 | 1d | 23d | 0d | Light Fittings | 53,333.33 | 53,333.33 |
| 460 | 5.2.5.4.5 | Fabrication of Cable Tray Supports | 2d | 2014-10-10 | 2014-10-13 | 459 | 2014-10-10 | 2014-10-13 | 2d | 23d | 0d |  |  |  |
| 461 | 5.2.5.4.6 | Laying of Cable Trays and Fixing | 2d | 2014-10-13 | 2014-10-15 | 460 | 2014-10-13 | 2014-10-15 | 2d | 23d | 0d |  |  |  |
| 462 | 5.2.5.4.7 | Laying of Power Cables for LDB | 1d | 2014-10-15 | 2014-10-16 | 461 | 2014-10-15 | 2014-10-16 | 1d | 23d | 0d |  |  |  |
| 463 | 5.2.5.4.8 | Laying of Lighting Cables and Termination | 1d | 2014-10-16 | 2014-10-17 | 462 | 2014-10-16 | 2014-10-17 | 1d | 23d |  |  |  |  |
| 464 | 5.2.5.5 | **EL+14.000 M LVL** | 10d | 2014-10-11 | 2014-10-23 |  | 2014-10-11 | 2014-10-23 | 10d | 18d |  |  | 53,333.33 | 53,333.33 |
| 465 | 5.2.5.5.1 | Fixing of LDB | 1d | 2014-10-11 | 2014-10-13 | 441FS+5d | 2014-10-11 | 2014-10-13 | 1d | 18d | 0d |  |  |  |
| 466 | 5.2.5.5.2 | Fixing of Junction Boxes | 1d | 2014-10-13 | 2014-10-14 | 465 | 2014-10-13 | 2014-10-14 | 1d | 18d | 0d |  |  |  |
| 467 | 5.2.5.5.3 | Fabrication of Supports for Fixing of Lights | 1d | 2014-10-14 | 2014-10-15 | 466 | 2014-10-14 | 2014-10-15 | 1d | 18d | 0d |  |  |  |
| 468 | 5.2.5.5.4 | Fixing of Light Fittings | 1d | 2014-10-15 | 2014-10-16 | 467 | 2014-10-15 | 2014-10-16 | 1d | 18d | 0d | Light Fittings | 53,333.33 | 53,333.33 |
| 469 | 5.2.5.5.5 | Fabrication of Cable Tray Supports | 2d | 2014-10-16 | 2014-10-18 | 468 | 2014-10-16 | 2014-10-18 | 2d | 18d | 0d |  |  |  |
| 470 | 5.2.5.5.6 | Laying of Cable Trays and Fixing | 2d | 2014-10-18 | 2014-10-21 | 469 | 2014-10-18 | 2014-10-21 | 2d | 18d | 0d |  |  |  |
| 471 | 5.2.5.5.7 | Laying of Power Cables for LDB | 1d | 2014-10-21 | 2014-10-22 | 470 | 2014-10-21 | 2014-10-22 | 1d | 18d | 0d |  |  |  |
| 472 | 5.2.5.5.8 | Laying of Lighting Cables and Termination | 1d | 2014-10-22 | 2014-10-23 | 471 | 2014-10-22 | 2014-10-23 | 1d | 18d |  |  |  |  |
| 473 | 5.2.5.6 | **EL+17.500 M LVL** | 10d | 2014-10-11 | 2014-10-23 |  | 2014-10-11 | 2014-10-23 | 10d | 18d |  |  | 53,333.33 | 53,333.33 |
| 474 | 5.2.5.6.1 | Fixing of LDB | 1d | 2014-10-11 | 2014-10-13 | 441FS+5d | 2014-10-11 | 2014-10-13 | 1d | 18d | 0d |  |  |  |
| 475 | 5.2.5.6.2 | Fixing of Junction Boxes | 1d | 2014-10-13 | 2014-10-14 | 474 | 2014-10-13 | 2014-10-14 | 1d | 18d | 0d |  |  |  |
| 476 | 5.2.5.6.3 | Fabrication of Supports for Fixing of Lights | 1d | 2014-10-14 | 2014-10-15 | 475 | 2014-10-14 | 2014-10-15 | 1d | 18d | 0d |  |  |  |
| 477 | 5.2.5.6.4 | Fixing of Light Fittings | 1d | 2014-10-15 | 2014-10-16 | 476 | 2014-10-15 | 2014-10-16 | 1d | 18d | 0d | Light Fittings | 53,333.33 | 53,333.33 |
| 478 | 5.2.5.6.5 | Fabrication of Cable Tray Supports | 2d | 2014-10-16 | 2014-10-18 | 477 | 2014-10-16 | 2014-10-18 | 2d | 18d | 0d |  |  |  |
| 479 | 5.2.5.6.6 | Laying of Cable Trays and Fixing | 2d | 2014-10-18 | 2014-10-21 | 478 | 2014-10-18 | 2014-10-21 | 2d | 18d | 0d |  |  |  |
| 480 | 5.2.5.6.7 | Laying of Power Cables for LDB | 1d | 2014-10-21 | 2014-10-22 | 479 | 2014-10-21 | 2014-10-22 | 1d | 18d | 0d |  |  |  |
| 481 | 5.2.5.6.8 | Laying of Lighting Cables and Termination | 1d | 2014-10-22 | 2014-10-23 | 480 | 2014-10-22 | 2014-10-23 | 1d | 18d |  |  |  |  |

| ID | WBS | Task | Type | Duration | Start | Finish | Predecessors | Baseline start | Baseline finish | Baseline duration | Total slack | Free slack | Resources | Work | Cost | Baseline cost |
| --- | --- | --- | --- | --- | --- | --- | --- | --- | --- | --- | --- | --- | --- | --- | --- | --- |
| 482 | 6 | **Instrumentation** |  | 267.5d | 2013-12-23 | 2014-10-30 |  | 2013-12-23 | 2014-10-30 | 267.5d | 12d |  |  | 900h | 5,395,823.12 | 5,395,823.12 |
| 483 | 6.1 | **Procurement** |  | 120d | 2013-12-23 | 2014-05-10 |  | 2013-12-23 | 2014-05-10 | 120d | 101.5d |  |  |  | 4,755,823 | 4,755,823 |
| 484 | 6.1.1 | Purchase of Control Valves |  | 5d | 2013-12-23 | 2013-12-27 | 6FS+290d | 2013-12-23 | 2013-12-27 | 5d | 101.5d | 0d | Controlvalves; z.Controlvalves |  | 1,198,075 | 1,198,075 |
| 485 | 6.1.2 | Purchase of Pr. Transmitters |  | 10d | 2013-12-28 | 2014-01-08 | 484 | 2013-12-28 | 2014-01-08 | 10d | 264.5d |  | Pr. Trans.; z.Pr. Trans. |  | 236,500 | 236,500 |
| 486 | 6.1.3 | Purchase of Flow meters |  | 10d | 2013-12-28 | 2014-01-08 | 484 | 2013-12-28 | 2014-01-08 | 10d | 264.5d |  | Flow meters; z.Flow meters |  | 560,550 | 560,550 |
| 487 | 6.1.4 | Purchase of Temp. Transmitters |  | 10d | 2013-12-28 | 2014-01-08 | 484 | 2013-12-28 | 2014-01-08 | 10d | 264.5d |  | Temp. Trans.; z.Temp. Trans. |  | 315,400 | 315,400 |
| 488 | 6.1.5 | Purchase of Thermowells (RTD) |  | 10d | 2013-12-28 | 2014-01-08 | 484 | 2013-12-28 | 2014-01-08 | 10d | 264.5d |  | RTD; z.RTD |  | 80,000 | 80,000 |
| 489 | 6.1.6 | Purchase of Level Transmitters |  | 10d | 2013-12-28 | 2014-01-08 | 484 | 2013-12-28 | 2014-01-08 | 10d | 264.5d |  | Sidemounted LT; Radar LT; z.Radar LT; z.Sidemounted LT |  | 1,528,975 | 1,528,975 |
| 490 | 6.1.7 | Purchase of Level Switches |  | 10d | 2013-12-28 | 2014-01-08 | 484 | 2013-12-28 | 2014-01-08 | 10d | 264.5d |  | Levelswitch; z.Levelswitch |  | 269,196 | 269,196 |
| 491 | 6.1.8 | Purchase of Rotameter with Switch |  | 10d | 2013-12-28 | 2014-01-08 | 484 | 2013-12-28 | 2014-01-08 | 10d | 264.5d |  | Rotameter; z.Rotameter |  | 227,127 | 227,127 |
| 492 | 6.1.9 | Purchase of Pr. Gauges |  | 10d | 2014-04-30 | 2014-05-10 | 6FS+400d | 2014-04-30 | 2014-05-10 | 10d | 159.5d |  | Pr.gauge; z.Pr.gauge |  | 40,000 | 40,000 |
| 493 | 6.1.10 | Purchase of Temp. Gauges |  | 10d | 2014-04-30 | 2014-05-10 | 6FS+400d | 2014-04-30 | 2014-05-10 | 10d | 159.5d |  | Temp.gauge; z.Temp.gauge |  | 120,000 | 120,000 |
| 494 | 6.1.11 | Purchase of Pr. Switches |  | 10d | 2014-04-30 | 2014-05-10 | 6FS+400d | 2014-04-30 | 2014-05-10 | 10d | 159.5d |  | Pr.switch; z.Pr.switch |  | 60,000 | 60,000 |
| 495 | 6.1.12 | Purchase of Instrument Cables |  | 4d | 2014-04-30 | 2014-05-03 | 6FS+400d | 2014-04-30 | 2014-05-03 | 4d | 96.5d | 5d | Cable; z.Cable |  | 120,000 | 120,000 |
| 496 | 6.1.13 | Purchase of Instrument cable tray |  | 4d | 2014-04-30 | 2014-05-03 | 6FS+400d | 2014-04-30 | 2014-05-03 | 4d | 165.5d |  |  |  |  |  |
| 497 | 6.1.14 | Finalisation of Inst Erection Contractor |  | 5d | 2014-04-30 | 2014-05-05 | 6FS+400d | 2014-04-30 | 2014-05-05 | 5d | 159.5d | 133.5d |  |  |  |  |
| 498 | 6.1.15 | Purchase of Erection Hardwares |  | 5d | 2014-04-30 | 2014-05-05 | 6FS+400d | 2014-04-30 | 2014-05-05 | 5d | 146.5d | 132.5d |  |  |  |  |
| 499 | 6.2 | **Execution** |  | 112.5d | 2014-06-21 | 2014-10-30 |  | 2014-06-21 | 2014-10-30 | 112.5d | 12d |  | Inst. Erection | 900h | 640,000.13 | 640,000.13 |
| 500 | 6.2.1 | **DCS** |  | 8d | 2014-10-07 | 2014-10-16 |  | 2014-10-07 | 2014-10-16 | 8d | 14d |  |  |  |  |  |
| 501 | 6.2.1.1 | DCS Room Civil Work Completion | milestone | 0d | 2014-10-07 | 2014-10-07 | 177 | 2014-10-07 | 2014-10-07 | 0d | 14d | 0d |  |  |  |  |
| 502 | 6.2.1.2 | Mobillisation of Erection Contractor at Site |  | 1d | 2014-10-07 | 2014-10-08 | 498, 19, 22, 278SS+8d, 501 | 2014-10-07 | 2014-10-08 | 1d | 14d | 0d |  |  |  |  |
| 503 | 6.2.1.3 | Positioning of DCS Panel and Consoles Local CR |  | 2d | 2014-10-08 | 2014-10-10 | 502 | 2014-10-08 | 2014-10-10 | 2d | 24d | 0d |  |  |  |  |
| 504 | 6.2.1.4 | Interconnection cabling of Main DCS and Local DCS for CCU |  | 4d | 2014-10-10 | 2014-10-15 | 503 | 2014-10-10 | 2014-10-15 | 4d | 24d | 0d |  |  |  |  |
| 505 | 6.2.1.5 | Power up of new DCS Consoles & Commissioniong |  | 1d | 2014-10-15 | 2014-10-16 | 504 | 2014-10-15 | 2014-10-16 | 1d | 24d |  |  |  |  |  |

| ID | WBS | Task | Duration | Start | Finish | Predecessors | Baseline start | Baseline finish | Baseline duration | Total slack | Free slack |
| --- | --- | --- | --- | --- | --- | --- | --- | --- | --- | --- | --- |
| 506 | 6.2.2 | **Instruments Cabling & Termination- Main cable** | 101.5d | 2014-07-02 | 2014-10-28 |  | 2014-07-02 | 2014-10-28 | 101.5d | 14d |  |
| 507 | 6.2.2.1 | Fabrication of tray support for main cables | 2d | 2014-10-08 | 2014-10-10 | 502 | 2014-10-08 | 2014-10-10 | 2d | 29d |  |
| 508 | 6.2.2.2 | Erection of Main cable trays | 10d | 2014-10-08 | 2014-10-20 | 502 | 2014-10-08 | 2014-10-20 | 10d | 21d |  |
| 509 | 6.2.2.3 | Fabrication and Erection of JB support and erection of JB's | 5d | 2014-10-08 | 2014-10-14 | 497, 502 | 2014-10-08 | 2014-10-14 | 5d | 26d |  |
| 510 | 6.2.2.4 | Receipt of I & C cables at site | 7d | 2014-07-02 | 2014-07-09 | 495FS+45d, 22 | 2014-07-02 | 2014-07-09 | 7d | 91.5d | 77.5d |
| 511 | 6.2.2.5 | Laying & dressing of Main cables from JB to CR | 9d | 2014-10-08 | 2014-10-18 | 510, 502 | 2014-10-08 | 2014-10-18 | 9d | 14d | 0d |
| 512 | 6.2.2.6 | Cable Glanding & Termination of Main cables at both ends | 6d | 2014-10-18 | 2014-10-25 | 511 | 2014-10-18 | 2014-10-25 | 6d | 14d | 0d |
| 513 | 6.2.2.7 | Loop check from JB end to DCS | 2d | 2014-10-25 | 2014-10-28 | 512 | 2014-10-25 | 2014-10-28 | 2d | 14d |  |
| 514 | 6.2.3 | **Field Inst erection** | 106.5d | 2014-06-21 | 2014-10-23 |  | 2014-06-21 | 2014-10-23 | 106.5d | 18d |  |
| 515 | 6.2.3.1 | Receipt of all control valves, Transmitters, flowmeters, RTD, TG & PG | 10d | 2014-06-21 | 2014-07-02 | 484FS+150d | 2014-06-21 | 2014-07-02 | 10d | 101.5d | 83.5d |
| 516 | 6.2.3.2 | Fabrication of stancheon for remote mounted instruments | 4d | 2014-10-08 | 2014-10-13 | 502, 515 | 2014-10-08 | 2014-10-13 | 4d | 18d | 0d |
| 517 | 6.2.3.3 | Erection of stancheons at required place | 3d | 2014-10-13 | 2014-10-16 | 516 | 2014-10-13 | 2014-10-16 | 3d | 18d | 0d |
| 518 | 6.2.3.4 | Branch cable tray fabrication, erection | 3d | 2014-10-16 | 2014-10-20 | 517 | 2014-10-16 | 2014-10-20 | 3d | 18d | 0d |
| 519 | 6.2.3.5 | Branch cable laying & Termination at JB end | 3d | 2014-10-20 | 2014-10-23 | 518 | 2014-10-20 | 2014-10-23 | 3d | 18d |  |
| 520 | 6.2.3.6 | Installation of all field Instruments | 7d | 2014-10-15 | 2014-10-23 | 281FS-15d | 2014-10-15 | 2014-10-23 | 7d | 0d |  |
| 521 | 6.2.3.7 | Glanding &Termination branch cables of all field Instruments at Inst end | 3d | 2014-10-17 | 2014-10-21 | 520FS-5d | 2014-10-17 | 2014-10-21 | 3d | 17d | 2d |
| 522 | 6.2.4 | **Loop Check & Calibration** | 6d | 2014-10-23 | 2014-10-30 |  | 2014-10-23 | 2014-10-30 | 6d | 0d |  |
| 523 | 6.2.4.1 | Loop check of all instruments from field Inst end | 3d | 2014-10-23 | 2014-10-27 | 520, 521 | 2014-10-23 | 2014-10-27 | 3d | 15d |  |
| 524 | 6.2.4.2 | Calibration of all field Instruments | 3d | 2014-10-23 | 2014-10-27 | 520 | 2014-10-23 | 2014-10-27 | 3d | 0d |  |
| 525 | 6.2.4.3 | Calibration /Stroke check of all Control valves & On/Off valves from DCS | 2d | 2014-10-27 | 2014-10-29 | 524 | 2014-10-27 | 2014-10-29 | 2d | 0d |  |
| 526 | 6.2.4.4 | Tripchecks, Graphics modification etc | 1d | 2014-10-29 | 2014-10-30 | 525 | 2014-10-29 | 2014-10-30 | 1d | 0d |  |
