# CONCENTRATION UNIT (FLAKING)

Schedule from MS Project, 2012-12-17 to 2015-04-22, costs in रु.

## Calendars

- CAL Calendar: Mon-Sat 08:00-12:00, 13:00-17:00; Sun off.

## Resources

| Resource | Rate | Cost per use |
| --- | --- | --- |
| Bertrams Supply |  | 7721250 |
| z.Bertrams Supply |  |  |
| KSJ Engg |  | 2000000 |
| Jayam Consult |  | 600000 |
| Heat Transfer Salt |  | 1500000 |
| z.Heat Transfer Salt |  |  |
| P-2101 A/B |  | 874000 |
| z.P-2101 A/B |  |  |
| P-7302 A/B |  | 584000 |
| z.P-7302 A/B |  |  |
| T-7301 |  | 101000 |
| z.T-7301 |  |  |
| T-8301 A/B |  | 188135 |
| z.T-8301 A/B |  |  |
| T-6101 |  | 1584832 |
| z.T-6101 |  |  |
| T-3101 |  | 173820 |
| z.T-3101 |  |  |
| S-4101 |  | 71573 |
| z.S-4101 |  |  |
| HE-3101 |  | 139594 |
| z.HE-3101 |  |  |
| C-7301 |  | 1821431 |
| z.C-7301 |  |  |
| BL-4101 |  | 198000 |
| z.BL-4101 |  |  |
| BL-6101 |  | 247000 |
| z.BL-6101 |  |  |
| N-4101 |  | 650000 |
| z.N-4101 |  |  |
| N-4108 |  | 200000 |
| z.N-4108 |  |  |
| W-4101 |  | 650000 |
| z.W-4101 |  |  |
| D-2101 |  | 500000 |
| z.D-2101 |  |  |
| D-2102 |  | 300000 |
| z.D-2102 |  |  |
| D-2301 |  | 400000 |
| z.D-2301 |  |  |
| D-3101 |  | 300000 |
| z.D-3101 |  |  |
| D-6101 |  | 300000 |
| z.D-6101 |  |  |
| D-6102 |  | 300000 |
| z.D-6102 |  |  |
| D-6103 |  | 300000 |
| z.D-6103 |  |  |
| D-6104 |  | 300000 |
| z.D-6104 |  |  |
| NI PL Valves |  | 296394 |
| z.NI PL Valves |  |  |
| SS PL Valves |  | 48232 |
| z.SS PL Valves |  |  |
| Other Valves |  | 3134000 |
| z.Other Valves |  |  |
| PSV |  | 172411 |
| z.PSV |  |  |
| PCV |  | 205000 |
| z.PCV |  |  |
| CS Pipes and Fittings |  | 1800000 |
| z.CS Pipes and Fittings |  |  |
| SS Pipes and Fittings |  | 1800000 |
| z.SS Pipes and Fittings |  |  |
| NI Pipes and Fittings |  | 1861000 |
| z.NI Pipes and Fittings |  |  |
| Pipe_Valve Supports-CS |  | 800000 |
| z.Pipe_Valve Supports |  |  |
| Insulation Work | 20000 |  |
| Painting Work | 3750 |  |
| FO Day Tank |  | 100000 |
| z.FO Day Tank |  |  |
| FO Pump |  | 300000 |
| z.FO Pump |  |  |
| WW pit pump |  | 180000 |
| z.WW pit pump |  |  |
| Steam Trap-IBR |  | 100000 |
| z.Steam Trap-IBR |  |  |
| Steam Trap-NIBR |  | 150000 |
| z.Steam Trap-NIBR |  |  |
| Gaskets - CS |  | 100000 |
| z.Gaskets |  |  |
| Fasteners - CS |  | 100000 |
| z.Fasteners |  |  |
| Strainers-CS |  | 200000 |
| z.Strainers |  |  |
| Safety showers |  | 120000 |
| z.Safety showers |  |  |
| Octopus Crane |  | 180000 |
| CW pump |  | 800000 |
| z.CW Pump |  |  |
| CS piping Erection | 2734.38 |  |
| SS Piping Erection | 5468.75 |  |
| NI piping Erection | 3515.62 |  |
| Eqpt Erection | 3605.77 |  |
| MCC |  | 900000 |
| z.MCC |  |  |
| PDB&LDB |  | 18000 |
| z.PDB&LDB |  |  |
| Cables |  | 75000 |
| z.Cables |  |  |
| Cable Tray |  | 240000 |
| z.Cable Tray |  |  |
| LCP-FRP |  | 6000 |
| z.LCP-FRP |  |  |
| Earthing |  | 120000 |
| z.Earthing |  |  |
| VFD |  | 93750 |
| z.VFD |  |  |
| Lightening |  | 90000 |
| z.Lightening |  |  |
| Structural |  | 120000 |
| z.Structural |  |  |
| Motors |  | 7500 |
| z.Motors |  |  |
| Light Fittings |  | 120000 |
| z.Light Fittings |  |  |
| Electrical Erection | 1730.77 |  |
| Control Valve |  | 851925 |
| z.Control Valve |  |  |
| Pr.Transmitter |  | 77000 |
| z.Pr.Transmitter |  |  |
| Temp.Transmitter |  | 215800 |
| z.Temp.Transmitter |  |  |
| Flowmeter |  | 424450 |
| z.Flowmeter |  |  |
| Side LT |  | 271000 |
| z.Side LT |  |  |
| Rotameter |  | 223000 |
| z.Rotameter |  |  |
| Pr. Switch |  | 90000 |
| z.Pr. Switch |  |  |
| Level Switch |  | 88370 |
| z.Level Switch |  |  |
| Pr. Gauge |  | 60000 |
| z.Pr. Gauge |  |  |
| Temp. Gauge |  | 180000 |
| z.Temp. Gauge |  |  |
| RTD |  | 120000 |
| z.RTD |  |  |
| Radar LT |  | 112709 |
| z.Radar LT |  |  |
| Inst. Cable |  | 180000 |
| z.Inst. Cable |  |  |
| Inst Erection | 1578.95 |  |
| Bldg Foundation | 33000 |  |
| Eqpt Foundation | 18750 |  |
| Flaker Godown | 5000 |  |
| Bldg Structurals | 15600 |  |
| Inspection Charges |  | 1500000 |
| Misc. Charges |  | 5013600 |
| Gaskets - SS |  | 100000 |
| Gaskets - Ni |  | 100000 |
| Fasteners - SS |  | 100000 |
| Fasteners - Ni |  | 100000 |
| Pipe_Valve Supports-SS |  | 800000 |
| Pipe_Valve Supports-Ni |  | 800000 |
| Strainers-SS |  | 100000 |

## Schedule

| ID | WBS | Task | Type | Duration | Start | Finish | Predecessors | Total slack | Free slack | Constraint | Resources | Cost |
| --- | --- | --- | --- | --- | --- | --- | --- | --- | --- | --- | --- | --- |
| 1 | 1 | **Project Management** |  | 735d | 2012-12-17 | 2015-04-22 |  | 0d |  |  |  | 6,513,600 |
| 2 | 1.1 | **Project Initiation** |  | 434d | 2012-12-17 | 2014-05-06 |  | 0d |  |  |  |  |
| 3 | 1.1.1 | Project Zero Date | milestone | 0d | 2012-12-17 | 2012-12-17 |  | 0d |  |  |  |  |
| 4 | 1.1.2 | Develop Project Vision & objective |  | 1d | 2014-05-02 | 2014-05-02 | 3FS+430d | 276d | 0d |  |  |  |
| 5 | 1.1.3 | Develop Project Charter |  | 1d | 2014-05-03 | 2014-05-03 | 4 | 276d | 0d |  |  |  |
| 6 | 1.1.4 | Kick-Off Meeting between Bertrams and CAL |  | 2d | 2013-01-16 | 2013-01-17 | 3FS+26d | 707d |  |  |  |  |
| 7 | 1.1.5 | Identify Stakeholders |  | 1d | 2014-05-05 | 2014-05-05 | 5 | 276d | 0d |  |  |  |
| 8 | 1.1.6 | Internal Project kick-off Meeting |  | 1d | 2014-05-06 | 2014-05-06 | 7 | 276d | 0d |  |  |  |
| 9 | 1.2 | **Project planning** |  | 25d | 2014-05-07 | 2014-06-04 |  | 276d |  |  |  |  |
| 10 | 1.2.1 | Preparation of Config. Mgmt Plan |  | 3d | 2014-05-07 | 2014-05-09 | 8 | 276d | 0d |  |  |  |
| 11 | 1.2.2 | Preparation of Scope Mgmt Plan |  | 2d | 2014-05-10 | 2014-05-12 | 10 | 276d | 0d |  |  |  |
| 12 | 1.2.3 | Preparation of Requirement Mgmt Plan |  | 2d | 2014-05-13 | 2014-05-14 | 11 | 276d | 0d |  |  |  |
| 13 | 1.2.4 | Preparation of Risk Mgmt Plan |  | 2d | 2014-05-15 | 2014-05-16 | 12 | 276d | 0d |  |  |  |
| 14 | 1.2.5 | Preparation of Communication Mgmt plan |  | 1d | 2014-05-17 | 2014-05-17 | 13 | 276d | 0d |  |  |  |
| 15 | 1.2.6 | Preparation of Stakeholder Mgmt Plan |  | 1d | 2014-05-19 | 2014-05-19 | 14 | 276d | 0d |  |  |  |
| 16 | 1.2.7 | Estimation of Project Cost |  | 7d | 2014-05-20 | 2014-05-27 | 15 | 276d | 0d |  |  |  |
| 17 | 1.2.8 | Project Scheduling |  | 7d | 2014-05-28 | 2014-06-04 | 16 | 276d |  |  |  |  |
| 18 | 1.3 | **Statutory Approvals** |  | 45d | 2014-08-01 | 2014-09-22 |  | 0d |  |  |  |  |
| 19 | 1.3.1 | Approval from IOF |  | 45d | 2014-08-01 | 2014-09-22 | 3FS+508d | 0d |  |  |  |  |
| 20 | 1.3.2 | Receipt of Approval from IOF | milestone | 0d | 2014-09-22 | 2014-09-22 | 19 | 182d |  |  |  |  |
| 21 | 1.3.3 | Approval from PPA |  | 10d | 2014-09-11 | 2014-09-22 | 19FS-10d | 0d |  |  |  |  |
| 22 | 1.3.4 | Receipt of Approval from PPA | milestone | 0d | 2014-09-22 | 2014-09-22 | 21 | 0d |  |  |  |  |
| 23 | 1.4 | **Project Monitoring & Contriol** |  | 728d | 2012-12-17 | 2015-04-14 |  | 7d |  |  |  | 6,513,600 |
| 24 | 1.4.1 | Project Process Audits |  | 728d | 2012-12-17 | 2015-04-14 | 84FF | 7d |  | start no earlier than 2012-12-17 |  |  |
| 25 | 1.4.2 | Daily Reporting |  | 728d | 2012-12-17 | 2015-04-14 | 84FF | 7d |  |  |  |  |
| 26 | 1.4.3 | Weekly Reporting |  | 728d | 2012-12-17 | 2015-04-14 | 84FF | 7d |  |  |  |  |
| 27 | 1.4.4 | Monthly Reporting |  | 728d | 2012-12-17 | 2015-04-14 | 84FF | 7d |  |  |  |  |
| 28 | 1.4.5 | Project Work Inspection |  | 728d | 2012-12-17 | 2015-04-14 | 84FF | 7d |  |  | Inspection Charges; Misc. Charges | 6,513,600 |

| ID | WBS | Task | Type | Duration | Start | Finish | Predecessors | Baseline start | Baseline finish | Baseline duration | Total slack | Free slack | Resources | Cost |
| --- | --- | --- | --- | --- | --- | --- | --- | --- | --- | --- | --- | --- | --- | --- |
| 29 | 1.5 | **Project Closing** |  | 7d | 2015-04-15 | 2015-04-22 |  |  |  |  | 0d |  |  |  |
| 30 | 1.5.1 | Close all procurement contracts |  | 1d | 2015-04-15 | 2015-04-15 | 84 |  |  |  | 0d |  |  |  |
| 31 | 1.5.2 | Take sign-off from Stakeholders |  | 1d | 2015-04-16 | 2015-04-16 | 30 |  |  |  | 0d |  |  |  |
| 32 | 1.5.3 | Conduct Project closing sessions |  | 1d | 2015-04-17 | 2015-04-17 | 31 |  |  |  | 0d |  |  |  |
| 33 | 1.5.4 | Develop and share closure report with all stakeholders |  | 1d | 2015-04-18 | 2015-04-18 | 32 |  |  |  | 0d |  |  |  |
| 34 | 1.5.5 | Share lessons learnt to PMO |  | 1d | 2015-04-20 | 2015-04-20 | 33 |  |  |  | 0d |  |  |  |
| 35 | 1.5.6 | Archive all project documents |  | 1d | 2015-04-21 | 2015-04-21 | 34 |  |  |  | 0d |  |  |  |
| 36 | 1.5.7 | Release project resources |  | 1d | 2015-04-22 | 2015-04-22 | 35 |  |  |  | 0d |  |  |  |
| 37 | 1.5.8 | Close project | milestone | 0d | 2015-04-22 | 2015-04-22 | 36 |  |  |  | 0d |  |  |  |
| 38 | 2 | **Process** |  | 728d | 2012-12-17 | 2015-04-14 |  | 2012-12-17 | 2014-11-05 | 590.5d | 7d |  |  | 4,100,000 |
| 39 | 2.1 | **Procurement** |  | 693d | 2012-12-17 | 2015-03-04 |  | 2012-12-17 | 2014-08-22 | 527d | 42d |  |  | 4,100,000 |
| 40 | 2.1.1 | **Engineering** |  | 15d | 2014-09-05 | 2014-09-22 |  | 2014-08-06 | 2014-08-22 | 15d | 182d |  |  | 2,600,000 |
| 41 | 2.1.1.1 | Detailed Engineering |  | 15d | 2014-09-05 | 2014-09-22 | 22SF |  |  |  | 182d |  | Jayam Consult; KSJ Engg | 2,600,000 |
| 42 | 2.1.2 | **Equipments (Bertrams Supply)** |  | 693d | 2012-12-17 | 2015-03-04 |  | 2012-12-17 | 2013-11-30 | 300d | 42d |  |  | 1,500,000 |
| 43 | 2.1.2.1 | Purchase of EV-2101 |  | 300d | 2012-12-17 | 2013-11-30 |  |  |  |  | 434d | 0d | z.Bertrams Supply |  |
| 44 | 2.1.2.2 | Receipt of EV-2101 at site | milestone | 0d | 2013-11-30 | 2013-11-30 | 43 |  |  |  | 434d | 320d |  |  |
| 45 | 2.1.2.3 | Purchase of EV-2301 |  | 300d | 2012-12-17 | 2013-11-30 |  |  |  |  | 434d | 0d | z.Bertrams Supply |  |
| 46 | 2.1.2.4 | Receipt of EV-2301 at site | milestone | 0d | 2013-11-30 | 2013-11-30 | 45 |  |  |  | 434d | 330d |  |  |
| 47 | 2.1.2.5 | Purchase of V-2301 |  | 300d | 2012-12-17 | 2013-11-30 |  |  |  |  | 434d | 0d | z.Bertrams Supply |  |
| 48 | 2.1.2.6 | Receipt of V-2301 at site | milestone | 0d | 2013-11-30 | 2013-11-30 | 47 |  |  |  | 434d | 315d |  |  |
| 49 | 2.1.2.7 | Purchase of F-3101 |  | 300d | 2012-12-17 | 2013-11-30 |  |  |  |  | 434d | 0d | z.Bertrams Supply |  |
| 50 | 2.1.2.8 | Receipt of F-3101 at site | milestone | 0d | 2013-11-30 | 2013-11-30 | 49 |  |  |  | 434d | 315d |  |  |
| 51 | 2.1.2.9 | Purchase of LCP-3101 |  | 300d | 2012-12-17 | 2013-11-30 |  | 2012-12-17 | 2013-11-30 | 300d | 434d | 0d | z.Bertrams Supply |  |
| 52 | 2.1.2.10 | Receipt of LCP-3101 at site | milestone | 0d | 2013-11-30 | 2013-11-30 | 51 |  |  |  | 434d | 315d |  |  |
| 53 | 2.1.2.11 | Purchase of VFC-F3101 |  | 300d | 2012-12-17 | 2013-11-30 |  | 2014-10-30 | 2014-11-05 | 5d | 434d | 0d | z.Bertrams Supply |  |
| 54 | 2.1.2.12 | Receipt of VFC-F3101 at site | milestone | 0d | 2013-11-30 | 2013-11-30 | 53 |  |  |  | 434d | 315d |  |  |
| 55 | 2.1.2.13 | Purchase of BG-6101 |  | 300d | 2012-12-17 | 2013-11-30 |  |  |  |  | 434d | 0d | z.Bertrams Supply |  |
| 56 | 2.1.2.14 | Receipt of BG-6101 at site | milestone | 0d | 2013-11-30 | 2013-11-30 | 55 |  |  |  | 434d | 315d |  |  |
| 57 | 2.1.2.15 | Purchase of H-6101 |  | 300d | 2012-12-17 | 2013-11-30 |  |  |  |  | 434d | 0d | z.Bertrams Supply |  |
| 58 | 2.1.2.16 | Receipt of H-6101 at site | milestone | 0d | 2013-11-30 | 2013-11-30 | 57 |  |  |  | 434d | 315d |  |  |
| 59 | 2.1.2.17 | Purchase of HE-6101 |  | 300d | 2012-12-17 | 2013-11-30 |  |  |  |  | 434d | 0d | z.Bertrams Supply |  |
| 60 | 2.1.2.18 | Receipt of HE-6101 at site | milestone | 0d | 2013-11-30 | 2013-11-30 | 59 |  |  |  | 434d | 320d |  |  |
| 61 | 2.1.2.19 | Purchase of LCP-BG6101 |  | 300d | 2012-12-17 | 2013-11-30 |  |  |  |  | 434d | 0d | z.Bertrams Supply |  |
| 62 | 2.1.2.20 | Receipt of LCP-BG6101 at site | milestone | 0d | 2013-11-30 | 2013-11-30 | 61 |  |  |  | 434d | 320d |  |  |
| 63 | 2.1.2.21 | Purchase of P-6101 |  | 300d | 2012-12-17 | 2013-11-30 |  |  |  |  | 429d | 0d | z.Bertrams Supply |  |
| 64 | 2.1.2.22 | Receipt of P-6101 at site | milestone | 0d | 2013-11-30 | 2013-11-30 | 63 |  |  |  | 429d | 315d |  |  |
| 65 | 2.1.2.23 | Purchase of P-8301 A/B |  | 300d | 2012-12-17 | 2013-11-30 |  |  |  |  | 429d | 0d | z.Bertrams Supply |  |
| 66 | 2.1.2.24 | Receipt of P-8301 A/B at site | milestone | 0d | 2013-11-30 | 2013-11-30 | 65 |  |  |  | 429d | 314d |  |  |
| 67 | 2.1.2.25 | Purchase of Heat Transfer Salt |  | 30d | 2015-01-29 | 2015-03-04 | 429FS-30d |  |  |  | 42d | 0d | Heat Transfer Salt | 1,500,000 |
| 68 | 2.1.2.26 | Receipt of Heat Transfer Salt | milestone | 0d | 2015-03-04 | 2015-03-04 | 67 |  |  |  | 42d |  |  |  |

| ID | WBS | Task | Type | Duration | Start | Finish | Predecessors | Baseline start | Baseline finish | Baseline duration | Total slack | Free slack | Resources | Work | Cost |
| --- | --- | --- | --- | --- | --- | --- | --- | --- | --- | --- | --- | --- | --- | --- | --- |
| 69 | 2.2 | **Commissioning** |  | 35d | 2015-03-05 | 2015-04-14 |  |  |  |  | 0d |  |  |  |  |
| 70 | 2.2.1 | Unit-2100 Concentration First Effect |  | 5d | 2015-03-05 | 2015-03-10 | 429 |  |  |  | 0d |  |  |  |  |
| 71 | 2.2.2 | Commissioning of Unit-2100 | milestone | 0d | 2015-03-10 | 2015-03-10 | 70 | 2014-07-02 | 2014-10-07 | 83.5d | 37d |  |  |  |  |
| 72 | 2.2.3 | Unit-2300 Concentration Third Effect |  | 5d | 2015-03-11 | 2015-03-16 | 70 | 2014-07-02 | 2014-07-10 | 8d | 0d |  |  |  |  |
| 73 | 2.2.4 | Commissioning of Unit-2300 | milestone | 0d | 2015-03-16 | 2015-03-16 | 72 | 2014-07-02 | 2014-07-10 | 8d | 32d |  |  |  |  |
| 74 | 2.2.5 | Unit-3100 Flaking |  | 5d | 2015-03-17 | 2015-03-21 | 72 |  |  |  | 0d |  |  |  |  |
| 75 | 2.2.6 | Commissioning of Unit-3100 | milestone | 0d | 2015-03-21 | 2015-03-21 | 74 |  |  |  | 27d |  |  |  |  |
| 76 | 2.2.7 | Unit-4100 Flake Bagging and Handling |  | 5d | 2015-03-23 | 2015-03-27 | 74 |  |  |  | 0d |  |  |  |  |
| 77 | 2.2.8 | Commissioning of Unit-4100 | milestone | 0d | 2015-03-27 | 2015-03-27 | 76 |  |  |  | 22d |  |  |  |  |
| 78 | 2.2.9 | Unit-6100 Molten Salt Heating and Burner System |  | 5d | 2015-03-28 | 2015-04-02 | 76 | 2014-07-03 | 2014-10-07 | 81.5d | 0d |  |  |  |  |
| 79 | 2.2.10 | Commissioning of Unit-6100 | milestone | 0d | 2015-04-02 | 2015-04-02 | 78 | 2014-07-03 | 2014-07-10 | 6d | 17d |  |  |  |  |
| 80 | 2.2.11 | Unit-7300 Vacuum Concentration |  | 5d | 2015-04-03 | 2015-04-08 | 78 |  |  |  | 0d |  |  |  |  |
| 81 | 2.2.12 | Commissioning of Unit-7300 | milestone | 0d | 2015-04-08 | 2015-04-08 | 80 |  |  |  | 12d |  |  |  |  |
| 82 | 2.2.13 | Unit-8300 Sugar System |  | 5d | 2015-04-09 | 2015-04-14 | 80 |  |  |  | 0d |  |  |  |  |
| 83 | 2.2.14 | Commissioning of Unit-8300 | milestone | 0d | 2015-04-14 | 2015-04-14 | 82 |  |  |  | 7d |  |  |  |  |
| 84 | 2.2.15 | Completion of Commissioning activities | milestone | 0d | 2015-04-14 | 2015-04-14 | 82 |  |  |  | 0d |  |  |  |  |
| 85 | 3 | **Civil** |  | 101d | 2014-09-23 | 2015-01-17 |  |  |  |  | 80d |  |  | 464h | 8,800,000 |
| 86 | 3.1 | **Procurement** |  | 1d | 2014-09-23 | 2014-09-23 |  | 2014-07-11 | 2014-07-16 | 4.5d | 80d |  |  |  |  |
| 87 | 3.1.1 | Contract Finalization |  | 1d | 2014-09-23 | 2014-09-23 | 22 |  |  |  | 80d | 0d |  |  |  |
| 88 | 3.2 | **Execution** |  | 100d | 2014-09-23 | 2015-01-17 |  |  |  |  | 80d |  |  | 464h | 8,800,000 |
| 89 | 3.2.1 | Mobilization of Materials and Labour | milestone | 0d | 2014-09-23 | 2014-09-23 | 87 |  |  |  | 80d | 0d |  |  |  |
| 90 | 3.2.2 | **Foundation (Building & Equipment)** |  | 60d | 2014-09-24 | 2014-12-02 |  |  |  |  | 80d |  |  | 464h | 8,800,000 |
| 91 | 3.2.2.1 | **Foundation for Structures** |  | 25d | 2014-09-24 | 2014-10-22 |  |  |  |  | 80d |  | Bldg Foundation; Flaker Godown | 400h | 7,600,000 |
| 92 | 3.2.2.1.1 | Removal of Earth to expose plinth beams |  | 2d | 2014-09-24 | 2014-09-25 | 89 |  |  |  | 80d | 0d |  |  |  |
| 93 | 3.2.2.1.2 | Side shuttering work for Columns |  | 2d | 2014-09-26 | 2014-09-27 | 92 |  |  |  | 80d | 0d |  |  |  |
| 94 | 3.2.2.1.3 | Concreting Work |  | 1d | 2014-09-29 | 2014-09-29 | 93 |  |  |  | 80d | 0d |  |  |  |
| 95 | 3.2.2.1.4 | Curing |  | 3d | 2014-09-30 | 2014-10-02 | 94 |  |  |  | 80d | 0d |  |  |  |
| 96 | 3.2.2.1.5 | De-shuttering for the Columns |  | 2d | 2014-10-03 | 2014-10-04 | 95 |  |  |  | 80d | 0d |  |  |  |
| 97 | 3.2.2.1.6 | Column Shoe marking |  | 2d | 2014-10-06 | 2014-10-07 | 96 |  |  |  | 80d | 0d |  |  |  |
| 98 | 3.2.2.1.7 | Column shoe laying |  | 2d | 2014-10-08 | 2014-10-09 | 97 |  |  |  | 80d | 0d |  |  |  |
| 99 | 3.2.2.1.8 | Side shuttering work |  | 1d | 2014-10-10 | 2014-10-10 | 98 |  |  |  | 80d | 0d |  |  |  |
| 100 | 3.2.2.1.9 | Column Concreting upto +300 mm |  | 1d | 2014-10-11 | 2014-10-11 | 99 |  |  |  | 80d | 0d |  |  |  |
| 101 | 3.2.2.1.10 | Curing |  | 2d | 2014-10-13 | 2014-10-14 | 100 |  |  |  | 80d | 0d |  |  |  |
| 102 | 3.2.2.1.11 | Supply of Foundation Bolts and Base Plates |  | 1d | 2014-10-15 | 2014-10-15 | 101 |  |  |  | 80d | 0d |  |  |  |
| 103 | 3.2.2.1.12 | Fixing and positioning of Foundation Bolts |  | 2d | 2014-10-16 | 2014-10-17 | 102 |  |  |  | 80d | 0d |  |  |  |
| 104 | 3.2.2.1.13 | Removal of PVC Pipe Sleeves |  | 1d | 2014-10-18 | 2014-10-18 | 103 |  |  |  | 80d | 0d |  |  |  |
| 105 | 3.2.2.1.14 | Grouting of Foundation Bolts |  | 3d | 2014-10-20 | 2014-10-22 | 104 |  |  |  | 80d | 0d |  |  |  |
| 106 | 3.2.2.1.15 | Completion of Structure foundation | milestone | 0d | 2014-10-22 | 2014-10-22 | 105 |  |  |  | 80d | 0d |  |  |  |

| ID | WBS | Task | Duration | Start | Finish | Predecessors | Baseline start | Baseline finish | Baseline duration | Total slack | Free slack | Resources | Work | Cost |
| --- | --- | --- | --- | --- | --- | --- | --- | --- | --- | --- | --- | --- | --- | --- |
| 107 | 3.2.2.2 | **Trench Works** | 27d | 2014-10-23 | 2014-11-22 |  |  |  |  | 80d |  |  |  |  |
| 108 | 3.2.2.2.1 | Marking of Trenches and Gutters | 10d | 2014-10-23 | 2014-11-03 | 106 | 2014-09-15 | 2014-10-01 | 14d | 80d | 0d |  |  |  |
| 109 | 3.2.2.2.2 | Soling Work | 1d | 2014-11-04 | 2014-11-04 | 108 |  |  |  | 80d | 0d |  |  |  |
| 110 | 3.2.2.2.3 | PCC Laying | 1d | 2014-11-05 | 2014-11-05 | 109 |  |  |  | 80d | 0d |  |  |  |
| 111 | 3.2.2.2.4 | HDPE Sheet Laying | 1d | 2014-11-06 | 2014-11-06 | 110 |  |  |  | 80d | 0d |  |  |  |
| 112 | 3.2.2.2.5 | Steel Mat making and Side Wall | 2d | 2014-11-07 | 2014-11-08 | 111 | 2014-07-02 | 2014-11-05 | 108.5d | 80d | 0d |  |  |  |
| 113 | 3.2.2.2.6 | Mat Concreting work | 5d | 2014-11-10 | 2014-11-14 | 112 | 2014-07-02 | 2014-08-05 | 30d | 80d | 0d |  |  |  |
| 114 | 3.2.2.2.7 | Side shuttering work | 5d | 2014-11-15 | 2014-11-20 | 113 | 2014-07-02 | 2014-07-03 | 2d | 80d | 0d |  |  |  |
| 115 | 3.2.2.2.8 | Concreting for Trench Sides | 2d | 2014-11-21 | 2014-11-22 | 114 |  |  |  | 80d | 0d |  |  |  |
| 116 | 3.2.2.3 | **Flooring Work** | 8d | 2014-11-24 | 2014-12-02 |  |  |  |  | 80d |  | Eqpt Foundation | 64h | 1,199,999.92 |
| 117 | 3.2.2.3.1 | PCC Laying | 2d | 2014-11-24 | 2014-11-25 | 115 |  |  |  | 80d | 0d |  |  |  |
| 118 | 3.2.2.3.2 | HDPE Sheet Laying | 1d | 2014-11-26 | 2014-11-26 | 117 |  |  |  | 80d | 0d |  |  |  |
| 119 | 3.2.2.3.3 | Steel Mat laying | 1d | 2014-11-27 | 2014-11-27 | 118 |  |  |  | 80d | 0d |  |  |  |
| 120 | 3.2.2.3.4 | Concreting the Floor | 2d | 2014-11-28 | 2014-11-29 | 119 |  |  |  | 80d | 0d |  |  |  |
| 121 | 3.2.2.3.5 | Grano-flooring at the Top | 2d | 2014-12-01 | 2014-12-02 | 120 |  |  |  | 80d | 0d |  |  |  |
| 122 | 3.2.3 | **Civil Work related to Electrical Items** | 11d | 2015-01-06 | 2015-01-17 |  | 2014-07-02 | 2014-08-05 | 30d | 81d |  |  |  |  |
| 123 | 3.2.3.1 | Excavation | 7d | 2015-01-06 | 2015-01-13 | 22FS+90d |  |  |  | 81d | 0d |  |  |  |
| 124 | 3.2.3.2 | Earth pit Brick wall Construction | 3d | 2015-01-14 | 2015-01-16 | 123 |  |  |  | 81d | 0d |  |  |  |
| 125 | 3.2.3.3 | Trench work | 1d | 2015-01-17 | 2015-01-17 | 124 |  |  |  | 81d |  |  |  |  |
| 126 | 4 | **Mechanical** | 489d | 2013-08-08 | 2015-02-28 |  |  |  |  | 45d |  |  | 2008h | 138,610,421.76 |
| 127 | 4.1 | **Procurement** | 419d | 2013-08-08 | 2014-12-09 |  |  |  |  | 115d |  |  |  |  |
| 128 | 4.1.1 | **Contractor Finalization** | 4d | 2014-09-23 | 2014-09-26 |  |  |  |  | 0d |  |  |  |  |
| 129 | 4.1.1.1 | Fixing of Structural Fabrication and Erection Contractor | 2d | 2014-09-23 | 2014-09-24 | 22 |  |  |  | 0d |  |  |  |  |
| 130 | 4.1.1.2 | Fixing of Equipment Erection Contrator | 2d | 2014-09-23 | 2014-09-24 | 22 |  |  |  | 180d |  |  |  |  |
| 131 | 4.1.1.3 | Fixing of Duct Erection Contrator | 2d | 2014-09-23 | 2014-09-24 | 22 |  |  |  | 83d | 0d |  |  |  |
| 132 | 4.1.1.4 | Fixing of Piping Erection Contractor - CS | 2d | 2014-09-25 | 2014-09-26 | 131 |  |  |  | 83d |  |  |  |  |
| 133 | 4.1.1.5 | Fixing of Piping Erection Contractor - SS | 2d | 2014-09-25 | 2014-09-26 | 131 |  |  |  | 163d | 83d |  |  |  |
| 134 | 4.1.1.6 | Fixing of Piping Erection Contractor - GI | 2d | 2014-09-25 | 2014-09-26 | 131 |  |  |  | 83d |  |  |  |  |
| 135 | 4.1.1.7 | Fixing of Piping Erection Contractor - Ni | 2d | 2014-09-25 | 2014-09-26 | 131 |  |  |  | 158d | 83d |  |  |  |
| 136 | 4.1.1.8 | Fixing of Piping Erection Contractor - Non-metallic | 2d | 2014-09-25 | 2014-09-26 | 131 |  |  |  | 158d | 83d |  |  |  |

| ID | WBS | Task | Duration | Start | Finish | Predecessors | Baseline start | Baseline finish | Baseline duration | Total slack | Free slack | Resources |
| --- | --- | --- | --- | --- | --- | --- | --- | --- | --- | --- | --- | --- |
| 137 | 4.1.2 | **Equipment Procurement (CAL Supply)** | 229d | 2013-08-08 | 2014-05-01 |  | 2014-07-02 | 2014-07-12 | 10d | 304d |  |  |
| 138 | 4.1.2.1 | Purchase of D-2101 | 119d | 2013-12-13 | 2014-04-30 | 3FS+310d |  |  |  | 305d | 201d | z.D-2101 |
| 139 | 4.1.2.2 | Purchase of P-2101 A/B - Ni | 98d | 2013-08-08 | 2013-11-29 | 3FS+201d |  |  |  | 430d | 315d | z.P-2101 A/B |
| 140 | 4.1.2.3 | Purchase of D-2102 | 119d | 2013-12-13 | 2014-04-30 | 3FS+310d |  |  |  | 305d | 206d | z.D-2102 |
| 141 | 4.1.2.4 | Purchase of D-2301 | 119d | 2013-12-13 | 2014-04-30 | 3FS+310d |  |  |  | 305d | 191d | z.D-2301 |
| 142 | 4.1.2.5 | Purchase of D-3101 | 119d | 2013-12-13 | 2014-04-30 | 3FS+310d |  |  |  | 305d | 186d | z.D-3101 |
| 143 | 4.1.2.6 | Purchase of HE-3101 | 120d | 2013-12-13 | 2014-05-01 | 3FS+310d |  |  |  | 304d | 185d | z.HE-3101 |
| 144 | 4.1.2.7 | Purchase of T-3101 | 119d | 2013-12-13 | 2014-04-30 | 3FS+310d |  |  |  | 305d | 185d | z.T-3101 |
| 145 | 4.1.2.8 | Purchase of BL-4101 | 120d | 2013-12-13 | 2014-05-01 | 3FS+310d |  |  |  | 299d | 185d | z.BL-4101 |
| 146 | 4.1.2.9 | Purchase of N-4101 | 120d | 2013-12-13 | 2014-05-01 | 3FS+310d |  |  |  | 304d | 184d | z.N-4101 |
| 147 | 4.1.2.10 | Purchase of N-4108 | 120d | 2013-12-13 | 2014-05-01 | 3FS+310d |  |  |  | 304d | 184d | z.N-4108 |
| 148 | 4.1.2.11 | Purchase of S-4101 | 119d | 2013-12-13 | 2014-04-30 | 3FS+310d |  |  |  | 305d | 185d | z.S-4101 |
| 149 | 4.1.2.12 | Purchase of W-4101 | 120d | 2013-12-13 | 2014-05-01 | 3FS+310d |  |  |  | 304d | 184d | z.W-4101 |
| 150 | 4.1.2.13 | Purchase of BL-6101 | 120d | 2013-12-13 | 2014-05-01 | 3FS+310d |  |  |  | 299d | 184d | z.BL-6101 |
| 151 | 4.1.2.14 | Purchase of D-6101 | 119d | 2013-12-13 | 2014-04-30 | 3FS+310d |  |  |  | 305d | 191d | z.D-6101 |
| 152 | 4.1.2.15 | Purchase of D-6102 | 119d | 2013-12-13 | 2014-04-30 | 3FS+310d |  |  |  | 305d | 191d | z.D-6102 |
| 153 | 4.1.2.16 | Purchase of D-6103 | 119d | 2013-12-13 | 2014-04-30 | 3FS+310d |  |  |  | 305d | 186d | z.D-6103 |
| 154 | 4.1.2.17 | Purchase of D-6104 | 119d | 2013-12-13 | 2014-04-30 | 3FS+310d |  |  |  | 206d |  | z.D-6104 |
| 155 | 4.1.2.18 | Purchase of T-6101 | 120d | 2013-12-13 | 2014-05-01 | 3FS+310d |  |  |  | 298d | 184d | z.T-6101 |
| 156 | 4.1.2.19 | Purchase of C-7301 | 120d | 2013-12-13 | 2014-05-01 | 3FS+310d |  |  |  | 304d | 200d | z.C-7301 |
| 157 | 4.1.2.20 | Purchase of P-7302 A/B | 120d | 2013-12-13 | 2014-05-01 | 3FS+310d | 2014-07-04 | 2014-10-24 | 96.5d | 299d | 190d | z.P-7302 A/B |
| 158 | 4.1.2.21 | Purchase of T-8301 A/B | 119d | 2013-12-13 | 2014-04-30 | 3FS+310d |  |  |  | 305d | 185d | z.T-8301 A/B |
| 159 | 4.1.3 | **Procurement of Pipes & Fittings** | 160d | 2014-06-06 | 2014-12-09 |  |  |  |  | 115d |  |  |
| 160 | 4.1.3.1 | Purchase of Pipes & Fittings - CS | 20d | 2014-06-06 | 2014-06-28 | 3FS+460d |  |  |  | 255d |  | z.CS Pipes and Fittings |
| 161 | 4.1.3.2 | Purchase of Pipes & Fittings - SS | 20d | 2014-06-06 | 2014-06-28 | 3FS+460d |  |  |  | 255d |  | z.SS Pipes and Fittings |
| 162 | 4.1.3.3 | Purchase of Pipes & Fittings - Ni | 20d | 2014-06-06 | 2014-06-28 | 3FS+460d |  |  |  | 255d |  | z.NI Pipes and Fittings |
| 163 | 4.1.3.4 | Purchase of Ni Plug Valves - 19 Nos | 30d | 2014-06-06 | 2014-07-10 | 3FS+460d |  |  |  | 245d |  | z.NI PL Valves |
| 164 | 4.1.3.5 | Purchase of SS Plug Valves - 9 Nos | 30d | 2014-06-06 | 2014-07-10 | 3FS+460d |  |  |  | 245d |  | z.SS PL Valves |
| 165 | 4.1.3.6 | Purchase of Other Type Valves | 30d | 2014-06-06 | 2014-07-10 | 3FS+460d |  |  |  | 245d |  | z.Other Valves |
| 166 | 4.1.3.7 | Purchase of PSV - 8 Nos | 30d | 2014-06-06 | 2014-07-10 | 3FS+460d |  |  |  | 245d |  | z.PSV |
| 167 | 4.1.3.8 | Purchase of PCV | 30d | 2014-06-06 | 2014-07-10 | 3FS+460d |  |  |  | 245d |  | z.PCV |
| 168 | 4.1.3.9 | Purchase of Strainers | 20d | 2014-06-06 | 2014-06-28 | 3FS+460d |  |  |  | 255d |  | z.Strainers |
| 169 | 4.1.3.10 | Purchase of Gaskets | 30d | 2014-06-06 | 2014-07-10 | 3FS+460d |  |  |  | 245d |  | z.Gaskets |
| 170 | 4.1.3.11 | Purchase of Fasteners | 30d | 2014-06-06 | 2014-07-10 | 3FS+460d |  |  |  | 245d |  | z.Fasteners |
| 171 | 4.1.3.12 | Purchase of Waste water pit pump | 25d | 2014-06-06 | 2014-07-04 | 3FS+460d |  |  |  | 250d |  | z.WW pit pump |
| 172 | 4.1.3.13 | Purchase of Valve & Pipe Supports | 25d | 2014-06-06 | 2014-07-04 | 3FS+460d |  |  |  | 250d |  | z.Pipe_Valve Supports |
| 173 | 4.1.3.14 | Purchase of Cooling Water Pump | 30d | 2014-06-06 | 2014-07-10 | 3FS+460d |  |  |  | 245d |  | z.CW Pump |
| 174 | 4.1.3.15 | Purchase of Safety Showers | 30d | 2014-06-06 | 2014-07-10 | 3FS+460d |  |  |  | 245d |  | z.Safety showers |
| 175 | 4.1.3.16 | Hiring of Octopus Crane | 25d | 2014-07-23 | 2014-08-20 | 3FS+500d |  |  |  | 210d |  |  |
| 176 | 4.1.3.17 | Purchase of Paints | 20d | 2014-11-17 | 2014-12-09 | 3FS+600d |  |  |  | 115d |  |  |
| 177 | 4.1.3.18 | Purchase of Anchor Fasteners | 25d | 2014-06-06 | 2014-07-04 | 3FS+460d |  |  |  | 250d |  |  |
| 178 | 4.1.3.19 | Purchase of Insulation (Hot / Cold) | 20d | 2014-11-17 | 2014-12-09 | 3FS+600d |  |  |  | 115d |  |  |
| 179 | 4.1.3.20 | Purchase of Grease | 15d | 2014-06-06 | 2014-06-23 | 3FS+460d |  |  |  | 260d |  |  |
| 180 | 4.1.3.21 | Purchase of Foundation Bolts | 10d | 2014-06-06 | 2014-06-17 | 3FS+460d |  |  |  | 265d |  |  |

| ID | WBS | Task | Type | Duration | Start | Finish | Predecessors | Baseline start | Baseline finish | Baseline duration | Total slack | Free slack | Resources | Work | Cost |
| --- | --- | --- | --- | --- | --- | --- | --- | --- | --- | --- | --- | --- | --- | --- | --- |
| 181 | 4.2 | **Execution** |  | 135d | 2014-09-25 | 2015-02-28 |  |  |  |  | 0d |  |  | 2008h | 138,610,421.76 |
| 182 | 4.2.1 | **Structural Fabrication & Erection** |  | 125d | 2014-09-25 | 2015-02-17 |  |  |  |  | 0d |  | Bldg Structurals | 1000h | 15,600,000 |
| 183 | 4.2.1.1 | Pre-Fabrication of Structures (Vendor's Place) |  | 30d | 2014-09-25 | 2014-10-29 | 22, 129 | 2014-09-19 | 2014-09-24 | 4.5d | 0d |  |  |  |  |
| 184 | 4.2.1.2 | Receipt of Pre-fabricated Structures |  | 20d | 2014-10-13 | 2014-11-04 | 183SS+15d |  |  |  | 0d |  |  |  |  |
| 185 | 4.2.1.3 | Mobilization of Erection Team at Site | milestone | 0d | 2014-10-28 | 2014-10-28 | 184FS-7d |  |  |  | 147d | 0d |  |  |  |
| 186 | 4.2.1.4 | Checking of Foundations |  | 3d | 2014-10-30 | 2014-11-01 | 185FS+2d |  |  |  | 147d |  |  |  |  |
| 187 | 4.2.1.5 | Erection of Columns (Grid A) |  | 2d | 2014-11-05 | 2014-11-06 | 184 |  |  |  | 0d |  |  |  |  |
| 188 | 4.2.1.6 | Erection of Columns (Grid B) |  | 2d | 2014-11-07 | 2014-11-08 | 187 |  |  |  | 0d |  |  |  |  |
| 189 | 4.2.1.7 | Erection of Columns (Grid C) |  | 2d | 2014-11-10 | 2014-11-11 | 188 |  |  |  | 0d |  |  |  |  |
| 190 | 4.2.1.8 | Erection of Columns (Grid A') |  | 2d | 2014-11-12 | 2014-11-13 | 189 |  |  |  | 0d |  |  |  |  |
| 191 | 4.2.1.9 | Erection of Columns (Grid D) |  | 2d | 2014-11-14 | 2014-11-15 | 190 |  |  |  | 0d |  |  |  |  |
| 192 | 4.2.1.10 | Erection of Tie Beams - EL+7.000M Lvl |  | 2d | 2014-11-17 | 2014-11-18 | 191 |  |  |  | 0d |  |  |  |  |
| 193 | 4.2.1.11 | Erection of Tie Beams - EL+12.000M Lvl |  | 2d | 2014-11-19 | 2014-11-20 | 192 |  |  |  | 0d |  |  |  |  |
| 194 | 4.2.1.12 | Erection of Tie Beams - EL+14.000M Lvl |  | 2d | 2014-11-21 | 2014-11-22 | 193 |  |  |  | 0d |  |  |  |  |
| 195 | 4.2.1.13 | Erection of Tie Beams - EL+17.500M Lvl |  | 2d | 2014-11-24 | 2014-11-25 | 194 |  |  |  | 0d |  |  |  |  |
| 196 | 4.2.1.14 | Erection of Tie Beams - EL+23.000M Lvl |  | 2d | 2014-11-26 | 2014-11-27 | 195 |  |  |  | 0d |  |  |  |  |
| 197 | 4.2.1.15 | Erection of Floor Beams - EL+7.000M Lvl |  | 5d | 2014-11-28 | 2014-12-03 | 196 |  |  |  | 0d |  |  |  |  |
| 198 | 4.2.1.16 | Erection of Floor Beams - EL+12.000M Lvl |  | 5d | 2014-12-04 | 2014-12-09 | 197 |  |  |  | 0d |  |  |  |  |
| 199 | 4.2.1.17 | Erection of Floor Beams - EL+14.000M Lvl |  | 5d | 2014-12-10 | 2014-12-15 | 198 |  |  |  | 0d |  |  |  |  |
| 200 | 4.2.1.18 | Erection of Floor Beams - EL+17.500M Lvl |  | 5d | 2014-12-16 | 2014-12-20 | 199 |  |  |  | 0d |  |  |  |  |
| 201 | 4.2.1.19 | Erection of Floor Beams - EL+23.000M Lvl |  | 5d | 2014-12-22 | 2014-12-26 | 200 |  |  |  | 0d |  |  |  |  |
| 202 | 4.2.1.20 | Erection of Cheq. Plates - EL+7.000M Lvl |  | 3d | 2014-12-27 | 2014-12-30 | 201 |  |  |  | 78d | 0d |  |  |  |
| 203 | 4.2.1.21 | Erection of Cheq. Plates - EL+12.000M Lvl |  | 3d | 2014-12-31 | 2015-01-02 | 202 |  |  |  | 78d | 0d |  |  |  |
| 204 | 4.2.1.22 | Erection of Cheq. Plates - EL+14.000M Lvl |  | 3d | 2015-01-03 | 2015-01-06 | 203 | 2014-09-22 | 2014-11-05 | 38d | 78d | 0d |  |  |  |
| 205 | 4.2.1.23 | Erection of Cheq. Plates - EL+17.500M Lvl |  | 3d | 2015-01-07 | 2015-01-09 | 204 |  |  |  | 78d | 0d |  |  |  |
| 206 | 4.2.1.24 | Erection of Bracings - EL+7.000M Lvl |  | 2d | 2015-01-10 | 2015-01-12 | 205 |  |  |  | 82d | 0d |  |  |  |
| 207 | 4.2.1.25 | Erection of Bracings - EL+14.000M Lvl |  | 2d | 2015-01-13 | 2015-01-14 | 206 |  |  |  | 82d | 0d |  |  |  |
| 208 | 4.2.1.26 | Erection of Bracings - EL+23.000M Lvl |  | 2d | 2015-01-15 | 2015-01-16 | 207 |  |  |  | 82d |  |  |  |  |
| 209 | 4.2.1.27 | Erection of Staircase |  | 30d | 2014-12-10 | 2015-01-13 | 198 |  |  |  | 55d | 0d |  |  |  |
| 210 | 4.2.1.28 | Erection of Handrails |  | 15d | 2015-01-14 | 2015-01-30 | 209 |  |  |  | 55d | 0d |  |  |  |
| 211 | 4.2.1.29 | Erection of Roof Structure for Flaker Godown |  | 5d | 2015-01-31 | 2015-02-05 | 210 | 2014-05-07 | 2014-10-23 | 145.5d | 55d | 0d |  |  |  |
| 212 | 4.2.1.30 | Erection of Roofing Sheets for Godown |  | 5d | 2015-02-06 | 2015-02-11 | 211 | 2014-05-07 | 2014-08-12 | 84d | 55d | 0d |  |  |  |
| 213 | 4.2.1.31 | Erection of Roofing Sheets for Structure |  | 5d | 2015-02-12 | 2015-02-17 | 212 | 2014-05-07 | 2014-07-30 | 73d | 55d | 0d |  |  |  |
| 214 | 4.2.1.32 | Completion of Structure Erection | milestone | 0d | 2015-02-17 | 2015-02-17 | 213 |  |  |  | 55d |  |  |  |  |

| ID | WBS | Task | Type | Duration | Start | Finish | Predecessors | Baseline start | Baseline finish | Baseline duration | Total slack | Free slack | Resources | Work | Cost |
| --- | --- | --- | --- | --- | --- | --- | --- | --- | --- | --- | --- | --- | --- | --- | --- |
| 215 | 4.2.2 | **Equipment Erection** |  | 26d | 2014-12-03 | 2015-01-01 |  |  |  |  | 21d |  | Eqpt Erection | 208h | 105,148,385.28 |
| 216 | 4.2.2.1 | Erection of EV-2101 |  | 1d | 2014-12-10 | 2014-12-10 | 198, 44 |  |  |  | 114d |  | Bertrams Supply |  | 7,721,250 |
| 217 | 4.2.2.2 | Erection of D-2101 |  | 1d | 2014-12-22 | 2014-12-22 | 200, 138 |  |  |  | 104d |  | D-2101 |  | 500,000 |
| 218 | 4.2.2.3 | Erection of P-2101 A/B |  | 1d | 2014-12-03 | 2014-12-03 | 121, 139 | 2014-05-07 | 2014-08-12 | 84d | 115d | 0d | P-2101 A/B |  | 874,000 |
| 219 | 4.2.2.4 | Erection of D-2102 |  | 1d | 2014-12-27 | 2014-12-27 | 201, 140 |  |  |  | 99d |  | D-2102 |  | 300,000 |
| 220 | 4.2.2.5 | Erection of EV-2301 |  | 1d | 2014-12-22 | 2014-12-22 | 200, 46 |  |  |  | 104d |  | Bertrams Supply |  | 7,721,250 |
| 221 | 4.2.2.6 | Erection of D-2301 |  | 1d | 2014-12-10 | 2014-12-10 | 198, 141 |  |  |  | 114d |  | D-2301 |  | 400,000 |
| 222 | 4.2.2.7 | Erection of V-2301 |  | 1d | 2014-12-04 | 2014-12-04 | 197, 48 |  |  |  | 119d |  | Bertrams Supply |  | 7,721,250 |
| 223 | 4.2.2.8 | Erection of T-3101 |  | 1d | 2014-12-03 | 2014-12-03 | 121, 144 | 2014-05-07 | 2014-07-16 | 61d | 120d |  | T-3101 |  | 173,820 |
| 224 | 4.2.2.9 | Erection of D-3101 |  | 1d | 2014-12-04 | 2014-12-04 | 197, 142 |  |  |  | 119d |  | D-3101 |  | 300,000 |
| 225 | 4.2.2.10 | Erection of P-3101 A/B |  | 1d | 2014-12-03 | 2014-12-03 | 121 |  |  |  | 115d | 0d |  |  |  |
| 226 | 4.2.2.11 | Erection of F-3101 |  | 1d | 2014-12-04 | 2014-12-04 | 197, 50 |  |  |  | 119d |  | Bertrams Supply |  | 7,721,250 |
| 227 | 4.2.2.12 | Erection of LCP-3101 |  | 1d | 2014-12-04 | 2014-12-04 | 197, 52 |  |  |  | 119d |  | Bertrams Supply |  | 7,721,250 |
| 228 | 4.2.2.13 | Erection of VFC-F3101 |  | 1d | 2014-12-04 | 2014-12-04 | 197, 54 | 2014-05-07 | 2014-07-16 | 61d | 119d |  | Bertrams Supply |  | 7,721,250 |
| 229 | 4.2.2.14 | Erection of HE-3101 |  | 1d | 2014-12-04 | 2014-12-04 | 197, 143 |  |  |  | 119d |  | HE-3101 |  | 139,594 |
| 230 | 4.2.2.15 | Erection of BL-4101 |  | 1d | 2014-12-04 | 2014-12-04 | 197, 145 |  |  |  | 114d | 0d | BL-4101 |  | 198,000 |
| 231 | 4.2.2.16 | Erection of N-4101 |  | 1d | 2014-12-03 | 2014-12-03 | 121, 146 | 2014-09-11 | 2014-10-23 | 36d | 120d |  | N-4101 |  | 650,000 |
| 232 | 4.2.2.17 | Erection of S-4101 |  | 1d | 2014-12-03 | 2014-12-03 | 121, 148 |  |  |  | 120d |  | S-4101 |  | 71,573 |
| 233 | 4.2.2.18 | Erection of W-4101 |  | 1d | 2014-12-03 | 2014-12-03 | 121, 149 |  |  |  | 120d |  | W-4101 |  | 650,000 |
| 234 | 4.2.2.19 | Erection of N-4108 |  | 1d | 2014-12-03 | 2014-12-03 | 121, 147 | 2014-09-11 | 2014-09-18 | 6d | 120d |  | N-4108 |  | 200,000 |
| 235 | 4.2.2.20 | Erection of T-6101 |  | 1d | 2014-12-03 | 2014-12-03 | 121, 155 | 2014-10-03 | 2014-10-08 | 4d | 114d | 0d | T-6101 |  | 1,584,832 |
| 236 | 4.2.2.21 | Erection of P-6101 |  | 1d | 2014-12-04 | 2014-12-04 | 235, 64 |  |  |  | 114d | 0d | Bertrams Supply |  | 7,721,250 |
| 237 | 4.2.2.22 | Erection of D-6101 |  | 1d | 2014-12-10 | 2014-12-10 | 198, 151 | 2014-09-23 | 2014-10-03 | 9d | 114d |  | D-6101 |  | 300,000 |
| 238 | 4.2.2.23 | Erection of BG-6101 |  | 1d | 2014-12-04 | 2014-12-04 | 197, 56 |  |  |  | 119d |  | Bertrams Supply |  | 7,721,250 |
| 239 | 4.2.2.24 | Erection of LCP-BG6101 |  | 1d | 2014-12-10 | 2014-12-10 | 198, 62 |  |  |  | 114d |  | Bertrams Supply |  | 7,721,250 |
| 240 | 4.2.2.25 | Erection of H-6101 |  | 1d | 2014-12-04 | 2014-12-04 | 197, 58 |  |  |  | 119d |  | Bertrams Supply |  | 7,721,250 |
| 241 | 4.2.2.26 | Erection of HE-6101 |  | 1d | 2014-12-10 | 2014-12-10 | 198, 60 |  |  |  | 114d |  | Bertrams Supply |  | 7,721,250 |
| 242 | 4.2.2.27 | Erection of BL-6101 |  | 1d | 2014-12-03 | 2014-12-03 | 121, 150 |  |  |  | 115d | 0d | BL-6101 |  | 247,000 |
| 243 | 4.2.2.28 | Erection of D-6102 |  | 1d | 2014-12-10 | 2014-12-10 | 198, 152 |  |  |  | 114d |  | D-6102 |  | 300,000 |
| 244 | 4.2.2.29 | Erection of D-6103 |  | 1d | 2014-12-04 | 2014-12-04 | 197, 153 |  |  |  | 119d |  | D-6103 |  | 300,000 |
| 245 | 4.2.2.30 | Erection of D-6104 |  | 1d | 2014-12-27 | 2014-12-27 | 201, 154 |  |  |  | 0d |  | D-6104 |  | 300,000 |
| 246 | 4.2.2.31 | Erection of C-7301 |  | 1d | 2014-12-22 | 2014-12-22 | 200, 156 |  |  |  | 104d |  | C-7301 |  | 1,821,431 |
| 247 | 4.2.2.32 | Erection of T-7301 |  | 1d | 2014-12-03 | 2014-12-03 | 121 | 2014-09-20 | 2014-10-13 | 19.5d | 120d |  | T-7301 |  | 101,000 |
| 248 | 4.2.2.33 | Erection of P-7302 A/B |  | 1d | 2014-12-10 | 2014-12-10 | 198, 157 | 2014-09-20 | 2014-10-14 | 20.5d | 109d | 0d | P-7302 A/B |  | 584,000 |
| 249 | 4.2.2.34 | Erection of T-8301 A/B |  | 1d | 2014-12-03 | 2014-12-03 | 121, 158 |  |  |  | 120d |  | T-8301 A/B |  | 188,135 |
| 250 | 4.2.2.35 | Erection of P-8301 A/B |  | 1d | 2014-12-03 | 2014-12-03 | 121, 66 |  |  |  | 115d | 0d | Bertrams Supply |  | 7,721,250 |
| 251 | 4.2.2.36 | Erection of Waste Water Pump |  | 1d | 2014-12-29 | 2014-12-29 | 245 |  |  |  | 0d |  | WW pit pump |  | 180,000 |
| 252 | 4.2.2.37 | Erection of Furnce Oil Day Tank |  | 1d | 2014-12-30 | 2014-12-30 | 245, 251 |  |  |  | 0d |  | FO Day Tank |  | 100,000 |
| 253 | 4.2.2.38 | Erection of Furnace Oil Pump |  | 1d | 2014-12-31 | 2014-12-31 | 245, 252 |  |  |  | 0d |  | FO Pump |  | 300,000 |
| 254 | 4.2.2.39 | Erection of Cooling Water Pump |  | 1d | 2015-01-01 | 2015-01-01 | 253 |  |  |  | 0d |  | CW pump |  | 800,000 |
| 255 | 4.2.2.40 | Completion of Equipment Erection | milestone | 0d | 2015-01-01 | 2015-01-01 | 254 |  |  |  | 0d |  | Octopus Crane |  | 180,000 |

| ID | WBS | Task | Type | Duration | Start | Finish | Predecessors | Baseline start | Baseline finish | Baseline duration | Total slack | Free slack | Resources | Work | Cost |
| --- | --- | --- | --- | --- | --- | --- | --- | --- | --- | --- | --- | --- | --- | --- | --- |
| 256 | 4.2.3 | **Piping Erection** |  | 50d | 2015-01-02 | 2015-02-28 |  |  |  |  | 0d |  |  | 800h | 17,862,036.48 |
| 257 | 4.2.3.1 | Erection of CS & GI Piping |  | 30d | 2015-01-02 | 2015-02-05 | 255, 132, 134 |  |  |  | 0d |  | CS piping Erection; Other Valves; PSV; CS Pipes and Fittings; Pipe_Valve Supports-CS; Steam Trap-IBR; Steam Trap-NIBR; Gaskets - CS; Fasteners - CS; Strainers-CS; Safety showers | 240h | 7,332,661 |
| 258 | 4.2.3.2 | Erection of SS Piping |  | 15d | 2015-01-02 | 2015-01-19 | 255, 133 |  |  |  | 80d |  | SS Piping Erection; SS PL Valves; PCV; SS Pipes and Fittings; Pipe_Valve Supports-SS; Fasteners - SS; Gaskets - SS; Strainers-SS | 120h | 3,809,482 |
| 259 | 4.2.3.3 | Erection of Ni Piping |  | 20d | 2015-01-02 | 2015-01-24 | 255, 135 |  |  |  | 75d |  | NI piping Erection; NI PL Valves; NI Pipes and Fittings; Pipe_Valve Supports-Ni; Gaskets - Ni; Fasteners - Ni | 160h | 3,719,894 |
| 260 | 4.2.3.4 | Erection of Non-metallic Piping |  | 20d | 2015-01-02 | 2015-01-24 | 255, 136 | 2014-09-20 | 2014-10-13 | 19.5d | 75d |  |  |  |  |
| 261 | 4.2.3.5 | Erection of Insulations |  | 15d | 2015-02-06 | 2015-02-23 | 257 |  |  |  | 50d |  | Insulation Work | 120h | 2,400,000 |
| 262 | 4.2.3.6 | Painting of Piping & Structures |  | 20d | 2015-02-06 | 2015-02-28 | 257 |  |  |  | 45d | 0d | Painting Work | 160h | 600,000 |
| 263 | 4.2.3.7 | Completion of Piping Erection | milestone | 0d | 2015-02-28 | 2015-02-28 | 262 |  |  |  | 45d |  |  |  |  |
| 264 | 5 | **Electrical** |  | 234d | 2014-04-24 | 2015-01-21 |  |  |  |  | 78d |  |  | 520h | 4,379,999.68 |
| 265 | 5.1 | **Procurement** |  | 175d | 2014-04-24 | 2014-11-13 |  |  |  |  | 130d |  |  |  |  |
| 266 | 5.1.1 | **MCC Panels** |  | 170d | 2014-04-24 | 2014-11-07 |  |  |  |  | 135d |  |  |  |  |
| 267 | 5.1.1.1 | Preparation of Tech Spec. & BOQ |  | 2d | 2014-04-24 | 2014-04-25 | 22FS-130d | 2014-09-20 | 2014-10-13 | 19.5d | 245d | 0d |  |  |  |
| 268 | 5.1.1.2 | Raising Indent |  | 1d | 2014-04-26 | 2014-04-26 | 267 |  |  |  | 245d | 0d |  |  |  |
| 269 | 5.1.1.3 | Floating enquiry and getting offers |  | 10d | 2014-04-28 | 2014-05-08 | 268 |  |  |  | 245d | 0d |  |  |  |
| 270 | 5.1.1.4 | Techno-commercial negotiation |  | 7d | 2014-05-09 | 2014-05-16 | 269 |  |  |  | 245d | 110d |  |  |  |
| 271 | 5.1.1.5 | Management approval & ordering |  | 3d | 2014-09-23 | 2014-09-25 | 270, 22 |  |  |  | 135d | 0d |  |  |  |
| 272 | 5.1.1.6 | Receipt of drawing from supplier & approval |  | 7d | 2014-09-26 | 2014-10-03 | 271 |  |  |  | 135d | 0d |  |  |  |
| 273 | 5.1.1.7 | Delivery of MCC panel |  | 30d | 2014-10-04 | 2014-11-07 | 272 |  |  |  | 135d | 0d | z.MCC; z.Motors; z.PDB&LDB; z.Earthing; z.VFD; z.Structural |  |  |
| 274 | 5.1.2 | **LT Cables and Trays** |  | 169d | 2014-04-24 | 2014-11-06 |  | 2014-09-20 | 2014-10-13 | 19.5d | 95d |  |  |  |  |
| 275 | 5.1.2.1 | Preparation of Tech Spec. & BOQ |  | 15d | 2014-04-24 | 2014-05-10 | 22FS-130d |  |  |  | 210d | 115d |  |  |  |
| 276 | 5.1.2.2 | Raising Indent |  | 1d | 2014-09-23 | 2014-09-23 | 275, 22 |  |  |  | 95d | 0d |  |  |  |
| 277 | 5.1.2.3 | Floating enquiry and getting offers |  | 12d | 2014-09-24 | 2014-10-07 | 276 |  |  |  | 95d | 0d |  |  |  |
| 278 | 5.1.2.4 | Techno-commercial negotiation |  | 5d | 2014-10-08 | 2014-10-13 | 277 |  |  |  | 95d | 0d |  |  |  |
| 279 | 5.1.2.5 | Management approval & ordering |  | 3d | 2014-10-14 | 2014-10-16 | 278 |  |  |  | 95d | 0d |  |  |  |
| 280 | 5.1.2.6 | Receipt of drawing from supplier & approval |  | 3d | 2014-10-17 | 2014-10-20 | 279 |  |  |  | 95d | 0d |  |  |  |
| 281 | 5.1.2.7 | Delivery of LT Cables and Trays |  | 15d | 2014-10-21 | 2014-11-06 | 280 | 2014-09-20 | 2014-10-13 | 19.5d | 95d | 0d | z.Cable Tray; z.Cables; z.LCP-FRP |  |  |

| ID | WBS | Task | Duration | Start | Finish | Predecessors | Baseline start | Baseline finish | Baseline duration | Total slack | Free slack | Resources | Work | Cost |
| --- | --- | --- | --- | --- | --- | --- | --- | --- | --- | --- | --- | --- | --- | --- |
| 282 | 5.1.3 | **Lighting materials** | 175d | 2014-04-24 | 2014-11-13 |  |  |  |  | 130d |  |  |  |  |
| 283 | 5.1.3.1 | Preparation of Tech Spec. & BOQ | 15d | 2014-04-24 | 2014-05-10 | 22FS-130d |  |  |  | 245d | 115d |  |  |  |
| 284 | 5.1.3.2 | Raising Indent | 1d | 2014-09-23 | 2014-09-23 | 283, 22 |  |  |  | 130d | 0d |  |  |  |
| 285 | 5.1.3.3 | Floating enquiry and getting offers | 12d | 2014-09-24 | 2014-10-07 | 284 |  |  |  | 130d | 0d |  |  |  |
| 286 | 5.1.3.4 | Techno-commercial negotiation | 7d | 2014-10-08 | 2014-10-15 | 285 |  |  |  | 130d | 0d |  |  |  |
| 287 | 5.1.3.5 | Management approval & ordering | 3d | 2014-10-16 | 2014-10-18 | 286 |  |  |  | 130d | 0d |  |  |  |
| 288 | 5.1.3.6 | Receipt of drawing from supplier & approval | 7d | 2014-10-20 | 2014-10-27 | 287 | 2014-09-20 | 2014-10-13 | 19.5d | 130d | 0d |  |  |  |
| 289 | 5.1.3.7 | Delivery of Lighting materials | 15d | 2014-10-28 | 2014-11-13 | 288 |  |  |  | 130d | 46d | z.Light Fittings; z.Lightening |  |  |
| 290 | 5.2 | **Execution** | 65d | 2014-11-07 | 2015-01-21 |  |  |  |  | 78d |  | Electrical Erection | 520h | 4,379,999.68 |
| 291 | 5.2.1 | **Erection of MCC Panel** | 6d | 2014-11-08 | 2014-11-14 |  |  |  |  | 135d |  |  |  | 900,000 |
| 292 | 5.2.1.1 | Base Frame Fabrication for MCC Panel | 2d | 2014-11-08 | 2014-11-10 | 273 |  |  |  | 135d | 0d |  |  |  |
| 293 | 5.2.1.2 | Erection of Base Frame | 1d | 2014-11-11 | 2014-11-11 | 292 |  |  |  | 135d | 0d |  |  |  |
| 294 | 5.2.1.3 | Erection of MCC Panel | 3d | 2014-11-12 | 2014-11-14 | 293 |  |  |  | 135d | 20d | MCC |  | 900,000 |
| 295 | 5.2.2 | **Earth Pit Construction** | 9d | 2014-11-07 | 2014-11-17 |  | 2014-09-20 | 2014-10-13 | 19.5d | 134d |  |  |  | 210,000 |
| 296 | 5.2.2.1 | Erection of CI pipe with GI Flat | 3d | 2014-11-07 | 2014-11-10 | 281 |  |  |  | 134d | 0d |  |  |  |
| 297 | 5.2.2.2 | Filling of Coal and Salt | 1d | 2014-11-11 | 2014-11-11 | 296 |  |  |  | 134d | 0d |  |  |  |
| 298 | 5.2.2.3 | Connecting Earthflats to Cable Trays | 5d | 2014-11-12 | 2014-11-17 | 297 |  |  |  | 134d |  | Earthing; Lightening |  | 210,000 |
| 299 | 5.2.3 | **Cable Tray** | 48d | 2014-11-07 | 2015-01-01 |  |  |  |  | 95d |  |  |  | 360,000 |
| 300 | 5.2.3.1 | Fabrication of Cable Tray Supports | 2d | 2014-11-07 | 2014-11-08 | 281 |  |  |  | 95d | 0d |  |  |  |
| 301 | 5.2.3.2 | Laying of Cable Trays | 1d | 2014-11-10 | 2014-11-10 | 300 |  |  |  | 95d | 0d | Cable Tray; Structural |  | 360,000 |
| 302 | 5.2.3.3 | laying of Earth flats along with Trays | 45d | 2014-11-11 | 2015-01-01 | 301 | 2014-09-20 | 2014-10-13 | 19.5d | 95d |  |  |  |  |
| 303 | 5.2.4 | **Pump Motors** | 30d | 2014-12-04 | 2015-01-07 |  |  |  |  | 90d |  |  |  | 1,458,000 |
| 304 | 5.2.4.1 | **P-6101** | 5d | 2014-12-05 | 2014-12-10 |  |  |  |  | 114d |  |  |  | 182,250 |
| 305 | 5.2.4.1.1 | Erection of Push Button Station | 1d | 2014-12-05 | 2014-12-05 | 236 |  |  |  | 114d | 0d | LCP-FRP |  | 6,000 |
| 306 | 5.2.4.1.2 | Power Cable Laying | 1d | 2014-12-06 | 2014-12-06 | 305, 281 |  |  |  | 114d | 0d |  |  |  |
| 307 | 5.2.4.1.3 | Control Cable Laying | 1d | 2014-12-08 | 2014-12-08 | 306, 281 |  |  |  | 114d | 0d |  |  |  |
| 308 | 5.2.4.1.4 | Termination of Power & Control Cables | 1d | 2014-12-09 | 2014-12-09 | 307 | 2014-09-22 | 2014-10-13 | 18d | 114d | 0d | Cables; Motors |  | 82,500 |
| 309 | 5.2.4.1.5 | No Load Trail | 1d | 2014-12-10 | 2014-12-10 | 308, 294 |  |  |  | 114d |  | VFD |  | 93,750 |

| ID | WBS | Task | Duration | Start | Finish | Predecessors | Baseline start | Baseline finish | Baseline duration | Total slack | Free slack | Resources | Cost |
| --- | --- | --- | --- | --- | --- | --- | --- | --- | --- | --- | --- | --- | --- |
| 310 | 5.2.4.2 | **P-8301 A/B** | 5d | 2014-12-04 | 2014-12-09 |  |  |  |  | 115d |  |  | 182,250 |
| 311 | 5.2.4.2.1 | Erection of Push Button Station | 1d | 2014-12-04 | 2014-12-04 | 250 |  |  |  | 115d | 0d | LCP-FRP | 6,000 |
| 312 | 5.2.4.2.2 | Power Cable Laying | 1d | 2014-12-05 | 2014-12-05 | 311, 281 |  |  |  | 115d | 0d |  |  |
| 313 | 5.2.4.2.3 | Control Cable Laying | 1d | 2014-12-06 | 2014-12-06 | 312, 281 |  |  |  | 115d | 0d |  |  |
| 314 | 5.2.4.2.4 | Termination of Power & Control Cables | 1d | 2014-12-08 | 2014-12-08 | 313 | 2014-09-22 | 2014-10-13 | 18d | 115d | 0d | Cables; Motors | 82,500 |
| 315 | 5.2.4.2.5 | No Load Trail | 1d | 2014-12-09 | 2014-12-09 | 314, 294 |  |  |  | 115d |  | VFD | 93,750 |
| 316 | 5.2.4.3 | **P-2101 A/B** | 5d | 2014-12-04 | 2014-12-09 |  |  |  |  | 115d |  |  | 182,250 |
| 317 | 5.2.4.3.1 | Erection of Push Button Station | 1d | 2014-12-04 | 2014-12-04 | 218 |  |  |  | 115d | 0d | LCP-FRP | 6,000 |
| 318 | 5.2.4.3.2 | Power Cable Laying | 1d | 2014-12-05 | 2014-12-05 | 317, 281 |  |  |  | 115d | 0d |  |  |
| 319 | 5.2.4.3.3 | Control Cable Laying | 1d | 2014-12-06 | 2014-12-06 | 318, 281 |  |  |  | 115d | 0d |  |  |
| 320 | 5.2.4.3.4 | Termination of Power & Control Cables | 1d | 2014-12-08 | 2014-12-08 | 319 | 2014-09-22 | 2014-10-13 | 18d | 115d | 0d | Cables; Motors | 82,500 |
| 321 | 5.2.4.3.5 | No Load Trail | 1d | 2014-12-09 | 2014-12-09 | 320, 294 |  |  |  | 115d |  | VFD | 93,750 |
| 322 | 5.2.4.4 | **P-3101 A/B** | 5d | 2014-12-04 | 2014-12-09 |  |  |  |  | 115d |  |  | 182,250 |
| 323 | 5.2.4.4.1 | Erection of Push Button Station | 1d | 2014-12-04 | 2014-12-04 | 225 |  |  |  | 115d | 0d | LCP-FRP | 6,000 |
| 324 | 5.2.4.4.2 | Power Cable Laying | 1d | 2014-12-05 | 2014-12-05 | 323, 281 |  |  |  | 115d | 0d |  |  |
| 325 | 5.2.4.4.3 | Control Cable Laying | 1d | 2014-12-06 | 2014-12-06 | 324, 281 |  |  |  | 115d | 0d |  |  |
| 326 | 5.2.4.4.4 | Termination of Power & Control Cables | 1d | 2014-12-08 | 2014-12-08 | 325 | 2014-09-22 | 2014-10-13 | 18d | 115d | 0d | Cables; Motors | 82,500 |
| 327 | 5.2.4.4.5 | No Load Trail | 1d | 2014-12-09 | 2014-12-09 | 326, 294 |  |  |  | 115d |  | VFD | 93,750 |
| 328 | 5.2.4.5 | **BL-4101** | 5d | 2014-12-05 | 2014-12-10 |  |  |  |  | 114d |  |  | 182,250 |
| 329 | 5.2.4.5.1 | Erection of Push Button Station | 1d | 2014-12-05 | 2014-12-05 | 230 |  |  |  | 114d | 0d | LCP-FRP | 6,000 |
| 330 | 5.2.4.5.2 | Power Cable Laying | 1d | 2014-12-06 | 2014-12-06 | 329, 281 |  |  |  | 114d | 0d |  |  |
| 331 | 5.2.4.5.3 | Control Cable Laying | 1d | 2014-12-08 | 2014-12-08 | 330, 281 |  |  |  | 114d | 0d |  |  |
| 332 | 5.2.4.5.4 | Termination of Power & Control Cables | 1d | 2014-12-09 | 2014-12-09 | 331 | 2014-10-07 | 2014-10-14 | 6d | 114d | 0d | Cables; Motors | 82,500 |
| 333 | 5.2.4.5.5 | No Load Trail | 1d | 2014-12-10 | 2014-12-10 | 332, 294 |  |  |  | 114d |  | VFD | 93,750 |

| ID | WBS | Task | Duration | Start | Finish | Predecessors | Baseline start | Baseline finish | Baseline duration | Total slack | Free slack | Resources | Cost |
| --- | --- | --- | --- | --- | --- | --- | --- | --- | --- | --- | --- | --- | --- |
| 334 | 5.2.4.6 | **BL-6101** | 5d | 2014-12-04 | 2014-12-09 |  |  |  |  | 115d |  |  | 182,250 |
| 335 | 5.2.4.6.1 | Erection of Push Button Station | 1d | 2014-12-04 | 2014-12-04 | 242 |  |  |  | 115d | 0d | LCP-FRP | 6,000 |
| 336 | 5.2.4.6.2 | Power Cable Laying | 1d | 2014-12-05 | 2014-12-05 | 335, 281 |  |  |  | 115d | 0d |  |  |
| 337 | 5.2.4.6.3 | Control Cable Laying | 1d | 2014-12-06 | 2014-12-06 | 336, 281 |  |  |  | 115d | 0d |  |  |
| 338 | 5.2.4.6.4 | Termination of Power & Control Cables | 1d | 2014-12-08 | 2014-12-08 | 337 | 2014-09-22 | 2014-10-13 | 18d | 115d | 0d | Cables; Motors | 82,500 |
| 339 | 5.2.4.6.5 | No Load Trail | 1d | 2014-12-09 | 2014-12-09 | 338, 294 |  |  |  | 115d |  | VFD | 93,750 |
| 340 | 5.2.4.7 | **P-7302 A/B** | 5d | 2014-12-11 | 2014-12-16 |  |  |  |  | 109d |  |  | 182,250 |
| 341 | 5.2.4.7.1 | Erection of Push Button Station | 1d | 2014-12-11 | 2014-12-11 | 248 |  |  |  | 109d | 0d | LCP-FRP | 6,000 |
| 342 | 5.2.4.7.2 | Power Cable Laying | 1d | 2014-12-12 | 2014-12-12 | 341, 281 |  |  |  | 109d | 0d |  |  |
| 343 | 5.2.4.7.3 | Control Cable Laying | 1d | 2014-12-13 | 2014-12-13 | 342, 281 |  |  |  | 109d | 0d |  |  |
| 344 | 5.2.4.7.4 | Termination of Power & Control Cables | 1d | 2014-12-15 | 2014-12-15 | 343 |  |  |  | 109d | 0d | Cables; Motors | 82,500 |
| 345 | 5.2.4.7.5 | No Load Trail | 1d | 2014-12-16 | 2014-12-16 | 344, 294 |  |  |  | 109d |  | VFD | 93,750 |
| 346 | 5.2.4.8 | **Pump for Waste Water** | 5d | 2015-01-02 | 2015-01-07 |  |  |  |  | 90d |  |  | 182,250 |
| 347 | 5.2.4.8.1 | Erection of Push Button Station | 1d | 2015-01-02 | 2015-01-02 | 251, 252, 253, 254 |  |  |  | 90d | 0d | LCP-FRP | 6,000 |
| 348 | 5.2.4.8.2 | Power Cable Laying | 1d | 2015-01-03 | 2015-01-03 | 347, 281 |  |  |  | 90d | 0d |  |  |
| 349 | 5.2.4.8.3 | Control Cable Laying | 1d | 2015-01-05 | 2015-01-05 | 348, 281 |  |  |  | 90d | 0d |  |  |
| 350 | 5.2.4.8.4 | Termination of Power & Control Cables | 1d | 2015-01-06 | 2015-01-06 | 349 |  |  |  | 90d | 0d | Cables; Motors | 82,500 |
| 351 | 5.2.4.8.5 | No Load Trail | 1d | 2015-01-07 | 2015-01-07 | 350, 294 |  |  |  | 90d |  | VFD | 93,750 |
| 352 | 5.2.5 | **Lighting** | 16d | 2015-01-03 | 2015-01-21 |  | 2014-10-11 | 2014-10-23 | 10d | 78d |  |  | 552,000 |
| 353 | 5.2.5.1 | **Ground Floor** | 11d | 2015-01-07 | 2015-01-19 |  |  |  |  | 80d |  |  | 138,000 |
| 354 | 5.2.5.1.1 | Fixing of PDB | 1d | 2015-01-07 | 2015-01-07 | 121FS+30d |  |  |  | 80d | 0d |  |  |
| 355 | 5.2.5.1.2 | Fixing of LDB | 1d | 2015-01-08 | 2015-01-08 | 354 |  |  |  | 80d | 0d | PDB&LDB | 18,000 |
| 356 | 5.2.5.1.3 | Fixing of Junction Boxes | 1d | 2015-01-09 | 2015-01-09 | 355 |  |  |  | 80d | 0d |  |  |
| 357 | 5.2.5.1.4 | Fabrication of Supports for Fixing of Lights | 1d | 2015-01-10 | 2015-01-10 | 356 |  |  |  | 80d | 0d |  |  |
| 358 | 5.2.5.1.5 | Fixing of Light Fittings | 2d | 2015-01-12 | 2015-01-13 | 357, 289 |  |  |  | 80d | 0d |  |  |
| 359 | 5.2.5.1.6 | Fabrication of Cable Tray Supports | 2d | 2015-01-14 | 2015-01-15 | 358 |  |  |  | 80d | 0d |  |  |
| 360 | 5.2.5.1.7 | Laying of Cable Trays and Fixing | 1d | 2015-01-16 | 2015-01-16 | 359 |  |  |  | 80d | 0d |  |  |
| 361 | 5.2.5.1.8 | Laying of Power Cables for PDB & LDB | 1d | 2015-01-17 | 2015-01-17 | 360 | 2013-12-23 | 2014-10-30 | 267.5d | 80d | 0d |  |  |
| 362 | 5.2.5.1.9 | Laying of Lighting Cables and Termination | 1d | 2015-01-19 | 2015-01-19 | 361 | 2013-12-23 | 2014-05-10 | 120d | 80d |  | Light Fittings | 120,000 |

| ID | WBS | Task | Duration | Start | Finish | Predecessors | Baseline start | Baseline finish | Baseline duration | Total slack | Free slack | Resources | Cost |
| --- | --- | --- | --- | --- | --- | --- | --- | --- | --- | --- | --- | --- | --- |
| 363 | 5.2.5.2 | **EL+12.000 M LVL** | 10d | 2015-01-03 | 2015-01-14 |  |  |  |  | 84d |  |  | 138,000 |
| 364 | 5.2.5.2.1 | Fixing of LDB | 1d | 2015-01-03 | 2015-01-03 | 203 |  |  |  | 84d | 0d | PDB&LDB | 18,000 |
| 365 | 5.2.5.2.2 | Fixing of Junction Boxes | 1d | 2015-01-05 | 2015-01-05 | 364 |  |  |  | 84d | 0d |  |  |
| 366 | 5.2.5.2.3 | Fabrication of Supports for Fixing of Lights | 1d | 2015-01-06 | 2015-01-06 | 365 |  |  |  | 84d | 0d |  |  |
| 367 | 5.2.5.2.4 | Fixing of Light Fittings | 1d | 2015-01-07 | 2015-01-07 | 366, 289 |  |  |  | 84d | 0d |  |  |
| 368 | 5.2.5.2.5 | Fabrication of Cable Tray Supports | 2d | 2015-01-08 | 2015-01-09 | 367 |  |  |  | 84d | 0d |  |  |
| 369 | 5.2.5.2.6 | Laying of Cable Trays and Fixing | 2d | 2015-01-10 | 2015-01-12 | 368 |  |  |  | 84d | 0d |  |  |
| 370 | 5.2.5.2.7 | Laying of Power Cables for LDB | 1d | 2015-01-13 | 2015-01-13 | 369 |  |  |  | 84d | 0d |  |  |
| 371 | 5.2.5.2.8 | Laying of Lighting Cables and Termination | 1d | 2015-01-14 | 2015-01-14 | 370 |  |  |  | 84d |  | Light Fittings | 120,000 |
| 372 | 5.2.5.3 | **EL+14.000 M LVL** | 10d | 2015-01-07 | 2015-01-17 |  |  |  |  | 81d |  |  | 138,000 |
| 373 | 5.2.5.3.1 | Fixing of LDB | 1d | 2015-01-07 | 2015-01-07 | 204 |  |  |  | 81d | 0d | PDB&LDB | 18,000 |
| 374 | 5.2.5.3.2 | Fixing of Junction Boxes | 1d | 2015-01-08 | 2015-01-08 | 373 |  |  |  | 81d | 0d |  |  |
| 375 | 5.2.5.3.3 | Fabrication of Supports for Fixing of Lights | 1d | 2015-01-09 | 2015-01-09 | 374 |  |  |  | 81d | 0d |  |  |
| 376 | 5.2.5.3.4 | Fixing of Light Fittings | 1d | 2015-01-10 | 2015-01-10 | 375, 289 |  |  |  | 81d | 0d |  |  |
| 377 | 5.2.5.3.5 | Fabrication of Cable Tray Supports | 2d | 2015-01-12 | 2015-01-13 | 376 |  |  |  | 81d | 0d |  |  |
| 378 | 5.2.5.3.6 | Laying of Cable Trays and Fixing | 2d | 2015-01-14 | 2015-01-15 | 377 | 2014-06-21 | 2014-10-30 | 112.5d | 81d | 0d |  |  |
| 379 | 5.2.5.3.7 | Laying of Power Cables for LDB | 1d | 2015-01-16 | 2015-01-16 | 378 | 2014-10-07 | 2014-10-16 | 8d | 81d | 0d |  |  |
| 380 | 5.2.5.3.8 | Laying of Lighting Cables and Termination | 1d | 2015-01-17 | 2015-01-17 | 379 |  |  |  | 81d |  | Light Fittings | 120,000 |
| 381 | 5.2.5.4 | **EL+17.500 M LVL** | 10d | 2015-01-10 | 2015-01-21 |  | 2014-07-02 | 2014-10-28 | 101.5d | 78d |  |  | 138,000 |
| 382 | 5.2.5.4.1 | Fixing of LDB | 1d | 2015-01-10 | 2015-01-10 | 205 |  |  |  | 78d | 0d | PDB&LDB | 18,000 |
| 383 | 5.2.5.4.2 | Fixing of Junction Boxes | 1d | 2015-01-12 | 2015-01-12 | 382 |  |  |  | 78d | 0d |  |  |
| 384 | 5.2.5.4.3 | Fabrication of Supports for Fixing of Lights | 1d | 2015-01-13 | 2015-01-13 | 383 |  |  |  | 78d | 0d |  |  |
| 385 | 5.2.5.4.4 | Fixing of Light Fittings | 1d | 2015-01-14 | 2015-01-14 | 384, 289 |  |  |  | 78d | 0d |  |  |
| 386 | 5.2.5.4.5 | Fabrication of Cable Tray Supports | 2d | 2015-01-15 | 2015-01-16 | 385 |  |  |  | 78d | 0d |  |  |
| 387 | 5.2.5.4.6 | Laying of Cable Trays and Fixing | 2d | 2015-01-17 | 2015-01-19 | 386 |  |  |  | 78d | 0d |  |  |
| 388 | 5.2.5.4.7 | Laying of Power Cables for LDB | 1d | 2015-01-20 | 2015-01-20 | 387 |  |  |  | 78d | 0d |  |  |
| 389 | 5.2.5.4.8 | Laying of Lighting Cables and Termination | 1d | 2015-01-21 | 2015-01-21 | 388 | 2014-06-21 | 2014-10-23 | 106.5d | 78d |  | Light Fittings | 120,000 |

| ID | WBS | Task | Duration | Start | Finish | Predecessors | Total slack | Free slack | Resources | Work | Cost |
| --- | --- | --- | --- | --- | --- | --- | --- | --- | --- | --- | --- |
| 390 | 6 | **Instrumentation** | 80d | 2014-12-02 | 2015-03-04 |  | 28d |  |  | 608h | 3,854,254.08 |
| 391 | 6.1 | **Procurement** | 10d | 2014-12-02 | 2014-12-12 |  | 28d |  |  |  |  |
| 392 | 6.1.1 | Purchase of Control Valves | 5d | 2014-12-02 | 2014-12-06 | 22FS+60d | 117d |  | z.Control Valve |  |  |
| 393 | 6.1.2 | Purchase of Pr. Transmitters | 10d | 2014-12-02 | 2014-12-12 | 22FS+60d | 28d | 0d | z.Pr.Transmitter |  |  |
| 394 | 6.1.3 | Purchase of Flow meters | 10d | 2014-12-02 | 2014-12-12 | 22FS+60d | 112d |  | z.Flowmeter |  |  |
| 395 | 6.1.4 | Purchase of Temp. Transmitters | 10d | 2014-12-02 | 2014-12-12 | 22FS+60d | 112d |  | z.Temp.Transmitter |  |  |
| 396 | 6.1.5 | Purchase of Thermowells (RTD) | 10d | 2014-12-02 | 2014-12-12 | 22FS+60d | 112d |  | z.RTD |  |  |
| 397 | 6.1.6 | Purchase of Level Transmitters | 10d | 2014-12-02 | 2014-12-12 | 22FS+60d | 112d |  | z.Radar LT; z.Side LT |  |  |
| 398 | 6.1.7 | Purchase of Level Switches | 10d | 2014-12-02 | 2014-12-12 | 22FS+60d | 112d |  | z.Level Switch |  |  |
| 399 | 6.1.8 | Purchase of Rotameter with Switch | 10d | 2014-12-02 | 2014-12-12 | 22FS+60d | 112d |  | z.Rotameter |  |  |
| 400 | 6.1.9 | Purchase of Pr. Gauges | 10d | 2014-12-02 | 2014-12-12 | 22FS+60d | 112d |  | z.Pr. Gauge |  |  |
| 401 | 6.1.10 | Purchase of Temp. Gauges | 10d | 2014-12-02 | 2014-12-12 | 22FS+60d | 112d |  | z.Temp. Gauge |  |  |
| 402 | 6.1.11 | Purchase of Pr. Switches | 10d | 2014-12-02 | 2014-12-12 | 22FS+60d | 112d |  | z.Pr. Switch |  |  |
| 403 | 6.1.12 | Purchase of Instrument Cables | 4d | 2014-12-02 | 2014-12-05 | 22FS+60d | 94d | 0d | z.Inst. Cable |  |  |
| 404 | 6.1.13 | Purchase of Instrument cable tray | 4d | 2014-12-02 | 2014-12-05 | 22FS+60d | 86d | 4d |  |  |  |
| 405 | 6.1.14 | Finalisation of Inst Erection Contractor | 5d | 2014-12-02 | 2014-12-06 | 22FS+60d | 82d | 0d |  |  |  |
| 406 | 6.1.15 | Purchase of Erection Hardwares | 5d | 2014-12-02 | 2014-12-06 | 22FS+60d | 117d |  |  |  |  |
| 407 | 6.2 | **Execution** | 76d | 2014-12-06 | 2015-03-04 |  | 34d |  | Inst Erection | 608h | 3,854,254.08 |
| 408 | 6.2.1 | Mobillisation of Erection Contractor at Site | 1d | 2014-12-08 | 2014-12-08 | 405 | 82d | 0d |  |  |  |
| 409 | 6.2.2 | **Instruments Cabling & Termination- Main cable** | 36d | 2014-12-06 | 2015-01-16 |  | 82d |  |  |  | 180,000 |
| 410 | 6.2.2.1 | Fabrication of tray support for main cables | 2d | 2014-12-09 | 2014-12-10 | 408 | 82d | 0d |  |  |  |
| 411 | 6.2.2.2 | Erection of Main cable trays | 10d | 2014-12-11 | 2014-12-22 | 410, 404 | 82d | 0d |  |  |  |
| 412 | 6.2.2.3 | Fabrication and Erection of JB support and erection of JB's | 5d | 2014-12-23 | 2014-12-27 | 411 | 82d | 0d |  |  |  |
| 413 | 6.2.2.4 | Receipt of I & C cables at site | 7d | 2014-12-06 | 2014-12-13 | 403 | 94d | 12d |  |  |  |
| 414 | 6.2.2.5 | Laying & dressing of Main cables from JB to CR | 9d | 2014-12-29 | 2015-01-07 | 413, 412 | 82d | 0d |  |  |  |
| 415 | 6.2.2.6 | Cable Glanding & Termination of Main cables at both ends | 6d | 2015-01-08 | 2015-01-14 | 414 | 82d | 0d | Inst. Cable |  | 180,000 |
| 416 | 6.2.2.7 | Loop check from JB end to DCS | 2d | 2015-01-15 | 2015-01-16 | 415 | 82d |  |  |  |  |

| ID | WBS | Task | Duration | Start | Finish | Predecessors | Total slack | Free slack | Resources | Cost |
| --- | --- | --- | --- | --- | --- | --- | --- | --- | --- | --- |
| 417 | 6.2.3 | **Field Inst erection** | 61d | 2014-12-13 | 2015-02-21 |  | 28d |  |  | 2,714,254.08 |
| 418 | 6.2.3.1 | Receipt of all control valves, Transmitters, flowmeters, RTD, TG & PG | 10d | 2014-12-13 | 2014-12-24 | 393 | 28d |  |  |  |
| 419 | 6.2.3.2 | Fabrication of stancheon for remote mounted instruments | 4d | 2014-12-29 | 2015-01-01 | 412 | 86d | 0d |  |  |
| 420 | 6.2.3.3 | Erection of stancheons at required place | 3d | 2015-01-02 | 2015-01-05 | 419 | 86d | 0d |  |  |
| 421 | 6.2.3.4 | Branch cable tray fabrication, erection | 3d | 2015-01-06 | 2015-01-08 | 420 | 86d | 0d |  |  |
| 422 | 6.2.3.5 | Branch cable laying & Termination at JB end | 3d | 2015-01-09 | 2015-01-12 | 421 | 86d |  |  |  |
| 423 | 6.2.3.6 | Installation of all field Instruments | 20d | 2015-01-27 | 2015-02-18 | 418, 257FS-9d | 0d |  |  |  |
| 424 | 6.2.3.7 | Glanding &Termination branch cables of all field Instruments at Inst end | 3d | 2015-02-19 | 2015-02-21 | 423 | 0d |  | Control Valve; Pr.Transmitter; Temp.Transmitter; Flowmeter; Side LT; Rotameter; Pr. Switch; Level Switch; Pr. Gauge; Temp. Gauge; RTD; Radar LT | 2,714,254 |
| 425 | 6.2.4 | **Loop Check & Calibration** | 9d | 2015-02-23 | 2015-03-04 |  | 0d |  |  |  |
| 426 | 6.2.4.1 | Loop check of all instruments from field Inst end | 3d | 2015-02-23 | 2015-02-25 | 424 | 0d |  |  |  |
| 427 | 6.2.4.2 | Calibration of all field Instruments | 3d | 2015-02-26 | 2015-02-28 | 426 | 0d |  |  |  |
| 428 | 6.2.4.3 | Calibration /Stroke check of all Control valves & On/Off valves from DCS | 2d | 2015-03-02 | 2015-03-03 | 427 | 0d |  |  |  |
| 429 | 6.2.4.4 | Tripchecks, Graphics modification etc | 1d | 2015-03-04 | 2015-03-04 | 428 | 0d |  |  |  |
