# Tagros-Training-MPP

Schedule from MS Project, 2015-03-02 to 2016-01-11, costs in Rs., A marks actual dates.

## Calendars

- Tagros-CAL: Mon-Fri 08:00-12:00, 13:00-17:00; Sat-Sun off. Exceptions (off unless hours are given): 2015-03-24 (Holi), 2015-05-01 (Labour Day).

## Resources

| Resource | Unit | Rate |
| --- | --- | --- |
| Partiban |  | 312.5 |
| Prabhakar |  | 500 |
| Mehul |  | 125 |
| Linda |  | 137.5 |
| Arun |  | 100 |
| EK |  | 62.5 |
| Ashish |  | 937.5 |
| Vishnu Co. |  | 6250 |
| Shalabh |  | 1250 |
| Raja |  | 100 |
| Cement | Bags | 300 |
| Steel | Tons | 50000 |
| Mohan |  |  |
| Ravichandarn |  |  |

## Schedule

| ID | WBS | Task | Type | Duration | Start | Finish | Predecessors | Complete | Remaining | Baseline start | Baseline finish | Baseline duration | Baseline 1 start | Baseline 1 finish | Total slack | Free slack | Constraint | Resources | Work | Actual work | Cost | Baseline cost | Actual cost |
| --- | --- | --- | --- | --- | --- | --- | --- | --- | --- | --- | --- | --- | --- | --- | --- | --- | --- | --- | --- | --- | --- | --- | --- |
| 1 | 1 | **40TMSULFO** |  | 223.12d | 2015-03-02 A | 2016-01-11 |  | 2% | 218.86d | 2015-03-02 | 2016-01-06 | 221d | 2015-03-02 | 2016-01-06 | 0d |  |  |  | 2884h | 80h | 12,109,400.32 | 12,109,400.32 | 15,500 |
| 2 | 1.1 | **Design** |  | 70.12d | 2015-03-02 A | 2015-06-10 |  | 6% | 65.81d | 2015-03-02 | 2015-06-05 | 68d | 2015-03-02 | 2015-06-05 | 153d |  |  |  | 1004h | 80h | 272,000 | 272,000 | 15,500 |
| 3 | 1.1.1 | **Basic Engineering** |  | 43d | 2015-03-02 A | 2015-04-30 |  | 12% | 38d | 2015-03-02 | 2015-04-30 | 43d | 2015-03-02 | 2015-04-30 | 1.31d | 0d |  |  | 344h | 40h | 107,499.99 | 107,499.99 | 12,500 |
| 4 | 1.1.1.1 | Capacity working |  | 20d | 2015-03-02 A | 2015-03-30 |  | 25% | 15d | 2015-03-02 | 2015-03-30 | 20d | 2015-03-02 | 2015-03-30 | 2.12d | 0d |  | Partiban | 160h | 40h | 50,000 | 50,000 | 12,500 |
| 5 | 1.1.1.2 | Equipment Sizing |  | 16d | 2015-03-31 | 2015-04-21 | 4 |  |  | 2015-03-31 | 2015-04-21 | 16d | 2015-03-31 | 2015-04-21 | 1.31d | 0d |  | Partiban | 128h |  | 40,000 | 40,000 |  |
| 6 | 1.1.1.3 | Macro sizing |  | 7d | 2015-04-22 | 2015-04-30 | 5 |  |  | 2015-04-22 | 2015-04-30 | 7d | 2015-04-22 | 2015-04-30 | 1.31d |  |  | Partiban | 56h |  | 17,500 | 17,500 |  |
| 7 | 1.1.2 | **Detail Engineering** |  | 27.12d | 2015-05-04 A | 2015-06-10 |  | 2% | 26.53d | 2015-05-04 | 2015-06-05 | 25d | 2015-05-04 | 2015-06-05 | 0d |  |  |  | 660h | 40h | 164,500 | 164,500 | 3,000 |
| 8 | 1.1.2.1 | P&ID |  | 15d | 2015-05-04 | 2015-05-22 | 3 |  |  | 2015-05-04 | 2015-05-22 | 15d | 2015-05-04 | 2015-05-22 | 1.31d | 0d |  | Partiban | 120h |  | 37,500 | 37,500 |  |
| 9 | 1.1.2.2 | Civil drawing |  | 25d | 2015-05-04 | 2015-06-05 | 3 |  |  | 2015-05-04 | 2015-06-05 | 25d | 2015-05-04 | 2015-06-05 | 2.12d | 0d |  | Prabhakar | 200h |  | 100,000 | 100,000 |  |
| 10 | 1.1.2.3 | Equipment layout |  | 12.12d | 2015-05-25 A | 2015-06-10 | 8 | 11% | 10.81d | 2015-05-25 | 2015-05-29 | 5d | 2015-05-25 | 2015-06-05 | 0d |  | start no earlier than 2015-05-25 | Partiban; EK; Ravichandarn; Mohan | 220h | 40h | 15,000 | 15,000 | 3,000 |
| 11 | 1.1.2.4 | Specs of equipments |  | 7.5d | 2015-05-25 | 2015-06-03 | 8 |  |  | 2015-05-25 | 2015-06-03 | 7.5d | 2015-05-25 | 2015-06-03 | 4.62d |  | start no earlier than 2015-05-21 | Raja [200%] | 120h |  | 12,000 | 12,000 |  |
| 12 | 1.1.3 | Design Complete | milestone | 0d | 2015-06-10 | 2015-06-10 | 3, 7 |  |  | 2015-06-05 | 2015-06-05 | 0d | 2015-06-05 | 2015-06-05 | 153d |  |  |  |  |  |  |  |  |
| 13 | 1.2 | **Take Approvals** |  | 153d | 2015-06-10 | 2016-01-11 |  |  |  | 2015-06-08 | 2016-01-06 | 153d | 2015-06-08 | 2016-01-06 | 0d |  |  |  | 40h |  | 5,100 | 5,100 |  |
| 14 | 1.2.1 | **Environment clearnce** |  | 153d | 2015-06-10 | 2016-01-11 |  |  |  | 2015-06-08 | 2016-01-06 | 153d | 2015-06-08 | 2016-01-06 | 0d |  |  |  | 24h |  | 3,300 | 3,300 |  |
| 15 | 1.2.1.1 | Submtting App |  | 1d | 2015-06-10 | 2015-06-11 | 7 |  |  | 2015-06-08 | 2015-06-08 | 1d | 2015-06-08 | 2015-06-08 | 0d |  |  | Linda | 8h |  | 1,100 | 1,100 |  |
| 16 | 1.2.1.2 | Review Meeting |  | 1d | 2015-10-15 | 2015-10-16 | 15FS+90d |  |  | 2015-10-13 | 2015-10-13 | 1d | 2015-10-13 | 2015-10-13 | 0d |  |  | Linda | 8h |  | 1,100 | 1,100 |  |
| 17 | 1.2.1.3 | Approval with Condition |  | 1d | 2016-01-08 | 2016-01-11 | 16FS+60d |  |  | 2016-01-06 | 2016-01-06 | 1d | 2016-01-06 | 2016-01-06 | 0d |  |  | Linda | 8h |  | 1,100 | 1,100 |  |
| 18 | 1.2.2 | EB Sanction |  | 1d | 2015-06-10 | 2015-06-11 | 7 |  |  | 2015-06-08 | 2015-06-08 | 1d | 2015-06-08 | 2015-06-08 | 152d |  |  | Arun | 8h |  | 800 | 800 |  |
| 19 | 1.2.3 | Boiler Approval |  | 1d | 2015-06-10 | 2015-06-11 | 7 |  |  | 2015-06-08 | 2015-06-08 | 1d | 2015-06-08 | 2015-06-08 | 152d |  |  | Mehul | 8h |  | 1,000 | 1,000 |  |
| 20 | 1.3 | **Execution Civil** |  | 100d | 2015-06-08 | 2015-10-23 |  |  |  | 2015-06-08 | 2015-10-23 | 100d | 2015-06-08 | 2015-10-23 | 8.12d | 0d |  |  | 824h |  | 10,438,000 | 10,438,000 |  |
| 21 | 1.3.1 | Archi vendor finaization |  | 3d | 2015-06-08 | 2015-06-10 | 9 |  |  | 2015-06-08 | 2015-06-10 | 3d | 2015-06-08 | 2015-06-10 | 105.12d |  |  | Prabhakar | 24h |  | 12,000 | 12,000 |  |
| 22 | 1.3.2 | Drawing release |  | 7d | 2015-06-08 | 2015-06-16 | 9 |  |  | 2015-06-08 | 2015-06-16 | 7d | 2015-06-08 | 2015-06-16 | 8.12d | 0d |  | EK | 56h |  | 3,500 | 3,500 |  |
| 23 | 1.3.3 | procrement of cement and steel |  | 3d | 2015-06-17 | 2015-06-19 | 22 |  |  | 2015-06-17 | 2015-06-19 | 3d | 2015-06-17 | 2015-06-19 | 8.12d | 0d |  | Ashish | 24h |  | 22,500 | 22,500 |  |
| 24 | 1.3.4 | Construction |  | 90d | 2015-06-22 | 2015-10-23 | 23 |  |  | 2015-06-22 | 2015-10-23 | 90d | 2015-06-22 | 2015-10-23 | 8.12d |  |  | Vishnu Co.; Cement [3000 Bags]; Steel [100 Tons] | 720h |  | 10,400,000 | 10,400,000 |  |

| ID | WBS | Task | Duration | Start | Finish | Predecessors | Baseline start | Baseline finish | Baseline duration | Baseline 1 start | Baseline 1 finish | Total slack | Free slack | Constraint | Resources | Work | Cost | Baseline cost |
| --- | --- | --- | --- | --- | --- | --- | --- | --- | --- | --- | --- | --- | --- | --- | --- | --- | --- | --- |
| 25 | 1.4 | **Procure** | 10d | 2015-10-26 | 2015-11-06 |  | 2015-10-26 | 2015-11-06 | 10d | 2015-10-26 | 2015-11-06 | 8.12d | 0d |  |  | 120h | 88,799.99 | 88,799.99 |
| 26 | 1.4.1 | Enqiry floating | 1d | 2015-10-26 | 2015-10-26 | 20 | 2015-10-26 | 2015-10-26 | 1d | 2015-10-26 | 2015-10-26 | 17.12d |  | start no earlier than 2015-10-22 | EK | 8h | 500 | 500 |
| 27 | 1.4.2 | Receiving quoation & comparision & finalization | 10d | 2015-10-26 | 2015-11-06 | 20 | 2015-10-26 | 2015-11-06 | 10d | 2015-10-26 | 2015-11-06 | 8.12d |  |  | Ashish | 80h | 74,999.99 | 74,999.99 |
| 28 | 1.4.3 | Apprval of drawing | 3d | 2015-10-26 | 2015-10-28 | 20 | 2015-10-26 | 2015-10-28 | 3d | 2015-10-26 | 2015-10-28 | 15.12d |  |  | Linda | 24h | 3,300 | 3,300 |
| 29 | 1.4.4 | inspection & receipt of material | 1d | 2015-10-26 | 2015-10-26 | 20 | 2015-10-26 | 2015-10-26 | 1d | 2015-10-26 | 2015-10-26 | 17.12d |  |  | Shalabh | 8h | 10,000 | 10,000 |
| 30 | 1.5 | **Intatallation** | 30d | 2015-11-09 | 2015-12-18 |  | 2015-11-09 | 2015-12-18 | 30d | 2015-11-09 | 2015-12-18 | 8.12d | 0d |  |  | 752h | 1,260,000 | 1,260,000 |
| 31 | 1.5.1 | Erection of equpment | 20d | 2015-11-09 | 2015-12-04 | 25 | 2015-11-09 | 2015-12-04 | 20d | 2015-11-09 | 2015-12-04 | 18.12d |  | start no earlier than 2015-11-09 | Shalabh | 160h | 199,999.98 | 199,999.98 |
| 32 | 1.5.2 | piping | 20d | 2015-11-12 | 2015-12-09 | 25 | 2015-11-12 | 2015-12-09 | 20d | 2015-11-09 | 2015-12-04 | 15.12d |  | start no earlier than 2015-11-12 | Vishnu Co. | 160h | 1,000,000 | 1,000,000 |
| 33 | 1.5.3 | electrical | 30d | 2015-11-09 | 2015-12-18 | 25 | 2015-11-09 | 2015-12-18 | 30d | 2015-11-09 | 2015-12-18 | 8.12d |  |  | Arun | 240h | 24,000 | 24,000 |
| 34 | 1.5.4 | insturctmentation | 10d | 2015-11-09 | 2015-11-20 | 25 | 2015-11-09 | 2015-11-20 | 10d | 2015-11-09 | 2015-11-20 | 28.12d |  |  | Raja | 80h | 8,000 | 8,000 |
| 35 | 1.5.5 | insullation and painting | 7d | 2015-11-09 | 2015-11-17 | 25 | 2015-11-09 | 2015-11-17 | 7d | 2015-11-09 | 2015-11-17 | 31.12d |  | start no earlier than 2015-11-09 | Prabhakar; Mohan | 112h | 28,000 | 28,000 |
| 36 | 1.6 | **Commissiong** | 7d | 2015-12-21 | 2015-12-29 |  | 2015-12-21 | 2015-12-29 | 7d | 2015-12-21 | 2015-12-29 | 8.12d |  |  |  | 144h | 45,500 | 45,500 |
| 37 | 1.6.1 | pressure test | 4d | 2015-12-21 | 2015-12-24 | 30 | 2015-12-21 | 2015-12-24 | 4d | 2015-12-21 | 2015-12-24 | 11.12d |  |  | Partiban | 32h | 10,000 | 10,000 |
| 38 | 1.6.2 | trial run | 5d | 2015-12-21 | 2015-12-25 | 30 | 2015-12-21 | 2015-12-25 | 5d | 2015-12-21 | 2015-12-25 | 10.12d |  | start no earlier than 2015-12-21 | Linda | 40h | 5,500 | 5,500 |
| 39 | 1.6.3 | load test | 2d | 2015-12-21 | 2015-12-22 | 30 | 2015-12-21 | 2015-12-22 | 2d | 2015-12-21 | 2015-12-22 | 13.12d |  | start no earlier than 2015-12-21 | Mehul | 16h | 2,000 | 2,000 |
| 40 | 1.6.4 | water trial | 7d | 2015-12-21 | 2015-12-29 | 30 | 2015-12-21 | 2015-12-29 | 7d | 2015-12-21 | 2015-12-29 | 8.12d |  | start no earlier than 2015-12-21 | Prabhakar | 56h | 28,000 | 28,000 |
