# 4161-BPCL

Schedule from MS Project, 2017-03-30 to 2018-04-12, A marks actual dates.

## Calendars

- TEAM_Stand_Calendar: Mon-Sat 08:30-12:30, 13:30-17:30; Sun off. Exceptions (off unless hours are given): 2017-01-13 to 2023-08-12 (2nd Sat, recurring), 2017-01-26 to 2036-01-26 (Republic Day, recurring), 2017-01-27 to 2023-08-26 (4th Sat, recurring), 2017-05-01 to 2036-05-01 (May Day, recurring), 2017-08-15 to 2036-08-15 (Independence Day, recurring), 2017-08-25 (Vinakya Chaturthi'2017), 2017-09-29 (Ayudha Pooja'2017), 2017-10-02 to 2036-10-02 (Gandhi Jayanti, recurring), 2017-10-18 (Deepavali'2017), 2018-01-15 (Thiruvalluvar Day'2018).

## Schedule

| ID | WBS | Task | Type | Duration | Start | Finish | Predecessors | Complete | Baseline start | Baseline finish | Baseline duration | Text2 |
| --- | --- | --- | --- | --- | --- | --- | --- | --- | --- | --- | --- | --- |
| 1 | 1 | **4161-B-PDE022** |  | 292.5d | 2017-03-30 A | 2018-04-12 A |  | 100% | 2017-03-30 | 2017-11-18 | 189.5d |  |
| 2 | 1.1 | PO RECEIPT |  | 1d | 2017-03-30 A | 2017-03-30 A |  | 100% | 2017-03-30 | 2017-03-30 | 1d | MARKETING |
| 3 | 1.2 | DRAWING SUBMISSION FOR APPROVAL |  | 20d | 2017-04-01 A | 2017-04-26 A | 2FS+1d | 100% | 2017-04-01 | 2017-04-26 | 20d | DESIGN |
| 4 | 1.3 | **PR ISSUE** |  | 54.94d | 2017-05-02 A | 2017-07-10 A |  | 100% | 2017-04-28 | 2017-05-04 | 6d | PPC |
| 5 | 1.3.1 | PLATES AND RODS-SA516 Gr.60 |  | 2d | 2017-05-12 A | 2017-05-15 A | 3FS+1d | 100% | 2017-04-28 | 2017-05-04 | 6d |  |
| 6 | 1.3.2 | PLATES AND RODS-SA240 Gr.304L |  | 2d | 2017-05-12 A | 2017-05-15 A | 3FS+1d | 100% | 2017-04-28 | 2017-05-02 | 4d |  |
| 7 | 1.3.3 | PLATES AND RODS-SA240 S31803 |  | 2d | 2017-05-12 A | 2017-05-15 A | 3FS+1d | 100% | 2017-04-28 | 2017-05-02 | 4d |  |
| 8 | 1.3.4 | PLATES AND RODS-IS2062 Gr.B |  | 2d | 2017-05-12 A | 2017-05-15 A | 3FS+1d | 100% | 2017-04-28 | 2017-05-02 | 4d |  |
| 9 | 1.3.5 | TUBE-SA789 S31803 |  | 2d | 2017-05-02 A | 2017-05-03 A | 3FS+1d | 100% | 2017-04-28 | 2017-04-28 | 1d |  |
| 10 | 1.3.6 | BLANK FORGING-SA182 F51 |  | 4d | 2017-05-10 A | 2017-05-15 A | 3FS+1d | 100% | 2017-04-28 | 2017-04-29 | 2d |  |
| 11 | 1.3.7 | NON STANDARD FORGING-SA182 F51 |  | 4d | 2017-05-10 A | 2017-05-15 A | 3FS+1d | 100% | 2017-04-28 | 2017-04-29 | 2d |  |
| 12 | 1.3.8 | NON STANDARD FORGING-SA965 F304L |  | 4d | 2017-05-10 A | 2017-05-15 A | 3FS+1d | 100% | 2017-04-28 | 2017-04-29 | 2d |  |
| 13 | 1.3.9 | NON STANDARD FORGING-SA266 Gr.4 |  | 4d | 2017-05-10 A | 2017-05-15 A | 3FS+1d | 100% | 2017-04-28 | 2017-04-29 | 2d |  |
| 14 | 1.3.10 | STANDARD FORGING-SA105 |  | 7d | 2017-05-06 A | 2017-05-15 A | 3FS+1d | 100% | 2017-04-28 | 2017-04-29 | 2d |  |
| 15 | 1.3.11 | STANDARD FORGING-SA182 F304L |  | 7d | 2017-05-06 A | 2017-05-15 A | 3FS+1d | 100% | 2017-04-28 | 2017-04-29 | 2d |  |
| 16 | 1.3.12 | PIPE-SA106 Gr.B |  | 7d | 2017-05-06 A | 2017-05-15 A | 3FS+1d | 100% | 2017-04-28 | 2017-05-02 | 4d |  |
| 17 | 1.3.13 | PIPE-SA312 TP304L |  | 7d | 2017-05-06 A | 2017-05-15 A | 3FS+1d | 100% | 2017-04-28 | 2017-05-02 | 4d |  |
| 18 | 1.3.14 | GASKETS-DUPLEX/ALLOY625 |  | 4d | 2017-05-16 A | 2017-05-19 A | 3FS+1d | 100% | 2017-04-28 | 2017-05-03 | 5d |  |
| 19 | 1.3.15 | FASTNERS-SA193 Gr.B7 |  | 4d | 2017-05-10 A | 2017-05-15 A | 3FS+1d | 100% | 2017-04-28 | 2017-05-03 | 5d |  |
| 20 | 1.3.16 | CONSUMABLES-CS |  | 1d | 2017-06-15 A | 2017-06-15 A | 3FS+1d | 100% | 2017-04-28 | 2017-05-04 | 6d |  |
| 21 | 1.3.17 | CONSUMABLES-S31803 |  | 1d | 2017-07-10 A | 2017-07-10 A | 3FS+1d | 100% | 2017-04-28 | 2017-05-04 | 6d |  |
| 22 | 1.3.18 | CONSUMABLES-SS309 LMO |  | 1d | 2017-07-10 A | 2017-07-10 A | 3FS+1d | 100% | 2017-04-28 | 2017-05-04 | 6d |  |
| 23 | 1.3.19 | CONSUMABLES-SS304L |  | 1d | 2017-07-10 A | 2017-07-10 A | 3FS+1d | 100% | 2017-04-28 | 2017-05-04 | 6d |  |
| 24 | 1.4 | **MATERIAL ORDERING AND RECEIPT** |  | 151d | 2017-05-12 A | 2017-11-24 A |  | 100% | 2017-04-29 | 2017-07-11 | 60d | PURCHASE&QC |
| 25 | 1.4.1 | PLATES AND RODS-SA516 Gr.60 | milestone | 0w | 2017-05-12 A | 2017-05-12 A | 5 | 100% | 2017-05-05 | 2017-05-23 | 3w |  |
| 26 | 1.4.2 | PLATES AND RODS-SA240 Gr.304L |  | 5.4w | 2017-06-22 A | 2017-07-25 A | 6 | 100% | 2017-05-03 | 2017-05-20 | 3w |  |
| 27 | 1.4.3 | PLATES AND RODS-SA240 S31803 |  | 18.8w | 2017-06-23 A | 2017-10-17 A | 7 | 100% | 2017-05-03 | 2017-06-01 | 5w |  |
| 28 | 1.4.4 | PLATES AND RODS-IS2062 Gr.B |  | 1.2w | 2017-06-08 A | 2017-06-15 A | 8 | 100% | 2017-05-03 | 2017-05-15 | 2w |  |
| 29 | 1.4.5 | TUBE-SA789 S31803 |  | 20.2w | 2017-05-16 A | 2017-09-15 A | 9 | 100% | 2017-04-29 | 2017-07-11 | 12w |  |
| 30 | 1.4.6 | BLANK FORGING-SA182 F51 |  | 23.2w | 2017-06-01 A | 2017-10-21 A | 10 | 100% | 2017-05-01 | 2017-06-29 | 10w |  |
| 31 | 1.4.7 | NON STANDARD FORGING-SA182 F51 |  | 23.2w | 2017-06-01 A | 2017-10-21 A | 11 | 100% | 2017-05-01 | 2017-06-29 | 10w |  |
| 32 | 1.4.8 | NON STANDARD FORGING-SA965 F304L |  | 17w | 2017-06-01 A | 2017-09-13 A | 12 | 100% | 2017-05-01 | 2017-06-29 | 10w |  |
| 33 | 1.4.9 | NON STANDARD FORGING-SA266 Gr.4 |  | 23.2w | 2017-06-01 A | 2017-10-21 A | 13 | 100% | 2017-05-01 | 2017-06-17 | 8w |  |
| 34 | 1.4.10 | STANDARD FORGING-SA105 |  | 18.2w | 2017-06-01 A | 2017-09-20 A | 14 | 100% | 2017-05-01 | 2017-06-17 | 8w |  |
| 35 | 1.4.11 | STANDARD FORGING-SA182 F304L |  | 18.2w | 2017-06-01 A | 2017-09-20 A | 15 | 100% | 2017-05-01 | 2017-06-29 | 10w |  |
| 36 | 1.4.12 | PIPE-SA106 Gr.B |  | 5w | 2017-06-08 A | 2017-07-10 A | 16 | 100% | 2017-05-03 | 2017-06-01 | 5w |  |
| 37 | 1.4.13 | PIPE-SA312 TP304L |  | 12.6w | 2017-08-09 A | 2017-10-25 A | 17 | 100% | 2017-05-03 | 2017-06-01 | 5w |  |
| 38 | 1.4.14 | GASKETS-DUPLEX/ALLOY625 |  | 17.2w | 2017-07-14 A | 2017-10-27 A | 18 | 100% | 2017-05-04 | 2017-06-21 | 8w |  |
| 39 | 1.4.15 | FASTNERS-SA193 Gr.B7 |  | 12.6w | 2017-05-31 A | 2017-08-16 A | 19 | 100% | 2017-05-04 | 2017-06-21 | 8w |  |
| 40 | 1.4.16 | CONSUMABLES-CS |  | 5.2w | 2017-08-02 A | 2017-09-01 A | 20 | 100% | 2017-05-05 | 2017-06-09 | 6w |  |
| 41 | 1.4.17 | CONSUMABLES-S31803 |  | 10w | 2017-09-20 A | 2017-11-24 A | 21 | 100% | 2017-05-05 | 2017-07-04 | 10w |  |
| 42 | 1.4.18 | CONSUMABLES-SS309 LMO |  | 6w | 2017-09-20 A | 2017-10-31 A | 22 | 100% | 2017-05-05 | 2017-06-09 | 6w |  |
| 43 | 1.4.19 | CONSUMABLES-SS304L |  | 5.8w | 2017-09-21 A | 2017-10-26 A | 23 | 100% | 2017-05-05 | 2017-06-09 | 6w |  |

| ID | WBS | Task | Type | Duration | Start | Finish | Predecessors | Complete | Baseline start | Baseline finish | Baseline duration | Text2 |
| --- | --- | --- | --- | --- | --- | --- | --- | --- | --- | --- | --- | --- |
| 44 | 1.5 | **FABRICATION** |  | 231d | 2017-05-15 A | 2018-03-09 A |  | 100% | 2017-05-16 | 2017-10-17 | 126d | PRODUCTION |
| 45 | 1.5.1 | **SHELL FABRICATION** |  | 85.94d | 2017-07-24 A | 2017-11-14 A |  | 100% | 2017-05-23 | 2017-07-17 | 46d |  |
| 46 | 1.5.1.1 | PLATE MARKING AND CUTTING |  | 5d | 2017-07-24 A | 2017-07-28 A | 26FS+1d | 100% | 2017-05-23 | 2017-05-24 | 2d |  |
| 47 | 1.5.1.2 | PRE PUNCH ROLLING |  | 1d | 2017-09-28 A | 2017-09-28 A | 46 | 100% | 2017-05-25 | 2017-05-26 | 2d |  |
| 48 | 1.5.1.3 | PRE PUNCH CUTTING |  | 2d | 2017-09-29 A | 2017-09-30 A | 47 | 100% | 2017-05-27 | 2017-05-29 | 2d |  |
| 49 | 1.5.1.4 | EDGE PREPARATION |  | 1d | 2017-09-30 A | 2017-09-30 A | 48 | 100% | 2017-05-30 | 2017-05-31 | 2d |  |
| 50 | 1.5.1.5 | ROLLING |  | 1d | 2017-10-01 A | 2017-10-02 A | 49 | 100% | 2017-06-01 | 2017-06-05 | 4d |  |
| 51 | 1.5.1.6 | LS FITUP |  | 2d | 2017-10-03 A | 2017-10-04 A | 50, 43 | 100% | 2017-06-12 | 2017-06-13 | 2d |  |
| 52 | 1.5.1.7 | DP |  | 3d | 2017-10-05 A | 2017-10-07 A | 51 | 100% | 2017-06-14 | 2017-06-15 | 2d |  |
| 53 | 1.5.1.8 | LS WELDING |  | 1d | 2017-10-08 A | 2017-10-09 A | 52 | 100% | 2017-06-16 | 2017-06-20 | 4d |  |
| 54 | 1.5.1.9 | RT |  | 2d | 2017-10-10 A | 2017-10-11 A | 53 | 100% | 2017-06-21 | 2017-06-22 | 2d |  |
| 55 | 1.5.1.10 | CS FITUP |  | 2d | 2017-10-12 A | 2017-10-13 A | 54 | 100% | 2017-06-23 | 2017-06-27 | 4d |  |
| 56 | 1.5.1.11 | DP | milestone | 0d | 2017-10-14 A | 2017-10-14 A | 55 | 100% | 2017-06-28 | 2017-06-29 | 2d |  |
| 57 | 1.5.1.12 | CS WELDING |  | 4d | 2017-10-16 A | 2017-10-19 A | 56 | 100% | 2017-06-30 | 2017-07-04 | 4d |  |
| 58 | 1.5.1.13 | DP |  | 5d | 2017-10-20 A | 2017-10-25 A | 57 | 100% | 2017-07-05 | 2017-07-06 | 2d |  |
| 59 | 1.5.1.14 | NOZZLE OPENING |  | 7d | 2017-11-01 A | 2017-11-08 A | 58 | 100% | 2017-07-07 | 2017-07-12 | 4d |  |
| 60 | 1.5.1.15 | EP |  | 4d | 2017-11-08 A | 2017-11-14 A | 59 | 100% | 2017-07-13 | 2017-07-17 | 4d |  |
| 61 | 1.5.2 | **SHELL COVER BARREL FABRICATION** |  | 85d | 2017-07-29 A | 2017-11-20 A |  | 100% | 2017-05-26 | 2017-07-03 | 32d |  |
| 62 | 1.5.2.1 | PLATE MARKING AND CUTTING |  | 1d | 2017-07-29 A | 2017-07-31 A | 26FS+4d | 100% | 2017-05-26 | 2017-05-26 | 1d |  |
| 63 | 1.5.2.2 | PRE PUNCH ROLLING |  | 1d | 2017-07-31 A | 2017-08-01 A | 62 | 100% | 2017-05-27 | 2017-05-27 | 1d |  |
| 64 | 1.5.2.3 | PRE PUNCH CUTTING |  | 1d | 2017-08-01 A | 2017-08-02 A | 63 | 100% | 2017-05-29 | 2017-05-29 | 1d |  |
| 65 | 1.5.2.4 | EDGE PREPARATION |  | 1d | 2017-08-02 A | 2017-08-03 A | 64 | 100% | 2017-05-30 | 2017-05-30 | 1d |  |
| 66 | 1.5.2.5 | ROLLING |  | 2d | 2017-08-03 A | 2017-08-05 A | 65 | 100% | 2017-05-31 | 2017-06-01 | 2d |  |
| 67 | 1.5.2.6 | LS FITUP |  | 1d | 2017-11-01 A | 2017-11-02 A | 66, 43FS+4d | 100% | 2017-06-16 | 2017-06-16 | 1d |  |
| 68 | 1.5.2.7 | DP |  | 1d | 2017-11-02 A | 2017-11-03 A | 67 | 100% | 2017-06-17 | 2017-06-17 | 1d |  |
| 69 | 1.5.2.8 | LS WELDING |  | 2d | 2017-11-03 A | 2017-11-06 A | 68 | 100% | 2017-06-19 | 2017-06-20 | 2d |  |
| 70 | 1.5.2.9 | RT |  | 1d | 2017-11-06 A | 2017-11-07 A | 69 | 100% | 2017-06-21 | 2017-06-21 | 1d |  |
| 71 | 1.5.2.10 | CS FITUP |  | 2d | 2017-11-07 A | 2017-11-09 A | 70 | 100% | 2017-06-22 | 2017-06-23 | 2d |  |
| 72 | 1.5.2.11 | DP |  | 1d | 2017-11-09 A | 2017-11-10 A | 71 | 100% | 2017-06-24 | 2017-06-24 | 1d |  |
| 73 | 1.5.2.12 | CS WELDING |  | 2d | 2017-11-10 A | 2017-11-14 A | 72 | 100% | 2017-06-26 | 2017-06-27 | 2d |  |
| 74 | 1.5.2.13 | DP |  | 1d | 2017-11-14 A | 2017-11-15 A | 73 | 100% | 2017-06-28 | 2017-06-28 | 1d |  |
| 75 | 1.5.2.14 | NOZZLE OPENING |  | 2d | 2017-11-15 A | 2017-11-17 A | 74 | 100% | 2017-06-29 | 2017-06-30 | 2d |  |
| 76 | 1.5.2.15 | EP |  | 2d | 2017-11-17 A | 2017-11-20 A | 75 | 100% | 2017-07-01 | 2017-07-03 | 2d |  |

| ID | WBS | Task | Duration | Start | Finish | Predecessors | Complete | Baseline start | Baseline finish | Baseline duration |
| --- | --- | --- | --- | --- | --- | --- | --- | --- | --- | --- |
| 77 | 1.5.3 | **CHANNEL SHELL FABRICATION** | 114.94d | 2017-05-15 A | 2017-10-10 A |  | 100% | 2017-05-25 | 2017-07-15 | 43d |
| 78 | 1.5.3.1 | PLATE MARKING AND CUTTING | 2d | 2017-05-15 A | 2017-05-16 A | 25FS+1d | 100% | 2017-05-25 | 2017-05-26 | 2d |
| 79 | 1.5.3.2 | PRE PUNCH ROLLING | 2d | 2017-05-17 A | 2017-05-18 A | 78 | 100% | 2017-05-27 | 2017-05-29 | 2d |
| 80 | 1.5.3.3 | PRE PUNCH CUTTING | 2d | 2017-05-19 A | 2017-05-20 A | 79 | 100% | 2017-05-30 | 2017-05-31 | 2d |
| 81 | 1.5.3.4 | EDGE PREPARATION | 2d | 2017-05-22 A | 2017-05-23 A | 80 | 100% | 2017-06-01 | 2017-06-02 | 2d |
| 82 | 1.5.3.5 | ROLLING | 2d | 2017-05-24 A | 2017-05-25 A | 81 | 100% | 2017-06-03 | 2017-06-05 | 2d |
| 83 | 1.5.3.6 | LS FITUP | 2d | 2017-09-02 A | 2017-09-05 A | 82, 40FS+1d | 100% | 2017-06-13 | 2017-06-14 | 2d |
| 84 | 1.5.3.7 | DP | 2d | 2017-09-05 A | 2017-09-07 A | 83 | 100% | 2017-06-15 | 2017-06-16 | 2d |
| 85 | 1.5.3.8 | LS WELDING | 2d | 2017-09-07 A | 2017-09-11 A | 84 | 100% | 2017-06-17 | 2017-06-19 | 2d |
| 86 | 1.5.3.9 | RT | 2d | 2017-09-11 A | 2017-09-13 A | 85 | 100% | 2017-06-20 | 2017-06-21 | 2d |
| 87 | 1.5.3.10 | CS FITUP | 4d | 2017-09-13 A | 2017-09-18 A | 86 | 100% | 2017-06-22 | 2017-06-26 | 4d |
| 88 | 1.5.3.11 | DP | 2d | 2017-09-18 A | 2017-09-20 A | 87 | 100% | 2017-06-27 | 2017-06-28 | 2d |
| 89 | 1.5.3.12 | CS WELDING | 4d | 2017-09-20 A | 2017-09-26 A | 88 | 100% | 2017-06-29 | 2017-07-03 | 4d |
| 90 | 1.5.3.13 | DP | 2d | 2017-09-26 A | 2017-09-28 A | 89 | 100% | 2017-07-04 | 2017-07-05 | 2d |
| 91 | 1.5.3.14 | NOZZLE OPENING | 4d | 2017-09-28 A | 2017-10-05 A | 90 | 100% | 2017-07-06 | 2017-07-11 | 4d |
| 92 | 1.5.3.15 | EP | 4d | 2017-10-05 A | 2017-10-10 A | 91 | 100% | 2017-07-12 | 2017-07-15 | 4d |
| 93 | 1.5.4 | **CHANNEL FLANGE FABRICATION** | 50.06d | 2017-10-23 A | 2017-12-26 A |  | 100% | 2017-06-20 | 2017-08-03 | 37d |
| 94 | 1.5.4.1 | CHANNEL FLANGE RECEIPT | 2d | 2017-10-23 A | 2017-10-25 A | 33FS+1d | 100% | 2017-06-20 | 2017-06-21 | 2d |
| 95 | 1.5.4.2 | WELD OVERLAY | 15d | 2017-11-28 A | 2017-12-15 A | 94, 42FS+1d, 41FS+1d | 100% | 2017-07-06 | 2017-07-25 | 15d |
| 96 | 1.5.4.3 | MACHINING | 8d | 2017-12-16 A | 2017-12-26 A | 95 | 100% | 2017-07-26 | 2017-08-03 | 8d |
| 97 | 1.5.5 | **SHELL BONNET FABRICATION** | 19d | 2017-10-13 A | 2017-11-07 A |  | 100% | 2017-05-23 | 2017-06-15 | 20d |
| 98 | 1.5.5.1 | PLATE MARKING AND CUTTING | 1d | 2017-10-13 A | 2017-10-13 A | 26FS+1d | 100% | 2017-05-23 | 2017-05-24 | 2d |
| 99 | 1.5.5.2 | SEND FOR DISH FORMING | 1d | 2017-10-16 A | 2017-10-16 A | 98 | 100% | 2017-05-25 | 2017-05-25 | 1d |
| 100 | 1.5.5.3 | FORMED DISH RECEIPT AND INSPN | 15d | 2017-10-17 A | 2017-11-04 A | 99 | 100% | 2017-05-26 | 2017-06-13 | 15d |
| 101 | 1.5.5.4 | EP | 2d | 2017-11-06 A | 2017-11-07 A | 100 | 100% | 2017-06-14 | 2017-06-15 | 2d |

| ID | WBS | Task | Duration | Start | Finish | Predecessors | Complete | Baseline start | Baseline finish | Baseline duration |
| --- | --- | --- | --- | --- | --- | --- | --- | --- | --- | --- |
| 102 | 1.5.6 | **FLOATING DISH FABRICATION** | 38d | 2017-10-13 A | 2017-12-01 A |  | 100% | 2017-06-03 | 2017-07-11 | 31d |
| 103 | 1.5.6.1 | PLATE MARKING AND CUTTING | 2d | 2017-10-13 A | 2017-10-16 A | 27FS+1d | 100% | 2017-06-03 | 2017-06-05 | 2d |
| 104 | 1.5.6.2 | SEND FOR DISH FORMING | 5d | 2017-10-26 A | 2017-10-31 A | 103 | 100% | 2017-06-06 | 2017-06-06 | 1d |
| 105 | 1.5.6.3 | FORMED DISH RECEIPT AND INSPN | 15d | 2017-10-31 A | 2017-11-18 A | 104 | 100% | 2017-06-07 | 2017-06-24 | 15d |
| 106 | 1.5.6.4 | EP | 2d | 2017-11-18 A | 2017-11-21 A | 105 | 100% | 2017-06-26 | 2017-06-27 | 2d |
| 107 | 1.5.6.5 | FITUP | 1d | 2017-11-27 A | 2017-11-27 A | 30FS+2d, 41, 106, 31FS+2d | 100% | 2017-07-05 | 2017-07-05 | 1d |
| 108 | 1.5.6.6 | WELDING | 4d | 2017-11-28 A | 2017-12-01 A | 107 | 100% | 2017-07-06 | 2017-07-11 | 4d |
| 109 | 1.5.7 | **BAFFLE FABRICATION** | 43.94d | 2017-08-10 A | 2017-10-09 A |  | 100% | 2017-05-24 | 2017-06-15 | 19d |
| 110 | 1.5.7.1 | PLATE MARKING AND CUTTING | 7d | 2017-08-10 A | 2017-08-18 A | 26FS+2d | 100% | 2017-05-24 | 2017-05-25 | 2d |
| 111 | 1.5.7.2 | OD MACHINING | 13d | 2017-08-22 A | 2017-09-05 A | 110 | 100% | 2017-05-26 | 2017-05-26 | 1d |
| 112 | 1.5.7.3 | TEMPLATE DRILLING | 7d | 2017-09-10 A | 2017-09-18 A | 111 | 100% | 2017-05-27 | 2017-05-31 | 4d |
| 113 | 1.5.7.4 | STACKING | 3d | 2017-09-28 A | 2017-09-30 A | 112 | 100% | 2017-06-01 | 2017-06-02 | 2d |
| 114 | 1.5.7.5 | DRILLING | 7d | 2017-10-01 A | 2017-10-09 A | 113 | 100% | 2017-06-03 | 2017-06-15 | 10d |
| 115 | 1.5.8 | **TUBESHEET FABRICATION** | 29d | 2017-09-20 A | 2017-10-31 A |  | 100% | 2017-06-19 | 2017-07-01 | 12d |
| 116 | 1.5.8.1 | FORGING RECEIPT | 1d | 2017-10-21 A | 2017-10-21 A | 30 | 100% | 2017-06-30 | 2017-07-01 | 2d |
| 117 | 1.5.8.2 | INSPECTION | 3d | 2017-10-22 A | 2017-10-25 A | 31 | 100% | 2017-06-30 | 2017-07-01 | 2d |
| 118 | 1.5.8.3 | HOLE PUNCHING | 3d | 2017-10-26 A | 2017-10-28 A | 32 | 100% | 2017-06-30 | 2017-07-01 | 2d |
| 119 | 1.5.8.4 | SEND FOR DRILLING | 2d | 2017-10-30 A | 2017-10-31 A | 33 | 100% | 2017-06-19 | 2017-06-20 | 2d |
| 120 | 1.5.8.5 | DRIILED T/SHEET RECEIPT | 10d | 2017-09-20 A | 2017-10-05 A | 34 | 100% | 2017-06-19 | 2017-06-29 | 10d |
| 121 | 1.5.9 | **VAPOR BELT FABRICATION** | 104d | 2017-07-27 A | 2017-12-12 A |  | 100% | 2017-05-24 | 2017-07-28 | 54d |
| 122 | 1.5.9.1 | PLATE MARKING AND CUTTING | 4d | 2017-07-27 A | 2017-08-01 A | 26FS+2d | 100% | 2017-05-24 | 2017-05-27 | 4d |
| 123 | 1.5.9.2 | PRE PUNCH ROLLING | 2d | 2017-08-01 A | 2017-08-03 A | 122 | 100% | 2017-05-29 | 2017-05-30 | 2d |
| 124 | 1.5.9.3 | PRE PUNCH CUTTING | 4d | 2017-08-03 A | 2017-08-08 A | 123 | 100% | 2017-05-31 | 2017-06-03 | 4d |
| 125 | 1.5.9.4 | EDGE PREPARATION | 4d | 2017-08-08 A | 2017-08-14 A | 124 | 100% | 2017-06-05 | 2017-06-08 | 4d |
| 126 | 1.5.9.5 | ROLLING | 4d | 2017-08-14 A | 2017-08-19 A | 125 | 100% | 2017-06-09 | 2017-06-14 | 4d |
| 127 | 1.5.9.6 | LS FITUP | 4d | 2017-10-26 A | 2017-11-01 A | 126, 43 | 100% | 2017-06-15 | 2017-06-19 | 4d |
| 128 | 1.5.9.7 | DP | 2d | 2017-11-01 A | 2017-11-03 A | 127 | 100% | 2017-06-20 | 2017-06-21 | 2d |
| 129 | 1.5.9.8 | LS WELDING | 7d | 2017-11-03 A | 2017-11-13 A | 128 | 100% | 2017-06-22 | 2017-06-29 | 7d |
| 130 | 1.5.9.9 | RT | 4d | 2017-11-13 A | 2017-11-17 A | 129 | 100% | 2017-06-30 | 2017-07-04 | 4d |
| 131 | 1.5.9.10 | CS FITUP | 4d | 2017-11-17 A | 2017-11-22 A | 130 | 100% | 2017-07-05 | 2017-07-10 | 4d |
| 132 | 1.5.9.11 | DP | 4d | 2017-11-22 A | 2017-11-28 A | 131 | 100% | 2017-07-11 | 2017-07-14 | 4d |
| 133 | 1.5.9.12 | CS WELDING | 7d | 2017-11-28 A | 2017-12-06 A | 132 | 100% | 2017-07-15 | 2017-07-24 | 7d |
| 134 | 1.5.9.13 | DP | 4d | 2017-12-06 A | 2017-12-12 A | 133 | 100% | 2017-07-25 | 2017-07-28 | 4d |

| ID | WBS | Task | Duration | Start | Finish | Predecessors | Complete | Baseline start | Baseline finish | Baseline duration |
| --- | --- | --- | --- | --- | --- | --- | --- | --- | --- | --- |
| 135 | 1.5.10 | **NOZZLE - SHELL SIDE FABRICATION** | 34d | 2017-10-27 A | 2017-12-11 A |  | 100% | 2017-06-05 | 2017-08-03 | 49d |
| 136 | 1.5.10.1 | PIPE MARKING AND CUTTING | 4d | 2017-10-27 A | 2017-11-02 A | 37FS+2d | 100% | 2017-06-05 | 2017-06-08 | 4d |
| 137 | 1.5.10.2 | EDGE PREPARATION | 4d | 2017-11-02 A | 2017-11-07 A | 136 | 100% | 2017-06-09 | 2017-06-14 | 4d |
| 138 | 1.5.10.3 | FLANGE FIT UP WITH PIPE | 4d | 2017-11-07 A | 2017-11-13 A | 137, 43, 35FS+2d | 100% | 2017-07-03 | 2017-07-06 | 4d |
| 139 | 1.5.10.4 | DP | 2d | 2017-11-13 A | 2017-11-15 A | 138 | 100% | 2017-07-07 | 2017-07-10 | 2d |
| 140 | 1.5.10.5 | FLANGE WELD WITH PIPE | 4d | 2017-11-15 A | 2017-11-20 A | 139 | 100% | 2017-07-11 | 2017-07-14 | 4d |
| 141 | 1.5.10.6 | RT | 4d | 2017-11-20 A | 2017-11-24 A | 140 | 100% | 2017-07-15 | 2017-07-19 | 4d |
| 142 | 1.5.10.7 | RF PAD PLATE MARKING AND CUTTING | 4d | 2017-11-24 A | 2017-11-30 A | 141, 26 | 100% | 2017-07-20 | 2017-07-25 | 4d |
| 143 | 1.5.10.8 | RF PAD FORMING | 8d | 2017-11-30 A | 2017-12-11 A | 142 | 100% | 2017-07-26 | 2017-08-03 | 8d |
| 144 | 1.5.11 | **NOZZLE - TUBE SIDE FABRICATION** | 79.94d | 2017-07-13 A | 2017-10-26 A |  | 100% | 2017-06-05 | 2017-07-19 | 37d |
| 145 | 1.5.11.1 | PIPE MARKING AND CUTTING | 4d | 2017-07-13 A | 2017-07-17 A | 36FS+2d | 100% | 2017-06-05 | 2017-06-08 | 4d |
| 146 | 1.5.11.2 | EDGE PREPARATION | 4d | 2017-07-18 A | 2017-07-21 A | 145 | 100% | 2017-06-09 | 2017-06-14 | 4d |
| 147 | 1.5.11.3 | FLANGE FIT UP WITH PIPE | 4d | 2017-09-22 A | 2017-09-28 A | 146, 34FS+2d, 40 | 100% | 2017-06-21 | 2017-06-24 | 4d |
| 148 | 1.5.11.4 | DP | 4d | 2017-09-28 A | 2017-10-05 A | 147 | 100% | 2017-06-26 | 2017-06-29 | 4d |
| 149 | 1.5.11.5 | FLANGE WELD WITH PIPE | 4d | 2017-10-05 A | 2017-10-10 A | 148 | 100% | 2017-06-30 | 2017-07-04 | 4d |
| 150 | 1.5.11.6 | RT | 4d | 2017-10-10 A | 2017-10-16 A | 149 | 100% | 2017-07-05 | 2017-07-10 | 4d |
| 151 | 1.5.11.7 | RF PAD PLATE MARKING AND CUTTING | 4d | 2017-10-16 A | 2017-10-21 A | 150, 25 | 100% | 2017-07-11 | 2017-07-14 | 4d |
| 152 | 1.5.11.8 | RF PAD FORMING | 4d | 2017-10-21 A | 2017-10-26 A | 151 | 100% | 2017-07-15 | 2017-07-19 | 4d |
| 153 | 1.5.12 | **SADDLE FABRICATION** | 15.94d | 2017-07-25 A | 2017-08-11 A |  | 100% | 2017-05-16 | 2017-06-07 | 20d |
| 154 | 1.5.12.1 | SADDLE PAD PLATE CUTTING | 1d | 2017-07-25 A | 2017-07-26 A | 26 | 100% | 2017-05-22 | 2017-05-25 | 4d |
| 155 | 1.5.12.2 | PAD PLATE FORMING | 2d | 2017-07-28 A | 2017-07-29 A | 154 | 100% | 2017-05-26 | 2017-05-30 | 4d |
| 156 | 1.5.12.3 | BASE PLATE CUTTING AND DRILLING | 2d | 2017-08-01 A | 2017-08-02 A | 28 | 100% | 2017-05-16 | 2017-05-19 | 4d |
| 157 | 1.5.12.4 | WEB PLATE CUTTING AND GRINDING | 2d | 2017-08-02 A | 2017-08-03 A | 156 | 100% | 2017-05-20 | 2017-05-24 | 4d |
| 158 | 1.5.12.5 | RIB PLATE CUTTING AND GRINDING | 3d | 2017-08-03 A | 2017-08-05 A | 157 | 100% | 2017-05-25 | 2017-05-29 | 4d |
| 159 | 1.5.12.6 | FITUP | 3d | 2017-08-07 A | 2017-08-09 A | 158 | 100% | 2017-05-30 | 2017-06-02 | 4d |
| 160 | 1.5.12.7 | WELDING | 3d | 2017-08-09 A | 2017-08-11 A | 159 | 100% | 2017-06-03 | 2017-06-07 | 4d |

| ID | WBS | Task | Type | Duration | Start | Finish | Predecessors | Complete | Baseline start | Baseline finish | Baseline duration |
| --- | --- | --- | --- | --- | --- | --- | --- | --- | --- | --- | --- |
| 161 | 1.5.13 | **LIFTING LUG FABRICATION** |  | 12d | 2017-07-25 A | 2017-08-08 A |  | 100% | 2017-05-24 | 2017-06-06 | 12d |
| 162 | 1.5.13.1 | PAD PLATE MARKING AND CUTTING |  | 2d | 2017-07-25 A | 2017-07-27 A | 25, 26 | 100% | 2017-05-24 | 2017-05-25 | 2d |
| 163 | 1.5.13.2 | PAD PLATE FORMING |  | 2d | 2017-07-27 A | 2017-07-29 A | 162 | 100% | 2017-05-26 | 2017-05-27 | 2d |
| 164 | 1.5.13.3 | LUG PLATE MARKING AND CUTTING |  | 2d | 2017-07-29 A | 2017-08-01 A | 163 | 100% | 2017-05-29 | 2017-05-30 | 2d |
| 165 | 1.5.13.4 | LUG PLATE DRILLING |  | 2d | 2017-08-01 A | 2017-08-03 A | 164 | 100% | 2017-05-31 | 2017-06-01 | 2d |
| 166 | 1.5.13.5 | LUG PLATE WELDING |  | 4d | 2017-08-03 A | 2017-08-08 A | 165 | 100% | 2017-06-02 | 2017-06-06 | 4d |
| 167 | 1.5.14 | **TIE ROD AND SPACER FABRICATION** |  | 45.94d | 2017-09-05 A | 2017-11-04 A |  | 100% | 2017-05-22 | 2017-06-12 | 18d |
| 168 | 1.5.14.1 | TIE ROD CUTTING |  | 4d | 2017-09-05 A | 2017-09-08 A | 26 | 100% | 2017-05-22 | 2017-05-23 | 2d |
| 169 | 1.5.14.2 | THREADING |  | 10d | 2017-09-13 A | 2017-09-25 A | 168 | 100% | 2017-05-24 | 2017-05-27 | 4d |
| 170 | 1.5.14.3 | SPACER MARKING |  | 9d | 2017-10-15 A | 2017-10-25 A | 37, 169 | 100% | 2017-06-02 | 2017-06-03 | 2d |
| 171 | 1.5.14.4 | CUTTING |  | 4d | 2017-10-27 A | 2017-10-31 A | 170 | 100% | 2017-06-05 | 2017-06-06 | 2d |
| 172 | 1.5.14.5 | GRINDING |  | 4d | 2017-11-01 A | 2017-11-04 A | 171 | 100% | 2017-06-07 | 2017-06-12 | 4d |
| 173 | 1.5.15 | **SHELL ASSEMBLY** |  | 60d | 2017-11-03 A | 2018-01-18 A |  | 100% | 2017-07-04 | 2017-08-29 | 46d |
| 174 | 1.5.15.1 | BODY FLANGE TO SHELL FITUP | milestone | 0d | 2017-11-03 A | 2017-11-03 A | 32, 45, 43 | 100% | 2017-07-18 | 2017-07-19 | 2d |
| 175 | 1.5.15.2 | DP | milestone | 0d | 2017-11-04 A | 2017-11-04 A | 174 | 100% | 2017-07-20 | 2017-07-20 | 1d |
| 176 | 1.5.15.3 | CS WELDING |  | 10d | 2017-11-06 A | 2017-11-17 A | 175 | 100% | 2017-07-21 | 2017-08-02 | 10d |
| 177 | 1.5.15.4 | RT |  | 2d | 2017-11-18 A | 2017-11-20 A | 176 | 100% | 2017-08-03 | 2017-08-04 | 2d |
| 178 | 1.5.15.5 | NOZZLE RF PAD FITUP |  | 2d | 2017-11-21 A | 2017-11-22 A | 177 | 100% | 2017-08-05 | 2017-08-07 | 2d |
| 179 | 1.5.15.6 | WELDING |  | 4d | 2017-11-23 A | 2017-11-28 A | 178 | 100% | 2017-08-08 | 2017-08-11 | 4d |
| 180 | 1.5.15.7 | PNEUMATIC |  | 2d | 2017-11-29 A | 2017-11-30 A | 179 | 100% | 2017-08-14 | 2017-08-15 | 2d |
| 181 | 1.5.15.8 | NOZZLE PIPE WITH FLANGE FIT UP |  | 2d | 2017-12-11 A | 2017-12-13 A | 180, 135 | 100% | 2017-08-16 | 2017-08-17 | 2d |
| 182 | 1.5.15.9 | NOZZLE PIPE WITH FLANGE WELDING |  | 6d | 2017-12-13 A | 2017-12-20 A | 181 | 100% | 2017-08-18 | 2017-08-24 | 6d |
| 183 | 1.5.15.10 | LUG / SADDLE PAD PLATE WELDING |  | 2d | 2017-12-20 A | 2017-12-22 A | 182, 153, 161 | 100% | 2017-08-25 | 2017-08-26 | 2d |
| 184 | 1.5.15.11 | LUG / SADDLE ASSEMBLY WELDING |  | 2d | 2017-12-22 A | 2017-12-26 A | 183 | 100% | 2017-08-28 | 2017-08-29 | 2d |
| 185 | 1.5.15.12 | SHELL COVER BONNET TO BARREL WELDING |  | 4d | 2017-11-20 A | 2017-11-24 A | 61, 97 | 100% | 2017-07-04 | 2017-07-07 | 4d |
| 186 | 1.5.15.13 | RT |  | 4d | 2017-11-24 A | 2017-11-30 A | 185 | 100% | 2017-07-10 | 2017-07-13 | 4d |
| 187 | 1.5.15.14 | CHANNEL SHELL TO FLANGE FITUP |  | 2d | 2017-12-27 A | 2017-12-28 A | 33, 77, 93, 40 | 100% | 2017-08-04 | 2017-08-05 | 2d |
| 188 | 1.5.15.15 | DP |  | 2d | 2017-12-29 A | 2017-12-30 A | 187 | 100% | 2017-08-07 | 2017-08-08 | 2d |
| 189 | 1.5.15.16 | CHANNEL SHELL TO FLANGE WELDING |  | 12d | 2018-01-01 A | 2018-01-16 A | 188 | 100% | 2017-08-09 | 2017-08-23 | 12d |
| 190 | 1.5.15.17 | RT |  | 2d | 2018-01-17 A | 2018-01-18 A | 189 | 100% | 2017-08-24 | 2017-08-25 | 2d |

| ID | WBS | Task | Duration | Start | Finish | Predecessors | Complete | Baseline start | Baseline finish | Baseline duration | Text2 |
| --- | --- | --- | --- | --- | --- | --- | --- | --- | --- | --- | --- |
| 191 | 1.5.16 | **TUBE BUNDLE ASSEMBLY** | 97.06d | 2017-11-04 A | 2018-03-09 A |  | 100% | 2017-07-03 | 2017-10-17 | 86d |  |
| 192 | 1.5.16.1 | TIE ROD TO TUBESHEET ASSY | 4d | 2017-11-04 A | 2017-11-09 A | 167, 115 | 100% | 2017-07-03 | 2017-07-06 | 4d |  |
| 193 | 1.5.16.2 | BAFFLE PLATE WITH SPACER ASSY | 4d | 2017-11-09 A | 2017-11-15 A | 109, 167, 192 | 100% | 2017-07-07 | 2017-07-12 | 4d |  |
| 194 | 1.5.16.3 | TUBE INSERTION | 10d | 2017-11-15 A | 2017-11-28 A | 29, 193 | 100% | 2017-07-13 | 2017-07-25 | 10d |  |
| 195 | 1.5.16.4 | TUBE BUNDLE INSERTION TO SHELL | 4d | 2018-01-19 A | 2018-01-23 A | 194, 173 | 100% | 2017-08-30 | 2017-09-02 | 4d |  |
| 196 | 1.5.16.5 | TUBE TO TUBESHHET EXPANSION | 15d | 2018-01-24 A | 2018-02-13 A | 195 | 100% | 2017-09-04 | 2017-09-21 | 15d |  |
| 197 | 1.5.16.6 | TUBE TO TUBESHEET WELDING | 20d | 2018-02-14 A | 2018-03-09 A | 196, 41 | 100% | 2017-09-22 | 2017-10-17 | 20d |  |
| 198 | 1.6 | **HYDROTEST** | 14d | 2018-03-12 A | 2018-03-28 A |  | 100% | 2017-10-18 | 2017-11-02 | 14d | PRODUCTION |
| 199 | 1.6.1 | PNEUMATIC TEST FOR TUBE TO TUBESHEET WELDING | 2d | 2018-03-12 A | 2018-03-13 A | 191 | 100% | 2017-10-18 | 2017-10-19 | 2d |  |
| 200 | 1.6.2 | SHELL SIDE HYDROTEST | 2d | 2018-03-14 A | 2018-03-15 A | 199 | 100% | 2017-10-20 | 2017-10-21 | 2d |  |
| 201 | 1.6.3 | WATER DRY | 1d | 2018-03-16 A | 2018-03-16 A | 200 | 100% | 2017-10-23 | 2017-10-23 | 1d |  |
| 202 | 1.6.4 | TUBE SIDE HYDROTEST | 2d | 2018-03-17 A | 2018-03-19 A | 201 | 100% | 2017-10-24 | 2017-10-25 | 2d |  |
| 203 | 1.6.5 | WATER DRY | 1d | 2018-03-20 A | 2018-03-20 A | 202 | 100% | 2017-10-26 | 2017-10-26 | 1d |  |
| 204 | 1.6.6 | SHELL SIDE WITH BARREL TEST | 2d | 2018-03-21 A | 2018-03-22 A | 203 | 100% | 2017-10-27 | 2017-10-28 | 2d |  |
| 205 | 1.6.7 | WATER DRY | 1d | 2018-03-23 A | 2018-03-23 A | 204 | 100% | 2017-10-30 | 2017-10-30 | 1d |  |
| 206 | 1.6.8 | STACKED CONDITION | 2d | 2018-03-26 A | 2018-03-27 A | 205 | 100% | 2017-10-31 | 2017-11-01 | 2d |  |
| 207 | 1.6.9 | WATER DRY | 1d | 2018-03-28 A | 2018-03-28 A | 206 | 100% | 2017-11-02 | 2017-11-02 | 1d |  |
| 208 | 1.7 | **SURFACE PREPARATION AND PAINTING** | 6d | 2018-03-29 A | 2018-04-04 A |  | 100% | 2017-11-03 | 2017-11-09 | 6d | PRODUCTION |
| 209 | 1.7.1 | SAND BLASTING AND PRIMER COATING | 2d | 2018-03-29 A | 2018-03-30 A | 198 | 100% | 2017-11-03 | 2017-11-04 | 2d |  |
| 210 | 1.7.2 | SHOP PAINTING | 4d | 2018-03-31 A | 2018-04-04 A | 209 | 100% | 2017-11-06 | 2017-11-09 | 4d |  |
| 211 | 1.8 | **DESPATCH** | 6.5d | 2018-04-05 A | 2018-04-12 A |  | 100% | 2017-11-10 | 2017-11-18 | 6.5d | PRODUCTION |
| 212 | 1.8.1 | PACKING | 1d | 2018-04-05 A | 2018-04-05 A | 208 | 100% | 2017-11-10 | 2017-11-10 | 1d |  |
| 213 | 1.8.2 | DESPATCH TO SITE | 0.5d | 2018-04-06 A | 2018-04-06 A | 212 | 100% | 2017-11-13 | 2017-11-13 | 0.5d |  |
| 214 | 1.8.3 | RECEIPT AT KOCHI REFINERY | 5d | 2018-04-06 A | 2018-04-12 A | 213 | 100% | 2017-11-13 | 2017-11-18 | 5d |  |

| ID | WBS | Task | Type | Duration | Start | Finish | Predecessors | Complete | Baseline start | Baseline finish | Baseline duration |
| --- | --- | --- | --- | --- | --- | --- | --- | --- | --- | --- | --- |
| 215 | 2 | **4161-A-PDE010** |  | 267.5d | 2017-03-30 A | 2018-03-13 A |  | 100% | 2017-03-30 | 2017-10-16 | 161.5d |
| 216 | 2.1 | PO RECEIPT |  | 1d | 2017-03-30 A | 2017-03-30 A |  | 100% | 2017-03-30 | 2017-03-30 | 1d |
| 217 | 2.2 | DRAWING SUBMISSION FOR APPROVAL |  | 1d | 2017-04-24 A | 2017-04-24 A | 216FS+1d | 100% | 2017-04-01 | 2017-04-26 | 20d |
| 218 | 2.3 | **PR ISSUE** |  | 54.94d | 2017-05-02 A | 2017-07-10 A |  | 100% | 2017-04-28 | 2017-05-04 | 6d |
| 219 | 2.3.1 | PLATES AND RODS-SA516 Gr.60 |  | 2d | 2017-05-12 A | 2017-05-15 A | 217FS+1d | 100% | 2017-04-28 | 2017-05-04 | 6d |
| 220 | 2.3.2 | PLATES AND RODS-SA240 Gr.304L |  | 2d | 2017-05-12 A | 2017-05-15 A | 217FS+1d | 100% | 2017-04-28 | 2017-05-02 | 4d |
| 221 | 2.3.3 | PLATES AND RODS-SA240 S31803 |  | 2d | 2017-05-12 A | 2017-05-15 A | 217FS+1d | 100% | 2017-04-28 | 2017-05-02 | 4d |
| 222 | 2.3.4 | PLATES AND RODS-IS2062 Gr.B |  | 2d | 2017-05-12 A | 2017-05-15 A | 217FS+1d | 100% | 2017-04-28 | 2017-05-02 | 4d |
| 223 | 2.3.5 | TUBE-SA789 S31803 |  | 2d | 2017-05-02 A | 2017-05-03 A | 217FS+1d | 100% | 2017-04-28 | 2017-04-28 | 1d |
| 224 | 2.3.6 | BLANK FORGING-SA182 F51 |  | 4d | 2017-05-10 A | 2017-05-15 A | 217FS+1d | 100% | 2017-04-28 | 2017-04-29 | 2d |
| 225 | 2.3.7 | NON STANDARD FORGING-SA182 F51 |  | 4d | 2017-05-10 A | 2017-05-15 A | 217FS+1d | 100% | 2017-04-28 | 2017-04-29 | 2d |
| 226 | 2.3.8 | NON STANDARD FORGING-SA965 F304L |  | 4d | 2017-05-10 A | 2017-05-15 A | 217FS+1d | 100% | 2017-04-28 | 2017-04-29 | 2d |
| 227 | 2.3.9 | NON STANDARD FORGING-SA266 Gr.4 |  | 4d | 2017-05-10 A | 2017-05-15 A | 217FS+1d | 100% | 2017-04-28 | 2017-04-29 | 2d |
| 228 | 2.3.10 | STANDARD FORGING-SA105 |  | 7d | 2017-05-06 A | 2017-05-15 A | 217FS+1d | 100% | 2017-04-28 | 2017-04-29 | 2d |
| 229 | 2.3.11 | STANDARD FORGING-SA182 F304L |  | 7d | 2017-05-06 A | 2017-05-15 A | 217FS+1d | 100% | 2017-04-28 | 2017-04-29 | 2d |
| 230 | 2.3.12 | PIPE-SA106 Gr.B |  | 7d | 2017-05-06 A | 2017-05-15 A | 217FS+1d | 100% | 2017-04-28 | 2017-05-02 | 4d |
| 231 | 2.3.13 | PIPE-SA312 TP304L |  | 7d | 2017-05-06 A | 2017-05-15 A | 217FS+1d | 100% | 2017-04-28 | 2017-05-02 | 4d |
| 232 | 2.3.14 | GASKETS-DUPLEX/ALLOY625 |  | 4d | 2017-05-16 A | 2017-05-19 A | 217FS+1d | 100% | 2017-04-28 | 2017-05-03 | 5d |
| 233 | 2.3.15 | FASTNERS-SA193 Gr.B7 |  | 4d | 2017-05-10 A | 2017-05-15 A | 217FS+1d | 100% | 2017-04-28 | 2017-05-03 | 5d |
| 234 | 2.3.16 | CONSUMABLES-CS |  | 1d | 2017-06-15 A | 2017-06-15 A | 217FS+1d | 100% | 2017-04-28 | 2017-05-04 | 6d |
| 235 | 2.3.17 | CONSUMABLES-S31803 |  | 1d | 2017-07-10 A | 2017-07-10 A | 217FS+1d | 100% | 2017-04-28 | 2017-05-04 | 6d |
| 236 | 2.3.18 | CONSUMABLES-SS309 LMO |  | 1d | 2017-07-10 A | 2017-07-10 A | 217FS+1d | 100% | 2017-04-28 | 2017-05-04 | 6d |
| 237 | 2.3.19 | CONSUMABLES-SS304L |  | 1d | 2017-07-10 A | 2017-07-10 A | 217FS+1d | 100% | 2017-04-28 | 2017-05-04 | 6d |
| 238 | 2.4 | **MATERIAL ORDERING AND RECEIPT** |  | 151d | 2017-05-12 A | 2017-11-24 A |  | 100% | 2017-04-29 | 2017-07-11 | 60d |
| 239 | 2.4.1 | PLATES AND RODS-SA516 Gr.60 | milestone | 0w | 2017-05-12 A | 2017-05-12 A | 219 | 100% | 2017-05-05 | 2017-05-23 | 3w |
| 240 | 2.4.2 | PLATES AND RODS-SA240 Gr.304L |  | 5.4w | 2017-06-22 A | 2017-07-25 A | 220 | 100% | 2017-05-03 | 2017-05-20 | 3w |
| 241 | 2.4.3 | PLATES AND RODS-SA240 S31803 |  | 18.8w | 2017-06-23 A | 2017-10-17 A | 221 | 100% | 2017-05-03 | 2017-06-01 | 5w |
| 242 | 2.4.4 | PLATES AND RODS-IS2062 Gr.B |  | 1.2w | 2017-06-08 A | 2017-06-15 A | 222 | 100% | 2017-05-03 | 2017-05-15 | 2w |
| 243 | 2.4.5 | TUBE-SA789 S31803 |  | 20.2w | 2017-05-16 A | 2017-09-15 A | 223 | 100% | 2017-04-29 | 2017-07-11 | 12w |
| 244 | 2.4.6 | BLANK FORGING-SA182 F51 |  | 23.2w | 2017-06-01 A | 2017-10-21 A | 224 | 100% | 2017-05-01 | 2017-06-29 | 10w |
| 245 | 2.4.7 | NON STANDARD FORGING-SA182 F51 |  | 23.2w | 2017-06-01 A | 2017-10-21 A | 225 | 100% | 2017-05-01 | 2017-06-29 | 10w |
| 246 | 2.4.8 | NON STANDARD FORGING-SA965 F304L |  | 17w | 2017-06-01 A | 2017-09-13 A | 226 | 100% | 2017-05-01 | 2017-06-29 | 10w |
| 247 | 2.4.9 | NON STANDARD FORGING-SA266 Gr.4 |  | 23.2w | 2017-06-01 A | 2017-10-21 A | 227 | 100% | 2017-05-01 | 2017-06-17 | 8w |
| 248 | 2.4.10 | STANDARD FORGING-SA105 |  | 18.2w | 2017-06-01 A | 2017-09-20 A | 228 | 100% | 2017-05-01 | 2017-06-17 | 8w |
| 249 | 2.4.11 | STANDARD FORGING-SA182 F304L |  | 18.2w | 2017-06-01 A | 2017-09-20 A | 229 | 100% | 2017-05-01 | 2017-06-29 | 10w |
| 250 | 2.4.12 | PIPE-SA106 Gr.B |  | 1w | 2017-06-08 A | 2017-06-14 A | 230 | 100% | 2017-05-03 | 2017-06-01 | 5w |
| 251 | 2.4.13 | PIPE-SA312 TP304L |  | 12.6w | 2017-08-09 A | 2017-10-25 A | 231 | 100% | 2017-05-03 | 2017-06-01 | 5w |
| 252 | 2.4.14 | GASKETS-DUPLEX/ALLOY625 |  | 17.2w | 2017-07-14 A | 2017-10-27 A | 232 | 100% | 2017-05-04 | 2017-06-21 | 8w |
| 253 | 2.4.15 | FASTNERS-SA193 Gr.B7 |  | 12.6w | 2017-05-31 A | 2017-08-16 A | 233 | 100% | 2017-05-04 | 2017-06-21 | 8w |
| 254 | 2.4.16 | CONSUMABLES-CS |  | 5.2w | 2017-08-02 A | 2017-09-01 A | 234 | 100% | 2017-05-05 | 2017-06-09 | 6w |
| 255 | 2.4.17 | CONSUMABLES-S31803 |  | 10w | 2017-09-20 A | 2017-11-24 A | 235 | 100% | 2017-05-05 | 2017-07-04 | 10w |
| 256 | 2.4.18 | CONSUMABLES-SS309 LMO |  | 6w | 2017-09-20 A | 2017-10-31 A | 236 | 100% | 2017-05-05 | 2017-06-09 | 6w |
| 257 | 2.4.19 | CONSUMABLES-SS304L |  | 5.8w | 2017-09-21 A | 2017-10-26 A | 237 | 100% | 2017-05-05 | 2017-06-09 | 6w |

| ID | WBS | Task | Type | Duration | Start | Finish | Predecessors | Complete | Baseline start | Baseline finish | Baseline duration |
| --- | --- | --- | --- | --- | --- | --- | --- | --- | --- | --- | --- |
| 258 | 2.5 | **FABRICATION** |  | 182.06d | 2017-06-16 A | 2018-02-09 A |  | 100% | 2017-05-16 | 2017-09-15 | 101d |
| 259 | 2.5.1 | **SHELL FABRICATION** |  | 83.94d | 2017-07-24 A | 2017-11-10 A |  | 100% | 2017-05-23 | 2017-06-28 | 31d |
| 260 | 2.5.1.1 | PLATE MARKING AND CUTTING |  | 5d | 2017-07-24 A | 2017-07-28 A | 240FS+1d | 100% | 2017-05-23 | 2017-05-23 | 1d |
| 261 | 2.5.1.2 | PRE PUNCH ROLLING | milestone | 0d | 2017-09-28 A | 2017-09-28 A | 260 | 100% | 2017-05-24 | 2017-05-24 | 1d |
| 262 | 2.5.1.3 | PRE PUNCH CUTTING |  | 2d | 2017-09-29 A | 2017-09-30 A | 261 | 100% | 2017-05-25 | 2017-05-25 | 1d |
| 263 | 2.5.1.4 | EDGE PREPARATION | milestone | 0d | 2017-09-30 A | 2017-09-30 A | 262 | 100% | 2017-05-26 | 2017-05-26 | 1d |
| 264 | 2.5.1.5 | ROLLING |  | 1d | 2017-10-01 A | 2017-10-02 A | 263 | 100% | 2017-05-27 | 2017-05-29 | 2d |
| 265 | 2.5.1.6 | LS FITUP | milestone | 0d | 2017-10-03 A | 2017-10-03 A | 257, 264 | 100% | 2017-06-12 | 2017-06-12 | 1d |
| 266 | 2.5.1.7 | DP |  | 3d | 2017-10-05 A | 2017-10-07 A | 265 | 100% | 2017-06-13 | 2017-06-13 | 1d |
| 267 | 2.5.1.8 | LS WELDING |  | 1d | 2017-10-08 A | 2017-10-09 A | 266 | 100% | 2017-06-14 | 2017-06-15 | 2d |
| 268 | 2.5.1.9 | RT |  | 2d | 2017-10-10 A | 2017-10-11 A | 267 | 100% | 2017-06-16 | 2017-06-16 | 1d |
| 269 | 2.5.1.10 | CS FITUP |  | 2d | 2017-10-12 A | 2017-10-13 A | 268 | 100% | 2017-06-17 | 2017-06-19 | 2d |
| 270 | 2.5.1.11 | DP | milestone | 0d | 2017-10-14 A | 2017-10-14 A | 269 | 100% | 2017-06-20 | 2017-06-20 | 1d |
| 271 | 2.5.1.12 | CS WELDING |  | 4d | 2017-10-16 A | 2017-10-19 A | 270 | 100% | 2017-06-21 | 2017-06-22 | 2d |
| 272 | 2.5.1.13 | DP |  | 5d | 2017-10-20 A | 2017-10-25 A | 271 | 100% | 2017-06-23 | 2017-06-23 | 1d |
| 273 | 2.5.1.14 | NOZZLE OPENING |  | 7d | 2017-11-01 A | 2017-11-08 A | 272 | 100% | 2017-06-24 | 2017-06-26 | 2d |
| 274 | 2.5.1.15 | EP |  | 2d | 2017-11-09 A | 2017-11-10 A | 273 | 100% | 2017-06-27 | 2017-06-28 | 2d |
| 275 | 2.5.2 | **SHELL COVER BARREL FABRICATION** |  | 79d | 2017-07-24 A | 2017-11-05 A |  | 100% | 2017-05-26 | 2017-06-24 | 24.5d |
| 276 | 2.5.2.1 | PLATE MARKING AND CUTTING |  | 5d | 2017-07-24 A | 2017-07-28 A | 240FS+4d | 100% | 2017-05-26 | 2017-05-26 | 0.5d |
| 277 | 2.5.2.2 | PRE PUNCH ROLLING |  | 1d | 2017-09-28 A | 2017-09-28 A | 276 | 100% | 2017-05-26 | 2017-05-26 | 0.5d |
| 278 | 2.5.2.3 | PRE PUNCH CUTTING |  | 2d | 2017-09-29 A | 2017-09-30 A | 277 | 100% | 2017-05-27 | 2017-05-27 | 0.5d |
| 279 | 2.5.2.4 | EDGE PREPARATION |  | 1d | 2017-09-30 A | 2017-09-30 A | 278 | 100% | 2017-05-27 | 2017-05-27 | 0.5d |
| 280 | 2.5.2.5 | ROLLING |  | 1d | 2017-10-01 A | 2017-10-02 A | 279 | 100% | 2017-05-29 | 2017-05-29 | 1d |
| 281 | 2.5.2.6 | LS FITUP |  | 2d | 2017-10-03 A | 2017-10-04 A | 257FS+4d, 280 | 100% | 2017-06-16 | 2017-06-16 | 0.5d |
| 282 | 2.5.2.7 | DP |  | 3d | 2017-10-05 A | 2017-10-07 A | 281 | 100% | 2017-06-16 | 2017-06-16 | 0.5d |
| 283 | 2.5.2.8 | LS WELDING |  | 1d | 2017-10-08 A | 2017-10-09 A | 282 | 100% | 2017-06-17 | 2017-06-17 | 1d |
| 284 | 2.5.2.9 | RT |  | 2d | 2017-10-10 A | 2017-10-11 A | 283 | 100% | 2017-06-19 | 2017-06-19 | 0.5d |
| 285 | 2.5.2.10 | CS FITUP |  | 2d | 2017-10-12 A | 2017-10-13 A | 284 | 100% | 2017-06-19 | 2017-06-20 | 1d |
| 286 | 2.5.2.11 | DP | milestone | 0d | 2017-10-14 A | 2017-10-14 A | 285 | 100% | 2017-06-20 | 2017-06-20 | 0.5d |
| 287 | 2.5.2.12 | CS WELDING |  | 4d | 2017-10-16 A | 2017-10-19 A | 286 | 100% | 2017-06-21 | 2017-06-21 | 1d |
| 288 | 2.5.2.13 | DP |  | 5d | 2017-10-20 A | 2017-10-25 A | 287 | 100% | 2017-06-22 | 2017-06-22 | 0.5d |
| 289 | 2.5.2.14 | NOZZLE OPENING |  | 4d | 2017-11-01 A | 2017-11-04 A | 288 | 100% | 2017-06-22 | 2017-06-23 | 1d |
| 290 | 2.5.2.15 | EP | milestone | 0d | 2017-11-05 A | 2017-11-05 A | 289 | 100% | 2017-06-23 | 2017-06-24 | 1d |

| ID | WBS | Task | Type | Duration | Start | Finish | Predecessors | Complete | Baseline start | Baseline finish | Baseline duration |
| --- | --- | --- | --- | --- | --- | --- | --- | --- | --- | --- | --- |
| 291 | 2.5.3 | **CHANNEL SHELL FABRICATION** |  | 79.94d | 2017-07-24 A | 2017-11-06 A |  | 100% | 2017-05-25 | 2017-06-29 | 30d |
| 292 | 2.5.3.1 | PLATE MARKING AND CUTTING |  | 5d | 2017-07-24 A | 2017-07-28 A | 239FS+1d | 100% | 2017-05-25 | 2017-05-25 | 1d |
| 293 | 2.5.3.2 | PRE PUNCH ROLLING |  | 1d | 2017-09-28 A | 2017-09-28 A | 292 | 100% | 2017-05-26 | 2017-05-26 | 1d |
| 294 | 2.5.3.3 | PRE PUNCH CUTTING |  | 2d | 2017-09-29 A | 2017-09-30 A | 293 | 100% | 2017-05-27 | 2017-05-27 | 1d |
| 295 | 2.5.3.4 | EDGE PREPARATION |  | 1d | 2017-09-30 A | 2017-09-30 A | 294 | 100% | 2017-05-29 | 2017-05-29 | 1d |
| 296 | 2.5.3.5 | ROLLING |  | 1d | 2017-10-01 A | 2017-10-02 A | 295 | 100% | 2017-05-30 | 2017-05-31 | 2d |
| 297 | 2.5.3.6 | LS FITUP |  | 2d | 2017-10-03 A | 2017-10-04 A | 254FS+1d, 296 | 100% | 2017-06-13 | 2017-06-13 | 1d |
| 298 | 2.5.3.7 | DP |  | 3d | 2017-10-05 A | 2017-10-07 A | 297 | 100% | 2017-06-14 | 2017-06-14 | 1d |
| 299 | 2.5.3.8 | LS WELDING |  | 1d | 2017-10-08 A | 2017-10-09 A | 298 | 100% | 2017-06-15 | 2017-06-16 | 2d |
| 300 | 2.5.3.9 | RT |  | 2d | 2017-10-10 A | 2017-10-11 A | 299 | 100% | 2017-06-17 | 2017-06-17 | 1d |
| 301 | 2.5.3.10 | CS FITUP |  | 2d | 2017-10-12 A | 2017-10-13 A | 300 | 100% | 2017-06-19 | 2017-06-20 | 2d |
| 302 | 2.5.3.11 | DP | milestone | 0d | 2017-10-14 A | 2017-10-14 A | 301 | 100% | 2017-06-21 | 2017-06-21 | 1d |
| 303 | 2.5.3.12 | CS WELDING |  | 4d | 2017-10-16 A | 2017-10-19 A | 302 | 100% | 2017-06-22 | 2017-06-23 | 2d |
| 304 | 2.5.3.13 | DP |  | 5d | 2017-10-20 A | 2017-10-25 A | 303 | 100% | 2017-06-24 | 2017-06-24 | 1d |
| 305 | 2.5.3.14 | NOZZLE OPENING |  | 3d | 2017-11-01 A | 2017-11-03 A | 304 | 100% | 2017-06-26 | 2017-06-27 | 2d |
| 306 | 2.5.3.15 | EP |  | 2d | 2017-11-03 A | 2017-11-06 A | 305 | 100% | 2017-06-28 | 2017-06-29 | 2d |
| 307 | 2.5.4 | **CHANNEL FLANGE FABRICATION** |  | 41.06d | 2017-10-23 A | 2017-12-14 A |  | 100% | 2017-06-20 | 2017-07-24 | 28d |
| 308 | 2.5.4.1 | CHANNEL FLANGE RECEIPT |  | 1d | 2017-10-23 A | 2017-10-24 A | 247FS+1d | 100% | 2017-06-20 | 2017-06-20 | 1d |
| 309 | 2.5.4.2 | WELD OVERLAY |  | 10d | 2017-11-28 A | 2017-12-08 A | 255FS+1d, 256FS+1d, 308 | 100% | 2017-07-06 | 2017-07-18 | 10d |
| 310 | 2.5.4.3 | MACHINING |  | 4d | 2017-12-11 A | 2017-12-14 A | 309 | 100% | 2017-07-19 | 2017-07-24 | 4d |
| 311 | 2.5.5 | **SHELL BONNET FABRICATION** |  | 12.5d | 2017-10-13 A | 2017-10-31 A |  | 100% | 2017-05-23 | 2017-06-06 | 12.5d |
| 312 | 2.5.5.1 | PLATE MARKING AND CUTTING |  | 1d | 2017-10-13 A | 2017-10-13 A | 240FS+1d | 100% | 2017-05-23 | 2017-05-23 | 1d |
| 313 | 2.5.5.2 | SEND FOR DISH FORMING |  | 0.5d | 2017-10-16 A | 2017-10-16 A | 312 | 100% | 2017-05-24 | 2017-05-24 | 0.5d |
| 314 | 2.5.5.3 | FORMED DISH RECEIPT AND INSPN |  | 10d | 2017-10-16 A | 2017-10-30 A | 313 | 100% | 2017-05-24 | 2017-06-05 | 10d |
| 315 | 2.5.5.4 | EP |  | 1d | 2017-10-30 A | 2017-10-31 A | 314 | 100% | 2017-06-05 | 2017-06-06 | 1d |

| ID | WBS | Task | Type | Duration | Start | Finish | Predecessors | Complete | Baseline start | Baseline finish | Baseline duration |
| --- | --- | --- | --- | --- | --- | --- | --- | --- | --- | --- | --- |
| 316 | 2.5.6 | **FLOATING DISH FABRICATION** |  | 38d | 2017-10-13 A | 2017-12-01 A |  | 100% | 2017-06-03 | 2017-07-11 | 31d |
| 317 | 2.5.6.1 | PLATE MARKING AND CUTTING | milestone | 0d | 2017-10-13 A | 2017-10-13 A | 241FS+1d | 100% | 2017-06-03 | 2017-06-03 | 1d |
| 318 | 2.5.6.2 | SEND FOR DISH FORMING |  | 5d | 2017-10-26 A | 2017-10-31 A | 317 | 100% | 2017-06-05 | 2017-06-05 | 0.5d |
| 319 | 2.5.6.3 | FORMED DISH RECEIPT AND INSPN |  | 10d | 2017-10-31 A | 2017-11-13 A | 318 | 100% | 2017-06-05 | 2017-06-17 | 10d |
| 320 | 2.5.6.4 | EP |  | 1d | 2017-11-13 A | 2017-11-14 A | 319 | 100% | 2017-06-17 | 2017-06-19 | 1d |
| 321 | 2.5.6.5 | FITUP |  | 1d | 2017-11-27 A | 2017-11-27 A | 244FS+2d, 245FS+2d, 255, 320 | 100% | 2017-07-05 | 2017-07-05 | 1d |
| 322 | 2.5.6.6 | WELDING |  | 4d | 2017-11-28 A | 2017-12-01 A | 321 | 100% | 2017-07-06 | 2017-07-11 | 4d |
| 323 | 2.5.7 | **BAFFLE FABRICATION** |  | 43.94d | 2017-08-10 A | 2017-10-09 A |  | 100% | 2017-05-24 | 2017-06-03 | 9.5d |
| 324 | 2.5.7.1 | PLATE MARKING AND CUTTING |  | 7d | 2017-08-10 A | 2017-08-18 A | 240FS+2d | 100% | 2017-05-24 | 2017-05-24 | 1d |
| 325 | 2.5.7.2 | OD MACHINING |  | 13d | 2017-08-22 A | 2017-09-05 A | 324 | 100% | 2017-05-25 | 2017-05-25 | 0.5d |
| 326 | 2.5.7.3 | TEMPLATE DRILLING |  | 7d | 2017-09-10 A | 2017-09-18 A | 325 | 100% | 2017-05-25 | 2017-05-27 | 2d |
| 327 | 2.5.7.4 | STACKING |  | 3d | 2017-09-28 A | 2017-09-30 A | 326 | 100% | 2017-05-27 | 2017-05-29 | 1d |
| 328 | 2.5.7.5 | DRILLING |  | 7d | 2017-10-01 A | 2017-10-09 A | 327 | 100% | 2017-05-29 | 2017-06-03 | 5d |
| 329 | 2.5.8 | **TUBESHEET FABRICATION** |  | 29d | 2017-09-20 A | 2017-10-31 A |  | 100% | 2017-06-19 | 2017-07-05 | 15d |
| 330 | 2.5.8.1 | FORGING RECEIPT | milestone | 0d | 2017-10-21 A | 2017-10-21 A | 244 | 100% | 2017-06-30 | 2017-06-30 | 1d |
| 331 | 2.5.8.2 | INSPECTION |  | 3d | 2017-10-22 A | 2017-10-25 A | 245 | 100% | 2017-06-30 | 2017-06-30 | 1d |
| 332 | 2.5.8.3 | HOLE PUNCHING |  | 3d | 2017-10-26 A | 2017-10-28 A | 246 | 100% | 2017-06-30 | 2017-06-30 | 1d |
| 333 | 2.5.8.4 | SEND FOR DRILLING |  | 2d | 2017-10-30 A | 2017-10-31 A | 247 | 100% | 2017-06-19 | 2017-06-19 | 1d |
| 334 | 2.5.8.5 | DRIILED T/SHEET RECEIPT |  | 15d | 2017-09-20 A | 2017-10-11 A | 248 | 100% | 2017-06-19 | 2017-07-05 | 15d |
| 335 | 2.5.9 | **VAPOR BELT FABRICATION** |  | 89d | 2017-07-27 A | 2017-11-22 A |  | 100% | 2017-05-24 | 2017-07-05 | 36d |
| 336 | 2.5.9.1 | PLATE MARKING AND CUTTING |  | 2d | 2017-07-27 A | 2017-07-29 A | 240FS+2d | 100% | 2017-05-24 | 2017-05-25 | 2d |
| 337 | 2.5.9.2 | PRE PUNCH ROLLING |  | 1d | 2017-07-29 A | 2017-07-31 A | 336 | 100% | 2017-05-26 | 2017-05-26 | 1d |
| 338 | 2.5.9.3 | PRE PUNCH CUTTING |  | 2d | 2017-07-31 A | 2017-08-02 A | 337 | 100% | 2017-05-27 | 2017-05-29 | 2d |
| 339 | 2.5.9.4 | EDGE PREPARATION |  | 2d | 2017-08-02 A | 2017-08-04 A | 338 | 100% | 2017-05-30 | 2017-05-31 | 2d |
| 340 | 2.5.9.5 | ROLLING |  | 2d | 2017-08-04 A | 2017-08-07 A | 339 | 100% | 2017-06-01 | 2017-06-02 | 2d |
| 341 | 2.5.9.6 | LS FITUP |  | 2d | 2017-10-26 A | 2017-10-30 A | 257, 340 | 100% | 2017-06-12 | 2017-06-13 | 2d |
| 342 | 2.5.9.7 | DP |  | 1d | 2017-10-30 A | 2017-10-31 A | 341 | 100% | 2017-06-14 | 2017-06-14 | 1d |
| 343 | 2.5.9.8 | LS WELDING |  | 5d | 2017-10-31 A | 2017-11-06 A | 342 | 100% | 2017-06-15 | 2017-06-20 | 5d |
| 344 | 2.5.9.9 | RT |  | 2d | 2017-11-06 A | 2017-11-08 A | 343 | 100% | 2017-06-21 | 2017-06-22 | 2d |
| 345 | 2.5.9.10 | CS FITUP |  | 2d | 2017-11-08 A | 2017-11-10 A | 344 | 100% | 2017-06-23 | 2017-06-24 | 2d |
| 346 | 2.5.9.11 | DP |  | 2d | 2017-11-10 A | 2017-11-14 A | 345 | 100% | 2017-06-26 | 2017-06-27 | 2d |
| 347 | 2.5.9.12 | CS WELDING |  | 5d | 2017-11-14 A | 2017-11-20 A | 346 | 100% | 2017-06-28 | 2017-07-03 | 5d |
| 348 | 2.5.9.13 | DP |  | 2d | 2017-11-20 A | 2017-11-22 A | 347 | 100% | 2017-07-04 | 2017-07-05 | 2d |

| ID | WBS | Task | Duration | Start | Finish | Predecessors | Complete | Baseline start | Baseline finish | Baseline duration |
| --- | --- | --- | --- | --- | --- | --- | --- | --- | --- | --- |
| 349 | 2.5.10 | **NOZZLE - SHELL SIDE FABRICATION** | 17d | 2017-10-27 A | 2017-11-18 A |  | 100% | 2017-06-05 | 2017-07-18 | 36d |
| 350 | 2.5.10.1 | PIPE MARKING AND CUTTING | 2d | 2017-10-27 A | 2017-10-31 A | 251FS+2d | 100% | 2017-06-05 | 2017-06-06 | 2d |
| 351 | 2.5.10.2 | EDGE PREPARATION | 2d | 2017-10-31 A | 2017-11-02 A | 350 | 100% | 2017-06-07 | 2017-06-08 | 2d |
| 352 | 2.5.10.3 | FLANGE FIT UP WITH PIPE | 2d | 2017-11-02 A | 2017-11-04 A | 249FS+2d, 257, 351 | 100% | 2017-07-03 | 2017-07-04 | 2d |
| 353 | 2.5.10.4 | DP | 1d | 2017-11-04 A | 2017-11-06 A | 352 | 100% | 2017-07-05 | 2017-07-05 | 1d |
| 354 | 2.5.10.5 | FLANGE WELD WITH PIPE | 2d | 2017-11-06 A | 2017-11-08 A | 353 | 100% | 2017-07-06 | 2017-07-07 | 2d |
| 355 | 2.5.10.6 | RT | 2d | 2017-11-08 A | 2017-11-10 A | 354 | 100% | 2017-07-10 | 2017-07-11 | 2d |
| 356 | 2.5.10.7 | RF PAD PLATE MARKING AND CUTTING | 2d | 2017-11-10 A | 2017-11-14 A | 240, 355 | 100% | 2017-07-12 | 2017-07-13 | 2d |
| 357 | 2.5.10.8 | RF PAD FORMING | 4d | 2017-11-14 A | 2017-11-18 A | 356 | 100% | 2017-07-14 | 2017-07-18 | 4d |
| 358 | 2.5.11 | **NOZZLE - TUBE SIDE FABRICATION** | 88d | 2017-06-16 A | 2017-10-10 A |  | 100% | 2017-06-05 | 2017-07-04 | 25d |
| 359 | 2.5.11.1 | PIPE MARKING AND CUTTING | 2d | 2017-06-16 A | 2017-06-19 A | 250FS+2d | 100% | 2017-06-05 | 2017-06-06 | 2d |
| 360 | 2.5.11.2 | EDGE PREPARATION | 2d | 2017-06-19 A | 2017-06-21 A | 359 | 100% | 2017-06-07 | 2017-06-08 | 2d |
| 361 | 2.5.11.3 | FLANGE FIT UP WITH PIPE | 2d | 2017-09-22 A | 2017-09-26 A | 248FS+2d, 254, 360 | 100% | 2017-06-21 | 2017-06-22 | 2d |
| 362 | 2.5.11.4 | DP | 2d | 2017-09-26 A | 2017-09-28 A | 361 | 100% | 2017-06-23 | 2017-06-24 | 2d |
| 363 | 2.5.11.5 | FLANGE WELD WITH PIPE | 2d | 2017-09-28 A | 2017-10-03 A | 362 | 100% | 2017-06-26 | 2017-06-27 | 2d |
| 364 | 2.5.11.6 | RT | 2d | 2017-10-03 A | 2017-10-05 A | 363 | 100% | 2017-06-28 | 2017-06-29 | 2d |
| 365 | 2.5.11.7 | RF PAD PLATE MARKING AND CUTTING | 2d | 2017-10-05 A | 2017-10-07 A | 239, 364 | 100% | 2017-06-30 | 2017-07-01 | 2d |
| 366 | 2.5.11.8 | RF PAD FORMING | 2d | 2017-10-07 A | 2017-10-10 A | 365 | 100% | 2017-07-03 | 2017-07-04 | 2d |
| 367 | 2.5.12 | **SADDLE FABRICATION** | 15.94d | 2017-07-25 A | 2017-08-11 A |  | 100% | 2017-05-16 | 2017-05-29 | 12d |
| 368 | 2.5.12.1 | SADDLE PAD PLATE CUTTING | 1d | 2017-07-25 A | 2017-07-26 A | 240 | 100% | 2017-05-22 | 2017-05-23 | 2d |
| 369 | 2.5.12.2 | PAD PLATE FORMING | 2d | 2017-07-28 A | 2017-07-29 A | 368 | 100% | 2017-05-24 | 2017-05-25 | 2d |
| 370 | 2.5.12.3 | BASE PLATE CUTTING AND DRILLING | 2d | 2017-08-01 A | 2017-08-02 A | 242 | 100% | 2017-05-16 | 2017-05-17 | 2d |
| 371 | 2.5.12.4 | WEB PLATE CUTTING AND GRINDING | 1d | 2017-08-02 A | 2017-08-03 A | 370 | 100% | 2017-05-18 | 2017-05-19 | 2d |
| 372 | 2.5.12.5 | RIB PLATE CUTTING AND GRINDING | 2d | 2017-08-03 A | 2017-08-05 A | 371 | 100% | 2017-05-20 | 2017-05-22 | 2d |
| 373 | 2.5.12.6 | FITUP | 3d | 2017-08-07 A | 2017-08-09 A | 372 | 100% | 2017-05-23 | 2017-05-24 | 2d |
| 374 | 2.5.12.7 | WELDING | 2d | 2017-08-09 A | 2017-08-11 A | 373 | 100% | 2017-05-25 | 2017-05-29 | 4d |

| ID | WBS | Task | Type | Duration | Start | Finish | Predecessors | Complete | Baseline start | Baseline finish | Baseline duration |
| --- | --- | --- | --- | --- | --- | --- | --- | --- | --- | --- | --- |
| 375 | 2.5.13 | **LIFTING LUG FABRICATION** |  | 8d | 2017-07-25 A | 2017-08-03 A |  | 100% | 2017-05-24 | 2017-06-01 | 8d |
| 376 | 2.5.13.1 | PAD PLATE MARKING AND CUTTING |  | 1d | 2017-07-25 A | 2017-07-26 A | 239, 240 | 100% | 2017-05-24 | 2017-05-24 | 1d |
| 377 | 2.5.13.2 | PAD PLATE FORMING |  | 1d | 2017-07-26 A | 2017-07-27 A | 376 | 100% | 2017-05-25 | 2017-05-25 | 1d |
| 378 | 2.5.13.3 | LUG PLATE MARKING AND CUTTING |  | 1d | 2017-07-27 A | 2017-07-28 A | 377 | 100% | 2017-05-26 | 2017-05-26 | 1d |
| 379 | 2.5.13.4 | LUG PLATE DRILLING |  | 1d | 2017-07-28 A | 2017-07-29 A | 378 | 100% | 2017-05-27 | 2017-05-27 | 1d |
| 380 | 2.5.13.5 | LUG PLATE WELDING |  | 4d | 2017-07-29 A | 2017-08-03 A | 379 | 100% | 2017-05-29 | 2017-06-01 | 4d |
| 381 | 2.5.14 | **TIE ROD AND SPACER FABRICATION** |  | 45.94d | 2017-09-05 A | 2017-11-04 A |  | 100% | 2017-05-22 | 2017-06-06 | 14d |
| 382 | 2.5.14.1 | TIE ROD CUTTING |  | 4d | 2017-09-05 A | 2017-09-08 A | 240 | 100% | 2017-05-22 | 2017-05-22 | 1d |
| 383 | 2.5.14.2 | THREADING |  | 10d | 2017-09-13 A | 2017-09-25 A | 382 | 100% | 2017-05-23 | 2017-05-24 | 2d |
| 384 | 2.5.14.3 | SPACER MARKING | milestone | 0d | 2017-10-15 A | 2017-10-15 A | 251, 383 | 100% | 2017-06-02 | 2017-06-02 | 1d |
| 385 | 2.5.14.4 | CUTTING |  | 4d | 2017-10-27 A | 2017-10-31 A | 384 | 100% | 2017-06-03 | 2017-06-03 | 1d |
| 386 | 2.5.14.5 | GRINDING |  | 4d | 2017-11-01 A | 2017-11-04 A | 385 | 100% | 2017-06-05 | 2017-06-06 | 2d |
| 387 | 2.5.15 | **SHELL ASSEMBLY** |  | 45d | 2017-11-03 A | 2017-12-29 A |  | 100% | 2017-06-24 | 2017-08-07 | 35.5d |
| 388 | 2.5.15.1 | BODY FLANGE TO SHELL FITUP |  | 2d | 2017-11-03 A | 2017-11-04 A | 246, 257, 259 | 100% | 2017-06-30 | 2017-07-01 | 2d |
| 389 | 2.5.15.2 | DP |  | 1d | 2017-11-04 A | 2017-11-04 A | 388 | 100% | 2017-07-03 | 2017-07-03 | 1d |
| 390 | 2.5.15.3 | CS WELDING |  | 5d | 2017-11-06 A | 2017-11-10 A | 389 | 100% | 2017-07-04 | 2017-07-10 | 5d |
| 391 | 2.5.15.4 | RT |  | 2d | 2017-11-13 A | 2017-11-14 A | 390 | 100% | 2017-07-11 | 2017-07-12 | 2d |
| 392 | 2.5.15.5 | NOZZLE RF PAD FITUP |  | 2d | 2017-11-15 A | 2017-11-16 A | 391 | 100% | 2017-07-13 | 2017-07-14 | 2d |
| 393 | 2.5.15.6 | WELDING |  | 4d | 2017-11-17 A | 2017-11-21 A | 392 | 100% | 2017-07-15 | 2017-07-19 | 4d |
| 394 | 2.5.15.7 | PNEUMATIC |  | 2d | 2017-11-22 A | 2017-11-23 A | 393 | 100% | 2017-07-20 | 2017-07-21 | 2d |
| 395 | 2.5.15.8 | NOZZLE PIPE WITH FLANGE FIT UP |  | 2d | 2017-11-24 A | 2017-11-27 A | 349, 394 | 100% | 2017-07-24 | 2017-07-25 | 2d |
| 396 | 2.5.15.9 | NOZZLE PIPE WITH FLANGE WELDING |  | 6d | 2017-11-28 A | 2017-12-04 A | 395 | 100% | 2017-07-26 | 2017-08-01 | 6d |
| 397 | 2.5.15.10 | LUG / SADDLE PAD PLATE WELDING |  | 2d | 2017-12-05 A | 2017-12-06 A | 367, 375, 396 | 100% | 2017-08-02 | 2017-08-03 | 2d |
| 398 | 2.5.15.11 | LUG / SADDLE ASSEMBLY WELDING |  | 2d | 2017-12-07 A | 2017-12-08 A | 397 | 100% | 2017-08-04 | 2017-08-05 | 2d |
| 399 | 2.5.15.12 | SHELL COVER BONNET TO BARREL WELDING |  | 4d | 2017-11-06 A | 2017-11-09 A | 275, 311 | 100% | 2017-06-24 | 2017-06-29 | 4d |
| 400 | 2.5.15.13 | RT |  | 4d | 2017-11-10 A | 2017-11-15 A | 399 | 100% | 2017-06-29 | 2017-07-04 | 4d |
| 401 | 2.5.15.14 | CHANNEL SHELL TO FLANGE FITUP |  | 2d | 2017-12-15 A | 2017-12-16 A | 247, 254, 291, 307 | 100% | 2017-07-25 | 2017-07-26 | 2d |
| 402 | 2.5.15.15 | DP |  | 2d | 2017-12-18 A | 2017-12-19 A | 401 | 100% | 2017-07-27 | 2017-07-28 | 2d |
| 403 | 2.5.15.16 | CHANNEL SHELL TO FLANGE WELDING |  | 6d | 2017-12-20 A | 2017-12-27 A | 402 | 100% | 2017-07-29 | 2017-08-04 | 6d |
| 404 | 2.5.15.17 | RT |  | 2d | 2017-12-28 A | 2017-12-29 A | 403 | 100% | 2017-08-05 | 2017-08-07 | 2d |

| ID | WBS | Task | Duration | Start | Finish | Predecessors | Complete | Baseline start | Baseline finish | Baseline duration |
| --- | --- | --- | --- | --- | --- | --- | --- | --- | --- | --- |
| 405 | 2.5.16 | **TUBE BUNDLE ASSEMBLY** | 75.06d | 2017-11-04 A | 2018-02-09 A |  | 100% | 2017-07-06 | 2017-09-15 | 58d |
| 406 | 2.5.16.1 | TIE ROD TO TUBESHEET ASSY | 2d | 2017-11-04 A | 2017-11-07 A | 329, 381 | 100% | 2017-07-06 | 2017-07-07 | 2d |
| 407 | 2.5.16.2 | BAFFLE PLATE WITH SPACER ASSY | 2d | 2017-11-07 A | 2017-11-09 A | 323, 381, 406 | 100% | 2017-07-10 | 2017-07-11 | 2d |
| 408 | 2.5.16.3 | TUBE INSERTION | 5d | 2017-11-09 A | 2017-11-16 A | 243, 407 | 100% | 2017-07-12 | 2017-07-17 | 5d |
| 409 | 2.5.16.4 | TUBE BUNDLE INSERTION TO SHELL | 2d | 2017-12-30 A | 2018-01-01 A | 387, 408 | 100% | 2017-08-08 | 2017-08-09 | 2d |
| 410 | 2.5.16.5 | TUBE TO TUBESHHET EXPANSION | 10d | 2018-01-02 A | 2018-01-12 A | 409 | 100% | 2017-08-10 | 2017-08-22 | 10d |
| 411 | 2.5.16.6 | TUBE TO TUBESHEET WELDING | 20d | 2018-01-16 A | 2018-02-09 A | 255, 410 | 100% | 2017-08-23 | 2017-09-15 | 20d |
| 412 | 2.6 | **HYDROTEST** | 11d | 2018-02-12 A | 2018-02-23 A |  | 100% | 2017-09-16 | 2017-09-29 | 11d |
| 413 | 2.6.1 | PNEUMATIC TEST FOR TUBE TO TUBESHEET WELDING | 2d | 2018-02-12 A | 2018-02-13 A | 405 | 100% | 2017-09-16 | 2017-09-18 | 2d |
| 414 | 2.6.2 | SHELL SIDE HYDROTEST | 2d | 2018-02-14 A | 2018-02-15 A | 413 | 100% | 2017-09-19 | 2017-09-20 | 2d |
| 415 | 2.6.3 | WATER DRY | 1d | 2018-02-16 A | 2018-02-16 A | 414 | 100% | 2017-09-21 | 2017-09-21 | 1d |
| 416 | 2.6.4 | TUBE SIDE HYDROTEST | 2d | 2018-02-17 A | 2018-02-19 A | 415 | 100% | 2017-09-22 | 2017-09-25 | 2d |
| 417 | 2.6.5 | WATER DRY | 1d | 2018-02-20 A | 2018-02-20 A | 416 | 100% | 2017-09-26 | 2017-09-26 | 1d |
| 418 | 2.6.6 | SHELL SIDE WITH BARREL TEST | 2d | 2018-02-21 A | 2018-02-22 A | 417 | 100% | 2017-09-27 | 2017-09-28 | 2d |
| 419 | 2.6.7 | WATER DRY | 1d | 2018-02-23 A | 2018-02-23 A | 418 | 100% | 2017-09-29 | 2017-09-29 | 1d |
| 420 | 2.7 | **SURFACE PREPARATION AND PAINTING** | 6d | 2018-02-26 A | 2018-03-03 A |  | 100% | 2017-09-30 | 2017-10-06 | 6d |
| 421 | 2.7.1 | SAND BLASTING AND PRIMER COATING | 2d | 2018-02-26 A | 2018-02-27 A | 412 | 100% | 2017-09-30 | 2017-10-02 | 2d |
| 422 | 2.7.2 | SHOP PAINTING | 4d | 2018-02-28 A | 2018-03-03 A | 421 | 100% | 2017-10-03 | 2017-10-06 | 4d |
| 423 | 2.8 | **DESPATCH** | 6.5d | 2018-03-05 A | 2018-03-13 A |  | 100% | 2017-10-07 | 2017-10-16 | 6.5d |
| 424 | 2.8.1 | PACKING | 1d | 2018-03-05 A | 2018-03-05 A | 420 | 100% | 2017-10-07 | 2017-10-07 | 1d |
| 425 | 2.8.2 | DESPATCH TO SITE | 0.5d | 2018-03-06 A | 2018-03-06 A | 424 | 100% | 2017-10-09 | 2017-10-09 | 0.5d |
| 426 | 2.8.3 | RECEIPT AT KOCHI REFINERY | 5d | 2018-03-06 A | 2018-03-13 A | 425 | 100% | 2017-10-09 | 2017-10-16 | 5d |
