# 4166-PGAD

Schedule from MS Project, 2017-04-13 to 2018-03-17, costs in ₹, A marks actual dates.

## Calendars

- TEAM_Stand_Calendar: Mon-Sat 08:30-12:30, 13:30-17:30; Sun off. Exceptions (off unless hours are given): 2017-01-13 to 2023-08-12 (2nd Sat, recurring), 2017-01-26 to 2036-01-26 (Republic Day, recurring), 2017-01-27 to 2023-08-26 (4th Sat, recurring), 2017-05-01 to 2036-05-01 (May Day, recurring), 2017-08-15 to 2036-08-15 (Independence Day, recurring), 2017-08-25 (Vinakya Chaturthi'2017), 2017-09-29 (Ayudha Pooja'2017), 2017-10-02 to 2036-10-02 (Gandhi Jayanti, recurring), 2017-10-18 (Deepavali'2017), 2018-01-15 (Thiruvalluvar Day'2018).
- TEAM_2Shift_Calendar-1: Mon-Sat 06:00-22:00; Sun off. Exceptions (off unless hours are given): 2017-01-13 to 2023-02-11 (2nd Sat, recurring), 2017-01-26 to 2036-01-26 (Republic Day, recurring), 2017-01-27 to 2023-08-26 (4th Sat, recurring), 2017-05-01 to 2036-05-01 (May Day, recurring), 2017-08-15 to 2036-08-15 (Indepdence Day, recurring), 2017-08-25 (Ayudha Pooja'2017), 2017-10-02 to 2036-10-02 (Gandhi Jayanti, recurring), 2017-10-19 (Deepavali'2017), 2018-01-15 (Thiruvalluvar Day'2018).

## Resources

| Resource | Rate |
| --- | --- |
| CNC Lathe |  |
| Heat Treatment Furnace |  |
| Hydraulic Press |  |
| Maintenance Engineer |  |
| Helper | 50 |
| Client |  |
| Marketing |  |
| Finance-New |  |
| PMO Head |  |
| Store |  |
| PM |  |
| Purchase Eng |  |
| PPC Engineer |  |
| QC Engineer |  |
| TIG Welding Machine |  |
| TIG Welder | 125 |
| SC (Work) |  |
| Production Department |  |
| OAGM |  |
| Milling Operator | 120 |
| Milling Machine |  |
| Lathe |  |
| Lathe Operator | 120 |
| Gas Cutter | 68.75 |
| Fitter | 68.75 |
| Crane |  |
| Cutting Machine |  |
| Foreman |  |
| Design Engineer |  |
| Consumables (Cost) |  |
| Plate (Cost) |  |
| Rod (Cost) |  |
| TPI (Work) |  |
| Purchase Engineer |  |
| Finance |  |

## Schedule

| ID | WBS | Task | Type | Duration | Start | Finish | Predecessors | Complete | Baseline start | Baseline finish | Baseline duration | Resources | Work | Actual work | Cost | Baseline cost | Actual cost |
| --- | --- | --- | --- | --- | --- | --- | --- | --- | --- | --- | --- | --- | --- | --- | --- | --- | --- |
| 1 | 1 | **Project Initiation** |  | 22d | 2017-04-13 A | 2017-05-10 A |  | 100% | 2017-04-13 | 2017-05-10 | 22d |  | 198h | 198h |  |  |  |
| 2 | 1.1 | LOA Receipt |  | 1d | 2017-04-13 A | 2017-04-13 A |  | 100% | 2017-04-13 | 2017-04-13 | 1d | Marketing | 8h | 8h |  |  |  |
| 3 | 1.2 | Wo issue |  | 2d | 2017-04-14 A | 2017-04-15 A | 2 | 100% | 2017-04-14 | 2017-04-15 | 2d | Marketing | 16h | 16h |  |  |  |
| 4 | 1.3 | CRM |  | 2d | 2017-04-17 A | 2017-04-18 A | 3 | 100% | 2017-04-17 | 2017-04-18 | 2d | Marketing; PM; PMO Head; QC Engineer; Production Department; Purchase Engineer | 80h | 80h |  |  |  |
| 5 | 1.4 | ABG (BG) 10% |  | 2d | 2017-04-19 A | 2017-04-20 A | 4 | 100% | 2017-04-19 | 2017-04-20 | 2d | Finance | 6h | 6h |  |  |  |
| 6 | 1.5 | Service order receipt |  | 10d | 2017-04-27 A | 2017-05-09 A | 5FS+4d | 100% | 2017-04-27 | 2017-05-09 | 10d | Marketing | 80h | 80h |  |  |  |
| 7 | 1.6 | Drawing Printing & Issue | milestone | 1d | 2017-05-10 A | 2017-05-10 A | 6 | 100% | 2017-05-10 | 2017-05-10 | 1d | Design Engineer | 8h | 8h |  |  |  |
| 8 | 2 | **PR issue** |  | 0.5d | 2017-05-11 A | 2017-05-11 A |  | 100% | 2017-05-11 | 2017-05-11 | 0.5d |  | 10h | 10h |  |  |  |
| 9 | 2.1 | Plates |  | 4h | 2017-05-11 A | 2017-05-11 A | 7 | 100% | 2017-05-11 | 2017-05-11 | 4h | PPC Engineer; Plate (Cost) [0.1%] | 4h | 4h |  |  |  |
| 10 | 2.2 | Rods |  | 4h | 2017-05-11 A | 2017-05-11 A | 7 | 100% | 2017-05-11 | 2017-05-11 | 4h | PPC Engineer; Rod (Cost) [0.1%] | 4h | 4h |  |  |  |
| 11 | 2.3 | Mesh |  | 1h | 2017-05-11 A | 2017-05-11 A | 7 | 100% | 2017-05-11 | 2017-05-11 | 1h | PPC Engineer | 1h | 1h |  |  |  |
| 12 | 2.4 | Testing components |  | 1h | 2017-05-11 A | 2017-05-11 A | 7 | 100% | 2017-05-11 | 2017-05-11 | 1h | PPC Engineer | 1h | 1h |  |  |  |
| 13 | 3 | **Material Ordering** |  | 1.38d | 2017-05-15 A | 2017-05-16 A |  | 100% | 2017-05-15 | 2017-05-16 | 1.38d |  | 26h | 26h |  |  |  |
| 14 | 3.1 | Ti Plate (Lot 1) |  | 1d | 2017-05-15 A | 2017-05-16 A | 9FS+2d | 100% | 2017-05-15 | 2017-05-16 | 1d | Plate (Cost) [0.1%]; Purchase Engineer | 6h | 6h |  |  |  |
| 15 | 3.2 | Ti Plate (Lot 2) |  | 1d | 2017-05-15 A | 2017-05-16 A | 9FS+2d | 100% | 2017-05-15 | 2017-05-16 | 1d | Plate (Cost) [0.1%]; Purchase Engineer | 6h | 6h |  |  |  |
| 16 | 3.3 | Ti rod |  | 1d | 2017-05-15 A | 2017-05-16 A | 10FS+2d | 100% | 2017-05-15 | 2017-05-16 | 1d | Rod (Cost) [0.1%]; Purchase Engineer | 6h | 6h |  |  |  |
| 17 | 3.4 | SS mesh |  | 1d | 2017-05-15 A | 2017-05-16 A | 11FS+2d | 100% | 2017-05-15 | 2017-05-16 | 1d | Purchase Engineer | 4h | 4h |  |  |  |
| 18 | 3.5 | Testing components |  | 1d | 2017-05-15 A | 2017-05-16 A | 12FS+2d | 100% | 2017-05-15 | 2017-05-16 | 1d | Purchase Engineer | 4h | 4h |  |  |  |
| 19 | 4 | **Material receipt** |  | 182d | 2017-05-16 A | 2018-01-06 A |  | 100% | 2017-05-16 | 2018-01-06 | 182d |  | 10h | 10h |  |  |  |
| 20 | 4.1 | Ti plate (Lot 1) |  | 2.48d | 2017-05-16 A | 2017-05-18 A | 14 | 100% | 2017-05-16 | 2017-05-18 | 2.48d | Plate (Cost) [0.1%]; Purchase Engineer | 2h | 2h |  |  |  |
| 21 | 4.2 | Ti plate (Lot 2) |  | 2d | 2018-01-04 A | 2018-01-06 A | 15FS+180d | 100% | 2018-01-04 | 2018-01-06 | 2d | Plate (Cost) [0.1%]; Purchase Engineer | 2h | 2h |  |  |  |
| 22 | 4.3 | Ti rod |  | 2.45d | 2017-07-12 A | 2017-07-14 A | 13FS+45d | 100% | 2017-07-12 | 2017-07-14 | 2.45d | Rod (Cost) [0.1%]; Purchase Engineer | 2h | 2h |  |  |  |
| 23 | 4.4 | SS Mesh |  | 2.45d | 2017-07-12 A | 2017-07-14 A | 13FS+45d | 100% | 2017-07-12 | 2017-07-14 | 2.45d | Purchase Engineer | 2h | 2h |  |  |  |
| 24 | 4.5 | Testing Components |  | 2.45d | 2017-07-12 A | 2017-07-14 A | 13FS+45d | 100% | 2017-07-12 | 2017-07-14 | 2.45d | Purchase Engineer | 2h | 2h |  |  |  |
| 25 | 5 | Material Costing |  | 1d | 2018-01-06 A | 2018-01-08 A | 20, 21 | 100% | 2018-01-06 | 2018-01-08 | 1d | Consumables (Cost) [0.1%]; Plate (Cost) [0.1%]; Rod (Cost) [0.1%] |  |  | 19,133,100 | 19,133,100 | 19,133,100 |

Notes:
- 18: Cu Washer, Strain Gauge Fixing Solution

| ID | WBS | Task | Duration | Start | Finish | Predecessors | Complete | Baseline start | Baseline finish | Baseline duration | Calendar | Resources | Work | Actual work | Cost | Baseline cost | Actual cost |
| --- | --- | --- | --- | --- | --- | --- | --- | --- | --- | --- | --- | --- | --- | --- | --- | --- | --- |
| 26 | 6 | **QC** | 20d | 2017-07-14 A | 2017-08-08 A |  | 100% | 2017-07-14 | 2017-08-08 | 20d |  |  | 135.83h | 135.83h | 3,991.67 | 3,991.67 | 3,991.67 |
| 27 | 6.1 | Welder Qualification | 4d | 2017-07-14 A | 2017-07-19 A | 20, 22 | 100% | 2017-07-14 | 2017-07-19 | 4d |  | Production Department; TIG Welder [200%]; TIG Welding Machine [200%]; QC Engineer | 95.87h | 95.87h | 3,991.67 | 3,991.67 | 3,991.67 |
| 28 | 6.2 | Chemical testing | 4d | 2017-08-03 A | 2017-08-08 A | 27FS+12d | 100% | 2017-08-03 | 2017-08-08 | 4d |  | QC Engineer | 16h | 16h |  |  |  |
| 29 | 6.3 | Mechanical testing | 2d | 2017-07-27 A | 2017-07-29 A | 27FS+6d | 100% | 2017-07-27 | 2017-07-29 | 2d |  | SC (Work); QC Engineer | 23.97h | 23.97h |  |  |  |
| 30 | 7 | **Fabrication** | 521.94d | 2017-04-13 A | 2018-03-17 A |  | 100% | 2017-07-14 | 2018-03-08 | 363.45d | TEAM_2Shift_Calendar-1 |  | 8084.24h | 8084.24h | 382,220.52 | 385,641.45 | 382,220.52 |
| 31 | 7.1 | **Lot 1 ( 20 Nos)** | 317.6d | 2017-04-13 A | 2017-11-04 A |  | 100% | 2017-07-14 | 2017-11-04 | 172.35d | TEAM_2Shift_Calendar-1 |  | 3292.48h | 3292.48h | 154,314.53 | 154,181.2 | 154,314.53 |
| 32 | 7.1.1 | Marking | 2d | 2017-07-14 A | 2017-07-15 A | 20, 22, 23 | 100% | 2017-07-14 | 2017-07-15 | 2d | TEAM_2Shift_Calendar-1 | Fitter; Helper; Plate (Cost) [0.1%] | 32h | 32h | 1,900 | 1,900 | 1,900 |
| 33 | 7.1.2 | Material identification | 3.62d | 2017-07-14 A | 2017-07-17 A | 20, 22 | 100% | 2017-07-14 | 2017-07-17 | 3.62d | TEAM_2Shift_Calendar-1 | Fitter; Helper; Store [50%]; Crane [50%]; Client; QC Engineer [200%] | 44.42h | 44.42h | 1,367.97 | 1,367.97 | 1,367.97 |
| 34 | 7.1.3 | Machining of Adaptor | 15.01d | 2017-07-17 A | 2017-07-27 A | 33 | 100% | 2017-07-17 | 2017-07-27 | 15d | TEAM_2Shift_Calendar-1 | CNC Lathe; Lathe Operator; Rod (Cost) [0.1%] | 240h | 240h | 14,400 | 14,400 | 14,400 |
| 35 | 7.1.4 | Machining of Socket | 15.01d | 2017-07-17 A | 2017-07-27 A | 33 | 100% | 2017-07-17 | 2017-07-27 | 15d | TEAM_2Shift_Calendar-1 | CNC Lathe; Lathe Operator; Rod (Cost) [0.1%] | 240h | 240h | 14,400 | 14,400 | 14,400 |
| 36 | 7.1.5 | Mechanical & Chemical Prep testing speciman | 6.38d | 2017-07-17 A | 2017-07-20 A | 33 | 100% | 2017-07-17 | 2017-07-20 | 6.37d | TEAM_2Shift_Calendar-1 | Production Department; QC Engineer; SC (Work); Gas Cutter; Milling Machine; Milling Operator | 54h | 54h | 1,698.75 | 1,698.75 | 1,698.75 |
| 37 | 7.1.6 | Cutting | 4d | 2017-07-17 A | 2017-07-19 A | 33 | 100% | 2017-07-17 | 2017-07-19 | 4d | TEAM_2Shift_Calendar-1 | Gas Cutter; OAGM; Helper | 96h | 96h | 3,800 | 3,800 | 3,800 |
| 38 | 7.1.7 | Machining | 4d | 2017-07-19 A | 2017-07-21 A | 37 | 100% | 2017-07-19 | 2017-07-21 | 4d | TEAM_2Shift_Calendar-1 | Lathe Operator; Lathe | 64h | 64h | 3,840 | 3,840 | 3,840 |
| 39 | 7.1.8 | Heat Treatment & Forming | 16.27d | 2017-07-21 A | 2017-08-01 A | 38 | 100% | 2017-07-21 | 2017-08-01 | 16.25d | TEAM_2Shift_Calendar-1 | Fitter; Foreman [25%]; Heat Treatment Furnace; Helper [200%]; Hydraulic Press | 420.14h | 420.14h | 9,979.5 | 9,979.5 | 9,979.5 |
| 40 | 7.1.9 | Machining of Hemisphere | 50.05d | 2017-08-01 A | 2017-09-04 A | 39 | 100% | 2017-08-01 | 2017-09-04 | 50d | TEAM_2Shift_Calendar-1 | CNC Lathe; Lathe Operator | 800h | 800h | 48,000 | 48,000 | 48,000 |
| 41 | 7.1.10 | Machining of Slot & Hexagon | 8.36d | 2017-07-29 A | 2017-08-03 A | 35FS+5d, 34FS+5d | 100% | 2017-07-29 | 2017-08-03 | 8.35d | TEAM_2Shift_Calendar-1 | SC (Work); Production Department | 48h | 48h |  |  |  |
| 42 | 7.1.11 | Component inspection | 3.93d | 2017-09-04 A | 2017-09-06 A | 40, 41 | 100% | 2017-09-04 | 2017-09-06 | 3.92d | TEAM_2Shift_Calendar-1 | Client; QC Engineer | 32h | 32h |  |  |  |
| 43 | 7.1.12 | **Top Hem to Socket Welding** | 22.13d | 2017-09-06 A | 2017-09-20 A |  | 100% | 2017-09-06 | 2017-09-20 | 22.11d | TEAM_2Shift_Calendar-1 |  | 232h | 232h | 10,266.66 | 10,266.66 | 10,266.66 |
| 44 | 7.1.12.1 | Hem to socket Fitup | 3.97d | 2017-09-06 A | 2017-09-08 A | 42 | 100% | 2017-09-06 | 2017-09-08 | 3.96d | TEAM_2Shift_Calendar-1 | TIG Welder; TIG Welding Machine; Helper; Plate (Cost) [0.1%]; Rod (Cost) [0.1%] | 32h | 32h | 1,866.66 | 1,866.66 | 1,866.66 |
| 45 | 7.1.12.2 | Hem to socket root welding | 2d | 2017-09-08 A | 2017-09-11 A | 44 | 100% | 2017-09-08 | 2017-09-11 | 2d | TEAM_2Shift_Calendar-1 | TIG Welder; TIG Welding Machine; Helper | 48h | 48h | 2,800 | 2,800 | 2,800 |
| 46 | 7.1.12.3 | RT inspection | 4.16d | 2017-09-11 A | 2017-09-13 A | 45 | 100% | 2017-09-11 | 2017-09-13 | 4.15d | TEAM_2Shift_Calendar-1 | SC (Work); Production Department | 24h | 24h |  |  |  |
| 47 | 7.1.12.4 | Hem to Socket final welding | 8d | 2017-09-13 A | 2017-09-18 A | 46 | 100% | 2017-09-13 | 2017-09-18 | 7.99d | TEAM_2Shift_Calendar-1 | TIG Welder; TIG Welding Machine; Helper | 96h | 96h | 5,600 | 5,600 | 5,600 |
| 48 | 7.1.12.5 | RT inspection | 4d | 2017-09-18 A | 2017-09-20 A | 47 | 100% | 2017-09-18 | 2017-09-20 | 4d | TEAM_2Shift_Calendar-1 | SC (Work); Production Department | 32h | 32h |  |  |  |
| 49 | 7.1.13 | **Bottom Hem to Socket Welding** | 22.13d | 2017-09-06 A | 2017-09-20 A |  | 100% | 2017-09-06 | 2017-09-20 | 22.11d | TEAM_2Shift_Calendar-1 |  | 232h | 232h | 10,266.66 | 10,266.66 | 10,266.66 |
| 50 | 7.1.13.1 | Hem to socket Fitup | 3.97d | 2017-09-06 A | 2017-09-08 A | 42 | 100% | 2017-09-06 | 2017-09-08 | 3.96d | TEAM_2Shift_Calendar-1 | TIG Welder; TIG Welding Machine; Helper; Plate (Cost) [0.1%]; Rod (Cost) [0.1%] | 32h | 32h | 1,866.66 | 1,866.66 | 1,866.66 |
| 51 | 7.1.13.2 | Hem to socket root welding | 2d | 2017-09-08 A | 2017-09-11 A | 50 | 100% | 2017-09-08 | 2017-09-11 | 2d | TEAM_2Shift_Calendar-1 | TIG Welder; TIG Welding Machine; Helper | 48h | 48h | 2,800 | 2,800 | 2,800 |
| 52 | 7.1.13.3 | RT inspection | 4.16d | 2017-09-11 A | 2017-09-13 A | 51 | 100% | 2017-09-11 | 2017-09-13 | 4.15d | TEAM_2Shift_Calendar-1 | SC (Work); Production Department | 24h | 24h |  |  |  |
| 53 | 7.1.13.4 | Hem to Socket final welding | 8d | 2017-09-13 A | 2017-09-18 A | 52 | 100% | 2017-09-13 | 2017-09-18 | 7.99d | TEAM_2Shift_Calendar-1 | TIG Welder; TIG Welding Machine; Helper | 96h | 96h | 5,600 | 5,600 | 5,600 |
| 54 | 7.1.13.5 | RT inspection | 4d | 2017-09-18 A | 2017-09-20 A | 53 | 100% | 2017-09-18 | 2017-09-20 | 4d | TEAM_2Shift_Calendar-1 | SC (Work); Production Department | 32h | 32h |  |  |  |

| ID | WBS | Task | Duration | Start | Finish | Predecessors | Complete | Baseline start | Baseline finish | Baseline duration | Calendar | Resources | Work | Actual work | Cost | Baseline cost | Actual cost |
| --- | --- | --- | --- | --- | --- | --- | --- | --- | --- | --- | --- | --- | --- | --- | --- | --- | --- |
| 55 | 7.1.14 | **Hemisphere Welding (Dish Ends)** | 28.02d | 2017-09-20 A | 2017-10-09 A |  | 100% | 2017-09-20 | 2017-10-09 | 27.99d | TEAM_2Shift_Calendar-1 |  | 398h | 398h | 21,033.32 | 21,033.32 | 21,033.32 |
| 56 | 7.1.14.1 | Dish Fit Up | 4d | 2017-09-20 A | 2017-09-22 A | 48, 54 | 100% | 2017-09-20 | 2017-09-22 | 4d | TEAM_2Shift_Calendar-1 | TIG Welder; TIG Welding Machine; Helper | 32h | 32h | 1,866.66 | 1,866.66 | 1,866.66 |
| 57 | 7.1.14.2 | Dish Welding (Root) | 4d | 2017-09-22 A | 2017-09-26 A | 56 | 100% | 2017-09-22 | 2017-09-26 | 4d | TEAM_2Shift_Calendar-1 | TIG Welder; TIG Welding Machine; Helper | 96h | 96h | 5,600 | 5,600 | 5,600 |
| 58 | 7.1.14.3 | RT inspection | 4d | 2017-09-26 A | 2017-09-28 A | 57 | 100% | 2017-09-26 | 2017-09-28 | 4d | TEAM_2Shift_Calendar-1 | SC (Work); Production Department | 32h | 32h |  |  |  |
| 59 | 7.1.14.4 | Dish Welding (Final) | 8.01d | 2017-09-28 A | 2017-10-04 A | 58 | 100% | 2017-09-28 | 2017-10-04 | 8d | TEAM_2Shift_Calendar-1 | TIG Welder; TIG Welding Machine; Helper | 200h | 200h | 11,666.66 | 11,666.66 | 11,666.66 |
| 60 | 7.1.14.5 | Cleaning Process | 4d | 2017-10-04 A | 2017-10-06 A | 59 | 100% | 2017-10-04 | 2017-10-06 | 4d | TEAM_2Shift_Calendar-1 | Fitter; Helper | 32h | 32h | 1,900 | 1,900 | 1,900 |
| 61 | 7.1.14.6 | RT inspection | 4d | 2017-10-06 A | 2017-10-09 A | 60 | 100% | 2017-10-06 | 2017-10-09 | 4d | TEAM_2Shift_Calendar-1 | SC (Work); Production Department | 6h | 6h |  |  |  |
| 62 | 7.1.15 | **Final inspection** | 317.6d | 2017-04-13 A | 2017-11-04 A |  | 100% | 2017-10-13 | 2017-11-04 | 33.46d | TEAM_2Shift_Calendar-1 |  | 359.92h | 359.92h | 13,361.67 | 13,228.34 | 13,361.67 |
| 63 | 7.1.15.1 | Strain gauge fixing | 2d | 2017-10-13 A | 2017-10-16 A | 61FS+7d | 100% | 2017-10-13 | 2017-10-16 | 2d | TEAM_2Shift_Calendar-1 | Maintenance Engineer [200%]; Fitter; Helper | 64h | 64h | 2,533.34 | 2,533.34 | 2,533.34 |
| 64 | 7.1.15.2 | Hydraulic proof pressure testing | 3.28d | 2017-10-16 A | 2017-10-17 A | 63 | 100% | 2017-10-16 | 2017-10-17 | 3.27d | TEAM_2Shift_Calendar-1 | Fitter [300%]; Foreman; Helper; QC Engineer [200%] | 32h | 32h | 950 | 950 | 950 |
| 65 | 7.1.15.3 | Cyclic & Burst test | 5.02d | 2017-10-17 A | 2017-10-21 A | 64 | 100% | 2017-10-17 | 2017-10-21 | 5.02d | TEAM_2Shift_Calendar-1 | Fitter [300%]; Foreman; Helper; QC Engineer [200%] | 112h | 112h | 3,325 | 3,325 | 3,325 |
| 66 | 7.1.15.4 | Cleaning | 2d | 2017-10-21 A | 2017-10-23 A | 65 | 100% | 2017-10-21 | 2017-10-23 | 2d | TEAM_2Shift_Calendar-1 | Fitter; Helper | 32h | 32h | 1,900 | 1,900 | 1,900 |
| 67 | 7.1.15.5 | RT inspection | 2d | 2017-10-23 A | 2017-10-24 A | 66 | 100% | 2017-10-23 | 2017-10-24 | 2d | TEAM_2Shift_Calendar-1 | SC (Work); Production Department | 16h | 16h |  |  |  |
| 68 | 7.1.15.6 | Final cleaning | 4d | 2017-10-24 A | 2017-10-26 A | 67 | 100% | 2017-10-24 | 2017-10-26 | 4d | TEAM_2Shift_Calendar-1 | Fitter; Helper | 32h | 32h | 1,900 | 1,900 | 1,900 |
| 69 | 7.1.15.7 | Inspection clearance from client | 2d | 2017-10-26 A | 2017-10-27 A | 67FS+4d | 100% | 2017-10-26 | 2017-10-27 | 2d | TEAM_2Shift_Calendar-1 | Client; QC Engineer | 7.12h | 7.12h |  |  |  |
| 70 | 7.1.15.8 | Stenciling | 4d | 2017-10-27 A | 2017-10-31 A | 69 | 100% | 2017-10-27 | 2017-10-31 | 4d | TEAM_2Shift_Calendar-1 | Fitter; Helper | 16h | 16h | 950 | 950 | 950 |
| 71 | 7.1.15.9 | Sealing | 4d | 2017-10-31 A | 2017-11-02 A | 70 | 100% | 2017-10-31 | 2017-11-02 | 4d | TEAM_2Shift_Calendar-1 | Fitter; Helper | 16h | 16h | 950 | 950 | 950 |
| 72 | 7.1.15.10 | Packing | 5.18d | 2017-11-02 A | 2017-11-04 A | 71 | 100% | 2017-11-02 | 2017-11-04 | 5.18d | TEAM_2Shift_Calendar-1 | Helper [200%]; Store | 28.8h | 28.8h | 720 | 720 | 720 |
| 73 | 7.1.15.11 | Despatch | 1d | 2017-04-13 A | 2017-04-13 A | 72 | 100% |  |  |  | TEAM_2Shift_Calendar-1 | Helper [200%]; Store | 4h | 4h | 133.33 |  | 133.33 |
| 74 | 7.2 | **Lot 2 ( 20 Nos)** | 227.11d | 2017-07-15 A | 2017-12-12 A |  | 100% | 2017-07-15 | 2017-12-11 | 225.87d | TEAM_2Shift_Calendar-1 |  | 3292.34h | 3292.34h | 154,376.7 | 154,176.7 | 154,376.7 |
| 75 | 7.2.1 | Marking | 2d | 2017-07-15 A | 2017-07-17 A | 20, 22, 23, 32 | 100% | 2017-07-15 | 2017-07-17 | 2d | TEAM_2Shift_Calendar-1 | Fitter; Helper; Plate (Cost) [0.1%] | 32h | 32h | 1,900 | 1,900 | 1,900 |
| 76 | 7.2.2 | Material identification | 3.62d | 2017-07-17 A | 2017-07-19 A | 20, 22, 33 | 100% | 2017-07-17 | 2017-07-19 | 3.62d | TEAM_2Shift_Calendar-1 | Fitter; Helper; Store [50%]; Crane [50%]; Client; QC Engineer [200%] | 44.42h | 44.42h | 1,367.97 | 1,367.97 | 1,367.97 |
| 77 | 7.2.3 | Machining of Adaptor | 15.02d | 2017-07-27 A | 2017-08-04 A | 76, 34 | 100% | 2017-07-27 | 2017-08-04 | 15d | TEAM_2Shift_Calendar-1 | CNC Lathe; Lathe Operator; Rod (Cost) [0.1%] | 240h | 240h | 14,400 | 14,400 | 14,400 |
| 78 | 7.2.4 | Machining of Socket | 15.02d | 2017-07-27 A | 2017-08-04 A | 76, 35 | 100% | 2017-07-27 | 2017-08-04 | 15d | TEAM_2Shift_Calendar-1 | CNC Lathe; Lathe Operator; Rod (Cost) [0.1%] | 240h | 240h | 14,400 | 14,400 | 14,400 |
| 79 | 7.2.5 | Mechanical & Chemical Prep testing speciman | 6.38d | 2017-07-20 A | 2017-07-25 A | 76, 36 | 100% | 2017-07-20 | 2017-07-25 | 6.37d | TEAM_2Shift_Calendar-1 | Production Department; QC Engineer; SC (Work); Gas Cutter; Milling Machine; Milling Operator | 54h | 54h | 1,698.75 | 1,698.75 | 1,698.75 |
| 80 | 7.2.6 | Cutting | 4d | 2017-07-19 A | 2017-07-21 A | 76, 37 | 100% | 2017-07-19 | 2017-07-21 | 4d | TEAM_2Shift_Calendar-1 | Gas Cutter; OAGM; Helper | 96h | 96h | 3,800 | 3,800 | 3,800 |
| 81 | 7.2.7 | Machining | 4d | 2017-07-21 A | 2017-07-25 A | 80, 38 | 100% | 2017-07-21 | 2017-07-25 | 4d | TEAM_2Shift_Calendar-1 | Lathe Operator; Lathe | 64h | 64h | 3,840 | 3,840 | 3,840 |
| 82 | 7.2.8 | Heat Treatment & Forming | 16.26d | 2017-08-01 A | 2017-08-10 A | 81, 39 | 100% | 2017-08-01 | 2017-08-10 | 16.25d | TEAM_2Shift_Calendar-1 | Fitter; Foreman [25%]; Heat Treatment Furnace; Helper [200%]; Hydraulic Press | 420h | 420h | 9,975 | 9,975 | 9,975 |
| 83 | 7.2.9 | Machining of Hemisphere | 50.05d | 2017-09-04 A | 2017-10-06 A | 82, 40 | 100% | 2017-09-04 | 2017-10-06 | 50d | TEAM_2Shift_Calendar-1 | CNC Lathe; Lathe Operator | 800h | 800h | 48,000 | 48,000 | 48,000 |
| 84 | 7.2.10 | Machining of Slot & Hexagon | 8.36d | 2017-08-08 A | 2017-08-14 A | 77FS+5d, 78FS+5d, 41 | 100% | 2017-08-08 | 2017-08-14 | 8.35d | TEAM_2Shift_Calendar-1 | SC (Work); Production Department | 48h | 48h |  |  |  |
| 85 | 7.2.11 | Component inspection | 3.93d | 2017-10-06 A | 2017-10-09 A | 83, 84, 42 | 100% | 2017-10-06 | 2017-10-09 | 3.92d | TEAM_2Shift_Calendar-1 | Client; QC Engineer | 32h | 32h |  |  |  |

| ID | WBS | Task | Duration | Start | Finish | Predecessors | Complete | Baseline start | Baseline finish | Baseline duration | Calendar | Resources | Work | Actual work | Cost | Baseline cost | Actual cost |
| --- | --- | --- | --- | --- | --- | --- | --- | --- | --- | --- | --- | --- | --- | --- | --- | --- | --- |
| 86 | 7.2.12 | **Top Hem to Socket Welding** | 24.78d | 2017-10-09 A | 2017-10-26 A |  | 100% | 2017-10-09 | 2017-10-26 | 24.76d | TEAM_2Shift_Calendar-1 |  | 232h | 232h | 10,266.66 | 10,266.66 | 10,266.66 |
| 87 | 7.2.12.1 | Hem to socket Fitup | 3.97d | 2017-10-09 A | 2017-10-11 A | 85, 44 | 100% | 2017-10-09 | 2017-10-11 | 3.96d | TEAM_2Shift_Calendar-1 | TIG Welder; TIG Welding Machine; Helper; Plate (Cost) [0.1%]; Rod (Cost) [0.1%] | 32h | 32h | 1,866.66 | 1,866.66 | 1,866.66 |
| 88 | 7.2.12.2 | Hem to socket root welding | 2d | 2017-10-11 A | 2017-10-12 A | 87, 45 | 100% | 2017-10-11 | 2017-10-12 | 2d | TEAM_2Shift_Calendar-1 | TIG Welder; TIG Welding Machine; Helper | 48h | 48h | 2,800 | 2,800 | 2,800 |
| 89 | 7.2.12.3 | RT inspection | 4.81d | 2017-10-12 A | 2017-10-17 A | 88, 46 | 100% | 2017-10-12 | 2017-10-17 | 4.81d | TEAM_2Shift_Calendar-1 | SC (Work); Production Department | 24h | 24h |  |  |  |
| 90 | 7.2.12.4 | Hem to Socket final welding | 8d | 2017-10-17 A | 2017-10-23 A | 89, 47 | 100% | 2017-10-17 | 2017-10-23 | 7.99d | TEAM_2Shift_Calendar-1 | TIG Welder; TIG Welding Machine; Helper | 96h | 96h | 5,600 | 5,600 | 5,600 |
| 91 | 7.2.12.5 | RT inspection | 6d | 2017-10-23 A | 2017-10-26 A | 90, 48 | 100% | 2017-10-23 | 2017-10-26 | 5.99d | TEAM_2Shift_Calendar-1 | SC (Work); Production Department | 32h | 32h |  |  |  |
| 92 | 7.2.13 | **Bottom Hem to Socket Welding** | 24.78d | 2017-10-09 A | 2017-10-26 A |  | 100% | 2017-10-09 | 2017-10-26 | 24.76d | TEAM_2Shift_Calendar-1 |  | 232h | 232h | 10,266.66 | 10,266.66 | 10,266.66 |
| 93 | 7.2.13.1 | Hem to socket Fitup | 3.97d | 2017-10-09 A | 2017-10-11 A | 85, 50 | 100% | 2017-10-09 | 2017-10-11 | 3.96d | TEAM_2Shift_Calendar-1 | TIG Welder; TIG Welding Machine; Helper; Plate (Cost) [0.1%]; Rod (Cost) [0.1%] | 32h | 32h | 1,866.66 | 1,866.66 | 1,866.66 |
| 94 | 7.2.13.2 | Hem to socket root welding | 2d | 2017-10-11 A | 2017-10-12 A | 93, 51 | 100% | 2017-10-11 | 2017-10-12 | 2d | TEAM_2Shift_Calendar-1 | TIG Welder; TIG Welding Machine; Helper | 48h | 48h | 2,800 | 2,800 | 2,800 |
| 95 | 7.2.13.3 | RT inspection | 4.81d | 2017-10-12 A | 2017-10-17 A | 94, 52 | 100% | 2017-10-12 | 2017-10-17 | 4.81d | TEAM_2Shift_Calendar-1 | SC (Work); Production Department | 24h | 24h |  |  |  |
| 96 | 7.2.13.4 | Hem to Socket final welding | 8d | 2017-10-17 A | 2017-10-23 A | 95, 53 | 100% | 2017-10-17 | 2017-10-23 | 7.99d | TEAM_2Shift_Calendar-1 | TIG Welder; TIG Welding Machine; Helper | 96h | 96h | 5,600 | 5,600 | 5,600 |
| 97 | 7.2.13.5 | RT inspection | 6d | 2017-10-23 A | 2017-10-26 A | 96, 54 | 100% | 2017-10-23 | 2017-10-26 | 5.99d | TEAM_2Shift_Calendar-1 | SC (Work); Production Department | 32h | 32h |  |  |  |
| 98 | 7.2.14 | **Hemisphere Welding (Dish Ends)** | 30.21d | 2017-10-26 A | 2017-11-15 A |  | 100% | 2017-10-26 | 2017-11-15 | 30.18d | TEAM_2Shift_Calendar-1 |  | 398h | 398h | 21,033.32 | 21,033.32 | 21,033.32 |
| 99 | 7.2.14.1 | Dish Fit Up | 4d | 2017-10-26 A | 2017-10-30 A | 91, 97, 56 | 100% | 2017-10-26 | 2017-10-30 | 4d | TEAM_2Shift_Calendar-1 | TIG Welder; TIG Welding Machine; Helper | 32h | 32h | 1,866.66 | 1,866.66 | 1,866.66 |
| 100 | 7.2.14.2 | Dish Welding (Root) | 4d | 2017-10-30 A | 2017-11-01 A | 99, 57 | 100% | 2017-10-30 | 2017-11-01 | 4d | TEAM_2Shift_Calendar-1 | TIG Welder; TIG Welding Machine; Helper | 96h | 96h | 5,600 | 5,600 | 5,600 |
| 101 | 7.2.14.3 | RT inspection | 6d | 2017-11-01 A | 2017-11-04 A | 100, 58 | 100% | 2017-11-01 | 2017-11-04 | 6d | TEAM_2Shift_Calendar-1 | SC (Work); Production Department | 32h | 32h |  |  |  |
| 102 | 7.2.14.4 | Dish Welding (Final) | 8.01d | 2017-11-04 A | 2017-11-09 A | 101, 59 | 100% | 2017-11-04 | 2017-11-09 | 8d | TEAM_2Shift_Calendar-1 | TIG Welder; TIG Welding Machine; Helper | 200h | 200h | 11,666.66 | 11,666.66 | 11,666.66 |
| 103 | 7.2.14.5 | Cleaning Process | 4d | 2017-11-09 A | 2017-11-13 A | 102, 60 | 100% | 2017-11-09 | 2017-11-13 | 4d | TEAM_2Shift_Calendar-1 | Fitter; Helper | 32h | 32h | 1,900 | 1,900 | 1,900 |
| 104 | 7.2.14.6 | RT inspection | 4.2d | 2017-11-13 A | 2017-11-15 A | 103, 61 | 100% | 2017-11-13 | 2017-11-15 | 4.19d | TEAM_2Shift_Calendar-1 | SC (Work); Production Department | 6h | 6h |  |  |  |
| 105 | 7.2.15 | **Final inspection** | 35.17d | 2017-11-18 A | 2017-12-12 A |  | 100% | 2017-11-18 | 2017-12-11 | 34.14d | TEAM_2Shift_Calendar-1 |  | 359.92h | 359.92h | 13,428.34 | 13,228.34 | 13,428.34 |
| 106 | 7.2.15.1 | Strain gauge fixing | 2d | 2017-11-18 A | 2017-11-20 A | 104FS+7d, 63 | 100% | 2017-11-18 | 2017-11-20 | 2d | TEAM_2Shift_Calendar-1 | Maintenance Engineer [200%]; Fitter; Helper | 64h | 64h | 2,533.34 | 2,533.34 | 2,533.34 |
| 107 | 7.2.15.2 | Hydraulic proof pressure testing | 3.27d | 2017-11-20 A | 2017-11-22 A | 106, 64 | 100% | 2017-11-20 | 2017-11-22 | 3.27d | TEAM_2Shift_Calendar-1 | Fitter [300%]; Foreman; Helper; QC Engineer [200%] | 32h | 32h | 950 | 950 | 950 |
| 108 | 7.2.15.3 | Cyclic & Burst test | 5d | 2017-11-22 A | 2017-11-24 A | 107, 65 | 100% | 2017-11-22 | 2017-11-24 | 4.99d | TEAM_2Shift_Calendar-1 | Fitter [300%]; Foreman; Helper; QC Engineer [200%] | 112h | 112h | 3,325 | 3,325 | 3,325 |
| 109 | 7.2.15.4 | Cleaning | 2d | 2017-11-24 A | 2017-11-27 A | 108, 66 | 100% | 2017-11-24 | 2017-11-27 | 2d | TEAM_2Shift_Calendar-1 | Fitter; Helper | 32h | 32h | 1,900 | 1,900 | 1,900 |
| 110 | 7.2.15.5 | RT inspection | 2d | 2017-11-27 A | 2017-11-28 A | 109, 67 | 100% | 2017-11-27 | 2017-11-28 | 2d | TEAM_2Shift_Calendar-1 | SC (Work); Production Department | 16h | 16h |  |  |  |
| 111 | 7.2.15.6 | Final cleaning | 4d | 2017-11-28 A | 2017-11-30 A | 110, 68 | 100% | 2017-11-28 | 2017-11-30 | 4d | TEAM_2Shift_Calendar-1 | Fitter; Helper | 32h | 32h | 1,900 | 1,900 | 1,900 |
| 112 | 7.2.15.7 | Inspection clearance from client | 2.71d | 2017-11-30 A | 2017-12-02 A | 110FS+4d, 69 | 100% | 2017-11-30 | 2017-12-02 | 2.71d | TEAM_2Shift_Calendar-1 | Client; QC Engineer | 7.12h | 7.12h |  |  |  |
| 113 | 7.2.15.8 | Stenciling | 4d | 2017-12-02 A | 2017-12-05 A | 112, 70 | 100% | 2017-12-02 | 2017-12-05 | 4d | TEAM_2Shift_Calendar-1 | Fitter; Helper | 16h | 16h | 950 | 950 | 950 |
| 114 | 7.2.15.9 | Sealing | 4d | 2017-12-05 A | 2017-12-07 A | 113, 71 | 100% | 2017-12-05 | 2017-12-07 | 4d | TEAM_2Shift_Calendar-1 | Fitter; Helper | 16h | 16h | 950 | 950 | 950 |
| 115 | 7.2.15.10 | Packing | 5.18d | 2017-12-07 A | 2017-12-11 A | 114, 72 | 100% | 2017-12-07 | 2017-12-11 | 5.18d | TEAM_2Shift_Calendar-1 | Helper [200%]; Store | 28.8h | 28.8h | 720 | 720 | 720 |
| 116 | 7.2.15.11 | Despatch | 1d | 2017-12-11 A | 2017-12-12 A | 115 | 100% |  |  |  | TEAM_2Shift_Calendar-1 | Helper [200%]; Store | 4h | 4h | 200 |  | 200 |

| ID | WBS | Task | Duration | Start | Finish | Predecessors | Complete | Baseline start | Baseline finish | Baseline duration | Calendar | Resources | Work | Actual work | Cost | Baseline cost | Actual cost |
| --- | --- | --- | --- | --- | --- | --- | --- | --- | --- | --- | --- | --- | --- | --- | --- | --- | --- |
| 117 | 7.3 | **Lot 3 ( 10 Nos)** | 521.94d | 2017-04-13 A | 2018-03-17 A |  | 100% | 2018-01-06 | 2018-03-08 | 92.31d | TEAM_2Shift_Calendar-1 |  | 1499.42h | 1499.42h | 73,529.28 | 77,283.55 | 73,529.28 |
| 118 | 7.3.1 | Marking | 1d | 2018-01-06 A | 2018-01-06 A | 22, 23, 21 | 100% | 2018-01-06 | 2018-01-06 | 1d | TEAM_2Shift_Calendar-1 | Fitter; Helper; Plate (Cost) [0.1%] | 16h | 16h | 950 | 950 | 950 |
| 119 | 7.3.2 | Material identification | 3.62d | 2018-01-06 A | 2018-01-09 A | 22, 21 | 100% | 2018-01-06 | 2018-01-09 | 3.62d | TEAM_2Shift_Calendar-1 | Fitter; Helper; Store [50%]; Crane [50%]; Client; QC Engineer [200%] | 44.42h | 44.42h | 879.15 | 879.15 | 879.15 |
| 120 | 7.3.3 | Machining of Adaptor | 7.51d | 2018-01-09 A | 2018-01-12 A | 119 | 100% | 2018-01-09 | 2018-01-12 | 7.5d | TEAM_2Shift_Calendar-1 | CNC Lathe; Lathe Operator; Rod (Cost) [0.1%] | 120h | 120h | 7,200 | 7,200 | 7,200 |
| 121 | 7.3.4 | Machining of Socket | 7.51d | 2018-01-09 A | 2018-01-12 A | 119 | 100% | 2018-01-09 | 2018-01-12 | 7.5d | TEAM_2Shift_Calendar-1 | CNC Lathe; Lathe Operator; Rod (Cost) [0.1%] | 120h | 120h | 7,200 | 7,200 | 7,200 |
| 122 | 7.3.5 | Mechanical & Chemical Prep testing speciman | 3.38d | 2018-01-09 A | 2018-01-10 A | 119 | 100% | 2018-01-09 | 2018-01-10 | 3.38d | TEAM_2Shift_Calendar-1 | Production Department; QC Engineer; SC (Work); Gas Cutter; Milling Machine; Milling Operator | 27h | 27h | 849.38 | 849.38 | 849.38 |
| 123 | 7.3.6 | Cutting | 2d | 2018-01-09 A | 2018-01-10 A | 119 | 100% | 2018-01-09 | 2018-01-10 | 2d | TEAM_2Shift_Calendar-1 | Gas Cutter; OAGM; Helper | 48h | 48h | 1,900 | 1,900 | 1,900 |
| 124 | 7.3.7 | Machining | 2d | 2018-01-10 A | 2018-01-11 A | 123 | 100% | 2018-01-10 | 2018-01-11 | 2d | TEAM_2Shift_Calendar-1 | Lathe Operator; Lathe | 32h | 32h | 1,920 | 1,920 | 1,920 |
| 125 | 7.3.8 | Heat Treatment & Forming | 8d | 2018-01-11 A | 2018-01-18 A | 124 | 100% | 2018-01-11 | 2018-01-18 | 8d | TEAM_2Shift_Calendar-1 | Fitter; Foreman [25%]; Heat Treatment Furnace; Helper [200%]; Hydraulic Press | 210h | 210h | 4,987.5 | 4,987.5 | 4,987.5 |
| 126 | 7.3.9 | Machining of Hemisphere | 25.01d | 2018-01-18 A | 2018-02-03 A | 125 | 100% | 2018-01-18 | 2018-02-03 | 25d | TEAM_2Shift_Calendar-1 | CNC Lathe; Lathe Operator | 400h | 400h | 24,000 | 24,000 | 24,000 |
| 127 | 7.3.10 | Machining of Slot & Hexagon | 5d | 2018-01-18 A | 2018-01-20 A | 120, 121 | 100% | 2018-01-18 | 2018-01-20 | 4.79d | TEAM_2Shift_Calendar-1 | SC (Work); Production Department | 24h | 24h |  |  |  |
| 128 | 7.3.11 | Component inspection | 1d | 2018-02-26 A | 2018-02-26 A | 126, 127 | 100% | 2018-02-03 | 2018-02-05 | 1.54d | TEAM_2Shift_Calendar-1 | Client; QC Engineer | 4h | 4h |  |  |  |
| 129 | 7.3.12 | **Top Hem to Socket Welding** | 6.75d | 2018-02-16 A | 2018-02-20 A |  | 100% | 2018-02-16 | 2018-02-20 | 7.57d | TEAM_2Shift_Calendar-1 |  | 86h | 86h | 4,666.66 | 4,666.67 | 4,666.66 |
| 130 | 7.3.12.1 | Hem to socket Fitup | 1d | 2018-02-16 A | 2018-02-16 A | 128FS-15d | 100% | 2018-02-16 | 2018-02-16 | 1d | TEAM_2Shift_Calendar-1 | TIG Welder; TIG Welding Machine; Helper; Plate (Cost) [0.1%]; Rod (Cost) [0.1%] | 8h | 8h | 466.66 | 466.67 | 466.66 |
| 131 | 7.3.12.2 | Hem to socket root welding | 1d | 2018-02-16 A | 2018-02-17 A | 130 | 100% | 2018-02-16 | 2018-02-17 | 1d | TEAM_2Shift_Calendar-1 | TIG Welder; TIG Welding Machine; Helper | 24h | 24h | 1,400 | 1,400 | 1,400 |
| 132 | 7.3.12.3 | RT inspection | 4h | 2018-02-17 A | 2018-02-17 A | 131 | 100% | 2018-02-17 | 2018-02-17 | 10.59h | TEAM_2Shift_Calendar-1 | SC (Work); Production Department | 4h | 4h |  |  |  |
| 133 | 7.3.12.4 | Hem to Socket final welding | 4d | 2018-02-17 A | 2018-02-20 A | 132 | 100% | 2018-02-17 | 2018-02-20 | 4d | TEAM_2Shift_Calendar-1 | TIG Welder; TIG Welding Machine; Helper | 48h | 48h | 2,800 | 2,800 | 2,800 |
| 134 | 7.3.12.5 | RT inspection | 2h | 2018-02-20 A | 2018-02-20 A | 133 | 100% | 2018-02-20 | 2018-02-20 | 2h | TEAM_2Shift_Calendar-1 | SC (Work); Production Department | 2h | 2h |  |  |  |
| 135 | 7.3.13 | **Bottom Hem to Socket Welding** | 8.12d | 2018-02-20 A | 2018-02-26 A |  | 100% | 2018-02-20 | 2018-02-27 | 8.12d | TEAM_2Shift_Calendar-1 |  | 94h | 94h | 5,133.34 | 5,133.34 | 5,133.34 |
| 136 | 7.3.13.1 | Hem to socket Fitup | 2d | 2018-02-20 A | 2018-02-21 A | 134 | 100% | 2018-02-20 | 2018-02-21 | 2d | TEAM_2Shift_Calendar-1 | TIG Welder; TIG Welding Machine; Helper; Plate (Cost) [0.1%]; Rod (Cost) [0.1%] | 16h | 16h | 933.34 | 933.34 | 933.34 |
| 137 | 7.3.13.2 | Hem to socket root welding | 1d | 2018-02-21 A | 2018-02-22 A | 136 | 100% | 2018-02-21 | 2018-02-22 | 1d | TEAM_2Shift_Calendar-1 | TIG Welder; TIG Welding Machine; Helper | 24h | 24h | 1,400 | 1,400 | 1,400 |
| 138 | 7.3.13.3 | RT inspection | 4.6h | 2018-02-22 A | 2018-02-22 A | 137 | 100% | 2018-02-22 | 2018-02-22 | 7.05h | TEAM_2Shift_Calendar-1 | SC (Work); Production Department | 4h | 4h |  |  |  |
| 139 | 7.3.13.4 | Hem to Socket final welding | 4d | 2018-02-22 A | 2018-02-26 A | 138 | 100% | 2018-02-22 | 2018-02-26 | 4d | TEAM_2Shift_Calendar-1 | TIG Welder; TIG Welding Machine; Helper | 48h | 48h | 2,800 | 2,800 | 2,800 |
| 140 | 7.3.13.5 | RT inspection | 2h | 2018-02-26 A | 2018-02-26 A | 139 | 100% | 2018-02-26 | 2018-02-27 | 2h | TEAM_2Shift_Calendar-1 | SC (Work); Production Department | 2h | 2h |  |  |  |

| ID | WBS | Task | Duration | Start | Finish | Predecessors | Complete | Baseline start | Baseline finish | Baseline duration | Constraint | Calendar | Resources | Work | Actual work | Cost | Baseline cost | Actual cost |
| --- | --- | --- | --- | --- | --- | --- | --- | --- | --- | --- | --- | --- | --- | --- | --- | --- | --- | --- |
| 141 | 7.3.14 | **Hemisphere Welding (Dish Ends)** | 10.24d | 2018-02-26 A | 2018-03-03 A |  | 100% | 2018-02-27 | 2018-03-05 | 10.24d |  | TEAM_2Shift_Calendar-1 |  | 188h | 188h | 10,516.68 | 10,516.68 | 10,516.68 |
| 142 | 7.3.14.1 | Dish Fit Up | 2d | 2018-02-26 A | 2018-02-27 A | 140 | 100% | 2018-02-27 | 2018-02-28 | 2d |  | TEAM_2Shift_Calendar-1 | TIG Welder; TIG Welding Machine; Helper | 16h | 16h | 933.34 | 933.34 | 933.34 |
| 143 | 7.3.14.2 | Dish Welding (Root) | 2d | 2018-02-27 A | 2018-02-28 A | 142 | 100% | 2018-02-28 | 2018-03-01 | 2d |  | TEAM_2Shift_Calendar-1 | TIG Welder; TIG Welding Machine; Helper | 48h | 48h | 2,800 | 2,800 | 2,800 |
| 144 | 7.3.14.3 | RT inspection | 4h | 2018-02-28 A | 2018-02-28 A | 143 | 100% | 2018-03-01 | 2018-03-01 | 4h |  | TEAM_2Shift_Calendar-1 | SC (Work); Production Department | 4h | 4h |  |  |  |
| 145 | 7.3.14.4 | Dish Welding (Final) | 4d | 2018-02-28 A | 2018-03-02 A | 144 | 100% | 2018-03-01 | 2018-03-03 | 4d |  | TEAM_2Shift_Calendar-1 | TIG Welder; TIG Welding Machine; Helper | 100h | 100h | 5,833.34 | 5,833.34 | 5,833.34 |
| 146 | 7.3.14.5 | Cleaning Process | 8h | 2018-03-02 A | 2018-03-03 A | 145 | 100% | 2018-03-03 | 2018-03-03 | 9.99h |  | TEAM_2Shift_Calendar-1 | Fitter; Helper | 16h | 16h | 950 | 950 | 950 |
| 147 | 7.3.14.6 | RT inspection | 4h | 2018-03-03 A | 2018-03-03 A | 146 | 100% | 2018-03-03 | 2018-03-05 | 4h |  | TEAM_2Shift_Calendar-1 | SC (Work); Production Department | 4h | 4h |  |  |  |
| 148 | 7.3.15 | **Final inspection** | 521.94d | 2017-04-13 A | 2018-03-17 A |  | 100% | 2018-03-05 | 2018-03-09 | 9.48d |  | TEAM_2Shift_Calendar-1 |  | 86h | 86h | 3,326.57 | 4,173.62 | 3,326.57 |
| 149 | 7.3.15.1 | Strain gauge fixing | 2.38d | 2018-03-08 A | 2018-03-09 A | 147 | 100% | 2018-03-05 | 2018-03-05 | 2d | finish no earlier than 2018-03-08 | TEAM_2Shift_Calendar-1 | Maintenance Engineer [200%]; Fitter; Helper | 18h | 18h | 712.5 | 633.33 | 712.5 |
| 150 | 7.3.15.2 | Hydraulic proof pressure testing | 2d | 2018-03-09 A | 2018-03-12 A | 149 | 100% | 2018-03-05 | 2018-03-06 | 2d |  | TEAM_2Shift_Calendar-1 | Fitter [300%]; Foreman; Helper; QC Engineer [200%] | 12h | 12h | 328.6 | 328.6 | 328.6 |
| 151 | 7.3.15.3 | Cyclic & Burst test | 2d | 2018-03-09 A | 2018-03-12 A | 149 | 100% | 2018-03-06 | 2018-03-07 | 1d |  | TEAM_2Shift_Calendar-1 | Fitter [300%]; Foreman; Helper; QC Engineer [200%] | 8h | 8h | 197.74 | 1,046.23 | 197.74 |
| 152 | 7.3.15.4 | Cleaning | 1d | 2018-03-12 A | 2018-03-12 A | 151 | 100% | 2018-03-07 | 2018-03-07 | 1d |  | TEAM_2Shift_Calendar-1 | Fitter; Helper | 16h | 16h | 950 | 950 | 950 |
| 153 | 7.3.15.5 | RT inspection | 4h | 2018-03-12 A | 2018-03-12 A | 152 | 100% | 2018-03-07 | 2018-03-07 | 4h |  | TEAM_2Shift_Calendar-1 | SC (Work); Production Department | 4h | 4h |  |  |  |
| 154 | 7.3.15.6 | Final cleaning | 1d | 2018-03-12 A | 2018-03-13 A | 153 | 100% | 2018-03-07 | 2018-03-08 | 1d |  | TEAM_2Shift_Calendar-1 | Fitter; Helper | 4h | 4h | 237.5 | 475.5 | 237.5 |
| 155 | 7.3.15.7 | Inspection clearance from client | 1d | 2018-03-12 A | 2018-03-13 A | 153 | 100% | 2018-03-07 | 2018-03-08 | 1d |  | TEAM_2Shift_Calendar-1 | Client; QC Engineer | 4h | 4h |  |  |  |
| 156 | 7.3.15.8 | Stenciling | 1d | 2018-03-13 A | 2018-03-13 A | 155 | 100% | 2018-03-08 | 2018-03-08 | 1d |  | TEAM_2Shift_Calendar-1 | Fitter; Helper | 6h | 6h | 356.25 | 352.07 | 356.25 |
| 157 | 7.3.15.9 | Sealing | 1d | 2018-03-16 A | 2018-03-16 A | 156 | 100% | 2018-03-08 | 2018-03-09 | 1d | start no earlier than 2018-03-16 | TEAM_2Shift_Calendar-1 | Fitter; Helper | 4h | 4h | 237.5 | 237.75 | 237.5 |
| 158 | 7.3.15.10 | Packing | 1d | 2018-03-16 A | 2018-03-17 A | 157 | 100% | 2018-03-09 | 2018-03-09 | 1d |  | TEAM_2Shift_Calendar-1 | Helper [200%]; Store | 6h | 6h | 173.15 | 150.16 | 173.15 |
| 159 | 7.3.15.11 | Despatch | 1d | 2017-04-13 A | 2017-04-13 A | 158 | 100% |  |  |  |  | TEAM_2Shift_Calendar-1 | Helper [200%]; Store | 4h | 4h | 133.33 |  | 133.33 |
