# 4167-BORL

Schedule from MS Project, 2017-04-20 to 2018-03-15, A marks actual dates.

## Calendars

- TEAM_Stand_Calendar: Mon-Sat 08:30-12:30, 13:30-17:30; Sun off. Exceptions (off unless hours are given): 2017-01-13 to 2023-08-12 (2nd Sat, recurring), 2017-01-26 to 2036-01-26 (Republic Day, recurring), 2017-01-27 to 2023-08-26 (4th Sat, recurring), 2017-05-01 to 2036-05-01 (May Day, recurring), 2017-08-15 to 2036-08-15 (Independence Day, recurring), 2017-08-25 (Vinakya Chaturthi'2017), 2017-09-29 (Ayudha Pooja'2017), 2017-10-02 to 2036-10-02 (Gandhi Jayanti, recurring), 2017-10-18 (Deepavali'2017), 2018-01-15 (Thiruvalluvar Day'2018).

## Schedule

| ID | WBS | Task | Duration | Start | Finish | Predecessors | Complete | Baseline start | Baseline finish | Baseline duration |
| --- | --- | --- | --- | --- | --- | --- | --- | --- | --- | --- |
| 1 | 1 | PO RECEIPT | 0.81d | 2017-04-20 A | 2017-04-20 A |  | 100% | 2017-04-20 | 2017-04-20 | 1d |
| 2 | 2 | CRM | 0.81d | 2017-04-25 A | 2017-04-25 A | 1 | 100% | 2017-04-21 | 2017-04-24 | 2d |
| 3 | 3 | DRAWING SUBMISSION FOR APPROVAL | 1d | 2017-04-24 A | 2017-04-25 A | 1FS+2d | 100% | 2017-04-25 | 2017-04-25 | 1d |
| 4 | 4 | **PR ISSUE** | 58d | 2017-04-25 A | 2017-07-07 A |  | 100% | 2017-04-26 | 2017-05-04 | 8d |
| 5 | 4.1 | PLATES AND RODS-SA516GR70 | 3d | 2017-05-26 A | 2017-05-31 A | 3 | 100% | 2017-04-26 | 2017-05-01 | 5d |
| 6 | 4.2 | PLATES AND RODS-HASTELLOY | 2.56d | 2017-05-27 A | 2017-05-31 A | 3 | 100% | 2017-04-26 | 2017-04-29 | 4d |
| 7 | 4.3 | PLATES AND RODS-STELLITE 6 | 0.81d | 2017-05-31 A | 2017-05-31 A | 3 | 100% | 2017-04-26 | 2017-04-26 | 1d |
| 8 | 4.4 | PIPE-SA106GRB | 4.19d | 2017-05-23 A | 2017-05-31 A | 3 | 100% | 2017-04-26 | 2017-05-04 | 8d |
| 9 | 4.5 | STD FLANGES-SA105 | 4.19d | 2017-05-23 A | 2017-05-31 A | 3 | 100% | 2017-04-26 | 2017-05-04 | 8d |
| 10 | 4.6 | NON STD FLANGES-SA266CL2 | 4.19d | 2017-05-23 A | 2017-05-31 A | 3 | 100% | 2017-04-26 | 2017-05-04 | 8d |
| 11 | 4.7 | REDUCER-SA234 | 0.81d | 2017-05-31 A | 2017-05-31 A | 3 | 100% | 2017-04-26 | 2017-04-26 | 1d |
| 12 | 4.8 | ELBOW-SA234 | 0.81d | 2017-05-31 A | 2017-05-31 A | 3 | 100% | 2017-04-26 | 2017-04-26 | 1d |
| 13 | 4.9 | FASTENERS-SA193GRB7 | 3.81d | 2017-05-25 A | 2017-05-31 A | 3 | 100% | 2017-04-26 | 2017-05-02 | 6d |
| 14 | 4.10 | GASKET-SS316 SPWD | 1.81d | 2017-05-29 A | 2017-05-31 A | 3 | 100% | 2017-04-26 | 2017-04-28 | 3d |
| 15 | 4.11 | PAINT-CS SURFACE | 1d | 2017-04-25 A | 2017-04-26 A | 3 | 100% | 2017-04-26 | 2017-04-26 | 1d |
| 16 | 4.12 | DUR O LOK COUPLING-SS304 | 0.81d | 2017-05-31 A | 2017-05-31 A | 3 | 100% | 2017-04-26 | 2017-04-26 | 1d |
| 17 | 4.13 | DEMISTER-SS347 | 0.81d | 2017-06-05 A | 2017-06-05 A | 3 | 100% | 2017-04-26 | 2017-04-26 | 1d |
| 18 | 4.14 | ELECTRODE AND FW-CS | 2d | 2017-07-04 A | 2017-07-07 A | 3 | 100% | 2017-04-26 | 2017-04-29 | 4d |
| 19 | 4.15 | ELECTRODE-HASTELLOY | 0.81d | 2017-07-07 A | 2017-07-07 A | 3 | 100% | 2017-04-26 | 2017-04-26 | 1d |
| 20 | 4.16 | FILLER WIRE-SS347 | 2d | 2017-07-04 A | 2017-07-07 A | 3 | 100% | 2017-04-26 | 2017-04-29 | 4d |
| 21 | 4.17 | FILLER WIRE-STELLITE | 1.81d | 2017-05-29 A | 2017-05-31 A | 3 | 100% | 2017-04-26 | 2017-04-28 | 3d |
| 22 | 5 | **MATERIAL ORDERING AND RECEIPT** | 112.19d | 2017-04-26 A | 2017-09-19 A |  | 100% | 2017-04-27 | 2017-08-11 | 88d |
| 23 | 5.1 | PLATES AND RODS-SA516GR70 | 1.56w | 2017-06-14 A | 2017-06-30 A | 5 | 100% | 2017-05-02 | 2017-05-19 | 3w |
| 24 | 5.2 | PLATES AND RODS-HASTELLOY | 2.76w | 2017-06-19 A | 2017-07-19 A | 6 | 100% | 2017-05-01 | 2017-05-31 | 5.2w |
| 25 | 5.3 | PLATES AND RODS-STELLITE 6 | 4w | 2017-08-16 A | 2017-09-11 A | 7 | 100% | 2017-04-27 | 2017-05-20 | 4w |
| 26 | 5.4 | PIPE-SA106GRB | 1.96w | 2017-06-08 A | 2017-06-30 A | 8 | 100% | 2017-05-04 | 2017-05-04 | 0w |
| 27 | 5.5 | STD FLANGES-SA105 | 8.2w | 2017-06-13 A | 2017-09-19 A | 9 | 100% | 2017-05-05 | 2017-08-11 | 16.2w |
| 28 | 5.6 | NON STD FLANGES-SA266CL2 | 7.76w | 2017-06-13 A | 2017-09-13 A | 10 | 100% | 2017-05-05 | 2017-08-05 | 15.2w |
| 29 | 5.7 | REDUCER-SA234 | 4.8w | 2017-06-22 A | 2017-08-18 A | 11 | 100% | 2017-04-27 | 2017-06-22 | 9.4w |
| 30 | 5.8 | ELBOW-SA234 | 4.8w | 2017-06-22 A | 2017-08-18 A | 12 | 100% | 2017-04-27 | 2017-06-22 | 9.4w |
| 31 | 5.9 | FASTENERS-SA193GRB7 | 5.8w | 2017-06-13 A | 2017-08-21 A | 13 | 100% | 2017-05-03 | 2017-07-11 | 11.4w |
| 32 | 5.10 | GASKET-SS316 SPWD | 4.36w | 2017-07-14 A | 2017-09-04 A | 14 | 100% | 2017-04-29 | 2017-06-20 | 8.6w |
| 33 | 5.11 | PAINT-CS SURFACE | 5w | 2017-04-26 A | 2017-05-29 A | 15 | 100% | 2017-04-27 | 2017-05-26 | 5w |
| 34 | 5.12 | DUR O LOK COUPLING-SS304 | 5.2w | 2017-06-17 A | 2017-08-18 A | 16 | 100% | 2017-04-27 | 2017-06-27 | 10.2w |
| 35 | 5.13 | DEMISTER-SS347 | 9w | 2017-06-05 A | 2017-08-01 A | 17 | 100% | 2017-04-27 | 2017-06-20 | 9w |
| 36 | 5.14 | ELECTRODE AND FW-CS | 2.76w | 2017-08-02 A | 2017-09-01 A | 18 | 100% | 2017-05-01 | 2017-05-31 | 5.2w |
| 37 | 5.15 | ELECTRODE-HASTELLOY | 4.2w | 2017-08-03 A | 2017-09-19 A | 19 | 100% | 2017-04-27 | 2017-06-13 | 7.8w |
| 38 | 5.16 | FILLER WIRE-SS347 | 3.17w | 2017-05-20 A | 2017-06-24 A | 20 | 100% | 2017-04-29 | 2017-04-29 | 0w |
| 39 | 5.17 | FILLER WIRE-STELLITE | 4w | 2017-05-20 A | 2017-07-05 A | 21 | 100% | 2017-04-29 | 2017-06-15 | 7.8w |

| ID | WBS | Task | Type | Duration | Start | Finish | Predecessors | Complete | Baseline start | Baseline finish | Baseline duration |
| --- | --- | --- | --- | --- | --- | --- | --- | --- | --- | --- | --- |
| 40 | 6 | **FABRICATION** |  | 117d | 2017-07-01 A | 2017-12-02 A |  | 100% | 2017-05-06 | 2017-09-06 | 101d |
| 41 | 6.1 | **CS PORTION** |  | 75d | 2017-07-01 A | 2017-10-09 A |  | 100% | 2017-05-06 | 2017-08-29 | 94d |
| 42 | 6.1.1 | **SHELL FABRICATION - 1000ID AND 1400 ID** |  | 59.94d | 2017-07-21 A | 2017-10-09 A |  | 100% | 2017-05-22 | 2017-06-14 | 20d |
| 43 | 6.1.1.1 | PLATE MARKING AND CUTTING |  | 0.81d | 2017-07-21 A | 2017-07-21 A | 23FS+1d | 100% | 2017-05-22 | 2017-05-22 | 1d |
| 44 | 6.1.1.2 | PRE PUNCH ROLLING | milestone | 0d | 2017-07-22 A | 2017-07-22 A | 43 | 100% | 2017-05-23 | 2017-05-23 | 1d |
| 45 | 6.1.1.3 | PRE PUNCH CUTTING |  | 1d | 2017-07-24 A | 2017-07-25 A | 44 | 100% | 2017-05-24 | 2017-05-24 | 1d |
| 46 | 6.1.1.4 | EDGE PREPARATION | milestone | 0d | 2017-08-10 A | 2017-08-11 A | 45 | 100% | 2017-05-25 | 2017-05-25 | 1d |
| 47 | 6.1.1.5 | ROLLING | milestone | 0d | 2017-08-12 A | 2017-08-12 A | 46 | 100% | 2017-05-26 | 2017-05-27 | 2d |
| 48 | 6.1.1.6 | LS FITUP |  | 2d | 2017-08-14 A | 2017-08-16 A | 47 | 100% | 2017-05-29 | 2017-05-29 | 1d |
| 49 | 6.1.1.7 | DP |  | 1d | 2017-08-17 A | 2017-08-18 A | 48 | 100% | 2017-05-30 | 2017-05-30 | 1d |
| 50 | 6.1.1.8 | LS WELDING |  | 1d | 2017-08-19 A | 2017-08-21 A | 49 | 100% | 2017-05-31 | 2017-06-01 | 2d |
| 51 | 6.1.1.9 | RT |  | 1d | 2017-08-22 A | 2017-08-23 A | 50 | 100% | 2017-06-02 | 2017-06-02 | 1d |
| 52 | 6.1.1.10 | CS FITUP |  | 1.56d | 2017-09-03 A | 2017-09-06 A | 51, 36 | 100% | 2017-06-03 | 2017-06-05 | 2d |
| 53 | 6.1.1.11 | DP | milestone | 0d | 2017-09-05 A | 2017-09-08 A | 52 | 100% | 2017-06-06 | 2017-06-06 | 1d |
| 54 | 6.1.1.12 | CS WELDING |  | 2.56d | 2017-09-09 A | 2017-09-15 A | 53 | 100% | 2017-06-07 | 2017-06-08 | 2d |
| 55 | 6.1.1.13 | DP |  | 2.56d | 2017-09-17 A | 2017-09-22 A | 54 | 100% | 2017-06-09 | 2017-06-09 | 1d |
| 56 | 6.1.1.14 | NOZZLE OPENING |  | 2.81d | 2017-10-03 A | 2017-10-07 A | 55 | 100% | 2017-06-12 | 2017-06-13 | 2d |
| 57 | 6.1.1.15 | EP |  | 0.56d | 2017-10-08 A | 2017-10-09 A | 56 | 100% | 2017-06-14 | 2017-06-14 | 1d |
| 58 | 6.1.2 | **FORMING - CONE AND DISH** |  | 38.94d | 2017-08-09 A | 2017-09-30 A |  | 100% | 2017-05-23 | 2017-06-09 | 16d |
| 59 | 6.1.2.1 | PLATE MARKING AND CUTTING |  | 1.81d | 2017-08-09 A | 2017-08-11 A | 23FS+2d | 100% | 2017-05-23 | 2017-05-23 | 1d |
| 60 | 6.1.2.2 | SEND FOR CONE FORMING |  | 1.81d | 2017-09-04 A | 2017-09-06 A | 59 | 100% | 2017-05-24 | 2017-05-24 | 1d |
| 61 | 6.1.2.3 | FORMED CONE RECEIPT AND INSPN |  | 1.81d | 2017-09-16 A | 2017-09-19 A | 60 | 100% | 2017-05-25 | 2017-05-30 | 5d |
| 62 | 6.1.2.4 | EP |  | 0.81d | 2017-09-20 A | 2017-09-20 A | 61 | 100% | 2017-05-31 | 2017-05-31 | 1d |
| 63 | 6.1.2.5 | PLATE MARKING AND CUTTING | milestone | 0d | 2017-08-28 A | 2017-08-28 A | 62 | 100% | 2017-06-01 | 2017-06-01 | 1d |
| 64 | 6.1.2.6 | SEND FOR DISH FORMING |  | 4d | 2017-09-08 A | 2017-09-18 A | 63 | 100% | 2017-06-02 | 2017-06-07 | 5d |
| 65 | 6.1.2.7 | FORMED DISH RECEIPT AND INSPN |  | 2d | 2017-09-25 A | 2017-09-28 A | 64 | 100% | 2017-06-08 | 2017-06-08 | 1d |
| 66 | 6.1.2.8 | EP |  | 0.81d | 2017-09-29 A | 2017-09-30 A | 65 | 100% | 2017-06-09 | 2017-06-09 | 1d |

| ID | WBS | Task | Duration | Start | Finish | Predecessors | Complete | Baseline start | Baseline finish | Baseline duration |
| --- | --- | --- | --- | --- | --- | --- | --- | --- | --- | --- |
| 67 | 6.1.3 | **SADDLE LUG FABRICATION** | 19.94d | 2017-09-05 A | 2017-09-30 A |  | 100% | 2017-05-24 | 2017-06-01 | 8d |
| 68 | 6.1.3.1 | PLATE MARKING AND CUTTING | 2d | 2017-09-05 A | 2017-09-08 A | 23FS+3d | 100% | 2017-05-24 | 2017-05-24 | 1d |
| 69 | 6.1.3.2 | PAD PLATE WELDING | 2.81d | 2017-09-11 A | 2017-09-15 A | 68 | 100% | 2017-05-25 | 2017-05-25 | 1d |
| 70 | 6.1.3.3 | GUSSET PLATE WELDING | 3d | 2017-09-16 A | 2017-09-22 A | 69 | 100% | 2017-05-26 | 2017-05-26 | 1d |
| 71 | 6.1.3.4 | TOP AND BOTTOM PLATE WELDING | 2.56d | 2017-09-24 A | 2017-09-30 A | 70 | 100% | 2017-05-27 | 2017-06-01 | 5d |
| 72 | 6.1.4 | **LIFTING LUG FABRICATION** | 20.94d | 2017-09-06 A | 2017-10-04 A |  | 100% | 2017-05-25 | 2017-05-31 | 6d |
| 73 | 6.1.4.1 | PAD PLATE MARKING AND CUTTING | 1.81d | 2017-09-06 A | 2017-09-08 A | 23FS+4d | 100% | 2017-05-25 | 2017-05-25 | 1d |
| 74 | 6.1.4.2 | PAD PLATE FORMING | 2.81d | 2017-09-12 A | 2017-09-16 A | 73 | 100% | 2017-05-26 | 2017-05-26 | 1d |
| 75 | 6.1.4.3 | LUG PLATE MARKING AND CUTTING | 2d | 2017-09-19 A | 2017-09-22 A | 74 | 100% | 2017-05-27 | 2017-05-27 | 1d |
| 76 | 6.1.4.4 | LUG PLATE DRILLING | 2d | 2017-09-24 A | 2017-09-28 A | 75 | 100% | 2017-05-29 | 2017-05-29 | 1d |
| 77 | 6.1.4.5 | LUG PLATE WELDING | 2.19d | 2017-09-29 A | 2017-10-04 A | 76 | 100% | 2017-05-30 | 2017-05-31 | 2d |
| 78 | 6.1.5 | **NOZZLE FABRICATION** | 75d | 2017-07-01 A | 2017-10-09 A |  | 100% | 2017-05-06 | 2017-08-29 | 94d |
| 79 | 6.1.5.1 | PIPE MARKING AND CUTTING | 1d | 2017-07-01 A | 2017-07-03 A | 26FS+1d | 100% | 2017-05-06 | 2017-05-06 | 1d |
| 80 | 6.1.5.2 | EDGE PREPARATION | 1d | 2017-07-03 A | 2017-07-04 A | 79 | 100% | 2017-05-08 | 2017-05-08 | 1d |
| 81 | 6.1.5.3 | FLANGE FIT UP WITH PIPE | 3d | 2017-09-20 A | 2017-09-25 A | 80, 27FS+1d, 36 | 100% | 2017-08-15 | 2017-08-17 | 3d |
| 82 | 6.1.5.4 | DP | 3d | 2017-09-25 A | 2017-09-28 A | 81 | 100% | 2017-08-18 | 2017-08-21 | 3d |
| 83 | 6.1.5.5 | FLANGE WELD WITH PIPE | 2d | 2017-09-28 A | 2017-10-03 A | 82 | 100% | 2017-08-22 | 2017-08-23 | 2d |
| 84 | 6.1.5.6 | RT | 2d | 2017-10-03 A | 2017-10-05 A | 83 | 100% | 2017-08-24 | 2017-08-25 | 2d |
| 85 | 6.1.5.7 | RF PAD PLATE MARKING AND CUTTING | 1d | 2017-10-05 A | 2017-10-06 A | 84 | 100% | 2017-08-26 | 2017-08-26 | 1d |
| 86 | 6.1.5.8 | RF PAD FORMING | 2d | 2017-10-06 A | 2017-10-09 A | 85 | 100% | 2017-08-28 | 2017-08-29 | 2d |
| 87 | 6.1.6 | **SIEVE PLATE FABRICATION** | 7d | 2017-07-01 A | 2017-07-11 A |  | 100% | 2017-05-22 | 2017-05-29 | 7d |
| 88 | 6.1.6.1 | PLATE MARKING AND CUTTING | 1d | 2017-07-01 A | 2017-07-03 A | 23FS+1d | 100% | 2017-05-22 | 2017-05-22 | 1d |
| 89 | 6.1.6.2 | HOLE MARKING | 1d | 2017-07-03 A | 2017-07-04 A | 88 | 100% | 2017-05-23 | 2017-05-23 | 1d |
| 90 | 6.1.6.3 | DRILLING | 5d | 2017-07-04 A | 2017-07-11 A | 89 | 100% | 2017-05-24 | 2017-05-29 | 5d |

| ID | WBS | Task | Duration | Start | Finish | Predecessors | Complete | Baseline start | Baseline finish | Baseline duration |
| --- | --- | --- | --- | --- | --- | --- | --- | --- | --- | --- |
| 91 | 6.1.7 | **INTERNAL CONE FABRICATION** | 34.94d | 2017-08-10 A | 2017-09-26 A |  | 100% | 2017-05-22 | 2017-06-02 | 11d |
| 92 | 6.1.7.1 | PLATE MARKING AND CUTTING | 1d | 2017-08-10 A | 2017-08-11 A | 23FS+1d | 100% | 2017-05-22 | 2017-05-22 | 1d |
| 93 | 6.1.7.2 | SEND FOR CONE FORMING | 1.81d | 2017-09-06 A | 2017-09-08 A | 92 | 100% | 2017-05-23 | 2017-05-23 | 1d |
| 94 | 6.1.7.3 | FORMED CONE RECEIPT | 1.81d | 2017-09-18 A | 2017-09-20 A | 93 | 100% | 2017-05-24 | 2017-05-29 | 5d |
| 95 | 6.1.7.4 | PIPE RECEIPT | 1d | 2017-09-20 A | 2017-09-21 A | 26, 94 | 100% | 2017-05-30 | 2017-05-30 | 1d |
| 96 | 6.1.7.5 | WELDING WITH PIPE | 2d | 2017-09-21 A | 2017-09-25 A | 95 | 100% | 2017-05-31 | 2017-06-01 | 2d |
| 97 | 6.1.7.6 | INSPN | 1d | 2017-09-25 A | 2017-09-26 A | 96 | 100% | 2017-06-02 | 2017-06-02 | 1d |
| 98 | 6.1.8 | **TOP BAFFLE FABRICATION - 540 ID** | 51d | 2017-07-03 A | 2017-09-07 A |  | 100% | 2017-05-23 | 2017-06-06 | 13d |
| 99 | 6.1.8.1 | PLATE MARKING AND CUTTING | 1d | 2017-07-03 A | 2017-07-04 A | 23FS+2d | 100% | 2017-05-23 | 2017-05-23 | 1d |
| 100 | 6.1.8.2 | PLATE FITUP | 1d | 2017-07-04 A | 2017-07-05 A | 99 | 100% | 2017-05-24 | 2017-05-24 | 1d |
| 101 | 6.1.8.3 | INSPN | 2d | 2017-07-05 A | 2017-07-07 A | 100 | 100% | 2017-05-25 | 2017-05-26 | 2d |
| 102 | 6.1.8.4 | WELDING | 5d | 2017-09-01 A | 2017-09-07 A | 101, 36 | 100% | 2017-06-01 | 2017-06-06 | 5d |
| 103 | 6.2 | **HASTELLOY PORTION** | 117d | 2017-07-01 A | 2017-12-02 A |  | 100% | 2017-05-06 | 2017-09-06 | 101d |
| 104 | 6.2.1 | **SHELL FABRICATION - 1000ID** | 49d | 2017-07-20 A | 2017-09-22 A |  | 100% | 2017-06-02 | 2017-08-01 | 49d |
| 105 | 6.2.1.1 | PLATE MARKING AND CUTTING | 1d | 2017-07-20 A | 2017-07-21 A | 24FS+1d, 23FS+2d | 100% | 2017-06-02 | 2017-06-02 | 1d |
| 106 | 6.2.1.2 | SEND FOR CLADDING | 1d | 2017-07-21 A | 2017-07-24 A | 105 | 100% | 2017-06-03 | 2017-06-03 | 1d |
| 107 | 6.2.1.3 | CLADDED PLATES RECEIPT | 25d | 2017-07-24 A | 2017-08-24 A | 106 | 100% | 2017-06-05 | 2017-07-04 | 25d |
| 108 | 6.2.1.4 | PRE PUNCH ROLLING | 1d | 2017-08-24 A | 2017-08-28 A | 107 | 100% | 2017-07-05 | 2017-07-05 | 1d |
| 109 | 6.2.1.5 | PRE PUNCH CUTTING | 1d | 2017-08-28 A | 2017-08-29 A | 108 | 100% | 2017-07-06 | 2017-07-06 | 1d |
| 110 | 6.2.1.6 | EDGE PREPARATION | 1d | 2017-08-29 A | 2017-08-30 A | 109 | 100% | 2017-07-07 | 2017-07-07 | 1d |
| 111 | 6.2.1.7 | ROLLING | 1d | 2017-08-30 A | 2017-08-31 A | 110 | 100% | 2017-07-10 | 2017-07-10 | 1d |
| 112 | 6.2.1.8 | LS FITUP | 1d | 2017-08-31 A | 2017-09-01 A | 111, 35 | 100% | 2017-07-11 | 2017-07-11 | 1d |
| 113 | 6.2.1.9 | DP | 1d | 2017-09-01 A | 2017-09-02 A | 112 | 100% | 2017-07-12 | 2017-07-12 | 1d |
| 114 | 6.2.1.10 | LS WELDING | 5d | 2017-09-02 A | 2017-09-08 A | 113 | 100% | 2017-07-13 | 2017-07-18 | 5d |
| 115 | 6.2.1.11 | RT | 1d | 2017-09-08 A | 2017-09-11 A | 114 | 100% | 2017-07-19 | 2017-07-19 | 1d |
| 116 | 6.2.1.12 | CS FITUP | 1d | 2017-09-11 A | 2017-09-12 A | 115 | 100% | 2017-07-20 | 2017-07-20 | 1d |
| 117 | 6.2.1.13 | DP | 1d | 2017-09-12 A | 2017-09-13 A | 116 | 100% | 2017-07-21 | 2017-07-21 | 1d |
| 118 | 6.2.1.14 | CS WELDING | 5d | 2017-09-13 A | 2017-09-19 A | 117 | 100% | 2017-07-24 | 2017-07-28 | 5d |
| 119 | 6.2.1.15 | DP | 1d | 2017-09-19 A | 2017-09-20 A | 118 | 100% | 2017-07-29 | 2017-07-29 | 1d |
| 120 | 6.2.1.16 | NOZZLE OPENING | 1d | 2017-09-20 A | 2017-09-21 A | 119 | 100% | 2017-07-31 | 2017-07-31 | 1d |
| 121 | 6.2.1.17 | EP | 1d | 2017-09-21 A | 2017-09-22 A | 120 | 100% | 2017-08-01 | 2017-08-01 | 1d |

| ID | WBS | Task | Duration | Start | Finish | Predecessors | Complete | Baseline start | Baseline finish | Baseline duration |
| --- | --- | --- | --- | --- | --- | --- | --- | --- | --- | --- |
| 122 | 6.2.2 | **DISH FABRICATION** | 34d | 2017-07-21 A | 2017-09-05 A |  | 100% | 2017-06-03 | 2017-07-14 | 34d |
| 123 | 6.2.2.1 | PLATE MARKING AND CUTTING | 1d | 2017-07-21 A | 2017-07-24 A | 24FS+2d | 100% | 2017-06-03 | 2017-06-03 | 1d |
| 124 | 6.2.2.2 | SEND FOR CLADDING | 1d | 2017-07-24 A | 2017-07-25 A | 123 | 100% | 2017-06-05 | 2017-06-05 | 1d |
| 125 | 6.2.2.3 | CLADDED PLATES RECEIPT | 25d | 2017-07-25 A | 2017-08-28 A | 124 | 100% | 2017-06-06 | 2017-07-05 | 25d |
| 126 | 6.2.2.4 | SEND FOR DISH FORMING | 1d | 2017-08-28 A | 2017-08-29 A | 125 | 100% | 2017-07-06 | 2017-07-06 | 1d |
| 127 | 6.2.2.5 | FORMED DISH RECEIPT AND INSPN | 5d | 2017-08-29 A | 2017-09-04 A | 126 | 100% | 2017-07-07 | 2017-07-13 | 5d |
| 128 | 6.2.2.6 | EP | 1d | 2017-09-04 A | 2017-09-05 A | 127 | 100% | 2017-07-14 | 2017-07-14 | 1d |
| 129 | 6.2.3 | **INTERNAL CONE FABRICATION** | 14d | 2017-07-25 A | 2017-08-10 A |  | 100% | 2017-06-06 | 2017-06-22 | 14d |
| 130 | 6.2.3.1 | PLATE MARKING AND CUTTING | 1d | 2017-07-25 A | 2017-07-26 A | 24FS+4d | 100% | 2017-06-06 | 2017-06-06 | 1d |
| 131 | 6.2.3.2 | SEND FOR CONE FORMING | 1d | 2017-07-26 A | 2017-07-27 A | 130 | 100% | 2017-06-07 | 2017-06-07 | 1d |
| 132 | 6.2.3.3 | FORMED CONE RECEIPT | 5d | 2017-07-27 A | 2017-08-02 A | 131 | 100% | 2017-06-08 | 2017-06-14 | 5d |
| 133 | 6.2.3.4 | PIPE RECEIPT | 1d | 2017-08-02 A | 2017-08-03 A | 132 | 100% | 2017-06-15 | 2017-06-15 | 1d |
| 134 | 6.2.3.5 | WELDING WITH PIPE | 5d | 2017-08-03 A | 2017-08-09 A | 133 | 100% | 2017-06-16 | 2017-06-21 | 5d |
| 135 | 6.2.3.6 | INSPN | 1d | 2017-08-09 A | 2017-08-10 A | 134 | 100% | 2017-06-22 | 2017-06-22 | 1d |
| 136 | 6.2.4 | **NOZZLE FABRICATION** | 71d | 2017-07-01 A | 2017-10-04 A |  | 100% | 2017-05-06 | 2017-08-24 | 90d |
| 137 | 6.2.4.1 | PIPE MARKING AND CUTTING | 1d | 2017-07-01 A | 2017-07-03 A | 26FS+1d | 100% | 2017-05-06 | 2017-05-06 | 1d |
| 138 | 6.2.4.2 | EDGE PREPARATION | 1d | 2017-07-03 A | 2017-07-04 A | 137 | 100% | 2017-05-08 | 2017-05-08 | 1d |
| 139 | 6.2.4.3 | FLANGE FIT UP WITH PIPE | 2d | 2017-09-21 A | 2017-09-25 A | 27FS+2d | 100% | 2017-08-16 | 2017-08-17 | 2d |
| 140 | 6.2.4.4 | DP | 1d | 2017-09-25 A | 2017-09-26 A | 139 | 100% | 2017-08-18 | 2017-08-18 | 1d |
| 141 | 6.2.4.5 | FLANGE WELD WITH PIPE | 2d | 2017-09-26 A | 2017-09-28 A | 140 | 100% | 2017-08-19 | 2017-08-21 | 2d |
| 142 | 6.2.4.6 | RT | 1d | 2017-09-28 A | 2017-09-30 A | 141 | 100% | 2017-08-22 | 2017-08-22 | 1d |
| 143 | 6.2.4.7 | RF PAD PLATE MARKING AND CUTTING | 1d | 2017-09-30 A | 2017-10-03 A | 142 | 100% | 2017-08-23 | 2017-08-23 | 1d |
| 144 | 6.2.4.8 | RF PAD FORMING | 1d | 2017-10-03 A | 2017-10-04 A | 143 | 100% | 2017-08-24 | 2017-08-24 | 1d |
| 145 | 6.2.5 | **BOTTOM BAFFLE FABRICATION - 850 ID** | 8d | 2017-07-21 A | 2017-08-01 A |  | 100% | 2017-06-03 | 2017-06-13 | 8d |
| 146 | 6.2.5.1 | PLATE MARKING AND CUTTING | 1d | 2017-07-21 A | 2017-07-24 A | 24FS+2d | 100% | 2017-06-03 | 2017-06-03 | 1d |
| 147 | 6.2.5.2 | PLATE FITUP | 1d | 2017-07-24 A | 2017-07-25 A | 146 | 100% | 2017-06-05 | 2017-06-05 | 1d |
| 148 | 6.2.5.3 | INSPN | 1d | 2017-07-25 A | 2017-07-26 A | 147 | 100% | 2017-06-06 | 2017-06-06 | 1d |
| 149 | 6.2.5.4 | WELDING | 5d | 2017-07-26 A | 2017-08-01 A | 148 | 100% | 2017-06-07 | 2017-06-13 | 5d |

| ID | WBS | Task | Duration | Start | Finish | Predecessors | Complete | Baseline start | Baseline finish | Baseline duration |
| --- | --- | --- | --- | --- | --- | --- | --- | --- | --- | --- |
| 150 | 6.2.6 | **BODY FLANGE WELD OVERLAY** | 11d | 2017-09-15 A | 2017-09-30 A |  | 100% | 2017-08-09 | 2017-08-22 | 11d |
| 151 | 6.2.6.1 | RECEIPT OF BODY FLANGES | 1d | 2017-09-15 A | 2017-09-16 A | 28FS+2d | 100% | 2017-08-09 | 2017-08-09 | 1d |
| 152 | 6.2.6.2 | HASTELLOY WD | 4d | 2017-09-16 A | 2017-09-21 A | 35FS+1d, 151 | 100% | 2017-08-10 | 2017-08-15 | 4d |
| 153 | 6.2.6.3 | MACHINING | 6d | 2017-09-21 A | 2017-09-30 A | 152 | 100% | 2017-08-16 | 2017-08-22 | 6d |
| 154 | 6.2.7 | **TOTAL ASSEMBLY** | 42d | 2017-10-09 A | 2017-12-02 A |  | 100% | 2017-06-15 | 2017-09-06 | 69d |
| 155 | 6.2.7.1 | TOP DISH TO SHELL FITUP | 1d | 2017-10-09 A | 2017-10-10 A | 42, 58 | 100% | 2017-06-15 | 2017-06-15 | 1d |
| 156 | 6.2.7.2 | DP | 1d | 2017-10-10 A | 2017-10-11 A | 155 | 100% | 2017-06-16 | 2017-06-16 | 1d |
| 157 | 6.2.7.3 | WELDING | 2d | 2017-10-11 A | 2017-10-13 A | 156 | 100% | 2017-06-17 | 2017-06-19 | 2d |
| 158 | 6.2.7.4 | INSPECTION | 1d | 2017-10-13 A | 2017-10-16 A | 157 | 100% | 2017-06-20 | 2017-06-20 | 1d |
| 159 | 6.2.7.5 | SIEVE PLATE FITUP INSIDE SHELL | 1d | 2017-10-16 A | 2017-10-17 A | 87, 158 | 100% | 2017-06-21 | 2017-06-21 | 1d |
| 160 | 6.2.7.6 | DP | 1d | 2017-10-17 A | 2017-10-19 A | 159 | 100% | 2017-06-22 | 2017-06-22 | 1d |
| 161 | 6.2.7.7 | WELDING | 2d | 2017-10-19 A | 2017-10-21 A | 160 | 100% | 2017-06-23 | 2017-06-24 | 2d |
| 162 | 6.2.7.8 | INSPECTION | 1d | 2017-10-21 A | 2017-10-23 A | 161 | 100% | 2017-06-26 | 2017-06-26 | 1d |
| 163 | 6.2.7.9 | CONE FITUP WITH SHELL | 1d | 2017-10-23 A | 2017-10-24 A | 91, 162 | 100% | 2017-06-27 | 2017-06-27 | 1d |
| 164 | 6.2.7.10 | DP | 1d | 2017-10-24 A | 2017-10-25 A | 163 | 100% | 2017-06-28 | 2017-06-28 | 1d |
| 165 | 6.2.7.11 | WELDING | 2d | 2017-10-25 A | 2017-10-27 A | 164 | 100% | 2017-06-29 | 2017-06-30 | 2d |
| 166 | 6.2.7.12 | INSPECTION | 1d | 2017-10-27 A | 2017-10-30 A | 165 | 100% | 2017-07-01 | 2017-07-01 | 1d |
| 167 | 6.2.7.13 | TOP BAFFLE PLATE FITUP | 1d | 2017-10-30 A | 2017-10-31 A | 166, 98 | 100% | 2017-07-03 | 2017-07-03 | 1d |
| 168 | 6.2.7.14 | WELDING | 2d | 2017-10-31 A | 2017-11-02 A | 167 | 100% | 2017-07-04 | 2017-07-05 | 2d |
| 169 | 6.2.7.15 | INSPECTION | 1d | 2017-11-02 A | 2017-11-03 A | 168 | 100% | 2017-07-06 | 2017-07-06 | 1d |
| 170 | 6.2.7.16 | MIDDLE CONE FITUP | 1d | 2017-11-03 A | 2017-11-04 A | 169, 37 | 100% | 2017-07-07 | 2017-07-07 | 1d |
| 171 | 6.2.7.17 | STELLITE WELDING | 2d | 2017-11-04 A | 2017-11-07 A | 25FS+2d, 170, 39 | 100% | 2017-07-10 | 2017-07-11 | 2d |
| 172 | 6.2.7.18 | CONE WELDING | 1d | 2017-11-07 A | 2017-11-08 A | 171 | 100% | 2017-07-12 | 2017-07-12 | 1d |
| 173 | 6.2.7.19 | INPECTION | 1d | 2017-11-08 A | 2017-11-09 A | 172 | 100% | 2017-07-13 | 2017-07-13 | 1d |
| 174 | 6.2.7.20 | BOTTOM BAFFLE PLATE WELDING | 2d | 2017-11-09 A | 2017-11-13 A | 145, 173 | 100% | 2017-07-14 | 2017-07-15 | 2d |
| 175 | 6.2.7.21 | BOTTOM CONE WELDING | 1d | 2017-11-13 A | 2017-11-14 A | 174 | 100% | 2017-07-17 | 2017-07-17 | 1d |
| 176 | 6.2.7.22 | BOTTOM DISH TO SHELL WELDING | 2d | 2017-11-14 A | 2017-11-16 A | 122, 104, 175 | 100% | 2017-08-02 | 2017-08-03 | 2d |
| 177 | 6.2.7.23 | BODY FLANGE FITUP | 1d | 2017-11-16 A | 2017-11-17 A | 176, 150 | 100% | 2017-08-23 | 2017-08-23 | 1d |
| 178 | 6.2.7.24 | DP | 1d | 2017-11-17 A | 2017-11-18 A | 177 | 100% | 2017-08-24 | 2017-08-24 | 1d |
| 179 | 6.2.7.25 | WELDING | 2d | 2017-11-18 A | 2017-11-21 A | 178 | 100% | 2017-08-25 | 2017-08-26 | 2d |
| 180 | 6.2.7.26 | INSPECTION | 1d | 2017-11-21 A | 2017-11-22 A | 179 | 100% | 2017-08-28 | 2017-08-28 | 1d |
| 181 | 6.2.7.27 | NOZZLE FITUP | 1d | 2017-11-22 A | 2017-11-23 A | 180 | 100% | 2017-08-29 | 2017-08-29 | 1d |
| 182 | 6.2.7.28 | INSPECTION | 1d | 2017-11-23 A | 2017-11-24 A | 181 | 100% | 2017-08-30 | 2017-08-30 | 1d |
| 183 | 6.2.7.29 | NOZZLE WELDING | 2d | 2017-11-24 A | 2017-11-28 A | 182, 136, 35, 38 | 100% | 2017-08-31 | 2017-09-01 | 2d |
| 184 | 6.2.7.30 | SADDLE PAD WELDING | 2d | 2017-11-28 A | 2017-11-30 A | 183, 67 | 100% | 2017-09-02 | 2017-09-04 | 2d |
| 185 | 6.2.7.31 | SADDLE WELDING WITH PAD | 2d | 2017-11-30 A | 2017-12-02 A | 184 | 100% | 2017-09-05 | 2017-09-06 | 2d |

| ID | WBS | Task | Duration | Start | Finish | Predecessors | Complete | Baseline start | Baseline finish | Baseline duration |
| --- | --- | --- | --- | --- | --- | --- | --- | --- | --- | --- |
| 186 | 7 | **TESTING** | 7d | 2017-12-02 A | 2017-12-12 A |  | 100% | 2017-09-07 | 2017-09-15 | 7d |
| 187 | 7.1 | HYDROTEST | 5d | 2017-12-02 A | 2017-12-08 A | 40 | 100% | 2017-09-07 | 2017-09-13 | 5d |
| 188 | 7.2 | WATER DRY | 2d | 2017-12-08 A | 2017-12-12 A | 187 | 100% | 2017-09-14 | 2017-09-15 | 2d |
| 189 | 8 | **PACKING AND DESPATCH** | 72d | 2017-12-12 A | 2018-03-15 A |  | 100% | 2017-09-16 | 2017-10-17 | 25d |
| 190 | 8.1 | INSPECTION AND DOCUMENTATION | 16d | 2018-02-22 A | 2018-03-15 A | 186FS+56d | 100% | 2017-09-16 | 2017-10-05 | 16d |
| 191 | 8.2 | PACKING | 2d | 2017-12-12 A | 2017-12-14 A | 188 | 100% | 2017-10-06 | 2017-10-07 | 2d |
| 192 | 8.3 | DESPATCH TO SITE | 7d | 2017-12-14 A | 2017-12-22 A | 191 | 100% | 2017-10-09 | 2017-10-17 | 7d |
