# 4173-602-E-02

Schedule from MS Project, 2017-05-09 to 2018-04-25, 14.5 hours a day, costs in ₹, A marks actual dates.

## Calendars

- TEAM_Stand_Calendar: Mon-Sat 08:30-12:30, 13:30-17:30; Sun off. Exceptions (off unless hours are given): 2017-01-13 to 2023-08-12 (2nd Sat, recurring), 2017-01-26 to 2036-01-26 (Republic Day, recurring), 2017-01-27 to 2023-08-26 (4th Sat, recurring), 2017-05-01 to 2036-05-01 (May Day, recurring), 2017-08-15 to 2036-08-15 (Independence Day, recurring), 2017-08-25 (Vinakya Chaturthi'2017), 2017-09-29 (Ayudha Pooja'2017), 2017-10-02 to 2036-10-02 (Gandhi Jayanti, recurring), 2017-10-18 (Deepavali'2017), 2018-01-15 (Thiruvalluvar Day'2018).
- TEAM_2Shift_Calendar-1: Mon-Sat 06:00-22:00; Sun off. Exceptions (off unless hours are given): 2017-01-13 to 2023-02-11 (2nd Sat, recurring), 2017-01-26 to 2036-01-26 (Republic Day, recurring), 2017-01-27 to 2023-08-26 (4th Sat, recurring), 2017-05-01 to 2036-05-01 (May Day, recurring), 2017-08-15 to 2036-08-15 (Indepdence Day, recurring), 2017-08-25 (Ayudha Pooja'2017), 2017-10-02 to 2036-10-02 (Gandhi Jayanti, recurring), 2017-10-19 (Deepavali'2017), 2018-01-15 (Thiruvalluvar Day'2018).

## Resources

| Resource | Rate |
| --- | --- |
| SAW Welder | 68.75 |
| Painter |  |
| Lathe |  |
| Helper | 50 |
| Grinder | 56.25 |
| Fitter | 68.75 |
| Driller | 68.75 |
| Gas Cutter | 68.75 |
| Consumables (Cost) |  |
| Fastners (Cost) |  |
| Forging Non-Std (Cost) |  |
| Forging Std (Cost) |  |
| Gaskets (Cost) |  |
| Paint (Cost) |  |
| Pipe (Cost) |  |
| Plate (Cost) |  |
| Rod (Cost) |  |
| Tube (Cost) |  |
| Finance |  |
| QC Engineer |  |

## Schedule

| ID | WBS | Task | Type | Duration | Start | Finish | Predecessors | Complete | Baseline start | Baseline finish | Baseline duration | Constraint |
| --- | --- | --- | --- | --- | --- | --- | --- | --- | --- | --- | --- | --- |
| 1 | 1 | PO RECEIPT |  | 0.55d | 2017-05-09 08:00 A | 2017-05-10 09:30 A |  | 100% | 2017-05-09 08:00 | 2017-05-10 09:30 | 0.55d |  |
| 2 | 2 | DRAWING SUBMISSION FOR APPROVAL |  | 32.55d | 2017-07-19 08:00 A | 2017-12-29 17:23 A | 1 | 100% | 2017-07-19 08:00 | 2017-12-29 17:23 | 32.55d |  |
| 3 | 3 | **PR ISSUE** |  | 55.79d | 2017-06-15 08:00 A | 2017-10-26 09:23 A |  | 100% | 2017-06-15 08:00 | 2017-10-26 09:23 | 55.79d |  |
| 4 | 3.1 | Plates and Rods-SA240 Gr.321 | milestone | 0d | 2017-08-05 08:00 A | 2017-08-05 08:00 A | 2 | 100% | 2017-08-05 08:00 | 2017-08-05 08:00 | 0d |  |
| 5 | 3.2 | Plates and Rods-SA240 Gr.304 | milestone | 0d | 2017-08-05 08:00 A | 2017-08-05 08:00 A | 2 | 100% | 2017-08-05 08:00 | 2017-08-05 08:00 | 0d |  |
| 6 | 3.3 | Plates and Rods-IS2062 Gr.B | milestone | 0d | 2017-08-14 08:00 A | 2017-08-14 08:00 A | 2 | 100% | 2017-08-14 08:00 | 2017-08-14 08:00 | 0d |  |
| 7 | 3.4 | Tube-SA213 TP321 |  | 3.86d | 2017-06-15 08:00 A | 2017-07-01 09:30 A | 1FS+6.62d | 100% | 2017-06-15 08:00 | 2017-07-01 09:30 | 3.86d |  |
| 8 | 3.5 | Tube-SA213 TP304 |  | 3.86d | 2017-06-15 08:00 A | 2017-07-01 09:30 A | 1FS+6.62d | 100% | 2017-06-15 08:00 | 2017-07-01 09:30 | 3.86d |  |
| 9 | 3.6 | Blank Forging-SA965 F321 | milestone | 0d | 2017-08-03 08:00 A | 2017-08-03 08:00 A | 2 | 100% | 2017-08-03 08:00 | 2017-08-03 08:00 | 0d |  |
| 10 | 3.7 | Blank Forging-SA965 F304 | milestone | 0d | 2017-08-03 08:00 A | 2017-08-03 08:00 A | 2 | 100% | 2017-08-03 08:00 | 2017-08-03 08:00 | 0d |  |
| 11 | 3.8 | Non Standard Forging-SA965 F321 | milestone | 0d | 2017-08-03 08:00 A | 2017-08-03 08:00 A | 2 | 100% | 2017-08-03 08:00 | 2017-08-03 08:00 | 0d |  |
| 12 | 3.9 | Non Standard Forging-SA965 F304 | milestone | 0d | 2017-08-03 08:00 A | 2017-08-03 08:00 A | 2 | 100% | 2017-08-03 08:00 | 2017-08-03 08:00 | 0d |  |
| 13 | 3.10 | Non Standard Forging-SA266 Gr.2 | milestone | 0d | 2017-08-03 08:00 A | 2017-08-03 08:00 A | 2 | 100% | 2017-08-03 08:00 | 2017-08-03 08:00 | 0d |  |
| 14 | 3.11 | Standard Forging-SA182 F321 | milestone | 0d | 2017-08-14 08:00 A | 2017-08-14 08:00 A | 2 | 100% | 2017-08-14 08:00 | 2017-08-14 08:00 | 0d |  |
| 15 | 3.12 | Standard Forging-SA182 F304 | milestone | 0d | 2017-08-14 08:00 A | 2017-08-14 08:00 A | 2 | 100% | 2017-08-14 08:00 | 2017-08-14 08:00 | 0d |  |
| 16 | 3.13 | Pipe-SA312 TP304 | milestone | 0d | 2017-08-16 08:00 A | 2017-08-16 08:00 A | 2 | 100% | 2017-08-16 08:00 | 2017-08-16 08:00 | 0d |  |
| 17 | 3.14 | Gaskets- |  | 3.31d | 2017-09-23 08:00 A | 2017-10-26 09:23 A | 2 | 100% | 2017-09-23 08:00 | 2017-10-26 09:23 | 3.31d |  |
| 18 | 3.15 | Fasteners- | milestone | 0d | 2017-08-16 08:00 A | 2017-08-16 08:00 A | 2 | 100% | 2017-08-16 08:00 | 2017-08-16 08:00 | 0d |  |
| 19 | 3.16 | Consumables-SS321 |  | 0.55d | 2017-10-20 08:00 A | 2017-10-21 09:30 A | 2 | 100% | 2017-10-20 08:00 | 2017-10-21 09:30 | 0.55d |  |
| 20 | 3.17 | Consumables-SS304 |  | 0.55d | 2017-10-20 08:00 A | 2017-10-21 09:30 A | 2 | 100% | 2017-10-20 08:00 | 2017-10-21 09:30 | 0.55d |  |
| 21 | 4 | **PO RECEIPT** |  | 98.21d | 2017-08-03 08:30 A | 2018-03-23 21:30 A |  | 100% | 2017-07-04 08:00 | 2018-01-05 09:25 | 78.41d |  |
| 22 | 4.1 | Plates and Rods-SA240 Gr.321 |  | 7.72d | 2017-09-01 08:00 A | 2017-10-10 09:29 A | 4 | 100% | 2017-09-01 08:00 | 2017-10-10 09:29 | 7.72d |  |
| 23 | 4.2 | Plates and Rods-SA240 Gr.304 |  | 26.48d | 2017-09-01 08:00 A | 2018-01-05 09:25 A | 5 | 100% | 2017-09-01 08:00 | 2018-01-05 09:25 | 26.48d |  |
| 24 | 4.3 | Plates and Rods-IS2062 Gr.B |  | 11.03d | 2017-08-14 08:30 A | 2017-09-08 17:30 A | 6 | 100% | 2017-08-14 08:30 | 2017-09-08 17:30 | 11.03d |  |
| 25 | 4.4 | Tube-SA213 TP321 |  | 0.55d | 2018-03-23 08:30 A | 2018-03-23 21:30 A |  | 100% | 2017-07-04 08:00 | 2017-11-13 17:30 | 55.17d | finish no earlier than 2018-03-23 21:30 |
| 26 | 4.5 | Tube-SA213 TP304 |  | 0.55d | 2018-03-23 08:30 A | 2018-03-23 21:30 A |  | 100% | 2017-07-04 08:00 | 2017-11-13 17:30 | 55.17d | finish no earlier than 2018-03-23 21:30 |
| 27 | 4.6 | Blank Forging-SA965 F321 |  | 41.38d | 2017-08-03 08:30 A | 2017-11-10 17:30 A | 9 | 100% | 2017-08-03 08:30 | 2017-11-10 17:30 | 41.38d |  |
| 28 | 4.7 | Blank Forging-SA965 F304 |  | 41.38d | 2017-08-03 08:30 A | 2017-11-10 17:30 A | 10 | 100% | 2017-08-03 08:30 | 2017-11-10 17:30 | 41.38d |  |
| 29 | 4.8 | Non Standard Forging-SA965 F321 |  | 41.38d | 2017-09-27 08:00 A | 2018-01-02 17:30 A | 11 | 100% | 2017-09-27 08:00 | 2018-01-02 17:30 | 41.38d |  |
| 30 | 4.9 | Non Standard Forging-SA965 F304 |  | 41.38d | 2017-09-27 08:00 A | 2018-01-02 17:30 A | 12 | 100% | 2017-09-27 08:00 | 2018-01-02 17:30 | 41.38d |  |
| 31 | 4.10 | Non Standard Forging-SA266 Gr.2 |  | 41.38d | 2017-09-27 08:00 A | 2018-01-02 17:30 A | 13 | 100% | 2017-09-27 08:00 | 2018-01-02 17:30 | 41.38d |  |
| 32 | 4.11 | Standard Forging-SA182 F321 |  | 41.38d | 2017-09-27 08:00 A | 2018-01-02 17:30 A | 14 | 100% | 2017-09-27 08:00 | 2018-01-02 17:30 | 41.38d |  |
| 33 | 4.12 | Standard Forging-SA182 F304 |  | 41.38d | 2017-09-27 08:00 A | 2018-01-02 17:30 A | 15 | 100% | 2017-09-27 08:00 | 2018-01-02 17:30 | 41.38d |  |
| 34 | 4.13 | Pipe-SA312 TP304 |  | 16.55d | 2017-08-16 08:30 A | 2017-09-22 17:30 A | 16 | 100% | 2017-08-16 08:30 | 2017-09-22 17:30 | 16.55d |  |
| 35 | 4.14 | Gaskets- |  | 27.59d | 2017-10-26 09:23 A | 2017-12-29 09:23 A | 17 | 100% | 2017-10-26 09:23 | 2017-12-29 09:23 | 27.59d |  |
| 36 | 4.15 | Fasteners- |  | 27.59d | 2017-08-16 08:30 A | 2017-10-21 17:30 A | 18 | 100% | 2017-08-16 08:30 | 2017-10-21 17:30 | 27.59d |  |
| 37 | 4.16 | Consumables-SS321 |  | 13.79d | 2017-10-21 09:30 A | 2017-11-22 09:30 A | 19 | 100% | 2017-10-21 09:30 | 2017-11-22 09:30 | 13.79d |  |
| 38 | 4.17 | Consumables-SS304 |  | 13.79d | 2017-10-21 09:30 A | 2017-11-22 09:30 A | 20 | 100% | 2017-10-21 09:30 | 2017-11-22 09:30 | 13.79d |  |

| ID | WBS | Task | Duration | Start | Finish | Predecessors | Complete | Baseline start | Baseline finish | Baseline duration | Constraint | Calendar | Work | Actual work | Cost | Baseline cost | Actual cost |
| --- | --- | --- | --- | --- | --- | --- | --- | --- | --- | --- | --- | --- | --- | --- | --- | --- | --- |
| 39 | 5 | **Fab: 4173-602-E-02** | 180.48d | 2017-09-27 08:30 A | 2018-04-25 17:30 A |  | 100% | 2017-09-27 08:30 | 2018-04-13 16:00 | 170.45d |  | TEAM_2Shift_Calendar-1 | 5786.62h | 5786.62h | 320,562.7 | 365,713.02 | 320,562.7 |
| 40 | 5.1 | **MATERIAL RECEIPT** | 151.79d | 2017-09-27 08:30 A | 2018-03-23 17:30 A |  | 100% | 2017-09-27 08:30 | 2017-09-28 16:00 | 1d |  | TEAM_2Shift_Calendar-1 |  |  |  |  |  |
| 41 | 5.1.1 | PLATE FOR SHELL | 1d | 2017-09-27 08:30 A | 2017-09-28 16:00 A |  | 100% | 2017-09-27 08:30 | 2017-09-28 16:00 | 1d | start no earlier than 2017-09-27 06:00 |  |  |  |  |  |  |
| 42 | 5.1.2 | SHELL BONNET | 1d | 2017-09-27 08:30 A | 2017-09-28 16:00 A | 41SS | 100% | 2017-09-27 08:30 | 2017-09-28 16:00 | 1d |  |  |  |  |  |  |  |
| 43 | 5.1.3 | SHELL FLANGE | 1d | 2017-09-27 08:30 A | 2017-09-28 16:00 A | 41SS | 100% | 2017-09-27 08:30 | 2017-09-28 16:00 | 1d |  |  |  |  |  |  |  |
| 44 | 5.1.4 | PLATE FOR CHANNEL | 1d | 2017-09-27 08:30 A | 2017-09-28 16:00 A | 41SS | 100% | 2017-09-27 08:30 | 2017-09-28 16:00 | 1d |  |  |  |  |  |  |  |
| 45 | 5.1.5 | CHANNEL BONNET | 1d | 2017-09-27 08:30 A | 2017-09-28 16:00 A | 41SS | 100% | 2017-09-27 08:30 | 2017-09-28 16:00 | 1d |  |  |  |  |  |  |  |
| 46 | 5.1.6 | CHANNEL FLANGE | 1d | 2017-09-27 08:30 A | 2017-09-28 16:00 A | 41SS | 100% | 2017-09-27 08:30 | 2017-09-28 16:00 | 1d |  |  |  |  |  |  |  |
| 47 | 5.1.7 | NOZZLE NECK WITH FLG | 1d | 2017-09-27 08:30 A | 2017-09-28 16:00 A | 41SS | 100% | 2017-09-27 08:30 | 2017-09-28 16:00 | 1d |  |  |  |  |  |  |  |
| 48 | 5.1.8 | U TUBE | 0.55d | 2018-03-23 08:30 A | 2018-03-23 17:30 A | 41SS | 100% | 2017-09-27 08:30 | 2017-09-28 16:00 | 1d | finish no earlier than 2018-03-23 21:30 |  |  |  |  |  |  |
| 49 | 5.1.9 | TUBE SHEET | 1d | 2017-09-27 08:30 A | 2017-09-28 16:00 A | 41SS | 100% | 2017-09-27 08:30 | 2017-09-28 16:00 | 1d |  |  |  |  |  |  |  |
| 50 | 5.1.10 | IMPINGEMENT PLATE | 1d | 2017-09-27 08:30 A | 2017-09-28 16:00 A | 41SS | 100% | 2017-09-27 08:30 | 2017-09-28 16:00 | 1d |  |  |  |  |  |  |  |
| 51 | 5.1.11 | PP PLATE | 1d | 2017-09-27 08:30 A | 2017-09-28 16:00 A | 41SS | 100% | 2017-09-27 08:30 | 2017-09-28 16:00 | 1d |  |  |  |  |  |  |  |
| 52 | 5.1.12 | NAME PLATE | 1d | 2017-09-27 08:30 A | 2017-09-28 16:00 A | 41SS | 100% | 2017-09-27 08:30 | 2017-09-28 16:00 | 1d |  |  |  |  |  |  |  |
| 53 | 5.1.13 | SUPPORT PLATES | 1d | 2017-09-27 08:30 A | 2017-09-28 16:00 A | 41SS | 100% | 2017-09-27 08:30 | 2017-09-28 16:00 | 1d |  |  |  |  |  |  |  |
| 54 | 5.1.14 | BAFFLE PLATE | 1d | 2017-09-27 08:30 A | 2017-09-28 16:00 A | 41SS | 100% | 2017-09-27 08:30 | 2017-09-28 16:00 | 1d |  |  |  |  |  |  |  |
| 55 | 5.1.15 | LIFTING LUG | 1d | 2017-09-27 08:30 A | 2017-09-28 16:00 A | 41SS | 100% | 2017-09-27 08:30 | 2017-09-28 16:00 | 1d |  |  |  |  |  |  |  |
| 56 | 5.1.16 | SRN NOZZLE | 1d | 2017-09-27 08:30 A | 2017-09-28 16:00 A | 41SS | 100% | 2017-09-27 08:30 | 2017-09-28 16:00 | 1d |  |  |  |  |  |  |  |
| 57 | 5.1.17 | NOZZLE FLG | 1d | 2017-09-27 08:30 A | 2017-09-28 16:00 A | 41SS | 100% | 2017-09-27 08:30 | 2017-09-28 16:00 | 1d |  |  |  |  |  |  |  |
| 58 | 5.1.18 | SADDLE MATERIAL | 1d | 2017-09-27 08:30 A | 2017-09-28 16:00 A | 41SS | 100% | 2017-09-27 08:30 | 2017-09-28 16:00 | 1d |  |  |  |  |  |  |  |
| 59 | 5.1.19 | INSULATION CLEAT | 1d | 2017-09-27 08:30 A | 2017-09-28 16:00 A | 41SS | 100% | 2017-09-27 08:30 | 2017-09-28 16:00 | 1d |  |  |  |  |  |  |  |
| 60 | 5.1.20 | SPACER TUBE | 1d | 2017-09-27 08:30 A | 2017-09-28 16:00 A | 41SS | 100% | 2017-09-27 08:30 | 2017-09-28 16:00 | 1d |  |  |  |  |  |  |  |
| 61 | 5.1.21 | SLIDING STRIP | 1d | 2017-09-27 08:30 A | 2017-09-28 16:00 A | 41SS | 100% | 2017-09-27 08:30 | 2017-09-28 16:00 | 1d |  |  |  |  |  |  |  |
| 62 | 5.1.22 | TIE ROD | 1d | 2017-09-27 08:30 A | 2017-09-28 16:00 A | 41SS | 100% | 2017-09-27 08:30 | 2017-09-28 16:00 | 1d |  |  |  |  |  |  |  |
| 63 | 5.1.23 | FASTENERS | 1d | 2017-09-27 08:30 A | 2017-09-28 16:00 A | 41SS | 100% | 2017-09-27 08:30 | 2017-09-28 16:00 | 1d |  |  |  |  |  |  |  |
| 64 | 5.1.24 | GASKETS | 1d | 2017-09-27 08:30 A | 2017-09-28 16:00 A | 41SS | 100% | 2017-09-27 08:30 | 2017-09-28 16:00 | 1d |  |  |  |  |  |  |  |

Notes:
- 41: SA240 Gr321
- 42: SA240 Gr321
- 43: SA965 F321
- 44: SA 240 Gr.321
- 45: SA240 GR.321
- 46: SA965 F321
- 47: SA105
- 48: SA213 TP321
- 49: SA965 F321
- 50: SA240 GR.321
- 51: SA240 GR.321
- 52: SS 321
- 53: SA240 UNS S32205
- 54: SA240 GR.321
- 55: SA240 GR.321
- 56: SA965 F321
- 57: SA182 F321
- 58: IS 2062 E250
- 59: SA240 GR.321
- 60: SA213 Gr 316L
- 61: SA240 GR.321
- 62: SS 321

| ID | WBS | Task | Duration | Start | Finish | Predecessors | Complete | Baseline start | Baseline finish | Baseline duration | Constraint | Calendar | Resources | Work | Actual work | Cost | Baseline cost | Actual cost |
| --- | --- | --- | --- | --- | --- | --- | --- | --- | --- | --- | --- | --- | --- | --- | --- | --- | --- | --- |
| 65 | 5.2 | **CHANNEL LS1- FABRICATION** | 7.73d | 2017-09-28 16:00 A | 2017-10-07 16:02 A |  | 100% | 2017-09-28 16:00 | 2017-10-07 16:05 | 3.32d |  | TEAM_2Shift_Calendar-1 |  | 102.5h | 102.5h | 6,315.63 | 6,315.62 | 6,315.63 |
| 66 | 5.2.1 | LS1-PLATE MARKING | 3h | 2017-09-28 16:00 A | 2017-09-28 19:00 A | 44 | 100% | 2017-09-28 16:00 | 2017-09-28 19:00 | 3h |  |  | Fitter; Helper; Plate (Cost) [0.1%] | 3h | 3h | 150 | 150 | 150 |
| 67 | 5.2.2 | LS1- STAMPING | 3h | 2017-09-28 19:00 A | 2017-09-28 22:00 A | 66 | 100% | 2017-09-28 19:00 | 2017-09-28 22:00 | 3h |  |  | Fitter | 3h | 3h | 206.25 | 206.25 | 206.25 |
| 68 | 5.2.3 | LS1-PL CUTTING | 4h | 2017-09-29 06:00 A | 2017-09-29 10:00 A | 67 | 100% | 2017-09-28 22:00 | 2017-09-29 10:00 | 4h |  |  | Gas Cutter; Helper | 4h | 4h | 200 | 200 | 200 |
| 69 | 5.2.4 | LS1-GRINDING | 5h | 2017-09-29 10:00 A | 2017-09-29 15:01 A | 68 | 100% | 2017-09-29 10:00 | 2017-09-29 15:01 | 5h |  |  | Grinder | 5h | 5h | 281.25 | 281.25 | 281.25 |
| 70 | 5.2.5 | LS1-EDGE PREPARATION | 3h | 2017-09-29 15:01 A | 2017-09-29 18:01 A | 69 | 100% | 2017-09-29 15:01 | 2017-09-29 18:01 | 3h |  |  | Grinder | 3h | 3h | 168.75 | 168.75 | 168.75 |
| 71 | 5.2.6 | LS1-PRE BENDING | 5h | 2017-09-29 18:01 A | 2017-09-30 07:01 A | 70 | 100% | 2017-09-29 18:01 | 2017-09-30 07:01 | 5h |  |  | Fitter; Helper | 5h | 5h | 343.75 | 343.75 | 343.75 |
| 72 | 5.2.7 | LS1-PREBEND CUTOFF | 3h | 2017-09-30 07:01 A | 2017-09-30 10:01 A | 71 | 100% | 2017-09-30 07:01 | 2017-09-30 10:01 | 3h |  |  | Gas Cutter | 3h | 3h | 206.25 | 206.25 | 206.25 |
| 73 | 5.2.8 | LS1-EDGE PREPARTION | 3h | 2017-09-30 10:01 A | 2017-09-30 13:01 A | 72 | 100% | 2017-09-30 10:01 | 2017-09-30 13:01 | 3h |  |  | Grinder | 3h | 3h | 168.75 | 168.75 | 168.75 |
| 74 | 5.2.9 | LS1-ROLLING | 6h | 2017-09-30 13:01 A | 2017-09-30 19:02 A | 73 | 100% | 2017-09-30 13:01 | 2017-09-30 19:02 | 6h |  |  | Fitter; Helper | 6h | 6h | 412.5 | 412.5 | 412.5 |
| 75 | 5.2.10 | LS1-ACID CLEANING | 5h | 2017-09-30 19:02 A | 2017-10-03 08:02 A | 74 | 100% | 2017-09-30 19:02 | 2017-10-03 08:02 | 5h |  |  | Helper [200%] | 10h | 10h | 500 | 500 | 500 |
| 76 | 5.2.11 | LS1-FITUP | 6h | 2017-10-03 08:02 A | 2017-10-03 14:02 A | 75 | 100% | 2017-10-03 08:02 | 2017-10-03 14:03 | 6h |  |  | Fitter; Helper; SAW Welder | 9h | 9h | 506.25 | 506.25 | 506.25 |
| 77 | 5.2.12 | LS1-SPIDERUP | 5h | 2017-10-03 14:02 A | 2017-10-03 19:02 A | 76 | 100% | 2017-10-03 14:03 | 2017-10-03 19:03 | 5h |  |  | Fitter | 5h | 5h | 343.75 | 343.75 | 343.75 |
| 78 | 5.2.13 | LS1-FITUP INSPECTION | 1d | 2017-10-03 19:02 A | 2017-10-04 17:32 A | 77 | 100% | 2017-10-03 19:03 | 2017-10-04 17:34 | 1d |  |  | Fitter | 14.5h | 14.5h | 996.88 | 996.88 | 996.88 |
| 79 | 5.2.14 | LS1-WELDING | 9h | 2017-10-04 17:32 A | 2017-10-05 10:32 A | 78 | 100% | 2017-10-04 17:34 | 2017-10-05 10:34 | 9h |  |  | Helper; SAW Welder | 9h | 9h | 618.75 | 618.75 | 618.75 |
| 80 | 5.2.15 | LS1-FLUSH GRIND | 4h | 2017-10-05 10:32 A | 2017-10-05 14:32 A | 79 | 100% | 2017-10-05 10:34 | 2017-10-05 14:35 | 4h |  |  | Grinder | 4h | 4h | 225 | 225 | 225 |
| 81 | 5.2.16 | LS1-REROLLING | 6h | 2017-10-05 14:32 A | 2017-10-05 20:32 A | 80 | 100% | 2017-10-05 14:35 | 2017-10-05 20:35 | 6h |  |  | Fitter; Helper | 12h | 12h | 712.5 | 712.5 | 712.5 |
| 82 | 5.2.17 | LS1-DPCHECK | 4h | 2017-10-05 20:32 A | 2017-10-06 08:32 A | 81 | 100% | 2017-10-05 20:35 | 2017-10-06 08:35 | 4h |  |  | Fitter | 4h | 4h | 275 | 275 | 275 |
| 83 | 5.2.18 | LS1-RADIOGRAPHY | 1d | 2017-10-06 08:32 A | 2017-10-07 16:02 A | 82 | 100% | 2017-10-06 08:35 | 2017-10-07 16:05 | 1d |  |  |  |  |  |  |  |  |
| 84 | 5.3 | **SHELL LS2-FABRICATION** | 118.97d | 2017-09-28 19:00 A | 2018-02-16 16:00 A |  | 100% | 2017-09-28 19:00 | 2017-10-10 16:00 | 4.31d |  | TEAM_2Shift_Calendar-1 |  | 185.5h | 185.5h | 11,137.42 | 10,978.12 | 11,137.42 |
| 85 | 5.3.1 | LS2-PLATE MARKING | 15.98h | 2017-09-28 19:00 A | 2018-02-02 22:00 A | 41, 66 | 100% | 2017-09-28 19:00 | 2017-09-29 07:00 | 4h | finish no later than 2018-02-12 22:00 |  | Fitter; Helper; Plate (Cost) [0.1%] | 8h | 8h | 475 | 475 | 475 |
| 86 | 5.3.2 | LS2-STAMPING | 15.98h | 2018-02-02 06:00 A | 2018-02-02 22:00 A | 85 | 100% | 2017-09-29 07:00 | 2017-09-29 10:00 | 3h |  |  | Fitter | 3h | 3h | 206.25 | 206.25 | 206.25 |
| 87 | 5.3.3 | LS2-PL CUTTING | 5h | 2018-02-03 06:00 A | 2018-02-03 11:00 A | 86 | 100% | 2017-09-29 10:00 | 2017-09-29 15:01 | 5h |  |  | Gas Cutter; Helper | 10h | 10h | 593.75 | 593.75 | 593.75 |
| 88 | 5.3.4 | LS2-GRINDING | 5h | 2018-02-03 11:00 A | 2018-02-03 16:01 A | 87 | 100% | 2017-09-29 15:01 | 2017-09-29 20:01 | 5h |  |  | Grinder | 5h | 5h | 281.25 | 281.25 | 281.25 |
| 89 | 5.3.5 | LS2-EDGE PREPARATION | 0.52h | 2018-02-03 16:01 A | 2018-02-03 16:32 A | 88 | 100% | 2017-09-29 20:01 | 2017-09-30 07:31 | 3.5h |  |  | Grinder | 3.5h | 3.5h | 196.88 | 196.88 | 196.88 |
| 90 | 5.3.6 | LS2-PREBENDING | 5h | 2018-02-03 16:32 A | 2018-02-03 21:32 A | 89 | 100% | 2017-09-30 07:31 | 2017-09-30 12:31 | 5h |  |  | Fitter; Helper | 10h | 10h | 593.75 | 593.75 | 593.75 |
| 91 | 5.3.7 | LS2-PREBEND CUTOFF | 16.48h | 2018-02-05 06:00 A | 2018-02-06 06:30 A | 90 | 100% | 2017-09-30 12:31 | 2017-09-30 16:02 | 3.5h |  |  | Gas Cutter | 3.5h | 3.5h | 240.62 | 240.62 | 240.62 |
| 92 | 5.3.8 | LS2-EDGE PREPARATION | 15.98h | 2018-02-05 06:00 A | 2018-02-05 22:00 A | 91 | 100% | 2017-09-30 16:02 | 2017-09-30 19:32 | 3.5h |  |  | Grinder | 3.5h | 3.5h | 196.88 | 196.88 | 196.88 |
| 93 | 5.3.9 | LS2-ROLLING | 18.48h | 2018-02-06 06:00 A | 2018-02-07 08:30 A | 92 | 100% | 2017-09-30 19:32 | 2017-10-03 09:32 | 6h |  |  | Fitter; Helper | 11.5h | 11.5h | 631.25 | 471.88 | 631.25 |
| 94 | 5.3.10 | LS2-ACIDCLEANING | 18.09h | 2018-02-07 08:30 A | 2018-02-08 10:36 A | 93 | 100% | 2017-10-03 09:32 | 2017-10-03 14:33 | 5h |  |  | Helper [200%] | 10h | 10h | 499.94 | 500 | 499.94 |
| 95 | 5.3.11 | LS2-FITUP | 14.04h | 2018-02-08 10:36 A | 2018-02-09 08:39 A | 94 | 100% | 2017-10-03 14:33 | 2017-10-03 20:33 | 6h |  |  | Fitter; Helper; SAW Welder | 18h | 18h | 1,124.97 | 1,125 | 1,124.97 |
| 96 | 5.3.12 | LS2-SPIDERUP | 5h | 2018-02-09 08:39 A | 2018-02-09 13:39 A | 95 | 100% | 2017-10-03 20:33 | 2017-10-04 09:33 | 5h |  |  | Fitter | 5h | 5h | 343.75 | 343.75 | 343.75 |
| 97 | 5.3.13 | LS2-FITUP INSPECTION | 0.99d | 2018-02-09 13:39 A | 2018-02-12 12:00 A | 96 | 100% | 2017-10-04 09:33 | 2017-10-05 08:04 | 1d |  |  | Fitter | 14.5h | 14.5h | 996.88 | 996.88 | 996.88 |
| 98 | 5.3.14 | LS2-WELDING | 27h | 2018-02-12 12:00 A | 2018-02-14 07:00 A | 97 | 100% | 2017-10-05 08:04 | 2017-10-06 19:06 | 27h |  |  | Helper; SAW Welder | 54h | 54h | 3,206.25 | 3,206.25 | 3,206.25 |
| 99 | 5.3.15 | LS2-FLUSHGRIND | 10h | 2018-02-14 07:00 A | 2018-02-14 17:00 A | 98 | 100% | 2017-10-06 19:06 | 2017-10-07 13:06 | 10h |  |  | Grinder | 10h | 10h | 562.5 | 562.5 | 562.5 |
| 100 | 5.3.16 | LS2-REROLLING | 5h | 2018-02-14 17:00 A | 2018-02-14 22:00 A | 99 | 100% | 2017-10-07 13:06 | 2017-10-07 19:07 | 6h |  |  | Fitter; Helper | 12h | 12h | 712.5 | 712.5 | 712.5 |
| 101 | 5.3.17 | LS2-DPCHECK | 16h | 2018-02-14 06:00 A | 2018-02-14 22:00 A | 100 | 100% | 2017-10-07 19:07 | 2017-10-09 07:07 | 4h |  |  | Fitter | 4h | 4h | 275 | 275 | 275 |
| 102 | 5.3.18 | LS2-RADIOGRAPHY | 1d | 2018-02-15 08:30 A | 2018-02-16 16:00 A | 101 | 100% | 2017-10-09 08:30 | 2017-10-10 16:00 | 1d |  |  |  |  |  |  |  |  |

Notes:
- 65: 2NOS
- 66: 3016*737*20T
- 79: 2.99Kg/m
- 83: SC
- 84: 2NOS
- 85: 3022*2000*22T
- 98: 3.53Kg/m
- 102: SC

| ID | WBS | Task | Duration | Start | Finish | Predecessors | Complete | Baseline start | Baseline finish | Baseline duration | Calendar | Resources | Work | Actual work | Cost | Baseline cost | Actual cost |
| --- | --- | --- | --- | --- | --- | --- | --- | --- | --- | --- | --- | --- | --- | --- | --- | --- | --- |
| 103 | 5.4 | **SHELL LS3- FABRICATION** | 11.21d | 2018-02-09 06:00 A | 2018-02-22 08:30 A |  | 100% | 2017-09-29 07:00 | 2017-10-10 16:00 | 4.31d | TEAM_2Shift_Calendar-1 |  | 137.69h | 137.69h | 8,650.73 | 8,259.38 | 8,650.73 |
| 104 | 5.4.1 | LS3-PLATE MARKING | 15.98h | 2018-02-09 06:00 A | 2018-02-09 22:00 A | 84 | 100% | 2017-09-29 07:00 | 2017-09-29 10:30 | 3.5h |  | Fitter; Helper; Plate (Cost) [0.1%] | 6.5h | 6.5h | 390.62 | 390.62 | 390.62 |
| 105 | 5.4.2 | LS3-STAMPING | 15.98h | 2018-02-12 06:00 A | 2018-02-12 22:00 A | 104 | 100% | 2017-09-29 10:30 | 2017-09-29 13:30 | 3h |  | Fitter | 3h | 3h | 206.25 | 206.25 | 206.25 |
| 106 | 5.4.3 | LS3-PL CUTTING | 4.5h | 2018-02-12 06:00 A | 2018-02-12 10:30 A | 105 | 100% | 2017-09-29 13:30 | 2017-09-29 18:01 | 4.5h |  | Gas Cutter; Helper | 5.5h | 5.5h | 293.75 | 293.75 | 293.75 |
| 107 | 5.4.4 | LS3-GRINDING | 17.98h | 2018-02-13 06:00 A | 2018-02-14 08:00 A | 106 | 100% | 2017-09-29 18:01 | 2017-09-30 07:01 | 5h |  | Grinder | 5h | 5h | 281.25 | 281.25 | 281.25 |
| 108 | 5.4.5 | LS3-EDGE PREPARATION | 15.98h | 2018-02-15 06:00 A | 2018-02-15 22:00 A | 107 | 100% | 2017-09-30 07:01 | 2017-09-30 10:01 | 3h |  | Grinder | 3h | 3h | 168.75 | 168.75 | 168.75 |
| 109 | 5.4.6 | LS3-PREBENDING | 15h | 2018-02-16 06:00 A | 2018-02-16 21:01 A | 108 | 100% | 2017-09-30 10:01 | 2017-09-30 15:02 | 5h |  | Fitter; Helper | 4.69h | 4.69h | 322.6 | 343.75 | 322.6 |
| 110 | 5.4.7 | LS3-PREBEND CUTOFF | 15.98h | 2018-02-17 06:00 A | 2018-02-17 22:00 A | 109 | 100% | 2017-09-30 15:02 | 2017-09-30 18:02 | 3h |  | Gas Cutter | 3h | 3h | 206.25 | 206.25 | 206.25 |
| 111 | 5.4.8 | LS3-EDGE PREPARTION | 15.98h | 2018-02-19 06:00 A | 2018-02-19 22:00 A | 110 | 100% | 2017-09-30 18:02 | 2017-09-30 21:02 | 3h |  | Grinder | 3h | 3h | 168.75 | 168.75 | 168.75 |
| 112 | 5.4.9 | LS3-ROLLING | 31.97h | 2018-02-19 06:00 A | 2018-02-20 22:00 A | 111 | 100% | 2017-09-30 21:02 | 2017-10-03 11:02 | 6h |  | Fitter; Helper | 18h | 18h | 1,125 | 712.5 | 1,125 |
| 113 | 5.4.10 | LS3-ACIDCLEANING | 18.48h | 2018-02-21 06:00 A | 2018-02-22 08:30 A | 112 | 100% | 2017-10-03 11:02 | 2017-10-03 16:03 | 5h |  | Helper [200%] | 10h | 10h | 500 | 500 | 500 |
| 114 | 5.4.11 | LS3-FITUP | 15.98h | 2018-02-21 06:00 A | 2018-02-21 22:00 A | 113 | 100% | 2017-10-03 16:03 | 2017-10-04 06:03 | 6h |  | Fitter; Helper; SAW Welder | 10h | 10h | 659.38 | 659.38 | 659.38 |
| 115 | 5.4.12 | LS3-SPIDERUP | 16h | 2018-02-17 06:00 A | 2018-02-17 22:00 A | 114 | 100% | 2017-10-04 06:03 | 2017-10-04 11:03 | 5h |  | Fitter | 5h | 5h | 343.75 | 343.75 | 343.75 |
| 116 | 5.4.13 | LS3-FITUP INSPECTION | 2.21d | 2018-02-16 06:00 A | 2018-02-17 22:00 A | 115 | 100% | 2017-10-04 11:03 | 2017-10-05 09:34 | 1d |  | Fitter | 14.5h | 14.5h | 996.88 | 996.88 | 996.88 |
| 117 | 5.4.14 | LS3-WELDING | 42h | 2018-02-16 06:00 A | 2018-02-19 16:00 A | 116 | 100% | 2017-10-05 09:34 | 2017-10-06 15:36 | 22h |  | Helper; SAW Welder | 24.5h | 24.5h | 1,637.5 | 1,637.5 | 1,637.5 |
| 118 | 5.4.15 | LS3-FLUSHGRIND | 10h | 2018-02-19 16:00 A | 2018-02-20 10:00 A | 117 | 100% | 2017-10-06 15:36 | 2017-10-07 09:36 | 10h |  | Grinder | 10h | 10h | 562.5 | 562.5 | 562.5 |
| 119 | 5.4.16 | LS3-REROLLING | 6h | 2018-02-20 10:00 A | 2018-02-20 16:00 A | 118 | 100% | 2017-10-07 09:36 | 2017-10-07 15:37 | 6h |  | Fitter; Helper | 8h | 8h | 512.5 | 512.5 | 512.5 |
| 120 | 5.4.17 | LS3-DPCHECK | 4h | 2018-02-20 16:00 A | 2018-02-20 20:00 A | 119 | 100% | 2017-10-07 15:37 | 2017-10-07 19:37 | 4h |  | Fitter | 4h | 4h | 275 | 275 | 275 |
| 121 | 5.5 | **SHELL DISH FORMING** | 18.66d | 2017-12-26 06:00 A | 2018-01-16 20:30 A |  | 100% | 2017-09-29 10:30 | 2017-10-11 15:49 | 4.85d | TEAM_2Shift_Calendar-1 |  | 87.25h | 87.25h | 5,485.94 | 5,485.94 | 5,485.94 |
| 122 | 5.5.1 | DISH PLATE MARKING | 15.98h | 2017-12-26 06:00 A | 2017-12-26 22:00 A | 41, 104 | 100% | 2017-09-29 10:30 | 2017-09-29 13:30 | 3h |  | Fitter; Helper; Plate (Cost) [0.1%] | 3h | 3h | 206.25 | 206.25 | 206.25 |
| 123 | 5.5.2 | DISH PLATE CUTTING | 15.98h | 2017-12-26 06:00 A | 2017-12-26 22:00 A | 122 | 100% | 2017-09-29 13:30 | 2017-09-29 17:31 | 4h |  | Gas Cutter; Helper | 8h | 8h | 475 | 475 | 475 |
| 124 | 5.5.3 | DISH PLATE GRINDING | 6h | 2017-12-27 06:00 A | 2017-12-27 12:00 A | 123 | 100% | 2017-09-29 17:31 | 2017-09-30 07:31 | 6h |  | Grinder | 6h | 6h | 337.5 | 337.5 | 337.5 |
| 125 | 5.5.4 | DISH FORMING | 3d | 2017-12-27 12:00 A | 2018-01-02 16:30 A | 124 | 100% | 2017-09-30 08:30 | 2017-10-07 12:00 | 3d |  |  |  |  |  |  |  |
| 126 | 5.5.5 | DISH INSPECTION | 1.1d | 2018-01-10 06:00 A | 2018-01-10 22:00 A | 125 | 100% | 2017-10-07 12:00 | 2017-10-07 19:16 | 0.5d |  | Fitter | 7.25h | 7.25h | 498.44 | 498.44 | 498.44 |
| 127 | 5.5.6 | DISH SURFACE GRINDING | 21.98h | 2018-01-10 06:00 A | 2018-01-11 12:00 A | 126 | 100% | 2017-10-07 19:16 | 2017-10-09 15:17 | 12h |  | Grinder | 12h | 12h | 675 | 675 | 675 |
| 128 | 5.5.7 | SF MARKING | 15.98h | 2018-01-10 06:00 A | 2018-01-10 22:00 A | 127 | 100% | 2017-10-09 15:17 | 2017-10-09 18:17 | 3h |  | Fitter | 3h | 3h | 206.25 | 206.25 | 206.25 |
| 129 | 5.5.8 | SF CUTTING | 4h | 2018-01-11 06:00 A | 2018-01-11 10:00 A | 128 | 100% | 2017-10-09 18:17 | 2017-10-10 06:17 | 4h |  | Gas Cutter; Helper | 8h | 8h | 475 | 475 | 475 |
| 130 | 5.5.9 | GRINDING | 15.98h | 2018-01-12 06:00 A | 2018-01-12 22:00 A | 129 | 100% | 2017-10-10 06:17 | 2017-10-10 12:17 | 6h |  | Grinder | 6h | 6h | 337.5 | 337.5 | 337.5 |
| 131 | 5.5.10 | DISH EP | 15.98h | 2018-01-12 06:00 A | 2018-01-12 22:00 A | 130 | 100% | 2017-10-10 12:17 | 2017-10-10 17:18 | 5h |  | Grinder | 5h | 5h | 281.25 | 281.25 | 281.25 |
| 132 | 5.5.11 | FINAL INSPECTION | 1d | 2018-01-16 06:00 A | 2018-01-16 20:30 A | 131 | 100% | 2017-10-10 17:18 | 2017-10-11 15:49 | 1d |  | Fitter [200%] | 29h | 29h | 1,993.75 | 1,993.75 | 1,993.75 |

Notes:
- 103: 2NOS
- 104: 3022*1613*22T
- 117: 3.53Kg/m
- 121: 2NOS
- 122: ID 1287*26T/22T
- 125: SC

| ID | WBS | Task | Duration | Start | Finish | Predecessors | Complete | Baseline start | Baseline finish | Baseline duration | Constraint | Calendar | Resources | Work | Actual work | Cost | Baseline cost | Actual cost |
| --- | --- | --- | --- | --- | --- | --- | --- | --- | --- | --- | --- | --- | --- | --- | --- | --- | --- | --- |
| 133 | 5.6 | **CHANNEL DISH FORMING** | 10.6d | 2018-02-09 22:00 A | 2018-02-22 15:45 A |  | 100% | 2017-09-29 13:30 | 2017-10-11 18:49 | 4.97d |  | TEAM_2Shift_Calendar-1 |  | 87.25h | 87.25h | 5,485.94 | 5,485.94 | 5,485.94 |
| 134 | 5.6.1 | DISH PLATE MARKING | 3h | 2018-02-09 22:00 A | 2018-02-12 09:00 A | 45, 122 | 100% | 2017-09-29 13:30 | 2017-09-29 16:31 | 3h |  |  | Fitter; Helper; Plate (Cost) [0.1%] | 3h | 3h | 206.25 | 206.25 | 206.25 |
| 135 | 5.6.2 | DISH PLATE CUTTING | 4h | 2018-02-12 09:00 A | 2018-02-12 13:00 A | 134 | 100% | 2017-09-29 16:31 | 2017-09-29 20:31 | 4h |  |  | Gas Cutter; Helper | 8h | 8h | 475 | 475 | 475 |
| 136 | 5.6.3 | DISH PLATE GRINDING | 6h | 2018-02-12 13:00 A | 2018-02-12 19:00 A | 135 | 100% | 2017-09-29 20:31 | 2017-09-30 10:31 | 6h |  |  | Grinder | 6h | 6h | 337.5 | 337.5 | 337.5 |
| 137 | 5.6.4 | DISH FORMING | 3d | 2018-02-13 08:30 A | 2018-02-19 12:00 A | 136 | 100% | 2017-09-30 10:31 | 2017-10-07 15:01 | 3d |  |  |  |  |  |  |  |  |
| 138 | 5.6.5 | DISH INSPECTION | 0.5d | 2018-02-19 12:00 A | 2018-02-19 19:15 A | 137 | 100% | 2017-10-07 15:01 | 2017-10-09 06:16 | 0.5d |  |  | Fitter | 7.25h | 7.25h | 498.44 | 498.44 | 498.44 |
| 139 | 5.6.6 | DISH SURFACE GRINDING | 12h | 2018-02-19 19:15 A | 2018-02-20 15:15 A | 138 | 100% | 2017-10-09 06:16 | 2017-10-09 18:17 | 12h |  |  | Grinder | 12h | 12h | 675 | 675 | 675 |
| 140 | 5.6.7 | SF MARKING | 3h | 2018-02-20 15:15 A | 2018-02-20 18:15 A | 139 | 100% | 2017-10-09 18:17 | 2017-10-09 21:17 | 3h |  |  | Fitter | 3h | 3h | 206.25 | 206.25 | 206.25 |
| 141 | 5.6.8 | SF CUTTING | 4h | 2018-02-20 18:15 A | 2018-02-21 06:15 A | 140 | 100% | 2017-10-09 21:17 | 2017-10-10 09:17 | 4h |  |  | Gas Cutter; Helper | 8h | 8h | 475 | 475 | 475 |
| 142 | 5.6.9 | GRINDING | 6h | 2018-02-21 06:15 A | 2018-02-21 12:15 A | 141 | 100% | 2017-10-10 09:17 | 2017-10-10 15:18 | 6h |  |  | Grinder | 6h | 6h | 337.5 | 337.5 | 337.5 |
| 143 | 5.6.10 | DISH EP | 5h | 2018-02-21 12:15 A | 2018-02-21 17:15 A | 142 | 100% | 2017-10-10 15:18 | 2017-10-10 20:18 | 5h |  |  | Grinder | 5h | 5h | 281.25 | 281.25 | 281.25 |
| 144 | 5.6.11 | FINAL INSPECTION | 1d | 2018-02-21 17:15 A | 2018-02-22 15:45 A | 143 | 100% | 2017-10-10 20:18 | 2017-10-11 18:49 | 1d |  |  | Fitter [200%] | 29h | 29h | 1,993.75 | 1,993.75 | 1,993.75 |
| 145 | 5.7 | **PASS PARTITION PLATE WELDING** | 7.66d | 2018-03-15 06:00 A | 2018-03-22 21:00 A |  | 100% | 2017-09-29 16:31 | 2017-10-11 15:08 | 4.8d |  | TEAM_2Shift_Calendar-1 |  | 73h | 73h | 4,687.5 | 3,656.25 | 4,687.5 |
| 146 | 5.7.1 | PP PLATE MARKING | 3h | 2018-03-15 06:00 A | 2018-03-15 09:00 A | 50, 134 | 100% | 2017-09-29 16:31 | 2017-09-29 19:31 | 3h |  |  | Fitter; Helper; Plate (Cost) [0.1%] | 3h | 3h | 206.25 | 206.25 | 206.25 |
| 147 | 5.7.2 | CUTTING | 4h | 2018-03-15 11:30 A | 2018-03-15 15:30 A | 146 | 100% | 2017-09-29 19:31 | 2017-09-30 07:31 | 4h |  |  | Gas Cutter | 4h | 4h | 275 | 275 | 275 |
| 148 | 5.7.3 | GRINDING | 4h | 2018-03-15 15:30 A | 2018-03-15 19:30 A | 147 | 100% | 2017-09-30 07:31 | 2017-09-30 11:31 | 4h |  |  | Grinder | 4h | 4h | 225 | 225 | 225 |
| 149 | 5.7.4 | WELDING ONTO CHANNEL | 43h | 2018-03-19 06:00 A | 2018-03-21 17:00 A | 65, 148 | 100% | 2017-10-07 16:05 | 2017-10-10 11:06 | 27h | start no earlier than 2018-03-20 06:00 |  | SAW Welder; Helper [200%] | 42h | 42h | 2,887.5 | 1,856.25 | 2,887.5 |
| 150 | 5.7.5 | FLUSH GRIND | 15h | 2018-03-21 17:00 A | 2018-03-22 16:00 A | 149 | 100% | 2017-10-10 11:06 | 2017-10-11 10:07 | 15h |  |  | Grinder | 15h | 15h | 843.75 | 843.75 | 843.75 |
| 151 | 5.7.6 | CLEANING | 5h | 2018-03-22 16:00 A | 2018-03-22 21:00 A | 150 | 100% | 2017-10-11 10:07 | 2017-10-11 15:08 | 5h |  |  | Helper | 5h | 5h | 250 | 250 | 250 |
| 152 | 5.8 | **NOZZLE FABRICATION(PIPE)** | 6.24d | 2018-02-22 06:00 A | 2018-03-01 16:30 A |  | 100% | 2017-09-28 16:00 | 2017-10-04 13:33 | 1.49d |  | TEAM_2Shift_Calendar-1 |  | 74.67h | 74.67h | 2,658.56 | 2,658.33 | 2,658.56 |
| 153 | 5.8.1 | PIPE MARKING | 16h | 2018-02-22 06:00 A | 2018-02-22 22:00 A | 47 | 100% | 2017-09-28 16:00 | 2017-09-28 19:00 | 3h |  |  | Fitter; Helper; Pipe (Cost) [0.1%] | 5.67h | 5.67h | 333.56 | 333.33 | 333.56 |
| 154 | 5.8.2 | CUTTING | 3h | 2018-02-23 06:00 A | 2018-02-23 09:00 A | 153 | 100% | 2017-09-28 19:00 | 2017-09-28 22:00 | 3h |  |  | Gas Cutter; Helper | 6h | 6h | 356.25 | 356.25 | 356.25 |
| 155 | 5.8.3 | EDGE PREPARATION | 4h | 2018-02-23 09:00 A | 2018-02-23 13:00 A | 154 | 100% | 2017-09-29 06:00 | 2017-09-29 10:00 | 4h |  |  | Grinder | 4h | 4h | 225 | 225 | 225 |
| 156 | 5.8.4 | MACHINING | 2.17d | 2018-02-23 13:00 A | 2018-02-27 12:30 A | 155 | 100% | 2017-09-29 10:00 | 2017-10-03 09:32 | 2d |  |  | Lathe | 29h | 29h |  |  |  |
| 157 | 5.8.5 | PROFILE MARKING | 5h | 2018-02-27 12:30 A | 2018-02-27 17:30 A | 156 | 100% | 2017-10-03 09:32 | 2017-10-03 14:33 | 5h |  |  | Fitter; Helper | 9h | 9h | 525 | 525 | 525 |
| 158 | 5.8.6 | PROFILE CUTTING | 17.5h | 2018-02-28 06:00 A | 2018-03-01 07:30 A | 157 | 100% | 2017-10-03 14:33 | 2017-10-03 20:33 | 6h |  |  | Gas Cutter; Helper | 12h | 12h | 712.5 | 712.5 | 712.5 |
| 159 | 5.8.7 | PROFILE GRINDING | 5h | 2018-03-01 07:30 A | 2018-03-01 12:30 A | 158 | 100% | 2017-10-03 20:33 | 2017-10-04 09:33 | 5h |  |  | Grinder | 5h | 5h | 281.25 | 281.25 | 281.25 |
| 160 | 5.8.8 | EDEGE PREPARATION | 4h | 2018-03-01 12:30 A | 2018-03-01 16:30 A | 159 | 100% | 2017-10-04 09:33 | 2017-10-04 13:33 | 4h |  |  | Grinder | 4h | 4h | 225 | 225 | 225 |

Notes:
- 133: 2NOS
- 134: ID 1284*24T/20T
- 137: SC
- 145: 2NOS
- 152: 15.95T-8NOS

| ID | WBS | Task | Type | Duration | Start | Finish | Predecessors | Complete | Baseline start | Baseline finish | Baseline duration | Calendar | Resources | Work | Actual work | Cost | Baseline cost | Actual cost |
| --- | --- | --- | --- | --- | --- | --- | --- | --- | --- | --- | --- | --- | --- | --- | --- | --- | --- | --- |
| 161 | 5.9 | **NOZZLE FABRICATION(PIPE)** |  | 1.29d | 2018-02-23 06:00 A | 2018-02-26 08:45 A |  | 100% | 2017-09-28 19:00 | 2017-09-29 21:46 | 0d | TEAM_2Shift_Calendar-1 |  | 21.25h | 21.25h | 818.74 | 818.75 | 818.74 |
| 162 | 5.9.1 | PIPE MARKING |  | 1h | 2018-02-23 06:00 A | 2018-02-23 07:00 A | 47, 153 | 100% | 2017-09-28 19:00 | 2017-09-28 20:00 | 1h |  | Fitter; Helper; Pipe (Cost) | 2h | 2h | 118.75 | 118.75 | 118.75 |
| 163 | 5.9.2 | CUTTING |  | 1.5h | 2018-02-23 07:00 A | 2018-02-23 08:30 A | 162 | 100% | 2017-09-28 20:00 | 2017-09-28 21:30 | 1.5h |  | Gas Cutter; Helper | 3h | 3h | 178.12 | 178.12 | 178.12 |
| 164 | 5.9.3 | EDGE PREPARATION |  | 1h | 2018-02-23 08:30 A | 2018-02-23 09:30 A | 163 | 100% | 2017-09-28 21:30 | 2017-09-29 06:30 | 1h |  | Grinder | 1h | 1h | 56.25 | 56.25 | 56.25 |
| 165 | 5.9.4 | MACHINING |  | 0.5d | 2018-02-23 09:30 A | 2018-02-23 19:15 A | 164 | 100% | 2017-09-29 06:30 | 2017-09-29 16:16 | 0.5d |  | Lathe | 7.25h | 7.25h |  |  |  |
| 166 | 5.9.5 | PROFILE MARKING |  | 1h | 2018-02-23 19:15 A | 2018-02-23 20:15 A | 165 | 100% | 2017-09-29 16:16 | 2017-09-29 17:16 | 1h |  | Fitter; Helper | 2h | 2h | 118.75 | 118.75 | 118.75 |
| 167 | 5.9.6 | PROFILE CUTTING |  | 1.5h | 2018-02-23 20:15 A | 2018-02-23 21:45 A | 166 | 100% | 2017-09-29 17:16 | 2017-09-29 18:46 | 1.5h |  | Gas Cutter; Helper | 3h | 3h | 178.12 | 178.12 | 178.12 |
| 168 | 5.9.7 | PROFILE GRINDING |  | 2h | 2018-02-23 21:45 A | 2018-02-26 07:45 A | 167 | 100% | 2017-09-29 18:46 | 2017-09-29 20:46 | 2h |  | Grinder | 2h | 2h | 112.5 | 112.5 | 112.5 |
| 169 | 5.9.8 | EDEGE PREPARATION |  | 1h | 2018-02-26 07:45 A | 2018-02-26 08:45 A | 168 | 100% | 2017-09-29 20:46 | 2017-09-29 21:46 | 1h |  | Grinder | 1h | 1h | 56.25 | 56.25 | 56.25 |
| 170 | 5.10 | **TUBESHEET FABRICATION** |  | 13.48d | 2017-09-29 19:31 A | 2017-10-17 06:58 A |  | 100% | 2017-09-29 19:31 | 2017-10-17 06:58 | 6.62d | TEAM_2Shift_Calendar-1 |  | 202.75h | 202.75h | 12,215.64 | 12,215.62 | 12,215.64 |
| 171 | 5.10.1 | PLATE MARKING |  | 3h | 2017-09-29 19:31 A | 2017-09-30 06:31 A | 49, 146 | 100% | 2017-09-29 19:31 | 2017-09-30 06:31 | 3h |  | Fitter; Helper; Forging Non-Std (Cost) | 3h | 3h | 206.25 | 206.25 | 206.25 |
| 172 | 5.10.2 | STAMPING |  | 2h | 2017-09-30 06:31 A | 2017-09-30 08:31 A | 171 | 100% | 2017-09-30 06:31 | 2017-09-30 08:31 | 2h |  | Fitter | 2h | 2h | 137.5 | 137.5 | 137.5 |
| 173 | 5.10.3 | PLASMA ARC CUTTING |  | 5h | 2017-09-30 08:31 A | 2017-09-30 13:31 A | 172 | 100% | 2017-09-30 08:31 | 2017-09-30 13:31 | 5h |  | Gas Cutter; Helper | 10h | 10h | 593.75 | 593.75 | 593.75 |
| 174 | 5.10.4 | GRINDING |  | 7h | 2017-09-30 13:31 A | 2017-09-30 20:32 A | 173 | 100% | 2017-09-30 13:31 | 2017-09-30 20:32 | 7h |  | Grinder | 7h | 7h | 393.75 | 393.75 | 393.75 |
| 175 | 5.10.5 | INSPECTION |  | 1d | 2017-09-30 20:32 A | 2017-10-03 19:03 A | 174 | 100% | 2017-09-30 20:32 | 2017-10-03 19:03 | 1d |  | Fitter | 14.5h | 14.5h | 996.88 | 996.88 | 996.88 |
| 176 | 5.10.6 | MACHINING |  | 1.5d | 2017-10-03 19:03 A | 2017-10-05 08:49 A | 175 | 100% | 2017-10-03 19:03 | 2017-10-05 08:49 | 1.5d |  | Lathe | 21.75h | 21.75h |  |  |  |
| 177 | 5.10.7 | HOLES MARKING |  | 40h | 2017-10-05 08:49 A | 2017-10-07 16:52 A | 176 | 100% | 2017-10-05 08:49 | 2017-10-07 16:52 | 40h |  | Fitter | 40h | 40h | 2,750 | 2,750 | 2,750 |
| 178 | 5.10.8 | DRILLING |  | 80h | 2017-10-07 16:52 A | 2017-10-13 16:57 A | 177 | 100% | 2017-10-07 16:52 | 2017-10-13 16:57 | 80h |  | Driller | 80h | 80h | 5,500 | 5,500 | 5,500 |
| 179 | 5.10.9 | EXPANSION GROOVING | milestone | 0h | 2017-10-13 16:57 A | 2017-10-13 16:57 A | 178 | 100% | 2017-10-13 16:57 | 2017-10-13 16:57 | 0h |  | Fitter [200%]; Helper |  |  |  |  |  |
| 180 | 5.10.10 | TIE ROD HOLE MARKING |  | 2.5h | 2017-10-13 16:57 A | 2017-10-13 19:27 A | 179 | 100% | 2017-10-13 16:57 | 2017-10-13 19:27 | 2.5h |  | Fitter; Helper | 5h | 5h | 296.88 | 296.88 | 296.88 |
| 181 | 5.10.11 | TIE ROD HOLE DRILLING |  | 5h | 2017-10-13 19:27 A | 2017-10-16 08:27 A | 180 | 100% | 2017-10-13 19:27 | 2017-10-16 08:27 | 5h |  | Driller | 5h | 5h | 343.75 | 343.75 | 343.75 |
| 182 | 5.10.12 | FINAL INSPECTION |  | 1d | 2017-10-16 08:27 A | 2017-10-17 06:58 A | 181 | 100% | 2017-10-16 08:27 | 2017-10-17 06:58 | 1d |  | Fitter | 14.5h | 14.5h | 996.88 | 996.88 | 996.88 |
| 183 | 5.11 | **SUPPORT PLATE PREPARATION** |  | 9.03d | 2017-09-30 06:31 A | 2017-10-11 09:31 A |  | 100% | 2017-09-30 06:31 | 2017-10-11 09:39 | 4.49d | TEAM_2Shift_Calendar-1 |  | 165.5h | 165.5h | 8,268.75 | 8,268.75 | 8,268.75 |
| 184 | 5.11.1 | PLATE MARKING |  | 2h | 2017-09-30 06:31 A | 2017-09-30 08:31 A | 53, 171 | 100% | 2017-09-30 06:31 | 2017-09-30 08:31 | 2h |  | Fitter; Helper; Plate (Cost) [0.1%] | 2h | 2h | 100 | 100 | 100 |
| 185 | 5.11.2 | CUTTING |  | 3h | 2017-09-30 08:31 A | 2017-09-30 11:31 A | 184 | 100% | 2017-09-30 08:31 | 2017-09-30 11:31 | 3h |  | Gas Cutter; Helper | 6h | 6h | 356.25 | 356.25 | 356.25 |
| 186 | 5.11.3 | GRINDING |  | 4h | 2017-09-30 11:31 A | 2017-09-30 15:31 A | 185 | 100% | 2017-09-30 11:31 | 2017-09-30 15:32 | 4h |  | Grinder; Helper | 8h | 8h | 425 | 425 | 425 |
| 187 | 5.11.4 | AXIS LINE MARKING |  | 1h | 2017-09-30 15:31 A | 2017-09-30 16:31 A | 186 | 100% | 2017-09-30 15:32 | 2017-09-30 16:32 | 1h |  | Fitter | 1h | 1h | 68.75 | 68.75 | 68.75 |
| 188 | 5.11.5 | SLOT MARKING |  | 1h | 2017-09-30 16:31 A | 2017-09-30 17:31 A | 187 | 100% | 2017-09-30 16:32 | 2017-09-30 17:32 | 1h |  | Fitter; Helper | 2h | 2h | 118.75 | 118.75 | 118.75 |
| 189 | 5.11.6 | SLOT CUTTING |  | 1.5h | 2017-09-30 17:31 A | 2017-09-30 19:01 A | 188 | 100% | 2017-09-30 17:32 | 2017-09-30 19:02 | 1.5h |  | Gas Cutter; Helper | 3h | 3h | 178.12 | 178.12 | 178.12 |
| 190 | 5.11.7 | DRILLING |  | 27h | 2017-09-30 19:01 A | 2017-10-04 14:01 A | 189 | 100% | 2017-09-30 19:02 | 2017-10-04 14:04 | 27h |  | Driller | 27h | 27h | 1,856.25 | 1,856.25 | 1,856.25 |
| 191 | 5.11.8 | DRILLING INSPECTION |  | 1d | 2017-10-04 14:01 A | 2017-10-05 12:31 A | 190 | 100% | 2017-10-04 14:04 | 2017-10-05 12:34 | 1d |  | Driller | 14.5h | 14.5h | 996.88 | 996.88 | 996.88 |
| 192 | 5.11.9 | OD MACHINING |  | 30h | 2017-10-05 12:31 A | 2017-10-07 10:31 A | 191 | 100% | 2017-10-05 12:34 | 2017-10-07 10:36 | 30h |  | Lathe | 30h | 30h |  |  |  |
| 193 | 5.11.10 | GRINDING |  | 4h | 2017-10-07 10:31 A | 2017-10-07 14:31 A | 192 | 100% | 2017-10-07 10:36 | 2017-10-07 14:37 | 4h |  | Grinder | 4h | 4h | 225 | 225 | 225 |
| 194 | 5.11.11 | HOLE CHAMFERING |  | 30h | 2017-10-07 14:31 A | 2017-10-10 12:31 A | 193 | 100% | 2017-10-07 14:37 | 2017-10-10 12:38 | 30h |  | Fitter [200%]; Helper | 47h | 47h | 2,668.75 | 2,668.75 | 2,668.75 |
| 195 | 5.11.12 | TIE ROD HOLE MARKING |  | 2h | 2017-10-10 12:31 A | 2017-10-10 14:31 A | 194 | 100% | 2017-10-10 12:38 | 2017-10-10 14:39 | 2h |  | Fitter; Helper | 4h | 4h | 237.5 | 237.5 | 237.5 |
| 196 | 5.11.13 | TIE ROD HOLE DRILLING |  | 4h | 2017-10-10 14:31 A | 2017-10-10 18:31 A | 195 | 100% | 2017-10-10 14:39 | 2017-10-10 18:39 | 4h |  | Driller | 4h | 4h | 275 | 275 | 275 |
| 197 | 5.11.14 | NOTCH FOR SLIDING STRIP |  | 3h | 2017-10-10 18:31 A | 2017-10-10 21:31 A | 196 | 100% | 2017-10-10 18:39 | 2017-10-10 21:39 | 3h |  | Gas Cutter; Helper; Fitter | 9h | 9h | 562.5 | 562.5 | 562.5 |
| 198 | 5.11.15 | CLEANING |  | 4h | 2017-10-10 21:31 A | 2017-10-11 09:31 A | 197 | 100% | 2017-10-10 21:39 | 2017-10-11 09:39 | 4h |  | Helper | 4h | 4h | 200 | 200 | 200 |

Notes:
- 161: 16.6-2NOS
- 170: 2NOS
- 171: DIA1064*175T
- 177: 468HOLES*2
- 180: 13NOS*2
- 183: 2NOS
- 184: DIA935.2*10T
- 190: 424HOLES

| ID | WBS | Task | Duration | Start | Finish | Predecessors | Complete | Baseline start | Baseline finish | Baseline duration | Constraint | Calendar | Resources | Work | Actual work | Cost | Baseline cost | Actual cost |
| --- | --- | --- | --- | --- | --- | --- | --- | --- | --- | --- | --- | --- | --- | --- | --- | --- | --- | --- |
| 199 | 5.12 | **BAFFLE PLATE PREPARATION** | 127.79d | 2017-09-30 08:31 A | 2018-02-28 21:30 A |  | 100% | 2017-09-30 08:31 | 2017-11-09 12:31 | 16.83d |  | TEAM_2Shift_Calendar-1 |  | 2015.82h | 2015.82h | 103,006.47 | 34,540.62 | 103,006.47 |
| 200 | 5.12.1 | PLATE MARKING | 8h | 2017-09-30 08:31 A | 2017-09-30 16:32 A | 184, 54 | 100% | 2017-09-30 08:31 | 2017-09-30 16:32 | 8h |  |  | Fitter; Helper; Plate (Cost) [0.1%] | 16h | 16h | 950 | 950 | 950 |
| 201 | 5.12.2 | CUTTING | 7h | 2017-09-30 16:32 A | 2017-10-03 07:32 A | 200 | 100% | 2017-09-30 16:32 | 2017-10-03 07:32 | 7h |  |  | Gas Cutter; Helper | 14h | 14h | 831.25 | 831.25 | 831.25 |
| 202 | 5.12.3 | GRINDING | 9h | 2017-10-03 07:32 A | 2017-10-03 16:33 A | 201 | 100% | 2017-10-03 07:32 | 2017-10-03 16:33 | 9h |  |  | Grinder; Helper | 18h | 18h | 956.25 | 956.25 | 956.25 |
| 203 | 5.12.4 | AXIS LINE MARKING | 5h | 2017-10-03 16:33 A | 2017-10-03 21:33 A | 202 | 100% | 2017-10-03 16:33 | 2017-10-03 21:33 | 5h |  |  | Fitter | 5h | 5h | 343.75 | 343.75 | 343.75 |
| 204 | 5.12.5 | STACKKING | 6h | 2017-10-03 21:33 A | 2017-10-04 11:33 A | 203 | 100% | 2017-10-03 21:33 | 2017-10-04 11:33 | 6h |  |  | Helper | 6h | 6h | 300 | 300 | 300 |
| 205 | 5.12.6 | DRILLING | 125h | 2017-10-04 11:33 A | 2017-10-13 08:41 A | 204 | 100% | 2017-10-04 11:33 | 2017-10-13 08:41 | 125h |  |  | Driller | 125h | 125h | 8,593.75 | 8,593.75 | 8,593.75 |
| 206 | 5.12.7 | DRILLING INSPECTION | 1d | 2017-10-13 08:41 A | 2017-10-16 07:11 A | 205 | 100% | 2017-10-13 08:41 | 2017-10-16 07:12 | 1d |  |  | Driller | 14.5h | 14.5h | 996.88 | 996.88 | 996.88 |
| 207 | 5.12.8 | OD MACHINING | 125h | 2017-10-16 07:11 A | 2017-10-25 20:11 A | 206 | 100% | 2017-10-16 07:12 | 2017-10-25 20:20 | 125h |  |  | Lathe | 125h | 125h |  |  |  |
| 208 | 5.12.9 | DE-STACKING | 6h | 2017-10-25 20:11 A | 2017-10-26 10:11 A | 207 | 100% | 2017-10-25 20:20 | 2017-10-26 10:20 | 6h |  |  | Helper | 6h | 6h | 300 | 300 | 300 |
| 209 | 5.12.10 | GRIND THE STACKS | 9h | 2017-10-26 10:11 A | 2017-10-26 19:11 A | 208 | 100% | 2017-10-26 10:20 | 2017-10-26 19:21 | 9h |  |  | Grinder | 9h | 9h | 506.25 | 506.25 | 506.25 |
| 210 | 5.12.11 | HOLE CHAMFERING | 125h | 2017-10-26 19:11 A | 2017-11-06 16:11 A | 209 | 100% | 2017-10-26 19:21 | 2017-11-06 16:29 | 125h |  |  | Fitter [200%]; Helper | 257h | 257h | 17,537.5 | 17,537.5 | 17,537.5 |
| 211 | 5.12.12 | NUMERING | 4h | 2017-11-06 16:11 A | 2017-11-06 20:11 A | 210 | 100% | 2017-11-06 16:29 | 2017-11-06 20:29 | 4h |  |  | Fitter; Helper | 8h | 8h | 475 | 475 | 475 |
| 212 | 5.12.13 | SUPPORT PLATES ASSY | 3h | 2017-11-06 20:11 A | 2017-11-07 07:11 A | 211 | 100% | 2017-11-06 20:29 | 2017-11-07 07:29 | 3h |  |  | Fitter; Helper | 6h | 6h | 356.25 | 356.25 | 356.25 |
| 213 | 5.12.14 | HOLE MATCHING | 1d | 2017-11-07 07:11 A | 2017-11-07 21:41 A | 212 | 100% | 2017-11-07 07:29 | 2017-11-07 22:00 | 1d |  |  | Fitter | 14.5h | 14.5h | 996.88 | 996.88 | 996.88 |
| 214 | 5.12.15 | HOLES DRILLING IF REQD | 1d | 2017-11-07 21:41 A | 2017-11-08 20:11 A | 213 | 100% | 2017-11-08 06:00 | 2017-11-08 20:31 | 1d |  |  | Driller | 14.5h | 14.5h | 996.88 | 996.88 | 996.88 |
| 215 | 5.12.16 | CLEANING | 1377.32h | 2017-11-08 20:11 A | 2018-02-28 21:30 A | 214 | 100% | 2017-11-08 20:31 | 2017-11-09 12:31 | 8h | finish no later than 2018-02-28 21:30 |  | Helper | 1377.32h | 1377.32h | 68,865.83 | 400 | 68,865.83 |
| 216 | 5.13 | **SLIDING STRIP** | 2d | 2018-02-28 06:00 A | 2018-03-01 19:00 A |  | 100% | 2017-09-30 16:32 | 2017-10-03 15:33 | 0.48d |  | TEAM_2Shift_Calendar-1 |  | 22h | 22h | 1,456.25 | 1,456.25 | 1,456.25 |
| 217 | 5.13.1 | STRIP MARKING | 16h | 2018-02-28 06:00 A | 2018-02-28 22:00 A | 61, 200 | 100% | 2017-09-30 16:32 | 2017-09-30 18:32 | 2h |  |  | Fitter [200%]; Plate (Cost) [0.1%] | 4h | 4h | 275 | 275 | 275 |
| 218 | 5.13.2 | STRIP CUTTING | 2h | 2018-03-01 06:00 A | 2018-03-01 08:00 A | 217 | 100% | 2017-09-30 18:32 | 2017-09-30 20:32 | 2h |  |  | Gas Cutter; Helper | 3h | 3h | 187.5 | 187.5 | 187.5 |
| 219 | 5.13.3 | STRIP GRINDING | 3h | 2018-03-01 08:00 A | 2018-03-01 11:00 A | 218 | 100% | 2017-09-30 20:32 | 2017-10-03 07:32 | 3h |  |  | Grinder | 3h | 3h | 168.75 | 168.75 | 168.75 |
| 220 | 5.13.4 | STRIP BEND REMEOVAL | 4h | 2018-03-01 11:00 A | 2018-03-01 15:00 A | 219 | 100% | 2017-10-03 07:32 | 2017-10-03 11:32 | 4h |  |  | Fitter [200%] | 8h | 8h | 550 | 550 | 550 |
| 221 | 5.13.5 | STRIP MATCHING | 4h | 2018-03-01 15:00 A | 2018-03-01 19:00 A | 220 | 100% | 2017-10-03 11:32 | 2017-10-03 15:33 | 4h |  |  | Fitter | 4h | 4h | 275 | 275 | 275 |
| 222 | 5.14 | **TIE ROD PREPARATION** | 7.86d | 2018-01-25 06:00 A | 2018-02-05 08:00 A |  | 100% | 2017-09-30 18:32 | 2017-10-06 07:35 | 1.66d |  | TEAM_2Shift_Calendar-1 |  | 54.5h | 54.5h | 1,678.12 | 1,678.12 | 1,678.12 |
| 223 | 5.14.1 | TIE ROD MARKING | 16h | 2018-01-25 06:00 A | 2018-01-25 22:00 A | 62, 217 | 100% | 2017-09-30 18:32 | 2017-10-03 06:32 | 4h |  |  | Fitter; Helper; Rod (Cost) [0.1%] | 5.5h | 5.5h | 303.12 | 303.12 | 303.12 |
| 224 | 5.14.2 | TIE ROD CUTTING | 5h | 2018-01-25 22:00 A | 2018-01-29 11:00 A | 223 | 100% | 2017-10-03 06:32 | 2017-10-03 11:32 | 5h |  |  | Gas Cutter; Helper | 5h | 5h | 343.75 | 343.75 | 343.75 |
| 225 | 5.14.3 | LENGTH JOINT WELDING IF REQD | 21h | 2018-01-30 06:00 A | 2018-01-31 11:00 A | 224 | 100% | 2017-10-03 11:32 | 2017-10-03 21:33 | 10h |  |  | SAW Welder; Helper | 10h | 10h | 687.5 | 687.5 | 687.5 |
| 226 | 5.14.4 | THREAD MC | 2.83d | 2018-01-31 11:00 A | 2018-02-02 20:00 A | 225 | 100% | 2017-10-03 21:33 | 2017-10-05 18:35 | 2d |  |  | Lathe | 29h | 29h |  |  |  |
| 227 | 5.14.5 | CLEANING | 18h | 2018-02-03 06:00 A | 2018-02-05 08:00 A | 226 | 100% | 2017-10-05 18:35 | 2017-10-06 07:35 | 5h |  |  | Fitter | 5h | 5h | 343.75 | 343.75 | 343.75 |

Notes:
- 199: 12NOS
- 200: DIA935.2*8T
- 216: 4NOS
- 222: 26NOS
- 223: DIA12*3680Lg

| ID | WBS | Task | Type | Duration | Start | Finish | Predecessors | Complete | Baseline start | Baseline finish | Baseline duration | Calendar | Resources | Work | Actual work | Cost | Baseline cost | Actual cost |
| --- | --- | --- | --- | --- | --- | --- | --- | --- | --- | --- | --- | --- | --- | --- | --- | --- | --- | --- |
| 228 | 5.15 | **SPACER TUBE PREPARATION** |  | 6.9d | 2018-01-29 06:00 A | 2018-02-05 10:00 A |  | 100% | 2017-10-03 06:32 | 2017-10-10 10:38 | 3.46d | TEAM_2Shift_Calendar-1 |  | 102.5h | 102.5h | 2,834.38 | 2,834.38 | 2,834.38 |
| 229 | 5.15.1 | TUBE MARKING |  | 12h | 2018-01-29 06:00 A | 2018-01-29 18:00 A | 62, 223 | 100% | 2017-10-03 06:32 | 2017-10-03 18:33 | 12h |  | Fitter; Helper; Tube (Cost) [0.1%] | 14.5h | 14.5h | 771.88 | 771.88 | 771.88 |
| 230 | 5.15.2 | TUBE CUTTING |  | 15h | 2018-01-29 18:00 A | 2018-01-30 17:00 A | 229 | 100% | 2017-10-03 18:33 | 2017-10-04 17:34 | 15h |  | Gas Cutter; Helper | 15h | 15h | 1,031.25 | 1,031.25 | 1,031.25 |
| 231 | 5.15.3 | TUBE M/C |  | 4d | 2018-01-30 17:00 A | 2018-02-03 11:00 A | 230 | 100% | 2017-10-04 17:34 | 2017-10-09 11:37 | 4d |  | Lathe | 58h | 58h |  |  |  |
| 232 | 5.15.4 | CLEANING |  | 15h | 2018-02-03 11:00 A | 2018-02-05 10:00 A | 231 | 100% | 2017-10-09 11:37 | 2017-10-10 10:38 | 15h |  | Fitter | 15h | 15h | 1,031.25 | 1,031.25 | 1,031.25 |
| 233 | 5.16 | **CS1-FITUP & WELDING** |  | 11.72d | 2018-02-14 06:00 A | 2018-02-27 16:00 A |  | 100% | 2017-10-10 16:00 | 2017-10-27 17:11 | 7.25d | TEAM_2Shift_Calendar-1 |  | 246h | 246h | 13,353.13 | 13,403.12 | 13,353.13 |
| 234 | 5.16.1 | SHELL LS2+LS3 READY |  | 6h | 2018-02-16 16:00 A | 2018-02-16 22:00 A | 84 | 100% | 2017-10-10 16:00 | 2017-10-10 22:00 | 6h |  | Helper; Plate (Cost) [0.1%] | 6h | 6h | 300 | 300 | 300 |
| 235 | 5.16.2 | SHELL EP CORRECTION |  | 16h | 2018-02-16 06:00 A | 2018-02-16 22:00 A | 234 | 100% | 2017-10-11 06:00 | 2017-10-11 11:00 | 5h |  | Grinder [200%]; Helper | 12h | 12h | 662.5 | 662.5 | 662.5 |
| 236 | 5.16.3 | CS1-FITUP |  | 10h | 2018-02-17 06:00 A | 2018-02-17 16:00 A | 235 | 100% | 2017-10-11 11:00 | 2017-10-11 21:01 | 10h |  | Fitter [200%]; Helper | 13h | 13h | 706.25 | 706.25 | 706.25 |
| 237 | 5.16.4 | CS1-FITUP INSPECTION |  | 1d | 2018-02-17 16:00 A | 2018-02-19 14:30 A | 236 | 100% | 2017-10-11 21:01 | 2017-10-12 19:32 | 1d |  | Fitter; Helper | 29h | 29h | 1,721.88 | 1,721.88 | 1,721.88 |
| 238 | 5.16.5 | CS1-WELDING |  | 80h | 2018-02-14 06:00 A | 2018-02-19 22:00 A | 237 | 100% | 2017-10-12 19:32 | 2017-10-17 21:35 | 50h |  | SAW Welder [200%]; Helper | 55h | 55h | 2,843.75 | 2,843.75 | 2,843.75 |
| 239 | 5.16.6 | CS1-FLUSHGRIND |  | 26h | 2018-02-20 06:00 A | 2018-02-21 16:00 A | 238 | 100% | 2017-10-17 21:35 | 2017-10-20 09:36 | 20h |  | Grinder | 20h | 20h | 1,125 | 1,125 | 1,125 |
| 240 | 5.16.7 | CS1-DPCHECK |  | 16h | 2018-02-20 06:00 A | 2018-02-20 22:00 A | 239 | 100% | 2017-10-20 09:36 | 2017-10-20 14:37 | 5h |  | Fitter | 5h | 5h | 343.75 | 343.75 | 343.75 |
| 241 | 5.16.8 | CS1-INSIDE WELDING |  | 80h | 2018-02-14 06:00 A | 2018-02-19 22:00 A | 240 | 100% | 2017-10-20 14:37 | 2017-10-24 16:40 | 50h |  | SAW Welder [200%]; Helper | 50h | 50h | 2,500 | 2,500 | 2,500 |
| 242 | 5.16.9 | CS1-DRESSUP |  | 56h | 2018-02-21 06:00 A | 2018-02-24 17:00 A | 241 | 100% | 2017-10-24 16:40 | 2017-10-25 20:41 | 20h |  | Grinder [200%]; Helper | 46h | 46h | 2,462.5 | 2,856.25 | 2,462.5 |
| 243 | 5.16.10 | CS1-DPCHECK |  | 24h | 2018-02-19 06:00 A | 2018-02-24 17:00 A | 242 | 100% | 2017-10-25 20:41 | 2017-10-26 09:41 | 5h |  | Fitter | 10h | 10h | 687.5 | 343.75 | 687.5 |
| 244 | 5.16.11 | CS1-RT |  | 1d | 2018-02-26 08:30 A | 2018-02-27 16:00 A | 243 | 100% | 2017-10-26 09:41 | 2017-10-27 17:11 | 1d |  |  |  |  |  |  |  |
| 245 | 5.17 | **CS2-FITUP & WELDING** |  | 16.14d | 2018-02-15 06:00 A | 2018-03-05 16:00 A |  | 100% | 2017-10-27 17:11 | 2017-11-15 09:22 | 7.25d | TEAM_2Shift_Calendar-1 |  | 453.5h | 453.5h | 27,606.26 | 28,418.75 | 27,606.26 |
| 246 | 5.17.1 | SHELL CS1+SHELL DISH |  | 16h | 2018-02-15 06:00 A | 2018-02-15 22:00 A | 233, 121 | 100% | 2017-10-27 17:11 | 2017-10-30 07:11 | 6h |  | Helper; Plate (Cost) [0.1%] | 6h | 6h | 300 | 300 | 300 |
| 247 | 5.17.2 | SHELL EP CORRECTION | milestone | 0h | 2018-02-15 22:00 A | 2018-02-15 22:00 A | 246 | 100% | 2017-10-30 07:11 | 2017-10-30 12:11 | 5h |  | Grinder [200%]; Helper |  |  |  | 812.5 |  |
| 248 | 5.17.3 | CS2-FITUP |  | 26h | 2018-02-16 06:00 A | 2018-02-17 16:00 A | 247 | 100% | 2017-10-30 12:11 | 2017-10-31 06:12 | 10h |  | Fitter [200%]; Helper | 28.5h | 28.5h | 1,771.88 | 1,771.88 | 1,771.88 |
| 249 | 5.17.4 | CS2-FITUP INSPECTION |  | 0.45d | 2018-02-17 16:00 A | 2018-02-19 14:30 A | 248 | 100% | 2017-10-31 06:12 | 2017-10-31 20:43 | 1d |  | Fitter; Helper | 29h | 29h | 1,721.88 | 1,721.88 | 1,721.88 |
| 250 | 5.17.5 | CS2-WELDING |  | 50h | 2018-02-19 14:30 A | 2018-02-22 16:30 A | 249 | 100% | 2017-10-31 20:43 | 2017-11-04 06:46 | 50h |  | SAW Welder [200%]; Helper | 150h | 150h | 9,375 | 9,375 | 9,375 |
| 251 | 5.17.6 | CS2-FLUSHGRIND |  | 20h | 2018-02-22 16:30 A | 2018-02-23 20:30 A | 250 | 100% | 2017-11-04 06:46 | 2017-11-06 10:47 | 20h |  | Grinder | 20h | 20h | 1,125 | 1,125 | 1,125 |
| 252 | 5.17.7 | CS2-DPCHECK |  | 5h | 2018-02-23 20:30 A | 2018-02-26 09:30 A | 251 | 100% | 2017-11-06 10:47 | 2017-11-06 15:48 | 5h |  | Fitter | 5h | 5h | 343.75 | 343.75 | 343.75 |
| 253 | 5.17.8 | CS2-INSIDE WELDING |  | 50h | 2018-02-26 09:30 A | 2018-03-01 11:30 A | 252 | 100% | 2017-11-06 15:48 | 2017-11-09 17:51 | 50h |  | SAW Welder [200%]; Helper | 150h | 150h | 9,375 | 9,375 | 9,375 |
| 254 | 5.17.9 | CS2-DRESSUP |  | 20h | 2018-03-01 11:30 A | 2018-03-02 15:30 A | 253 | 100% | 2017-11-09 17:51 | 2017-11-10 21:52 | 20h |  | Grinder [200%]; Helper | 60h | 60h | 3,250 | 3,250 | 3,250 |
| 255 | 5.17.10 | CS2-DPCHECK |  | 5h | 2018-03-02 15:30 A | 2018-03-02 20:30 A | 254 | 100% | 2017-11-10 21:52 | 2017-11-13 10:52 | 5h |  | Fitter | 5h | 5h | 343.75 | 343.75 | 343.75 |
| 256 | 5.17.11 | CS2-RT |  | 1d | 2018-03-03 08:30 A | 2018-03-05 16:00 A | 255 | 100% | 2017-11-13 10:52 | 2017-11-15 09:22 | 1d |  |  |  |  |  |  |  |

Notes:
- 228: 186NOS
- 238: 4.43Kg/m
- 244: SC
- 250: 4.43Kg/m
- 256: SC

| ID | WBS | Task | Duration | Start | Finish | Predecessors | Complete | Baseline start | Baseline finish | Baseline duration | Calendar | Resources | Work | Actual work | Cost | Baseline cost | Actual cost |
| --- | --- | --- | --- | --- | --- | --- | --- | --- | --- | --- | --- | --- | --- | --- | --- | --- | --- |
| 257 | 5.18 | **CS3-FITUP & WELDING** | 14.41d | 2018-02-22 15:45 A | 2018-03-12 16:45 A |  | 100% | 2017-10-11 18:49 | 2017-10-31 11:00 | 7.34d | TEAM_2Shift_Calendar-1 |  | 456.25h | 456.25h | 27,834.38 | 27,834.38 | 27,834.38 |
| 258 | 5.18.1 | SHELL LS1+CH DISH READY | 6h | 2018-02-22 15:45 A | 2018-02-22 21:45 A | 65, 133 | 100% | 2017-10-11 18:49 | 2017-10-12 08:49 | 6h |  | Helper; Plate (Cost) [0.1%] | 6h | 6h | 300 | 300 | 300 |
| 259 | 5.18.2 | SHELL EP CORRECTION | 5h | 2018-02-22 21:45 A | 2018-02-23 10:45 A | 258 | 100% | 2017-10-12 08:49 | 2017-10-12 13:49 | 5h |  | Grinder [200%]; Helper | 15h | 15h | 812.5 | 812.5 | 812.5 |
| 260 | 5.18.3 | CS3-FITUP | 10h | 2018-02-23 10:45 A | 2018-02-23 20:45 A | 259 | 100% | 2017-10-12 13:49 | 2017-10-13 07:50 | 10h |  | Fitter [200%]; Helper | 30h | 30h | 1,875 | 1,875 | 1,875 |
| 261 | 5.18.4 | CS3-FITUP INSPECTION | 1d | 2018-02-23 20:45 A | 2018-02-26 19:15 A | 260 | 100% | 2017-10-13 07:50 | 2017-10-16 06:21 | 1d |  | Fitter; Helper | 15.25h | 15.25h | 1,034.38 | 1,034.38 | 1,034.38 |
| 262 | 5.18.5 | CS3-WELDING | 50h | 2018-02-26 19:15 A | 2018-03-01 21:15 A | 261 | 100% | 2017-10-16 06:21 | 2017-10-20 08:24 | 50h |  | SAW Welder [200%]; Helper | 150h | 150h | 9,375 | 9,375 | 9,375 |
| 263 | 5.18.6 | CS3-FLUSHGRIND | 20h | 2018-03-01 21:15 A | 2018-03-03 09:15 A | 262 | 100% | 2017-10-20 08:24 | 2017-10-21 12:25 | 20h |  | Grinder | 20h | 20h | 1,125 | 1,125 | 1,125 |
| 264 | 5.18.7 | CS3-DPCHECK | 5h | 2018-03-03 09:15 A | 2018-03-03 14:15 A | 263 | 100% | 2017-10-21 12:25 | 2017-10-21 17:26 | 5h |  | Fitter | 5h | 5h | 343.75 | 343.75 | 343.75 |
| 265 | 5.18.8 | CS3-INSIDE WELDING | 50h | 2018-03-03 14:15 A | 2018-03-07 16:15 A | 264 | 100% | 2017-10-21 17:26 | 2017-10-25 19:29 | 50h |  | SAW Welder [200%]; Helper | 150h | 150h | 9,375 | 9,375 | 9,375 |
| 266 | 5.18.9 | CS3-DRESSUP | 20h | 2018-03-07 16:15 A | 2018-03-08 20:15 A | 265 | 100% | 2017-10-25 19:29 | 2017-10-27 07:30 | 20h |  | Grinder [200%]; Helper | 60h | 60h | 3,250 | 3,250 | 3,250 |
| 267 | 5.18.10 | CS3-DPCHECK | 5h | 2018-03-08 20:15 A | 2018-03-09 09:15 A | 266 | 100% | 2017-10-27 07:30 | 2017-10-27 12:30 | 5h |  | Fitter | 5h | 5h | 343.75 | 343.75 | 343.75 |
| 268 | 5.18.11 | CS3-RT | 1d | 2018-03-09 09:15 A | 2018-03-12 16:45 A | 267 | 100% | 2017-10-27 13:30 | 2017-10-31 11:00 | 1d |  |  |  |  |  |  |  |
| 269 | 5.19 | **SHELL FLG WELDING** | 6.24d | 2018-02-27 16:00 A | 2018-03-06 10:30 A |  | 100% | 2017-10-27 17:11 | 2017-11-04 11:46 | 3.01d | TEAM_2Shift_Calendar-1 |  | 152.5h | 152.5h | 9,184.38 | 9,184.38 | 9,184.38 |
| 270 | 5.19.1 | SHELL FLG AND SHELL FIT UP | 6h | 2018-02-27 16:00 A | 2018-02-27 22:00 A | 233, 43 | 100% | 2017-10-27 17:11 | 2017-10-30 07:11 | 6h |  | Fitter [200%]; Helper; Forging Non-Std (Cost) [0.1%] | 18h | 18h | 1,125 | 1,125 | 1,125 |
| 271 | 5.19.2 | WELDING | 50h | 2018-02-28 06:00 A | 2018-03-03 08:00 A | 270 | 100% | 2017-10-30 07:11 | 2017-11-02 09:14 | 50h |  | SAW Welder; Helper | 100h | 100h | 5,937.5 | 5,937.5 | 5,937.5 |
| 272 | 5.19.3 | FLUSH GRIND | 20h | 2018-03-03 08:00 A | 2018-03-05 12:00 A | 271 | 100% | 2017-11-02 09:14 | 2017-11-03 13:15 | 20h |  | Grinder | 20h | 20h | 1,125 | 1,125 | 1,125 |
| 273 | 5.19.4 | INSPECTION | 1d | 2018-03-05 12:00 A | 2018-03-06 10:30 A | 272 | 100% | 2017-11-03 13:15 | 2017-11-04 11:46 | 1d |  | Fitter | 14.5h | 14.5h | 996.88 | 996.88 | 996.88 |
| 274 | 5.20 | **CHANNEL FLG WELDING** | 3.52d | 2018-03-06 10:30 A | 2018-03-09 13:30 A |  | 100% | 2017-10-31 11:00 | 2017-11-06 21:36 | 3.14d | TEAM_2Shift_Calendar-1 |  | 88h | 88h | 5,343.75 | 9,184.38 | 5,343.75 |
| 275 | 5.20.1 | CH FLG AND CH FIT UP | 6h | 2018-03-06 10:30 A | 2018-03-06 16:30 A | 269 | 100% | 2017-10-31 11:00 | 2017-10-31 17:01 | 6h |  | Fitter [200%]; Helper; Forging Non-Std (Cost) [0.1%] | 18h | 18h | 1,125 | 1,125 | 1,125 |
| 276 | 5.20.2 | WELDING | 25h | 2018-03-06 16:30 A | 2018-03-08 09:30 A | 275 | 100% | 2017-10-31 17:01 | 2017-11-03 19:04 | 50h |  | SAW Welder; Helper | 50h | 50h | 2,968.75 | 5,937.5 | 2,968.75 |
| 277 | 5.20.3 | FLUSH GRIND | 10h | 2018-03-08 09:30 A | 2018-03-08 19:30 A | 276 | 100% | 2017-11-03 19:04 | 2017-11-06 07:05 | 20h |  | Grinder | 10h | 10h | 562.5 | 1,125 | 562.5 |
| 278 | 5.20.4 | INSPECTION | 0.69d | 2018-03-08 19:30 A | 2018-03-09 13:30 A | 277 | 100% | 2017-11-06 07:05 | 2017-11-06 21:36 | 1d |  | Fitter | 10h | 10h | 687.5 | 996.88 | 687.5 |
| 279 | 5.21 | **NOZZLE WELDING** | 6.59d | 2018-03-06 10:30 A | 2018-03-14 10:00 A |  | 100% | 2017-09-28 16:00 | 2017-10-06 15:36 | 2.73d | TEAM_2Shift_Calendar-1 |  | 228.25h | 228.25h | 13,585.94 | 13,585.94 | 13,585.94 |
| 280 | 5.21.1 | NOZZLE READY | 4h | 2018-03-06 10:30 A | 2018-03-06 14:30 A | 269 | 100% | 2017-09-28 16:00 | 2017-09-28 20:00 | 4h |  | Helper; Pipe (Cost) [0.1%] | 4h | 4h | 200 | 200 | 200 |
| 281 | 5.21.2 | ORIENTATION MARKING | 3h | 2018-03-06 14:30 A | 2018-03-06 17:30 A | 280 | 100% | 2017-09-28 20:00 | 2017-09-29 07:00 | 3h |  | Fitter; Helper | 6h | 6h | 356.25 | 356.25 | 356.25 |
| 282 | 5.21.3 | POSITION MARKING | 5h | 2018-03-06 17:30 A | 2018-03-07 06:30 A | 281 | 100% | 2017-09-29 07:00 | 2017-09-29 12:00 | 5h |  | Fitter; Helper | 10h | 10h | 593.75 | 593.75 | 593.75 |
| 283 | 5.21.4 | NOZZLE OPENING | 6h | 2018-03-07 06:30 A | 2018-03-07 12:30 A | 282 | 100% | 2017-09-29 12:00 | 2017-09-29 18:01 | 6h |  | Gas Cutter; Helper | 12h | 12h | 712.5 | 712.5 | 712.5 |
| 284 | 5.21.5 | NOZZLE EP | 5h | 2018-03-07 12:30 A | 2018-03-07 17:30 A | 283 | 100% | 2017-09-29 18:01 | 2017-09-30 07:01 | 5h |  | Grinder | 5h | 5h | 281.25 | 281.25 | 281.25 |
| 285 | 5.21.6 | NOZZLE FIT UP | 10h | 2018-03-07 17:30 A | 2018-03-08 11:30 A | 284 | 100% | 2017-09-30 07:01 | 2017-09-30 17:02 | 10h |  | Fitter; SAW Welder; Helper [200%] | 40h | 40h | 2,375 | 2,375 | 2,375 |
| 286 | 5.21.7 | NOZZLE WELDING | 10h | 2018-03-08 11:30 A | 2018-03-08 21:30 A | 285 | 100% | 2017-09-30 17:02 | 2017-10-03 11:02 | 10h |  | SAW Welder; Helper [200%] | 21.25h | 21.25h | 1,085.94 | 1,085.94 | 1,085.94 |
| 287 | 5.21.8 | NOZ FLG FITUP | 12h | 2018-03-08 21:30 A | 2018-03-09 17:30 A | 286 | 100% | 2017-10-03 11:02 | 2017-10-04 07:03 | 12h |  | Fitter; SAW Welder; Helper [200%]; Forging Std (Cost) [0.1%] | 48h | 48h | 2,850 | 2,850 | 2,850 |
| 288 | 5.21.9 | WELDING | 18h | 2018-03-09 17:30 A | 2018-03-12 19:30 A | 287 | 100% | 2017-10-04 07:03 | 2017-10-05 09:04 | 18h |  | SAW Welder; Helper [200%] | 45h | 45h | 2,587.5 | 2,587.5 | 2,587.5 |
| 289 | 5.21.10 | DP/AIR TEST | 8h | 2018-03-12 19:30 A | 2018-03-13 11:30 A | 288 | 100% | 2017-10-05 09:04 | 2017-10-05 17:05 | 8h |  | Fitter | 8h | 8h | 550 | 550 | 550 |
| 290 | 5.21.11 | INSPECTION | 1d | 2018-03-13 11:30 A | 2018-03-14 10:00 A | 289 | 100% | 2017-10-05 17:05 | 2017-10-06 15:36 | 1d |  | Fitter [200%] | 29h | 29h | 1,993.75 | 1,993.75 | 1,993.75 |

Notes:
- 262: 4.43Kg/m
- 268: SC
- 269: 2NOS
- 279: 8NOS-SRN

| ID | WBS | Task | Duration | Start | Finish | Predecessors | Complete | Baseline start | Baseline finish | Baseline duration | Constraint | Calendar | Resources | Work | Actual work | Cost | Baseline cost | Actual cost |
| --- | --- | --- | --- | --- | --- | --- | --- | --- | --- | --- | --- | --- | --- | --- | --- | --- | --- | --- |
| 291 | 5.22 | **NOZZLE WELDING** | 4.66d | 2018-03-09 13:30 A | 2018-03-15 17:00 A |  | 100% | 2017-10-06 15:36 | 2017-10-11 19:10 | 2.34d |  | TEAM_2Shift_Calendar-1 |  | 130.75h | 130.75h | 7,814.07 | 7,814.06 | 7,814.07 |
| 292 | 5.22.1 | NOZZLE READY | 5h | 2018-03-09 13:30 A | 2018-03-09 18:30 A | 274 | 100% | 2017-10-06 15:36 | 2017-10-06 20:36 | 5h |  |  | Helper; Pipe (Cost) [0.1%] | 5h | 5h | 250 | 250 | 250 |
| 293 | 5.22.2 | POSITION MARKING | 5h | 2018-03-09 18:30 A | 2018-03-12 07:30 A | 292 | 100% | 2017-10-06 20:36 | 2017-10-07 09:36 | 5h |  |  | Fitter; Helper | 10h | 10h | 593.75 | 593.75 | 593.75 |
| 294 | 5.22.3 | NOZZLE OPENING | 8h | 2018-03-12 07:30 A | 2018-03-12 15:30 A | 293 | 100% | 2017-10-07 09:36 | 2017-10-07 17:37 | 8h |  |  | Gas Cutter; Helper | 16h | 16h | 950 | 950 | 950 |
| 295 | 5.22.4 | NOZZLE EP | 7h | 2018-03-12 15:30 A | 2018-03-13 06:30 A | 294 | 100% | 2017-10-07 17:37 | 2017-10-09 08:37 | 7h |  |  | Grinder | 7h | 7h | 393.75 | 393.75 | 393.75 |
| 296 | 5.22.5 | NOZZLE FIT UP | 10h | 2018-03-13 06:30 A | 2018-03-13 16:30 A | 295 | 100% | 2017-10-09 08:37 | 2017-10-09 18:38 | 10h |  |  | Fitter; SAW Welder; Helper [200%] | 34.5h | 34.5h | 1,996.88 | 1,996.88 | 1,996.88 |
| 297 | 5.22.6 | NOZZLE WELDING | 10h | 2018-03-13 16:30 A | 2018-03-14 10:30 A | 296 | 100% | 2017-10-09 18:38 | 2017-10-10 12:38 | 10h |  |  | SAW Welder; Helper [200%] | 21.25h | 21.25h | 1,085.94 | 1,085.94 | 1,085.94 |
| 298 | 5.22.7 | DP/AIR TEST | 8h | 2018-03-14 10:30 A | 2018-03-14 18:30 A | 297 | 100% | 2017-10-10 12:38 | 2017-10-10 20:39 | 8h |  |  | Fitter | 8h | 8h | 550 | 550 | 550 |
| 299 | 5.22.8 | INSPECTION | 1d | 2018-03-14 18:30 A | 2018-03-15 17:00 A | 298 | 100% | 2017-10-10 20:39 | 2017-10-11 19:10 | 1d |  |  | Fitter [200%] | 29h | 29h | 1,993.75 | 1,993.75 | 1,993.75 |
| 300 | 5.23 | **SADDLE SUPPORT WELDING** | 32d | 2018-02-16 06:00 A | 2018-03-24 17:00 A |  | 100% | 2017-09-28 16:00 | 2017-10-23 18:18 | 9.48d |  | TEAM_2Shift_Calendar-1 |  | 252.25h | 252.25h | 15,087.5 | 28,812.5 | 15,087.5 |
| 301 | 5.23.1 | SADDLE SUPPORT PLATE MARKING | 32h | 2018-02-16 06:00 A | 2018-02-19 22:00 A | 269 | 100% | 2017-09-28 16:00 | 2017-09-29 20:01 | 20h |  |  | Fitter; Helper; Plate (Cost) [0.1%] | 10.5h | 10.5h | 712.5 | 1,400 | 712.5 |
| 302 | 5.23.2 | SADDLE SUPPORT PLATE CUTTING | 36h | 2018-02-20 06:00 A | 2018-02-22 10:00 A | 301 | 100% | 2017-09-29 20:01 | 2017-10-03 13:02 | 25h |  |  | Gas Cutter; Helper | 40h | 40h | 2,375 | 2,968.75 | 2,375 |
| 303 | 5.23.3 | SADDLE SUPPORT PLATE GRINDING | 19h | 2018-02-23 06:00 A | 2018-02-26 09:00 A | 302 | 100% | 2017-10-03 13:02 | 2017-10-05 21:05 | 40h |  |  | Grinder | 15h | 15h | 843.75 | 2,250 | 843.75 |
| 304 | 5.23.4 | DRILLING | 5h | 2018-02-26 09:00 A | 2018-02-26 14:00 A | 303 | 100% | 2017-10-05 21:05 | 2017-10-06 15:06 | 10h |  |  | Driller | 5h | 5h | 343.75 | 687.5 | 343.75 |
| 305 | 5.23.5 | COMPONENTS WELDING | 40h | 2018-02-26 14:00 A | 2018-02-28 22:00 A | 304 | 100% | 2017-10-06 15:06 | 2017-10-12 15:11 | 80h |  |  | SAW Welder; Helper [200%] | 120h | 120h | 6,750 | 13,500 | 6,750 |
| 306 | 5.23.6 | SADDLE SUPPORT PLATE FIT UP | 20h | 2018-03-20 06:00 A | 2018-03-21 10:00 A |  | 100% | 2017-10-12 15:11 | 2017-10-18 11:14 | 60h | start no earlier than 2018-03-20 06:00 |  | Fitter; Helper | 20h | 20h | 1,375 | 4,125 | 1,375 |
| 307 | 5.23.7 | SADDLE SUPPORT WELDING | 28h | 2018-03-22 06:00 A | 2018-03-23 18:00 A |  | 100% | 2017-10-18 11:14 | 2017-10-20 15:16 | 20h | start no earlier than 2018-03-22 06:00 |  | SAW Welder; Helper [200%] | 24.5h | 24.5h | 1,600 | 1,600 | 1,600 |
| 308 | 5.23.8 | BEND REMOVAL | 4h | 2018-03-23 18:00 A | 2018-03-23 22:00 A | 307 | 100% | 2017-10-20 15:16 | 2017-10-21 19:17 | 20h |  |  | Fitter; Helper | 11.25h | 11.25h | 750 | 1,437.5 | 750 |
| 309 | 5.23.9 | GRINDING | 8h | 2018-03-24 08:00 A | 2018-03-24 17:00 A | 308 | 100% | 2017-10-21 19:17 | 2017-10-23 18:18 | 15h | finish no earlier than 2018-03-23 21:30 |  | Grinder | 6h | 6h | 337.5 | 843.75 | 337.5 |
| 310 | 5.24 | **NAME PLATE WELDING** | 1.1d | 2018-02-20 06:00 A | 2018-02-20 22:00 A |  | 100% | 2017-09-29 20:01 | 2017-09-30 20:02 | 0.55d |  | TEAM_2Shift_Calendar-1 |  | 17h | 17h | 1,025 | 1,025 | 1,025 |
| 311 | 5.24.1 | NAME PLATE MARKING | 3h | 2018-02-20 06:00 A | 2018-02-20 09:00 A | 52, 301 | 100% | 2017-09-29 20:01 | 2017-09-30 07:01 | 3h |  |  | Fitter; Helper; Plate (Cost) [0.1%] | 4h | 4h | 218.75 | 218.75 | 218.75 |
| 312 | 5.24.2 | CUTTING | 3h | 2018-02-20 09:00 A | 2018-02-20 12:00 A | 311 | 100% | 2017-09-30 07:01 | 2017-09-30 10:01 | 3h |  |  | Gas Cutter; Helper | 3h | 3h | 206.25 | 206.25 | 206.25 |
| 313 | 5.24.3 | GRINDING | 4h | 2018-02-20 12:00 A | 2018-02-20 16:00 A | 312 | 100% | 2017-09-30 10:01 | 2017-09-30 14:02 | 4h |  |  | Grinder | 4h | 4h | 225 | 225 | 225 |
| 314 | 5.24.4 | WELDING | 4h | 2018-02-20 16:00 A | 2018-02-20 20:00 A | 313 | 100% | 2017-09-30 14:02 | 2017-09-30 18:02 | 4h |  |  | SAW Welder; Helper [200%] | 4h | 4h | 275 | 275 | 275 |
| 315 | 5.24.5 | CLEANING | 2h | 2018-02-20 20:00 A | 2018-02-20 22:00 A | 314 | 100% | 2017-09-30 18:02 | 2017-09-30 20:02 | 2h |  |  | Helper | 2h | 2h | 100 | 100 | 100 |

Notes:
- 291: 10NOS
- 300: 2NOS
- 301: PAD+BASE+GUSSET+TOP+EC
- 304: EARTHING CLEAT
- 310: 2NOS

| ID | WBS | Task | Duration | Start | Finish | Predecessors | Complete | Baseline start | Baseline finish | Baseline duration | Constraint | Calendar | Resources | Work | Actual work | Cost | Baseline cost | Actual cost |
| --- | --- | --- | --- | --- | --- | --- | --- | --- | --- | --- | --- | --- | --- | --- | --- | --- | --- | --- |
| 316 | 5.25 | **LIFTING LUG WELDING** | 3.38d | 2018-02-20 09:00 A | 2018-02-23 10:00 A |  | 100% | 2017-09-30 07:01 | 2017-10-05 08:04 | 1.66d |  | TEAM_2Shift_Calendar-1 |  | 87.75h | 87.75h | 5,014.06 | 5,014.06 | 5,014.06 |
| 317 | 5.25.1 | PLATE MARKING | 3h | 2018-02-20 09:00 A | 2018-02-20 12:00 A | 55, 311 | 100% | 2017-09-30 07:01 | 2017-09-30 10:01 | 3h |  |  | Fitter; Helper; Plate (Cost) [0.1%] | 5h | 5h | 287.5 | 287.5 | 287.5 |
| 318 | 5.25.2 | CUTTING | 4h | 2018-02-20 12:00 A | 2018-02-20 16:00 A | 317 | 100% | 2017-09-30 10:01 | 2017-09-30 14:02 | 4h |  |  | Gas Cutter; Helper | 4h | 4h | 275 | 275 | 275 |
| 319 | 5.25.3 | GRINDING | 8h | 2018-02-20 16:00 A | 2018-02-21 08:00 A | 318 | 100% | 2017-09-30 14:02 | 2017-10-03 06:02 | 8h |  |  | Grinder | 8h | 8h | 450 | 450 | 450 |
| 320 | 5.25.4 | DRILLING | 4h | 2018-02-21 08:00 A | 2018-02-21 12:00 A | 319 | 100% | 2017-10-03 06:02 | 2017-10-03 10:02 | 4h |  |  | Driller | 4h | 4h | 275 | 275 | 275 |
| 321 | 5.25.5 | PAD FORMING | 10h | 2018-02-21 12:00 A | 2018-02-21 22:00 A | 320 | 100% | 2017-10-03 10:02 | 2017-10-03 20:03 | 10h |  |  | Fitter [200%]; Helper | 30h | 30h | 1,875 | 1,875 | 1,875 |
| 322 | 5.25.6 | WELDING | 16h | 2018-02-22 06:00 A | 2018-02-22 22:00 A | 321 | 100% | 2017-10-03 20:03 | 2017-10-04 20:04 | 16h |  |  | SAW Welder; Helper [200%] | 32.75h | 32.75h | 1,651.56 | 1,651.56 | 1,651.56 |
| 323 | 5.25.7 | CLEANING | 4h | 2018-02-23 06:00 A | 2018-02-23 10:00 A | 322 | 100% | 2017-10-04 20:04 | 2017-10-05 08:04 | 4h |  |  | Helper | 4h | 4h | 200 | 200 | 200 |
| 324 | 5.26 | **INSULATION CLEAT WELDING** | 3.31d | 2018-02-20 12:00 A | 2018-02-23 12:00 A |  | 100% | 2017-09-30 10:01 | 2017-10-05 10:04 | 1.66d |  | TEAM_2Shift_Calendar-1 |  | 60.25h | 60.25h | 3,217.19 | 3,217.19 | 3,217.19 |
| 325 | 5.26.1 | PLATE MARKING | 10h | 2018-02-20 12:00 A | 2018-02-20 22:00 A | 59, 317 | 100% | 2017-09-30 10:01 | 2017-09-30 20:02 | 10h |  |  | Fitter; Helper; Plate (Cost) [0.1%] | 12h | 12h | 637.5 | 637.5 | 637.5 |
| 326 | 5.26.2 | CUTTING | 10h | 2018-02-21 06:00 A | 2018-02-21 16:00 A | 325 | 100% | 2017-09-30 20:02 | 2017-10-03 14:03 | 10h |  |  | Gas Cutter; Helper | 11h | 11h | 568.75 | 568.75 | 568.75 |
| 327 | 5.26.3 | GRINDING | 14h | 2018-02-21 16:00 A | 2018-02-22 14:00 A | 326 | 100% | 2017-10-03 14:03 | 2017-10-04 12:03 | 14h |  |  | Grinder | 14h | 14h | 787.5 | 787.5 | 787.5 |
| 328 | 5.26.4 | WELDING | 6h | 2018-02-22 14:00 A | 2018-02-22 20:00 A | 327 | 100% | 2017-10-04 12:03 | 2017-10-04 18:04 | 6h |  |  | SAW Welder; Helper [200%] | 15.25h | 15.25h | 823.44 | 823.44 | 823.44 |
| 329 | 5.26.5 | CLEANING | 8h | 2018-02-22 20:00 A | 2018-02-23 12:00 A | 328 | 100% | 2017-10-04 18:04 | 2017-10-05 10:04 | 8h |  |  | Helper | 8h | 8h | 400 | 400 | 400 |
| 330 | 5.27 | **TUBE BUNDLE ASSEMBLY** | 19.79d | 2018-03-06 06:00 A | 2018-03-28 21:00 A |  | 100% | 2017-10-17 06:58 | 2017-11-30 20:33 | 19.31d |  | TEAM_2Shift_Calendar-1 |  | 192.95h | 192.95h | 11,968.85 | 50,659.38 | 11,968.85 |
| 331 | 5.27.1 | TUBE SHEET INSPECTION | 1d | 2018-03-06 06:00 A | 2018-03-06 20:30 A |  | 100% | 2017-10-17 06:58 | 2017-10-17 21:29 | 1d | start no earlier than 2018-03-06 06:00 |  | Fitter; Forging Non-Std (Cost) [0.1%] | 14.5h | 14.5h | 996.88 | 996.88 | 996.88 |
| 332 | 5.27.2 | ASSY FRAME SET UP | 5.33h | 2018-03-06 20:30 A | 2018-03-07 09:50 A | 331 | 100% | 2017-10-17 21:29 | 2017-10-20 09:30 | 20h |  |  | Fitter [200%]; Helper | 16h | 16h | 1,000 | 3,750 | 1,000 |
| 333 | 5.27.3 | TUBE BUNDLE ASSY | 16h | 2018-03-21 06:00 A | 2018-03-21 22:00 A | 332, 183, 199, 216, 222, 228, 48 | 100% | 2017-11-09 12:31 | 2017-11-10 18:18 | 1.5d | start no earlier than 2018-03-21 06:00 |  | Fitter [200%]; Helper [300%] | 8h | 8h | 460 | 6,253.12 | 460 |
| 334 | 5.27.4 | TUBE TIE ROD STACK WELD | 4h | 2018-03-22 06:00 A | 2018-03-22 10:00 A | 333 | 100% | 2017-11-10 18:18 | 2017-11-13 10:18 | 8h |  |  | SAW Welder [200%]; Helper | 12h | 12h | 750 | 1,500 | 750 |
| 335 | 5.27.5 | U-TUBE INSERT | 15.67h | 2018-03-23 17:30 A | 2018-03-26 17:30 A | 334, 48 | 100% | 2017-11-13 10:18 | 2017-11-14 09:19 | 15h |  |  | Fitter [200%]; Helper; Tube (Cost) [0.1%] | 32h | 32h | 2,000.17 | 2,812.5 | 2,000.17 |
| 336 | 5.27.6 | TUBE SHEET WELDING | 9.5h | 2018-03-26 17:30 A | 2018-03-27 11:00 A | 335 | 100% | 2017-11-14 09:19 | 2017-11-16 12:21 | 35h |  |  | SAW Welder; Helper | 20h | 20h | 1,187.5 | 4,156.25 | 1,187.5 |
| 337 | 5.27.7 | TUBE ROOT WELDING | 25.22h | 2018-03-26 06:00 A | 2018-03-27 20:13 A | 336 | 100% | 2017-11-16 12:21 | 2017-11-20 12:24 | 48h |  |  | SAW Welder [200%]; Helper | 38.44h | 38.44h | 2,455.55 | 7,000 | 2,455.55 |
| 338 | 5.27.8 | TUBE ROOT WELDING DP | 1.78h | 2018-03-27 20:13 A | 2018-03-27 22:00 A | 337 | 100% | 2017-11-20 12:24 | 2017-11-20 19:40 | 0.5d |  |  | SAW Welder; Helper | 6h | 6h | 356.25 | 860.94 | 356.25 |
| 339 | 5.27.9 | TUBE WELDING-FINAL | 4h | 2018-03-28 06:00 A | 2018-03-28 10:00 A | 338 | 100% | 2017-11-21 15:41 | 2017-11-24 17:44 | 50h |  |  | SAW Welder [200%]; Helper [200%] | 16h | 16h | 950 | 11,875 | 950 |
| 340 | 5.27.10 | TUBE TRIMMING | 4h | 2018-03-28 10:00 A | 2018-03-28 14:00 A | 339 | 100% | 2017-11-24 17:44 | 2017-11-29 14:47 | 45h |  |  | Grinder [200%]; Helper | 12h | 12h | 650 | 7,312.5 | 650 |
| 341 | 5.27.11 | TUBE EXPANSION | 4h | 2018-03-28 14:00 A | 2018-03-28 18:00 A | 340 | 100% | 2017-11-29 14:47 | 2017-11-29 14:47 | 0h |  |  | Fitter [200%]; Helper | 12h | 12h | 750 |  | 750 |
| 342 | 5.27.12 | FINAL INSPECTION | 3h | 2018-03-28 18:00 A | 2018-03-28 21:00 A | 341 | 100% | 2017-11-30 06:02 | 2017-11-30 20:33 | 1d |  |  | Fitter [200%] | 6h | 6h | 412.5 | 1,993.75 | 412.5 |

Notes:
- 316: 4NOS
- 324: 46NOS

| ID | WBS | Task | Duration | Start | Finish | Predecessors | Complete | Baseline start | Baseline finish | Baseline duration | Calendar | Resources | Work | Actual work | Cost | Baseline cost | Actual cost |
| --- | --- | --- | --- | --- | --- | --- | --- | --- | --- | --- | --- | --- | --- | --- | --- | --- | --- |
| 343 | 5.28 | **HYDRO TEST** | 2.9d | 2018-03-28 06:00 A | 2018-03-30 16:00 A |  | 100% | 2017-11-30 20:33 | 2017-12-27 08:59 | 11.07d | TEAM_2Shift_Calendar-1 |  | 63h | 63h | 3,881.25 | 51,342.19 | 3,881.25 |
| 344 | 5.28.1 | NDE CLEARANCE | 1h | 2018-03-28 21:00 A | 2018-03-28 22:00 A | 330 | 100% | 2017-11-30 20:33 | 2017-12-01 19:04 | 1d |  | Fitter | 3h | 3h | 206.25 | 996.88 | 206.25 |
| 345 | 5.28.2 | PWHT | 1d | 2018-03-29 08:30 A | 2018-03-30 16:00 A | 344 | 100% | 2017-12-02 08:30 | 2017-12-08 12:00 | 3d |  |  |  |  |  |  |  |
| 346 | 5.28.3 | CLEANING AFTER PWHT | 16h | 2018-03-28 06:00 A | 2018-03-28 22:00 A | 345 | 100% | 2017-12-08 12:00 | 2017-12-11 20:02 | 24h |  | Fitter; Helper | 6h | 6h | 356.25 | 2,850 | 356.25 |
| 347 | 5.28.4 | NDE AFTER PWHT | 16h | 2018-03-28 06:00 A | 2018-03-28 22:00 A | 346 | 100% | 2017-12-11 20:02 | 2017-12-13 18:04 | 30h |  | Fitter | 3h | 3h | 206.25 | 2,062.5 | 206.25 |
| 348 | 5.28.5 | TUBE BUNDLE INSERT | 16h | 2018-03-28 06:00 A | 2018-03-28 22:00 A | 347 | 100% | 2017-12-13 18:04 | 2017-12-15 11:05 | 25h |  | Fitter [200%]; Helper [300%] | 10h | 10h | 575 | 7,187.5 | 575 |
| 349 | 5.28.6 | SHELL SIDE PNUEMATIC TEST | 18h | 2018-03-28 06:00 A | 2018-03-29 08:00 A | 348 | 100% | 2017-12-15 11:05 | 2017-12-18 09:07 | 30h |  | Fitter [300%]; Helper [200%] | 10h | 10h | 612.5 | 9,187.5 | 612.5 |
| 350 | 5.28.7 | TUBE BUNDLE OUTSIDE TEST | 16h | 2018-03-28 06:00 A | 2018-03-28 22:00 A | 349 | 100% | 2017-12-18 09:07 | 2017-12-20 07:09 | 30h |  | Fitter [300%]; Helper [200%] | 6h | 6h | 356.25 | 9,187.5 | 356.25 |
| 351 | 5.28.8 | TPI WITNESS | 16h | 2018-03-28 06:00 A | 2018-03-28 22:00 A | 350 | 100% | 2017-12-20 07:09 | 2017-12-20 14:25 | 0.5d |  | Fitter | 2h | 2h | 137.5 | 498.44 | 137.5 |
| 352 | 5.28.9 | SHELL SIDE HYDRO TEST | 16h | 2018-03-29 06:00 A | 2018-03-29 22:00 A | 351 | 100% | 2017-12-20 14:25 | 2017-12-22 12:26 | 30h |  | Fitter [300%]; Helper [200%] | 8h | 8h | 475 | 9,187.5 | 475 |
| 353 | 5.28.10 | TPI WITNESS | 16h | 2018-03-29 06:00 A | 2018-03-29 22:00 A | 352 | 100% | 2017-12-22 12:26 | 2017-12-22 19:42 | 0.5d |  | Fitter | 2h | 2h | 137.5 | 498.44 | 137.5 |
| 354 | 5.28.11 | CH ASSY AND HYDRO TEST | 2h | 2018-03-30 06:00 A | 2018-03-30 08:00 A | 353 | 100% | 2017-12-22 19:42 | 2017-12-26 17:44 | 30h |  | Fitter [300%]; Helper [200%] | 10h | 10h | 612.5 | 9,187.5 | 612.5 |
| 355 | 5.28.12 | TPI WITNESS | 3h | 2018-03-30 08:00 A | 2018-03-30 11:00 A | 354 | 100% | 2017-12-26 17:44 | 2017-12-27 08:59 | 0.5d |  | Fitter | 3h | 3h | 206.25 | 498.44 | 206.25 |
| 356 | 5.29 | **BLAST CLEANING & PAINTING** | 1.24d | 2018-03-30 16:00 A | 2018-03-31 18:00 A |  | 100% | 2017-12-27 08:59 | 2018-01-09 06:04 | 6.04d | TEAM_2Shift_Calendar-1 |  | 20h | 20h | 946.87 | 11,565.62 | 946.87 |
| 357 | 5.29.1 | PREPARATION FOR BLAST CLEANING | 1.5h | 2018-03-30 16:00 A | 2018-03-30 17:30 A | 343 | 100% | 2017-12-27 08:59 | 2017-12-29 07:01 | 30h | TEAM_2Shift_Calendar-1 | Fitter [200%]; Helper [200%] | 6h | 6h | 356.25 | 7,125 | 356.25 |
| 358 | 5.29.2 | BLAST CLEAN | 0.5d | 2018-03-30 17:30 A | 2018-03-31 08:45 A | 357 | 100% | 2017-12-29 08:30 | 2018-01-04 12:00 | 3d | TEAM_2Shift_Calendar-1 |  |  |  |  |  |  |
| 359 | 5.29.3 | PAINTING - 1COAT | 2.5h | 2018-03-31 08:45 A | 2018-03-31 11:15 A | 358 | 100% | 2018-01-04 12:00 | 2018-01-06 09:02 | 2d | TEAM_2Shift_Calendar-1 | Painter [200%]; Paint (Cost) [0.1%] | 5h | 5h |  |  |  |
| 360 | 5.29.4 | TPI WITNESS | 3h | 2018-03-31 11:15 A | 2018-03-31 14:15 A | 359 | 100% | 2018-01-06 09:02 | 2018-01-06 16:18 | 0.5d | TEAM_2Shift_Calendar-1 | Fitter | 3h | 3h | 206.25 | 498.44 | 206.25 |
| 361 | 5.29.5 | DESPATCH CLEARANCE | 3h | 2018-03-31 14:15 A | 2018-03-31 17:15 A | 360 | 100% | 2018-01-06 16:18 | 2018-01-08 07:33 | 0.5d | TEAM_2Shift_Calendar-1 | Fitter | 3h | 3h | 206.25 | 498.44 | 206.25 |
| 362 | 5.29.6 | DESPATCH | 0.75h | 2018-03-31 17:15 A | 2018-03-31 18:00 A | 361 | 100% | 2018-01-08 07:33 | 2018-01-09 06:04 | 1d | TEAM_2Shift_Calendar-1 | Fitter [200%]; Helper [200%] | 3h | 3h | 178.12 | 3,443.75 | 178.12 |
| 363 | 5.30 | **PBG** | 1.72d | 2018-04-24 08:30 A | 2018-04-25 17:30 A |  | 100% | 2018-04-12 08:30 | 2018-04-13 16:00 | 1.62d | TEAM_2Shift_Calendar-1 |  | 6h | 6h |  | -0 |  |
| 364 | 5.30.1 | PBG SUBMISSION | 8h | 2018-04-24 08:30 A | 2018-04-24 17:30 A | 362FS+9d | 100% | 2018-04-12 08:30 | 2018-04-13 16:00 | 1d |  | Finance | 2h | 2h |  |  |  |
| 365 | 5.30.2 | FINAL DOCUMENTATION | 8h | 2018-04-25 08:30 A | 2018-04-25 17:30 A | 362FS+9d | 100% |  |  |  |  | QC Engineer | 4h | 4h |  |  |  |

Notes:
- 345: SC
- 358: SC
