# 4173-602-E-108

Schedule from MS Project, 2017-05-09 to 2018-04-25, 14.5 hours a day, costs in ₹, A marks actual dates.

## Calendars

- TEAM_Stand_Calendar: Mon-Sat 08:30-12:30, 13:30-17:30; Sun off. Exceptions (off unless hours are given): 2017-01-13 to 2023-08-12 (2nd Sat, recurring), 2017-01-26 to 2036-01-26 (Republic Day, recurring), 2017-01-27 to 2023-08-26 (4th Sat, recurring), 2017-05-01 to 2036-05-01 (May Day, recurring), 2017-08-15 to 2036-08-15 (Independence Day, recurring), 2017-08-25 (Vinakya Chaturthi'2017), 2017-09-29 (Ayudha Pooja'2017), 2017-10-02 to 2036-10-02 (Gandhi Jayanti, recurring), 2017-10-18 (Deepavali'2017), 2018-01-15 (Thiruvalluvar Day'2018).
- TEAM_2Shift_Calendar-1: Mon-Sat 06:00-22:00; Sun off. Exceptions (off unless hours are given): 2017-01-13 to 2023-02-11 (2nd Sat, recurring), 2017-01-26 to 2036-01-26 (Republic Day, recurring), 2017-01-27 to 2023-08-26 (4th Sat, recurring), 2017-05-01 to 2036-05-01 (May Day, recurring), 2017-08-15 to 2036-08-15 (Indepdence Day, recurring), 2017-08-25 (Ayudha Pooja'2017), 2017-10-02 to 2036-10-02 (Gandhi Jayanti, recurring), 2017-10-19 (Deepavali'2017), 2018-01-15 (Thiruvalluvar Day'2018).

## Resources

| Resource | Rate |
| --- | --- |
| SAW Welder | 68.75 |
| Painter |  |
| Lathe |  |
| Helper | 50 |
| Grinder | 56.25 |
| Fitter | 68.75 |
| Driller | 68.75 |
| Gas Cutter | 68.75 |
| Consumables (Cost) |  |
| Fastners (Cost) |  |
| Forging Non-Std (Cost) |  |
| Forging Std (Cost) |  |
| Gaskets (Cost) |  |
| Paint (Cost) |  |
| Pipe (Cost) |  |
| Plate (Cost) |  |
| Rod (Cost) |  |
| Tube (Cost) |  |
| Tube Sheet (Cost) |  |
| Finance |  |
| QC Engineer |  |

## Schedule

| ID | WBS | Task | Type | Duration | Start | Finish | Predecessors | Complete | Baseline start | Baseline finish | Baseline duration | Constraint |
| --- | --- | --- | --- | --- | --- | --- | --- | --- | --- | --- | --- | --- |
| 1 | 1 | PO RECEIPT |  | 0.55d | 2017-05-09 08:00 A | 2017-05-10 09:30 A |  | 100% | 2017-05-09 08:00 | 2017-05-10 09:30 | 0.55d |  |
| 2 | 2 | DRAWING SUBMISSION FOR APPROVAL |  | 32.55d | 2017-07-19 08:00 A | 2017-12-29 17:23 A | 1 | 100% | 2017-07-19 08:00 | 2017-12-29 17:23 | 32.55d |  |
| 3 | 3 | **PR ISSUE** |  | 55.79d | 2017-06-15 08:00 A | 2017-10-26 09:23 A |  | 100% | 2017-06-15 08:00 | 2017-10-26 09:23 | 55.79d |  |
| 4 | 3.1 | Plates and Rods-SA240 Gr.321 | milestone | 0d | 2017-08-05 08:00 A | 2017-08-05 08:00 A | 2 | 100% | 2017-08-05 08:00 | 2017-08-05 08:00 | 0d |  |
| 5 | 3.2 | Plates and Rods-SA240 Gr.304 | milestone | 0d | 2017-08-05 08:00 A | 2017-08-05 08:00 A | 2 | 100% | 2017-08-05 08:00 | 2017-08-05 08:00 | 0d |  |
| 6 | 3.3 | Plates and Rods-IS2062 Gr.B | milestone | 0d | 2017-08-14 08:00 A | 2017-08-14 08:00 A | 2 | 100% | 2017-08-14 08:00 | 2017-08-14 08:00 | 0d |  |
| 7 | 3.4 | Tube-SA213 TP321 |  | 3.86d | 2017-06-15 08:00 A | 2017-07-01 09:30 A | 1FS+6.62d | 100% | 2017-06-15 08:00 | 2017-07-01 09:30 | 3.86d |  |
| 8 | 3.5 | Tube-SA213 TP304 |  | 3.86d | 2017-06-15 08:00 A | 2017-07-01 09:30 A | 1FS+6.62d | 100% | 2017-06-15 08:00 | 2017-07-01 09:30 | 3.86d |  |
| 9 | 3.6 | Blank Forging-SA965 F321 | milestone | 0d | 2017-08-03 08:00 A | 2017-08-03 08:00 A | 2 | 100% | 2017-08-03 08:00 | 2017-08-03 08:00 | 0d |  |
| 10 | 3.7 | Blank Forging-SA965 F304 | milestone | 0d | 2017-08-03 08:00 A | 2017-08-03 08:00 A | 2 | 100% | 2017-08-03 08:00 | 2017-08-03 08:00 | 0d |  |
| 11 | 3.8 | Non Standard Forging-SA965 F321 | milestone | 0d | 2017-08-03 08:00 A | 2017-08-03 08:00 A | 2 | 100% | 2017-08-03 08:00 | 2017-08-03 08:00 | 0d |  |
| 12 | 3.9 | Non Standard Forging-SA965 F304 | milestone | 0d | 2017-08-03 08:00 A | 2017-08-03 08:00 A | 2 | 100% | 2017-08-03 08:00 | 2017-08-03 08:00 | 0d |  |
| 13 | 3.10 | Non Standard Forging-SA266 Gr.2 | milestone | 0d | 2017-08-03 08:00 A | 2017-08-03 08:00 A | 2 | 100% | 2017-08-03 08:00 | 2017-08-03 08:00 | 0d |  |
| 14 | 3.11 | Standard Forging-SA182 F321 | milestone | 0d | 2017-08-14 08:00 A | 2017-08-14 08:00 A | 2 | 100% | 2017-08-14 08:00 | 2017-08-14 08:00 | 0d |  |
| 15 | 3.12 | Standard Forging-SA182 F304 | milestone | 0d | 2017-08-14 08:00 A | 2017-08-14 08:00 A | 2 | 100% | 2017-08-14 08:00 | 2017-08-14 08:00 | 0d |  |
| 16 | 3.13 | Pipe-SA312 TP304 | milestone | 0d | 2017-08-16 08:00 A | 2017-08-16 08:00 A | 2 | 100% | 2017-08-16 08:00 | 2017-08-16 08:00 | 0d |  |
| 17 | 3.14 | Gaskets- |  | 3.31d | 2017-09-23 08:00 A | 2017-10-26 09:23 A | 2 | 100% | 2017-09-23 08:00 | 2017-10-26 09:23 | 3.31d |  |
| 18 | 3.15 | Fasteners- | milestone | 0d | 2017-08-16 08:00 A | 2017-08-16 08:00 A | 2 | 100% | 2017-08-16 08:00 | 2017-08-16 08:00 | 0d |  |
| 19 | 3.16 | Consumables-SS321 |  | 0.55d | 2017-10-20 08:00 A | 2017-10-21 09:30 A | 2 | 100% | 2017-10-20 08:00 | 2017-10-21 09:30 | 0.55d |  |
| 20 | 3.17 | Consumables-SS304 |  | 0.55d | 2017-10-20 08:00 A | 2017-10-21 09:30 A | 2 | 100% | 2017-10-20 08:00 | 2017-10-21 09:30 | 0.55d |  |
| 21 | 4 | **PO RECEIPT** |  | 94.34d | 2017-08-03 08:30 A | 2018-03-15 21:30 A |  | 100% | 2017-08-03 08:30 | 2018-03-15 21:30 | 94.34d |  |
| 22 | 4.1 | Plates and Rods-SA240 Gr.321 |  | 7.72d | 2017-09-01 08:00 A | 2017-10-10 09:29 A | 4 | 100% | 2017-09-01 08:00 | 2017-10-10 09:29 | 7.72d |  |
| 23 | 4.2 | Plates and Rods-SA240 Gr.304 |  | 26.48d | 2017-09-01 08:00 A | 2018-01-05 09:25 A | 5 | 100% | 2017-09-01 08:00 | 2018-01-05 09:25 | 26.48d |  |
| 24 | 4.3 | Plates and Rods-IS2062 Gr.B |  | 11.03d | 2017-08-14 08:30 A | 2017-09-08 17:30 A | 6 | 100% | 2017-08-14 08:30 | 2017-09-08 17:30 | 11.03d |  |
| 25 | 4.4 | Tube-SA213 TP321 |  | 0.55d | 2018-03-15 08:30 A | 2018-03-15 21:30 A |  | 100% | 2018-03-15 08:30 | 2018-03-15 21:30 | 0.55d | finish no earlier than 2018-03-15 21:30 |
| 26 | 4.5 | Tube-SA213 TP304 |  | 0.55d | 2018-03-15 08:30 A | 2018-03-15 21:30 A | 8 | 100% | 2018-03-15 08:30 | 2018-03-15 21:30 | 0.55d | finish no earlier than 2018-03-15 21:30 |
| 27 | 4.6 | Blank Forging-SA965 F321 |  | 41.38d | 2017-08-03 08:30 A | 2017-11-10 17:30 A | 9 | 100% | 2017-08-03 08:30 | 2017-11-10 17:30 | 41.38d |  |
| 28 | 4.7 | Blank Forging-SA965 F304 |  | 41.38d | 2017-08-03 08:30 A | 2017-11-10 17:30 A | 10 | 100% | 2017-08-03 08:30 | 2017-11-10 17:30 | 41.38d |  |
| 29 | 4.8 | Non Standard Forging-SA965 F321 |  | 41.38d | 2017-09-27 08:00 A | 2018-01-02 17:30 A | 11 | 100% | 2017-09-27 08:00 | 2018-01-02 17:30 | 41.38d |  |
| 30 | 4.9 | Non Standard Forging-SA965 F304 |  | 41.38d | 2017-09-27 08:00 A | 2018-01-02 17:30 A | 12 | 100% | 2017-09-27 08:00 | 2018-01-02 17:30 | 41.38d |  |
| 31 | 4.10 | Non Standard Forging-SA266 Gr.2 |  | 41.38d | 2017-09-27 08:00 A | 2018-01-02 17:30 A | 13 | 100% | 2017-09-27 08:00 | 2018-01-02 17:30 | 41.38d |  |
| 32 | 4.11 | Standard Forging-SA182 F321 |  | 41.38d | 2017-09-27 08:00 A | 2018-01-02 17:30 A | 14 | 100% | 2017-09-27 08:00 | 2018-01-02 17:30 | 41.38d |  |
| 33 | 4.12 | Standard Forging-SA182 F304 |  | 41.38d | 2017-09-27 08:00 A | 2018-01-02 17:30 A | 15 | 100% | 2017-09-27 08:00 | 2018-01-02 17:30 | 41.38d |  |
| 34 | 4.13 | Pipe-SA312 TP304 |  | 16.55d | 2017-08-16 08:30 A | 2017-09-22 17:30 A | 16 | 100% | 2017-08-16 08:30 | 2017-09-22 17:30 | 16.55d |  |
| 35 | 4.14 | Gaskets- |  | 27.59d | 2017-10-26 09:23 A | 2017-12-29 09:23 A | 17 | 100% | 2017-10-26 09:23 | 2017-12-29 09:23 | 27.59d |  |
| 36 | 4.15 | Fasteners- |  | 27.59d | 2017-08-16 08:30 A | 2017-10-21 17:30 A | 18 | 100% | 2017-08-16 08:30 | 2017-10-21 17:30 | 27.59d |  |
| 37 | 4.16 | Consumables-SS321 |  | 13.79d | 2017-10-21 09:30 A | 2017-11-22 09:30 A | 19 | 100% | 2017-10-21 09:30 | 2017-11-22 09:30 | 13.79d |  |
| 38 | 4.17 | Consumables-SS304 |  | 13.79d | 2017-10-21 09:30 A | 2017-11-22 09:30 A | 20 | 100% | 2017-10-21 09:30 | 2017-11-22 09:30 | 13.79d |  |

| ID | WBS | Task | Duration | Start | Finish | Predecessors | Complete | Baseline start | Baseline finish | Baseline duration | Constraint | Calendar | Resources | Work | Actual work | Cost | Baseline cost | Actual cost |
| --- | --- | --- | --- | --- | --- | --- | --- | --- | --- | --- | --- | --- | --- | --- | --- | --- | --- | --- |
| 39 | 5 | **Fab: 4173-602-E-108** | 180.76d | 2017-09-27 08:30 A | 2018-04-25 21:30 A |  | 100% | 2017-09-27 08:30 | 2018-04-21 12:30 | 176.83d |  | TEAM_2Shift_Calendar-1 |  | 3602.44h | 3602.44h | 148,617.32 | 148,617.32 | 148,617.32 |
| 40 | 5.1 | **RECEIPT OF MATERIALS** | 148.48d | 2017-09-27 08:30 A | 2018-03-20 17:30 A |  | 100% | 2017-09-27 08:30 | 2018-03-20 17:30 | 148.48d |  | TEAM_2Shift_Calendar-1 |  |  |  |  |  |  |
| 41 | 5.1.1 | PLATE FOR SHELL | 1d | 2017-09-27 08:30 A | 2017-09-28 16:00 A |  | 100% | 2017-09-27 08:30 | 2017-09-28 16:00 | 1d | start no earlier than 2017-09-27 06:00 |  |  |  |  |  |  |  |
| 42 | 5.1.2 | PLATE FOR CHANNEL | 1d | 2017-09-27 08:30 A | 2017-09-28 16:00 A | 41SS | 100% | 2017-09-27 08:30 | 2017-09-28 16:00 | 1d |  |  |  |  |  |  |  |  |
| 43 | 5.1.3 | CHANNEL BONNET | 1d | 2017-09-27 08:30 A | 2017-09-28 16:00 A | 41SS | 100% | 2017-09-27 08:30 | 2017-09-28 16:00 | 1d |  |  |  |  |  |  |  |  |
| 44 | 5.1.4 | CHANNEL FLANGE | 1d | 2017-09-27 08:30 A | 2017-09-28 16:00 A | 41SS | 100% | 2017-09-27 08:30 | 2017-09-28 16:00 | 1d |  |  |  |  |  |  |  |  |
| 45 | 5.1.5 | NOZZLE PIPE/PLATE | 1d | 2017-09-27 08:30 A | 2017-09-28 16:00 A | 41SS | 100% | 2017-09-27 08:30 | 2017-09-28 16:00 | 1d |  |  |  |  |  |  |  |  |
| 46 | 5.1.6 | NOZZLE FLG | 1d | 2017-09-27 08:30 A | 2017-09-28 16:00 A | 41SS | 100% | 2017-09-27 08:30 | 2017-09-28 16:00 | 1d |  |  |  |  |  |  |  |  |
| 47 | 5.1.7 | TUBE | 0.55d | 2018-03-20 06:00 A | 2018-03-20 17:30 A | 41SS | 100% | 2018-03-20 06:00 | 2018-03-20 17:30 | 0.55d |  |  |  |  |  |  |  |  |
| 48 | 5.1.8 | TUBE SHEET | 1d | 2017-09-27 08:30 A | 2017-09-28 16:00 A | 41SS | 100% | 2017-09-27 08:30 | 2017-09-28 16:00 | 1d |  |  |  |  |  |  |  |  |
| 49 | 5.1.9 | NAME PLATE | 1d | 2017-09-27 08:30 A | 2017-09-28 16:00 A | 41SS | 100% | 2017-09-27 08:30 | 2017-09-28 16:00 | 1d |  |  |  |  |  |  |  |  |
| 50 | 5.1.10 | FULL SUPPORT PLATE | 1d | 2017-09-27 08:30 A | 2017-09-28 16:00 A | 41SS | 100% | 2017-09-27 08:30 | 2017-09-28 16:00 | 1d |  |  |  |  |  |  |  |  |
| 51 | 5.1.11 | BAFFLE PLATES | 1d | 2017-09-27 08:30 A | 2017-09-28 16:00 A | 41SS | 100% | 2017-09-27 08:30 | 2017-09-28 16:00 | 1d |  |  |  |  |  |  |  |  |
| 52 | 5.1.12 | SADDLE MATERIAL | 1d | 2017-09-27 08:30 A | 2017-09-28 16:00 A | 41SS | 100% | 2017-09-27 08:30 | 2017-09-28 16:00 | 1d |  |  |  |  |  |  |  |  |
| 53 | 5.1.13 | SPACER TUBE | 1d | 2017-09-27 08:30 A | 2017-09-28 16:00 A | 41SS | 100% | 2017-09-27 08:30 | 2017-09-28 16:00 | 1d |  |  |  |  |  |  |  |  |
| 54 | 5.1.14 | TIE ROD | 1d | 2017-09-27 08:30 A | 2017-09-28 16:00 A | 41SS | 100% | 2017-09-27 08:30 | 2017-09-28 16:00 | 1d |  |  |  |  |  |  |  |  |
| 55 | 5.1.15 | LIFTING LUG | 1d | 2017-09-27 08:30 A | 2017-09-28 16:00 A | 41SS | 100% | 2017-09-27 08:30 | 2017-09-28 16:00 | 1d |  |  |  |  |  |  |  |  |
| 56 | 5.1.16 | INSULATION RING | 1d | 2017-09-27 08:30 A | 2017-09-28 16:00 A | 41SS | 100% | 2017-09-27 08:30 | 2017-09-28 16:00 | 1d |  |  |  |  |  |  |  |  |
| 57 | 5.1.17 | FASTENERS | 1d | 2017-09-27 08:30 A | 2017-09-28 16:00 A | 41SS | 100% | 2017-09-27 08:30 | 2017-09-28 16:00 | 1d |  |  |  |  |  |  |  |  |
| 58 | 5.1.18 | GASKETS | 1d | 2017-09-27 08:30 A | 2017-09-28 16:00 A | 41SS | 100% | 2017-09-27 08:30 | 2017-09-28 16:00 | 1d |  |  |  |  |  |  |  |  |
| 59 | 5.2 | **CHANNEL(RHS) LS1- FABRICATION** | 101.21d | 2017-09-28 16:00 A | 2018-01-25 11:30 A |  | 100% | 2017-09-28 16:00 | 2018-01-25 11:30 | 101.21d |  | TEAM_2Shift_Calendar-1 |  | 97.25h | 97.25h | 4,379.98 | 4,379.98 | 4,379.98 |
| 60 | 5.2.1 | LS1-PLATE MARKING | 46.52h | 2017-09-28 16:00 A | 2017-10-03 14:31 A | 42 | 100% | 2017-09-28 16:00 | 2017-10-03 14:31 | 46.52h |  | TEAM_2Shift_Calendar-1 | Helper; Plate (Cost) [0.1%]; Fitter | 16h | 16h | 950 | 950 | 950 |
| 61 | 5.2.2 | LS1- STAMPING | 1.5h | 2017-10-03 14:30 A | 2017-10-03 16:00 A | 60 | 100% | 2017-10-03 14:30 | 2017-10-03 16:00 | 1.5h |  | TEAM_2Shift_Calendar-1 | Fitter | 1.5h | 1.5h |  |  |  |
| 62 | 5.2.3 | LS1-PL CUTTING | 1.17h | 2017-10-03 16:00 A | 2017-10-03 17:10 A | 61 | 100% | 2017-10-03 16:00 | 2017-10-03 17:10 | 1.17h |  | TEAM_2Shift_Calendar-1 | Helper; Gas Cutter [200%] | 3.5h | 3.5h | 218.75 | 218.75 | 218.75 |
| 63 | 5.2.4 | LS1-GRINDING | 1.5h | 2017-10-03 17:30 A | 2017-10-03 19:00 A | 62 | 100% | 2017-10-03 17:30 | 2017-10-03 19:00 | 1.5h |  | TEAM_2Shift_Calendar-1 | Grinder | 1.5h | 1.5h |  |  |  |
| 64 | 5.2.5 | LS1-EDGE PREPARATION | 2.5h | 2017-10-03 19:00 A | 2017-10-03 21:30 A | 63 | 100% | 2017-10-03 19:00 | 2017-10-03 21:30 | 2.5h |  | TEAM_2Shift_Calendar-1 | Grinder | 2.5h | 2.5h |  |  |  |
| 65 | 5.2.6 | LS1-PRE BENDING | 1.5h | 2017-10-03 21:30 A | 2017-10-04 07:00 A | 64 | 100% | 2017-10-03 21:30 | 2017-10-04 07:00 | 1.5h |  | TEAM_2Shift_Calendar-1 | Helper [200%]; Fitter | 6h | 6h | 328.12 | 328.12 | 328.12 |
| 66 | 5.2.7 | LS1-PREBEND CUTOFF | 2h | 2017-10-04 08:00 A | 2017-10-04 10:00 A | 65 | 100% | 2017-10-04 08:00 | 2017-10-04 10:00 | 2h |  | TEAM_2Shift_Calendar-1 | Helper; Gas Cutter | 4h | 4h |  |  |  |
| 67 | 5.2.8 | LS1-EDGE PREPARTION | 2h | 2017-10-04 10:00 A | 2017-10-04 12:00 A | 66 | 100% | 2017-10-04 10:00 | 2017-10-04 12:00 | 2h |  | TEAM_2Shift_Calendar-1 | Grinder | 2h | 2h |  |  |  |
| 68 | 5.2.9 | LS1-ROLLING | 1.75h | 2017-10-04 12:00 A | 2017-10-04 13:45 A | 67 | 100% | 2017-10-04 12:00 | 2017-10-04 13:45 | 1.75h |  | TEAM_2Shift_Calendar-1 | Helper [200%]; Fitter | 7h | 7h | 382.81 | 382.81 | 382.81 |
| 69 | 5.2.10 | LS1-ACID CLEANING | 3h | 2017-10-04 15:01 A | 2017-10-04 18:01 A | 68 | 100% | 2017-10-04 15:01 | 2017-10-04 18:01 | 3h |  | TEAM_2Shift_Calendar-1 | Helper | 3h | 3h |  |  |  |
| 70 | 5.2.11 | LS1-FITUP | 1.35h | 2018-01-18 06:00 A | 2018-01-18 07:21 A |  | 100% | 2018-01-18 06:00 | 2018-01-18 07:21 | 1.35h | start no earlier than 2018-01-18 06:00 | TEAM_2Shift_Calendar-1 | Helper; SAW Welder [200%]; Fitter [200%] | 9h | 9h | 593.43 | 593.43 | 593.43 |
| 71 | 5.2.12 | LS1-SPIDERUP | 1.2h | 2018-01-19 19:30 A | 2018-01-19 20:42 A | 70 | 100% | 2018-01-19 19:30 | 2018-01-19 20:42 | 1.2h | finish no earlier than 2018-01-19 21:30 | TEAM_2Shift_Calendar-1 | Helper [200%]; Fitter | 3h | 3h | 172.5 | 172.5 | 172.5 |
| 72 | 5.2.13 | LS1-FITUP INSPECTION | 0.14d | 2018-01-20 19:30 A | 2018-01-20 21:30 A | 71 | 100% | 2018-01-20 19:30 | 2018-01-20 21:30 | 0.14d | finish no earlier than 2018-01-20 21:30 | TEAM_2Shift_Calendar-1 | Fitter | 2h | 2h |  |  |  |
| 73 | 5.2.14 | LS1-WELDING | 6.12h | 2018-01-20 21:30 A | 2018-01-22 11:37 A | 72 | 100% | 2018-01-20 21:30 | 2018-01-22 11:37 | 6.12h |  | TEAM_2Shift_Calendar-1 | Helper; SAW Welder | 12.25h | 12.25h | 727.34 | 727.34 | 727.34 |
| 74 | 5.2.15 | LS1-FLUSH GRIND | 1h | 2018-01-23 20:30 A | 2018-01-23 21:30 A | 73 | 100% | 2018-01-23 20:30 | 2018-01-23 21:30 | 1h | finish no earlier than 2018-01-23 21:30 | TEAM_2Shift_Calendar-1 | Grinder [200%] | 2h | 2h |  |  |  |
| 75 | 5.2.16 | LS1-INSIDE WELDING | 1.88h | 2018-01-23 21:30 A | 2018-01-24 07:22 A | 74 | 100% | 2018-01-23 21:30 | 2018-01-24 07:22 | 1.88h |  | TEAM_2Shift_Calendar-1 | SAW Welder [200%]; Helper | 5h | 5h | 308.59 | 308.59 | 308.59 |
| 76 | 5.2.17 | LS1-FLUSH GRIND | 5h | 2018-01-24 08:30 A | 2018-01-24 13:30 A | 75 | 100% | 2018-01-24 08:30 | 2018-01-24 13:30 | 5h |  | TEAM_2Shift_Calendar-1 | Grinder | 5h | 5h |  |  |  |
| 77 | 5.2.18 | LS1-REROLLING | 2.25h | 2018-01-24 13:30 A | 2018-01-24 15:45 A | 76 | 100% | 2018-01-24 13:30 | 2018-01-24 15:45 | 2.25h |  | TEAM_2Shift_Calendar-1 | Helper [200%]; Fitter | 9h | 9h | 492.19 | 492.19 | 492.19 |
| 78 | 5.2.19 | LS1-DPCHECK | 10h | 2018-01-24 16:30 A | 2018-01-25 10:30 A | 77 | 100% | 2018-01-24 16:30 | 2018-01-25 10:30 | 10h |  | TEAM_2Shift_Calendar-1 | Fitter | 3h | 3h | 206.25 | 206.25 | 206.25 |
| 79 | 5.2.20 | LS1-RADIOGRAPHY | 0.07d | 2018-01-25 10:30 A | 2018-01-25 11:30 A | 78 | 100% | 2018-01-25 10:30 | 2018-01-25 11:30 | 0.07d |  | TEAM_2Shift_Calendar-1 |  |  |  |  |  |  |

Notes:
- 39: 4173B- DMW PRE HEATER
- 41: SA240 Gr304
- 42: SA240 Gr304
- 43: SA240 Gr304
- 44: SA965 F 304
- 45: SA 312 TP304/SA 240 Gr304
- 46: SA182 F 304
- 47: SA13 TP 304
- 48: SA965 F 304
- 49: SS304
- 50: SA240 Gr304
- 51: SA240 Gr304
- 52: IS 2062 Gr B
- 53: SA213 TP 304
- 54: SS 304
- 55: SA 240 GR 304
- 56: SA240 Gr 304
- 60: 3383*1072*16T
- 73: 2.04 Kg/m
- 79: SC

| ID | WBS | Task | Duration | Start | Finish | Predecessors | Complete | Baseline start | Baseline finish | Baseline duration | Constraint | Calendar | Resources | Work | Actual work | Cost | Baseline cost | Actual cost |
| --- | --- | --- | --- | --- | --- | --- | --- | --- | --- | --- | --- | --- | --- | --- | --- | --- | --- | --- |
| 80 | 5.3 | **SHELL LS2-FABRICATION** | 108.9d | 2017-10-03 14:30 A | 2018-02-08 09:30 A |  | 100% | 2017-10-03 14:30 | 2018-02-08 09:30 | 108.9d |  | TEAM_2Shift_Calendar-1 |  | 140.25h | 140.25h | 5,997.16 | 5,997.16 | 5,997.16 |
| 81 | 5.3.1 | LS2-PLATE MARKING | 4.41h | 2017-10-03 14:30 A | 2017-10-03 21:45 A | 43, 60 | 100% | 2017-10-03 14:30 | 2017-10-03 21:45 | 4.41h |  | TEAM_2Shift_Calendar-1 | Helper [200%]; Plate (Cost) [0.1%]; Fitter | 11.25h | 11.25h | 645.1 | 645.1 | 645.1 |
| 82 | 5.3.2 | LS2-STAMPING | 2h | 2017-10-03 21:45 A | 2017-10-04 07:45 A | 81 | 100% | 2017-10-03 21:45 | 2017-10-04 07:45 | 2h |  | TEAM_2Shift_Calendar-1 | Fitter | 2h | 2h |  |  |  |
| 83 | 5.3.3 | LS2-PLCUTTING | 1.33h | 2017-10-04 07:45 A | 2017-10-04 09:05 A | 82 | 100% | 2017-10-04 07:45 | 2017-10-04 09:05 | 1.33h |  | TEAM_2Shift_Calendar-1 | Helper; Gas Cutter [200%] | 4h | 4h | 250 | 250 | 250 |
| 84 | 5.3.4 | LS2-GRINDING | 2h | 2017-10-04 09:45 A | 2017-10-04 11:45 A | 83 | 100% | 2017-10-04 09:45 | 2017-10-04 11:45 | 2h |  | TEAM_2Shift_Calendar-1 | Grinder | 2h | 2h |  |  |  |
| 85 | 5.3.5 | LS2-EDGE PREPARATION | 2.5h | 2017-10-04 11:45 A | 2017-10-04 14:16 A | 84 | 100% | 2017-10-04 11:45 | 2017-10-04 14:16 | 2.5h |  | TEAM_2Shift_Calendar-1 | Grinder | 2.5h | 2.5h |  |  |  |
| 86 | 5.3.6 | LS2-PRE BENDING | 1.88h | 2017-10-04 14:16 A | 2017-10-04 16:08 A | 85 | 100% | 2017-10-04 14:16 | 2017-10-04 16:08 | 1.88h |  | TEAM_2Shift_Calendar-1 | Helper [200%]; Fitter | 7.5h | 7.5h | 410.16 | 410.16 | 410.16 |
| 87 | 5.3.7 | LS2-PRE BEND CUTOFF | 2.5h | 2017-10-04 17:16 A | 2017-10-04 19:46 A | 86 | 100% | 2017-10-04 17:16 | 2017-10-04 19:46 | 2.5h |  | TEAM_2Shift_Calendar-1 | Helper; Gas Cutter | 5h | 5h | 296.88 | 296.88 | 296.88 |
| 88 | 5.3.8 | LS2-EDGE PREPARTION | 2h | 2017-10-04 20:16 A | 2017-10-05 06:16 A | 87 | 100% | 2017-10-04 20:16 | 2017-10-05 06:16 | 2h |  | TEAM_2Shift_Calendar-1 | Grinder | 2h | 2h |  |  |  |
| 89 | 5.3.9 | LS2-ROLLING | 1.88h | 2017-10-05 06:16 A | 2017-10-05 08:08 A | 88 | 100% | 2017-10-05 06:16 | 2017-10-05 08:08 | 1.88h |  | TEAM_2Shift_Calendar-1 | Helper [200%]; Fitter | 7.5h | 7.5h | 410.16 | 410.16 | 410.16 |
| 90 | 5.3.10 | LS2-ACID CLEANING | 3h | 2017-10-05 09:16 A | 2017-10-05 12:16 A | 89 | 100% | 2017-10-05 09:16 | 2017-10-05 12:16 | 3h |  | TEAM_2Shift_Calendar-1 | Helper | 3h | 3h |  |  |  |
| 91 | 5.3.11 | LS2-FITUP | 3h | 2018-01-23 06:00 A | 2018-01-23 09:00 A |  | 100% | 2018-01-23 06:00 | 2018-01-23 09:00 | 3h | start no earlier than 2018-01-23 06:00 | TEAM_2Shift_Calendar-1 | Helper; SAW Welder [200%]; Fitter [200%] | 12h | 12h |  |  |  |
| 92 | 5.3.12 | LS2-SPIDERUP | 1.71h | 2018-01-29 06:00 A | 2018-01-29 07:42 A |  | 100% | 2018-01-29 06:00 | 2018-01-29 07:42 | 1.71h | start no earlier than 2018-01-29 06:00 | TEAM_2Shift_Calendar-1 | Helper [200%]; Fitter | 4h | 4h | 232.01 | 232.01 | 232.01 |
| 93 | 5.3.13 | LS2-FIT UP INSPECTION | 0.14d | 2018-02-02 06:00 A | 2018-02-02 08:00 A |  | 100% | 2018-02-02 06:00 | 2018-02-02 08:00 | 0.14d | start no earlier than 2018-02-02 06:00 | TEAM_2Shift_Calendar-1 | Fitter | 2h | 2h |  |  |  |
| 94 | 5.3.14 | LS2-WELDING | 25.25h | 2018-02-03 06:00 A | 2018-02-05 15:15 A |  | 100% | 2018-02-03 06:00 | 2018-02-05 15:15 | 25.25h | finish no earlier than 2018-02-06 21:30 | TEAM_2Shift_Calendar-1 | Helper; SAW Welder | 50.5h | 50.5h | 2,998.44 | 2,998.44 | 2,998.44 |
| 95 | 5.3.15 | LS2-FLUSH GRIND | 3h | 2018-02-06 21:30 A | 2018-02-07 08:30 A | 94 | 100% | 2018-02-06 21:30 | 2018-02-07 08:30 | 3h |  | TEAM_2Shift_Calendar-1 | Grinder [200%] | 6h | 6h |  |  |  |
| 96 | 5.3.16 | LS2-INSIDE WELDING | 1.43h | 2018-02-07 08:30 A | 2018-02-07 09:55 A | 95 | 100% | 2018-02-07 08:30 | 2018-02-07 09:55 | 1.43h |  | TEAM_2Shift_Calendar-1 | SAW Welder [200%]; Helper | 5h | 5h | 316.91 | 316.91 | 316.91 |
| 97 | 5.3.17 | LS2-FLUSH GRIND | 3h | 2018-02-07 10:30 A | 2018-02-07 13:30 A | 96 | 100% | 2018-02-07 10:30 | 2018-02-07 13:30 | 3h |  | TEAM_2Shift_Calendar-1 | Grinder | 3h | 3h |  |  |  |
| 98 | 5.3.18 | LS2-REROLLING | 2h | 2018-02-07 13:30 A | 2018-02-07 15:30 A | 97 | 100% | 2018-02-07 13:30 | 2018-02-07 15:30 | 2h |  | TEAM_2Shift_Calendar-1 | Helper [200%]; Fitter | 8h | 8h | 437.5 | 437.5 | 437.5 |
| 99 | 5.3.19 | LS2-DPCHECK | 3h | 2018-02-07 16:30 A | 2018-02-07 19:30 A | 98 | 100% | 2018-02-07 16:30 | 2018-02-07 19:30 | 3h |  | TEAM_2Shift_Calendar-1 | Fitter | 3h | 3h |  |  |  |
| 100 | 5.3.20 | LS2-RADIOGRAPHY | 0.07d | 2018-02-08 08:30 A | 2018-02-08 09:30 A | 99 | 100% | 2018-02-08 08:30 | 2018-02-08 09:30 | 0.07d |  | TEAM_2Shift_Calendar-1 |  |  |  |  |  |  |
| 101 | 5.4 | **SHELL LS3-FABRICATION** | 88.53d | 2017-10-03 21:45 A | 2018-01-16 09:30 A |  | 100% | 2017-10-03 21:45 | 2018-01-16 09:30 | 88.53d |  | TEAM_2Shift_Calendar-1 |  | 152.99h | 152.99h | 7,368.88 | 7,368.88 | 7,368.88 |
| 102 | 5.4.1 | LS3-PLATE MARKING | 4.41h | 2017-10-03 21:45 A | 2017-10-04 13:00 A | 41, 81 | 100% | 2017-10-03 21:45 | 2017-10-04 13:00 | 4.41h |  | TEAM_2Shift_Calendar-1 | Helper [200%]; Plate (Cost) [0.1%]; Fitter | 11.25h | 11.25h | 645.1 | 645.1 | 645.1 |
| 103 | 5.4.2 | LS3-STAMPING | 3h | 2017-10-04 13:00 A | 2017-10-04 16:01 A | 102 | 100% | 2017-10-04 13:00 | 2017-10-04 16:01 | 3h |  | TEAM_2Shift_Calendar-1 | Fitter | 3h | 3h |  |  |  |
| 104 | 5.4.3 | LS3-PLATE CUTTING | 1.33h | 2017-10-04 16:01 A | 2017-10-04 17:21 A | 103 | 100% | 2017-10-04 16:01 | 2017-10-04 17:21 | 1.33h |  | TEAM_2Shift_Calendar-1 | Helper; Gas Cutter [200%] | 4h | 4h | 250 | 250 | 250 |
| 105 | 5.4.4 | LS3-GRINDING | 2h | 2017-10-04 18:01 A | 2017-10-04 20:01 A | 104 | 100% | 2017-10-04 18:01 | 2017-10-04 20:01 | 2h |  | TEAM_2Shift_Calendar-1 | Grinder | 2h | 2h |  |  |  |
| 106 | 5.4.5 | LS3-EDGE PREPARATION | 3h | 2017-10-04 20:01 A | 2017-10-05 07:01 A | 105 | 100% | 2017-10-04 20:01 | 2017-10-05 07:01 | 3h |  | TEAM_2Shift_Calendar-1 | Grinder | 3h | 3h |  |  |  |
| 107 | 5.4.6 | LS3-PRE BENDING | 2h | 2017-10-05 07:01 A | 2017-10-05 09:01 A | 106 | 100% | 2017-10-05 07:01 | 2017-10-05 09:01 | 2h |  | TEAM_2Shift_Calendar-1 | Helper [200%]; Fitter | 8h | 8h | 437.5 | 437.5 | 437.5 |
| 108 | 5.4.7 | LS3-PRE BEND CUTOFF | 2.5h | 2017-10-05 10:01 A | 2017-10-05 12:31 A | 107 | 100% | 2017-10-05 10:01 | 2017-10-05 12:31 | 2.5h |  | TEAM_2Shift_Calendar-1 | Helper; Gas Cutter | 5h | 5h | 296.88 | 296.88 | 296.88 |
| 109 | 5.4.8 | LS3-EDGE PREPARTION | 2h | 2017-10-05 13:01 A | 2017-10-05 15:02 A | 108 | 100% | 2017-10-05 13:01 | 2017-10-05 15:02 | 2h |  | TEAM_2Shift_Calendar-1 | Grinder | 2h | 2h |  |  |  |
| 110 | 5.4.9 | LS3-ROLLING | 1.43h | 2017-10-05 15:02 A | 2017-10-05 16:27 A | 109 | 100% | 2017-10-05 15:02 | 2017-10-05 16:27 | 1.43h |  | TEAM_2Shift_Calendar-1 | Helper [200%]; Fitter | 5h | 5h | 276.74 | 276.74 | 276.74 |
| 111 | 5.4.10 | LS3-ACID CLEANING | 3h | 2018-01-03 06:00 A | 2018-01-03 09:00 A |  | 100% | 2018-01-03 06:00 | 2018-01-03 09:00 | 3h | start no earlier than 2018-01-03 06:00 | TEAM_2Shift_Calendar-1 | Helper | 3h | 3h |  |  |  |
| 112 | 5.4.11 | LS3-FITUP | 6.54h | 2018-01-04 06:00 A | 2018-01-04 12:32 A |  | 100% | 2018-01-04 06:00 | 2018-01-04 12:32 | 6.54h | finish no earlier than 2018-01-05 21:30 | TEAM_2Shift_Calendar-1 | Helper; SAW Welder [200%]; Fitter [200%] | 40h | 40h | 2,627.09 | 2,627.09 | 2,627.09 |
| 113 | 5.4.12 | LS3-SPIDERUP | 1.71h | 2018-01-05 21:30 A | 2018-01-06 07:12 A | 112 | 100% | 2018-01-05 21:30 | 2018-01-06 07:12 | 1.71h |  | TEAM_2Shift_Calendar-1 | Helper [200%]; Fitter | 4h | 4h | 232.01 | 232.01 | 232.01 |
| 114 | 5.4.13 | LS3-FITUP INSPECTION | 0.14d | 2018-01-08 19:30 A | 2018-01-08 21:30 A | 113 | 100% | 2018-01-08 19:30 | 2018-01-08 21:30 | 0.14d | finish no earlier than 2018-01-08 21:30 | TEAM_2Shift_Calendar-1 | Fitter | 2h | 2h |  |  |  |
| 115 | 5.4.14 | LS3-WELDING | 5.38h | 2018-01-08 21:30 A | 2018-01-09 10:52 A | 114 | 100% | 2018-01-08 21:30 | 2018-01-09 10:52 | 5.38h |  | TEAM_2Shift_Calendar-1 | Helper; SAW Welder | 10.75h | 10.75h | 638.28 | 638.28 | 638.28 |
| 116 | 5.4.15 | LS3-FLUSH GRIND | 3.5h | 2018-01-09 12:45 A | 2018-01-09 16:15 A | 115 | 100% | 2018-01-09 12:45 | 2018-01-09 16:15 | 3.5h |  | TEAM_2Shift_Calendar-1 | Grinder [200%] | 7h | 7h |  |  |  |
| 117 | 5.4.16 | LS3-INSIDE WELDING | 2h | 2018-01-11 06:00 A | 2018-01-11 08:00 A |  | 100% | 2018-01-11 06:00 | 2018-01-11 08:00 | 2h | start no earlier than 2018-01-11 06:00 | TEAM_2Shift_Calendar-1 | SAW Welder [200%]; Helper | 4h | 4h |  |  |  |
| 118 | 5.4.17 | LS3-FLUSH GRIND | 3h | 2018-01-11 08:00 A | 2018-01-11 11:00 A | 117 | 100% | 2018-01-11 08:00 | 2018-01-11 11:00 | 3h |  | TEAM_2Shift_Calendar-1 | Grinder | 3h | 3h |  |  |  |
| 119 | 5.4.18 | LS3-REROLLING | 16.83h | 2018-01-11 11:00 A | 2018-01-12 11:49 A | 118 | 100% | 2018-01-11 11:00 | 2018-01-12 11:49 | 16.83h |  | TEAM_2Shift_Calendar-1 | Helper [200%]; Fitter | 32.99h | 32.99h | 1,965.28 | 1,965.28 | 1,965.28 |
| 120 | 5.4.19 | LS3-DPCHECK | 3h | 2018-01-12 21:30 A | 2018-01-16 08:30 A | 119 | 100% | 2018-01-12 21:30 | 2018-01-16 08:30 | 3h |  | TEAM_2Shift_Calendar-1 | Fitter | 3h | 3h |  |  |  |
| 121 | 5.4.20 | LS3-RADIOGRAPHY | 0.07d | 2018-01-16 08:30 A | 2018-01-16 09:30 A | 120 | 100% | 2018-01-16 08:30 | 2018-01-16 09:30 | 0.07d |  | TEAM_2Shift_Calendar-1 |  |  |  |  |  |  |

Notes:
- 81: 3358*2000*8T
- 94: 0.69 Kg/m
- 100: SC
- 102: 3358*2270*8T
- 115: 0.69 Kg/m

| ID | WBS | Task | Duration | Start | Finish | Predecessors | Complete | Baseline start | Baseline finish | Baseline duration | Constraint | Calendar | Resources | Work | Actual work | Cost | Baseline cost | Actual cost |
| --- | --- | --- | --- | --- | --- | --- | --- | --- | --- | --- | --- | --- | --- | --- | --- | --- | --- | --- |
| 122 | 5.5 | **CHANNEL(LHS) LS4-FABRICATION** | 16.79d | 2018-01-22 06:00 A | 2018-02-12 09:30 A |  | 100% | 2018-01-22 06:00 | 2018-02-12 09:30 | 16.79d |  | TEAM_2Shift_Calendar-1 |  | 120.74h | 120.74h | 5,855.7 | 5,855.7 | 5,855.7 |
| 123 | 5.5.1 | LS6-PLATE MARKING | 16.46h | 2018-01-22 06:00 A | 2018-01-23 21:30 A | 42, 102 | 100% | 2018-01-22 06:00 | 2018-01-23 21:30 | 16.46h | finish no earlier than 2018-01-23 21:30 | TEAM_2Shift_Calendar-1 | Helper [200%]; Plate (Cost) [0.1%]; Fitter | 34.5h | 34.5h | 2,033.62 | 2,033.62 | 2,033.62 |
| 124 | 5.5.2 | LS6- STAMPING | 1h | 2018-01-23 21:30 A | 2018-01-24 06:30 A | 123 | 100% | 2018-01-23 21:30 | 2018-01-24 06:30 | 1h |  | TEAM_2Shift_Calendar-1 | Fitter | 1h | 1h |  |  |  |
| 125 | 5.5.3 | LS6-PL CUTTING | 1.17h | 2018-01-25 06:00 A | 2018-01-25 07:10 A |  | 100% | 2018-01-25 06:00 | 2018-01-25 07:10 | 1.17h | start no earlier than 2018-01-25 06:00 | TEAM_2Shift_Calendar-1 | Helper; Gas Cutter [200%] | 3.5h | 3.5h | 218.75 | 218.75 | 218.75 |
| 126 | 5.5.4 | LS6-GRINDING | 1.5h | 2018-01-25 07:30 A | 2018-01-25 09:00 A | 125 | 100% | 2018-01-25 07:30 | 2018-01-25 09:00 | 1.5h |  | TEAM_2Shift_Calendar-1 | Grinder | 1.5h | 1.5h |  |  |  |
| 127 | 5.5.5 | LS6-EDGE PREPARATION | 2.5h | 2018-01-25 09:00 A | 2018-01-25 11:30 A | 126 | 100% | 2018-01-25 09:00 | 2018-01-25 11:30 | 2.5h |  | TEAM_2Shift_Calendar-1 | Grinder | 2.5h | 2.5h |  |  |  |
| 128 | 5.5.6 | LS6-PRE BENDING | 2.5h | 2018-01-25 11:30 A | 2018-01-25 14:00 A | 127 | 100% | 2018-01-25 11:30 | 2018-01-25 14:00 | 2.5h |  | TEAM_2Shift_Calendar-1 | Helper [200%]; Fitter | 10h | 10h | 546.88 | 546.88 | 546.88 |
| 129 | 5.5.7 | LS6-PREBEND CUTOFF | 3.25h | 2018-01-25 16:00 A | 2018-01-25 19:15 A | 128 | 100% | 2018-01-25 16:00 | 2018-01-25 19:15 | 3.25h |  | TEAM_2Shift_Calendar-1 | Helper; Gas Cutter | 6.5h | 6.5h | 385.94 | 385.94 | 385.94 |
| 130 | 5.5.8 | LS6-EDGE PREPARTION | 2h | 2018-01-25 20:30 A | 2018-01-29 06:30 A | 129 | 100% | 2018-01-25 20:30 | 2018-01-29 06:30 | 2h |  | TEAM_2Shift_Calendar-1 | Grinder | 2h | 2h |  |  |  |
| 131 | 5.5.9 | LS6-ROLLING | 1.75h | 2018-01-29 06:30 A | 2018-01-29 08:15 A | 130 | 100% | 2018-01-29 06:30 | 2018-01-29 08:15 | 1.75h |  | TEAM_2Shift_Calendar-1 | Helper [200%]; Fitter | 7h | 7h | 382.81 | 382.81 | 382.81 |
| 132 | 5.5.10 | LS4-ACID CLEANING | 3h | 2018-01-29 09:30 A | 2018-01-29 12:30 A | 131 | 100% | 2018-01-29 09:30 | 2018-01-29 12:30 | 3h |  | TEAM_2Shift_Calendar-1 | Helper | 3h | 3h |  |  |  |
| 133 | 5.5.11 | LS6-FITUP | 1.35h | 2018-02-03 18:30 A | 2018-02-03 19:51 A | 132 | 100% | 2018-02-03 18:30 | 2018-02-03 19:51 | 1.35h | finish no earlier than 2018-02-03 21:30 | TEAM_2Shift_Calendar-1 | Helper; SAW Welder [200%]; Fitter [200%] | 9h | 9h | 593.43 | 593.43 | 593.43 |
| 134 | 5.5.12 | LS6-SPIDERUP | 1.71h | 2018-02-03 21:30 A | 2018-02-05 07:12 A | 133 | 100% | 2018-02-03 21:30 | 2018-02-05 07:12 | 1.71h |  | TEAM_2Shift_Calendar-1 | Helper [200%]; Fitter | 4h | 4h | 232.01 | 232.01 | 232.01 |
| 135 | 5.5.13 | LS6-FITUP INSPECTION | 0.14d | 2018-02-05 08:30 A | 2018-02-05 10:30 A | 134 | 100% | 2018-02-05 08:30 | 2018-02-05 10:30 | 0.14d |  | TEAM_2Shift_Calendar-1 | Fitter | 2h | 2h |  |  |  |
| 136 | 5.5.14 | LS6-WELDING | 6.12h | 2018-02-08 14:15 A | 2018-02-08 20:22 A | 135 | 100% | 2018-02-08 14:15 | 2018-02-08 20:22 | 6.12h | finish no earlier than 2018-02-08 21:30 | TEAM_2Shift_Calendar-1 | Helper; SAW Welder | 12.25h | 12.25h | 727.34 | 727.34 | 727.34 |
| 137 | 5.5.15 | LS6-FLUSH GRIND | 0.5h | 2018-02-08 21:30 A | 2018-02-08 22:00 A | 136 | 100% | 2018-02-08 21:30 | 2018-02-08 22:00 | 0.5h |  | TEAM_2Shift_Calendar-1 | Grinder [200%] | 1h | 1h |  |  |  |
| 138 | 5.5.16 | LS6-INSIDE WELDING | 1.71h | 2018-02-09 06:00 A | 2018-02-09 07:42 A | 137 | 100% | 2018-02-09 06:00 | 2018-02-09 07:42 | 1.71h |  | TEAM_2Shift_Calendar-1 | SAW Welder [200%]; Helper | 4h | 4h | 242.73 | 242.73 | 242.73 |
| 139 | 5.5.17 | LS6-FLUSH GRIND | 5h | 2018-02-09 09:00 A | 2018-02-09 14:00 A | 138 | 100% | 2018-02-09 09:00 | 2018-02-09 14:00 | 5h |  | TEAM_2Shift_Calendar-1 | Grinder | 5h | 5h |  |  |  |
| 140 | 5.5.18 | LS6-REROLLING | 2.25h | 2018-02-09 14:00 A | 2018-02-09 16:15 A | 139 | 100% | 2018-02-09 14:00 | 2018-02-09 16:15 | 2.25h |  | TEAM_2Shift_Calendar-1 | Helper [200%]; Fitter | 9h | 9h | 492.19 | 492.19 | 492.19 |
| 141 | 5.5.19 | LS6-DPCHECK | 3h | 2018-02-09 17:00 A | 2018-02-09 20:00 A | 140 | 100% | 2018-02-09 17:00 | 2018-02-09 20:00 | 3h |  | TEAM_2Shift_Calendar-1 | Fitter | 3h | 3h |  |  |  |
| 142 | 5.5.20 | LS6-RADIOGRAPHY | 0.07d | 2018-02-12 08:30 A | 2018-02-12 09:30 A | 141 | 100% | 2018-02-12 08:30 | 2018-02-12 09:30 | 0.07d |  | TEAM_2Shift_Calendar-1 |  |  |  |  |  |  |
| 143 | 5.6 | **CHANNEL BONNET FORMING** | 8.09d | 2018-02-25 06:00 A | 2018-03-06 11:15 A |  | 100% | 2018-02-25 06:00 | 2018-03-06 11:15 | 8.09d |  | TEAM_2Shift_Calendar-1 |  | 121.25h | 121.25h | 2,277.91 | 2,277.91 | 2,277.91 |
| 144 | 5.6.1 | DISH PLATE MARKING | 4.41h | 2018-02-25 06:00 A | 2018-02-26 13:15 A | 43, 123 | 100% | 2018-02-25 06:00 | 2018-02-26 13:15 | 4.41h |  | TEAM_2Shift_Calendar-1 | Helper [200%]; Plate (Cost) [0.1%]; Fitter | 11.25h | 11.25h | 645.1 | 645.1 | 645.1 |
| 145 | 5.6.2 | DISH PLATE CUTTING | 2h | 2018-02-26 13:15 A | 2018-02-26 15:15 A | 144 | 100% | 2018-02-26 13:15 | 2018-02-26 15:15 | 2h |  | TEAM_2Shift_Calendar-1 | Helper; Gas Cutter | 4h | 4h |  |  |  |
| 146 | 5.6.3 | DISH PLATE GRINDING | 2h | 2018-02-26 15:15 A | 2018-02-26 17:15 A | 145 | 100% | 2018-02-26 15:15 | 2018-02-26 17:15 | 2h |  | TEAM_2Shift_Calendar-1 | Grinder | 2h | 2h |  |  |  |
| 147 | 5.6.4 | DISH FORMING | 0.28d | 2018-02-26 17:15 A | 2018-02-26 21:15 A | 146 | 100% | 2018-02-26 17:15 | 2018-02-26 21:15 | 0.28d |  | TEAM_2Shift_Calendar-1 |  |  |  |  |  |  |
| 148 | 5.6.5 | DISH INSPECTION | 3d | 2018-02-27 12:15 A | 2018-03-02 07:45 A | 147 | 100% | 2018-02-27 12:15 | 2018-03-02 07:45 | 3d |  | TEAM_2Shift_Calendar-1 | Fitter | 43.5h | 43.5h |  |  |  |
| 149 | 5.6.6 | DISH SURFACE GRINDING | 14.5h | 2018-03-02 07:45 A | 2018-03-03 06:15 A | 148 | 100% | 2018-03-02 07:45 | 2018-03-03 06:15 | 14.5h |  | TEAM_2Shift_Calendar-1 | Grinder | 14.5h | 14.5h |  |  |  |
| 150 | 5.6.7 | SF MARKING | 13.75h | 2018-03-03 06:15 A | 2018-03-03 20:00 A | 149 | 100% | 2018-03-03 06:15 | 2018-03-03 20:00 | 13.75h |  | TEAM_2Shift_Calendar-1 | Helper; Fitter | 27.5h | 27.5h | 1,632.81 | 1,632.81 | 1,632.81 |
| 151 | 5.6.8 | SF CUTTING | 2.5h | 2018-03-05 15:15 A | 2018-03-05 17:45 A | 150 | 100% | 2018-03-05 15:15 | 2018-03-05 17:45 | 2.5h |  | TEAM_2Shift_Calendar-1 | Helper; Gas Cutter | 5h | 5h |  |  |  |
| 152 | 5.6.9 | GRINDING | 2.5h | 2018-03-05 17:45 A | 2018-03-05 20:15 A | 151 | 100% | 2018-03-05 17:45 | 2018-03-05 20:15 | 2.5h |  | TEAM_2Shift_Calendar-1 | Grinder | 2.5h | 2.5h |  |  |  |
| 153 | 5.6.10 | DISH EP | 4h | 2018-03-05 20:15 A | 2018-03-06 08:15 A | 152 | 100% | 2018-03-05 20:15 | 2018-03-06 08:15 | 4h |  | TEAM_2Shift_Calendar-1 | Grinder [200%] | 8h | 8h |  |  |  |
| 154 | 5.6.11 | FINAL INSPECTION | 0.21d | 2018-03-06 08:15 A | 2018-03-06 11:15 A | 153 | 100% | 2018-03-06 08:15 | 2018-03-06 11:15 | 0.21d |  | TEAM_2Shift_Calendar-1 | Fitter | 3h | 3h |  |  |  |

Notes:
- 123: 3383*1072*16T
- 136: 2.94Kg/m
- 142: SC
- 143: LHS+RHS
- 144: DIA 1424*18T/16T
- 147: SC

| ID | WBS | Task | Duration | Start | Finish | Predecessors | Complete | Baseline start | Baseline finish | Baseline duration | Constraint | Calendar | Resources | Work | Actual work | Cost | Baseline cost | Actual cost |
| --- | --- | --- | --- | --- | --- | --- | --- | --- | --- | --- | --- | --- | --- | --- | --- | --- | --- | --- |
| 155 | 5.7 | **NOZZLE(PL)FABRICATION** | 17.31d | 2018-02-15 06:00 A | 2018-03-06 17:00 A |  | 100% | 2018-02-15 06:00 | 2018-03-06 17:00 | 17.31d |  | TEAM_2Shift_Calendar-1 |  | 361.99h | 361.99h | 15,970.06 | 15,970.06 | 15,970.06 |
| 156 | 5.7.1 | PLATE MARKING | 7.93h | 2018-02-15 06:00 A | 2018-02-15 20:30 A |  | 100% | 2018-02-15 06:00 | 2018-02-15 20:30 | 7.93h | start no earlier than 2018-02-15 06:00 | TEAM_2Shift_Calendar-1 | Helper [200%]; Plate (Cost) [0.1%]; Fitter [200%] | 34.99h | 34.99h | 2,047.02 | 2,047.02 | 2,047.02 |
| 157 | 5.7.2 | STAMPING | 3h | 2018-02-15 20:30 A | 2018-02-16 07:30 A | 156 | 100% | 2018-02-15 20:30 | 2018-02-16 07:30 | 3h |  | TEAM_2Shift_Calendar-1 | Fitter | 3h | 3h |  |  |  |
| 158 | 5.7.3 | PL CUTTING | 1h | 2018-02-16 07:30 A | 2018-02-16 08:30 A | 157 | 100% | 2018-02-16 07:30 | 2018-02-16 08:30 | 1h |  | TEAM_2Shift_Calendar-1 | Helper; Gas Cutter [200%] | 2h | 2h | 68.75 | 68.75 | 68.75 |
| 159 | 5.7.4 | GRINDING | 3h | 2018-02-16 08:30 A | 2018-02-16 11:30 A | 158 | 100% | 2018-02-16 08:30 | 2018-02-16 11:30 | 3h |  | TEAM_2Shift_Calendar-1 | Grinder | 3h | 3h |  |  |  |
| 160 | 5.7.5 | EDGE PREPARATION | 4h | 2018-02-16 11:30 A | 2018-02-16 15:30 A | 159 | 100% | 2018-02-16 11:30 | 2018-02-16 15:30 | 4h |  | TEAM_2Shift_Calendar-1 | Grinder | 4h | 4h |  |  |  |
| 161 | 5.7.6 | PRE BENDING | 5.75h | 2018-02-16 15:30 A | 2018-02-16 21:15 A | 160 | 100% | 2018-02-16 15:30 | 2018-02-16 21:15 | 5.75h |  | TEAM_2Shift_Calendar-1 | Helper [200%]; Fitter | 23h | 23h | 1,257.81 | 1,257.81 | 1,257.81 |
| 162 | 5.7.7 | PREBEND CUTOFF | 5.25h | 2018-02-17 09:30 A | 2018-02-17 14:45 A | 161 | 100% | 2018-02-17 09:30 | 2018-02-17 14:45 | 5.25h |  | TEAM_2Shift_Calendar-1 | Helper; Gas Cutter | 10.5h | 10.5h | 623.44 | 623.44 | 623.44 |
| 163 | 5.7.8 | EDGE PREPARTION | 8h | 2018-02-17 17:30 A | 2018-02-19 09:30 A | 162 | 100% | 2018-02-17 17:30 | 2018-02-19 09:30 | 8h |  | TEAM_2Shift_Calendar-1 | Grinder | 8h | 8h |  |  |  |
| 164 | 5.7.9 | ROLLING | 6.75h | 2018-02-19 09:30 A | 2018-02-19 16:15 A | 163 | 100% | 2018-02-19 09:30 | 2018-02-19 16:15 | 6.75h |  | TEAM_2Shift_Calendar-1 | Helper [200%]; Fitter | 27h | 27h | 1,476.56 | 1,476.56 | 1,476.56 |
| 165 | 5.7.10 | FITUP | 4.62h | 2018-02-19 21:30 A | 2018-02-20 10:06 A | 164 | 100% | 2018-02-19 21:30 | 2018-02-20 10:06 | 4.62h |  | TEAM_2Shift_Calendar-1 | Helper; SAW Welder [200%]; Fitter | 20h | 20h | 1,288.35 | 1,288.35 | 1,288.35 |
| 166 | 5.7.11 | SPIDERUP | 2.4h | 2018-02-20 17:30 A | 2018-02-20 19:54 A | 165 | 100% | 2018-02-20 17:30 | 2018-02-20 19:54 | 2.4h |  | TEAM_2Shift_Calendar-1 | Helper [200%]; Fitter | 6h | 6h | 345 | 345 | 345 |
| 167 | 5.7.12 | FITUP INSPECTION | 0.69d | 2018-02-20 21:30 A | 2018-02-21 15:30 A | 166 | 100% | 2018-02-20 21:30 | 2018-02-21 15:30 | 0.69d |  | TEAM_2Shift_Calendar-1 | Fitter | 10h | 10h |  |  |  |
| 168 | 5.7.13 | WELDING | 19.5h | 2018-02-21 15:30 A | 2018-02-22 19:00 A | 167 | 100% | 2018-02-21 15:30 | 2018-02-22 19:00 | 19.5h |  | TEAM_2Shift_Calendar-1 | Helper; SAW Welder | 39h | 39h | 2,315.62 | 2,315.62 | 2,315.62 |
| 169 | 5.7.14 | BACK CHIP | 4h | 2018-02-23 12:30 A | 2018-02-23 16:30 A | 168 | 100% | 2018-02-23 12:30 | 2018-02-23 16:30 | 4h |  | TEAM_2Shift_Calendar-1 | Grinder [200%] | 8h | 8h |  |  |  |
| 170 | 5.7.15 | INSIDE WELDING | 4.12h | 2018-02-23 16:30 A | 2018-02-23 20:37 A | 169 | 100% | 2018-02-23 16:30 | 2018-02-23 20:37 | 4.12h |  | TEAM_2Shift_Calendar-1 | SAW Welder [200%]; Helper | 10h | 10h | 610.15 | 610.15 | 610.15 |
| 171 | 5.7.16 | FLUSH GRIND | 10h | 2018-02-26 07:30 A | 2018-02-26 17:30 A | 170 | 100% | 2018-02-26 07:30 | 2018-02-26 17:30 | 10h |  | TEAM_2Shift_Calendar-1 | Grinder | 10h | 10h |  |  |  |
| 172 | 5.7.17 | REROLLING | 7.75h | 2018-02-26 17:30 A | 2018-02-27 09:15 A | 171 | 100% | 2018-02-26 17:30 | 2018-02-27 09:15 | 7.75h |  | TEAM_2Shift_Calendar-1 | Helper [200%]; Fitter | 31h | 31h | 1,695.31 | 1,695.31 | 1,695.31 |
| 173 | 5.7.18 | DPCHECK | 4h | 2018-02-27 13:30 A | 2018-02-27 17:30 A | 172 | 100% | 2018-02-27 13:30 | 2018-02-27 17:30 | 4h |  | TEAM_2Shift_Calendar-1 | Fitter | 4h | 4h |  |  |  |
| 174 | 5.7.19 | RADIOGRAPHY | 0.21d | 2018-02-28 08:30 A | 2018-02-28 11:30 A | 173 | 100% | 2018-02-28 08:30 | 2018-02-28 11:30 | 0.21d |  | TEAM_2Shift_Calendar-1 |  |  |  |  |  |  |
| 175 | 5.7.20 | FLANGE FIT UP | 6.73h | 2018-02-28 11:30 A | 2018-02-28 18:13 A | 174 | 100% | 2018-02-28 11:30 | 2018-02-28 18:13 | 6.73h |  | TEAM_2Shift_Calendar-1 | Helper; SAW Welder [200%]; Fitter | 32.5h | 32.5h | 2,107.99 | 2,107.99 | 2,107.99 |
| 176 | 5.7.21 | WELDING | 5.5h | 2018-03-01 10:00 A | 2018-03-01 15:30 A | 175 | 100% | 2018-03-01 10:00 | 2018-03-01 15:30 | 5.5h |  | TEAM_2Shift_Calendar-1 | SAW Welder; Helper | 11h | 11h | 653.12 | 653.12 | 653.12 |
| 177 | 5.7.22 | FLUSH GRIND | 5h | 2018-03-01 16:00 A | 2018-03-01 21:00 A | 176 | 100% | 2018-03-01 16:00 | 2018-03-01 21:00 | 5h |  | TEAM_2Shift_Calendar-1 | Grinder | 5h | 5h |  |  |  |
| 178 | 5.7.23 | INSIDE WELDING | 2.1h | 2018-03-01 21:00 A | 2018-03-02 07:06 A | 177 | 100% | 2018-03-01 21:00 | 2018-03-02 07:06 | 2.1h |  | TEAM_2Shift_Calendar-1 | SAW Welder [200%]; Helper | 7h | 7h | 441.88 | 441.88 | 441.88 |
| 179 | 5.7.24 | FLUSH GRIND | 5h | 2018-03-02 08:00 A | 2018-03-02 13:00 A | 178 | 100% | 2018-03-02 08:00 | 2018-03-02 13:00 | 5h |  | TEAM_2Shift_Calendar-1 | Grinder | 5h | 5h |  |  |  |
| 180 | 5.7.25 | DP CHECK | 3h | 2018-03-02 13:00 A | 2018-03-02 16:00 A | 179 | 100% | 2018-03-02 13:00 | 2018-03-02 16:00 | 3h |  | TEAM_2Shift_Calendar-1 | Fitter | 3h | 3h |  |  |  |
| 181 | 5.7.26 | RT | 0.21d | 2018-03-02 16:00 A | 2018-03-02 19:00 A | 180 | 100% | 2018-03-02 16:00 | 2018-03-02 19:00 | 0.21d |  | TEAM_2Shift_Calendar-1 |  |  |  |  |  |  |
| 182 | 5.7.27 | MACHINING | 1d | 2018-03-03 10:00 A | 2018-03-05 08:30 A | 181 | 100% | 2018-03-03 10:00 | 2018-03-05 08:30 | 1d |  | TEAM_2Shift_Calendar-1 | Lathe | 14.5h | 14.5h |  |  |  |
| 183 | 5.7.28 | PROFILE MARKING | 8.75h | 2018-03-05 08:30 A | 2018-03-05 17:15 A | 182 | 100% | 2018-03-05 08:30 | 2018-03-05 17:15 | 8.75h |  | TEAM_2Shift_Calendar-1 | Helper; Fitter | 17.5h | 17.5h | 1,039.06 | 1,039.06 | 1,039.06 |
| 184 | 5.7.29 | PROFILE CUTTING | 3h | 2018-03-06 07:00 A | 2018-03-06 10:00 A | 183 | 100% | 2018-03-06 07:00 | 2018-03-06 10:00 | 3h |  | TEAM_2Shift_Calendar-1 | Helper; Gas Cutter | 6h | 6h |  |  |  |
| 185 | 5.7.30 | PROFILE GRINDING | 3h | 2018-03-06 10:00 A | 2018-03-06 13:00 A | 184 | 100% | 2018-03-06 10:00 | 2018-03-06 13:00 | 3h |  | TEAM_2Shift_Calendar-1 | Grinder | 3h | 3h |  |  |  |
| 186 | 5.7.31 | EDEGE PREPARATION | 4h | 2018-03-06 13:00 A | 2018-03-06 17:00 A | 185 | 100% | 2018-03-06 13:00 | 2018-03-06 17:00 | 4h |  | TEAM_2Shift_Calendar-1 | Fitter | 4h | 4h |  |  |  |

Notes:
- 155: 2+2NOS-(8T+16T)
- 174: SC

| ID | WBS | Task | Type | Duration | Start | Finish | Predecessors | Complete | Baseline start | Baseline finish | Baseline duration | Calendar | Resources | Work | Actual work | Cost | Baseline cost | Actual cost |
| --- | --- | --- | --- | --- | --- | --- | --- | --- | --- | --- | --- | --- | --- | --- | --- | --- | --- | --- |
| 187 | 5.8 | **NOZZLE(PIPE) FABRICATION** |  | 5.98d | 2018-02-19 21:30 A | 2018-02-27 12:15 A |  | 100% | 2018-02-19 21:30 | 2018-02-27 12:15 | 5.98d | TEAM_2Shift_Calendar-1 |  | 105.25h | 105.25h | 3,691.13 | 3,691.13 | 3,691.13 |
| 188 | 5.8.1 | PIPE MARKING |  | 1.88h | 2018-02-19 21:30 A | 2018-02-20 08:30 A | 45, 164 | 100% | 2018-02-19 21:30 | 2018-02-20 08:30 | 1.88h | TEAM_2Shift_Calendar-1 | Helper [200%]; Pipe (Cost) [0.1%]; Fitter | 5h | 5h | 285.16 | 285.16 | 285.16 |
| 189 | 5.8.2 | STAMPING |  | 2h | 2018-02-20 08:30 A | 2018-02-20 10:30 A | 188 | 100% | 2018-02-20 08:30 | 2018-02-20 10:30 | 2h | TEAM_2Shift_Calendar-1 | Fitter | 2h | 2h |  |  |  |
| 190 | 5.8.3 | CUTTING |  | 2h | 2018-02-20 10:30 A | 2018-02-20 12:30 A | 189 | 100% | 2018-02-20 10:30 | 2018-02-20 12:30 | 2h | TEAM_2Shift_Calendar-1 | Gas Cutter | 2h | 2h |  |  |  |
| 191 | 5.8.4 | EDGE PREPARATION |  | 3h | 2018-02-20 12:30 A | 2018-02-20 15:30 A | 190 | 100% | 2018-02-20 12:30 | 2018-02-20 15:30 | 3h | TEAM_2Shift_Calendar-1 | Grinder | 3h | 3h |  |  |  |
| 192 | 5.8.5 | FLANGE FIT UP |  | 3.42h | 2018-02-20 15:30 A | 2018-02-21 07:00 A | 191 | 100% | 2018-02-20 15:30 | 2018-02-21 07:00 | 3.42h | TEAM_2Shift_Calendar-1 | Helper; SAW Welder [200%]; Forging Std (Cost) [0.1%]; Fitter | 15.5h | 15.5h | 1,001.29 | 1,001.29 | 1,001.29 |
| 193 | 5.8.6 | WELDING |  | 5.5h | 2018-02-21 07:00 A | 2018-02-21 12:30 A | 192 | 100% | 2018-02-21 07:00 | 2018-02-21 12:30 | 5.5h | TEAM_2Shift_Calendar-1 | Helper; SAW Welder | 11h | 11h | 653.12 | 653.12 | 653.12 |
| 194 | 5.8.7 | FLUSH GRIND |  | 3h | 2018-02-21 14:00 A | 2018-02-21 17:00 A | 193 | 100% | 2018-02-21 14:00 | 2018-02-21 17:00 | 3h | TEAM_2Shift_Calendar-1 | Grinder [200%] | 6h | 6h |  |  |  |
| 195 | 5.8.8 | INSIDE WELDING |  | 6h | 2018-02-21 17:00 A | 2018-02-22 07:00 A | 194 | 100% | 2018-02-21 17:00 | 2018-02-22 07:00 | 6h | TEAM_2Shift_Calendar-1 | Helper; SAW Welder | 12h | 12h | 712.5 | 712.5 | 712.5 |
| 196 | 5.8.9 | FLUSH GRIND |  | 2.5h | 2018-02-22 08:00 A | 2018-02-22 10:30 A | 195 | 100% | 2018-02-22 08:00 | 2018-02-22 10:30 | 2.5h | TEAM_2Shift_Calendar-1 | Grinder [200%] | 5h | 5h |  |  |  |
| 197 | 5.8.10 | DP CHECK |  | 5h | 2018-02-22 10:30 A | 2018-02-22 15:30 A | 196 | 100% | 2018-02-22 10:30 | 2018-02-22 15:30 | 5h | TEAM_2Shift_Calendar-1 | Fitter | 5h | 5h |  |  |  |
| 198 | 5.8.11 | RT |  | 0.34d | 2018-02-22 15:30 A | 2018-02-22 20:30 A | 197 | 100% | 2018-02-22 15:30 | 2018-02-22 20:30 | 0.34d | TEAM_2Shift_Calendar-1 |  |  |  |  |  |  |
| 199 | 5.8.12 | MACHINING |  | 0.5d | 2018-02-23 11:30 A | 2018-02-23 18:45 A | 198 | 100% | 2018-02-23 11:30 | 2018-02-23 18:45 | 0.5d | TEAM_2Shift_Calendar-1 | Lathe | 7.25h | 7.25h |  |  |  |
| 200 | 5.8.13 | PROFILE MARKING |  | 8.75h | 2018-02-23 18:45 A | 2018-02-26 11:30 A | 199 | 100% | 2018-02-23 18:45 | 2018-02-26 11:30 | 8.75h | TEAM_2Shift_Calendar-1 | Helper; Fitter | 17.5h | 17.5h | 1,039.06 | 1,039.06 | 1,039.06 |
| 201 | 5.8.14 | PROFILE CUTTING |  | 3h | 2018-02-26 17:15 A | 2018-02-26 20:15 A | 200 | 100% | 2018-02-26 17:15 | 2018-02-26 20:15 | 3h | TEAM_2Shift_Calendar-1 | Helper; Gas Cutter | 6h | 6h |  |  |  |
| 202 | 5.8.15 | PROFILE GRINDING |  | 3h | 2018-02-26 20:15 A | 2018-02-27 07:15 A | 201 | 100% | 2018-02-26 20:15 | 2018-02-27 07:15 | 3h | TEAM_2Shift_Calendar-1 | Grinder | 3h | 3h |  |  |  |
| 203 | 5.8.16 | EDGE PREPARATION |  | 5h | 2018-02-27 07:15 A | 2018-02-27 12:15 A | 202 | 100% | 2018-02-27 07:15 | 2018-02-27 12:15 | 5h | TEAM_2Shift_Calendar-1 | Fitter | 5h | 5h |  |  |  |
| 204 | 5.9 | **TUBESHEET FABRICATION** |  | 15.15d | 2017-10-05 17:05 A | 2017-10-24 12:48 A |  | 100% | 2017-10-05 17:05 | 2017-10-24 12:48 | 15.15d | TEAM_2Shift_Calendar-1 |  | 321h | 321h | 8,528.98 | 8,528.98 | 8,528.98 |
| 205 | 5.9.1 | TUBESHEET MARKING |  | 3h | 2017-10-05 17:05 A | 2017-10-05 21:05 A | 144, 192 | 100% | 2017-10-05 17:05 | 2017-10-05 21:05 | 3h | TEAM_2Shift_Calendar-1 | Helper [200%]; Tube Sheet (Cost) [0.1%]; Fitter | 12h | 12h | 656.25 | 656.25 | 656.25 |
| 206 | 5.9.2 | STAMPING |  | 4h | 2017-10-05 21:05 A | 2017-10-06 09:05 A | 205 | 100% | 2017-10-05 21:05 | 2017-10-06 09:05 | 4h | TEAM_2Shift_Calendar-1 | Fitter | 4h | 4h |  |  |  |
| 207 | 5.9.3 | PLASMA ARC CUTTING |  | 2.67h | 2017-10-06 09:05 A | 2017-10-06 11:45 A | 206 | 100% | 2017-10-06 09:05 | 2017-10-06 11:45 | 2.67h | TEAM_2Shift_Calendar-1 | Helper; Gas Cutter [200%] | 8h | 8h | 500 | 500 | 500 |
| 208 | 5.9.4 | GRINDING |  | 4h | 2017-10-06 13:05 A | 2017-10-06 17:06 A | 207 | 100% | 2017-10-06 13:05 | 2017-10-06 17:06 | 4h | TEAM_2Shift_Calendar-1 | Grinder | 4h | 4h |  |  |  |
| 209 | 5.9.5 | MACHINING |  | 1.16d | 2017-10-06 17:06 A | 2017-10-07 17:57 A | 208 | 100% | 2017-10-06 17:06 | 2017-10-07 17:57 | 1.16d | TEAM_2Shift_Calendar-1 | Helper; Lathe [200%] | 50.5h | 50.5h | 841.67 | 841.67 | 841.67 |
| 210 | 5.9.6 | HOLES MARKING |  | 14.5h | 2017-10-07 19:07 A | 2017-10-09 17:38 A | 209 | 100% | 2017-10-07 19:07 | 2017-10-09 17:38 | 14.5h | TEAM_2Shift_Calendar-1 | Fitter | 14.5h | 14.5h |  |  |  |
| 211 | 5.9.7 | DRILLING |  | 55h | 2017-10-09 17:38 A | 2017-10-13 08:41 A | 210 | 100% | 2017-10-09 17:38 | 2017-10-13 08:41 | 55h | TEAM_2Shift_Calendar-1 | Driller [200%] | 110h | 110h |  |  |  |
| 212 | 5.9.8 | EXPANSION GROOVING |  | 3.79d | 2017-10-13 08:41 A | 2017-10-18 15:44 A | 211 | 100% | 2017-10-13 08:41 | 2017-10-18 15:44 | 3.79d | TEAM_2Shift_Calendar-1 | Helper [200%]; Fitter | 110h | 110h | 6,531.06 | 6,531.06 | 6,531.06 |
| 213 | 5.9.9 | TIE ROD HOLE MARKING | milestone | 0h | 2017-10-18 15:44 A | 2017-10-18 15:44 A | 212 | 100% | 2017-10-18 15:44 | 2017-10-18 15:44 | 0h | TEAM_2Shift_Calendar-1 | Rod (Cost); Fitter |  |  |  |  |  |
| 214 | 5.9.10 | TIE ROD HOLE DRILLING |  | 2h | 2017-10-24 06:48 A | 2017-10-24 08:48 A | 213 | 100% | 2017-10-24 06:48 | 2017-10-24 08:48 | 2h | TEAM_2Shift_Calendar-1 | Driller [200%] | 4h | 4h |  |  |  |
| 215 | 5.9.11 | FINAL INSPECTION |  | 0.28d | 2017-10-24 08:48 A | 2017-10-24 12:48 A | 214 | 100% | 2017-10-24 08:48 | 2017-10-24 12:48 | 0.28d | TEAM_2Shift_Calendar-1 | Fitter | 4h | 4h |  |  |  |

Notes:
- 187: 6NOS
- 198: SC
- 204: 2NOS-LHS+RHS
- 205: Φ1274*110T
- 210: 1298HOLES

| ID | WBS | Task | Duration | Start | Finish | Predecessors | Complete | Baseline start | Baseline finish | Baseline duration | Constraint | Calendar | Resources | Work | Actual work | Cost | Baseline cost | Actual cost |
| --- | --- | --- | --- | --- | --- | --- | --- | --- | --- | --- | --- | --- | --- | --- | --- | --- | --- | --- |
| 216 | 5.10 | **BAFFLE PREPARATION** | 136.66d | 2017-09-28 16:00 A | 2018-03-08 13:30 A |  | 100% | 2017-09-28 16:00 | 2018-03-08 13:30 | 136.66d |  | TEAM_2Shift_Calendar-1 |  | 288h | 288h | 8,639.06 | 8,639.06 | 8,639.06 |
| 217 | 5.10.1 | PLATE MARKING | 10.25h | 2017-09-28 16:00 A | 2017-09-29 14:31 A | 51 | 100% | 2017-09-28 16:00 | 2017-09-29 14:31 | 10.25h |  | TEAM_2Shift_Calendar-1 | Helper; Plate (Cost) [0.1%]; Fitter | 20.5h | 20.5h | 1,217.19 | 1,217.19 | 1,217.19 |
| 218 | 5.10.2 | CUTTING | 3h | 2017-09-29 14:31 A | 2017-09-29 17:31 A | 217 | 100% | 2017-09-29 14:31 | 2017-09-29 17:31 | 3h |  | TEAM_2Shift_Calendar-1 | Helper; Gas Cutter | 6h | 6h | 356.25 | 356.25 | 356.25 |
| 219 | 5.10.3 | GRINDING | 5h | 2018-02-22 06:00 A | 2018-02-22 11:00 A | 218 | 100% | 2018-02-22 06:00 | 2018-02-22 11:00 | 5h |  | TEAM_2Shift_Calendar-1 | Grinder | 5h | 5h |  |  |  |
| 220 | 5.10.4 | AXIS LINE MARKING | 31.5h | 2017-09-30 09:31 A | 2018-02-23 20:30 A | 219 | 100% | 2017-09-30 09:31 | 2018-02-23 20:30 | 31.5h | finish no earlier than 2018-02-23 21:30 | TEAM_2Shift_Calendar-1 | Helper; Fitter | 63h | 63h | 3,740.62 | 3,740.62 | 3,740.62 |
| 221 | 5.10.5 | STACKKING | 4h | 2018-02-24 06:00 A | 2018-02-26 10:00 A | 220 | 100% | 2018-02-24 06:00 | 2018-02-26 10:00 | 4h |  | TEAM_2Shift_Calendar-1 | Fitter | 4h | 4h |  |  |  |
| 222 | 5.10.6 | DRILLING | 0.06w | 2018-02-26 10:00 A | 2018-02-26 15:00 A | 221 | 100% | 2018-02-26 10:00 | 2018-02-26 15:00 | 0.06w |  | TEAM_2Shift_Calendar-1 | Driller | 5h | 5h |  |  |  |
| 223 | 5.10.7 | DE-STACKING | 16h | 2018-02-26 15:00 A | 2018-02-27 15:00 A | 222 | 100% | 2018-02-26 15:00 | 2018-02-27 15:00 | 16h |  | TEAM_2Shift_Calendar-1 | Fitter | 16h | 16h |  |  |  |
| 224 | 5.10.8 | GRIND THE STACKS | 5h | 2018-02-27 15:00 A | 2018-02-27 20:00 A | 223 | 100% | 2018-02-27 15:00 | 2018-02-27 20:00 | 5h |  | TEAM_2Shift_Calendar-1 | Grinder | 5h | 5h |  |  |  |
| 225 | 5.10.9 | HOLE CHAMFERING | 16h | 2018-02-27 20:00 A | 2018-02-28 20:00 A | 224 | 100% | 2018-02-27 20:00 | 2018-02-28 20:00 | 16h |  | TEAM_2Shift_Calendar-1 | Driller | 16h | 16h |  |  |  |
| 226 | 5.10.10 | NOTCH FOR SEALING/SLIDING STRIP | 16h | 2018-02-28 20:00 A | 2018-03-01 20:00 A | 225 | 100% | 2018-02-28 20:00 | 2018-03-01 20:00 | 16h |  | TEAM_2Shift_Calendar-1 | Fitter; Helper; Gas Cutter | 48h | 48h |  |  |  |
| 227 | 5.10.11 | BAFFLE NUMERING | 16.5h | 2018-03-01 20:00 A | 2018-03-02 20:30 A | 226 | 100% | 2018-03-01 20:00 | 2018-03-02 20:30 | 16.5h |  | TEAM_2Shift_Calendar-1 | Helper; Fitter | 33h | 33h | 1,959.38 | 1,959.38 | 1,959.38 |
| 228 | 5.10.12 | BAFFLE TYPE-1 & A & B ASSY | 11.5h | 2018-03-03 16:00 A | 2018-03-05 11:30 A | 227 | 100% | 2018-03-03 16:00 | 2018-03-05 11:30 | 11.5h |  | TEAM_2Shift_Calendar-1 | Helper; Fitter | 23h | 23h | 1,365.62 | 1,365.62 | 1,365.62 |
| 229 | 5.10.13 | BAFFLE TYPE-1 & A & B HOLE MATCHING | 1d | 2018-03-05 18:00 A | 2018-03-06 16:30 A | 228 | 100% | 2018-03-05 18:00 | 2018-03-06 16:30 | 1d |  | TEAM_2Shift_Calendar-1 | Fitter | 14.5h | 14.5h |  |  |  |
| 230 | 5.10.14 | BAFFLE TYPE 1 & A & B HOLES DRILLING IF REQD | 1d | 2018-03-06 16:30 A | 2018-03-07 15:00 A | 229 | 100% | 2018-03-06 16:30 | 2018-03-07 15:00 | 1d |  | TEAM_2Shift_Calendar-1 | Driller | 14.5h | 14.5h |  |  |  |
| 231 | 5.10.15 | CLEANING | 14.5h | 2018-03-07 15:00 A | 2018-03-08 13:30 A | 230 | 100% | 2018-03-07 15:00 | 2018-03-08 13:30 | 14.5h |  | TEAM_2Shift_Calendar-1 | Helper | 14.5h | 14.5h |  |  |  |
| 232 | 5.11 | **TIE ROD PREPARATION** | 1.62d | 2018-01-25 06:00 A | 2018-01-29 13:30 A |  | 100% | 2018-01-25 06:00 | 2018-01-29 13:30 | 1.62d |  | TEAM_2Shift_Calendar-1 |  | 29.5h | 29.5h | 1,514.06 | 1,514.06 | 1,514.06 |
| 233 | 5.11.1 | TIE ROD MARKING | 9.25h | 2018-01-25 06:00 A | 2018-01-25 21:30 A | 54, 217 | 100% | 2018-01-25 06:00 | 2018-01-25 21:30 | 9.25h | finish no earlier than 2018-01-25 21:30 | TEAM_2Shift_Calendar-1 | Helper; Rod (Cost) [0.1%]; Fitter | 18.5h | 18.5h | 1,098.44 | 1,098.44 | 1,098.44 |
| 234 | 5.11.2 | TIE ROD CUTTING | 3.5h | 2018-01-25 21:30 A | 2018-01-29 09:00 A | 233 | 100% | 2018-01-25 21:30 | 2018-01-29 09:00 | 3.5h |  | TEAM_2Shift_Calendar-1 | Helper; Gas Cutter | 7h | 7h | 415.62 | 415.62 | 415.62 |
| 235 | 5.11.3 | THREAD MC | 0.28d | 2018-01-29 09:30 A | 2018-01-29 13:30 A | 234 | 100% | 2018-01-29 09:30 | 2018-01-29 13:30 | 0.28d |  | TEAM_2Shift_Calendar-1 | Lathe | 4h | 4h |  |  |  |
| 236 | 5.12 | **SPACER TUBE PREPARATION** | 7.03d | 2018-01-25 21:30 A | 2018-02-05 11:30 A |  | 100% | 2018-01-25 21:30 | 2018-02-05 11:30 | 7.03d |  | TEAM_2Shift_Calendar-1 |  | 111.75h | 111.75h | 3,310.16 | 3,310.16 | 3,310.16 |
| 237 | 5.12.1 | TUBE MARKING | 24.62h | 2018-01-25 21:30 A | 2018-01-31 15:30 A | 53, 233 | 100% | 2018-01-25 21:30 | 2018-01-31 15:30 | 24.62h |  | TEAM_2Shift_Calendar-1 | Helper; Tube (Cost) [0.1%]; Fitter | 49.25h | 49.25h | 2,924.22 | 2,924.22 | 2,924.22 |
| 238 | 5.12.2 | TUBE CUTTING | 3.25h | 2018-01-31 15:30 A | 2018-01-31 18:45 A | 237 | 100% | 2018-01-31 15:30 | 2018-01-31 18:45 | 3.25h |  | TEAM_2Shift_Calendar-1 | Helper; Gas Cutter | 6.5h | 6.5h | 385.94 | 385.94 | 385.94 |
| 239 | 5.12.3 | TUBE M/C | 3.86d | 2018-01-31 19:30 A | 2018-02-05 11:30 A | 238 | 100% | 2018-01-31 19:30 | 2018-02-05 11:30 | 3.86d |  | TEAM_2Shift_Calendar-1 | Lathe | 56h | 56h |  |  |  |

Notes:
- 216: 14NOS
- 217: DIA1054.6*8T
- 232: 10NOS
- 236: 140NOS

| ID | WBS | Task | Duration | Start | Finish | Predecessors | Complete | Baseline start | Baseline finish | Baseline duration | Constraint | Calendar | Resources | Work | Actual work | Cost | Baseline cost | Actual cost |
| --- | --- | --- | --- | --- | --- | --- | --- | --- | --- | --- | --- | --- | --- | --- | --- | --- | --- | --- |
| 240 | 5.13 | **TUBE BUNDLE ASSEMBLY** | 18.6d | 2018-03-06 06:00 A | 2018-03-27 19:42 A |  | 100% | 2018-03-06 06:00 | 2018-03-27 19:42 | 18.6d |  | TEAM_2Shift_Calendar-1 |  | 310.75h | 310.75h | 13,736.38 | 13,736.38 | 13,736.38 |
| 241 | 5.13.1 | TUBE SHEET ST INSPECTION | 2d | 2018-03-06 06:00 A | 2018-03-07 19:00 A |  | 100% | 2018-03-06 06:00 | 2018-03-07 19:00 | 2d | start no earlier than 2018-03-06 06:00 | TEAM_2Shift_Calendar-1 | Tube Sheet (Cost) [0.1%]; Fitter | 29h | 29h |  |  |  |
| 242 | 5.13.2 | TUBE SHEET FL INSPECTON | 1d | 2018-03-07 19:00 A | 2018-03-08 17:30 A | 241 | 100% | 2018-03-07 19:00 | 2018-03-08 17:30 | 1d |  | TEAM_2Shift_Calendar-1 | Fitter | 14.5h | 14.5h |  |  |  |
| 243 | 5.13.3 | ASSY FRAME SET UP | 8.4h | 2018-03-15 21:30 A | 2018-03-16 13:54 A | 232, 236, 242, 25, 26 | 100% | 2018-03-15 21:30 | 2018-03-16 13:54 | 8.4h |  | TEAM_2Shift_Calendar-1 | Helper [200%]; Fitter | 28h | 28h | 1,557.5 | 1,557.5 | 1,557.5 |
| 244 | 5.13.4 | TUBE BUNDLE ASSY | 5.33h | 2018-03-16 17:30 A | 2018-03-17 06:50 A | 216, 243 | 100% | 2018-03-16 17:30 | 2018-03-17 06:50 | 5.33h |  | TEAM_2Shift_Calendar-1 | Helper [200%]; Fitter [200%] | 32h | 32h | 1,800 | 1,800 | 1,800 |
| 245 | 5.13.5 | TUBE INSERT | 10.67h | 2018-03-20 17:30 A | 2018-03-21 12:10 A | 47, 244 | 100% | 2018-03-20 17:30 | 2018-03-21 12:10 | 10.67h |  | TEAM_2Shift_Calendar-1 | Helper; Tube (Cost) [0.1%]; Fitter [200%] | 32h | 32h |  |  |  |
| 246 | 5.13.6 | TUBE TIE ROD STACK WELD | 12.33h | 2018-03-21 12:10 A | 2018-03-22 08:30 A | 245 | 100% | 2018-03-21 12:10 | 2018-03-22 08:30 | 12.33h |  | TEAM_2Shift_Calendar-1 | Helper; SAW Welder [200%] | 37h | 37h | 2,312.5 | 2,312.5 | 2,312.5 |
| 247 | 5.13.7 | TUBE SHEET WELDING | 12.67h | 2018-03-21 06:00 A | 2018-03-21 18:40 A | 246 | 100% | 2018-03-21 06:00 | 2018-03-21 18:40 | 12.67h |  | TEAM_2Shift_Calendar-1 | Helper; SAW Welder [200%] | 38h | 38h | 2,375 | 2,375 | 2,375 |
| 248 | 5.13.8 | TUBE SHEET ROOT WELDING | 10.67h | 2018-03-22 06:00 A | 2018-03-22 16:40 A | 247 | 100% | 2018-03-22 06:00 | 2018-03-22 16:40 | 10.67h |  | TEAM_2Shift_Calendar-1 | Helper; SAW Welder [200%] | 48h | 48h | 2,800 | 2,800 | 2,800 |
| 249 | 5.13.9 | TUBE WELDING | 1d | 2018-03-24 08:00 A | 2018-03-26 12:25 A | 248 | 100% | 2018-03-24 08:00 | 2018-03-26 12:25 | 1d |  | TEAM_2Shift_Calendar-1 | Helper; SAW Welder [200%] | 26.5h | 26.5h | 1,324.97 | 1,324.97 | 1,324.97 |
| 250 | 5.13.10 | TUBE TRIMMING | 0.5d | 2018-03-26 20:50 A | 2018-03-27 12:05 A | 249 | 100% | 2018-03-26 20:50 | 2018-03-27 12:05 | 0.5d |  | TEAM_2Shift_Calendar-1 | Helper; Gas Cutter | 14.5h | 14.5h | 860.94 | 860.94 | 860.94 |
| 251 | 5.13.11 | TUBE EXPANSION | 0.25d | 2018-03-27 12:05 A | 2018-03-27 15:42 A | 250 | 100% | 2018-03-27 12:05 | 2018-03-27 15:42 | 0.25d |  | TEAM_2Shift_Calendar-1 | Helper [200%]; Fitter | 7.25h | 7.25h | 430.47 | 430.47 | 430.47 |
| 252 | 5.13.12 | INSPECTION | 4h | 2018-03-27 15:42 A | 2018-03-27 19:42 A | 251 | 100% | 2018-03-27 15:42 | 2018-03-27 19:42 | 4h |  | TEAM_2Shift_Calendar-1 | Fitter | 4h | 4h | 275 | 275 | 275 |
| 253 | 5.14 | **CS1-FITUP & WELDING** | 14.7d | 2018-01-29 06:00 A | 2018-02-14 11:05 A |  | 100% | 2018-01-29 06:00 | 2018-02-14 11:05 | 14.7d |  | TEAM_2Shift_Calendar-1 |  | 79.75h | 79.75h | 4,719.95 | 4,719.95 | 4,719.95 |
| 254 | 5.14.1 | SHELL LS2+LS3 READY | 156h | 2018-01-29 06:00 A | 2018-02-08 18:00 A | 59, 80 | 100% | 2018-01-29 06:00 | 2018-02-08 18:00 | 156h |  | TEAM_2Shift_Calendar-1 | Plate (Cost) [0.1%]; Fitter | 14.5h | 14.5h | 996.88 | 996.88 | 996.88 |
| 255 | 5.14.2 | SHELL EP CORRECTION | 3h | 2018-01-29 06:00 A | 2018-01-29 09:00 A | 254 | 100% | 2018-01-29 06:00 | 2018-01-29 09:00 | 3h |  | TEAM_2Shift_Calendar-1 | Grinder | 3h | 3h | 168.75 | 168.75 | 168.75 |
| 256 | 5.14.3 | CS1-FITUP | 2.1h | 2018-02-02 06:00 A | 2018-02-02 08:05 A | 255 | 100% | 2018-02-02 06:00 | 2018-02-02 08:05 | 2.1h |  | TEAM_2Shift_Calendar-1 | SAW Welder; Helper; Fitter [200%] | 16h | 16h | 969.66 | 969.66 | 969.66 |
| 257 | 5.14.4 | CS1-FITUP INSPECTION | 9.2d | 2018-02-02 06:00 A | 2018-02-13 11:24 A | 256 | 100% | 2018-02-02 06:00 | 2018-02-13 11:24 | 9.2d |  | TEAM_2Shift_Calendar-1 | Fitter [200%] | 6h | 6h | 412.5 | 412.5 | 412.5 |
| 258 | 5.14.5 | CS1-WELDING | 4.55h | 2018-02-03 07:30 A | 2018-02-03 12:03 A | 257 | 100% | 2018-02-03 07:30 | 2018-02-03 12:03 | 4.55h |  | TEAM_2Shift_Calendar-1 | Helper; SAW Welder | 12.25h | 12.25h | 697.72 | 697.72 | 697.72 |
| 259 | 5.14.6 | CS1-FLUSH GRIND | 117.1h | 2018-02-05 06:00 A | 2018-02-14 11:05 A | 258 | 100% | 2018-02-05 06:00 | 2018-02-14 11:05 | 117.1h |  | TEAM_2Shift_Calendar-1 | Grinder [200%] | 10h | 10h | 562.5 | 562.5 | 562.5 |
| 260 | 5.14.7 | CS1-DPCHECK | 3h | 2018-02-06 08:00 A | 2018-02-06 11:00 A | 259 | 100% | 2018-02-06 08:00 | 2018-02-06 11:00 | 3h |  | TEAM_2Shift_Calendar-1 | Fitter | 3h | 3h |  |  |  |
| 261 | 5.14.8 | CS1-INSIDE WELDING | 3.03h | 2018-02-07 06:00 A | 2018-02-07 09:01 A | 260 | 100% | 2018-02-07 06:00 | 2018-02-07 09:01 | 3.03h |  | TEAM_2Shift_Calendar-1 | SAW Welder [200%]; Helper | 7h | 7h | 424.44 | 424.44 | 424.44 |
| 262 | 5.14.9 | CS1-DRESSUP | 5h | 2018-02-07 06:00 A | 2018-02-07 11:00 A | 261 | 100% | 2018-02-07 06:00 | 2018-02-07 11:00 | 5h |  | TEAM_2Shift_Calendar-1 | Grinder | 5h | 5h | 281.25 | 281.25 | 281.25 |
| 263 | 5.14.10 | CS1-DPCHECK | 3h | 2018-02-07 06:00 A | 2018-02-07 09:00 A | 262 | 100% | 2018-02-07 06:00 | 2018-02-07 09:00 | 3h |  | TEAM_2Shift_Calendar-1 | Fitter | 3h | 3h | 206.25 | 206.25 | 206.25 |
| 264 | 5.14.11 | CS1-RT | 0.14d | 2018-02-08 08:30 A | 2018-02-08 10:30 A | 263 | 100% | 2018-02-08 08:30 | 2018-02-08 10:30 | 0.14d |  | TEAM_2Shift_Calendar-1 |  |  |  |  |  |  |

Notes:
- 264: SC

| ID | WBS | Task | Duration | Start | Finish | Predecessors | Complete | Baseline start | Baseline finish | Baseline duration | Calendar | Resources | Work | Actual work | Cost | Baseline cost | Actual cost |
| --- | --- | --- | --- | --- | --- | --- | --- | --- | --- | --- | --- | --- | --- | --- | --- | --- | --- |
| 265 | 5.15 | **CS2-FITUP & WELDING** | 10.47d | 2018-02-08 10:30 A | 2018-02-20 18:20 A |  | 100% | 2018-02-08 10:30 | 2018-02-20 18:20 | 10.47d | TEAM_2Shift_Calendar-1 |  | 119.5h | 119.5h | 5,061.72 | 5,061.72 | 5,061.72 |
| 266 | 5.15.1 | SHELL LS1+CH BONNET READY-RHS | 7.25h | 2018-02-08 10:30 A | 2018-02-08 17:45 A | 101, 253 | 100% | 2018-02-08 10:30 | 2018-02-08 17:45 | 7.25h | TEAM_2Shift_Calendar-1 | Plate (Cost) [0.1%]; Fitter | 7.25h | 7.25h |  |  |  |
| 267 | 5.15.2 | SHELL EP CORRECTION | 3h | 2018-02-08 17:45 A | 2018-02-08 20:45 A | 266 | 100% | 2018-02-08 17:45 | 2018-02-08 20:45 | 3h | TEAM_2Shift_Calendar-1 | Grinder | 3h | 3h |  |  |  |
| 268 | 5.15.3 | CS2-FITUP | 2h | 2018-02-09 06:00 A | 2018-02-09 08:00 A | 267 | 100% | 2018-02-09 06:00 | 2018-02-09 08:00 | 2h | TEAM_2Shift_Calendar-1 | SAW Welder; Helper; Fitter [200%] | 16h | 16h | 987.5 | 987.5 | 987.5 |
| 269 | 5.15.4 | CS2-FITUP INSPECTION | 0.21d | 2018-02-12 06:00 A | 2018-02-12 09:00 A | 268 | 100% | 2018-02-12 06:00 | 2018-02-12 09:00 | 0.21d | TEAM_2Shift_Calendar-1 | Fitter [200%] | 6h | 6h | 412.5 | 412.5 | 412.5 |
| 270 | 5.15.5 | CS2-WELDING | 10.62h | 2018-02-13 06:00 A | 2018-02-13 16:37 A | 269 | 100% | 2018-02-13 06:00 | 2018-02-13 16:37 | 10.62h | TEAM_2Shift_Calendar-1 | Helper; SAW Welder | 21.25h | 21.25h | 1,261.72 | 1,261.72 | 1,261.72 |
| 271 | 5.15.6 | CS2-BACK CHIP | 14h | 2018-02-14 13:00 A | 2018-02-15 11:00 A | 270 | 100% | 2018-02-14 13:00 | 2018-02-15 11:00 | 14h | TEAM_2Shift_Calendar-1 | Grinder [200%] | 28h | 28h |  |  |  |
| 272 | 5.15.7 | CS2-DPCHECK | 15h | 2018-02-15 11:00 A | 2018-02-16 10:00 A | 271 | 100% | 2018-02-15 11:00 | 2018-02-16 10:00 | 15h | TEAM_2Shift_Calendar-1 | Fitter | 8h | 8h | 550 | 550 | 550 |
| 273 | 5.15.8 | CS2-INSIDE WELDING | 2h | 2018-02-16 10:00 A | 2018-02-16 12:00 A | 272 | 100% | 2018-02-16 10:00 | 2018-02-16 12:00 | 2h | TEAM_2Shift_Calendar-1 | SAW Welder [200%]; Helper | 8h | 8h | 512.5 | 512.5 | 512.5 |
| 274 | 5.15.9 | CS3-DRESSUP | 21h | 2018-02-17 06:00 A | 2018-02-19 11:00 A | 273 | 100% | 2018-02-17 06:00 | 2018-02-19 11:00 | 21h | TEAM_2Shift_Calendar-1 | Grinder | 14h | 14h | 787.5 | 787.5 | 787.5 |
| 275 | 5.15.10 | CS2-DPCHECK | 44.33h | 2018-02-17 06:00 A | 2018-02-20 18:20 A | 274 | 100% | 2018-02-17 06:00 | 2018-02-20 18:20 | 44.33h | TEAM_2Shift_Calendar-1 | Fitter [120%] | 8h | 8h | 550 | 550 | 550 |
| 276 | 5.15.11 | CS2-RT | 0.14d | 2018-02-19 15:00 A | 2018-02-19 17:00 A | 275 | 100% | 2018-02-19 15:00 | 2018-02-19 17:00 | 0.14d | TEAM_2Shift_Calendar-1 |  |  |  |  |  |  |
| 277 | 5.16 | **CS3-FITUP & WELDING** | 5.16d | 2018-02-19 17:00 A | 2018-02-26 11:45 A |  | 100% | 2018-02-19 17:00 | 2018-02-26 11:45 | 5.16d | TEAM_2Shift_Calendar-1 |  | 106.5h | 106.5h | 2,799.22 | 2,799.22 | 2,799.22 |
| 278 | 5.16.1 | SHELL LS4+CH BONNET READY-LHS | 7.25h | 2018-02-19 17:00 A | 2018-02-20 08:15 A | 265 | 100% | 2018-02-19 17:00 | 2018-02-20 08:15 | 7.25h | TEAM_2Shift_Calendar-1 | Plate (Cost) [0.1%]; Fitter | 7.25h | 7.25h |  |  |  |
| 279 | 5.16.2 | SHELL EP CORRECTION | 3h | 2018-02-20 08:15 A | 2018-02-20 11:15 A | 278 | 100% | 2018-02-20 08:15 | 2018-02-20 11:15 | 3h | TEAM_2Shift_Calendar-1 | Grinder | 3h | 3h |  |  |  |
| 280 | 5.16.3 | CS3-FITUP | 4h | 2018-02-20 11:15 A | 2018-02-20 15:15 A | 279 | 100% | 2018-02-20 11:15 | 2018-02-20 15:15 | 4h | TEAM_2Shift_Calendar-1 | SAW Welder; Helper; Fitter [200%] | 16h | 16h | 1,025 | 1,025 | 1,025 |
| 281 | 5.16.4 | CS3-FITUP INSPECTION | 0.21d | 2018-02-20 16:15 A | 2018-02-20 19:15 A | 280 | 100% | 2018-02-20 16:15 | 2018-02-20 19:15 | 0.21d | TEAM_2Shift_Calendar-1 | Fitter [200%] | 6h | 6h |  |  |  |
| 282 | 5.16.5 | CS3-WELDING | 10.62h | 2018-02-20 19:15 A | 2018-02-21 13:52 A | 281 | 100% | 2018-02-20 19:15 | 2018-02-21 13:52 | 10.62h | TEAM_2Shift_Calendar-1 | Helper; SAW Welder | 21.25h | 21.25h | 1,261.72 | 1,261.72 | 1,261.72 |
| 283 | 5.16.6 | CS3-BACK CHIP | 7.5h | 2018-02-21 17:15 A | 2018-02-22 08:45 A | 282 | 100% | 2018-02-21 17:15 | 2018-02-22 08:45 | 7.5h | TEAM_2Shift_Calendar-1 | Grinder [200%] | 15h | 15h |  |  |  |
| 284 | 5.16.7 | CS3-DPCHECK | 8h | 2018-02-22 08:45 A | 2018-02-22 16:45 A | 283 | 100% | 2018-02-22 08:45 | 2018-02-22 16:45 | 8h | TEAM_2Shift_Calendar-1 | Fitter | 8h | 8h |  |  |  |
| 285 | 5.16.8 | CS3-INSIDE WELDING | 2h | 2018-02-22 16:45 A | 2018-02-22 18:45 A | 284 | 100% | 2018-02-22 16:45 | 2018-02-22 18:45 | 2h | TEAM_2Shift_Calendar-1 | SAW Welder [200%]; Helper | 8h | 8h | 512.5 | 512.5 | 512.5 |
| 286 | 5.16.9 | CS3-DRESSUP | 14h | 2018-02-22 19:45 A | 2018-02-23 17:45 A | 285 | 100% | 2018-02-22 19:45 | 2018-02-23 17:45 | 14h | TEAM_2Shift_Calendar-1 | Grinder | 14h | 14h |  |  |  |
| 287 | 5.16.10 | CS3-DPCHECK | 8h | 2018-02-23 17:45 A | 2018-02-26 09:45 A | 286 | 100% | 2018-02-23 17:45 | 2018-02-26 09:45 | 8h | TEAM_2Shift_Calendar-1 | Fitter | 8h | 8h |  |  |  |
| 288 | 5.16.11 | CS3-RT | 0.14d | 2018-02-26 09:45 A | 2018-02-26 11:45 A | 287 | 100% | 2018-02-26 09:45 | 2018-02-26 11:45 | 0.14d | TEAM_2Shift_Calendar-1 |  |  |  |  |  |  |

Notes:
- 276: SC
- 288: SC

| ID | WBS | Task | Duration | Start | Finish | Predecessors | Complete | Baseline start | Baseline finish | Baseline duration | Calendar | Resources | Work | Actual work | Cost | Baseline cost | Actual cost |
| --- | --- | --- | --- | --- | --- | --- | --- | --- | --- | --- | --- | --- | --- | --- | --- | --- | --- |
| 289 | 5.17 | **FLANGE FITUP AND WELDING** | 20.48d | 2018-02-19 06:00 A | 2018-03-14 14:53 A |  | 100% | 2018-02-19 06:00 | 2018-03-14 14:53 | 20.48d | TEAM_2Shift_Calendar-1 |  | 147.24h | 147.24h | 8,814.02 | 8,814.02 | 8,814.02 |
| 290 | 5.17.1 | CH FLG-RHS FITUP | 19.83h | 2018-02-19 17:00 A | 2018-02-20 20:50 A | 44, 265 | 100% | 2018-02-19 17:00 | 2018-02-20 20:50 | 19.83h | TEAM_2Shift_Calendar-1 | SAW Welder; Helper; Forging Non-Std (Cost) [0.1%]; Fitter | 17.25h | 17.25h | 1,078.12 | 1,078.12 | 1,078.12 |
| 291 | 5.17.2 | WELDING | 52.94h | 2018-02-19 06:00 A | 2018-02-22 10:56 A | 290 | 100% | 2018-02-19 06:00 | 2018-02-22 10:56 | 52.94h | TEAM_2Shift_Calendar-1 | Helper; SAW Welder [224.8%] | 24h | 24h | 1,511.43 | 1,511.43 | 1,511.43 |
| 292 | 5.17.3 | FLUSH GRIND | 27.44h | 2018-02-20 16:15 A | 2018-02-22 11:41 A | 291 | 100% | 2018-02-20 16:15 | 2018-02-22 11:41 | 27.44h | TEAM_2Shift_Calendar-1 | Grinder [200%] | 28h | 28h | 1,575 | 1,575 | 1,575 |
| 293 | 5.17.4 | CH FLG-LHS FITUP | 192.42h | 2018-02-20 06:00 A | 2018-03-07 06:25 A | 44, 277 | 100% | 2018-02-20 06:00 | 2018-03-07 06:25 | 192.42h | TEAM_2Shift_Calendar-1 | SAW Welder; Helper; Fitter [172.9%] | 18h | 18h | 1,146.84 | 1,146.84 | 1,146.84 |
| 294 | 5.17.5 | WELDING | 127.18h | 2018-02-26 15:45 A | 2018-03-07 14:55 A | 293 | 100% | 2018-02-26 15:45 | 2018-03-07 14:55 | 127.18h | TEAM_2Shift_Calendar-1 | Helper; SAW Welder [200%] | 23.99h | 23.99h | 1,377.62 | 1,377.62 | 1,377.62 |
| 295 | 5.17.6 | FLUSH GRIND | 166.32h | 2018-02-26 06:00 A | 2018-03-09 12:19 A | 294 | 100% | 2018-02-26 06:00 | 2018-03-09 12:19 | 166.32h | TEAM_2Shift_Calendar-1 | Grinder [241.2%] | 28h | 28h | 1,575.03 | 1,575.03 | 1,575.03 |
| 296 | 5.17.7 | INSPECTION | 14.96d | 2018-02-26 06:00 A | 2018-03-14 14:53 A | 295 | 100% | 2018-02-26 06:00 | 2018-03-14 14:53 | 14.96d | TEAM_2Shift_Calendar-1 | Fitter [147.4%] | 8h | 8h | 549.98 | 549.98 | 549.98 |
| 297 | 5.18 | **NOZZLE WITH RF PAD WELDING** | 4.72d | 2018-03-06 17:00 A | 2018-03-12 21:30 A |  | 100% | 2018-03-06 17:00 | 2018-03-12 21:30 | 4.72d | TEAM_2Shift_Calendar-1 |  | 129.5h | 129.5h | 4,565.62 | 4,565.62 | 4,565.62 |
| 298 | 5.18.1 | NOZZLE READY | 14.5h | 2018-03-06 17:00 A | 2018-03-07 15:30 A | 155, 187 | 100% | 2018-03-06 17:00 | 2018-03-07 15:30 | 14.5h | TEAM_2Shift_Calendar-1 | Pipe (Cost) [0.1%]; Fitter [200%] | 29h | 29h |  |  |  |
| 299 | 5.18.2 | ORIENTATION MARKING | 2h | 2018-03-07 15:30 A | 2018-03-07 17:30 A | 298 | 100% | 2018-03-07 15:30 | 2018-03-07 17:30 | 2h | TEAM_2Shift_Calendar-1 | Helper [200%]; Fitter | 8h | 8h | 437.5 | 437.5 | 437.5 |
| 300 | 5.18.3 | POSITION MARKING | 3h | 2018-03-08 08:30 A | 2018-03-08 11:30 A | 299 | 100% | 2018-03-08 08:30 | 2018-03-08 11:30 | 3h | TEAM_2Shift_Calendar-1 |  |  |  |  |  |  |
| 301 | 5.18.4 | NOZZLE OPENING | 2h | 2018-03-08 11:30 A | 2018-03-08 13:30 A | 300 | 100% | 2018-03-08 11:30 | 2018-03-08 13:30 | 2h | TEAM_2Shift_Calendar-1 | Helper; Gas Cutter | 4h | 4h |  |  |  |
| 302 | 5.18.5 | NOZZLE EP | 2h | 2018-03-08 13:30 A | 2018-03-08 15:30 A | 301 | 100% | 2018-03-08 13:30 | 2018-03-08 15:30 | 2h | TEAM_2Shift_Calendar-1 | Grinder | 2h | 2h |  |  |  |
| 303 | 5.18.6 | NOZZLE FIT UP | 4.17h | 2018-03-08 15:30 A | 2018-03-08 19:40 A | 302 | 100% | 2018-03-08 15:30 | 2018-03-08 19:40 | 4.17h | TEAM_2Shift_Calendar-1 | SAW Welder; Helper; Fitter | 12.5h | 12.5h | 781.25 | 781.25 | 781.25 |
| 304 | 5.18.7 | NOZZLE WELDING | 3.67h | 2018-03-08 20:30 A | 2018-03-09 08:10 A | 303 | 100% | 2018-03-08 20:30 | 2018-03-09 08:10 | 3.67h | TEAM_2Shift_Calendar-1 | Helper; SAW Welder [200%] | 11h | 11h | 687.5 | 687.5 | 687.5 |
| 305 | 5.18.8 | RF PAD FIT UP | 5.5h | 2018-03-09 10:30 A | 2018-03-09 16:30 A | 304 | 100% | 2018-03-09 10:30 | 2018-03-09 16:30 | 5.5h | TEAM_2Shift_Calendar-1 | SAW Welder; Helper; Plate (Cost) [0.1%]; Fitter [200%] | 22h | 22h | 1,409.37 | 1,409.37 | 1,409.37 |
| 306 | 5.18.9 | RF PAD WELDING | 6.67h | 2018-03-09 16:30 A | 2018-03-12 07:10 A | 305 | 100% | 2018-03-09 16:30 | 2018-03-12 07:10 | 6.67h | TEAM_2Shift_Calendar-1 | Helper; SAW Welder [200%] | 20h | 20h | 1,250 | 1,250 | 1,250 |
| 307 | 5.18.10 | FLUSH GRIND | 8h | 2018-03-12 08:30 A | 2018-03-12 16:30 A | 306 | 100% | 2018-03-12 08:30 | 2018-03-12 16:30 | 8h | TEAM_2Shift_Calendar-1 | Grinder [200%] | 16h | 16h |  |  |  |
| 308 | 5.18.11 | INSPECTION | 0.34d | 2018-03-12 16:30 A | 2018-03-12 21:30 A | 307 | 100% | 2018-03-12 16:30 | 2018-03-12 21:30 | 0.34d | TEAM_2Shift_Calendar-1 | Fitter | 5h | 5h |  |  |  |
| 309 | 5.19 | **NOZZLE WITH STIFFENER WELDING** | 3.84d | 2018-03-08 20:30 A | 2018-03-14 12:15 A |  | 100% | 2018-03-08 20:30 | 2018-03-14 12:15 | 3.84d | TEAM_2Shift_Calendar-1 |  | 116h | 116h | 4,076.56 | 4,076.56 | 4,076.56 |
| 310 | 5.19.1 | NOZZLE READY | 7.25h | 2018-03-08 20:30 A | 2018-03-09 11:45 A | 155, 187, 303 | 100% | 2018-03-08 20:30 | 2018-03-09 11:45 | 7.25h | TEAM_2Shift_Calendar-1 | Pipe (Cost) [0.1%]; Fitter [200%] | 14.5h | 14.5h |  |  |  |
| 311 | 5.19.2 | POSITION MARKING | 2.75h | 2018-03-09 11:45 A | 2018-03-09 14:30 A | 310 | 100% | 2018-03-09 11:45 | 2018-03-09 14:30 | 2.75h | TEAM_2Shift_Calendar-1 | Helper [200%]; Fitter | 11h | 11h | 601.56 | 601.56 | 601.56 |
| 312 | 5.19.3 | NOZZLE OPENING | 3.5h | 2018-03-09 15:45 A | 2018-03-09 19:15 A | 311 | 100% | 2018-03-09 15:45 | 2018-03-09 19:15 | 3.5h | TEAM_2Shift_Calendar-1 | Helper; Gas Cutter | 7h | 7h | 415.62 | 415.62 | 415.62 |
| 313 | 5.19.4 | NOZZLE EP | 3h | 2018-03-09 19:45 A | 2018-03-12 06:45 A | 312 | 100% | 2018-03-09 19:45 | 2018-03-12 06:45 | 3h | TEAM_2Shift_Calendar-1 | Grinder | 3h | 3h |  |  |  |
| 314 | 5.19.5 | NOZZLE FIT UP | 5.83h | 2018-03-12 06:45 A | 2018-03-12 12:35 A | 313 | 100% | 2018-03-12 06:45 | 2018-03-12 12:35 | 5.83h | TEAM_2Shift_Calendar-1 | SAW Welder; Helper; Fitter | 17.5h | 17.5h | 1,093.75 | 1,093.75 | 1,093.75 |
| 315 | 5.19.6 | NOZZLE WELDING | 4.33h | 2018-03-12 13:45 A | 2018-03-12 18:05 A | 314 | 100% | 2018-03-12 13:45 | 2018-03-12 18:05 | 4.33h | TEAM_2Shift_Calendar-1 | Helper; SAW Welder [200%] | 13h | 13h | 812.5 | 812.5 | 812.5 |
| 316 | 5.19.7 | STIFFENER FIT UP | 4.5h | 2018-03-12 21:45 A | 2018-03-13 10:15 A | 315 | 100% | 2018-03-12 21:45 | 2018-03-13 10:15 | 4.5h | TEAM_2Shift_Calendar-1 | SAW Welder; Helper; Fitter [200%] | 18h | 18h | 1,153.13 | 1,153.13 | 1,153.13 |
| 317 | 5.19.8 | STIFFENER WELDING | 7h | 2018-03-13 12:45 A | 2018-03-13 19:45 A | 316 | 100% | 2018-03-13 12:45 | 2018-03-13 19:45 | 7h | TEAM_2Shift_Calendar-1 | Helper; SAW Welder [200%] | 21h | 21h |  |  |  |
| 318 | 5.19.9 | FLUSH GRIND | 2.5h | 2018-03-13 19:45 A | 2018-03-14 06:15 A | 317 | 100% | 2018-03-13 19:45 | 2018-03-14 06:15 | 2.5h | TEAM_2Shift_Calendar-1 | Grinder [200%] | 5h | 5h |  |  |  |
| 319 | 5.19.10 | INSPECTION | 6h | 2018-03-14 06:15 A | 2018-03-14 12:15 A | 318 | 100% | 2018-03-14 06:15 | 2018-03-14 12:15 | 6h | TEAM_2Shift_Calendar-1 | Fitter | 6h | 6h |  |  |  |

Notes:
- 297: 4NOS
- 309: 6NOS

| ID | WBS | Task | Duration | Start | Finish | Predecessors | Complete | Baseline start | Baseline finish | Baseline duration | Constraint | Calendar | Resources | Work | Actual work | Cost | Baseline cost | Actual cost |
| --- | --- | --- | --- | --- | --- | --- | --- | --- | --- | --- | --- | --- | --- | --- | --- | --- | --- | --- |
| 320 | 5.20 | **SADDLE WELDING** | 29.76d | 2018-02-12 06:00 A | 2018-03-16 21:30 A |  | 100% | 2018-02-12 06:00 | 2018-03-16 21:30 | 29.76d |  | TEAM_2Shift_Calendar-1 |  | 333h | 333h | 17,624.22 | 17,624.22 | 17,624.22 |
| 321 | 5.20.1 | SADDLE PLATE MARKING | 8.57h | 2018-02-12 06:00 A | 2018-02-12 22:00 A | 52, 297 | 100% | 2018-02-12 06:00 | 2018-02-12 22:00 | 8.57h |  | TEAM_2Shift_Calendar-1 | Helper [200%]; Plate (Cost) [0.1%]; Fitter | 30h | 30h | 1,660.46 | 1,660.46 | 1,660.46 |
| 322 | 5.20.2 | SADDLE PLATE CUTTING | 8.4h | 2018-02-13 06:00 A | 2018-02-13 14:25 A | 321 | 100% | 2018-02-13 06:00 | 2018-02-13 14:25 | 8.4h |  | TEAM_2Shift_Calendar-1 | Helper; Gas Cutter | 24h | 24h | 1,357.5 | 1,357.5 | 1,357.5 |
| 323 | 5.20.3 | SADDLE PLATE GRINDING | 14h | 2018-02-14 06:00 A | 2018-02-14 20:01 A | 322 | 100% | 2018-02-14 06:00 | 2018-02-14 20:01 | 14h |  | TEAM_2Shift_Calendar-1 | Grinder | 14h | 14h | 787.5 | 787.5 | 787.5 |
| 324 | 5.20.4 | DRILLING | 15h | 2018-02-15 06:00 A | 2018-02-15 21:01 A | 323 | 100% | 2018-02-15 06:00 | 2018-02-15 21:01 | 15h |  | TEAM_2Shift_Calendar-1 | Driller | 15h | 15h | 1,031.25 | 1,031.25 | 1,031.25 |
| 325 | 5.20.5 | WELDING | 28.5h | 2018-02-20 06:00 A | 2018-02-21 18:31 A | 324 | 100% | 2018-02-20 06:00 | 2018-02-21 18:31 | 28.5h |  | TEAM_2Shift_Calendar-1 | Helper; SAW Welder | 41h | 41h | 2,584.38 | 2,584.38 | 2,584.38 |
| 326 | 5.20.6 | SADDLE PLATE FIT UP | 32.5h | 2018-03-12 06:00 A | 2018-03-14 06:30 A |  | 100% | 2018-03-12 06:00 | 2018-03-14 06:30 | 32.5h | start no earlier than 2018-03-12 06:00 | TEAM_2Shift_Calendar-1 | SAW Welder; Helper; Fitter [200%] | 130h | 130h | 8,328.13 | 8,328.13 | 8,328.13 |
| 327 | 5.20.7 | WELDING ONTO SH | 10h | 2018-03-14 09:00 A | 2018-03-14 19:00 A | 326 | 100% | 2018-03-14 09:00 | 2018-03-14 19:00 | 10h |  | TEAM_2Shift_Calendar-1 | Helper; SAW Welder [200%] | 30h | 30h | 1,875 | 1,875 | 1,875 |
| 328 | 5.20.8 | BEND REMOVAL | 12.5h | 2018-03-15 13:00 A | 2018-03-16 09:30 A | 327 | 100% | 2018-03-15 13:00 | 2018-03-16 09:30 | 12.5h |  | TEAM_2Shift_Calendar-1 | Fitter [200%] | 25h | 25h |  |  |  |
| 329 | 5.20.9 | GRINDING | 12h | 2018-03-16 09:30 A | 2018-03-16 21:30 A | 328 | 100% | 2018-03-16 09:30 | 2018-03-16 21:30 | 12h |  | TEAM_2Shift_Calendar-1 | Grinder [200%] | 24h | 24h |  |  |  |
| 330 | 5.21 | **INSULATION RING WELDING** | 5.21d | 2018-02-13 06:00 A | 2018-02-17 17:30 A |  | 100% | 2018-02-13 06:00 | 2018-02-17 17:30 | 5.21d |  | TEAM_2Shift_Calendar-1 |  | 120h | 120h | 4,181.26 | 4,181.26 | 4,181.26 |
| 331 | 5.21.1 | MARKING | 8.75h | 2018-02-13 06:00 A | 2018-02-13 14:45 A | 56, 321 | 100% | 2018-02-13 06:00 | 2018-02-13 14:45 | 8.75h |  | TEAM_2Shift_Calendar-1 | Helper; Fitter | 17.5h | 17.5h | 1,039.06 | 1,039.06 | 1,039.06 |
| 332 | 5.21.2 | CUTTING | 2.25h | 2018-02-13 21:00 A | 2018-02-14 07:15 A | 331 | 100% | 2018-02-13 21:00 | 2018-02-14 07:15 | 2.25h |  | TEAM_2Shift_Calendar-1 | Helper; Gas Cutter | 4.5h | 4.5h | 267.19 | 267.19 | 267.19 |
| 333 | 5.21.3 | GRINDING | 2h | 2018-02-14 07:30 A | 2018-02-14 09:30 A | 332 | 100% | 2018-02-14 07:30 | 2018-02-14 09:30 | 2h |  | TEAM_2Shift_Calendar-1 | Grinder | 2h | 2h |  |  |  |
| 334 | 5.21.4 | BEND REMOVAL | 4h | 2018-02-14 09:30 A | 2018-02-14 13:30 A | 333 | 100% | 2018-02-14 09:30 | 2018-02-14 13:30 | 4h |  | TEAM_2Shift_Calendar-1 | Fitter | 4h | 4h |  |  |  |
| 335 | 5.21.5 | FITUP | 5.33h | 2018-02-14 13:30 A | 2018-02-14 18:50 A | 334 | 100% | 2018-02-14 13:30 | 2018-02-14 18:50 | 5.33h |  | TEAM_2Shift_Calendar-1 | SAW Welder; Helper; Fitter | 16h | 16h | 1,000.01 | 1,000.01 | 1,000.01 |
| 336 | 5.21.6 | WELDING | 10h | 2018-02-14 19:30 A | 2018-02-15 13:30 A | 335 | 100% | 2018-02-14 19:30 | 2018-02-15 13:30 | 10h |  | TEAM_2Shift_Calendar-1 | Helper; SAW Welder [200%] | 30h | 30h | 1,875 | 1,875 | 1,875 |
| 337 | 5.21.7 | FLUSH GRIND | 18h | 2018-02-15 21:30 A | 2018-02-17 07:30 A | 336 | 100% | 2018-02-15 21:30 | 2018-02-17 07:30 | 18h |  | TEAM_2Shift_Calendar-1 | Grinder [200%] | 36h | 36h |  |  |  |
| 338 | 5.21.8 | CLEANING | 10h | 2018-02-17 07:30 A | 2018-02-17 17:30 A | 337 | 100% | 2018-02-17 07:30 | 2018-02-17 17:30 | 10h |  | TEAM_2Shift_Calendar-1 | Helper | 10h | 10h |  |  |  |
| 339 | 5.22 | **NAME PLATE WELDING** | 1.14d | 2018-03-30 17:30 A | 2018-03-31 18:00 A |  | 100% | 2018-03-30 17:30 | 2018-03-31 18:00 | 1.14d |  | TEAM_2Shift_Calendar-1 |  | 25h | 25h | 1,440.63 | 1,440.63 | 1,440.63 |
| 340 | 5.22.1 | NAME PLATE MARKING | 5h | 2018-03-30 17:30 A | 2018-03-31 09:30 A | 352 | 100% | 2018-03-30 17:30 | 2018-03-31 09:30 | 5h |  | TEAM_2Shift_Calendar-1 | Helper; Plate (Cost) [0.1%]; Fitter | 10h | 10h | 593.75 | 593.75 | 593.75 |
| 341 | 5.22.2 | CUTTING | 2h | 2018-03-31 09:30 A | 2018-03-31 11:30 A | 340 | 100% | 2018-03-31 09:30 | 2018-03-31 11:30 | 2h |  | TEAM_2Shift_Calendar-1 | Helper; Gas Cutter | 4h | 4h | 237.5 | 237.5 | 237.5 |
| 342 | 5.22.3 | GRINDING | 2h | 2018-03-31 11:30 A | 2018-03-31 13:30 A | 341 | 100% | 2018-03-31 11:30 | 2018-03-31 13:30 | 2h |  | TEAM_2Shift_Calendar-1 | Grinder | 2h | 2h | 112.5 | 112.5 | 112.5 |
| 343 | 5.22.4 | WELDING | 2.5h | 2018-03-31 13:30 A | 2018-03-31 16:00 A | 342 | 100% | 2018-03-31 13:30 | 2018-03-31 16:00 | 2.5h |  | TEAM_2Shift_Calendar-1 | Helper; SAW Welder | 5h | 5h | 296.88 | 296.88 | 296.88 |
| 344 | 5.22.5 | CLEANING | 2h | 2018-03-31 16:00 A | 2018-03-31 18:00 A | 343 | 100% | 2018-03-31 16:00 | 2018-03-31 18:00 | 2h |  | TEAM_2Shift_Calendar-1 | Helper [200%] | 4h | 4h | 200 | 200 | 200 |

Notes:
- 321: BASE+RIB
- 330: 2NOS
- 331: OD1146*ID1096*8T

| ID | WBS | Task | Type | Duration | Start | Finish | Predecessors | Complete | Baseline start | Baseline finish | Baseline duration | Constraint | Calendar | Resources | Work | Actual work | Cost | Baseline cost | Actual cost |
| --- | --- | --- | --- | --- | --- | --- | --- | --- | --- | --- | --- | --- | --- | --- | --- | --- | --- | --- | --- |
| 345 | 5.23 | **LIFTING LUG WELDING** |  | 2.36d | 2018-02-14 13:00 A | 2018-02-16 15:15 A |  | 100% | 2018-02-14 13:00 | 2018-02-16 15:15 | 2.36d |  | TEAM_2Shift_Calendar-1 |  | 63h | 63h | 2,808.41 | 2,808.41 | 2,808.41 |
| 346 | 5.23.1 | PLATE MARKING |  | 2.5h | 2018-02-14 13:00 A | 2018-02-14 17:00 A | 41, 340 | 100% | 2018-02-14 13:00 | 2018-02-14 17:00 | 2.5h |  | TEAM_2Shift_Calendar-1 | Helper; Plate (Cost) [0.1%]; Fitter | 5h | 5h | 296.88 | 296.88 | 296.88 |
| 347 | 5.23.2 | CUTTING |  | 2.25h | 2018-02-14 17:00 A | 2018-02-14 19:15 A | 346 | 100% | 2018-02-14 17:00 | 2018-02-14 19:15 | 2.25h |  | TEAM_2Shift_Calendar-1 | Helper; Gas Cutter | 4.5h | 4.5h | 267.19 | 267.19 | 267.19 |
| 348 | 5.23.3 | GRINDING |  | 4h | 2018-02-14 21:00 A | 2018-02-15 09:00 A | 347 | 100% | 2018-02-14 21:00 | 2018-02-15 09:00 | 4h |  | TEAM_2Shift_Calendar-1 | Grinder | 4h | 4h |  |  |  |
| 349 | 5.23.4 | FORMING |  | 5.38h | 2018-02-15 09:00 A | 2018-02-15 14:22 A | 348 | 100% | 2018-02-15 09:00 | 2018-02-15 14:22 | 5.38h |  | TEAM_2Shift_Calendar-1 | Helper [200%]; Fitter | 21.5h | 21.5h | 1,175.78 | 1,175.78 | 1,175.78 |
| 350 | 5.23.5 | WELDING |  | 9h | 2018-02-15 16:15 A | 2018-02-16 09:14 A | 349 | 100% | 2018-02-15 16:15 | 2018-02-16 09:14 | 9h |  | TEAM_2Shift_Calendar-1 | Helper; SAW Welder | 18h | 18h | 1,068.56 | 1,068.56 | 1,068.56 |
| 351 | 5.23.6 | CLEANING |  | 5h | 2018-02-16 10:15 A | 2018-02-16 15:15 A | 350 | 100% | 2018-02-16 10:15 | 2018-02-16 15:15 | 5h |  | TEAM_2Shift_Calendar-1 | Helper [200%] | 10h | 10h |  |  |  |
| 352 | 5.24 | **HYDRO TEST** |  | 5.21d | 2018-03-26 06:00 A | 2018-03-30 17:30 A |  | 100% | 2018-03-26 06:00 | 2018-03-30 17:30 | 5.21d |  | TEAM_2Shift_Calendar-1 |  | 165.25h | 165.25h | 10,037.5 | 10,037.5 | 10,037.5 |
| 353 | 5.24.1 | NDE CLEARANCE | milestone | 0h | 2018-03-26 06:00 A | 2018-03-26 21:30 A | 240 | 100% | 2018-03-26 06:00 | 2018-03-26 21:30 | 0h |  | TEAM_2Shift_Calendar-1 | Fitter |  |  |  |  |  |
| 354 | 5.24.2 | PWHT |  | 1.07d | 2018-03-27 06:00 A | 2018-03-27 21:30 A | 353 | 100% | 2018-03-27 06:00 | 2018-03-27 21:30 | 1.07d |  | TEAM_2Shift_Calendar-1 |  |  |  |  |  |  |
| 355 | 5.24.3 | CLEANING AFTER PWHT | milestone | 0h | 2018-03-27 06:00 A | 2018-03-27 06:00 A | 354 | 100% | 2018-03-27 06:00 | 2018-03-27 06:00 | 0h |  | TEAM_2Shift_Calendar-1 | Helper; Fitter |  |  |  |  |  |
| 356 | 5.24.4 | NDE AFTER PWHT |  | 4h | 2018-03-27 06:00 A | 2018-03-27 10:00 A | 355 | 100% | 2018-03-27 06:00 | 2018-03-27 10:00 | 4h |  | TEAM_2Shift_Calendar-1 | Fitter | 4h | 4h | 275 | 275 | 275 |
| 357 | 5.24.5 | SHELL SIDE PNUEMATIC TEST |  | 10h | 2018-03-27 10:00 A | 2018-03-27 20:00 A | 356 | 100% | 2018-03-27 10:00 | 2018-03-27 20:00 | 10h |  | TEAM_2Shift_Calendar-1 | Helper [300%]; Fitter | 20h | 20h | 1,187.5 | 1,187.5 | 1,187.5 |
| 358 | 5.24.6 | TUBE BUNDLE OUTSIDE TEST |  | 13.33h | 2018-03-27 20:00 A | 2018-03-28 17:20 A | 357 | 100% | 2018-03-27 20:00 | 2018-03-28 17:20 | 13.33h |  | TEAM_2Shift_Calendar-1 | Helper [300%]; Fitter [200%] | 40h | 40h | 2,500 | 2,500 | 2,500 |
| 359 | 5.24.7 | TPI WITNESS |  | 3h | 2018-03-28 17:20 A | 2018-03-28 20:20 A | 358 | 100% | 2018-03-28 17:20 | 2018-03-28 20:20 | 3h |  | TEAM_2Shift_Calendar-1 | Fitter [200%] | 6h | 6h | 412.5 | 412.5 | 412.5 |
| 360 | 5.24.8 | TUBE BUNDLE INSERT |  | 8h | 2018-03-28 20:20 A | 2018-03-29 12:20 A | 359 | 100% | 2018-03-28 20:20 | 2018-03-29 12:20 | 8h |  | TEAM_2Shift_Calendar-1 | Helper [300%]; Fitter | 23.62h | 23.62h | 1,331.25 | 1,331.25 | 1,331.25 |
| 361 | 5.24.9 | SHELL SIDE HYDRO TEST | milestone | 0h | 2018-03-28 06:00 A | 2018-03-28 21:30 A | 360 | 100% | 2018-03-28 06:00 | 2018-03-28 21:30 | 0h |  | TEAM_2Shift_Calendar-1 | Helper [300%]; Fitter [200%] |  |  |  |  |  |
| 362 | 5.24.10 | TPI WITNESS |  | 4h | 2018-03-28 21:30 A | 2018-03-29 09:30 A | 361 | 100% | 2018-03-28 21:30 | 2018-03-29 09:30 | 4h |  | TEAM_2Shift_Calendar-1 | Fitter [200%] | 8h | 8h | 550 | 550 | 550 |
| 363 | 5.24.11 | CH ASSY-RHS AND HYDRO TEST |  | 8h | 2018-03-29 09:30 A | 2018-03-29 17:30 A | 362 | 100% | 2018-03-29 09:30 | 2018-03-29 17:30 | 8h |  | TEAM_2Shift_Calendar-1 | Helper [300%]; Fitter | 23.62h | 23.62h | 1,331.25 | 1,331.25 | 1,331.25 |
| 364 | 5.24.12 | TPI WITNESS |  | 4h | 2018-03-29 17:30 A | 2018-03-29 21:30 A | 363 | 100% | 2018-03-29 17:30 | 2018-03-29 21:30 | 4h |  | TEAM_2Shift_Calendar-1 | Fitter [200%] | 8h | 8h | 550 | 550 | 550 |
| 365 | 5.24.13 | CH ASSY-LHS & HYDRO |  | 8h | 2018-03-29 21:30 A | 2018-03-30 13:30 A | 364 | 100% | 2018-03-29 21:30 | 2018-03-30 13:30 | 8h |  | TEAM_2Shift_Calendar-1 | Helper [300%]; Fitter | 24h | 24h | 1,350 | 1,350 | 1,350 |
| 366 | 5.24.14 | TPI WITNESS |  | 4h | 2018-03-30 13:30 A | 2018-03-30 17:30 A | 365 | 100% | 2018-03-30 13:30 | 2018-03-30 17:30 | 4h |  | TEAM_2Shift_Calendar-1 | Fitter [200%] | 8h | 8h | 550 | 550 | 550 |
| 367 | 5.25 | **BLAST CLEANING & PAINTING** |  | 0.83d | 2018-03-30 17:30 A | 2018-03-31 13:30 A |  | 100% | 2018-03-30 17:30 | 2018-03-31 13:30 | 0.83d |  | TEAM_2Shift_Calendar-1 |  | 21h | 21h | 1,218.75 | 1,218.75 | 1,218.75 |
| 368 | 5.25.1 | PREPARATION FOR BLAST CLEANING |  | 4h | 2018-03-30 17:30 A | 2018-03-30 21:30 A | 352 | 100% | 2018-03-30 17:30 | 2018-03-30 21:30 | 4h |  | TEAM_2Shift_Calendar-1 | Helper; Fitter | 8h | 8h | 475 | 475 | 475 |
| 369 | 5.25.2 | BLAST CLEAN |  | 3h | 2018-03-30 21:30 A | 2018-03-31 08:30 A | 368 | 100% | 2018-03-30 21:30 | 2018-03-31 08:30 | 3h | finish no earlier than 2018-03-30 21:30 | TEAM_2Shift_Calendar-1 |  |  |  |  |  |  |
| 370 | 5.25.3 | DESPATCH CLEARANCE |  | 1h | 2018-03-31 08:30 A | 2018-03-31 09:30 A | 369 | 100% | 2018-03-31 08:30 | 2018-03-31 09:30 | 1h |  | TEAM_2Shift_Calendar-1 | Fitter | 1h | 1h | 68.75 | 68.75 | 68.75 |
| 371 | 5.25.4 | DESPATCH |  | 4h | 2018-03-31 09:30 A | 2018-03-31 13:30 A | 370 | 100% | 2018-03-31 09:30 | 2018-03-31 13:30 | 4h |  | TEAM_2Shift_Calendar-1 | Helper [200%]; Fitter | 12h | 12h | 675 | 675 | 675 |

Notes:
- 345: 4NOS
- 354: SC
- 369: SC

| ID | WBS | Task | Duration | Start | Finish | Predecessors | Complete | Baseline start | Baseline finish | Baseline duration | Constraint | Resources | Work | Actual work |
| --- | --- | --- | --- | --- | --- | --- | --- | --- | --- | --- | --- | --- | --- | --- |
| 372 | 5.26 | **PBG** | 1.1d | 2018-04-24 06:00 A | 2018-04-25 21:30 A |  | 100% | 2018-04-21 08:30 | 2018-04-21 12:30 | 0.28d |  |  | 16h | 16h |
| 373 | 5.26.1 | PBG Submission | 8h | 2018-04-24 06:00 A | 2018-04-24 21:30 A | 367FS+9d | 100% | 2018-04-21 08:30 | 2018-04-21 12:30 | 4h | start no earlier than 2018-04-21 06:00 | Finance | 8h | 8h |
| 374 | 5.26.2 | FINAL DOCUMENTATION | 8h | 2018-04-25 06:00 A | 2018-04-25 21:30 A | 371FS+9d | 100% | 2018-04-21 08:30 | 2018-04-21 11:30 | 3h | start no earlier than 2018-04-21 06:00 | QC Engineer | 8h | 8h |
