# 4173-602-E-126

Schedule from MS Project, 2017-05-09 to 2018-04-25, 14.5 hours a day, costs in ₹, A marks actual dates.

## Calendars

- TEAM_Stand_Calendar: Mon-Sat 08:30-12:30, 13:30-17:30; Sun off. Exceptions (off unless hours are given): 2017-01-13 to 2023-08-12 (2nd Sat, recurring), 2017-01-26 to 2036-01-26 (Republic Day, recurring), 2017-01-27 to 2023-08-26 (4th Sat, recurring), 2017-05-01 to 2036-05-01 (May Day, recurring), 2017-08-15 to 2036-08-15 (Independence Day, recurring), 2017-08-25 (Vinakya Chaturthi'2017), 2017-09-29 (Ayudha Pooja'2017), 2017-10-02 to 2036-10-02 (Gandhi Jayanti, recurring), 2017-10-18 (Deepavali'2017), 2018-01-15 (Thiruvalluvar Day'2018).
- TEAM_2Shift_Calendar-1: Mon-Sat 06:00-22:00; Sun off. Exceptions (off unless hours are given): 2017-01-13 to 2023-02-11 (2nd Sat, recurring), 2017-01-26 to 2036-01-26 (Republic Day, recurring), 2017-01-27 to 2023-08-26 (4th Sat, recurring), 2017-05-01 to 2036-05-01 (May Day, recurring), 2017-08-15 to 2036-08-15 (Indepdence Day, recurring), 2017-08-25 (Ayudha Pooja'2017), 2017-10-02 to 2036-10-02 (Gandhi Jayanti, recurring), 2017-10-19 (Deepavali'2017), 2018-01-15 (Thiruvalluvar Day'2018).

## Resources

| Resource | Rate |
| --- | --- |
| SAW Welder | 68.75 |
| Painter |  |
| Lathe |  |
| Helper | 50 |
| Grinder | 56.25 |
| Fitter | 68.75 |
| Driller | 68.75 |
| Gas Cutter | 68.75 |
| Consumables (Cost) |  |
| Fastners (Cost) |  |
| Forging Non-Std (Cost) |  |
| Forging Std (Cost) |  |
| Gaskets (Cost) |  |
| Paint (Cost) |  |
| Pipe (Cost) |  |
| Plate (Cost) |  |
| Rod (Cost) |  |
| Tube (Cost) |  |
| Tube Sheet (Cost) |  |
| Finance |  |
| QC Engineer |  |

## Schedule

| ID | WBS | Task | Type | Duration | Start | Finish | Predecessors | Complete | Baseline start | Baseline finish | Baseline duration | Constraint |
| --- | --- | --- | --- | --- | --- | --- | --- | --- | --- | --- | --- | --- |
| 1 | 1 | PO RECEIPT |  | 0.55d | 2017-05-09 08:00 A | 2017-05-10 09:30 A |  | 100% | 2017-05-09 08:00 | 2017-05-10 09:30 | 0.55d |  |
| 2 | 2 | DRAWING SUBMISSION FOR APPROVAL |  | 32.55d | 2017-07-19 08:00 A | 2017-12-29 17:23 A | 1 | 100% | 2017-07-19 08:00 | 2017-12-29 17:23 | 32.55d |  |
| 3 | 3 | **PR ISSUE** |  | 55.79d | 2017-06-15 08:00 A | 2017-10-26 09:23 A |  | 100% | 2017-06-15 08:00 | 2017-10-26 09:23 | 55.79d |  |
| 4 | 3.1 | Plates and Rods-SA240 Gr.321 | milestone | 0d | 2017-08-05 08:00 A | 2017-08-05 08:00 A | 2 | 100% | 2017-08-05 08:00 | 2017-08-05 08:00 | 0d |  |
| 5 | 3.2 | Plates and Rods-SA240 Gr.304 | milestone | 0d | 2017-08-05 08:00 A | 2017-08-05 08:00 A | 2 | 100% | 2017-08-05 08:00 | 2017-08-05 08:00 | 0d |  |
| 6 | 3.3 | Plates and Rods-IS2062 Gr.B | milestone | 0d | 2017-08-14 08:00 A | 2017-08-14 08:00 A | 2 | 100% | 2017-08-14 08:00 | 2017-08-14 08:00 | 0d |  |
| 7 | 3.4 | Tube-SA213 TP321 |  | 3.86d | 2017-06-15 08:00 A | 2017-07-01 09:30 A | 1FS+6.62d | 100% | 2017-06-15 08:00 | 2017-07-01 09:30 | 3.86d |  |
| 8 | 3.5 | Tube-SA213 TP304 |  | 3.86d | 2017-06-15 08:00 A | 2017-07-01 09:30 A | 1FS+6.62d | 100% | 2017-06-15 08:00 | 2017-07-01 09:30 | 3.86d |  |
| 9 | 3.6 | Blank Forging-SA965 F321 | milestone | 0d | 2017-08-03 08:00 A | 2017-08-03 08:00 A | 2 | 100% | 2017-08-03 08:00 | 2017-08-03 08:00 | 0d |  |
| 10 | 3.7 | Blank Forging-SA965 F304 | milestone | 0d | 2017-08-03 08:00 A | 2017-08-03 08:00 A | 2 | 100% | 2017-08-03 08:00 | 2017-08-03 08:00 | 0d |  |
| 11 | 3.8 | Non Standard Forging-SA965 F321 | milestone | 0d | 2017-08-03 08:00 A | 2017-08-03 08:00 A | 2 | 100% | 2017-08-03 08:00 | 2017-08-03 08:00 | 0d |  |
| 12 | 3.9 | Non Standard Forging-SA965 F304 | milestone | 0d | 2017-08-03 08:00 A | 2017-08-03 08:00 A | 2 | 100% | 2017-08-03 08:00 | 2017-08-03 08:00 | 0d |  |
| 13 | 3.10 | Non Standard Forging-SA266 Gr.2 | milestone | 0d | 2017-08-03 08:00 A | 2017-08-03 08:00 A | 2 | 100% | 2017-08-03 08:00 | 2017-08-03 08:00 | 0d |  |
| 14 | 3.11 | Standard Forging-SA182 F321 | milestone | 0d | 2017-08-14 08:00 A | 2017-08-14 08:00 A | 2 | 100% | 2017-08-14 08:00 | 2017-08-14 08:00 | 0d |  |
| 15 | 3.12 | Standard Forging-SA182 F304 | milestone | 0d | 2017-08-14 08:00 A | 2017-08-14 08:00 A | 2 | 100% | 2017-08-14 08:00 | 2017-08-14 08:00 | 0d |  |
| 16 | 3.13 | Pipe-SA312 TP304 | milestone | 0d | 2017-08-16 08:00 A | 2017-08-16 08:00 A | 2 | 100% | 2017-08-16 08:00 | 2017-08-16 08:00 | 0d |  |
| 17 | 3.14 | Gaskets- |  | 3.31d | 2017-09-23 08:00 A | 2017-10-26 09:23 A | 2 | 100% | 2017-09-23 08:00 | 2017-10-26 09:23 | 3.31d |  |
| 18 | 3.15 | Fasteners- | milestone | 0d | 2017-08-16 08:00 A | 2017-08-16 08:00 A | 2 | 100% | 2017-08-16 08:00 | 2017-08-16 08:00 | 0d |  |
| 19 | 3.16 | Consumables-SS321 |  | 0.55d | 2017-10-20 08:00 A | 2017-10-21 09:30 A | 2 | 100% | 2017-10-20 08:00 | 2017-10-21 09:30 | 0.55d |  |
| 20 | 3.17 | Consumables-SS304 |  | 0.55d | 2017-10-20 08:00 A | 2017-10-21 09:30 A | 2 | 100% | 2017-10-20 08:00 | 2017-10-21 09:30 | 0.55d |  |
| 21 | 4 | **PO RECEIPT** |  | 96.55d | 2017-08-03 08:30 A | 2018-03-20 21:30 A |  | 100% | 2017-08-03 08:30 | 2018-03-20 21:30 | 96.55d |  |
| 22 | 4.1 | Plates and Rods-SA240 Gr.321 |  | 7.72d | 2017-09-01 08:00 A | 2017-10-10 09:29 A | 4 | 100% | 2017-09-01 08:00 | 2017-10-10 09:29 | 7.72d |  |
| 23 | 4.2 | Plates and Rods-SA240 Gr.304 |  | 26.48d | 2017-09-01 08:00 A | 2018-01-05 09:25 A | 5 | 100% | 2017-09-01 08:00 | 2018-01-05 09:25 | 26.48d |  |
| 24 | 4.3 | Plates and Rods-IS2062 Gr.B |  | 11.03d | 2017-08-14 08:30 A | 2017-09-08 17:30 A | 6 | 100% | 2017-08-14 08:30 | 2017-09-08 17:30 | 11.03d |  |
| 25 | 4.4 | Tube-SA213 TP321 |  | 0.55d | 2018-03-20 08:30 A | 2018-03-20 21:30 A |  | 100% | 2018-03-20 08:30 | 2018-03-20 21:30 | 0.55d | finish no earlier than 2018-03-20 21:30 |
| 26 | 4.5 | Tube-SA213 TP304 |  | 0.55d | 2018-03-20 08:30 A | 2018-03-20 21:30 A |  | 100% | 2018-03-20 08:30 | 2018-03-20 21:30 | 0.55d | finish no earlier than 2018-03-20 21:30 |
| 27 | 4.6 | Blank Forging-SA965 F321 |  | 41.38d | 2017-08-03 08:30 A | 2017-11-10 17:30 A | 9 | 100% | 2017-08-03 08:30 | 2017-11-10 17:30 | 41.38d |  |
| 28 | 4.7 | Blank Forging-SA965 F304 |  | 41.38d | 2017-08-03 08:30 A | 2017-11-10 17:30 A | 10 | 100% | 2017-08-03 08:30 | 2017-11-10 17:30 | 41.38d |  |
| 29 | 4.8 | Non Standard Forging-SA965 F321 |  | 41.38d | 2017-09-27 08:00 A | 2018-01-02 17:30 A | 11 | 100% | 2017-09-27 08:00 | 2018-01-02 17:30 | 41.38d |  |
| 30 | 4.9 | Non Standard Forging-SA965 F304 |  | 41.38d | 2017-09-27 08:00 A | 2018-01-02 17:30 A | 12 | 100% | 2017-09-27 08:00 | 2018-01-02 17:30 | 41.38d |  |
| 31 | 4.10 | Non Standard Forging-SA266 Gr.2 |  | 41.38d | 2017-09-27 08:00 A | 2018-01-02 17:30 A | 13 | 100% | 2017-09-27 08:00 | 2018-01-02 17:30 | 41.38d |  |
| 32 | 4.11 | Standard Forging-SA182 F321 |  | 41.38d | 2017-09-27 08:00 A | 2018-01-02 17:30 A | 14 | 100% | 2017-09-27 08:00 | 2018-01-02 17:30 | 41.38d |  |
| 33 | 4.12 | Standard Forging-SA182 F304 |  | 41.38d | 2017-09-27 08:00 A | 2018-01-02 17:30 A | 15 | 100% | 2017-09-27 08:00 | 2018-01-02 17:30 | 41.38d |  |
| 34 | 4.13 | Pipe-SA312 TP304 |  | 16.55d | 2017-08-16 08:30 A | 2017-09-22 17:30 A | 16 | 100% | 2017-08-16 08:30 | 2017-09-22 17:30 | 16.55d |  |
| 35 | 4.14 | Gaskets- |  | 27.59d | 2017-10-26 09:23 A | 2017-12-29 09:23 A | 17 | 100% | 2017-10-26 09:23 | 2017-12-29 09:23 | 27.59d |  |
| 36 | 4.15 | Fasteners- |  | 27.59d | 2017-08-16 08:30 A | 2017-10-21 17:30 A | 18 | 100% | 2017-08-16 08:30 | 2017-10-21 17:30 | 27.59d |  |
| 37 | 4.16 | Consumables-SS321 |  | 13.79d | 2017-10-21 09:30 A | 2017-11-22 09:30 A | 19 | 100% | 2017-10-21 09:30 | 2017-11-22 09:30 | 13.79d |  |
| 38 | 4.17 | Consumables-SS304 |  | 13.79d | 2017-10-21 09:30 A | 2017-11-22 09:30 A | 20 | 100% | 2017-10-21 09:30 | 2017-11-22 09:30 | 13.79d |  |

| ID | WBS | Task | Duration | Start | Finish | Predecessors | Complete | Baseline start | Baseline finish | Baseline duration | Constraint | Calendar | Resources | Work | Actual work | Cost | Baseline cost | Actual cost |
| --- | --- | --- | --- | --- | --- | --- | --- | --- | --- | --- | --- | --- | --- | --- | --- | --- | --- | --- |
| 39 | 5 | **Fab: 4173-602-E-126** | 180.48d | 2017-09-27 08:30 A | 2018-04-25 17:30 A |  | 100% | 2017-09-27 08:30 | 2018-04-21 14:40 | 176.98d |  | TEAM_2Shift_Calendar-1 |  | 6256.84h | 6256.84h | 123,990.74 | 123,990.74 | 123,990.74 |
| 40 | 5.1 | **MATERIAL RECEIPT** | 148.69d | 2017-09-27 08:30 A | 2018-03-20 20:30 A |  | 100% | 2017-09-27 08:30 | 2018-03-20 20:30 | 148.69d |  | TEAM_2Shift_Calendar-1 |  |  |  |  |  |  |
| 41 | 5.1.1 | PLATE FOR SHELL | 1d | 2017-09-27 08:30 A | 2017-09-28 07:00 A |  | 100% | 2017-09-27 08:30 | 2017-09-28 07:00 | 1d | start no earlier than 2017-09-27 06:00 | TEAM_2Shift_Calendar-1 |  |  |  |  |  |  |
| 42 | 5.1.2 | PLATE FOR CHANNEL | 1d | 2017-09-27 08:30 A | 2017-09-28 07:00 A | 41SS | 100% | 2017-09-27 08:30 | 2017-09-28 07:00 | 1d |  | TEAM_2Shift_Calendar-1 |  |  |  |  |  |  |
| 43 | 5.1.3 | CHANNEL BONNET | 1d | 2017-09-27 08:30 A | 2017-09-28 07:00 A | 41SS | 100% | 2017-09-27 08:30 | 2017-09-28 07:00 | 1d |  | TEAM_2Shift_Calendar-1 |  |  |  |  |  |  |
| 44 | 5.1.4 | CHANNEL FLANGE | 1d | 2017-09-27 08:30 A | 2017-09-28 07:00 A | 41SS | 100% | 2017-09-27 08:30 | 2017-09-28 07:00 | 1d |  | TEAM_2Shift_Calendar-1 |  |  |  |  |  |  |
| 45 | 5.1.5 | NOZZLE NECK | 1d | 2017-09-27 08:30 A | 2017-09-28 07:00 A | 41SS | 100% | 2017-09-27 08:30 | 2017-09-28 07:00 | 1d |  | TEAM_2Shift_Calendar-1 |  |  |  |  |  |  |
| 46 | 5.1.6 | NOZZLE FLG | 1d | 2017-09-27 08:30 A | 2017-09-28 07:00 A | 41SS | 100% | 2017-09-27 08:30 | 2017-09-28 07:00 | 1d |  | TEAM_2Shift_Calendar-1 |  |  |  |  |  |  |
| 47 | 5.1.7 | TUBE | 1d | 2018-03-20 06:00 A | 2018-03-20 20:30 A | 41SS | 100% | 2018-03-20 06:00 | 2018-03-20 20:30 | 1d | start no earlier than 2018-03-20 06:00 | TEAM_2Shift_Calendar-1 |  |  |  |  |  |  |
| 48 | 5.1.8 | TUBE SHEET | 1d | 2017-09-27 08:30 A | 2017-09-28 07:00 A | 41SS | 100% | 2017-09-27 08:30 | 2017-09-28 07:00 | 1d |  | TEAM_2Shift_Calendar-1 |  |  |  |  |  |  |
| 49 | 5.1.9 | IMPINGEMENT PLATE | 1d | 2017-09-27 08:30 A | 2017-09-28 07:00 A | 41SS | 100% | 2017-09-27 08:30 | 2017-09-28 07:00 | 1d |  | TEAM_2Shift_Calendar-1 |  |  |  |  |  |  |
| 50 | 5.1.10 | NAME PLATE | 1d | 2017-09-27 08:30 A | 2017-09-28 07:00 A | 41SS | 100% | 2017-09-27 08:30 | 2017-09-28 07:00 | 1d |  | TEAM_2Shift_Calendar-1 |  |  |  |  |  |  |
| 51 | 5.1.11 | BAFFLE PLATE | 1d | 2017-09-27 08:30 A | 2017-09-28 07:00 A | 41SS | 100% | 2017-09-27 08:30 | 2017-09-28 07:00 | 1d |  | TEAM_2Shift_Calendar-1 |  |  |  |  |  |  |
| 52 | 5.1.12 | LIFTING LUG | 1d | 2017-09-27 08:30 A | 2017-09-28 07:00 A | 41SS | 100% | 2017-09-27 08:30 | 2017-09-28 07:00 | 1d |  | TEAM_2Shift_Calendar-1 |  |  |  |  |  |  |
| 53 | 5.1.13 | SADDLE MATERIAL | 1d | 2017-09-27 08:30 A | 2017-09-28 07:00 A | 41SS | 100% | 2017-09-27 08:30 | 2017-09-28 07:00 | 1d |  | TEAM_2Shift_Calendar-1 |  |  |  |  |  |  |
| 54 | 5.1.14 | SPACER TUBE | 1d | 2017-09-27 08:30 A | 2017-09-28 07:00 A | 41SS | 100% | 2017-09-27 08:30 | 2017-09-28 07:00 | 1d |  | TEAM_2Shift_Calendar-1 |  |  |  |  |  |  |
| 55 | 5.1.15 | INSULATION CLEAT | 1d | 2017-09-27 08:30 A | 2017-09-28 07:00 A | 41SS | 100% | 2017-09-27 08:30 | 2017-09-28 07:00 | 1d |  | TEAM_2Shift_Calendar-1 |  |  |  |  |  |  |
| 56 | 5.1.16 | TIE ROD | 1d | 2017-09-27 08:30 A | 2017-09-28 07:00 A | 41SS | 100% | 2017-09-27 08:30 | 2017-09-28 07:00 | 1d |  | TEAM_2Shift_Calendar-1 |  |  |  |  |  |  |
| 57 | 5.1.17 | FASTENERS | 1d | 2017-09-27 08:30 A | 2017-09-28 07:00 A | 41SS | 100% | 2017-09-27 08:30 | 2017-09-28 07:00 | 1d |  | TEAM_2Shift_Calendar-1 |  |  |  |  |  |  |
| 58 | 5.1.18 | GASKETS | 1d | 2017-09-27 08:30 A | 2017-09-28 07:00 A | 41SS | 100% | 2017-09-27 08:30 | 2017-09-28 07:00 | 1d |  | TEAM_2Shift_Calendar-1 |  |  |  |  |  |  |
| 59 | 5.2 | **CHANNEL(LHS+RHS) LS- FABRICATION** | 10.62d | 2017-09-28 16:00 A | 2017-10-11 10:00 A |  | 100% | 2017-09-28 16:00 | 2017-10-11 10:00 | 10.62d |  | TEAM_2Shift_Calendar-1 |  | 162.49h | 162.49h | 3,365.21 | 3,365.21 | 3,365.21 |
| 60 | 5.2.1 | LS-PLATE MARKING | 1.75h | 2017-09-28 16:00 A | 2017-09-28 19:30 A | 42 | 100% | 2017-09-28 16:00 | 2017-09-28 19:30 | 1.75h |  | TEAM_2Shift_Calendar-1 | Helper; Plate (Cost) [0.1%]; Fitter | 3.5h | 3.5h | 207.81 | 207.81 | 207.81 |
| 61 | 5.2.2 | LS- STAMPING | 3h | 2017-09-28 19:30 A | 2017-09-29 06:30 A | 60 | 100% | 2017-09-28 19:30 | 2017-09-29 06:30 | 3h |  | TEAM_2Shift_Calendar-1 | Fitter | 3h | 3h |  |  |  |
| 62 | 5.2.3 | LS-PL CUTTING | 2h | 2017-09-29 06:30 A | 2017-09-29 08:30 A | 61 | 100% | 2017-09-29 06:30 | 2017-09-29 08:30 | 2h |  | TEAM_2Shift_Calendar-1 | Helper; Gas Cutter | 4h | 4h | 237.5 | 237.5 | 237.5 |
| 63 | 5.2.4 | LS-GRINDING | 5h | 2017-09-29 10:30 A | 2017-09-29 15:30 A | 62 | 100% | 2017-09-29 10:30 | 2017-09-29 15:30 | 5h |  | TEAM_2Shift_Calendar-1 | Grinder | 5h | 5h |  |  |  |
| 64 | 5.2.5 | LS-EDGE PREPARATION | 2h | 2017-09-29 15:30 A | 2017-09-29 17:30 A | 63 | 100% | 2017-09-29 15:30 | 2017-09-29 17:30 | 2h |  | TEAM_2Shift_Calendar-1 | Grinder | 2h | 2h |  |  |  |
| 65 | 5.2.6 | LS-PRE BENDING | 4h | 2017-09-29 17:30 A | 2017-09-29 21:30 A | 64 | 100% | 2017-09-29 17:30 | 2017-09-29 21:30 | 4h |  | TEAM_2Shift_Calendar-1 | Helper; Fitter | 8h | 8h | 475 | 475 | 475 |
| 66 | 5.2.7 | LS-PREBEND CUTOFF | 6h | 2017-09-30 09:30 A | 2017-09-30 15:30 A | 65 | 100% | 2017-09-30 09:30 | 2017-09-30 15:30 | 6h |  | TEAM_2Shift_Calendar-1 | Gas Cutter | 6h | 6h |  |  |  |
| 67 | 5.2.8 | LS-EDGE PREPARTION | 2h | 2017-09-30 15:30 A | 2017-09-30 17:30 A | 66 | 100% | 2017-09-30 15:30 | 2017-09-30 17:30 | 2h |  | TEAM_2Shift_Calendar-1 | Grinder | 2h | 2h |  |  |  |
| 68 | 5.2.9 | LS-ROLLING | 6h | 2017-09-30 17:30 A | 2017-10-03 07:30 A | 67 | 100% | 2017-09-30 17:30 | 2017-10-03 07:30 | 6h |  | TEAM_2Shift_Calendar-1 | Helper; Fitter | 12h | 12h | 712.5 | 712.5 | 712.5 |
| 69 | 5.2.10 | LS-ACID CLEANING | 8h | 2017-10-03 13:30 A | 2017-10-03 21:30 A | 68 | 100% | 2017-10-03 13:30 | 2017-10-03 21:30 | 8h |  | TEAM_2Shift_Calendar-1 | Helper [200%] | 16h | 16h |  |  |  |
| 70 | 5.2.11 | LS-FITUP | 3.75h | 2017-10-03 21:30 A | 2017-10-04 09:14 A | 69 | 100% | 2017-10-03 21:30 | 2017-10-04 09:14 | 3.75h |  | TEAM_2Shift_Calendar-1 | Helper; SAW Welder; Fitter | 14.99h | 14.99h | 960.52 | 960.52 | 960.52 |
| 71 | 5.2.12 | LS-SPIDERUP | 10h | 2017-10-04 17:30 A | 2017-10-05 11:30 A | 70 | 100% | 2017-10-04 17:30 | 2017-10-05 11:30 | 10h |  | TEAM_2Shift_Calendar-1 | Fitter | 10h | 10h |  |  |  |
| 72 | 5.2.13 | LS-FITUP INSPECTION | 2d | 2017-10-05 11:30 A | 2017-10-07 08:30 A | 71 | 100% | 2017-10-05 11:30 | 2017-10-07 08:30 | 2d |  | TEAM_2Shift_Calendar-1 | Fitter | 29h | 29h |  |  |  |
| 73 | 5.2.14 | LS-WELDING | 6.5h | 2017-10-07 08:30 A | 2017-10-07 15:00 A | 72 | 100% | 2017-10-07 08:30 | 2017-10-07 15:00 | 6.5h |  | TEAM_2Shift_Calendar-1 | SAW Welder; Helper | 13h | 13h | 771.88 | 771.88 | 771.88 |
| 74 | 5.2.15 | LS-FLUSH GRIND | 6h | 2017-10-07 21:30 A | 2017-10-09 11:30 A | 73 | 100% | 2017-10-07 21:30 | 2017-10-09 11:30 | 6h |  | TEAM_2Shift_Calendar-1 | Grinder | 6h | 6h |  |  |  |
| 75 | 5.2.16 | LS-REROLLING | 12h | 2017-10-09 11:30 A | 2017-10-10 07:30 A | 74 | 100% | 2017-10-09 11:30 | 2017-10-10 07:30 | 12h |  | TEAM_2Shift_Calendar-1 | Helper; Fitter | 24h | 24h |  |  |  |
| 76 | 5.2.17 | LS-DPCHECK | 4h | 2017-10-10 07:30 A | 2017-10-10 11:30 A | 75 | 100% | 2017-10-10 07:30 | 2017-10-10 11:30 | 4h |  | TEAM_2Shift_Calendar-1 | Fitter | 4h | 4h |  |  |  |
| 77 | 5.2.18 | LS-RADIOGRAPHY | 1d | 2017-10-10 11:30 A | 2017-10-11 10:00 A | 76 | 100% | 2017-10-10 11:30 | 2017-10-11 10:00 | 1d |  | TEAM_2Shift_Calendar-1 |  |  |  |  |  |  |

Notes:
- 39: 4173C-EFFLUENT EXCHANGER
- 41: SA 240 Gr 304
- 42: SA 240 Gr 304
- 43: SA 240 Gr 304
- 44: SA 965 F 304
- 45: SA 312 TP 304
- 46: SA 182 F 321
- 47: SA 213 TP 304
- 48: SA 965 F 304
- 49: SA 240 GR 321
- 50: SS 316L
- 51: SA 240 GR 304
- 52: SA 240 Gr 304
- 53: IS 2062 Gr B
- 54: SA 240 Gr 304
- 55: SA 240 Gr 304
- 56: SS 304
- 59: 4NOS
- 60: 1731*323*16T
- 73: 2.04 Kg/m
- 77: SC

| ID | WBS | Task | Duration | Start | Finish | Predecessors | Complete | Baseline start | Baseline finish | Baseline duration | Calendar | Resources | Work | Actual work | Cost | Baseline cost | Actual cost |
| --- | --- | --- | --- | --- | --- | --- | --- | --- | --- | --- | --- | --- | --- | --- | --- | --- | --- |
| 78 | 5.3 | **SHELL LS1-FABRICATION** | 8.31d | 2017-09-28 19:30 A | 2017-10-09 12:00 A |  | 100% | 2017-09-28 19:30 | 2017-10-09 12:00 | 8.31d | TEAM_2Shift_Calendar-1 |  | 160.5h | 160.5h | 504.49 | 504.49 | 504.49 |
| 79 | 5.3.1 | LS1-PLATE MARKING | 4h | 2017-09-28 19:30 A | 2017-09-29 07:30 A | 41, 60 | 100% | 2017-09-28 19:30 | 2017-09-29 07:30 | 4h | TEAM_2Shift_Calendar-1 | Helper; Plate (Cost) [0.1%]; Fitter | 8h | 8h |  |  |  |
| 80 | 5.3.2 | LS1-STAMPING | 3h | 2017-09-29 07:30 A | 2017-09-29 10:30 A | 79 | 100% | 2017-09-29 07:30 | 2017-09-29 10:30 | 3h | TEAM_2Shift_Calendar-1 | Fitter | 3h | 3h |  |  |  |
| 81 | 5.3.3 | LS1-PL CUTTING | 5h | 2017-09-29 10:30 A | 2017-09-29 15:31 A | 80 | 100% | 2017-09-29 10:30 | 2017-09-29 15:31 | 5h | TEAM_2Shift_Calendar-1 | Helper; Gas Cutter | 10h | 10h |  |  |  |
| 82 | 5.3.4 | LS1-GRINDING | 5h | 2017-09-29 15:31 A | 2017-09-29 20:31 A | 81 | 100% | 2017-09-29 15:31 | 2017-09-29 20:31 | 5h | TEAM_2Shift_Calendar-1 | Grinder | 5h | 5h |  |  |  |
| 83 | 5.3.5 | LS1-EDGE PREPARATION | 3.5h | 2017-09-29 20:31 A | 2017-09-30 08:01 A | 82 | 100% | 2017-09-29 20:31 | 2017-09-30 08:01 | 3.5h | TEAM_2Shift_Calendar-1 | Grinder | 3.5h | 3.5h |  |  |  |
| 84 | 5.3.6 | LS1-PREBENDING | 5h | 2017-09-30 08:01 A | 2017-09-30 13:01 A | 83 | 100% | 2017-09-30 08:01 | 2017-09-30 13:01 | 5h | TEAM_2Shift_Calendar-1 | Helper; Fitter | 10h | 10h |  |  |  |
| 85 | 5.3.7 | LS1-PREBEND CUTOFF | 3.5h | 2017-09-30 13:01 A | 2017-09-30 16:32 A | 84 | 100% | 2017-09-30 13:01 | 2017-09-30 16:32 | 3.5h | TEAM_2Shift_Calendar-1 | Gas Cutter | 3.5h | 3.5h |  |  |  |
| 86 | 5.3.8 | LS1-EDGE PREPARATION | 3.5h | 2017-09-30 16:32 A | 2017-09-30 20:02 A | 85 | 100% | 2017-09-30 16:32 | 2017-09-30 20:02 | 3.5h | TEAM_2Shift_Calendar-1 | Grinder | 3.5h | 3.5h |  |  |  |
| 87 | 5.3.9 | LS1-ROLLING | 4.25h | 2017-09-30 20:02 A | 2017-10-03 08:16 A | 86 | 100% | 2017-09-30 20:02 | 2017-10-03 08:16 | 4.25h | TEAM_2Shift_Calendar-1 | Helper; Fitter | 8.5h | 8.5h | 504.49 | 504.49 | 504.49 |
| 88 | 5.3.10 | LS1-ACIDCLEANING | 4h | 2017-10-03 10:02 A | 2017-10-03 14:03 A | 87 | 100% | 2017-10-03 10:02 | 2017-10-03 14:03 | 4h | TEAM_2Shift_Calendar-1 | Helper [200%] | 8h | 8h |  |  |  |
| 89 | 5.3.11 | LS1-FITUP | 6h | 2017-10-03 14:03 A | 2017-10-03 20:03 A | 88 | 100% | 2017-10-03 14:03 | 2017-10-03 20:03 | 6h | TEAM_2Shift_Calendar-1 | Helper; SAW Welder; Fitter | 18h | 18h |  |  |  |
| 90 | 5.3.12 | LS1-SPIDERUP | 5h | 2017-10-03 20:03 A | 2017-10-04 09:03 A | 89 | 100% | 2017-10-03 20:03 | 2017-10-04 09:03 | 5h | TEAM_2Shift_Calendar-1 | Fitter | 5h | 5h |  |  |  |
| 91 | 5.3.13 | LS1-FITUP INSPECTION | 1d | 2017-10-04 09:03 A | 2017-10-05 07:34 A | 90 | 100% | 2017-10-04 09:03 | 2017-10-05 07:34 | 1d | TEAM_2Shift_Calendar-1 | Fitter | 14.5h | 14.5h |  |  |  |
| 92 | 5.3.14 | LS1-WELDING | 17h | 2017-10-05 07:34 A | 2017-10-06 08:35 A | 91 | 100% | 2017-10-05 07:34 | 2017-10-06 08:35 | 17h | TEAM_2Shift_Calendar-1 | SAW Welder; Helper | 34h | 34h |  |  |  |
| 93 | 5.3.15 | LS1-FLUSHGRIND | 10h | 2017-10-06 08:35 A | 2017-10-06 18:36 A | 92 | 100% | 2017-10-06 08:35 | 2017-10-06 18:36 | 10h | TEAM_2Shift_Calendar-1 | Grinder | 10h | 10h |  |  |  |
| 94 | 5.3.16 | LS1-REROLLING | 6h | 2017-10-06 18:36 A | 2017-10-07 08:36 A | 93 | 100% | 2017-10-06 18:36 | 2017-10-07 08:36 | 6h | TEAM_2Shift_Calendar-1 | Helper; Fitter | 12h | 12h |  |  |  |
| 95 | 5.3.17 | LS1-DPCHECK | 4h | 2017-10-07 08:36 A | 2017-10-07 12:36 A | 94 | 100% | 2017-10-07 08:36 | 2017-10-07 12:36 | 4h | TEAM_2Shift_Calendar-1 | Fitter | 4h | 4h |  |  |  |
| 96 | 5.3.18 | LS1-RADIOGRAPHY | 1d | 2017-10-07 13:30 A | 2017-10-09 12:00 A | 95 | 100% | 2017-10-07 13:30 | 2017-10-09 12:00 | 1d | TEAM_2Shift_Calendar-1 |  |  |  |  |  |  |
| 97 | 5.4 | **SHELL LS2- FABRICATION** | 8.25d | 2017-09-29 07:30 A | 2017-10-09 15:07 A |  | 100% | 2017-09-29 07:30 | 2017-10-09 15:07 | 8.25d | TEAM_2Shift_Calendar-1 |  | 128.5h | 128.5h | 2,910.95 | 2,910.95 | 2,910.95 |
| 98 | 5.4.1 | LS2-PLATE MARKING | 4h | 2017-09-29 07:30 A | 2017-09-29 11:30 A | 41, 79 | 100% | 2017-09-29 07:30 | 2017-09-29 11:30 | 4h | TEAM_2Shift_Calendar-1 | Helper; Plate (Cost) [0.1%]; Fitter | 8h | 8h |  |  |  |
| 99 | 5.4.2 | LS2-STAMPING | 3h | 2017-09-29 11:30 A | 2017-09-29 14:31 A | 98 | 100% | 2017-09-29 11:30 | 2017-09-29 14:31 | 3h | TEAM_2Shift_Calendar-1 | Fitter | 3h | 3h |  |  |  |
| 100 | 5.4.3 | LS2-PL CUTTING | 3h | 2017-09-29 14:31 A | 2017-09-29 17:31 A | 99 | 100% | 2017-09-29 14:31 | 2017-09-29 17:31 | 3h | TEAM_2Shift_Calendar-1 | Helper; Gas Cutter | 6h | 6h | 356.25 | 356.25 | 356.25 |
| 101 | 5.4.4 | LS2-GRINDING | 5h | 2017-09-29 19:31 A | 2017-09-30 08:31 A | 100 | 100% | 2017-09-29 19:31 | 2017-09-30 08:31 | 5h | TEAM_2Shift_Calendar-1 | Grinder | 5h | 5h |  |  |  |
| 102 | 5.4.5 | LS2-EDGE PREPARATION | 3.5h | 2017-09-30 08:31 A | 2017-09-30 12:01 A | 101 | 100% | 2017-09-30 08:31 | 2017-09-30 12:01 | 3.5h | TEAM_2Shift_Calendar-1 | Grinder | 3.5h | 3.5h |  |  |  |
| 103 | 5.4.6 | LS2-PREBENDING | 2.5h | 2017-09-30 12:01 A | 2017-09-30 14:32 A | 102 | 100% | 2017-09-30 12:01 | 2017-09-30 14:32 | 2.5h | TEAM_2Shift_Calendar-1 | Helper; Fitter | 5h | 5h | 296.88 | 296.88 | 296.88 |
| 104 | 5.4.7 | LS2-PREBEND CUTOFF | 3.5h | 2017-09-30 17:02 A | 2017-09-30 20:32 A | 103 | 100% | 2017-09-30 17:02 | 2017-09-30 20:32 | 3.5h | TEAM_2Shift_Calendar-1 | Gas Cutter | 3.5h | 3.5h |  |  |  |
| 105 | 5.4.8 | LS2-EDGE PREPARTION | 3.5h | 2017-09-30 20:32 A | 2017-10-03 08:02 A | 104 | 100% | 2017-09-30 20:32 | 2017-10-03 08:02 | 3.5h | TEAM_2Shift_Calendar-1 | Grinder | 3.5h | 3.5h |  |  |  |
| 106 | 5.4.9 | LS2-ROLLING | 6h | 2017-10-03 08:02 A | 2017-10-03 14:03 A | 105 | 100% | 2017-10-03 08:02 | 2017-10-03 14:03 | 6h | TEAM_2Shift_Calendar-1 | Helper; Fitter | 12h | 12h |  |  |  |
| 107 | 5.4.10 | LS2-ACIDCLEANING | 4h | 2017-10-03 14:03 A | 2017-10-03 18:03 A | 106 | 100% | 2017-10-03 14:03 | 2017-10-03 18:03 | 4h | TEAM_2Shift_Calendar-1 | Helper [200%] | 8h | 8h |  |  |  |
| 108 | 5.4.11 | LS2-FITUP | 3.33h | 2017-10-03 18:03 A | 2017-10-03 21:23 A | 107 | 100% | 2017-10-03 18:03 | 2017-10-03 21:23 | 3.33h | TEAM_2Shift_Calendar-1 | Helper; SAW Welder; Fitter | 10h | 10h | 625.01 | 625.01 | 625.01 |
| 109 | 5.4.12 | LS2-SPIDERUP | 5h | 2017-10-04 08:03 A | 2017-10-04 13:03 A | 108 | 100% | 2017-10-04 08:03 | 2017-10-04 13:03 | 5h | TEAM_2Shift_Calendar-1 | Fitter | 5h | 5h |  |  |  |
| 110 | 5.4.13 | LS2-FITUP INSPECTION | 1d | 2017-10-04 13:03 A | 2017-10-05 11:34 A | 109 | 100% | 2017-10-04 13:03 | 2017-10-05 11:34 | 1d | TEAM_2Shift_Calendar-1 | Fitter | 14.5h | 14.5h |  |  |  |
| 111 | 5.4.14 | LS2-WELDING | 9.75h | 2017-10-05 11:34 A | 2017-10-05 21:20 A | 110 | 100% | 2017-10-05 11:34 | 2017-10-05 21:20 | 9.75h | TEAM_2Shift_Calendar-1 | SAW Welder; Helper | 19.5h | 19.5h | 1,157.81 | 1,157.81 | 1,157.81 |
| 112 | 5.4.15 | LS2-FLUSHGRIND | 10h | 2017-10-06 12:35 A | 2017-10-07 06:36 A | 111 | 100% | 2017-10-06 12:35 | 2017-10-07 06:36 | 10h | TEAM_2Shift_Calendar-1 | Grinder | 10h | 10h |  |  |  |
| 113 | 5.4.16 | LS2-REROLLING | 4h | 2017-10-07 06:36 A | 2017-10-07 10:36 A | 112 | 100% | 2017-10-07 06:36 | 2017-10-07 10:36 | 4h | TEAM_2Shift_Calendar-1 | Helper; Fitter | 8h | 8h | 475 | 475 | 475 |
| 114 | 5.4.17 | LS2-DPCHECK | 4h | 2017-10-07 12:36 A | 2017-10-07 16:37 A | 113 | 100% | 2017-10-07 12:36 | 2017-10-07 16:37 | 4h | TEAM_2Shift_Calendar-1 | Fitter | 4h | 4h |  |  |  |
| 115 | 5.4.18 | LS2-RADIOGRAPHY | 1d | 2017-10-07 16:37 A | 2017-10-09 15:07 A | 114 | 100% | 2017-10-07 16:37 | 2017-10-09 15:07 | 1d | TEAM_2Shift_Calendar-1 |  |  |  |  |  |  |

Notes:
- 78: 2NOS
- 79: 1731*2000*16T
- 92: 2.04 Kg/m
- 96: SC
- 97: 2NOS
- 98: 1731*2000*16T
- 111: 2.04 Kg/m
- 115: SC

| ID | WBS | Task | Duration | Start | Finish | Predecessors | Complete | Baseline start | Baseline finish | Baseline duration | Constraint | Calendar | Resources | Work | Actual work | Cost | Baseline cost | Actual cost |
| --- | --- | --- | --- | --- | --- | --- | --- | --- | --- | --- | --- | --- | --- | --- | --- | --- | --- | --- |
| 116 | 5.5 | **SHELL LS3- FABRICATION** | 8.52d | 2017-09-29 11:30 A | 2017-10-10 07:00 A |  | 100% | 2017-09-29 11:30 | 2017-10-10 07:00 | 8.52d |  | TEAM_2Shift_Calendar-1 |  | 127.5h | 127.5h | 3,326.57 | 3,326.57 | 3,326.57 |
| 117 | 5.5.1 | LS3-PLATE MARKING | 3.5h | 2017-09-29 11:30 A | 2017-09-29 15:31 A | 41, 98 | 100% | 2017-09-29 11:30 | 2017-09-29 15:31 | 3.5h |  | TEAM_2Shift_Calendar-1 | Helper; Plate (Cost) [0.1%]; Fitter | 7h | 7h | 415.62 | 415.62 | 415.62 |
| 118 | 5.5.2 | LS3-STAMPING | 3h | 2017-09-29 15:31 A | 2017-09-29 18:31 A | 117 | 100% | 2017-09-29 15:31 | 2017-09-29 18:31 | 3h |  | TEAM_2Shift_Calendar-1 | Fitter | 3h | 3h |  |  |  |
| 119 | 5.5.3 | LS3-PL CUTTING | 3h | 2017-09-29 18:31 A | 2017-09-29 21:31 A | 118 | 100% | 2017-09-29 18:31 | 2017-09-29 21:31 | 3h |  | TEAM_2Shift_Calendar-1 | Helper; Gas Cutter | 6h | 6h | 356.25 | 356.25 | 356.25 |
| 120 | 5.5.4 | LS3-GRINDING | 5h | 2017-09-30 07:31 A | 2017-09-30 12:31 A | 119 | 100% | 2017-09-30 07:31 | 2017-09-30 12:31 | 5h |  | TEAM_2Shift_Calendar-1 | Grinder | 5h | 5h |  |  |  |
| 121 | 5.5.5 | LS3-EDGE PREPARATION | 3.5h | 2017-09-30 12:31 A | 2017-09-30 16:02 A | 120 | 100% | 2017-09-30 12:31 | 2017-09-30 16:02 | 3.5h |  | TEAM_2Shift_Calendar-1 | Grinder | 3.5h | 3.5h |  |  |  |
| 122 | 5.5.6 | LS3-PREBENDING | 2.5h | 2017-09-30 16:02 A | 2017-09-30 18:32 A | 121 | 100% | 2017-09-30 16:02 | 2017-09-30 18:32 | 2.5h |  | TEAM_2Shift_Calendar-1 | Helper; Fitter | 5h | 5h | 296.88 | 296.88 | 296.88 |
| 123 | 5.5.7 | LS3-PREBEND CUTOFF | 3.5h | 2017-09-30 21:02 A | 2017-10-03 08:32 A | 122 | 100% | 2017-09-30 21:02 | 2017-10-03 08:32 | 3.5h |  | TEAM_2Shift_Calendar-1 | Gas Cutter | 3.5h | 3.5h |  |  |  |
| 124 | 5.5.8 | LS3-EDGE PREPARTION | 3.5h | 2017-10-03 08:32 A | 2017-10-03 12:02 A | 123 | 100% | 2017-10-03 08:32 | 2017-10-03 12:02 | 3.5h |  | TEAM_2Shift_Calendar-1 | Grinder | 3.5h | 3.5h |  |  |  |
| 125 | 5.5.9 | LS3-ROLLING | 6h | 2017-10-03 12:02 A | 2017-10-03 18:03 A | 124 | 100% | 2017-10-03 12:02 | 2017-10-03 18:03 | 6h |  | TEAM_2Shift_Calendar-1 | Helper; Fitter | 12h | 12h |  |  |  |
| 126 | 5.5.10 | LS3-ACIDCLEANING | 4h | 2017-10-03 18:03 A | 2017-10-04 06:03 A | 125 | 100% | 2017-10-03 18:03 | 2017-10-04 06:03 | 4h |  | TEAM_2Shift_Calendar-1 | Helper [200%] | 8h | 8h |  |  |  |
| 127 | 5.5.11 | LS3-FITUP | 3.33h | 2017-10-04 06:03 A | 2017-10-04 09:23 A | 126 | 100% | 2017-10-04 06:03 | 2017-10-04 09:23 | 3.33h |  | TEAM_2Shift_Calendar-1 | Helper; SAW Welder; Fitter | 10h | 10h | 625.01 | 625.01 | 625.01 |
| 128 | 5.5.12 | LS3-SPIDERUP | 5h | 2017-10-04 12:03 A | 2017-10-04 17:04 A | 127 | 100% | 2017-10-04 12:03 | 2017-10-04 17:04 | 5h |  | TEAM_2Shift_Calendar-1 | Fitter | 5h | 5h |  |  |  |
| 129 | 5.5.13 | LS3-FITUP INSPECTION | 1d | 2017-10-04 17:04 A | 2017-10-05 15:35 A | 128 | 100% | 2017-10-04 17:04 | 2017-10-05 15:35 | 1d |  | TEAM_2Shift_Calendar-1 | Fitter | 14.5h | 14.5h |  |  |  |
| 130 | 5.5.14 | LS3-WELDING | 9.75h | 2017-10-05 15:35 A | 2017-10-06 09:20 A | 129 | 100% | 2017-10-05 15:35 | 2017-10-06 09:20 | 9.75h |  | TEAM_2Shift_Calendar-1 | SAW Welder; Helper | 19.5h | 19.5h | 1,157.81 | 1,157.81 | 1,157.81 |
| 131 | 5.5.15 | LS3-FLUSHGRIND | 10h | 2017-10-06 16:36 A | 2017-10-07 10:36 A | 130 | 100% | 2017-10-06 16:36 | 2017-10-07 10:36 | 10h |  | TEAM_2Shift_Calendar-1 | Grinder | 10h | 10h |  |  |  |
| 132 | 5.5.16 | LS3-REROLLING | 4h | 2017-10-07 10:36 A | 2017-10-07 14:37 A | 131 | 100% | 2017-10-07 10:36 | 2017-10-07 14:37 | 4h |  | TEAM_2Shift_Calendar-1 | Helper; Fitter | 8h | 8h | 475 | 475 | 475 |
| 133 | 5.5.17 | LS3-DPCHECK | 4h | 2017-10-07 16:37 A | 2017-10-07 20:37 A | 132 | 100% | 2017-10-07 16:37 | 2017-10-07 20:37 | 4h |  | TEAM_2Shift_Calendar-1 | Fitter | 4h | 4h |  |  |  |
| 134 | 5.5.18 | LS3-RADIOGRAPHY | 1d | 2017-10-09 08:30 A | 2017-10-10 07:00 A | 133 | 100% | 2017-10-09 08:30 | 2017-10-10 07:00 | 1d |  | TEAM_2Shift_Calendar-1 |  |  |  |  |  |  |
| 135 | 5.6 | **CHANNEL BONNET FORMING** | 39.69d | 2017-12-27 06:00 A | 2018-02-12 21:30 A |  | 100% | 2017-12-27 06:00 | 2018-02-12 21:30 | 39.69d |  | TEAM_2Shift_Calendar-1 |  | 721h | 721h | 237.5 | 237.5 | 237.5 |
| 136 | 5.6.1 | DISH PLATE MARKING | 2h | 2017-12-27 06:00 A | 2017-12-27 10:00 A |  | 100% | 2017-12-27 06:00 | 2017-12-27 10:00 | 2h | start no earlier than 2017-12-27 06:00 | TEAM_2Shift_Calendar-1 | Helper; Plate (Cost) [0.1%]; Fitter | 4h | 4h | 237.5 | 237.5 | 237.5 |
| 137 | 5.6.2 | DISH PLATE CUTTING | 5h | 2017-12-27 10:00 A | 2017-12-27 15:00 A | 136 | 100% | 2017-12-27 10:00 | 2017-12-27 15:00 | 5h |  | TEAM_2Shift_Calendar-1 | Helper; Gas Cutter | 10h | 10h |  |  |  |
| 138 | 5.6.3 | DISH PLATE GRINDING | 7h | 2017-12-27 15:00 A | 2017-12-27 22:00 A | 137 | 100% | 2017-12-27 15:00 | 2017-12-27 22:00 | 7h |  | TEAM_2Shift_Calendar-1 | Grinder | 7h | 7h |  |  |  |
| 139 | 5.6.4 | DISH FORMING | 6d | 2017-12-28 08:30 A | 2018-01-03 15:30 A | 138 | 100% | 2017-12-28 08:30 | 2018-01-03 15:30 | 6d |  | TEAM_2Shift_Calendar-1 |  |  |  |  |  |  |
| 140 | 5.6.5 | DISH INSPECTION | 2d | 2018-01-09 16:30 A | 2018-01-11 13:30 A | 139 | 100% | 2018-01-09 16:30 | 2018-01-11 13:30 | 2d |  | TEAM_2Shift_Calendar-1 | Fitter | 29h | 29h |  |  |  |
| 141 | 5.6.6 | DISH SURFACE GRINDING | 32h | 2018-01-11 13:30 A | 2018-01-16 13:30 A | 140 | 100% | 2018-01-11 13:30 | 2018-01-16 13:30 | 32h |  | TEAM_2Shift_Calendar-1 | Grinder | 32h | 32h |  |  |  |
| 142 | 5.6.7 | SF MARKING | 4h | 2018-01-16 13:30 A | 2018-01-16 17:30 A | 141 | 100% | 2018-01-16 13:30 | 2018-01-16 17:30 | 4h |  | TEAM_2Shift_Calendar-1 | Fitter | 4h | 4h |  |  |  |
| 143 | 5.6.8 | SF CUTTING | 5h | 2018-01-16 17:30 A | 2018-01-17 06:30 A | 142 | 100% | 2018-01-16 17:30 | 2018-01-17 06:30 | 5h |  | TEAM_2Shift_Calendar-1 | Helper; Gas Cutter | 10h | 10h |  |  |  |
| 144 | 5.6.9 | GRINDING | 7h | 2018-01-17 06:30 A | 2018-01-17 13:30 A | 143 | 100% | 2018-01-17 06:30 | 2018-01-17 13:30 | 7h |  | TEAM_2Shift_Calendar-1 | Grinder | 7h | 7h |  |  |  |
| 145 | 5.6.10 | DISH EP | 6h | 2018-01-17 13:30 A | 2018-01-17 19:30 A | 144 | 100% | 2018-01-17 13:30 | 2018-01-17 19:30 | 6h |  | TEAM_2Shift_Calendar-1 | Grinder | 6h | 6h |  |  |  |
| 146 | 5.6.11 | FINAL INSPECTION | 21.1d | 2018-01-17 19:30 A | 2018-02-12 21:30 A | 145 | 100% | 2018-01-17 19:30 | 2018-02-12 21:30 | 21.1d | finish no later than 2018-02-12 21:30 | TEAM_2Shift_Calendar-1 | Fitter [200%] | 612h | 612h |  |  |  |

Notes:
- 116: 2NOS
- 117: 1731*2000*16T
- 130: 2.04 Kg/m
- 134: SC
- 135: 4NOS
- 136: DIA 780*18T/16T
- 139: SC

| ID | WBS | Task | Type | Duration | Start | Finish | Predecessors | Complete | Baseline start | Baseline finish | Baseline duration | Calendar | Resources | Work | Actual work | Cost | Baseline cost | Actual cost |
| --- | --- | --- | --- | --- | --- | --- | --- | --- | --- | --- | --- | --- | --- | --- | --- | --- | --- | --- |
| 147 | 5.7 | **NOZZLE FABRICATION(PIPE)** |  | 5.14d | 2018-02-05 06:00 A | 2018-02-09 16:30 A |  | 100% | 2018-02-05 06:00 | 2018-02-09 16:30 | 5.14d | TEAM_2Shift_Calendar-1 |  | 85.67h | 85.67h | 1,195.12 | 1,195.12 | 1,195.12 |
| 148 | 5.7.1 | PIPE MARKING |  | 4.3h | 2018-02-06 06:00 A | 2018-02-07 06:40 A | 45 | 100% | 2018-02-06 06:00 | 2018-02-07 06:40 | 4.3h | TEAM_2Shift_Calendar-1 | Helper; Pipe (Cost) [0.1%]; Fitter | 10.67h | 10.67h | 614.06 | 614.06 | 614.06 |
| 149 | 5.7.2 | CUTTING |  | 4.33h | 2018-02-05 06:00 A | 2018-02-07 06:40 A | 148 | 100% | 2018-02-05 06:00 | 2018-02-07 06:40 | 4.33h | TEAM_2Shift_Calendar-1 | Helper; Gas Cutter | 10h | 10h | 581.06 | 581.06 | 581.06 |
| 150 | 5.7.3 | EDGE PREPARATION |  | 6h | 2018-02-06 06:00 A | 2018-02-06 12:00 A | 149 | 100% | 2018-02-06 06:00 | 2018-02-06 12:00 | 6h | TEAM_2Shift_Calendar-1 | Grinder | 6h | 6h |  |  |  |
| 151 | 5.7.4 | MACHINING |  | 2.17d | 2018-02-06 12:00 A | 2018-02-08 11:30 A | 150 | 100% | 2018-02-06 12:00 | 2018-02-08 11:30 | 2.17d | TEAM_2Shift_Calendar-1 | Lathe | 29h | 29h |  |  |  |
| 152 | 5.7.5 | PROFILE MARKING |  | 4h | 2018-02-08 11:30 A | 2018-02-08 15:30 A | 151 | 100% | 2018-02-08 11:30 | 2018-02-08 15:30 | 4h | TEAM_2Shift_Calendar-1 | Helper; Fitter | 8h | 8h |  |  |  |
| 153 | 5.7.6 | PROFILE CUTTING |  | 5h | 2018-02-08 15:30 A | 2018-02-08 20:30 A | 152 | 100% | 2018-02-08 15:30 | 2018-02-08 20:30 | 5h | TEAM_2Shift_Calendar-1 | Helper; Gas Cutter | 10h | 10h |  |  |  |
| 154 | 5.7.7 | PROFILE GRINDING |  | 6h | 2018-02-08 20:30 A | 2018-02-09 10:30 A | 153 | 100% | 2018-02-08 20:30 | 2018-02-09 10:30 | 6h | TEAM_2Shift_Calendar-1 | Grinder | 6h | 6h |  |  |  |
| 155 | 5.7.8 | EDGE PREPARATION |  | 6h | 2018-02-09 10:30 A | 2018-02-09 16:30 A | 154 | 100% | 2018-02-09 10:30 | 2018-02-09 16:30 | 6h | TEAM_2Shift_Calendar-1 | Grinder | 6h | 6h |  |  |  |
| 156 | 5.8 | **NOZZLE FABRICATION(PIPE)** |  | 2.07d | 2018-02-07 06:40 A | 2018-02-08 20:40 A |  | 100% | 2018-02-07 06:40 | 2018-02-08 20:40 | 2.07d | TEAM_2Shift_Calendar-1 |  | 33.5h | 33.5h |  |  |  |
| 157 | 5.8.1 | PIPE MARKING |  | 1h | 2018-02-07 06:40 A | 2018-02-07 07:40 A | 45, 148 | 100% | 2018-02-07 06:40 | 2018-02-07 07:40 | 1h | TEAM_2Shift_Calendar-1 | Helper; Pipe (Cost) [0.1%]; Fitter | 2h | 2h |  |  |  |
| 158 | 5.8.2 | CUTTING |  | 2h | 2018-02-07 07:40 A | 2018-02-07 09:40 A | 157 | 100% | 2018-02-07 07:40 | 2018-02-07 09:40 | 2h | TEAM_2Shift_Calendar-1 | Helper; Gas Cutter | 4h | 4h |  |  |  |
| 159 | 5.8.3 | EDGE PREPARATION |  | 2h | 2018-02-07 09:40 A | 2018-02-07 11:40 A | 158 | 100% | 2018-02-07 09:40 | 2018-02-07 11:40 | 2h | TEAM_2Shift_Calendar-1 | Grinder | 2h | 2h |  |  |  |
| 160 | 5.8.4 | MACHINING |  | 1d | 2018-02-07 11:40 A | 2018-02-08 12:40 A | 159 | 100% | 2018-02-07 11:40 | 2018-02-08 12:40 | 1d | TEAM_2Shift_Calendar-1 | Lathe | 14.5h | 14.5h |  |  |  |
| 161 | 5.8.5 | PROFILE MARKING |  | 1h | 2018-02-08 12:40 A | 2018-02-08 13:40 A | 160 | 100% | 2018-02-08 12:40 | 2018-02-08 13:40 | 1h | TEAM_2Shift_Calendar-1 | Helper; Fitter | 2h | 2h |  |  |  |
| 162 | 5.8.6 | PROFILE CUTTING |  | 2h | 2018-02-08 13:40 A | 2018-02-08 15:40 A | 161 | 100% | 2018-02-08 13:40 | 2018-02-08 15:40 | 2h | TEAM_2Shift_Calendar-1 | Helper; Gas Cutter | 4h | 4h |  |  |  |
| 163 | 5.8.7 | PROFILE GRINDING |  | 3h | 2018-02-08 15:40 A | 2018-02-08 18:40 A | 162 | 100% | 2018-02-08 15:40 | 2018-02-08 18:40 | 3h | TEAM_2Shift_Calendar-1 | Grinder | 3h | 3h |  |  |  |
| 164 | 5.8.8 | EDEGE PREPARATION |  | 2h | 2018-02-08 18:40 A | 2018-02-08 20:40 A | 163 | 100% | 2018-02-08 18:40 | 2018-02-08 20:40 | 2h | TEAM_2Shift_Calendar-1 | Grinder | 2h | 2h |  |  |  |
| 165 | 5.9 | **TUBESHEET FABRICATION** |  | 30.72d | 2017-09-28 16:00 A | 2017-11-04 13:27 A |  | 100% | 2017-09-28 16:00 | 2017-11-04 13:27 | 30.72d | TEAM_2Shift_Calendar-1 |  | 482h | 482h | 237.5 | 237.5 | 237.5 |
| 166 | 5.9.1 | PLATE MARKING |  | 2h | 2017-09-28 16:00 A | 2017-09-28 20:00 A | 48 | 100% | 2017-09-28 16:00 | 2017-09-28 20:00 | 2h | TEAM_2Shift_Calendar-1 | Helper; Tube Sheet (Cost) [0.1%]; Fitter | 4h | 4h | 237.5 | 237.5 | 237.5 |
| 167 | 5.9.2 | STAMPING |  | 3h | 2017-09-28 20:00 A | 2017-09-29 07:00 A | 166 | 100% | 2017-09-28 20:00 | 2017-09-29 07:00 | 3h | TEAM_2Shift_Calendar-1 | Fitter | 3h | 3h |  |  |  |
| 168 | 5.9.3 | PLASMA ARC CUTTING |  | 5h | 2017-09-29 07:00 A | 2017-09-29 12:00 A | 167 | 100% | 2017-09-29 07:00 | 2017-09-29 12:00 | 5h | TEAM_2Shift_Calendar-1 | Helper; Gas Cutter | 10h | 10h |  |  |  |
| 169 | 5.9.4 | GRINDING |  | 7h | 2017-09-29 12:00 A | 2017-09-29 19:01 A | 168 | 100% | 2017-09-29 12:00 | 2017-09-29 19:01 | 7h | TEAM_2Shift_Calendar-1 | Grinder | 7h | 7h |  |  |  |
| 170 | 5.9.5 | INSPECTION |  | 2d | 2017-09-29 19:01 A | 2017-10-03 16:03 A | 169 | 100% | 2017-09-29 19:01 | 2017-10-03 16:03 | 2d | TEAM_2Shift_Calendar-1 | Fitter | 29h | 29h |  |  |  |
| 171 | 5.9.6 | MACHINING |  | 2d | 2017-10-03 16:03 A | 2017-10-05 13:04 A | 170 | 100% | 2017-10-03 16:03 | 2017-10-05 13:04 | 2d | TEAM_2Shift_Calendar-1 | Lathe | 29h | 29h |  |  |  |
| 172 | 5.9.7 | HOLES MARKING |  | 110h | 2017-10-05 13:04 A | 2017-10-13 11:11 A | 171 | 100% | 2017-10-05 13:04 | 2017-10-13 11:11 | 110h | TEAM_2Shift_Calendar-1 | Fitter | 110h | 110h |  |  |  |
| 173 | 5.9.8 | DRILLING |  | 220h | 2017-10-13 11:11 A | 2017-11-02 07:25 A | 172 | 100% | 2017-10-13 11:11 | 2017-11-02 07:25 | 220h | TEAM_2Shift_Calendar-1 | Driller | 220h | 220h |  |  |  |
| 174 | 5.9.9 | EXPANSION GROOVING | milestone | 0h | 2017-11-02 07:25 A | 2017-11-02 07:25 A | 173 | 100% | 2017-11-02 07:25 | 2017-11-02 07:25 | 0h | TEAM_2Shift_Calendar-1 | Helper; Fitter [200%] |  |  |  |  |  |
| 175 | 5.9.10 | TIE ROD HOLE MARKING |  | 3h | 2017-11-02 07:25 A | 2017-11-02 10:25 A | 174 | 100% | 2017-11-02 07:25 | 2017-11-02 10:25 | 3h | TEAM_2Shift_Calendar-1 | Helper; Rod (Cost) [0.1%]; Fitter | 6h | 6h |  |  |  |
| 176 | 5.9.11 | TIE ROD HOLE DRILLING |  | 6h | 2017-11-02 10:25 A | 2017-11-02 16:26 A | 175 | 100% | 2017-11-02 10:25 | 2017-11-02 16:26 | 6h | TEAM_2Shift_Calendar-1 | Driller | 6h | 6h |  |  |  |
| 177 | 5.9.12 | FINAL INSPECTION |  | 2d | 2017-11-02 16:26 A | 2017-11-04 13:27 A | 176 | 100% | 2017-11-02 16:26 | 2017-11-04 13:27 | 2d | TEAM_2Shift_Calendar-1 | Fitter [200%] | 58h | 58h |  |  |  |

Notes:
- 147: 80SCH-14NOS
- 156: 160-4NOS
- 165: 4NOS
- 166: DIA746*115T
- 172: 618 HOLES*4
- 175: 12 NOS*4

| ID | WBS | Task | Duration | Start | Finish | Predecessors | Complete | Baseline start | Baseline finish | Baseline duration | Calendar | Resources | Work | Actual work | Cost | Baseline cost | Actual cost |
| --- | --- | --- | --- | --- | --- | --- | --- | --- | --- | --- | --- | --- | --- | --- | --- | --- | --- |
| 178 | 5.10 | **BAFFLE PLATE PREPARATION** | 57.99d | 2017-09-28 16:00 A | 2017-12-06 08:52 A |  | 100% | 2017-09-28 16:00 | 2017-12-06 08:52 | 57.99d | TEAM_2Shift_Calendar-1 |  | 1551.5h | 1551.5h |  |  |  |
| 179 | 5.10.1 | PLATE MARKING | 18h | 2017-09-28 16:00 A | 2017-09-29 18:01 A | 51 | 100% | 2017-09-28 16:00 | 2017-09-29 18:01 | 18h | TEAM_2Shift_Calendar-1 | Helper; Plate (Cost) [0.1%]; Fitter | 36h | 36h |  |  |  |
| 180 | 5.10.2 | CUTTING | 21h | 2017-09-29 18:01 A | 2017-10-03 07:02 A | 179 | 100% | 2017-09-29 18:01 | 2017-10-03 07:02 | 21h | TEAM_2Shift_Calendar-1 | Helper; Gas Cutter | 42h | 42h |  |  |  |
| 181 | 5.10.3 | GRINDING | 35h | 2017-10-03 07:02 A | 2017-10-05 10:04 A | 180 | 100% | 2017-10-03 07:02 | 2017-10-05 10:04 | 35h | TEAM_2Shift_Calendar-1 | Helper; Grinder | 70h | 70h |  |  |  |
| 182 | 5.10.4 | AXIS LINE MARKING | 15h | 2017-10-05 10:04 A | 2017-10-06 09:05 A | 181 | 100% | 2017-10-05 10:04 | 2017-10-06 09:05 | 15h | TEAM_2Shift_Calendar-1 | Fitter | 15h | 15h |  |  |  |
| 183 | 5.10.5 | STACKKING | 16h | 2017-10-06 09:05 A | 2017-10-07 09:06 A | 182 | 100% | 2017-10-06 09:05 | 2017-10-07 09:06 | 16h | TEAM_2Shift_Calendar-1 | Helper | 16h | 16h |  |  |  |
| 184 | 5.10.6 | DRILLING | 210h | 2017-10-07 09:06 A | 2017-10-25 11:19 A | 183 | 100% | 2017-10-07 09:06 | 2017-10-25 11:19 | 210h | TEAM_2Shift_Calendar-1 | Driller [200%] | 420h | 420h |  |  |  |
| 185 | 5.10.7 | DRILLING INSPECTION | 2d | 2017-10-25 11:19 A | 2017-10-27 08:21 A | 184 | 100% | 2017-10-25 11:19 | 2017-10-27 08:21 | 2d | TEAM_2Shift_Calendar-1 | Driller | 29h | 29h |  |  |  |
| 186 | 5.10.8 | OD MACHINING | 200h | 2017-10-27 08:21 A | 2017-11-13 16:34 A | 185 | 100% | 2017-10-27 08:21 | 2017-11-13 16:34 | 200h | TEAM_2Shift_Calendar-1 | Lathe [200%] | 400h | 400h |  |  |  |
| 187 | 5.10.9 | DE-STACKING | 16h | 2017-11-13 16:34 A | 2017-11-14 16:35 A | 186 | 100% | 2017-11-13 16:34 | 2017-11-14 16:35 | 16h | TEAM_2Shift_Calendar-1 | Helper | 16h | 16h |  |  |  |
| 188 | 5.10.10 | GRIND THE STACKS | 30h | 2017-11-14 16:35 A | 2017-11-16 14:37 A | 187 | 100% | 2017-11-14 16:35 | 2017-11-16 14:37 | 30h | TEAM_2Shift_Calendar-1 | Grinder | 30h | 30h |  |  |  |
| 189 | 5.10.11 | HOLE CHAMFERING | 200h | 2017-11-16 14:37 A | 2017-12-02 06:49 A | 188 | 100% | 2017-11-16 14:37 | 2017-12-02 06:49 | 200h | TEAM_2Shift_Calendar-1 | Driller [200%] | 400h | 400h |  |  |  |
| 190 | 5.10.12 | NUMERING | 13h | 2017-12-02 06:49 A | 2017-12-02 19:50 A | 189 | 100% | 2017-12-02 06:49 | 2017-12-02 19:50 | 13h | TEAM_2Shift_Calendar-1 | Helper; Fitter | 26h | 26h |  |  |  |
| 191 | 5.10.13 | HOLE MATCHING | 1d | 2017-12-02 19:50 A | 2017-12-04 18:21 A | 190 | 100% | 2017-12-02 19:50 | 2017-12-04 18:21 | 1d | TEAM_2Shift_Calendar-1 | Fitter [200%] | 29h | 29h |  |  |  |
| 192 | 5.10.14 | HOLES DRILLING IF REQD | 1d | 2017-12-04 18:21 A | 2017-12-05 16:52 A | 191 | 100% | 2017-12-04 18:21 | 2017-12-05 16:52 | 1d | TEAM_2Shift_Calendar-1 | Driller | 14.5h | 14.5h |  |  |  |
| 193 | 5.10.15 | CLEANING | 8h | 2017-12-05 16:52 A | 2017-12-06 08:52 A | 192 | 100% | 2017-12-05 16:52 | 2017-12-06 08:52 | 8h | TEAM_2Shift_Calendar-1 | Helper | 8h | 8h |  |  |  |
| 194 | 5.11 | **TIE ROD PREPARATION** | 3.86d | 2017-09-28 07:00 A | 2017-10-03 15:00 A |  | 100% | 2017-09-28 07:00 | 2017-10-03 15:00 | 3.86d | TEAM_2Shift_Calendar-1 |  | 57.5h | 57.5h | 1,395.31 | 1,395.31 | 1,395.31 |
| 195 | 5.11.1 | TIE ROD MARKING | 2.25h | 2017-09-28 07:00 A | 2017-09-28 10:00 A | 56 | 100% | 2017-09-28 07:00 | 2017-09-28 10:00 | 2.25h | TEAM_2Shift_Calendar-1 | Helper; Rod (Cost) [0.1%]; Fitter | 4.5h | 4.5h | 267.19 | 267.19 | 267.19 |
| 196 | 5.11.2 | TIE ROD CUTTING | 2h | 2017-09-28 10:00 A | 2017-09-28 12:00 A | 195 | 100% | 2017-09-28 10:00 | 2017-09-28 12:00 | 2h | TEAM_2Shift_Calendar-1 | Helper; Gas Cutter | 4h | 4h | 237.5 | 237.5 | 237.5 |
| 197 | 5.11.3 | LENGTH JOINT WELDING IF REQD | 7.5h | 2017-09-28 14:00 A | 2017-09-28 21:30 A | 196 | 100% | 2017-09-28 14:00 | 2017-09-28 21:30 | 7.5h | TEAM_2Shift_Calendar-1 | Helper; SAW Welder | 15h | 15h | 890.62 | 890.62 | 890.62 |
| 198 | 5.11.4 | THREAD MC | 2d | 2017-09-29 13:00 A | 2017-10-03 10:00 A | 197 | 100% | 2017-09-29 13:00 | 2017-10-03 10:00 | 2d | TEAM_2Shift_Calendar-1 | Lathe | 29h | 29h |  |  |  |
| 199 | 5.11.5 | CLEANING | 5h | 2017-10-03 10:00 A | 2017-10-03 15:00 A | 198 | 100% | 2017-10-03 10:00 | 2017-10-03 15:00 | 5h | TEAM_2Shift_Calendar-1 | Fitter | 5h | 5h |  |  |  |
| 200 | 5.12 | **SPACER TUBE PREPARATION** | 8.34d | 2017-09-28 10:00 A | 2017-10-07 19:00 A |  | 100% | 2017-09-28 10:00 | 2017-10-07 19:00 | 8.34d | TEAM_2Shift_Calendar-1 |  | 174.5h | 174.5h | 4,740.62 | 4,740.62 | 4,740.62 |
| 201 | 5.12.1 | TUBE MARKING | 8.75h | 2017-09-28 10:00 A | 2017-09-29 19:00 A | 56, 195 | 100% | 2017-09-28 10:00 | 2017-09-29 19:00 | 8.75h | TEAM_2Shift_Calendar-1 | Helper [200%]; Tube (Cost) [0.1%]; Fitter [200%] | 52.5h | 52.5h | 2,953.12 | 2,953.12 | 2,953.12 |
| 202 | 5.12.2 | TUBE CUTTING | 26h | 2017-09-29 19:00 A | 2017-10-03 13:00 A | 201 | 100% | 2017-09-29 19:00 | 2017-10-03 13:00 | 26h | TEAM_2Shift_Calendar-1 | Helper [200%]; Gas Cutter [200%] | 52h | 52h | 1,787.5 | 1,787.5 | 1,787.5 |
| 203 | 5.12.3 | TUBE M/C | 4d | 2017-10-03 13:00 A | 2017-10-07 07:00 A | 202 | 100% | 2017-10-03 13:00 | 2017-10-07 07:00 | 4d | TEAM_2Shift_Calendar-1 | Lathe | 58h | 58h |  |  |  |
| 204 | 5.12.4 | CLEANING | 12h | 2017-10-07 07:00 A | 2017-10-07 19:00 A | 203 | 100% | 2017-10-07 07:00 | 2017-10-07 19:00 | 12h | TEAM_2Shift_Calendar-1 | Fitter | 12h | 12h |  |  |  |

Notes:
- 178: 52NOS
- 179: DIA530.2*8T
- 194: 12NOS
- 195: DIA10
- 200: 260NOS
- 201: OD17.5*2.35T

| ID | WBS | Task | Duration | Start | Finish | Predecessors | Complete | Baseline start | Baseline finish | Baseline duration | Calendar | Resources | Work | Actual work | Cost | Baseline cost | Actual cost |
| --- | --- | --- | --- | --- | --- | --- | --- | --- | --- | --- | --- | --- | --- | --- | --- | --- | --- |
| 205 | 5.13 | **CS1-FITUP & WELDING** | 6.31d | 2018-01-29 06:00 A | 2018-02-03 17:30 A |  | 100% | 2018-01-29 06:00 | 2018-02-03 17:30 | 6.31d | TEAM_2Shift_Calendar-1 |  | 129.48h | 129.48h | 7,192.55 | 7,192.55 | 7,192.55 |
| 206 | 5.13.1 | SHELL LS2+LS3 READY | 6h | 2018-01-29 06:00 A | 2018-01-29 22:00 A | 78, 97 | 100% | 2018-01-29 06:00 | 2018-01-29 22:00 | 6h | TEAM_2Shift_Calendar-1 | Plate (Cost) [0.1%]; Helper | 6h | 6h | 300 | 300 | 300 |
| 207 | 5.13.2 | SHELL EP CORRECTION | 1.94h | 2018-01-29 06:00 A | 2018-01-29 07:56 A | 206 | 100% | 2018-01-29 06:00 | 2018-01-29 07:56 | 1.94h | TEAM_2Shift_Calendar-1 | Helper; Grinder [200%] | 8h | 8h | 424.02 | 424.02 | 424.02 |
| 208 | 5.13.3 | CS1-FITUP | 3.33h | 2018-01-30 06:00 A | 2018-01-30 09:20 A | 207 | 100% | 2018-01-30 06:00 | 2018-01-30 09:20 | 3.33h | TEAM_2Shift_Calendar-1 | Helper; Fitter [200%] | 10h | 10h | 625 | 625 | 625 |
| 209 | 5.13.4 | CS1-FITUP INSPECTION | 0.78d | 2018-01-30 13:00 A | 2018-01-31 08:21 A | 208 | 100% | 2018-01-30 13:00 | 2018-01-31 08:21 | 0.78d | TEAM_2Shift_Calendar-1 | Helper; Fitter | 29.5h | 29.5h | 1,687.64 | 1,687.64 | 1,687.64 |
| 210 | 5.13.5 | CS1-WELDING | 6.67h | 2018-02-01 06:00 A | 2018-02-01 12:40 A | 209 | 100% | 2018-02-01 06:00 | 2018-02-01 12:40 | 6.67h | TEAM_2Shift_Calendar-1 | Helper; SAW Welder [200%] | 20h | 20h | 1,250 | 1,250 | 1,250 |
| 211 | 5.13.6 | CS1-FLUSHGRIND | 10h | 2018-02-01 21:01 A | 2018-02-02 15:01 A | 210 | 100% | 2018-02-01 21:01 | 2018-02-02 15:01 | 10h | TEAM_2Shift_Calendar-1 | Grinder | 10h | 10h | 562.5 | 562.5 | 562.5 |
| 212 | 5.13.7 | CS1-DPCHECK | 4h | 2018-02-02 10:00 A | 2018-02-02 14:00 A | 211 | 100% | 2018-02-02 10:00 | 2018-02-02 14:00 | 4h | TEAM_2Shift_Calendar-1 | Fitter | 4h | 4h |  |  |  |
| 213 | 5.13.8 | CS1-INSIDE WELDING | 3.01h | 2018-02-02 14:00 A | 2018-02-02 17:00 A | 212 | 100% | 2018-02-02 14:00 | 2018-02-02 17:00 | 3.01h | TEAM_2Shift_Calendar-1 | Helper; SAW Welder [200%] | 14.99h | 14.99h | 862.57 | 862.57 | 862.57 |
| 214 | 5.13.9 | CS1-DRESSUP | 4.5h | 2018-02-03 13:00 A | 2018-02-03 17:30 A | 213 | 100% | 2018-02-03 13:00 | 2018-02-03 17:30 | 4.5h | TEAM_2Shift_Calendar-1 | Helper; Grinder [200%] | 22.99h | 22.99h | 1,205.82 | 1,205.82 | 1,205.82 |
| 215 | 5.13.10 | CS1-DPCHECK | 4h | 2018-02-03 06:00 A | 2018-02-03 10:00 A | 214 | 100% | 2018-02-03 06:00 | 2018-02-03 10:00 | 4h | TEAM_2Shift_Calendar-1 | Fitter | 4h | 4h | 275 | 275 | 275 |
| 216 | 5.14 | **CS2-FITUP & WELDING** | 7.38d | 2018-02-05 06:00 A | 2018-02-13 17:01 A |  | 100% | 2018-02-05 06:00 | 2018-02-13 17:01 | 7.38d | TEAM_2Shift_Calendar-1 |  | 201.48h | 201.48h | 9,671.81 | 9,671.81 | 9,671.81 |
| 217 | 5.14.1 | SHELL CS1+LS3 | 6h | 2018-02-05 08:00 A | 2018-02-05 14:00 A | 116, 205 | 100% | 2018-02-05 08:00 | 2018-02-05 14:00 | 6h | TEAM_2Shift_Calendar-1 | Plate (Cost) [0.1%]; Helper | 6h | 6h |  |  |  |
| 218 | 5.14.2 | SHELL EP CORRECTION | 3h | 2018-02-05 14:01 A | 2018-02-05 17:01 A | 217 | 100% | 2018-02-05 14:01 | 2018-02-05 17:01 | 3h | TEAM_2Shift_Calendar-1 | Helper; Grinder [200%] | 9h | 9h |  |  |  |
| 219 | 5.14.3 | CS2-FITUP | 3.61h | 2018-02-05 17:01 A | 2018-02-05 20:37 A | 218 | 100% | 2018-02-05 17:01 | 2018-02-05 20:37 | 3.61h | TEAM_2Shift_Calendar-1 | Helper; Fitter [200%] | 19.49h | 19.49h | 1,109.9 | 1,109.9 | 1,109.9 |
| 220 | 5.14.4 | CS2-FITUP INSPECTION | 0.83d | 2018-02-05 06:00 A | 2018-02-05 20:37 A | 219 | 100% | 2018-02-05 06:00 | 2018-02-05 20:37 | 0.83d | TEAM_2Shift_Calendar-1 | Helper; Fitter | 29h | 29h | 1,675.09 | 1,675.09 | 1,675.09 |
| 221 | 5.14.5 | CS2-WELDING | 10.13h | 2018-02-07 09:00 A | 2018-02-07 19:08 A | 220 | 100% | 2018-02-07 09:00 | 2018-02-07 19:08 | 10.13h | TEAM_2Shift_Calendar-1 | Helper; SAW Welder [200%] | 44.99h | 44.99h | 2,629.56 | 2,629.56 | 2,629.56 |
| 222 | 5.14.6 | CS2-FLUSHGRIND | 10h | 2018-02-09 11:00 A | 2018-02-09 21:01 A | 221 | 100% | 2018-02-09 11:00 | 2018-02-09 21:01 | 10h | TEAM_2Shift_Calendar-1 | Grinder | 10h | 10h |  |  |  |
| 223 | 5.14.7 | CS2-DPCHECK | 4h | 2018-02-09 21:01 A | 2018-02-12 09:01 A | 222 | 100% | 2018-02-09 21:01 | 2018-02-12 09:01 | 4h | TEAM_2Shift_Calendar-1 | Fitter | 4h | 4h | 275 | 275 | 275 |
| 224 | 5.14.8 | CS2-INSIDE WELDING | 13.34h | 2018-02-10 08:00 A | 2018-02-12 11:20 A | 223 | 100% | 2018-02-10 08:00 | 2018-02-12 11:20 | 13.34h | TEAM_2Shift_Calendar-1 | Helper; SAW Welder [200%] | 45h | 45h | 2,449.82 | 2,449.82 | 2,449.82 |
| 225 | 5.14.9 | CS2-DRESSUP | 10.6h | 2018-02-10 08:00 A | 2018-02-12 11:20 A | 224 | 100% | 2018-02-10 08:00 | 2018-02-12 11:20 | 10.6h | TEAM_2Shift_Calendar-1 | Helper; Grinder [200%] | 30h | 30h | 1,532.44 | 1,532.44 | 1,532.44 |
| 226 | 5.14.10 | CS2-DPCHECK | 4h | 2018-02-13 13:00 A | 2018-02-13 17:01 A | 225 | 100% | 2018-02-13 13:00 | 2018-02-13 17:01 | 4h | TEAM_2Shift_Calendar-1 | Fitter | 4h | 4h |  |  |  |
| 227 | 5.15 | **CS3-FITUP & WELDING** | 5.45d | 2018-02-14 06:00 A | 2018-02-19 21:01 A |  | 100% | 2018-02-14 06:00 | 2018-02-19 21:01 | 5.45d | TEAM_2Shift_Calendar-1 |  | 189.24h | 189.24h | 11,279.27 | 11,279.27 | 11,279.27 |
| 228 | 5.15.1 | CH(RHS)+CH DISH(RHS) READY | 6h | 2018-02-14 06:00 A | 2018-02-14 22:00 A | 59, 135 | 100% | 2018-02-14 06:00 | 2018-02-14 22:00 | 6h | TEAM_2Shift_Calendar-1 | Plate (Cost) [0.1%]; Helper | 6h | 6h | 300 | 300 | 300 |
| 229 | 5.15.2 | SHELL EP CORRECTION | 2.15h | 2018-02-14 06:00 A | 2018-02-14 08:08 A | 228 | 100% | 2018-02-14 06:00 | 2018-02-14 08:08 | 2.15h | TEAM_2Shift_Calendar-1 | Helper; Grinder [200%] | 9h | 9h | 476.68 | 476.68 | 476.68 |
| 230 | 5.15.3 | CS3-FITUP | 5h | 2018-02-14 06:00 A | 2018-02-14 11:00 A | 229 | 100% | 2018-02-14 06:00 | 2018-02-14 11:00 | 5h | TEAM_2Shift_Calendar-1 | Helper; Fitter [200%] | 21h | 21h | 1,237.44 | 1,237.44 | 1,237.44 |
| 231 | 5.15.4 | CS3-FITUP INSPECTION | 0.52d | 2018-02-16 09:30 A | 2018-02-16 16:59 A | 230 | 100% | 2018-02-16 09:30 | 2018-02-16 16:59 | 0.52d | TEAM_2Shift_Calendar-1 | Helper; Fitter | 15.25h | 15.25h | 902.65 | 902.65 | 902.65 |
| 232 | 5.15.5 | CS3-WELDING | 15h | 2018-02-17 13:00 A | 2018-02-19 12:01 A | 231 | 100% | 2018-02-17 13:00 | 2018-02-19 12:01 | 15h | TEAM_2Shift_Calendar-1 | Helper; SAW Welder [200%] | 45h | 45h | 2,812.5 | 2,812.5 | 2,812.5 |
| 233 | 5.15.6 | CS3-FLUSHGRIND | 10h | 2018-02-17 06:00 A | 2018-02-17 16:01 A | 232 | 100% | 2018-02-17 06:00 | 2018-02-17 16:01 | 10h | TEAM_2Shift_Calendar-1 | Grinder | 10h | 10h | 562.5 | 562.5 | 562.5 |
| 234 | 5.15.7 | CS3-DPCHECK | 4h | 2018-02-17 06:00 A | 2018-02-17 10:00 A | 233 | 100% | 2018-02-17 06:00 | 2018-02-17 10:00 | 4h | TEAM_2Shift_Calendar-1 | Fitter | 4h | 4h | 275 | 275 | 275 |
| 235 | 5.15.8 | CS3-INSIDE WELDING | 15h | 2018-02-19 06:00 A | 2018-02-19 21:01 A | 234 | 100% | 2018-02-19 06:00 | 2018-02-19 21:01 | 15h | TEAM_2Shift_Calendar-1 | Helper; SAW Welder [200%] | 45h | 45h | 2,812.5 | 2,812.5 | 2,812.5 |
| 236 | 5.15.9 | CS3-DRESSUP | 10h | 2018-02-19 06:00 A | 2018-02-19 16:01 A | 235 | 100% | 2018-02-19 06:00 | 2018-02-19 16:01 | 10h | TEAM_2Shift_Calendar-1 | Helper; Grinder [200%] | 30h | 30h | 1,625 | 1,625 | 1,625 |
| 237 | 5.15.10 | CS3-DPCHECK | 4h | 2018-02-19 06:00 A | 2018-02-19 10:00 A | 236 | 100% | 2018-02-19 06:00 | 2018-02-19 10:00 | 4h | TEAM_2Shift_Calendar-1 | Fitter | 4h | 4h | 275 | 275 | 275 |

Notes:
- 205: 2NOS
- 210: 2.04Kg/m
- 216: 2NOS
- 221: 4.43Kg/m
- 227: 2NOS
- 232: 4.43Kg/m

| ID | WBS | Task | Type | Duration | Start | Finish | Predecessors | Complete | Baseline start | Baseline finish | Baseline duration | Constraint | Calendar | Resources | Work | Actual work | Cost | Baseline cost | Actual cost |
| --- | --- | --- | --- | --- | --- | --- | --- | --- | --- | --- | --- | --- | --- | --- | --- | --- | --- | --- | --- |
| 238 | 5.16 | **CS4-FITUP & WELDING** |  | 7.11d | 2018-02-15 06:00 A | 2018-02-22 13:03 A |  | 100% | 2018-02-15 06:00 | 2018-02-22 13:03 | 7.11d |  | TEAM_2Shift_Calendar-1 |  | 189.25h | 189.25h | 905.47 | 905.47 | 905.47 |
| 239 | 5.16.1 | CH(LHS)+CH DISH(LHS) READY |  | 6h | 2018-02-15 06:00 A | 2018-02-15 12:00 A | 228 | 100% | 2018-02-15 06:00 | 2018-02-15 12:00 | 6h |  | TEAM_2Shift_Calendar-1 | Helper | 6h | 6h |  |  |  |
| 240 | 5.16.2 | SHELL EP CORRECTION |  | 3h | 2018-02-15 12:00 A | 2018-02-15 15:01 A | 239 | 100% | 2018-02-15 12:00 | 2018-02-15 15:01 | 3h |  | TEAM_2Shift_Calendar-1 | Helper; Grinder [200%] | 9h | 9h |  |  |  |
| 241 | 5.16.3 | CS4-FITUP |  | 7h | 2018-02-15 15:01 A | 2018-02-16 06:01 A | 240 | 100% | 2018-02-15 15:01 | 2018-02-16 06:01 | 7h |  | TEAM_2Shift_Calendar-1 | Helper; Fitter [200%] | 21h | 21h |  |  |  |
| 242 | 5.16.4 | CS4-FITUP INSPECTION |  | 0.53d | 2018-02-16 06:01 A | 2018-02-16 13:38 A | 241 | 100% | 2018-02-16 06:01 | 2018-02-16 13:38 | 0.53d |  | TEAM_2Shift_Calendar-1 | Helper; Fitter | 15.25h | 15.25h | 905.47 | 905.47 | 905.47 |
| 243 | 5.16.5 | CS4-WELDING |  | 15h | 2018-02-16 20:32 A | 2018-02-17 19:33 A | 242 | 100% | 2018-02-16 20:32 | 2018-02-17 19:33 | 15h |  | TEAM_2Shift_Calendar-1 | Helper; SAW Welder [200%] | 45h | 45h |  |  |  |
| 244 | 5.16.6 | CS4-FLUSHGRIND |  | 10h | 2018-02-17 19:33 A | 2018-02-19 13:33 A | 243 | 100% | 2018-02-17 19:33 | 2018-02-19 13:33 | 10h |  | TEAM_2Shift_Calendar-1 | Grinder | 10h | 10h |  |  |  |
| 245 | 5.16.7 | CS4-DPCHECK |  | 4h | 2018-02-19 13:33 A | 2018-02-19 17:33 A | 244 | 100% | 2018-02-19 13:33 | 2018-02-19 17:33 | 4h |  | TEAM_2Shift_Calendar-1 | Fitter | 4h | 4h |  |  |  |
| 246 | 5.16.8 | CS4-INSIDE WELDING |  | 15h | 2018-02-19 17:33 A | 2018-02-20 16:33 A | 245 | 100% | 2018-02-19 17:33 | 2018-02-20 16:33 | 15h |  | TEAM_2Shift_Calendar-1 | Helper; SAW Welder [200%] | 45h | 45h |  |  |  |
| 247 | 5.16.9 | CS4-DRESSUP |  | 10h | 2018-02-20 16:33 A | 2018-02-21 10:33 A | 246 | 100% | 2018-02-20 16:33 | 2018-02-21 10:33 | 10h |  | TEAM_2Shift_Calendar-1 | Helper; Grinder [200%] | 30h | 30h |  |  |  |
| 248 | 5.16.10 | CS4-DPCHECK |  | 4h | 2018-02-21 10:33 A | 2018-02-21 14:33 A | 247 | 100% | 2018-02-21 10:33 | 2018-02-21 14:33 | 4h |  | TEAM_2Shift_Calendar-1 | Fitter | 4h | 4h |  |  |  |
| 249 | 5.16.11 | CS4-RT |  | 1d | 2018-02-21 14:33 A | 2018-02-22 13:03 A | 248 | 100% | 2018-02-21 14:33 | 2018-02-22 13:03 | 1d |  | TEAM_2Shift_Calendar-1 |  |  |  |  |  |  |
| 250 | 5.17 | **CHANNEL FLG WELDING** |  | 4.83d | 2018-02-21 16:01 A | 2018-02-28 06:01 A |  | 100% | 2018-02-21 16:01 | 2018-02-28 06:01 | 4.83d |  | TEAM_2Shift_Calendar-1 |  | 165h | 165h |  |  |  |
| 251 | 5.17.1 | CH FLG AND CH FIT UP-RHS |  | 8h | 2018-02-21 16:01 A | 2018-02-22 08:01 A | 44, 227 | 100% | 2018-02-21 16:01 | 2018-02-22 08:01 | 8h |  | TEAM_2Shift_Calendar-1 | Helper; Forging Non-Std (Cost) [0.1%]; Fitter [200%] | 24h | 24h |  |  |  |
| 252 | 5.17.2 | WELDING |  | 17h | 2018-02-22 08:01 A | 2018-02-23 09:01 A | 251 | 100% | 2018-02-22 08:01 | 2018-02-23 09:01 | 17h |  | TEAM_2Shift_Calendar-1 | Helper; SAW Welder | 34h | 34h |  |  |  |
| 253 | 5.17.3 | FLUSH GRIND |  | 10h | 2018-02-23 09:01 A | 2018-02-23 19:01 A | 252 | 100% | 2018-02-23 09:01 | 2018-02-23 19:01 | 10h |  | TEAM_2Shift_Calendar-1 | Grinder | 10h | 10h |  |  |  |
| 254 | 5.17.4 | CH FLG AND CH FIT UP-LHS |  | 8h | 2018-02-23 19:01 A | 2018-02-26 11:01 A | 253 | 100% | 2018-02-23 19:01 | 2018-02-26 11:01 | 8h |  | TEAM_2Shift_Calendar-1 | Helper; Fitter [200%] | 24h | 24h |  |  |  |
| 255 | 5.17.5 | WELDING |  | 17h | 2018-02-26 11:01 A | 2018-02-27 12:01 A | 254 | 100% | 2018-02-26 11:01 | 2018-02-27 12:01 | 17h |  | TEAM_2Shift_Calendar-1 | Helper; SAW Welder | 34h | 34h |  |  |  |
| 256 | 5.17.6 | FLUSH GRIND |  | 10h | 2018-02-27 12:01 A | 2018-02-28 06:01 A | 255 | 100% | 2018-02-27 12:01 | 2018-02-28 06:01 | 10h |  | TEAM_2Shift_Calendar-1 | Grinder | 10h | 10h |  |  |  |
| 257 | 5.17.7 | INSPECTION |  | 2d | 2018-02-23 19:01 A | 2018-02-27 16:01 A | 253 | 100% | 2018-02-23 19:01 | 2018-02-27 16:01 | 2d |  | TEAM_2Shift_Calendar-1 | Fitter | 29h | 29h |  |  |  |
| 258 | 5.18 | **NOZZLE WITH RF PAD WELDING** |  | 11.66d | 2018-03-01 06:00 A | 2018-03-14 15:00 A |  | 100% | 2018-03-01 06:00 | 2018-03-14 15:00 | 11.66d |  | TEAM_2Shift_Calendar-1 |  | 325.75h | 325.75h | 13,761.92 | 13,761.92 | 13,761.92 |
| 259 | 5.18.1 | NOZZLE READY |  | 31.5h | 2018-03-01 06:00 A | 2018-03-02 21:30 A | 147, 156 | 100% | 2018-03-01 06:00 | 2018-03-02 21:30 | 31.5h | finish no earlier than 2018-03-03 21:30 | TEAM_2Shift_Calendar-1 | Helper | 31.5h | 31.5h |  |  |  |
| 260 | 5.18.2 | ORIENTATION MARKING | milestone | 0h | 2018-03-02 06:00 A | 2018-03-02 06:00 A | 259 | 100% | 2018-03-02 06:00 | 2018-03-02 06:00 | 0h |  | TEAM_2Shift_Calendar-1 | Helper; Fitter |  |  |  |  |  |
| 261 | 5.18.3 | POSITION MARKING | milestone | 0h | 2018-03-03 06:00 A | 2018-03-03 06:00 A | 260 | 100% | 2018-03-03 06:00 | 2018-03-03 06:00 | 0h | finish no earlier than 2018-03-07 21:30 | TEAM_2Shift_Calendar-1 | Helper; Fitter |  |  |  |  |  |
| 262 | 5.18.4 | NOZZLE OPENING | milestone | 0h | 2018-03-05 06:00 A | 2018-03-05 06:00 A | 261 | 100% | 2018-03-05 06:00 | 2018-03-05 06:00 | 0h |  | TEAM_2Shift_Calendar-1 | Helper; Gas Cutter |  |  |  |  |  |
| 263 | 5.18.5 | NOZZLE EP | milestone | 0h | 2018-03-06 06:00 A | 2018-03-06 06:00 A | 262 | 100% | 2018-03-06 06:00 | 2018-03-06 06:00 | 0h |  | TEAM_2Shift_Calendar-1 | Grinder |  |  |  |  |  |
| 264 | 5.18.6 | NOZZLE FIT UP |  | 8h | 2018-03-06 06:00 A | 2018-03-06 18:00 A | 263 | 100% | 2018-03-06 06:00 | 2018-03-06 18:00 | 8h |  | TEAM_2Shift_Calendar-1 | SAW Welder; Helper [200%]; Pipe (Cost) [0.1%]; Fitter | 48h | 48h | 2,700 | 2,700 | 2,700 |
| 265 | 5.18.7 | NOZZLE WELDING |  | 5.31h | 2018-03-06 18:00 A | 2018-03-07 07:18 A | 264 | 100% | 2018-03-06 18:00 | 2018-03-07 07:18 | 5.31h |  | TEAM_2Shift_Calendar-1 | Helper [200%]; SAW Welder | 21.25h | 21.25h | 1,161.93 | 1,161.93 | 1,161.93 |
| 266 | 5.18.8 | NOZ FLG FITUP |  | 8h | 2018-03-07 12:00 A | 2018-03-07 20:00 A | 265 | 100% | 2018-03-07 12:00 | 2018-03-07 20:00 | 8h |  | TEAM_2Shift_Calendar-1 | SAW Welder; Helper [200%]; Fitter | 48h | 48h | 2,700 | 2,700 | 2,700 |
| 267 | 5.18.9 | WELDING |  | 9h | 2018-03-08 08:00 A | 2018-03-08 17:00 A | 266 | 100% | 2018-03-08 08:00 | 2018-03-08 17:00 | 9h |  | TEAM_2Shift_Calendar-1 | Helper [200%]; SAW Welder | 36h | 36h | 1,968.75 | 1,968.75 | 1,968.75 |
| 268 | 5.18.10 | RF PAD FITUP |  | 0.67d | 2018-03-08 20:00 A | 2018-03-09 18:30 A | 267 | 100% | 2018-03-08 20:00 | 2018-03-09 18:30 | 0.67d | finish no earlier than 2018-03-08 21:30 | TEAM_2Shift_Calendar-1 | SAW Welder; Helper [200%]; Plate (Cost) [0.1%]; Fitter | 58h | 58h | 3,262.49 | 3,262.49 | 3,262.49 |
| 269 | 5.18.11 | RF PAD WELDING |  | 9h | 2018-03-09 18:30 A | 2018-03-12 11:30 A | 268 | 100% | 2018-03-09 18:30 | 2018-03-12 11:30 | 9h |  | TEAM_2Shift_Calendar-1 | Helper [200%]; SAW Welder | 36h | 36h | 1,968.75 | 1,968.75 | 1,968.75 |
| 270 | 5.18.12 | FLUSH GRIND |  | 10h | 2018-03-12 14:30 A | 2018-03-13 08:30 A | 269 | 100% | 2018-03-12 14:30 | 2018-03-13 08:30 | 10h |  | TEAM_2Shift_Calendar-1 | Grinder | 10h | 10h |  |  |  |
| 271 | 5.18.13 | DP/AIR TEST |  | 8h | 2018-03-13 08:30 A | 2018-03-13 16:30 A | 270 | 100% | 2018-03-13 08:30 | 2018-03-13 16:30 | 8h |  | TEAM_2Shift_Calendar-1 | Fitter | 8h | 8h |  |  |  |
| 272 | 5.18.14 | INSPECTION |  | 1d | 2018-03-13 16:30 A | 2018-03-14 15:00 A | 271 | 100% | 2018-03-13 16:30 | 2018-03-14 15:00 | 1d | finish no earlier than 2018-03-09 21:30 | TEAM_2Shift_Calendar-1 | Fitter [200%] | 29h | 29h |  |  |  |

Notes:
- 238: 2NOS
- 243: 4.43Kg/m
- 249: SC
- 251: 2NOS
- 254: 2NOS
- 258: 8NOS

| ID | WBS | Task | Duration | Start | Finish | Predecessors | Complete | Baseline start | Baseline finish | Baseline duration | Constraint | Calendar | Resources | Work | Actual work | Cost | Baseline cost | Actual cost |
| --- | --- | --- | --- | --- | --- | --- | --- | --- | --- | --- | --- | --- | --- | --- | --- | --- | --- | --- |
| 273 | 5.19 | **NOZZLE WITH STIFFENER WELDING** | 11.24d | 2018-03-03 21:30 A | 2018-03-17 08:30 A |  | 100% | 2018-03-03 21:30 | 2018-03-17 08:30 | 11.24d |  | TEAM_2Shift_Calendar-1 |  | 442.25h | 442.25h | 22,059.55 | 22,059.55 | 22,059.55 |
| 274 | 5.19.1 | NOZZLE READY | 5h | 2018-03-03 21:30 A | 2018-03-05 10:30 A | 259 | 100% | 2018-03-03 21:30 | 2018-03-05 10:30 | 5h |  | TEAM_2Shift_Calendar-1 | Helper | 5h | 5h |  |  |  |
| 275 | 5.19.2 | POSITION MARKING | 5h | 2018-03-05 10:30 A | 2018-03-05 15:30 A | 274 | 100% | 2018-03-05 10:30 | 2018-03-05 15:30 | 5h |  | TEAM_2Shift_Calendar-1 | Helper; Fitter | 10h | 10h |  |  |  |
| 276 | 5.19.3 | NOZZLE OPENING | 8h | 2018-03-05 15:30 A | 2018-03-06 07:30 A | 275 | 100% | 2018-03-05 15:30 | 2018-03-06 07:30 | 8h |  | TEAM_2Shift_Calendar-1 | Helper; Gas Cutter | 16h | 16h |  |  |  |
| 277 | 5.19.4 | NOZZLE EP | 7h | 2018-03-06 07:30 A | 2018-03-06 14:30 A | 276 | 100% | 2018-03-06 07:30 | 2018-03-06 14:30 | 7h |  | TEAM_2Shift_Calendar-1 | Grinder | 7h | 7h |  |  |  |
| 278 | 5.19.5 | ELBOW FITUP | 2.67h | 2018-03-06 14:30 A | 2018-03-06 17:10 A | 277 | 100% | 2018-03-06 14:30 | 2018-03-06 17:10 | 2.67h |  | TEAM_2Shift_Calendar-1 | SAW Welder; Helper [200%]; Fitter | 16h | 16h | 899.99 | 899.99 | 899.99 |
| 279 | 5.19.6 | ELBOW WELDING | 3h | 2018-03-06 18:30 A | 2018-03-06 21:30 A | 278 | 100% | 2018-03-06 18:30 | 2018-03-06 21:30 | 3h |  | TEAM_2Shift_Calendar-1 | Helper [200%]; SAW Welder | 12h | 12h | 656.25 | 656.25 | 656.25 |
| 280 | 5.19.7 | NOZ FLG FITUP | 14.67h | 2018-03-07 06:30 A | 2018-03-08 12:30 A | 279 | 100% | 2018-03-07 06:30 | 2018-03-08 12:30 | 14.67h |  | TEAM_2Shift_Calendar-1 | SAW Welder; Helper [200%]; Forging Std (Cost) [0.1%]; Fitter | 88h | 88h | 4,949.99 | 4,949.99 | 4,949.99 |
| 281 | 5.19.8 | NOZ FLG WELDING | 19.12h | 2018-03-08 12:30 A | 2018-03-09 15:37 A | 280 | 100% | 2018-03-08 12:30 | 2018-03-09 15:37 | 19.12h |  | TEAM_2Shift_Calendar-1 | Helper [200%]; SAW Welder | 76.5h | 76.5h | 4,183.59 | 4,183.59 | 4,183.59 |
| 282 | 5.19.9 | NOZZLE FIT UP | 7.75h | 2018-03-12 07:30 A | 2018-03-12 15:15 A | 281 | 100% | 2018-03-12 07:30 | 2018-03-12 15:15 | 7.75h |  | TEAM_2Shift_Calendar-1 | SAW Welder; Helper [200%]; Fitter | 46.5h | 46.5h | 2,615.62 | 2,615.62 | 2,615.62 |
| 283 | 5.19.10 | NOZZLE WELDING | 12.31h | 2018-03-13 13:30 A | 2018-03-14 09:48 A | 282 | 100% | 2018-03-13 13:30 | 2018-03-14 09:48 | 12.31h |  | TEAM_2Shift_Calendar-1 | Helper [200%]; SAW Welder | 49.25h | 49.25h | 2,693.18 | 2,693.18 | 2,693.18 |
| 284 | 5.19.11 | STIFFENER FITUP | 10.67h | 2018-03-14 21:30 A | 2018-03-15 16:10 A | 283 | 100% | 2018-03-14 21:30 | 2018-03-15 16:10 | 10.67h | finish no earlier than 2018-03-14 21:30 | TEAM_2Shift_Calendar-1 | SAW Welder; Helper [200%]; Fitter | 64h | 64h | 3,599.99 | 3,599.99 | 3,599.99 |
| 285 | 5.19.12 | STIFFENER WELDING | 11.25h | 2018-03-15 21:30 A | 2018-03-16 16:45 A | 284 | 100% | 2018-03-15 21:30 | 2018-03-16 16:45 | 11.25h |  | TEAM_2Shift_Calendar-1 | Helper [200%]; SAW Welder | 45h | 45h | 2,460.94 | 2,460.94 | 2,460.94 |
| 286 | 5.19.13 | DP/AIR TEST | 1h | 2018-03-16 20:30 A | 2018-03-16 21:30 A | 285 | 100% | 2018-03-16 20:30 | 2018-03-16 21:30 | 1h | finish no earlier than 2018-03-16 21:30 | TEAM_2Shift_Calendar-1 | Fitter | 1h | 1h |  |  |  |
| 287 | 5.19.14 | INSPECTION | 0.21d | 2018-03-16 21:30 A | 2018-03-17 08:30 A | 286 | 100% | 2018-03-16 21:30 | 2018-03-17 08:30 | 0.21d | finish no earlier than 2018-03-16 21:30 | TEAM_2Shift_Calendar-1 | Fitter [200%] | 6h | 6h |  |  |  |
| 288 | 5.20 | **SADDLE SUPPORT WELDING** | 41.86d | 2018-01-22 06:00 A | 2018-03-12 21:00 A |  | 100% | 2018-01-22 06:00 | 2018-03-12 21:00 | 41.86d |  | TEAM_2Shift_Calendar-1 |  | 481.25h | 481.25h | 20,597.71 | 20,597.71 | 20,597.71 |
| 289 | 5.20.1 | SADDLE SUPPORT PLATE MARKING | 10.25h | 2018-01-22 06:00 A | 2018-01-23 10:00 A |  | 100% | 2018-01-22 06:00 | 2018-01-23 10:00 | 10.25h | start no earlier than 2018-01-22 06:00 | TEAM_2Shift_Calendar-1 | Helper; Plate (Cost) [0.1%]; Fitter | 20.5h | 20.5h | 1,217.19 | 1,217.19 | 1,217.19 |
| 290 | 5.20.2 | SADDLE SUPPORT PLATE CUTTING | 25h | 2018-01-23 10:00 A | 2018-01-24 19:00 A | 289 | 100% | 2018-01-23 10:00 | 2018-01-24 19:00 | 25h |  | TEAM_2Shift_Calendar-1 | Helper; Gas Cutter | 50h | 50h |  |  |  |
| 291 | 5.20.3 | SADDLE SUPPORT PLATE GRINDING | 40h | 2018-01-24 19:00 A | 2018-01-30 11:00 A | 290 | 100% | 2018-01-24 19:00 | 2018-01-30 11:00 | 40h |  | TEAM_2Shift_Calendar-1 | Grinder | 40h | 40h |  |  |  |
| 292 | 5.20.4 | DRILLING | 10h | 2018-01-30 11:00 A | 2018-01-30 21:00 A | 291 | 100% | 2018-01-30 11:00 | 2018-01-30 21:00 | 10h |  | TEAM_2Shift_Calendar-1 | Driller | 10h | 10h |  |  |  |
| 293 | 5.20.5 | COMPONENTS WELDING | 60h | 2018-01-30 21:00 A | 2018-02-03 17:00 A | 292 | 100% | 2018-01-30 21:00 | 2018-02-03 17:00 | 60h |  | TEAM_2Shift_Calendar-1 | Helper [200%]; SAW Welder | 240h | 240h | 13,125 | 13,125 | 13,125 |
| 294 | 5.20.6 | SADDLE SUPPORT PLATE FIT UP | 30h | 2018-02-05 21:00 A | 2018-02-07 19:00 A | 293 | 100% | 2018-02-05 21:00 | 2018-02-07 19:00 | 30h |  | TEAM_2Shift_Calendar-1 | Helper; Fitter | 60h | 60h | 3,562.5 | 3,562.5 | 3,562.5 |
| 295 | 5.20.7 | SADDLE SUPPORT WELDING | 11.01h | 2018-03-06 06:00 A | 2018-03-06 17:00 A |  | 100% | 2018-03-06 06:00 | 2018-03-06 17:00 | 11.01h | start no earlier than 2018-03-06 06:00 | TEAM_2Shift_Calendar-1 | Helper [200%]; SAW Welder | 24.5h | 24.5h | 1,431.3 | 1,431.3 | 1,431.3 |
| 296 | 5.20.8 | BEND REMOVAL | 10.62h | 2018-03-07 10:00 A | 2018-03-07 20:37 A | 295 | 100% | 2018-03-07 10:00 | 2018-03-07 20:37 | 10.62h |  | TEAM_2Shift_Calendar-1 | Helper; Fitter | 21.25h | 21.25h | 1,261.72 | 1,261.72 | 1,261.72 |
| 297 | 5.20.9 | GRINDING | 15h | 2018-03-12 06:00 A | 2018-03-12 21:00 A |  | 100% | 2018-03-12 06:00 | 2018-03-12 21:00 | 15h | start no earlier than 2018-03-12 06:00 | TEAM_2Shift_Calendar-1 | Grinder | 15h | 15h |  |  |  |

Notes:
- 278: 4NOS
- 279: 4NOS
- 280: 18NOS
- 281: 18NOS
- 282: 18NOS
- 283: 18NOS
- 284: 16NOS
- 285: 16NOS
- 288: 2NOS
- 289: PAD+BASE+GUSSET+TOP+EC
- 292: EARTHING CLEAT

| ID | WBS | Task | Type | Duration | Start | Finish | Predecessors | Complete | Baseline start | Baseline finish | Baseline duration | Constraint | Calendar | Resources | Work | Actual work | Cost | Baseline cost | Actual cost |
| --- | --- | --- | --- | --- | --- | --- | --- | --- | --- | --- | --- | --- | --- | --- | --- | --- | --- | --- | --- |
| 298 | 5.21 | **NAME PLATE WELDING** |  | 0.86d | 2018-03-30 09:15 A | 2018-03-30 21:45 A |  | 100% | 2018-03-30 09:15 | 2018-03-30 21:45 | 0.86d |  | TEAM_2Shift_Calendar-1 |  | 17h | 17h | 978.12 | 978.12 | 978.12 |
| 299 | 5.21.1 | NAME PLATE MARKING |  | 2h | 2018-03-30 09:15 A | 2018-03-30 12:15 A | 333 | 100% | 2018-03-30 09:15 | 2018-03-30 12:15 | 2h |  | TEAM_2Shift_Calendar-1 | Helper; Plate (Cost) [0.1%]; Fitter | 4h | 4h | 237.5 | 237.5 | 237.5 |
| 300 | 5.21.2 | CUTTING |  | 1.5h | 2018-03-30 12:15 A | 2018-03-30 13:45 A | 299 | 100% | 2018-03-30 12:15 | 2018-03-30 13:45 | 1.5h |  | TEAM_2Shift_Calendar-1 | Helper; Gas Cutter | 3h | 3h | 178.12 | 178.12 | 178.12 |
| 301 | 5.21.3 | GRINDING |  | 4h | 2018-03-30 13:45 A | 2018-03-30 17:45 A | 300 | 100% | 2018-03-30 13:45 | 2018-03-30 17:45 | 4h |  | TEAM_2Shift_Calendar-1 | Grinder | 4h | 4h | 225 | 225 | 225 |
| 302 | 5.21.4 | WELDING |  | 2h | 2018-03-30 17:45 A | 2018-03-30 19:45 A | 301 | 100% | 2018-03-30 17:45 | 2018-03-30 19:45 | 2h |  | TEAM_2Shift_Calendar-1 | Helper [200%]; SAW Welder | 4h | 4h | 237.5 | 237.5 | 237.5 |
| 303 | 5.21.5 | CLEANING |  | 2h | 2018-03-30 19:45 A | 2018-03-30 21:45 A | 302 | 100% | 2018-03-30 19:45 | 2018-03-30 21:45 | 2h |  | TEAM_2Shift_Calendar-1 | Helper | 2h | 2h | 100 | 100 | 100 |
| 304 | 5.22 | **LIFTING LUG WELDING** |  | 3.72d | 2018-01-23 13:00 A | 2018-01-29 19:00 A |  | 100% | 2018-01-23 13:00 | 2018-01-29 19:00 | 3.72d |  | TEAM_2Shift_Calendar-1 |  | 98.75h | 98.75h | 2,543.96 | 2,543.96 | 2,543.96 |
| 305 | 5.22.1 | PLATE MARKING |  | 2.5h | 2018-01-23 13:00 A | 2018-01-23 16:00 A | 52, 299 | 100% | 2018-01-23 13:00 | 2018-01-23 16:00 | 2.5h |  | TEAM_2Shift_Calendar-1 | Helper; Plate (Cost) [0.1%]; Fitter | 5h | 5h | 296.88 | 296.88 | 296.88 |
| 306 | 5.22.2 | CUTTING |  | 2h | 2018-01-23 16:00 A | 2018-01-23 18:00 A | 305 | 100% | 2018-01-23 16:00 | 2018-01-23 18:00 | 2h |  | TEAM_2Shift_Calendar-1 | Helper; Gas Cutter | 4h | 4h | 237.5 | 237.5 | 237.5 |
| 307 | 5.22.3 | GRINDING |  | 8h | 2018-01-23 20:00 A | 2018-01-24 12:00 A | 306 | 100% | 2018-01-23 20:00 | 2018-01-24 12:00 | 8h |  | TEAM_2Shift_Calendar-1 | Grinder | 8h | 8h |  |  |  |
| 308 | 5.22.4 | DRILLING |  | 5h | 2018-01-24 12:00 A | 2018-01-24 17:00 A | 307 | 100% | 2018-01-24 12:00 | 2018-01-24 17:00 | 5h |  | TEAM_2Shift_Calendar-1 | Driller | 5h | 5h |  |  |  |
| 309 | 5.22.5 | PAD FORMING |  | 12h | 2018-01-24 17:00 A | 2018-01-25 13:00 A | 308 | 100% | 2018-01-24 17:00 | 2018-01-25 13:00 | 12h |  | TEAM_2Shift_Calendar-1 | Helper; Fitter [200%] | 36h | 36h |  |  |  |
| 310 | 5.22.6 | WELDING |  | 9.19h | 2018-01-25 13:00 A | 2018-01-29 06:11 A | 309 | 100% | 2018-01-25 13:00 | 2018-01-29 06:11 | 9.19h |  | TEAM_2Shift_Calendar-1 | Helper [200%]; SAW Welder | 36.75h | 36.75h | 2,009.58 | 2,009.58 | 2,009.58 |
| 311 | 5.22.7 | CLEANING |  | 4h | 2018-01-29 15:00 A | 2018-01-29 19:00 A | 310 | 100% | 2018-01-29 15:00 | 2018-01-29 19:00 | 4h |  | TEAM_2Shift_Calendar-1 | Helper | 4h | 4h |  |  |  |
| 312 | 5.23 | **INSULATION CLEAT WELDING** |  | 3.17d | 2018-01-23 16:00 A | 2018-01-29 14:00 A |  | 100% | 2018-01-23 16:00 | 2018-01-29 14:00 | 3.17d |  | TEAM_2Shift_Calendar-1 |  | 58.25h | 58.25h | 2,199.42 | 2,199.42 | 2,199.42 |
| 313 | 5.23.1 | PLATE MARKING |  | 6h | 2018-01-23 16:00 A | 2018-01-24 10:00 A | 55, 305 | 100% | 2018-01-23 16:00 | 2018-01-24 10:00 | 6h |  | TEAM_2Shift_Calendar-1 | Helper; Plate (Cost) [0.1%]; Fitter | 12h | 12h | 712.5 | 712.5 | 712.5 |
| 314 | 5.23.2 | CUTTING |  | 5.5h | 2018-01-24 10:00 A | 2018-01-24 15:30 A | 313 | 100% | 2018-01-24 10:00 | 2018-01-24 15:30 | 5.5h |  | TEAM_2Shift_Calendar-1 | Helper; Gas Cutter | 11h | 11h | 653.12 | 653.12 | 653.12 |
| 315 | 5.23.3 | GRINDING |  | 15h | 2018-01-24 20:00 A | 2018-01-25 19:00 A | 314 | 100% | 2018-01-24 20:00 | 2018-01-25 19:00 | 15h |  | TEAM_2Shift_Calendar-1 | Grinder | 15h | 15h |  |  |  |
| 316 | 5.23.4 | WELDING |  | 3.81h | 2018-01-25 19:00 A | 2018-01-29 06:48 A | 315 | 100% | 2018-01-25 19:00 | 2018-01-29 06:48 | 3.81h |  | TEAM_2Shift_Calendar-1 | Helper [200%]; SAW Welder | 15.25h | 15.25h | 833.8 | 833.8 | 833.8 |
| 317 | 5.23.5 | CLEANING |  | 5h | 2018-01-29 09:00 A | 2018-01-29 14:00 A | 316 | 100% | 2018-01-29 09:00 | 2018-01-29 14:00 | 5h |  | TEAM_2Shift_Calendar-1 | Helper | 5h | 5h |  |  |  |
| 318 | 5.24 | **TUBE BUNDLE ASSEMBLY** |  | 18.6d | 2018-03-06 06:00 A | 2018-03-27 19:40 A |  | 100% | 2018-03-06 06:00 | 2018-03-27 19:40 | 18.6d |  | TEAM_2Shift_Calendar-1 |  | 173.25h | 173.25h | 9,414.25 | 9,414.25 | 9,414.25 |
| 319 | 5.24.1 | TUBE SHEET INSPECTION |  | 0.5d | 2018-03-06 06:00 A | 2018-03-06 13:15 A |  | 100% | 2018-03-06 06:00 | 2018-03-06 13:15 | 0.5d | start no earlier than 2018-03-06 06:00 | TEAM_2Shift_Calendar-1 | Tube Sheet (Cost) [0.1%]; Fitter | 7.25h | 7.25h |  |  |  |
| 320 | 5.24.2 | ASSY FRAME SET UP | milestone | 0h | 2018-03-18 06:00 A | 2018-03-18 06:00 A | 319 | 100% | 2018-03-18 06:00 | 2018-03-18 06:00 | 0h |  | TEAM_2Shift_Calendar-1 | Helper; Fitter [200%] |  |  |  |  |  |
| 321 | 5.24.3 | TUBE BUNDLE ASSY | milestone | 0h | 2018-03-19 06:00 A | 2018-03-19 06:00 A | 178, 194, 200, 47 | 100% | 2018-03-19 06:00 | 2018-03-19 06:00 | 0h |  | TEAM_2Shift_Calendar-1 | Helper [300%]; Fitter [200%] |  |  |  |  |  |
| 322 | 5.24.4 | TUBE TIE ROD STACK WELD | milestone | 0h | 2018-03-19 06:00 A | 2018-03-19 06:00 A | 321 | 100% | 2018-03-19 06:00 | 2018-03-19 06:00 | 0h |  | TEAM_2Shift_Calendar-1 | Helper [200%]; SAW Welder |  |  |  |  |  |
| 323 | 5.24.5 | TUBE INSERT |  | 1h | 2018-03-20 06:00 A | 2018-03-20 07:00 A | 47, 322 | 100% | 2018-03-20 06:00 | 2018-03-20 07:00 | 1h |  | TEAM_2Shift_Calendar-1 | Helper; Tube (Cost) [0.1%]; Fitter [200%] | 3h | 3h |  |  |  |
| 324 | 5.24.6 | TUBE SHEET WELDING |  | 22.15h | 2018-03-21 06:00 A | 2018-03-22 12:09 A | 323 | 100% | 2018-03-21 06:00 | 2018-03-22 12:09 | 22.15h |  | TEAM_2Shift_Calendar-1 | Helper [200%]; SAW Welder | 72h | 72h | 4,015.29 | 4,015.29 | 4,015.29 |
| 325 | 5.24.7 | TUBE ROOT WELDING |  | 14.5h | 2018-03-22 06:00 A | 2018-03-22 20:30 A | 324 | 100% | 2018-03-22 06:00 | 2018-03-22 20:30 | 14.5h |  | TEAM_2Shift_Calendar-1 | Helper [200%]; SAW Welder | 33h | 33h | 1,921.88 | 1,921.88 | 1,921.88 |
| 326 | 5.24.8 | TUBE ROOT WELDING DP |  | 3h | 2018-03-23 19:00 A | 2018-03-23 22:00 A | 325 | 100% | 2018-03-23 19:00 | 2018-03-23 22:00 | 3h |  | TEAM_2Shift_Calendar-1 | Fitter | 3h | 3h |  |  |  |
| 327 | 5.24.9 | AIR TEST |  | 16h | 2018-03-26 06:00 A | 2018-03-26 22:00 A | 326 | 100% | 2018-03-26 06:00 | 2018-03-26 22:00 | 16h |  | TEAM_2Shift_Calendar-1 | Fitter [200%] | 6h | 6h | 412.5 | 412.5 | 412.5 |
| 328 | 5.24.10 | TUBE WELDING-FINAL |  | 16h | 2018-03-26 06:00 A | 2018-03-26 22:00 A | 327 | 100% | 2018-03-26 06:00 | 2018-03-26 22:00 | 16h |  | TEAM_2Shift_Calendar-1 | Helper [200%]; SAW Welder [200%] | 18h | 18h | 1,125 | 1,125 | 1,125 |
| 329 | 5.24.11 | TUBE TRIMMING |  | 2.67h | 2018-03-27 06:00 A | 2018-03-27 08:40 A | 328 | 100% | 2018-03-27 06:00 | 2018-03-27 08:40 | 2.67h |  | TEAM_2Shift_Calendar-1 | Helper; Grinder [200%] | 8h | 8h | 433.33 | 433.33 | 433.33 |
| 330 | 5.24.12 | TUBE EXPANSION |  | 4h | 2018-03-27 08:40 A | 2018-03-27 12:40 A | 329 | 100% | 2018-03-27 08:40 | 2018-03-27 12:40 | 4h |  | TEAM_2Shift_Calendar-1 | Helper; Fitter [200%] | 12h | 12h | 750 | 750 | 750 |
| 331 | 5.24.13 | DP CHECK |  | 3h | 2018-03-27 12:40 A | 2018-03-27 15:40 A | 330 | 100% | 2018-03-27 12:40 | 2018-03-27 15:40 | 3h |  | TEAM_2Shift_Calendar-1 | Fitter | 3h | 3h | 206.25 | 206.25 | 206.25 |
| 332 | 5.24.14 | FINAL INSPECTION |  | 4h | 2018-03-27 15:40 A | 2018-03-27 19:40 A | 331 | 100% | 2018-03-27 15:40 | 2018-03-27 19:40 | 4h |  | TEAM_2Shift_Calendar-1 | Fitter [200%] | 8h | 8h | 550 | 550 | 550 |

Notes:
- 298: 2NOS
- 304: 8NOS
- 312: 40NOS

| ID | WBS | Task | Duration | Start | Finish | Predecessors | Complete | Baseline start | Baseline finish | Baseline duration | Constraint | Calendar | Resources | Work | Actual work | Cost | Baseline cost | Actual cost |
| --- | --- | --- | --- | --- | --- | --- | --- | --- | --- | --- | --- | --- | --- | --- | --- | --- | --- | --- |
| 333 | 5.25 | **HYDRO TEST** | 2.59d | 2018-03-27 19:40 A | 2018-03-30 09:15 A |  | 100% | 2018-03-27 19:40 | 2018-03-30 09:15 | 2.59d |  | TEAM_2Shift_Calendar-1 |  | 64.25h | 64.25h | 4,117.19 | 4,117.19 | 4,117.19 |
| 334 | 5.25.1 | NDE CLEARANCE | 0.16d | 2018-03-27 19:40 A | 2018-03-27 22:00 A | 318 | 100% | 2018-03-27 19:40 | 2018-03-27 22:00 | 0.16d |  | TEAM_2Shift_Calendar-1 | Fitter | 3h | 3h | 206.25 | 206.25 | 206.25 |
| 335 | 5.25.2 | PWHT | 1d | 2018-03-28 06:00 A | 2018-03-28 20:30 A | 334 | 100% | 2018-03-28 06:00 | 2018-03-28 20:30 | 1d |  | TEAM_2Shift_Calendar-1 |  |  |  |  |  |  |
| 336 | 5.25.3 | CLEANING AFTER PWHT | 1.5h | 2018-03-28 20:30 A | 2018-03-28 22:00 A | 335 | 100% | 2018-03-28 20:30 | 2018-03-28 22:00 | 1.5h |  | TEAM_2Shift_Calendar-1 | Helper; Fitter | 4h | 4h | 237.5 | 237.5 | 237.5 |
| 337 | 5.25.4 | NDE AFTER PWHT | 16h | 2018-03-28 06:00 A | 2018-03-28 22:00 A | 336 | 100% | 2018-03-28 06:00 | 2018-03-28 22:00 | 16h |  | TEAM_2Shift_Calendar-1 | Fitter | 2h | 2h | 137.5 | 137.5 | 137.5 |
| 338 | 5.25.5 | TUBE BUNDLE INSERT | 16h | 2018-03-28 06:00 A | 2018-03-28 22:00 A | 337 | 100% | 2018-03-28 06:00 | 2018-03-28 22:00 | 16h |  | TEAM_2Shift_Calendar-1 | Helper [300%]; Fitter [200%] | 12h | 12h | 712.5 | 712.5 | 712.5 |
| 339 | 5.25.6 | SHELL SIDE PNUEMATIC TEST | 16h | 2018-03-28 06:00 A | 2018-03-28 22:00 A | 338 | 100% | 2018-03-28 06:00 | 2018-03-28 22:00 | 16h |  | TEAM_2Shift_Calendar-1 | Helper [200%]; Fitter [300%] | 6h | 6h | 375 | 375 | 375 |
| 340 | 5.25.7 | TUBE BUNDLE OUTSIDE TEST | 16h | 2018-03-28 06:00 A | 2018-03-28 22:00 A | 339 | 100% | 2018-03-28 06:00 | 2018-03-28 22:00 | 16h |  | TEAM_2Shift_Calendar-1 | Helper [200%]; Fitter [300%] | 6h | 6h | 375 | 375 | 375 |
| 341 | 5.25.8 | TPI WITNESS | 0.28d | 2018-03-29 06:00 A | 2018-03-29 10:00 A | 340 | 100% | 2018-03-29 06:00 | 2018-03-29 10:00 | 0.28d |  | TEAM_2Shift_Calendar-1 | Fitter | 4h | 4h | 275 | 275 | 275 |
| 342 | 5.25.9 | SHELL SIDE HYDRO TEST | 2h | 2018-03-29 10:00 A | 2018-03-29 12:00 A | 341 | 100% | 2018-03-29 10:00 | 2018-03-29 12:00 | 2h |  | TEAM_2Shift_Calendar-1 | Helper [200%]; Fitter [300%] | 8h | 8h | 512.5 | 512.5 | 512.5 |
| 343 | 5.25.10 | TPI WITNESS | 0.5d | 2018-03-29 12:00 A | 2018-03-29 19:15 A | 342 | 100% | 2018-03-29 12:00 | 2018-03-29 19:15 | 0.5d |  | TEAM_2Shift_Calendar-1 | Fitter | 7.25h | 7.25h | 498.44 | 498.44 | 498.44 |
| 344 | 5.25.11 | CH ASSY AND HYDRO TEST | 2h | 2018-03-29 19:15 A | 2018-03-29 21:15 A | 343 | 100% | 2018-03-29 19:15 | 2018-03-29 21:15 | 2h |  | TEAM_2Shift_Calendar-1 | Helper [200%]; Fitter [300%] | 8h | 8h | 512.5 | 512.5 | 512.5 |
| 345 | 5.25.12 | TPI WITNESS | 0.28d | 2018-03-29 21:15 A | 2018-03-30 09:15 A | 344 | 100% | 2018-03-29 21:15 | 2018-03-30 09:15 | 0.28d |  | TEAM_2Shift_Calendar-1 | Fitter | 4h | 4h | 275 | 275 | 275 |
| 346 | 5.26 | **BLAST CLEANING & PAINTING** | 2.59d | 2018-03-28 06:00 A | 2018-03-30 11:30 A |  | 100% | 2018-03-28 06:00 | 2018-03-30 11:30 | 2.59d |  | TEAM_2Shift_Calendar-1 |  | 21h | 21h | 1,356.25 | 1,356.25 | 1,356.25 |
| 347 | 5.26.1 | PREPARATION FOR BLAST CLEANING | 16h | 2018-03-28 06:00 A | 2018-03-28 22:00 A | 318 | 100% | 2018-03-28 06:00 | 2018-03-28 22:00 | 16h |  | TEAM_2Shift_Calendar-1 | Helper [200%]; Fitter [200%] | 6h | 6h | 375 | 375 | 375 |
| 348 | 5.26.2 | BLAST CLEAN | 1d | 2018-03-29 06:00 A | 2018-03-29 20:30 A | 347 | 100% | 2018-03-29 06:00 | 2018-03-29 20:30 | 1d |  | TEAM_2Shift_Calendar-1 |  |  |  |  |  |  |
| 349 | 5.26.3 | TPI WITNESS | 4h | 2018-03-29 20:30 A | 2018-03-30 08:30 A | 348 | 100% | 2018-03-29 20:30 | 2018-03-30 08:30 | 4h |  | TEAM_2Shift_Calendar-1 | Fitter | 4h | 4h | 275 | 275 | 275 |
| 350 | 5.26.4 | DESPATCH CLEARANCE | 3h | 2018-03-30 08:30 A | 2018-03-30 11:30 A | 349 | 100% | 2018-03-30 08:30 | 2018-03-30 11:30 | 3h |  | TEAM_2Shift_Calendar-1 | Fitter | 3h | 3h | 206.25 | 206.25 | 206.25 |
| 351 | 5.26.5 | DESPATCH | 2.67h | 2018-03-30 06:00 A | 2018-03-30 08:40 A |  | 100% | 2018-03-30 06:00 | 2018-03-30 08:40 | 2.67h | start no earlier than 2018-03-30 06:00 | TEAM_2Shift_Calendar-1 | Helper [200%]; Fitter [200%] | 8h | 8h | 500 | 500 | 500 |
| 352 | 5.27 | **PBG** | 1.9d | 2018-04-24 06:00 A | 2018-04-25 17:30 A |  | 100% | 2018-04-21 08:30 | 2018-04-21 14:40 | 0.43d |  | TEAM_2Shift_Calendar-1 |  | 16h | 16h |  |  |  |
| 353 | 5.27.1 | PBG SUBMISSION | 8h | 2018-04-24 06:00 A | 2018-04-24 21:30 A | 346FS+19d | 100% | 2018-04-21 08:30 | 2018-04-21 12:30 | 4h | start no earlier than 2018-04-21 06:00 | TEAM_2Shift_Calendar-1 | Finance | 8h | 8h |  |  |  |
| 354 | 5.27.2 | FINAL DOCUMENTATION | 8h | 2018-04-25 06:00 A | 2018-04-25 17:30 A | 351FS+10d | 100% | 2018-04-21 09:40 | 2018-04-21 14:40 | 4h |  |  | QC Engineer | 8h | 8h |  |  |  |

Notes:
- 335: SC
- 348: SC
