# 4174-IOCL

Schedule from MS Project, 2017-05-19 to 2018-02-05, costs in ₹, A marks actual dates.

## Calendars

- TEAM_Stand_Calendar: Mon-Sat 08:30-12:30, 13:30-17:30; Sun off. Exceptions (off unless hours are given): 2017-01-13 to 2023-08-12 (2nd Sat, recurring), 2017-01-26 to 2036-01-26 (Republic Day, recurring), 2017-01-27 to 2023-08-26 (4th Sat, recurring), 2017-05-01 to 2036-05-01 (May Day, recurring), 2017-08-15 to 2036-08-15 (Independence Day, recurring), 2017-08-25 (Vinakya Chaturthi'2017), 2017-09-29 (Ayudha Pooja'2017), 2017-10-02 to 2036-10-02 (Gandhi Jayanti, recurring), 2017-10-18 (Deepavali'2017), 2018-01-15 (Thiruvalluvar Day'2018).

## Resources

| Resource | Rate |
| --- | --- |
| SAW Welder | 68.75 |
| Painter |  |
| Lathe Operator | 120 |
| Helper | 50 |
| Grinder | 56.25 |
| Fitter | 68.75 |
| Driller | 68.75 |
| Gas Cutter | 68.75 |

## Schedule

| ID | WBS | Task | Type | Duration | Start | Finish | Predecessors | Complete | Baseline start | Baseline finish | Baseline duration | Work | Actual work | Cost | Baseline cost | Actual cost |
| --- | --- | --- | --- | --- | --- | --- | --- | --- | --- | --- | --- | --- | --- | --- | --- | --- |
| 1 | 1 | **2093-E-45-HEAT EXCHANGER** |  | 200.94d | 2017-05-19 08:00 A | 2018-02-05 17:00 A |  | 100% | 2017-05-19 08:00 | 2017-12-30 17:10 | 348.78d | 5862.75h | 5862.75h | 387,330.39 | 388,770.94 | 387,330.39 |
| 2 | 1.1 | PO RECEIPT |  | 1d | 2017-05-19 08:00 A | 2017-05-19 17:00 A |  | 100% | 2017-05-19 08:00 | 2017-05-19 17:00 | 1d |  |  |  |  |  |
| 3 | 1.2 | CRM |  | 1d | 2017-05-20 08:00 A | 2017-05-20 17:00 A | 2 | 100% | 2017-05-20 08:00 | 2017-05-20 17:00 | 1d |  |  |  |  |  |
| 4 | 1.3 | DRAWING SUBMISSION FOR APPROVAL |  | 42d | 2017-05-22 08:00 A | 2017-07-11 17:00 A | 3 | 100% | 2017-05-22 08:00 | 2017-07-11 17:00 | 42d |  |  |  |  |  |
| 5 | 1.4 | **PR ISSUE** |  | 39.94d | 2017-05-23 08:00 A | 2017-07-12 17:00 A |  | 100% | 2017-05-23 08:00 | 2017-07-12 17:00 | 79.04d |  |  |  |  |  |
| 6 | 1.4.1 | PLATES AND RODS-SA516 Gr.60 | milestone | 0d | 2017-05-28 08:00 A | 2017-05-28 08:00 A | 4FS+2d | 100% | 2017-05-28 08:00 | 2017-05-28 08:00 | 0d |  |  |  |  |  |
| 7 | 1.4.2 | PLATES AND RODS-SA240 Gr.32205 | milestone | 0d | 2017-07-11 08:00 A | 2017-07-11 08:00 A | 4FS+2d | 100% | 2017-07-11 08:00 | 2017-07-11 08:00 | 0d |  |  |  |  |  |
| 8 | 1.4.3 | TUBES-SA789 UNS32205 | milestone | 0d | 2017-05-23 08:00 A | 2017-05-23 08:00 A | 4FS+2d | 100% | 2017-05-23 08:00 | 2017-05-23 08:00 | 0d |  |  |  |  |  |
| 9 | 1.4.4 | BLANK FORGING-SA182 F60 | milestone | 0d | 2017-07-12 08:00 A | 2017-07-12 08:00 A | 4FS+2d | 100% | 2017-07-12 08:00 | 2017-07-12 08:00 | 0d |  |  |  |  |  |
| 10 | 1.4.5 | BLANK FORGING-SA266 Gr.2 | milestone | 0d | 2017-07-12 08:00 A | 2017-07-12 08:00 A | 4FS+2d | 100% | 2017-07-12 08:00 | 2017-07-12 08:00 | 0d |  |  |  |  |  |
| 11 | 1.4.6 | STD FORGING-SA105 | milestone | 0d | 2017-07-04 08:00 A | 2017-07-04 08:00 A | 4FS+2d | 100% | 2017-07-04 08:00 | 2017-07-04 08:00 | 0d |  |  |  |  |  |
| 12 | 1.4.7 | NON STD FORGING-SA266 Gr.2 | milestone | 0d | 2017-07-12 08:00 A | 2017-07-12 08:00 A | 4FS+1d | 100% | 2017-07-12 08:00 | 2017-07-12 08:00 | 0d |  |  |  |  |  |
| 13 | 1.4.8 | PIPE-SA106 Gr.B |  | 6d | 2017-07-04 08:00 A | 2017-07-11 17:00 A | 4FS+1d | 100% | 2017-07-04 08:00 | 2017-07-11 17:00 | 6d |  |  |  |  |  |
| 14 | 1.4.9 | GASKET |  | 1d | 2017-07-12 08:00 A | 2017-07-12 17:00 A | 4FS+1d | 100% | 2017-07-12 08:00 | 2017-07-12 17:00 | 1d |  |  |  |  |  |
| 15 | 1.4.10 | FASTENERS |  | 6d | 2017-07-04 08:00 A | 2017-07-11 17:00 A | 4FS+1d | 100% | 2017-07-04 08:00 | 2017-07-11 17:00 | 6d |  |  |  |  |  |
| 16 | 1.4.11 | CONSUMABLES-CS |  | 1d | 2017-07-12 08:00 A | 2017-07-12 17:00 A | 4FS+1d | 100% | 2017-07-12 08:00 | 2017-07-12 17:00 | 1d |  |  |  |  |  |
| 17 | 1.4.12 | CONSUMABLES-DUPLEX |  | 1d | 2017-07-12 08:00 A | 2017-07-12 17:00 A | 4FS+1d | 100% | 2017-07-12 08:00 | 2017-07-12 17:00 | 1d |  |  |  |  |  |
| 18 | 1.5 | **MATERIAL ORDERING AND RECEIPT** |  | 97.94d | 2017-06-27 08:00 A | 2017-11-02 17:00 A |  | 100% | 2017-06-27 08:00 | 2017-11-02 17:00 | 196.92d |  |  |  |  |  |
| 19 | 1.5.1 | PLATES AND RODS-SA516 Gr.60 |  | 57d | 2017-07-18 08:00 A | 2017-09-26 17:00 A | 6 | 100% | 2017-07-18 08:00 | 2017-09-26 17:00 | 57d |  |  |  |  |  |
| 20 | 1.5.2 | PLATES AND RODS-SA240 Gr.32205 |  | 43d | 2017-08-31 08:00 A | 2017-10-23 17:00 A | 7 | 100% | 2017-08-31 08:00 | 2017-10-23 17:00 | 43d |  |  |  |  |  |
| 21 | 1.5.3 | TUBES-SA789 UNS32205 |  | 77d | 2017-06-27 08:00 A | 2017-10-06 09:30 A | 8 | 100% | 2017-06-27 08:00 | 2017-09-30 16:01 | 77d |  |  |  |  |  |
| 22 | 1.5.4 | BLANK FORGING-SA182 F60 |  | 50d | 2017-07-25 08:00 A | 2017-09-27 17:30 A | 9 | 100% | 2017-07-25 08:00 | 2017-08-28 08:25 | 50d |  |  |  |  |  |
| 23 | 1.5.5 | BLANK FORGING-SA266 Gr.2 |  | 50d | 2017-07-27 08:00 A | 2017-09-30 17:30 A | 10 | 100% | 2017-07-27 08:00 | 2017-08-30 08:25 | 50d |  |  |  |  |  |
| 24 | 1.5.6 | STD FORGING-SA105 |  | 50d | 2017-07-25 08:00 A | 2017-09-27 17:30 A | 11 | 100% | 2017-07-25 08:00 | 2017-08-28 08:25 | 50d |  |  |  |  |  |
| 25 | 1.5.7 | NON STD FORGING-SA266 Gr.2 |  | 50d | 2017-07-25 08:00 A | 2017-09-27 17:30 A | 12 | 100% | 2017-07-25 08:00 | 2017-08-28 08:25 | 50d |  |  |  |  |  |
| 26 | 1.5.8 | PIPE-SA106 Gr.B |  | 31d | 2017-07-27 08:00 A | 2017-09-01 17:00 A | 13 | 100% | 2017-07-27 08:00 | 2017-09-01 17:00 | 31d |  |  |  |  |  |
| 27 | 1.5.9 | GASKET |  | 70d | 2017-07-31 08:00 A | 2017-10-24 17:00 A | 14 | 100% | 2017-07-31 08:00 | 2017-10-24 16:01 | 70d |  |  |  |  |  |
| 28 | 1.5.10 | FASTENERS |  | 75d | 2017-08-01 08:00 A | 2017-10-31 17:00 A | 15 | 100% | 2017-08-01 08:00 | 2017-10-31 17:00 | 75d |  |  |  |  |  |
| 29 | 1.5.11 | CONSUMABLES-CS |  | 26d | 2017-08-02 08:00 A | 2017-09-01 17:00 A | 16 | 100% | 2017-08-02 08:00 | 2017-09-01 17:00 | 26d |  |  |  |  |  |
| 30 | 1.5.12 | CONSUMABLES-DUPLEX |  | 32d | 2017-09-26 08:00 A | 2017-11-02 17:00 A | 17 | 100% | 2017-09-26 08:00 | 2017-11-02 17:00 | 32d |  |  |  |  |  |
| 31 | 1.6 | Fabricaton Start Date Reset | manual | 1min | 2017-08-03 08:00 A | 2017-08-03 08:01 A |  | 100% | 2017-08-03 08:00 | 2017-08-03 08:01 | 1min |  |  |  |  |  |

| ID | WBS | Task | Duration | Start | Finish | Predecessors | Complete | Baseline start | Baseline finish | Baseline duration | Resources | Work | Actual work | Cost | Baseline cost | Actual cost |
| --- | --- | --- | --- | --- | --- | --- | --- | --- | --- | --- | --- | --- | --- | --- | --- | --- |
| 32 | 1.7 | **Fabrication** | 140.94d | 2017-08-03 08:00 A | 2018-02-05 17:00 A |  | 100% | 2017-08-03 08:00 | 2017-12-30 17:10 | 228.91d |  | 5862.75h | 5862.75h | 387,330.39 | 388,770.94 | 387,330.39 |
| 33 | 1.7.1 | **MATERIAL RECEIPT** | 3.19d | 2017-08-03 08:00 A | 2017-08-07 10:03 A |  | 100% | 2017-08-03 08:00 | 2017-08-07 10:03 | 6.25d |  | 100h | 100h | 6,875 | 6,875 | 6,875 |
| 34 | 1.7.1.1 | PLATE FOR SHELL | 1.81d | 2017-08-03 08:30 A | 2017-08-04 16:00 A | 31SS | 100% | 2017-08-03 08:00 | 2017-08-04 06:31 | 1.81d |  |  |  |  |  |  |
| 35 | 1.7.1.2 | SHELL FLANGE | 1.81d | 2017-08-03 08:30 A | 2017-08-04 16:00 A | 31SS | 100% | 2017-08-03 08:00 | 2017-08-04 06:31 | 1.81d |  |  |  |  |  |  |
| 36 | 1.7.1.3 | PLATE FOR CHANNEL | 1.81d | 2017-08-03 08:30 A | 2017-08-04 16:00 A | 31SS | 100% | 2017-08-03 08:00 | 2017-08-04 06:31 | 1.81d |  |  |  |  |  |  |
| 37 | 1.7.1.4 | CHANNEL FLANGE | 1.81d | 2017-08-03 08:30 A | 2017-08-04 16:00 A | 31SS | 100% | 2017-08-03 08:00 | 2017-08-04 06:31 | 1.81d |  |  |  |  |  |  |
| 38 | 1.7.1.5 | NOZZLE PIPE | 1.81d | 2017-08-03 08:30 A | 2017-08-04 16:00 A | 31SS | 100% | 2017-08-03 08:00 | 2017-08-04 06:31 | 1.81d |  |  |  |  |  |  |
| 39 | 1.7.1.6 | NOZZLE FLG | 1.81d | 2017-08-03 08:30 A | 2017-08-04 16:00 A | 31SS | 100% | 2017-08-03 08:00 | 2017-08-04 06:31 | 1.81d |  |  |  |  |  |  |
| 40 | 1.7.1.7 | U TUBE | 1.81d | 2017-08-03 08:30 A | 2017-08-04 16:00 A | 31SS | 100% | 2017-08-03 08:00 | 2017-08-04 06:31 | 1.81d |  |  |  |  |  |  |
| 41 | 1.7.1.8 | TUBE SHEET | 1.81d | 2017-08-03 08:30 A | 2017-08-04 16:00 A | 31SS | 100% | 2017-08-03 08:00 | 2017-08-04 06:31 | 1.81d |  |  |  |  |  |  |
| 42 | 1.7.1.9 | PP PLATE | 1.81d | 2017-08-03 08:30 A | 2017-08-04 16:00 A | 31SS | 100% | 2017-08-03 08:00 | 2017-08-04 06:31 | 1.81d |  |  |  |  |  |  |
| 43 | 1.7.1.10 | NAME PLATE | 1.81d | 2017-08-03 08:30 A | 2017-08-04 16:00 A | 31SS | 100% | 2017-08-03 08:00 | 2017-08-04 06:31 | 1.81d |  |  |  |  |  |  |
| 44 | 1.7.1.11 | SUPPORT PLATES | 1.81d | 2017-08-03 08:30 A | 2017-08-04 16:00 A | 31SS | 100% | 2017-08-03 08:00 | 2017-08-04 06:31 | 1.81d |  |  |  |  |  |  |
| 45 | 1.7.1.12 | BAFFLE PLATE | 1.81d | 2017-08-03 08:30 A | 2017-08-04 16:00 A | 31SS | 100% | 2017-08-03 08:00 | 2017-08-04 06:31 | 1.81d |  |  |  |  |  |  |
| 46 | 1.7.1.13 | LIFTING LUG | 1.81d | 2017-08-03 08:30 A | 2017-08-04 16:00 A | 31SS | 100% | 2017-08-03 08:00 | 2017-08-04 06:31 | 1.81d |  |  |  |  |  |  |
| 47 | 1.7.1.14 | PIPE FOR DAVIT ASSY | 1.81d | 2017-08-03 08:30 A | 2017-08-04 16:00 A | 31SS | 100% | 2017-08-03 08:00 | 2017-08-04 06:31 | 1.81d |  |  |  |  |  |  |
| 48 | 1.7.1.15 | SADDLE MATERIAL | 1.81d | 2017-08-03 08:30 A | 2017-08-04 16:00 A | 31SS | 100% | 2017-08-03 08:00 | 2017-08-04 06:31 | 1.81d |  |  |  |  |  |  |
| 49 | 1.7.1.16 | INSULATION CLEAT | 1.81d | 2017-08-03 08:30 A | 2017-08-04 16:00 A | 31SS | 100% | 2017-08-03 08:00 | 2017-08-04 06:31 | 1.81d |  |  |  |  |  |  |
| 50 | 1.7.1.17 | SPACER TUBE | 1.81d | 2017-08-03 08:30 A | 2017-08-04 16:00 A | 31SS | 100% | 2017-08-03 08:00 | 2017-08-04 06:31 | 1.81d |  |  |  |  |  |  |
| 51 | 1.7.1.18 | SLIDING STRIP/SLIDING STRIP | 1.81d | 2017-08-03 08:30 A | 2017-08-04 16:00 A | 31SS | 100% | 2017-08-03 08:00 | 2017-08-04 06:31 | 1.81d |  |  |  |  |  |  |
| 52 | 1.7.1.19 | TIE ROD | 1.81d | 2017-08-03 08:30 A | 2017-08-04 16:00 A | 31SS | 100% | 2017-08-03 08:00 | 2017-08-04 06:31 | 1.81d |  |  |  |  |  |  |
| 53 | 1.7.1.20 | FASTENERS | 1.81d | 2017-08-03 08:30 A | 2017-08-04 16:00 A | 31SS | 100% | 2017-08-03 08:00 | 2017-08-04 06:31 | 1.81d |  |  |  |  |  |  |
| 54 | 1.7.1.21 | GASKETS | 1.81d | 2017-08-03 08:30 A | 2017-08-04 16:00 A | 31SS | 100% | 2017-08-03 08:00 | 2017-08-04 06:31 | 1.81d |  |  |  |  |  |  |
| 55 | 1.7.1.22 | MATL HANDELING | 50h | 2017-08-03 08:00 A | 2017-08-07 10:03 A | 31SS | 100% | 2017-08-03 08:00 | 2017-08-07 10:03 | 50h | Fitter [200%] | 100h | 100h | 6,875 | 6,875 | 6,875 |

Notes:
- 34: SA516 Gr60
- 35: SA266 Gr2
- 36: SA516 Gr60
- 37: SA266 Gr2
- 38: SA105
- 39: SA 105
- 40: SA789 UNS S32205
- 41: SA 182 F60 UNS S32205
- 42: SA516 Gr60
- 43: SS304
- 44: SA240 UNS S32205
- 45: SA240 UNS S32205
- 46: SA516 Gr60
- 47: SA516 Gr60
- 48: SA516 Gr60/70
- 49: SA516 Gr60
- 50: SA213 Gr 316L
- 51: SA240 UNS S32205
- 52: SS 316L

| ID | WBS | Task | Type | Duration | Start | Finish | Predecessors | Complete | Baseline start | Baseline finish | Baseline duration | Resources | Work | Actual work | Cost | Baseline cost | Actual cost |
| --- | --- | --- | --- | --- | --- | --- | --- | --- | --- | --- | --- | --- | --- | --- | --- | --- | --- |
| 56 | 1.7.2 | **CHANNEL LS1- FABRICATION** |  | 5d | 2017-08-04 16:00 A | 2017-08-10 16:00 A |  | 100% | 2017-08-04 06:31 | 2017-08-09 08:50 | 8.28d |  | 57.75h | 57.75h | 3,601.57 | 3,601.56 | 3,601.57 |
| 57 | 1.7.2.1 | LS1-PLATE MARKING |  | 2h | 2017-08-04 16:00 A | 2017-08-04 18:00 A | 36 | 100% | 2017-08-04 06:31 | 2017-08-04 08:31 | 2h | Fitter; Helper | 2h | 2h | 100 | 100 | 100 |
| 58 | 1.7.2.2 | LS1- STAMPING |  | 1h | 2017-08-04 18:00 A | 2017-08-04 19:00 A | 57 | 100% | 2017-08-04 08:31 | 2017-08-04 09:31 | 1h | Fitter | 1h | 1h | 68.75 | 68.75 | 68.75 |
| 59 | 1.7.2.3 | LS1-PL CUTTING |  | 2h | 2017-08-04 19:00 A | 2017-08-04 21:00 A | 58 | 100% | 2017-08-04 09:31 | 2017-08-04 11:31 | 2h | Gas Cutter; Helper | 2h | 2h | 100 | 100 | 100 |
| 60 | 1.7.2.4 | LS1-GRINDING |  | 5h | 2017-08-04 21:00 A | 2017-08-05 10:00 A | 59 | 100% | 2017-08-04 11:31 | 2017-08-04 16:32 | 5h | Grinder | 5h | 5h | 281.25 | 281.25 | 281.25 |
| 61 | 1.7.2.5 | LS1-EDGE PREPARATION |  | 2h | 2017-08-05 10:00 A | 2017-08-05 12:00 A | 60 | 100% | 2017-08-04 16:32 | 2017-08-04 18:32 | 2h | Grinder | 2h | 2h | 112.5 | 112.5 | 112.5 |
| 62 | 1.7.2.6 | LS1-PRE BENDING |  | 2.5h | 2017-08-05 12:00 A | 2017-08-05 14:31 A | 61 | 100% | 2017-08-04 18:32 | 2017-08-04 21:02 | 2.5h | Fitter; Helper | 2.5h | 2.5h | 171.88 | 171.88 | 171.88 |
| 63 | 1.7.2.7 | LS1-PREBEND CUTOFF |  | 2h | 2017-08-05 14:31 A | 2017-08-05 16:31 A | 62 | 100% | 2017-08-04 21:02 | 2017-08-05 07:02 | 2h | Gas Cutter | 2h | 2h | 137.5 | 137.5 | 137.5 |
| 64 | 1.7.2.8 | LS1-EDGE PREPARTION |  | 3h | 2017-08-05 16:31 A | 2017-08-05 19:31 A | 63 | 100% | 2017-08-05 07:02 | 2017-08-05 10:02 | 3h | Grinder | 3h | 3h | 168.75 | 168.75 | 168.75 |
| 65 | 1.7.2.9 | LS1-ROLLING |  | 3h | 2017-08-05 19:31 A | 2017-08-07 06:31 A | 64 | 100% | 2017-08-05 10:02 | 2017-08-05 13:02 | 3h | Fitter; Helper | 3h | 3h | 206.25 | 206.25 | 206.25 |
| 66 | 1.7.2.10 | LS1-ACID CLEANING | milestone | 0h | 2017-08-07 06:31 A | 2017-08-07 06:31 A | 65 | 100% | 2017-08-05 13:02 | 2017-08-05 13:02 | 0h | Helper [200%] |  |  |  |  |  |
| 67 | 1.7.2.11 | LS1-FITUP |  | 4h | 2017-08-07 06:31 A | 2017-08-07 10:31 A | 66 | 100% | 2017-08-05 13:02 | 2017-08-05 17:03 | 4h | Fitter; Helper; SAW Welder | 7h | 7h | 406.25 | 406.25 | 406.25 |
| 68 | 1.7.2.12 | LS1-SPIDERUP |  | 3h | 2017-08-07 10:31 A | 2017-08-07 13:31 A | 67 | 100% | 2017-08-05 17:03 | 2017-08-05 20:03 | 3h | Fitter | 3h | 3h | 206.25 | 206.25 | 206.25 |
| 69 | 1.7.2.13 | LS1-FITUP INSPECTION |  | 0.91d | 2017-08-07 13:31 A | 2017-08-07 20:47 A | 68 | 100% | 2017-08-05 20:03 | 2017-08-07 11:18 | 0.91d | Fitter | 7.25h | 7.25h | 498.44 | 498.44 | 498.44 |
| 70 | 1.7.2.14 | LS1-WELDING |  | 7h | 2017-08-07 20:47 A | 2017-08-08 11:47 A | 69 | 100% | 2017-08-07 11:18 | 2017-08-07 18:19 | 7h | Helper; SAW Welder | 7h | 7h | 481.25 | 481.25 | 481.25 |
| 71 | 1.7.2.15 | LS1-FLUSH GRIND |  | 3h | 2017-08-08 11:47 A | 2017-08-08 14:48 A | 70 | 100% | 2017-08-07 18:19 | 2017-08-07 21:19 | 3h | Grinder | 3h | 3h | 168.75 | 168.75 | 168.75 |
| 72 | 1.7.2.16 | LS1-REROLLING |  | 3h | 2017-08-08 14:48 A | 2017-08-08 17:48 A | 71 | 100% | 2017-08-07 21:19 | 2017-08-08 08:19 | 3h | Fitter; Helper | 6h | 6h | 356.25 | 356.25 | 356.25 |
| 73 | 1.7.2.17 | LS1-DPCHECK |  | 2h | 2017-08-08 17:48 A | 2017-08-08 19:48 A | 72 | 100% | 2017-08-08 08:19 | 2017-08-08 10:19 | 2h | Fitter | 2h | 2h | 137.5 | 137.5 | 137.5 |
| 74 | 1.7.2.18 | LS1-RADIOGRAPHY |  | 1.81d | 2017-08-09 08:30 A | 2017-08-10 16:00 A | 73 | 100% | 2017-08-08 10:19 | 2017-08-09 08:50 | 1.81d |  |  |  |  |  |  |
| 75 | 1.7.3 | **SHELL LS2-FABRICATION** |  | 5.29d | 2017-08-04 18:00 A | 2017-08-11 10:48 A |  | 100% | 2017-08-04 08:31 | 2017-08-09 17:21 | 9.09d |  | 88.75h | 88.75h | 5,395.32 | 5,395.31 | 5,395.32 |
| 76 | 1.7.3.1 | LS2-PLATE MARKING |  | 2h | 2017-08-04 18:00 A | 2017-08-04 20:00 A | 34, 57 | 100% | 2017-08-04 08:31 | 2017-08-04 10:31 | 2h | Fitter; Helper | 4h | 4h | 237.5 | 237.5 | 237.5 |
| 77 | 1.7.3.2 | LS2-STAMPING |  | 1h | 2017-08-04 20:00 A | 2017-08-04 21:00 A | 76 | 100% | 2017-08-04 10:31 | 2017-08-04 11:31 | 1h | Fitter | 1h | 1h | 68.75 | 68.75 | 68.75 |
| 78 | 1.7.3.3 | LS2-PL CUTTING |  | 2h | 2017-08-04 21:00 A | 2017-08-05 07:00 A | 77 | 100% | 2017-08-04 11:31 | 2017-08-04 13:31 | 2h | Gas Cutter; Helper | 4h | 4h | 237.5 | 237.5 | 237.5 |
| 79 | 1.7.3.4 | LS2-GRINDING |  | 5h | 2017-08-05 07:00 A | 2017-08-05 12:00 A | 78 | 100% | 2017-08-04 13:31 | 2017-08-04 18:32 | 5h | Grinder | 5h | 5h | 281.25 | 281.25 | 281.25 |
| 80 | 1.7.3.5 | LS2-EDGE PREPARATION |  | 3h | 2017-08-05 12:00 A | 2017-08-05 15:01 A | 79 | 100% | 2017-08-04 18:32 | 2017-08-04 21:32 | 3h | Grinder | 3h | 3h | 168.75 | 168.75 | 168.75 |
| 81 | 1.7.3.6 | LS2-PREBENDING |  | 3h | 2017-08-05 15:01 A | 2017-08-05 18:01 A | 80 | 100% | 2017-08-04 21:32 | 2017-08-05 08:32 | 3h | Fitter; Helper | 6h | 6h | 356.25 | 356.25 | 356.25 |
| 82 | 1.7.3.7 | LS2-PREBEND CUTOFF |  | 2h | 2017-08-05 18:01 A | 2017-08-05 20:01 A | 81 | 100% | 2017-08-05 08:32 | 2017-08-05 10:32 | 2h | Gas Cutter | 2h | 2h | 137.5 | 137.5 | 137.5 |
| 83 | 1.7.3.8 | LS2-EDGE PREPARATION |  | 3h | 2017-08-05 20:01 A | 2017-08-07 07:01 A | 82 | 100% | 2017-08-05 10:32 | 2017-08-05 13:32 | 3h | Grinder | 3h | 3h | 168.75 | 168.75 | 168.75 |
| 84 | 1.7.3.9 | LS2-ROLLING |  | 3h | 2017-08-07 07:01 A | 2017-08-07 10:01 A | 83 | 100% | 2017-08-05 13:32 | 2017-08-05 16:33 | 3h | Fitter; Helper | 5.5h | 5.5h | 321.88 | 321.88 | 321.88 |
| 85 | 1.7.3.10 | LS2-ACIDCLEANING | milestone | 0h | 2017-08-07 10:01 A | 2017-08-07 10:01 A | 84 | 100% | 2017-08-05 16:33 | 2017-08-05 16:33 | 0h | Helper [200%] |  |  |  |  |  |
| 86 | 1.7.3.11 | LS2-FITUP |  | 4h | 2017-08-07 10:01 A | 2017-08-07 14:02 A | 85 | 100% | 2017-08-05 16:33 | 2017-08-05 20:33 | 4h | Fitter; Helper; SAW Welder | 12h | 12h | 750 | 750 | 750 |
| 87 | 1.7.3.12 | LS2-SPIDERUP |  | 3h | 2017-08-07 14:02 A | 2017-08-07 17:02 A | 86 | 100% | 2017-08-05 20:33 | 2017-08-07 07:33 | 3h | Fitter | 3h | 3h | 206.25 | 206.25 | 206.25 |
| 88 | 1.7.3.13 | LS2-FITUP INSPECTION |  | 0.91d | 2017-08-07 17:02 A | 2017-08-08 08:17 A | 87 | 100% | 2017-08-07 07:33 | 2017-08-07 14:49 | 0.91d | Fitter | 7.25h | 7.25h | 498.44 | 498.44 | 498.44 |
| 89 | 1.7.3.14 | LS2-WELDING |  | 10h | 2017-08-08 08:17 A | 2017-08-08 18:18 A | 88 | 100% | 2017-08-07 14:49 | 2017-08-08 08:49 | 10h | Helper; SAW Welder | 20h | 20h | 1,187.5 | 1,187.5 | 1,187.5 |
| 90 | 1.7.3.15 | LS2-FLUSHGRIND |  | 5h | 2017-08-08 18:18 A | 2017-08-09 07:18 A | 89 | 100% | 2017-08-08 08:49 | 2017-08-08 13:49 | 5h | Grinder | 5h | 5h | 281.25 | 281.25 | 281.25 |
| 91 | 1.7.3.16 | LS2-REROLLING |  | 3h | 2017-08-09 07:18 A | 2017-08-09 10:18 A | 90 | 100% | 2017-08-08 13:49 | 2017-08-08 16:50 | 3h | Fitter; Helper | 6h | 6h | 356.25 | 356.25 | 356.25 |
| 92 | 1.7.3.17 | LS2-DPCHECK |  | 2h | 2017-08-09 10:18 A | 2017-08-09 12:18 A | 91 | 100% | 2017-08-08 16:50 | 2017-08-08 18:50 | 2h | Fitter | 2h | 2h | 137.5 | 137.5 | 137.5 |
| 93 | 1.7.3.18 | LS2-RADIOGRAPHY |  | 1.81d | 2017-08-09 12:18 A | 2017-08-11 10:48 A | 92 | 100% | 2017-08-08 18:50 | 2017-08-09 17:21 | 1.81d |  |  |  |  |  |  |

Notes:
- 57: 2575*906Lg*24T
- 70: 4.43Kg/m
- 74: SC
- 76: 2575*1250Lg*22T
- 89: 4.43Kg/m
- 93: SC

| ID | WBS | Task | Type | Duration | Start | Finish | Predecessors | Complete | Baseline start | Baseline finish | Baseline duration | Resources | Work | Actual work | Cost | Baseline cost | Actual cost |
| --- | --- | --- | --- | --- | --- | --- | --- | --- | --- | --- | --- | --- | --- | --- | --- | --- | --- |
| 94 | 1.7.4 | **SHELL LS3- FABRICATION** |  | 6.16d | 2017-08-04 20:00 A | 2017-08-14 09:49 A |  | 100% | 2017-08-04 10:31 | 2017-08-10 16:22 | 10.72d |  | 85.75h | 85.75h | 5,401.57 | 5,401.56 | 5,401.57 |
| 95 | 1.7.4.1 | LS3-PLATE MARKING |  | 2h | 2017-08-04 20:00 A | 2017-08-04 22:00 A | 34, 76 | 100% | 2017-08-04 10:31 | 2017-08-04 12:31 | 2h | Fitter; Helper | 4h | 4h | 237.5 | 237.5 | 237.5 |
| 96 | 1.7.4.2 | LS3-STAMPING |  | 1h | 2017-08-05 06:00 A | 2017-08-05 07:00 A | 95 | 100% | 2017-08-04 12:31 | 2017-08-04 13:31 | 1h | Fitter | 1h | 1h | 68.75 | 68.75 | 68.75 |
| 97 | 1.7.4.3 | LS3-PL CUTTING |  | 2h | 2017-08-05 07:00 A | 2017-08-05 09:00 A | 96 | 100% | 2017-08-04 13:31 | 2017-08-04 15:32 | 2h | Gas Cutter; Helper | 3h | 3h | 168.75 | 168.75 | 168.75 |
| 98 | 1.7.4.4 | LS3-GRINDING |  | 6h | 2017-08-05 09:00 A | 2017-08-05 15:01 A | 97 | 100% | 2017-08-04 15:32 | 2017-08-04 21:32 | 6h | Grinder | 6h | 6h | 337.5 | 337.5 | 337.5 |
| 99 | 1.7.4.5 | LS3-EDGE PREPARATION |  | 4h | 2017-08-05 15:01 A | 2017-08-05 19:01 A | 98 | 100% | 2017-08-04 21:32 | 2017-08-05 09:32 | 4h | Grinder | 4h | 4h | 225 | 225 | 225 |
| 100 | 1.7.4.6 | LS3-PREBENDING |  | 3h | 2017-08-05 19:01 A | 2017-08-07 06:01 A | 99 | 100% | 2017-08-05 09:32 | 2017-08-05 12:32 | 3h | Fitter; Helper | 3h | 3h | 206.25 | 206.25 | 206.25 |
| 101 | 1.7.4.7 | LS3-PREBEND CUTOFF |  | 2h | 2017-08-07 06:01 A | 2017-08-07 08:01 A | 100 | 100% | 2017-08-05 12:32 | 2017-08-05 14:33 | 2h | Gas Cutter | 2h | 2h | 137.5 | 137.5 | 137.5 |
| 102 | 1.7.4.8 | LS3-EDGE PREPARTION |  | 4h | 2017-08-07 08:01 A | 2017-08-07 12:01 A | 101 | 100% | 2017-08-05 14:33 | 2017-08-05 18:33 | 4h | Grinder | 4h | 4h | 225 | 225 | 225 |
| 103 | 1.7.4.9 | LS3-ROLLING |  | 3h | 2017-08-07 12:01 A | 2017-08-07 15:02 A | 102 | 100% | 2017-08-05 18:33 | 2017-08-05 21:33 | 3h | Fitter; Helper | 6h | 6h | 356.25 | 356.25 | 356.25 |
| 104 | 1.7.4.10 | LS3-ACIDCLEANING | milestone | 0h | 2017-08-07 15:02 A | 2017-08-07 15:02 A | 103 | 100% | 2017-08-05 21:33 | 2017-08-05 21:33 | 0h | Helper [200%] |  |  |  |  |  |
| 105 | 1.7.4.11 | LS3-FITUP |  | 4h | 2017-08-07 15:02 A | 2017-08-07 19:02 A | 104 | 100% | 2017-08-05 21:33 | 2017-08-07 09:33 | 4h | Fitter; Helper; SAW Welder | 8h | 8h | 521.88 | 521.88 | 521.88 |
| 106 | 1.7.4.12 | LS3-SPIDERUP |  | 3h | 2017-08-07 19:02 A | 2017-08-08 06:02 A | 105 | 100% | 2017-08-07 09:33 | 2017-08-07 12:33 | 3h | Fitter | 3h | 3h | 206.25 | 206.25 | 206.25 |
| 107 | 1.7.4.13 | LS3-FITUP INSPECTION |  | 0.91d | 2017-08-08 06:02 A | 2017-08-08 13:17 A | 106 | 100% | 2017-08-07 12:33 | 2017-08-07 19:49 | 0.91d | Fitter | 7.25h | 7.25h | 498.44 | 498.44 | 498.44 |
| 108 | 1.7.4.14 | LS3-WELDING |  | 19h | 2017-08-08 13:17 A | 2017-08-09 16:19 A | 107 | 100% | 2017-08-07 19:49 | 2017-08-09 06:50 | 19h | Helper; SAW Welder | 21.5h | 21.5h | 1,431.25 | 1,431.25 | 1,431.25 |
| 109 | 1.7.4.15 | LS3-FLUSHGRIND |  | 6h | 2017-08-09 16:19 A | 2017-08-10 06:19 A | 108 | 100% | 2017-08-09 06:50 | 2017-08-09 12:50 | 6h | Grinder | 6h | 6h | 337.5 | 337.5 | 337.5 |
| 110 | 1.7.4.16 | LS3-REROLLING |  | 3h | 2017-08-10 06:19 A | 2017-08-10 09:19 A | 109 | 100% | 2017-08-09 12:50 | 2017-08-09 15:51 | 3h | Fitter; Helper | 5h | 5h | 306.25 | 306.25 | 306.25 |
| 111 | 1.7.4.17 | LS3-DPCHECK |  | 2h | 2017-08-10 09:19 A | 2017-08-10 11:19 A | 110 | 100% | 2017-08-09 15:51 | 2017-08-09 17:51 | 2h | Fitter | 2h | 2h | 137.5 | 137.5 | 137.5 |
| 112 | 1.7.4.18 | LS3-RADIOGRAPHY |  | 1.81d | 2017-08-10 11:19 A | 2017-08-14 09:49 A | 111 | 100% | 2017-08-09 17:51 | 2017-08-10 16:22 | 1.81d |  |  |  |  |  |  |
| 113 | 1.7.5 | **SHELL LS4- FABRICATION** |  | 6.31d | 2017-08-05 06:00 A | 2017-08-14 11:00 A |  | 100% | 2017-08-04 12:31 | 2017-08-10 18:22 | 10.72d |  | 105.5h | 105.5h | 6,375 | 6,375 | 6,375 |
| 114 | 1.7.5.1 | LS4-PLATE MARKING |  | 2h | 2017-08-05 06:00 A | 2017-08-05 08:00 A | 34, 95 | 100% | 2017-08-04 12:31 | 2017-08-04 14:32 | 2h | Fitter; Helper | 4h | 4h | 237.5 | 237.5 | 237.5 |
| 115 | 1.7.5.2 | LS4-STAMPING |  | 1h | 2017-08-05 08:00 A | 2017-08-05 09:00 A | 114 | 100% | 2017-08-04 14:32 | 2017-08-04 15:32 | 1h | Fitter | 1h | 1h | 68.75 | 68.75 | 68.75 |
| 116 | 1.7.5.3 | LS4-PL CUTTING |  | 2h | 2017-08-05 09:00 A | 2017-08-05 11:00 A | 115 | 100% | 2017-08-04 15:32 | 2017-08-04 17:32 | 2h | Gas Cutter; Helper | 4h | 4h | 237.5 | 237.5 | 237.5 |
| 117 | 1.7.5.4 | LS4-GRINDING |  | 6h | 2017-08-05 11:00 A | 2017-08-05 17:01 A | 116 | 100% | 2017-08-04 17:32 | 2017-08-05 07:32 | 6h | Grinder | 6h | 6h | 337.5 | 337.5 | 337.5 |
| 118 | 1.7.5.5 | LS4-EDGE PREPARATION |  | 4h | 2017-08-05 17:01 A | 2017-08-05 21:01 A | 117 | 100% | 2017-08-05 07:32 | 2017-08-05 11:32 | 4h | Grinder | 4h | 4h | 225 | 225 | 225 |
| 119 | 1.7.5.6 | LS4-PREBENDING |  | 3h | 2017-08-05 21:01 A | 2017-08-07 08:01 A | 118 | 100% | 2017-08-05 11:32 | 2017-08-05 14:33 | 3h | Fitter; Helper | 3.5h | 3.5h | 231.25 | 231.25 | 231.25 |
| 120 | 1.7.5.7 | LS4-PREBEND CUTOFF |  | 2h | 2017-08-07 08:01 A | 2017-08-07 10:01 A | 119 | 100% | 2017-08-05 14:33 | 2017-08-05 16:33 | 2h | Gas Cutter | 2h | 2h | 137.5 | 137.5 | 137.5 |
| 121 | 1.7.5.8 | LS4-EDGE PREPARTION |  | 4h | 2017-08-07 10:01 A | 2017-08-07 14:02 A | 120 | 100% | 2017-08-05 16:33 | 2017-08-05 20:33 | 4h | Grinder | 4h | 4h | 225 | 225 | 225 |
| 122 | 1.7.5.9 | LS4-ROLLING |  | 3h | 2017-08-07 14:02 A | 2017-08-07 17:02 A | 121 | 100% | 2017-08-05 20:33 | 2017-08-07 07:33 | 3h | Fitter; Helper | 6h | 6h | 356.25 | 356.25 | 356.25 |
| 123 | 1.7.5.10 | LS4-ACID CLEANING | milestone | 0h | 2017-08-07 17:02 A | 2017-08-07 17:02 A | 122 | 100% | 2017-08-07 07:33 | 2017-08-07 07:33 | 0h | Helper [200%] |  |  |  |  |  |
| 124 | 1.7.5.11 | LS4-FITUP |  | 4h | 2017-08-07 17:02 A | 2017-08-07 21:02 A | 123 | 100% | 2017-08-07 07:33 | 2017-08-07 11:33 | 4h | Fitter; Helper; SAW Welder | 8.75h | 8.75h | 526.56 | 526.56 | 526.56 |
| 125 | 1.7.5.12 | LS4-SPIDERUP |  | 3h | 2017-08-07 21:02 A | 2017-08-08 08:02 A | 124 | 100% | 2017-08-07 11:33 | 2017-08-07 14:34 | 3h | Fitter | 3h | 3h | 206.25 | 206.25 | 206.25 |
| 126 | 1.7.5.13 | LS4-FITUP INSPECTION |  | 0.91d | 2017-08-08 08:02 A | 2017-08-08 15:18 A | 125 | 100% | 2017-08-07 14:34 | 2017-08-07 21:49 | 0.91d | Fitter | 7.25h | 7.25h | 498.44 | 498.44 | 498.44 |
| 127 | 1.7.5.14 | LS4-WELDING |  | 19h | 2017-08-08 15:18 A | 2017-08-09 18:19 A | 126 | 100% | 2017-08-07 21:49 | 2017-08-09 08:50 | 19h | Helper; SAW Welder | 38h | 38h | 2,256.25 | 2,256.25 | 2,256.25 |
| 128 | 1.7.5.15 | LS4-FLUSHGRIND |  | 6h | 2017-08-09 18:19 A | 2017-08-10 08:19 A | 127 | 100% | 2017-08-09 08:50 | 2017-08-09 14:51 | 6h | Grinder | 6h | 6h | 337.5 | 337.5 | 337.5 |
| 129 | 1.7.5.16 | LS4-REROLLING |  | 3h | 2017-08-10 08:19 A | 2017-08-10 11:19 A | 128 | 100% | 2017-08-09 14:51 | 2017-08-09 17:51 | 3h | Fitter; Helper | 6h | 6h | 356.25 | 356.25 | 356.25 |
| 130 | 1.7.5.17 | LS4-DPCHECK |  | 2h | 2017-08-10 11:19 A | 2017-08-10 13:19 A | 129 | 100% | 2017-08-09 17:51 | 2017-08-09 19:51 | 2h | Fitter | 2h | 2h | 137.5 | 137.5 | 137.5 |
| 131 | 1.7.5.18 | LS4-RADIOGRAPHY |  | 1.81d | 2017-08-10 13:30 A | 2017-08-14 11:00 A | 130 | 100% | 2017-08-09 19:51 | 2017-08-10 18:22 | 1.81d |  |  |  |  |  |  |

Notes:
- 95: 2575*2500Lg*22T
- 108: 4.43Kg/m
- 112: SC
- 114: 2575*2500Lg*22T
- 127: 4.43Kg/m
- 131: SC

| ID | WBS | Task | Duration | Start | Finish | Predecessors | Complete | Baseline start | Baseline finish | Baseline duration | Resources | Work | Actual work | Cost | Baseline cost | Actual cost |
| --- | --- | --- | --- | --- | --- | --- | --- | --- | --- | --- | --- | --- | --- | --- | --- | --- |
| 132 | 1.7.6 | **SHELL DISH FORMING** | 7.44d | 2017-08-05 08:00 A | 2017-08-16 12:02 A |  | 100% | 2017-08-04 14:32 | 2017-08-10 21:07 | 10.81d |  | 57.5h | 57.5h | 3,603.13 | 3,603.12 | 3,603.13 |
| 133 | 1.7.6.1 | DISH PLATE MARKING | 3h | 2017-08-05 08:00 A | 2017-08-05 11:00 A | 34, 114 | 100% | 2017-08-04 14:32 | 2017-08-04 17:32 | 3h | Fitter; Helper | 3h | 3h | 206.25 | 206.25 | 206.25 |
| 134 | 1.7.6.2 | DISH PLATE CUTTING | 4h | 2017-08-05 11:00 A | 2017-08-05 15:01 A | 133 | 100% | 2017-08-04 17:32 | 2017-08-04 21:32 | 4h | Gas Cutter | 4h | 4h | 275 | 275 | 275 |
| 135 | 1.7.6.3 | DISH PLATE GRINDING | 5h | 2017-08-05 15:01 A | 2017-08-05 20:01 A | 134 | 100% | 2017-08-04 21:32 | 2017-08-05 10:32 | 5h | Grinder | 5h | 5h | 281.25 | 281.25 | 281.25 |
| 136 | 1.7.6.4 | DISH FORMING | 3.62d | 2017-08-07 08:30 A | 2017-08-10 14:30 A | 135 | 100% | 2017-08-05 10:32 | 2017-08-08 07:34 | 3.62d |  |  |  |  |  |  |
| 137 | 1.7.6.5 | DISH INSPECTION | 1.81d | 2017-08-10 14:30 A | 2017-08-11 13:00 A | 136 | 100% | 2017-08-08 07:34 | 2017-08-09 06:05 | 1.81d | Fitter | 14.5h | 14.5h | 996.88 | 996.88 | 996.88 |
| 138 | 1.7.6.6 | DISH SURFACE GRINDING | 12h | 2017-08-11 13:00 A | 2017-08-14 09:01 A | 137 | 100% | 2017-08-09 06:05 | 2017-08-09 18:06 | 12h | Grinder | 12h | 12h | 675 | 675 | 675 |
| 139 | 1.7.6.7 | SF MARKING | 4h | 2017-08-14 09:01 A | 2017-08-14 13:01 A | 138 | 100% | 2017-08-09 18:06 | 2017-08-10 06:06 | 4h | Fitter | 4h | 4h | 275 | 275 | 275 |
| 140 | 1.7.6.8 | SF CUTTING | 4h | 2017-08-14 13:01 A | 2017-08-14 17:02 A | 139 | 100% | 2017-08-10 06:06 | 2017-08-10 10:06 | 4h | Gas Cutter | 4h | 4h | 275 | 275 | 275 |
| 141 | 1.7.6.9 | GRINDING | 6h | 2017-08-14 17:02 A | 2017-08-16 07:02 A | 140 | 100% | 2017-08-10 10:06 | 2017-08-10 16:07 | 6h | Grinder | 6h | 6h | 337.5 | 337.5 | 337.5 |
| 142 | 1.7.6.10 | DISH EP | 5h | 2017-08-16 07:02 A | 2017-08-16 12:02 A | 141 | 100% | 2017-08-10 16:07 | 2017-08-10 21:07 | 5h | Grinder | 5h | 5h | 281.25 | 281.25 | 281.25 |
| 143 | 1.7.7 | **PASS PARTITION PLATE WELDING** | 6.75d | 2017-08-04 16:00 A | 2017-08-14 14:02 A |  | 100% | 2017-08-04 06:31 | 2017-08-11 06:52 | 12.03d |  | 59h | 59h | 3,650 | 3,650 | 3,650 |
| 144 | 1.7.7.1 | PP PLATE MARKING | 3h | 2017-08-04 16:00 A | 2017-08-04 19:00 A | 42 | 100% | 2017-08-04 06:31 | 2017-08-04 09:31 | 3h | Fitter; Helper | 3h | 3h | 206.25 | 206.25 | 206.25 |
| 145 | 1.7.7.2 | CUTTING | 4h | 2017-08-04 19:00 A | 2017-08-05 07:00 A | 144 | 100% | 2017-08-04 09:31 | 2017-08-04 13:31 | 4h | Gas Cutter | 4h | 4h | 275 | 275 | 275 |
| 146 | 1.7.7.3 | GRINDING | 6h | 2017-08-05 07:00 A | 2017-08-05 13:00 A | 145 | 100% | 2017-08-04 13:31 | 2017-08-04 19:32 | 6h | Grinder | 6h | 6h | 337.5 | 337.5 | 337.5 |
| 147 | 1.7.7.4 | WELD OVERLAY | 10h | 2017-08-05 13:00 A | 2017-08-07 07:01 A | 146 | 100% | 2017-08-04 19:32 | 2017-08-05 13:32 | 10h | SAW Welder; Helper | 16h | 16h | 987.5 | 987.5 | 987.5 |
| 148 | 1.7.7.5 | WELDING ONTO CHANNEL | 15h | 2017-08-10 16:00 A | 2017-08-11 15:01 A | 56, 147 | 100% | 2017-08-09 08:50 | 2017-08-10 07:51 | 15h | SAW Welder; Helper | 15h | 15h | 1,031.25 | 1,031.25 | 1,031.25 |
| 149 | 1.7.7.6 | FLUSH GRIND | 10h | 2017-08-11 15:01 A | 2017-08-14 09:01 A | 148 | 100% | 2017-08-10 07:51 | 2017-08-10 17:52 | 10h | Grinder | 10h | 10h | 562.5 | 562.5 | 562.5 |
| 150 | 1.7.7.7 | CLEANING | 5h | 2017-08-14 09:01 A | 2017-08-14 14:02 A | 149 | 100% | 2017-08-10 17:52 | 2017-08-11 06:52 | 5h | Helper | 5h | 5h | 250 | 250 | 250 |
| 151 | 1.7.8 | **NOZZLE FABRICATION** | 2.69d | 2017-08-05 11:00 A | 2017-08-08 20:03 A |  | 100% | 2017-08-04 17:32 | 2017-08-08 10:34 | 5.12d |  | 80.5h | 80.5h | 5,280 | 5,280 | 5,280 |
| 152 | 1.7.8.1 | PIPE MARKING | 2h | 2017-08-05 11:00 A | 2017-08-05 13:00 A | 38, 133 | 100% | 2017-08-04 17:32 | 2017-08-04 19:32 | 2h | Fitter [200%]; Helper | 4.5h | 4.5h | 300 | 300 | 300 |
| 153 | 1.7.8.2 | STAMPING | 2h | 2017-08-05 13:00 A | 2017-08-05 15:01 A | 152 | 100% | 2017-08-04 19:32 | 2017-08-04 21:32 | 2h | Fitter | 2h | 2h | 137.5 | 137.5 | 137.5 |
| 154 | 1.7.8.3 | CUTTING | 2h | 2017-08-05 15:01 A | 2017-08-05 17:01 A | 153 | 100% | 2017-08-04 21:32 | 2017-08-05 07:32 | 2h | Gas Cutter [200%]; Helper | 6h | 6h | 375 | 375 | 375 |
| 155 | 1.7.8.4 | EDGE PREPARATION | 2h | 2017-08-05 17:01 A | 2017-08-05 19:01 A | 154 | 100% | 2017-08-05 07:32 | 2017-08-05 09:32 | 2h | Grinder | 2h | 2h | 112.5 | 112.5 | 112.5 |
| 156 | 1.7.8.5 | FLANGE FIT UP | 2.5h | 2017-08-05 19:01 A | 2017-08-05 21:31 A | 39, 155 | 100% | 2017-08-05 09:32 | 2017-08-05 12:02 | 2.5h | Fitter [200%]; Helper | 5h | 5h | 343.75 | 343.75 | 343.75 |
| 157 | 1.7.8.6 | WELDING | 3h | 2017-08-05 21:31 A | 2017-08-07 08:31 A | 156 | 100% | 2017-08-05 12:02 | 2017-08-05 15:03 | 3h | SAW Welder [200%]; Helper | 9h | 9h | 562.5 | 562.5 | 562.5 |
| 158 | 1.7.8.7 | FLUSH GRIND | 2h | 2017-08-07 08:31 A | 2017-08-07 10:31 A | 157 | 100% | 2017-08-05 15:03 | 2017-08-05 17:03 | 2h | Grinder [200%] | 4h | 4h | 225 | 225 | 225 |
| 159 | 1.7.8.8 | INSIDE WELDING | 3h | 2017-08-07 10:31 A | 2017-08-07 13:31 A | 158 | 100% | 2017-08-05 17:03 | 2017-08-05 20:03 | 3h | SAW Welder [200%]; Helper | 9h | 9h | 562.5 | 562.5 | 562.5 |
| 160 | 1.7.8.9 | FLUSH GRIND | 2h | 2017-08-07 13:31 A | 2017-08-07 15:32 A | 159 | 100% | 2017-08-05 20:03 | 2017-08-07 06:03 | 2h | Grinder [200%] | 4h | 4h | 225 | 225 | 225 |
| 161 | 1.7.8.10 | DP CHECK | 2h | 2017-08-07 15:32 A | 2017-08-07 17:32 A | 160 | 100% | 2017-08-07 06:03 | 2017-08-07 08:03 | 2h | Fitter | 2h | 2h | 137.5 | 137.5 | 137.5 |
| 162 | 1.7.8.11 | MACHINING | 4h | 2017-08-07 17:32 A | 2017-08-07 21:32 A | 161 | 100% | 2017-08-07 08:03 | 2017-08-07 12:03 | 4h | Lathe Operator | 4h | 4h | 480 | 480 | 480 |
| 163 | 1.7.8.12 | PROFILE MARKING | 3.5h | 2017-08-07 21:32 A | 2017-08-08 09:02 A | 162 | 100% | 2017-08-07 12:03 | 2017-08-07 15:34 | 3.5h | Fitter [200%] | 7h | 7h | 481.25 | 481.25 | 481.25 |
| 164 | 1.7.8.13 | PROFILE CUTTING | 4h | 2017-08-08 09:02 A | 2017-08-08 13:02 A | 163 | 100% | 2017-08-07 15:34 | 2017-08-07 19:34 | 4h | Fitter [200%] | 8h | 8h | 550 | 550 | 550 |
| 165 | 1.7.8.14 | PROFILE GRINDING | 4h | 2017-08-08 13:02 A | 2017-08-08 17:03 A | 164 | 100% | 2017-08-07 19:34 | 2017-08-08 07:34 | 4h | Grinder [200%] | 8h | 8h | 450 | 450 | 450 |
| 166 | 1.7.8.15 | EDEGE PREPARATION | 3h | 2017-08-08 17:03 A | 2017-08-08 20:03 A | 165 | 100% | 2017-08-08 07:34 | 2017-08-08 10:34 | 3h | Grinder [200%] | 6h | 6h | 337.5 | 337.5 | 337.5 |

Notes:
- 133: ID 820*24/22T
- 136: SC
- 144: 1NO
- 151: 2NOS

| ID | WBS | Task | Duration | Start | Finish | Predecessors | Complete | Baseline start | Baseline finish | Baseline duration | Resources | Work | Actual work | Cost | Baseline cost | Actual cost |
| --- | --- | --- | --- | --- | --- | --- | --- | --- | --- | --- | --- | --- | --- | --- | --- | --- |
| 167 | 1.7.9 | **NOZZLE FABRICATION(LS)** | 23.8d | 2017-08-05 13:00 A | 2017-09-07 10:52 A |  | 100% | 2017-08-04 19:32 | 2017-09-05 17:25 | 45.69d |  | 370h | 370h | 23,916.25 | 23,916.25 | 23,916.25 |
| 168 | 1.7.9.1 | LS-PLATE MARKING | 7h | 2017-08-05 13:00 A | 2017-08-05 20:01 A | 34, 152 | 100% | 2017-08-04 19:32 | 2017-08-05 10:32 | 7h | Fitter; Helper | 7h | 7h | 481.25 | 481.25 | 481.25 |
| 169 | 1.7.9.2 | LS- STAMPING | 7h | 2017-08-05 20:01 A | 2017-08-07 11:01 A | 168 | 100% | 2017-08-05 10:32 | 2017-08-05 17:33 | 7h | Fitter | 7h | 7h | 481.25 | 481.25 | 481.25 |
| 170 | 1.7.9.3 | LS-PL CUTTING | 10h | 2017-08-07 11:01 A | 2017-08-07 21:02 A | 169 | 100% | 2017-08-05 17:33 | 2017-08-07 11:33 | 10h | Gas Cutter; Helper | 10h | 10h | 687.5 | 687.5 | 687.5 |
| 171 | 1.7.9.4 | LS-GRINDING | 15h | 2017-08-07 21:02 A | 2017-08-08 20:03 A | 170 | 100% | 2017-08-07 11:33 | 2017-08-08 10:34 | 15h | Grinder | 15h | 15h | 843.75 | 843.75 | 843.75 |
| 172 | 1.7.9.5 | LS-EDGE PREPARATION | 12h | 2017-08-08 20:03 A | 2017-08-09 16:04 A | 171 | 100% | 2017-08-08 10:34 | 2017-08-09 06:35 | 12h | Grinder | 12h | 12h | 675 | 675 | 675 |
| 173 | 1.7.9.6 | LS-PRE BENDING | 25h | 2017-08-09 16:04 A | 2017-08-11 09:05 A | 172 | 100% | 2017-08-09 06:35 | 2017-08-10 15:37 | 25h | Fitter; Helper | 26h | 26h | 1,318.75 | 1,318.75 | 1,318.75 |
| 174 | 1.7.9.7 | LS-PREBEND CUTOFF | 8h | 2017-08-11 09:05 A | 2017-08-11 17:06 A | 173 | 100% | 2017-08-10 15:37 | 2017-08-11 07:37 | 8h | Gas Cutter | 8h | 8h | 550 | 550 | 550 |
| 175 | 1.7.9.8 | LS-EDGE PREPARTION | 12h | 2017-08-11 17:06 A | 2017-08-14 13:06 A | 174 | 100% | 2017-08-11 07:37 | 2017-08-11 19:38 | 12h | Grinder | 12h | 12h | 675 | 675 | 675 |
| 176 | 1.7.9.9 | LS-ROLLING | 25h | 2017-08-14 13:06 A | 2017-08-17 06:08 A | 175 | 100% | 2017-08-11 19:38 | 2017-08-16 12:39 | 25h | Fitter; Helper | 25h | 25h | 1,718.75 | 1,718.75 | 1,718.75 |
| 177 | 1.7.9.10 | LS-ACID CLEANING | 15h | 2017-08-17 06:08 A | 2017-08-17 21:09 A | 176 | 100% | 2017-08-16 12:39 | 2017-08-17 11:40 | 15h | Helper | 15h | 15h | 750 | 750 | 750 |
| 178 | 1.7.9.11 | LS-FITUP | 25h | 2017-08-17 21:09 A | 2017-08-19 14:11 A | 177 | 100% | 2017-08-17 11:40 | 2017-08-18 20:42 | 25h | Fitter; Helper; SAW Welder | 26h | 26h | 1,768.75 | 1,768.75 | 1,768.75 |
| 179 | 1.7.9.12 | LS-SPIDERUP | 8h | 2017-08-19 14:11 A | 2017-08-21 06:11 A | 178 | 100% | 2017-08-18 20:42 | 2017-08-19 12:42 | 8h | Fitter | 8h | 8h | 550 | 550 | 550 |
| 180 | 1.7.9.13 | LS-FITUP INSPECTION | 8h | 2017-08-21 06:11 A | 2017-08-21 14:12 A | 179 | 100% | 2017-08-19 12:42 | 2017-08-19 20:43 | 8h | Fitter | 8h | 8h | 550 | 550 | 550 |
| 181 | 1.7.9.14 | LS-WELDING | 8h | 2017-08-21 14:12 A | 2017-08-22 06:12 A | 180 | 100% | 2017-08-19 20:43 | 2017-08-21 12:43 | 8h | Helper; SAW Welder | 8.5h | 8.5h | 575 | 575 | 575 |
| 182 | 1.7.9.15 | LS-FLUSH GRIND | 8h | 2017-08-22 06:12 A | 2017-08-22 14:13 A | 181 | 100% | 2017-08-21 12:43 | 2017-08-21 20:44 | 8h | Grinder | 8h | 8h | 450 | 450 | 450 |
| 183 | 1.7.9.16 | LS-REROLLING | 25h | 2017-08-22 14:13 A | 2017-08-24 07:14 A | 182 | 100% | 2017-08-21 20:44 | 2017-08-23 13:45 | 25h | Fitter; Helper | 25.5h | 25.5h | 1,743.75 | 1,743.75 | 1,743.75 |
| 184 | 1.7.9.17 | LS-DPCHECK | 10h | 2017-08-24 07:14 A | 2017-08-24 17:15 A | 183 | 100% | 2017-08-23 13:45 | 2017-08-24 07:46 | 10h | Fitter | 10h | 10h | 687.5 | 687.5 | 687.5 |
| 185 | 1.7.9.18 | LS-RADIOGRAPHY | 1.81d | 2017-08-24 17:15 A | 2017-08-29 15:45 A | 184 | 100% | 2017-08-24 07:46 | 2017-08-28 06:17 | 1.81d |  |  |  |  |  |  |
| 186 | 1.7.9.19 | MACHINING IF REQD | 8h | 2017-08-29 15:45 A | 2017-08-30 07:45 A | 185 | 100% | 2017-08-28 06:17 | 2017-08-28 14:18 | 8h | Lathe Operator | 8h | 8h | 960 | 960 | 960 |
| 187 | 1.7.9.20 | FLANGE FIT UP | 12h | 2017-08-30 07:45 A | 2017-08-30 19:46 A | 39, 186 | 100% | 2017-08-28 14:18 | 2017-08-29 10:18 | 12h | Fitter | 12h | 12h | 825 | 825 | 825 |
| 188 | 1.7.9.21 | WELDING | 10h | 2017-08-30 19:46 A | 2017-08-31 13:46 A | 187 | 100% | 2017-08-29 10:18 | 2017-08-29 20:19 | 10h | SAW Welder; Helper | 10h | 10h | 687.5 | 687.5 | 687.5 |
| 189 | 1.7.9.22 | FLUSH GRIND | 8h | 2017-08-31 13:46 A | 2017-08-31 21:47 A | 188 | 100% | 2017-08-29 20:19 | 2017-08-30 12:19 | 8h | Grinder | 8h | 8h | 450 | 450 | 450 |
| 190 | 1.7.9.23 | INSIDE WELDING | 10h | 2017-08-31 21:47 A | 2017-09-01 15:48 A | 189 | 100% | 2017-08-30 12:19 | 2017-08-31 06:20 | 10h | SAW Welder; Helper | 10h | 10h | 687.5 | 687.5 | 687.5 |
| 191 | 1.7.9.24 | FLUSH GRIND | 8h | 2017-09-01 15:48 A | 2017-09-02 07:48 A | 190 | 100% | 2017-08-31 06:20 | 2017-08-31 14:21 | 8h | Grinder | 8h | 8h | 450 | 450 | 450 |
| 192 | 1.7.9.25 | DP CHECK | 10h | 2017-09-02 07:48 A | 2017-09-02 17:49 A | 191 | 100% | 2017-08-31 14:21 | 2017-09-01 08:21 | 10h | Fitter | 10h | 10h | 687.5 | 687.5 | 687.5 |
| 193 | 1.7.9.26 | MACHINING | 5h | 2017-09-02 17:49 A | 2017-09-04 06:49 A | 192 | 100% | 2017-09-01 08:21 | 2017-09-01 13:21 | 5h | Lathe Operator | 5h | 5h | 600 | 600 | 600 |
| 194 | 1.7.9.27 | PROFILE MARKING | 12h | 2017-09-04 06:49 A | 2017-09-04 18:50 A | 193 | 100% | 2017-09-01 13:21 | 2017-09-02 09:22 | 12h | Fitter; Helper | 12.5h | 12.5h | 850 | 850 | 850 |
| 195 | 1.7.9.28 | PROFILE CUTTING | 15h | 2017-09-04 18:50 A | 2017-09-05 17:51 A | 194 | 100% | 2017-09-02 09:22 | 2017-09-04 08:23 | 15h | Gas Cutter; Helper | 30h | 30h | 1,781.25 | 1,781.25 | 1,781.25 |
| 196 | 1.7.9.29 | PROFILE GRINDING | 15h | 2017-09-05 17:51 A | 2017-09-06 16:52 A | 195 | 100% | 2017-09-04 08:23 | 2017-09-05 07:24 | 15h | Grinder; Helper | 15.5h | 15.5h | 868.75 | 868.75 | 868.75 |
| 197 | 1.7.9.30 | EDEGE PREPARATION | 10h | 2017-09-06 16:52 A | 2017-09-07 10:52 A | 196 | 100% | 2017-09-05 07:24 | 2017-09-05 17:25 | 10h | Grinder; Helper | 10h | 10h | 562.5 | 562.5 | 562.5 |

Notes:
- 167: 10NOS
- 185: SC
- 193: 2NOS

| ID | WBS | Task | Duration | Start | Finish | Predecessors | Complete | Baseline start | Baseline finish | Baseline duration | Resources | Work | Actual work | Cost | Baseline cost | Actual cost |
| --- | --- | --- | --- | --- | --- | --- | --- | --- | --- | --- | --- | --- | --- | --- | --- | --- |
| 198 | 1.7.10 | **TUBESHEET FABRICATION** | 8.33d | 2017-08-04 16:00 A | 2017-08-17 09:38 A |  | 100% | 2017-08-04 06:31 | 2017-08-16 16:10 | 17.19d |  | 201.5h | 201.5h | 13,355.63 | 13,355.62 | 13,355.63 |
| 199 | 1.7.10.1 | PLATE MARKING | 3h | 2017-08-04 16:00 A | 2017-08-04 19:00 A | 41 | 100% | 2017-08-04 06:31 | 2017-08-04 09:31 | 3h | Fitter; Helper | 3h | 3h | 206.25 | 206.25 | 206.25 |
| 200 | 1.7.10.2 | STAMPING | 3h | 2017-08-04 19:00 A | 2017-08-04 22:00 A | 199 | 100% | 2017-08-04 09:31 | 2017-08-04 12:31 | 3h | Fitter | 3h | 3h | 206.25 | 206.25 | 206.25 |
| 201 | 1.7.10.3 | PLASMA ARC CUTTING | 9h | 2017-08-05 06:00 A | 2017-08-05 15:01 A | 200 | 100% | 2017-08-04 12:31 | 2017-08-04 21:32 | 9h | Gas Cutter; Helper | 18h | 18h | 1,068.75 | 1,068.75 | 1,068.75 |
| 202 | 1.7.10.4 | GRINDING | 10h | 2017-08-05 15:01 A | 2017-08-07 09:01 A | 201 | 100% | 2017-08-04 21:32 | 2017-08-05 15:33 | 10h | Grinder | 10h | 10h | 562.5 | 562.5 | 562.5 |
| 203 | 1.7.10.5 | INSPECTION | 0.91d | 2017-08-07 09:01 A | 2017-08-07 16:17 A | 202 | 100% | 2017-08-05 15:33 | 2017-08-07 06:48 | 0.91d | Fitter | 7.25h | 7.25h | 498.44 | 498.44 | 498.44 |
| 204 | 1.7.10.6 | MACHINING | 7h | 2017-08-07 16:17 A | 2017-08-08 07:17 A | 203 | 100% | 2017-08-07 06:48 | 2017-08-07 13:48 | 7h | Lathe Operator | 7h | 7h | 840 | 840 | 840 |
| 205 | 1.7.10.7 | HOLES MARKING | 20h | 2017-08-08 07:17 A | 2017-08-09 11:18 A | 204 | 100% | 2017-08-07 13:48 | 2017-08-08 17:50 | 20h | Fitter | 20h | 20h | 1,375 | 1,375 | 1,375 |
| 206 | 1.7.10.8 | DRILLING | 36h | 2017-08-09 11:18 A | 2017-08-11 15:21 A | 205 | 100% | 2017-08-08 17:50 | 2017-08-10 21:52 | 36h | Driller | 36h | 36h | 2,475 | 2,475 | 2,475 |
| 207 | 1.7.10.9 | EXPANSION GROOVING | 25h | 2017-08-11 15:21 A | 2017-08-16 08:22 A | 206 | 100% | 2017-08-10 21:52 | 2017-08-14 14:54 | 25h | Fitter [200%]; Helper | 75h | 75h | 4,687.5 | 4,687.5 | 4,687.5 |
| 208 | 1.7.10.10 | TIE ROD HOLE MARKING | 5h | 2017-08-16 08:22 A | 2017-08-16 13:22 A | 207 | 100% | 2017-08-14 14:54 | 2017-08-14 19:54 | 5h | Fitter; Helper | 10h | 10h | 593.75 | 593.75 | 593.75 |
| 209 | 1.7.10.11 | TIE ROD HOLE DRILLING | 5h | 2017-08-16 13:22 A | 2017-08-16 18:23 A | 208 | 100% | 2017-08-14 19:54 | 2017-08-16 08:54 | 5h | Driller | 5h | 5h | 343.75 | 343.75 | 343.75 |
| 210 | 1.7.10.12 | FINAL INSPECTION | 0.91d | 2017-08-16 18:23 A | 2017-08-17 09:38 A | 209 | 100% | 2017-08-16 08:54 | 2017-08-16 16:10 | 0.91d | Fitter | 7.25h | 7.25h | 498.44 | 498.44 | 498.44 |
| 211 | 1.7.11 | **SUPPORT PLATE PREPARATION** | 9d | 2017-08-04 19:00 A | 2017-08-17 18:09 A |  | 100% | 2017-08-04 09:31 | 2017-08-17 08:40 | 17.88d |  | 166h | 166h | 11,677.5 | 11,677.5 | 11,677.5 |
| 212 | 1.7.11.1 | PLATE MARKING | 4h | 2017-08-04 19:00 A | 2017-08-05 07:00 A | 44, 199 | 100% | 2017-08-04 09:31 | 2017-08-04 13:31 | 4h | Fitter; Helper | 4h | 4h | 200 | 200 | 200 |
| 213 | 1.7.11.2 | CUTTING | 3h | 2017-08-05 07:00 A | 2017-08-05 10:00 A | 212 | 100% | 2017-08-04 13:31 | 2017-08-04 16:32 | 3h | Gas Cutter; Helper | 6h | 6h | 356.25 | 356.25 | 356.25 |
| 214 | 1.7.11.3 | GRINDING | 3h | 2017-08-05 10:00 A | 2017-08-05 13:00 A | 213 | 100% | 2017-08-04 16:32 | 2017-08-04 19:32 | 3h | Grinder; Helper | 6h | 6h | 318.75 | 318.75 | 318.75 |
| 215 | 1.7.11.4 | AXIS LINE MARKING | 2h | 2017-08-05 13:00 A | 2017-08-05 15:01 A | 214 | 100% | 2017-08-04 19:32 | 2017-08-04 21:32 | 2h | Fitter | 2h | 2h | 137.5 | 137.5 | 137.5 |
| 216 | 1.7.11.5 | DRILLING | 60h | 2017-08-05 15:01 A | 2017-08-10 11:04 A | 215 | 100% | 2017-08-04 21:32 | 2017-08-09 17:36 | 60h | Driller | 60h | 60h | 4,125 | 4,125 | 4,125 |
| 217 | 1.7.11.6 | DRILLING INSPECTION | 10h | 2017-08-10 11:04 A | 2017-08-10 21:05 A | 216 | 100% | 2017-08-09 17:36 | 2017-08-10 11:36 | 10h | Driller | 10h | 10h | 687.5 | 687.5 | 687.5 |
| 218 | 1.7.11.7 | OD MACHINING | 22h | 2017-08-10 21:05 A | 2017-08-14 11:06 A | 217 | 100% | 2017-08-10 11:36 | 2017-08-11 17:38 | 22h | Lathe Operator | 22h | 22h | 2,640 | 2,640 | 2,640 |
| 219 | 1.7.11.8 | GRINDING | 15h | 2017-08-14 11:06 A | 2017-08-16 10:07 A | 218 | 100% | 2017-08-11 17:38 | 2017-08-14 16:39 | 15h | Grinder | 15h | 15h | 843.75 | 843.75 | 843.75 |
| 220 | 1.7.11.9 | HOLE CHAMFERING | 20h | 2017-08-16 10:07 A | 2017-08-17 14:09 A | 219 | 100% | 2017-08-14 16:39 | 2017-08-16 20:40 | 20h | Fitter [200%]; Helper | 37h | 37h | 2,168.75 | 2,168.75 | 2,168.75 |
| 221 | 1.7.11.10 | CLEANING | 4h | 2017-08-17 14:09 A | 2017-08-17 18:09 A | 220 | 100% | 2017-08-16 20:40 | 2017-08-17 08:40 | 4h | Helper | 4h | 4h | 200 | 200 | 200 |

Notes:
- 199: DIA929*100T
- 205: 424HOLES
- 212: DIA815.2*8T
- 216: 424HOLES

| ID | WBS | Task | Duration | Start | Finish | Predecessors | Complete | Baseline start | Baseline finish | Baseline duration | Resources | Work | Actual work | Cost | Baseline cost | Actual cost |
| --- | --- | --- | --- | --- | --- | --- | --- | --- | --- | --- | --- | --- | --- | --- | --- | --- |
| 222 | 1.7.12 | **BAFFLE PLATE PREPARATION** | 81.74d | 2017-08-05 07:00 A | 2017-11-22 15:23 A |  | 100% | 2017-08-04 13:31 | 2017-11-21 21:54 | 164.88d |  | 1654.5h | 1654.5h | 123,156.25 | 123,156.25 | 123,156.25 |
| 223 | 1.7.12.1 | PLATE MARKING | 40h | 2017-08-05 07:00 A | 2017-08-08 15:03 A | 212 | 100% | 2017-08-04 13:31 | 2017-08-07 21:34 | 40h | Fitter; Helper | 66h | 66h | 4,050 | 4,050 | 4,050 |
| 224 | 1.7.12.2 | CUTTING | 25h | 2017-08-08 15:03 A | 2017-08-10 08:04 A | 223 | 100% | 2017-08-07 21:34 | 2017-08-09 14:36 | 25h | Gas Cutter; Helper | 37.5h | 37.5h | 2,343.75 | 2,343.75 | 2,343.75 |
| 225 | 1.7.12.3 | GRINDING | 30h | 2017-08-10 08:04 A | 2017-08-14 06:06 A | 224 | 100% | 2017-08-09 14:36 | 2017-08-11 12:37 | 30h | Grinder; Helper | 60h | 60h | 3,187.5 | 3,187.5 | 3,187.5 |
| 226 | 1.7.12.4 | AXIS LINE MARKING | 10h | 2017-08-14 06:06 A | 2017-08-14 16:07 A | 225 | 100% | 2017-08-11 12:37 | 2017-08-14 06:38 | 10h | Fitter | 10h | 10h | 687.5 | 687.5 | 687.5 |
| 227 | 1.7.12.5 | STACKKING | 8h | 2017-08-14 16:07 A | 2017-08-16 08:07 A | 226 | 100% | 2017-08-14 06:38 | 2017-08-14 14:39 | 8h | Helper | 8h | 8h | 400 | 400 | 400 |
| 228 | 1.7.12.6 | DRILLING | 470h | 2017-08-16 08:07 A | 2017-09-22 14:37 A | 227 | 100% | 2017-08-14 14:39 | 2017-09-21 21:08 | 470h | Driller | 470h | 470h | 32,312.5 | 32,312.5 | 32,312.5 |
| 229 | 1.7.12.7 | DRILLING INSPECTION | 25h | 2017-09-22 14:37 A | 2017-09-26 07:38 A | 228 | 100% | 2017-09-21 21:08 | 2017-09-25 14:10 | 25h | Driller | 25h | 25h | 1,718.75 | 1,718.75 | 1,718.75 |
| 230 | 1.7.12.8 | OD MACHINING | 240h | 2017-09-26 07:38 A | 2017-10-16 07:53 A | 229 | 100% | 2017-09-25 14:10 | 2017-10-13 14:25 | 240h | Lathe Operator | 240h | 240h | 28,800 | 28,800 | 28,800 |
| 231 | 1.7.12.9 | DE-STACKING | 8h | 2017-10-16 07:53 A | 2017-10-16 15:54 A | 230 | 100% | 2017-10-13 14:25 | 2017-10-16 06:25 | 8h | Helper | 8h | 8h | 400 | 400 | 400 |
| 232 | 1.7.12.10 | GRIND THE STACKS | 16h | 2017-10-16 15:54 A | 2017-10-17 15:55 A | 231 | 100% | 2017-10-16 06:25 | 2017-10-17 06:26 | 16h | Grinder | 16h | 16h | 900 | 900 | 900 |
| 233 | 1.7.12.11 | HOLE CHAMFERING | 240h | 2017-10-17 15:55 A | 2017-11-06 16:10 A | 232 | 100% | 2017-10-17 06:26 | 2017-11-06 06:41 | 240h | Fitter [200%]; Helper | 487h | 487h | 33,350 | 33,350 | 33,350 |
| 234 | 1.7.12.12 | NUMERING | 8h | 2017-11-06 16:10 A | 2017-11-07 08:10 A | 233 | 100% | 2017-11-06 06:41 | 2017-11-06 14:42 | 8h | Fitter; Helper | 16h | 16h | 950 | 950 | 950 |
| 235 | 1.7.12.13 | SUPPORT PLATES ASSY | 12h | 2017-11-07 08:10 A | 2017-11-07 20:11 A | 234 | 100% | 2017-11-06 14:42 | 2017-11-07 10:42 | 12h | Fitter; Helper | 24h | 24h | 1,425 | 1,425 | 1,425 |
| 236 | 1.7.12.14 | HOLE MATCHING | 150h | 2017-11-07 20:11 A | 2017-11-20 10:20 A | 235 | 100% | 2017-11-07 10:42 | 2017-11-18 16:52 | 150h | Fitter | 150h | 150h | 10,312.5 | 10,312.5 | 10,312.5 |
| 237 | 1.7.12.15 | HOLES DRILLING IF REQD | 25h | 2017-11-20 10:20 A | 2017-11-21 19:22 A | 236 | 100% | 2017-11-18 16:52 | 2017-11-21 09:53 | 25h | Driller | 25h | 25h | 1,718.75 | 1,718.75 | 1,718.75 |
| 238 | 1.7.12.16 | CLEANING | 12h | 2017-11-21 19:22 A | 2017-11-22 15:23 A | 237 | 100% | 2017-11-21 09:53 | 2017-11-21 21:54 | 12h | Helper | 12h | 12h | 600 | 600 | 600 |
| 239 | 1.7.13 | **SEALING STRIP** | 2.31d | 2017-08-08 15:03 A | 2017-08-10 18:35 A |  | 100% | 2017-08-07 21:34 | 2017-08-10 09:06 | 4.44d |  | 52h | 52h | 3,328.13 | 3,328.12 | 3,328.13 |
| 240 | 1.7.13.1 | SEALING STRIP MARKING | 5h | 2017-08-08 15:03 A | 2017-08-08 20:03 A | 51, 223 | 100% | 2017-08-07 21:34 | 2017-08-08 10:34 | 5h | Fitter [200%] | 10h | 10h | 687.5 | 687.5 | 687.5 |
| 241 | 1.7.13.2 | SEALING STRIP CUTTING | 6.5h | 2017-08-08 20:03 A | 2017-08-09 10:33 A | 240 | 100% | 2017-08-08 10:34 | 2017-08-08 17:05 | 6.5h | Gas Cutter; Helper | 11h | 11h | 634.38 | 634.38 | 634.38 |
| 242 | 1.7.13.3 | STRIP GRINDING | 10h | 2017-08-09 10:33 A | 2017-08-09 20:34 A | 241 | 100% | 2017-08-08 17:05 | 2017-08-09 11:05 | 10h | Grinder | 10h | 10h | 562.5 | 562.5 | 562.5 |
| 243 | 1.7.13.4 | STRIP BEND REMEOVAL | 7h | 2017-08-09 20:34 A | 2017-08-10 11:34 A | 242 | 100% | 2017-08-09 11:05 | 2017-08-09 18:06 | 7h | Fitter [200%] | 14h | 14h | 962.5 | 962.5 | 962.5 |
| 244 | 1.7.13.5 | STRIP MATCHING | 7h | 2017-08-10 11:34 A | 2017-08-10 18:35 A | 243 | 100% | 2017-08-09 18:06 | 2017-08-10 09:06 | 7h | Fitter | 7h | 7h | 481.25 | 481.25 | 481.25 |
| 245 | 1.7.14 | **SLIDING STRIP** | 2d | 2017-08-08 20:03 A | 2017-08-11 08:05 A |  | 100% | 2017-08-08 10:34 | 2017-08-10 14:37 | 4.5d |  | 49h | 49h | 3,225 | 3,225 | 3,225 |
| 246 | 1.7.14.1 | SEALING STRIP MARKING | 5h | 2017-08-08 20:03 A | 2017-08-09 09:03 A | 51, 240 | 100% | 2017-08-08 10:34 | 2017-08-08 15:35 | 5h | Fitter [200%] | 10h | 10h | 687.5 | 687.5 | 687.5 |
| 247 | 1.7.14.2 | SEAL/SLIDING STRIP CUTTING | 7h | 2017-08-09 09:03 A | 2017-08-09 16:04 A | 246 | 100% | 2017-08-08 15:35 | 2017-08-09 06:35 | 7h | Gas Cutter; Helper | 8h | 8h | 531.25 | 531.25 | 531.25 |
| 248 | 1.7.14.3 | STRIP GRINDING | 10h | 2017-08-09 16:04 A | 2017-08-10 10:04 A | 247 | 100% | 2017-08-09 06:35 | 2017-08-09 16:36 | 10h | Grinder | 10h | 10h | 562.5 | 562.5 | 562.5 |
| 249 | 1.7.14.4 | STRIP BEND REMEOVAL | 7h | 2017-08-10 10:04 A | 2017-08-10 17:05 A | 248 | 100% | 2017-08-09 16:36 | 2017-08-10 07:36 | 7h | Fitter [200%] | 14h | 14h | 962.5 | 962.5 | 962.5 |
| 250 | 1.7.14.5 | STRIP MATCHING | 7h | 2017-08-10 17:05 A | 2017-08-11 08:05 A | 249 | 100% | 2017-08-10 07:36 | 2017-08-10 14:37 | 7h | Fitter | 7h | 7h | 481.25 | 481.25 | 481.25 |

Notes:
- 222: 16NOS
- 223: DIA815.2*8T
- 239: 4NOS

| ID | WBS | Task | Duration | Start | Finish | Predecessors | Complete | Baseline start | Baseline finish | Baseline duration | Resources | Work | Actual work | Cost | Baseline cost | Actual cost |
| --- | --- | --- | --- | --- | --- | --- | --- | --- | --- | --- | --- | --- | --- | --- | --- | --- |
| 251 | 1.7.15 | **TIE ROD PREPARATION** | 1.93d | 2017-08-09 09:03 A | 2017-08-11 07:35 A |  | 100% | 2017-08-08 15:35 | 2017-08-10 14:07 | 3.81d |  | 32h | 32h | 2,646.87 | 2,646.88 | 2,646.87 |
| 252 | 1.7.15.1 | TIE ROD MARKING | 3.5h | 2017-08-09 09:03 A | 2017-08-09 12:33 A | 52, 246 | 100% | 2017-08-08 15:35 | 2017-08-08 19:05 | 3.5h | Fitter; Helper | 5h | 5h | 278.12 | 278.12 | 278.12 |
| 253 | 1.7.15.2 | TIE ROD CUTTING | 5h | 2017-08-09 12:33 A | 2017-08-09 17:34 A | 252 | 100% | 2017-08-08 19:05 | 2017-08-09 08:05 | 5h | Gas Cutter; Helper | 5h | 5h | 343.75 | 343.75 | 343.75 |
| 254 | 1.7.15.3 | LENGTH JOINT WELDING IF REQD | 6h | 2017-08-09 17:34 A | 2017-08-10 07:34 A | 253 | 100% | 2017-08-09 08:05 | 2017-08-09 14:06 | 6h | SAW Welder; Helper | 6h | 6h | 412.5 | 412.5 | 412.5 |
| 255 | 1.7.15.4 | THREAD MC | 10h | 2017-08-10 07:34 A | 2017-08-10 17:35 A | 254 | 100% | 2017-08-09 14:06 | 2017-08-10 08:06 | 10h | Lathe Operator | 10h | 10h | 1,200 | 1,200 | 1,200 |
| 256 | 1.7.15.5 | CLEANING | 6h | 2017-08-10 17:35 A | 2017-08-11 07:35 A | 255 | 100% | 2017-08-10 08:06 | 2017-08-10 14:07 | 6h | Fitter | 6h | 6h | 412.5 | 412.5 | 412.5 |
| 257 | 1.7.16 | **SPACER TUBE PREPARATION** | 7.15d | 2017-08-09 12:33 A | 2017-08-19 14:41 A |  | 100% | 2017-08-08 19:05 | 2017-08-18 21:12 | 14.25d |  | 116.5h | 116.5h | 10,136.88 | 10,136.88 | 10,136.88 |
| 258 | 1.7.16.1 | TUBE MARKING | 15h | 2017-08-09 12:33 A | 2017-08-10 11:34 A | 52, 252 | 100% | 2017-08-08 19:05 | 2017-08-09 18:06 | 15h | Fitter; Helper | 17.5h | 17.5h | 921.88 | 921.88 | 921.88 |
| 259 | 1.7.16.2 | TUBE CUTTING | 22h | 2017-08-10 11:34 A | 2017-08-11 17:36 A | 258 | 100% | 2017-08-09 18:06 | 2017-08-11 08:07 | 22h | Gas Cutter; Helper | 22h | 22h | 1,512.5 | 1,512.5 | 1,512.5 |
| 260 | 1.7.16.3 | TUBE M/C | 47h | 2017-08-11 17:36 A | 2017-08-17 16:39 A | 259 | 100% | 2017-08-11 08:07 | 2017-08-17 07:10 | 47h | Lathe Operator | 47h | 47h | 5,640 | 5,640 | 5,640 |
| 261 | 1.7.16.4 | CLEANING | 30h | 2017-08-17 16:39 A | 2017-08-19 14:41 A | 260 | 100% | 2017-08-17 07:10 | 2017-08-18 21:12 | 30h | Fitter | 30h | 30h | 2,062.5 | 2,062.5 | 2,062.5 |
| 262 | 1.7.17 | **CS1-FITUP & WELDING** | 7.83d | 2017-08-14 09:49 A | 2017-08-23 17:25 A |  | 100% | 2017-08-10 16:22 | 2017-08-21 14:59 | 13.81d |  | 130h | 130h | 7,062.5 | 7,062.5 | 7,062.5 |
| 263 | 1.7.17.1 | SHELL LS2+LS3 DISH READY | 3h | 2017-08-14 09:49 A | 2017-08-14 12:49 A | 75, 94 | 100% | 2017-08-10 16:22 | 2017-08-10 19:22 | 3h | Helper | 3h | 3h | 150 | 150 | 150 |
| 264 | 1.7.17.2 | SHELL EP CORRECTION | 8h | 2017-08-14 12:49 A | 2017-08-14 20:50 A | 263 | 100% | 2017-08-10 19:22 | 2017-08-11 11:22 | 8h | Grinder [200%]; Helper | 18h | 18h | 1,000 | 1,000 | 1,000 |
| 265 | 1.7.17.3 | CS1-FITUP | 4h | 2017-08-14 20:50 A | 2017-08-16 08:50 A | 264 | 100% | 2017-08-11 11:22 | 2017-08-11 15:23 | 4h | Fitter [200%]; Helper | 7h | 7h | 406.25 | 406.25 | 406.25 |
| 266 | 1.7.17.4 | CS1-FITUP INSPECTION | 3h | 2017-08-16 08:50 A | 2017-08-16 11:50 A | 265 | 100% | 2017-08-11 15:23 | 2017-08-11 18:23 | 3h | Fitter; Helper | 6h | 6h | 356.25 | 356.25 | 356.25 |
| 267 | 1.7.17.5 | CS1-WELDING | 26h | 2017-08-16 11:50 A | 2017-08-17 21:52 A | 266 | 100% | 2017-08-11 18:23 | 2017-08-16 12:24 | 26h | SAW Welder [200%]; Helper | 31h | 31h | 1,643.75 | 1,643.75 | 1,643.75 |
| 268 | 1.7.17.6 | CS1-FLUSHGRIND | 10h | 2017-08-17 21:52 A | 2017-08-18 15:53 A | 267 | 100% | 2017-08-16 12:24 | 2017-08-17 06:25 | 10h | Grinder | 10h | 10h | 562.5 | 562.5 | 562.5 |
| 269 | 1.7.17.7 | CS1-DPCHECK | 3h | 2017-08-18 15:53 A | 2017-08-18 18:53 A | 268 | 100% | 2017-08-17 06:25 | 2017-08-17 09:25 | 3h | Fitter | 3h | 3h | 206.25 | 206.25 | 206.25 |
| 270 | 1.7.17.8 | CS1-INSIDE WELDING | 26h | 2017-08-18 18:53 A | 2017-08-21 12:54 A | 269 | 100% | 2017-08-17 09:25 | 2017-08-18 19:27 | 26h | SAW Welder [200%]; Helper | 26h | 26h | 1,300 | 1,300 | 1,300 |
| 271 | 1.7.17.9 | CS1-DRESSUP | 10h | 2017-08-21 12:54 A | 2017-08-22 06:55 A | 270 | 100% | 2017-08-18 19:27 | 2017-08-19 13:27 | 10h | Grinder [200%]; Helper | 23h | 23h | 1,231.25 | 1,231.25 | 1,231.25 |
| 272 | 1.7.17.10 | CS1-DPCHECK | 3h | 2017-08-22 06:55 A | 2017-08-22 09:55 A | 271 | 100% | 2017-08-19 13:27 | 2017-08-19 16:28 | 3h | Fitter | 3h | 3h | 206.25 | 206.25 | 206.25 |
| 273 | 1.7.17.11 | CS1-RT | 1.81d | 2017-08-22 09:55 A | 2017-08-23 17:25 A | 272 | 100% | 2017-08-19 16:28 | 2017-08-21 14:59 | 1.81d |  |  |  |  |  |  |
| 274 | 1.7.18 | **CS2-FITUP & WELDING** | 7.82d | 2017-08-23 17:25 A | 2017-09-04 16:00 A |  | 100% | 2017-08-21 14:59 | 2017-08-31 13:35 | 13.81d |  | 245.5h | 245.5h | 14,803.13 | 14,803.12 | 14,803.13 |
| 275 | 1.7.18.1 | SHELL CS1+LS4 | 3h | 2017-08-23 17:25 A | 2017-08-23 20:25 A | 113, 262 | 100% | 2017-08-21 14:59 | 2017-08-21 17:59 | 3h | Helper | 3h | 3h | 150 | 150 | 150 |
| 276 | 1.7.18.2 | SHELL EP CORRECTION | 8h | 2017-08-23 20:25 A | 2017-08-24 12:25 A | 275 | 100% | 2017-08-21 17:59 | 2017-08-22 09:59 | 8h | Grinder [200%]; Helper | 24h | 24h | 1,300 | 1,300 | 1,300 |
| 277 | 1.7.18.3 | CS2-FITUP | 4h | 2017-08-24 12:25 A | 2017-08-24 16:26 A | 276 | 100% | 2017-08-22 09:59 | 2017-08-22 13:59 | 4h | Fitter [200%]; Helper | 10.5h | 10.5h | 646.88 | 646.88 | 646.88 |
| 278 | 1.7.18.4 | CS2-FITUP INSPECTION | 3h | 2017-08-24 16:26 A | 2017-08-24 19:26 A | 277 | 100% | 2017-08-22 13:59 | 2017-08-22 17:00 | 3h | Fitter; Helper | 6h | 6h | 356.25 | 356.25 | 356.25 |
| 279 | 1.7.18.5 | CS2-WELDING | 26h | 2017-08-24 19:26 A | 2017-08-29 13:27 A | 278 | 100% | 2017-08-22 17:00 | 2017-08-24 11:01 | 26h | SAW Welder [200%]; Helper | 78h | 78h | 4,875 | 4,875 | 4,875 |
| 280 | 1.7.18.6 | CS2-FLUSHGRIND | 10h | 2017-08-29 13:27 A | 2017-08-30 07:28 A | 279 | 100% | 2017-08-24 11:01 | 2017-08-24 21:02 | 10h | Grinder | 10h | 10h | 562.5 | 562.5 | 562.5 |
| 281 | 1.7.18.7 | CS2-DPCHECK | 3h | 2017-08-30 07:28 A | 2017-08-30 10:28 A | 280 | 100% | 2017-08-24 21:02 | 2017-08-28 08:02 | 3h | Fitter | 3h | 3h | 206.25 | 206.25 | 206.25 |
| 282 | 1.7.18.8 | CS2-INSIDE WELDING | 26h | 2017-08-30 10:28 A | 2017-08-31 20:30 A | 281 | 100% | 2017-08-28 08:02 | 2017-08-29 18:04 | 26h | SAW Welder [200%]; Helper | 78h | 78h | 4,875 | 4,875 | 4,875 |
| 283 | 1.7.18.9 | CS2-DRESSUP | 10h | 2017-08-31 20:30 A | 2017-09-01 14:31 A | 282 | 100% | 2017-08-29 18:04 | 2017-08-30 12:04 | 10h | Grinder [200%]; Helper | 30h | 30h | 1,625 | 1,625 | 1,625 |
| 284 | 1.7.18.10 | CS2-DPCHECK | 3h | 2017-09-01 14:31 A | 2017-09-01 17:31 A | 283 | 100% | 2017-08-30 12:04 | 2017-08-30 15:05 | 3h | Fitter | 3h | 3h | 206.25 | 206.25 | 206.25 |
| 285 | 1.7.18.11 | CS2-RT | 1.81d | 2017-09-02 08:30 A | 2017-09-04 16:00 A | 284 | 100% | 2017-08-30 15:05 | 2017-08-31 13:35 | 1.81d |  |  |  |  |  |  |

Notes:
- 251: 6NOS
- 267: 4.43Kg/m
- 273: SC
- 279: 4.43Kg/m
- 285: SC

| ID | WBS | Task | Duration | Start | Finish | Predecessors | Complete | Baseline start | Baseline finish | Baseline duration | Resources | Work | Actual work | Cost | Baseline cost | Actual cost |
| --- | --- | --- | --- | --- | --- | --- | --- | --- | --- | --- | --- | --- | --- | --- | --- | --- |
| 286 | 1.7.19 | **CS3-FITUP & WELDING** | 7.83d | 2017-08-16 12:02 A | 2017-08-28 10:38 A |  | 100% | 2017-08-10 21:07 | 2017-08-21 19:44 | 13.81d |  | 247h | 247h | 14,906.25 | 14,906.25 | 14,906.25 |
| 287 | 1.7.19.1 | SHELL CS2+DISH READY | 3h | 2017-08-16 12:02 A | 2017-08-16 15:03 A | 132 | 100% | 2017-08-10 21:07 | 2017-08-11 08:07 | 3h | Helper | 3h | 3h | 150 | 150 | 150 |
| 288 | 1.7.19.2 | SHELL EP CORRECTION | 8h | 2017-08-16 15:03 A | 2017-08-17 07:03 A | 287 | 100% | 2017-08-11 08:07 | 2017-08-11 16:08 | 8h | Grinder [200%]; Helper | 24h | 24h | 1,300 | 1,300 | 1,300 |
| 289 | 1.7.19.3 | CS3-FITUP | 4h | 2017-08-17 07:03 A | 2017-08-17 11:03 A | 288 | 100% | 2017-08-11 16:08 | 2017-08-11 20:08 | 4h | Fitter [200%]; Helper | 12h | 12h | 750 | 750 | 750 |
| 290 | 1.7.19.4 | CS3-FITUP INSPECTION | 3h | 2017-08-17 11:03 A | 2017-08-17 14:04 A | 289 | 100% | 2017-08-11 20:08 | 2017-08-14 07:08 | 3h | Fitter; Helper | 6h | 6h | 356.25 | 356.25 | 356.25 |
| 291 | 1.7.19.5 | CS3-WELDING | 26h | 2017-08-17 14:04 A | 2017-08-19 08:05 A | 290 | 100% | 2017-08-14 07:08 | 2017-08-16 17:10 | 26h | SAW Welder [200%]; Helper | 78h | 78h | 4,875 | 4,875 | 4,875 |
| 292 | 1.7.19.6 | CS3-FLUSHGRIND | 10h | 2017-08-19 08:05 A | 2017-08-19 18:06 A | 291 | 100% | 2017-08-16 17:10 | 2017-08-17 11:10 | 10h | Grinder | 10h | 10h | 562.5 | 562.5 | 562.5 |
| 293 | 1.7.19.7 | CS3-DPCHECK | 3h | 2017-08-19 18:06 A | 2017-08-19 21:06 A | 292 | 100% | 2017-08-17 11:10 | 2017-08-17 14:11 | 3h | Fitter | 3h | 3h | 206.25 | 206.25 | 206.25 |
| 294 | 1.7.19.8 | CS3-INSIDE WELDING | 26h | 2017-08-19 21:06 A | 2017-08-22 15:08 A | 293 | 100% | 2017-08-17 14:11 | 2017-08-19 08:12 | 26h | SAW Welder [200%]; Helper | 78h | 78h | 4,875 | 4,875 | 4,875 |
| 295 | 1.7.19.9 | CS3-DRESSUP | 10h | 2017-08-22 15:08 A | 2017-08-23 09:08 A | 294 | 100% | 2017-08-19 08:12 | 2017-08-19 18:13 | 10h | Grinder [200%]; Helper | 30h | 30h | 1,625 | 1,625 | 1,625 |
| 296 | 1.7.19.10 | CS3-DPCHECK | 3h | 2017-08-23 09:08 A | 2017-08-23 12:08 A | 295 | 100% | 2017-08-19 18:13 | 2017-08-19 21:13 | 3h | Fitter | 3h | 3h | 206.25 | 206.25 | 206.25 |
| 297 | 1.7.19.11 | CS3-RT | 1.81d | 2017-08-23 12:08 A | 2017-08-28 10:38 A | 296 | 100% | 2017-08-19 21:13 | 2017-08-21 19:44 | 1.81d |  |  |  |  |  |  |
| 298 | 1.7.20 | **NOZZLE WITH RF PAD WELDING** | 2d | 2017-08-08 20:03 A | 2017-08-11 06:20 A |  | 100% | 2017-08-08 10:34 | 2017-08-10 12:51 | 4.28d |  | 57.25h | 57.25h | 3,742.19 | 3,742.19 | 3,742.19 |
| 299 | 1.7.20.1 | NOZZLE READY | 2h | 2017-08-08 20:03 A | 2017-08-09 06:03 A | 151 | 100% | 2017-08-08 10:34 | 2017-08-08 12:34 | 2h | Helper | 2h | 2h | 100 | 100 | 100 |
| 300 | 1.7.20.2 | ORIENTATION MARKING | 2h | 2017-08-09 06:03 A | 2017-08-09 08:03 A | 299 | 100% | 2017-08-08 12:34 | 2017-08-08 14:35 | 2h | Fitter [200%] | 4h | 4h | 275 | 275 | 275 |
| 301 | 1.7.20.3 | NOZZLE OPENING | 2.5h | 2017-08-09 08:03 A | 2017-08-09 10:33 A | 300 | 100% | 2017-08-08 14:35 | 2017-08-08 17:05 | 2.5h | Gas Cutter [200%] | 5h | 5h | 343.75 | 343.75 | 343.75 |
| 302 | 1.7.20.4 | NOZZLE EP | 2h | 2017-08-09 10:33 A | 2017-08-09 12:33 A | 301 | 100% | 2017-08-08 17:05 | 2017-08-08 19:05 | 2h | Grinder [200%] | 4h | 4h | 225 | 225 | 225 |
| 303 | 1.7.20.5 | NOZZLE FIT UP | 3h | 2017-08-09 12:33 A | 2017-08-09 15:34 A | 302 | 100% | 2017-08-08 19:05 | 2017-08-09 06:05 | 3h | Fitter [200%] | 6h | 6h | 412.5 | 412.5 | 412.5 |
| 304 | 1.7.20.6 | NOZZLE WELDING | 2.5h | 2017-08-09 15:34 A | 2017-08-09 18:04 A | 303 | 100% | 2017-08-09 06:05 | 2017-08-09 08:35 | 2.5h | SAW Welder [200%] | 5h | 5h | 343.75 | 343.75 | 343.75 |
| 305 | 1.7.20.7 | RF PAD FIT UP | 3h | 2017-08-09 18:04 A | 2017-08-09 21:04 A | 304 | 100% | 2017-08-09 08:35 | 2017-08-09 11:35 | 3h | Fitter [200%] | 6h | 6h | 412.5 | 412.5 | 412.5 |
| 306 | 1.7.20.8 | RF PAD WELDING | 3h | 2017-08-09 21:04 A | 2017-08-10 08:04 A | 305 | 100% | 2017-08-09 11:35 | 2017-08-09 14:36 | 3h | SAW Welder [200%] | 6h | 6h | 412.5 | 412.5 | 412.5 |
| 307 | 1.7.20.9 | FLUSH GRIND | 2h | 2017-08-10 08:04 A | 2017-08-10 10:04 A | 306 | 100% | 2017-08-09 14:36 | 2017-08-09 16:36 | 2h | Grinder [200%] | 4h | 4h | 225 | 225 | 225 |
| 308 | 1.7.20.10 | NOZZLE INSIDE WELD | 3h | 2017-08-10 10:04 A | 2017-08-10 13:04 A | 307 | 100% | 2017-08-09 16:36 | 2017-08-09 19:36 | 3h | SAW Welder; Helper | 6h | 6h | 356.25 | 356.25 | 356.25 |
| 309 | 1.7.20.11 | DP/AIR TEST | 2h | 2017-08-10 13:04 A | 2017-08-10 15:05 A | 308 | 100% | 2017-08-09 19:36 | 2017-08-09 21:36 | 2h | Fitter | 2h | 2h | 137.5 | 137.5 | 137.5 |
| 310 | 1.7.20.12 | INSPECTION | 0.91d | 2017-08-10 15:05 A | 2017-08-11 06:20 A | 309 | 100% | 2017-08-09 21:36 | 2017-08-10 12:51 | 0.91d | Fitter | 7.25h | 7.25h | 498.44 | 498.44 | 498.44 |

Notes:
- 291: 4.43Kg/m
- 297: SC
- 298: N3 & N4

| ID | WBS | Task | Duration | Start | Finish | Predecessors | Complete | Baseline start | Baseline finish | Baseline duration | Resources | Work | Actual work | Cost | Baseline cost | Actual cost |
| --- | --- | --- | --- | --- | --- | --- | --- | --- | --- | --- | --- | --- | --- | --- | --- | --- |
| 311 | 1.7.21 | **NOZZLE WELDING** | 4.86d | 2017-08-08 20:03 A | 2017-08-16 16:23 A |  | 100% | 2017-08-08 10:34 | 2017-08-16 06:54 | 9.53d |  | 78.25h | 78.25h | 4,885.94 | 4,885.94 | 4,885.94 |
| 312 | 1.7.21.1 | NOZZLE READY | 5h | 2017-08-08 20:03 A | 2017-08-09 09:03 A | 151 | 100% | 2017-08-08 10:34 | 2017-08-08 15:35 | 5h | Helper | 5h | 5h | 250 | 250 | 250 |
| 313 | 1.7.21.2 | ORIENTATION MARKING | 10h | 2017-08-09 09:03 A | 2017-08-09 19:04 A | 312 | 100% | 2017-08-08 15:35 | 2017-08-09 09:35 | 10h | Fitter | 10h | 10h | 687.5 | 687.5 | 687.5 |
| 314 | 1.7.21.3 | NOZZLE OPENING | 12h | 2017-08-09 19:04 A | 2017-08-10 15:05 A | 313 | 100% | 2017-08-09 09:35 | 2017-08-09 21:36 | 12h | Gas Cutter | 12h | 12h | 825 | 825 | 825 |
| 315 | 1.7.21.4 | NOZZLE EP | 8h | 2017-08-10 15:05 A | 2017-08-11 07:05 A | 314 | 100% | 2017-08-09 21:36 | 2017-08-10 13:36 | 8h | Grinder | 8h | 8h | 450 | 450 | 450 |
| 316 | 1.7.21.5 | NOZZLE FIT UP | 10h | 2017-08-11 07:05 A | 2017-08-11 17:06 A | 315 | 100% | 2017-08-10 13:36 | 2017-08-11 07:37 | 10h | Fitter | 10h | 10h | 687.5 | 687.5 | 687.5 |
| 317 | 1.7.21.6 | NOZZLE WELDING | 8h | 2017-08-11 17:06 A | 2017-08-14 09:06 A | 316 | 100% | 2017-08-11 07:37 | 2017-08-11 15:38 | 8h | SAW Welder; Helper | 9.25h | 9.25h | 485.94 | 485.94 | 485.94 |
| 318 | 1.7.21.7 | NOZZLE INSIDE WELD | 8h | 2017-08-14 09:06 A | 2017-08-14 17:07 A | 317 | 100% | 2017-08-11 15:38 | 2017-08-14 07:38 | 8h | SAW Welder; Helper | 8.75h | 8.75h | 451.56 | 451.56 | 451.56 |
| 319 | 1.7.21.8 | DP/AIR TEST | 8h | 2017-08-14 17:07 A | 2017-08-16 09:07 A | 318 | 100% | 2017-08-14 07:38 | 2017-08-14 15:39 | 8h | Fitter | 8h | 8h | 550 | 550 | 550 |
| 320 | 1.7.21.9 | INSPECTION | 0.91d | 2017-08-16 09:07 A | 2017-08-16 16:23 A | 319 | 100% | 2017-08-14 15:39 | 2017-08-16 06:54 | 0.91d | Fitter | 7.25h | 7.25h | 498.44 | 498.44 | 498.44 |
| 321 | 1.7.22 | **DAVIT ARM ITEM MARKING** | 7.19d | 2017-08-04 16:00 A | 2017-08-14 19:07 A |  | 100% | 2017-08-04 06:31 | 2017-08-14 09:38 | 14.38d |  | 258h | 258h | 15,731.25 | 15,731.25 | 15,731.25 |
| 322 | 1.7.22.1 | PLATE MARKING | 8h | 2017-08-04 16:00 A | 2017-08-05 08:00 A | 47 | 100% | 2017-08-04 06:31 | 2017-08-04 14:32 | 8h | Fitter [200%]; Helper | 21h | 21h | 1,350 | 1,350 | 1,350 |
| 323 | 1.7.22.2 | PIPE MARKING | 7h | 2017-08-05 08:00 A | 2017-08-05 15:01 A | 322 | 100% | 2017-08-04 14:32 | 2017-08-04 21:32 | 7h | Fitter [200%]; Helper | 21h | 21h | 1,312.5 | 1,312.5 | 1,312.5 |
| 324 | 1.7.22.3 | DAVIT ARM CUTTING | 10h | 2017-08-05 15:01 A | 2017-08-07 09:01 A | 323 | 100% | 2017-08-04 21:32 | 2017-08-05 15:33 | 10h | Gas Cutter [200%] | 20h | 20h | 1,375 | 1,375 | 1,375 |
| 325 | 1.7.22.4 | DAVIT ARM FIT UP | 45h | 2017-08-07 09:01 A | 2017-08-10 06:04 A | 324 | 100% | 2017-08-05 15:33 | 2017-08-09 12:35 | 45h | Fitter [200%]; Helper | 66h | 66h | 3,693.75 | 3,693.75 | 3,693.75 |
| 326 | 1.7.22.5 | DAVIT ARM WELDING | 40h | 2017-08-10 06:04 A | 2017-08-14 14:07 A | 325 | 100% | 2017-08-09 12:35 | 2017-08-11 20:38 | 40h | SAW Welder [200%]; Helper | 120h | 120h | 7,500 | 7,500 | 7,500 |
| 327 | 1.7.22.6 | CLEANING | 5h | 2017-08-14 14:07 A | 2017-08-14 19:07 A | 326 | 100% | 2017-08-11 20:38 | 2017-08-14 09:38 | 5h | Helper [200%] | 10h | 10h | 500 | 500 | 500 |
| 328 | 1.7.23 | **SADDLE SUPPORT WELDING** | 9d | 2017-08-05 08:00 A | 2017-08-18 07:09 A |  | 100% | 2017-08-04 14:32 | 2017-08-17 13:40 | 17.88d |  | 149.25h | 149.25h | 9,743.75 | 9,743.75 | 9,743.75 |
| 329 | 1.7.23.1 | SADDLE SUPPORT PLATE MARKING | 10h | 2017-08-05 08:00 A | 2017-08-05 18:01 A | 48, 322 | 100% | 2017-08-04 14:32 | 2017-08-05 08:32 | 10h | Fitter; Helper | 10.5h | 10.5h | 712.5 | 712.5 | 712.5 |
| 330 | 1.7.23.2 | SADDLE SUPPORT PLATE CUTTING | 15h | 2017-08-05 18:01 A | 2017-08-07 17:02 A | 329 | 100% | 2017-08-05 08:32 | 2017-08-07 07:33 | 15h | Gas Cutter | 15h | 15h | 1,031.25 | 1,031.25 | 1,031.25 |
| 331 | 1.7.23.3 | SADDLE SUPPORT PLATE GRINDING | 17h | 2017-08-07 17:02 A | 2017-08-08 18:03 A | 330 | 100% | 2017-08-07 07:33 | 2017-08-08 08:34 | 17h | Grinder | 17h | 17h | 956.25 | 956.25 | 956.25 |
| 332 | 1.7.23.4 | DRILLING | 6h | 2017-08-08 18:03 A | 2017-08-09 08:03 A | 331 | 100% | 2017-08-08 08:34 | 2017-08-08 14:35 | 6h | Driller | 6h | 6h | 412.5 | 412.5 | 412.5 |
| 333 | 1.7.23.5 | SADDLE SUPPORT PLATE FIT UP | 30h | 2017-08-09 08:03 A | 2017-08-11 06:05 A | 332 | 100% | 2017-08-08 14:35 | 2017-08-10 12:36 | 30h | Fitter; Helper | 30h | 30h | 2,062.5 | 2,062.5 | 2,062.5 |
| 334 | 1.7.23.6 | SADDLE SUPPORT WELDING | 40h | 2017-08-11 06:05 A | 2017-08-16 14:08 A | 333 | 100% | 2017-08-10 12:36 | 2017-08-14 20:39 | 40h | SAW Welder; Helper | 44.5h | 44.5h | 2,975 | 2,975 | 2,975 |
| 335 | 1.7.23.7 | BEND REMOVAL | 10h | 2017-08-16 14:08 A | 2017-08-17 08:08 A | 334 | 100% | 2017-08-14 20:39 | 2017-08-16 14:40 | 10h | Fitter; Helper | 11.25h | 11.25h | 750 | 750 | 750 |
| 336 | 1.7.23.8 | GRINDING | 15h | 2017-08-17 08:08 A | 2017-08-18 07:09 A | 335 | 100% | 2017-08-16 14:40 | 2017-08-17 13:40 | 15h | Grinder | 15h | 15h | 843.75 | 843.75 | 843.75 |

Notes:
- 311: 10NOS
- 322: SUPPORT+GUSSET
- 323: ARM+SUPPORT
- 329: PAD+BASE+GUSSET+TOP+EC
- 332: EARTHING CLEAT

| ID | WBS | Task | Duration | Start | Finish | Predecessors | Complete | Baseline start | Baseline finish | Baseline duration | Resources | Work | Actual work | Cost | Baseline cost | Actual cost |
| --- | --- | --- | --- | --- | --- | --- | --- | --- | --- | --- | --- | --- | --- | --- | --- | --- |
| 337 | 1.7.24 | **NAME PLATE WELDING** | 0.88d | 2017-08-05 18:01 A | 2017-08-07 16:32 A |  | 100% | 2017-08-05 08:32 | 2017-08-07 07:03 | 1.81d |  | 15.5h | 15.5h | 950 | 950 | 950 |
| 338 | 1.7.24.1 | NAME PLATE MARKING | 1.5h | 2017-08-05 18:01 A | 2017-08-05 19:31 A | 43, 329 | 100% | 2017-08-05 08:32 | 2017-08-05 10:02 | 1.5h | Fitter; Helper | 2.5h | 2.5h | 143.75 | 143.75 | 143.75 |
| 339 | 1.7.24.2 | CUTTING | 3h | 2017-08-05 19:31 A | 2017-08-07 06:31 A | 338 | 100% | 2017-08-05 10:02 | 2017-08-05 13:02 | 3h | Gas Cutter; Helper | 3h | 3h | 206.25 | 206.25 | 206.25 |
| 340 | 1.7.24.3 | GRINDING | 4h | 2017-08-07 06:31 A | 2017-08-07 10:31 A | 339 | 100% | 2017-08-05 13:02 | 2017-08-05 17:03 | 4h | Grinder | 4h | 4h | 225 | 225 | 225 |
| 341 | 1.7.24.4 | WELDING | 4h | 2017-08-07 10:31 A | 2017-08-07 14:32 A | 340 | 100% | 2017-08-05 17:03 | 2017-08-05 21:03 | 4h | SAW Welder; Helper | 4h | 4h | 275 | 275 | 275 |
| 342 | 1.7.24.5 | CLEANING | 2h | 2017-08-07 14:32 A | 2017-08-07 16:32 A | 341 | 100% | 2017-08-05 21:03 | 2017-08-07 07:03 | 2h | Helper | 2h | 2h | 100 | 100 | 100 |
| 343 | 1.7.25 | **LIFTING LUG WELDING** | 1.63d | 2017-08-05 19:31 A | 2017-08-08 14:33 A |  | 100% | 2017-08-05 10:02 | 2017-08-07 21:04 | 3.38d |  | 29.75h | 29.75h | 1,745.31 | 1,745.31 | 1,745.31 |
| 344 | 1.7.25.1 | PLATE MARKING | 3h | 2017-08-05 19:31 A | 2017-08-07 06:31 A | 46, 338 | 100% | 2017-08-05 10:02 | 2017-08-05 13:02 | 3h | Fitter; Helper | 5h | 5h | 287.5 | 287.5 | 287.5 |
| 345 | 1.7.25.2 | CUTTING | 6h | 2017-08-07 06:31 A | 2017-08-07 12:31 A | 344 | 100% | 2017-08-05 13:02 | 2017-08-05 19:03 | 6h | Gas Cutter; Helper | 6h | 6h | 412.5 | 412.5 | 412.5 |
| 346 | 1.7.25.3 | GRINDING | 6h | 2017-08-07 12:31 A | 2017-08-07 18:32 A | 345 | 100% | 2017-08-05 19:03 | 2017-08-07 09:03 | 6h | Grinder | 6h | 6h | 337.5 | 337.5 | 337.5 |
| 347 | 1.7.25.4 | DRILLING | 3h | 2017-08-07 18:32 A | 2017-08-07 21:32 A | 346 | 100% | 2017-08-07 09:03 | 2017-08-07 12:03 | 3h | Driller | 3h | 3h | 206.25 | 206.25 | 206.25 |
| 348 | 1.7.25.5 | WELDING | 5h | 2017-08-07 21:32 A | 2017-08-08 10:32 A | 347 | 100% | 2017-08-07 12:03 | 2017-08-07 17:04 | 5h | SAW Welder; Helper | 5.75h | 5.75h | 301.56 | 301.56 | 301.56 |
| 349 | 1.7.25.6 | CLEANING | 4h | 2017-08-08 10:32 A | 2017-08-08 14:33 A | 348 | 100% | 2017-08-07 17:04 | 2017-08-07 21:04 | 4h | Helper | 4h | 4h | 200 | 200 | 200 |
| 350 | 1.7.26 | **INSULATION CLEAT WELDING** | 1.5d | 2017-08-07 06:31 A | 2017-08-08 13:32 A |  | 100% | 2017-08-05 13:02 | 2017-08-07 20:04 | 2.88d |  | 29.25h | 29.25h | 1,610.94 | 1,610.94 | 1,610.94 |
| 351 | 1.7.26.1 | PLATE MARKING | 3h | 2017-08-07 06:31 A | 2017-08-07 09:31 A | 49, 344 | 100% | 2017-08-05 13:02 | 2017-08-05 16:03 | 3h | Fitter; Helper | 5h | 5h | 287.5 | 287.5 | 287.5 |
| 352 | 1.7.26.2 | CUTTING | 5h | 2017-08-07 09:31 A | 2017-08-07 14:32 A | 351 | 100% | 2017-08-05 16:03 | 2017-08-05 21:03 | 5h | Gas Cutter; Helper | 6h | 6h | 318.75 | 318.75 | 318.75 |
| 353 | 1.7.26.3 | GRINDING | 5h | 2017-08-07 14:32 A | 2017-08-07 19:32 A | 352 | 100% | 2017-08-05 21:03 | 2017-08-07 10:03 | 5h | Grinder | 5h | 5h | 281.25 | 281.25 | 281.25 |
| 354 | 1.7.26.4 | WELDING | 6h | 2017-08-07 19:32 A | 2017-08-08 09:32 A | 353 | 100% | 2017-08-07 10:03 | 2017-08-07 16:04 | 6h | SAW Welder; Helper | 9.25h | 9.25h | 523.44 | 523.44 | 523.44 |
| 355 | 1.7.26.5 | CLEANING | 4h | 2017-08-08 09:32 A | 2017-08-08 13:32 A | 354 | 100% | 2017-08-07 16:04 | 2017-08-07 20:04 | 4h | Helper | 4h | 4h | 200 | 200 | 200 |
| 356 | 1.7.27 | **TUBE BUNDLE ASSEMBLY** | 82.86d | 2017-08-17 09:38 A | 2017-12-04 21:17 A |  | 100% | 2017-08-16 16:10 | 2017-12-04 11:48 | 167.28d |  | 459.75h | 459.75h | 27,679.69 | 27,679.69 | 27,679.69 |
| 357 | 1.7.27.1 | TUBE SHEET INSPECTION | 4h | 2017-08-17 09:38 A | 2017-08-17 13:38 A | 198 | 100% | 2017-08-16 16:10 | 2017-08-16 20:10 | 4h | Fitter | 4h | 4h | 275 | 275 | 275 |
| 358 | 1.7.27.2 | ASSY FRAME SET UP | 6h | 2017-08-17 13:38 A | 2017-08-17 19:39 A | 357 | 100% | 2017-08-16 20:10 | 2017-08-17 10:10 | 6h | Fitter [200%]; Helper | 18h | 18h | 1,125 | 1,125 | 1,125 |
| 359 | 1.7.27.3 | TUBE BUNDLE ASSY | 1.81d | 2017-11-22 15:23 A | 2017-11-23 13:53 A | 222, 358 | 100% | 2017-11-21 21:54 | 2017-11-22 20:25 | 1.81d | Fitter [200%]; Helper [300%] | 72.5h | 72.5h | 4,168.75 | 4,168.75 | 4,168.75 |
| 360 | 1.7.27.4 | TUBE TIE ROD STACK WELD | 16h | 2017-11-23 13:53 A | 2017-11-24 13:54 A | 359 | 100% | 2017-11-22 20:25 | 2017-11-23 20:26 | 16h | SAW Welder [200%]; Helper | 48h | 48h | 3,000 | 3,000 | 3,000 |
| 361 | 1.7.27.5 | U-TUBE INSERT | 15h | 2017-11-24 13:54 A | 2017-11-27 12:55 A | 40, 360 | 100% | 2017-11-23 20:26 | 2017-11-24 19:27 | 15h | Fitter [200%]; Helper | 45h | 45h | 2,812.5 | 2,812.5 | 2,812.5 |
| 362 | 1.7.27.6 | TUBE SHEET WELDING | 16h | 2017-11-27 12:55 A | 2017-11-28 12:56 A | 361 | 100% | 2017-11-24 19:27 | 2017-11-27 19:28 | 16h | SAW Welder; Helper | 32h | 32h | 1,900 | 1,900 | 1,900 |
| 363 | 1.7.27.7 | TUBE ROOT WELDING | 14h | 2017-11-28 12:56 A | 2017-11-29 10:57 A | 362 | 100% | 2017-11-27 19:28 | 2017-11-28 17:29 | 14h | SAW Welder [200%]; Helper | 36h | 36h | 2,325 | 2,325 | 2,325 |
| 364 | 1.7.27.8 | TUBE ROOT WELDING DP | 10h | 2017-11-29 10:57 A | 2017-11-29 20:58 A | 363 | 100% | 2017-11-28 17:29 | 2017-11-29 11:29 | 10h | SAW Welder; Helper | 20h | 20h | 1,187.5 | 1,187.5 | 1,187.5 |
| 365 | 1.7.27.9 | AIR TEST | 6h | 2017-11-29 20:58 A | 2017-11-30 10:58 A | 364 | 100% | 2017-11-29 11:29 | 2017-11-29 17:30 | 6h | Fitter [200%] | 12h | 12h | 825 | 825 | 825 |
| 366 | 1.7.27.10 | TUBE WELDING-FINAL | 12h | 2017-11-30 10:58 A | 2017-12-01 06:59 A | 365 | 100% | 2017-11-29 17:30 | 2017-11-30 13:30 | 12h | SAW Welder [200%]; Helper [200%] | 48h | 48h | 2,850 | 2,850 | 2,850 |
| 367 | 1.7.27.11 | TUBE TRIMMING | 24h | 2017-12-01 06:59 A | 2017-12-02 15:01 A | 366 | 100% | 2017-11-30 13:30 | 2017-12-01 21:32 | 24h | Grinder [200%]; Helper | 72h | 72h | 3,900 | 3,900 | 3,900 |
| 368 | 1.7.27.12 | TUBE EXPANSION | 15h | 2017-12-02 15:01 A | 2017-12-04 14:02 A | 367 | 100% | 2017-12-01 21:32 | 2017-12-02 20:33 | 15h | Fitter [200%]; Helper | 45h | 45h | 2,812.5 | 2,812.5 | 2,812.5 |
| 369 | 1.7.27.13 | DP CHECK | 0.91d | 2017-12-04 14:02 A | 2017-12-04 21:17 A | 368 | 100% | 2017-12-02 20:33 | 2017-12-04 11:48 | 0.91d | Fitter | 7.25h | 7.25h | 498.44 | 498.44 | 498.44 |

Notes:
- 343: 6NOS
- 351: 6NOS

| ID | WBS | Task | Duration | Start | Finish | Predecessors | Complete | Baseline start | Baseline finish | Baseline duration | Resources | Work | Actual work | Cost | Baseline cost | Actual cost |
| --- | --- | --- | --- | --- | --- | --- | --- | --- | --- | --- | --- | --- | --- | --- | --- | --- |
| 370 | 1.7.28 | **SHELL FLG WELDING** | 4.89d | 2017-12-04 21:17 A | 2017-12-11 16:37 A |  | 100% | 2017-12-04 11:48 | 2017-12-11 07:08 | 9.41d |  | 156.25h | 156.25h | 9,435.94 | 9,435.94 | 9,435.94 |
| 371 | 1.7.28.1 | TUBE BUNDLE INSERT | 12h | 2017-12-04 21:17 A | 2017-12-05 17:18 A | 356 | 100% | 2017-12-04 11:48 | 2017-12-05 07:49 | 12h | Fitter [200%]; Helper [200%] | 48h | 48h | 2,850 | 2,850 | 2,850 |
| 372 | 1.7.28.2 | SHELL FLG WELD OVERLAY | 15h | 2017-12-05 17:18 A | 2017-12-06 16:19 A | 35, 371 | 100% | 2017-12-05 07:49 | 2017-12-06 06:50 | 15h | SAW Welder; Helper | 23h | 23h | 1,431.25 | 1,431.25 | 1,431.25 |
| 373 | 1.7.28.3 | SHELL FLG AND SHELL FIT UP | 6h | 2017-12-06 16:19 A | 2017-12-07 06:19 A | 372 | 100% | 2017-12-06 06:50 | 2017-12-06 12:50 | 6h | Fitter [200%]; Helper | 18h | 18h | 1,125 | 1,125 | 1,125 |
| 374 | 1.7.28.4 | WELDING | 25h | 2017-12-07 06:19 A | 2017-12-08 15:21 A | 373 | 100% | 2017-12-06 12:50 | 2017-12-07 21:52 | 25h | SAW Welder; Helper | 50h | 50h | 2,968.75 | 2,968.75 | 2,968.75 |
| 375 | 1.7.28.5 | FLUSH GRIND | 10h | 2017-12-08 15:21 A | 2017-12-11 09:21 A | 374 | 100% | 2017-12-07 21:52 | 2017-12-08 15:53 | 10h | Grinder | 10h | 10h | 562.5 | 562.5 | 562.5 |
| 376 | 1.7.28.6 | INSPECTION | 0.91d | 2017-12-11 09:21 A | 2017-12-11 16:37 A | 375 | 100% | 2017-12-08 15:53 | 2017-12-11 07:08 | 0.91d | Fitter | 7.25h | 7.25h | 498.44 | 498.44 | 498.44 |
| 377 | 1.7.29 | **CHANNEL FLG WELDING** | 97.89d | 2017-08-04 16:00 A | 2017-12-13 15:09 A |  | 100% | 2017-08-04 06:31 | 2017-12-12 21:40 | 197.69d |  | 293.5h | 293.5h | 17,810.95 | 17,810.94 | 17,810.95 |
| 378 | 1.7.29.1 | CH F1 WELDOVERLAY | 15h | 2017-08-04 16:00 A | 2017-08-05 15:01 A | 37 | 100% | 2017-08-04 06:31 | 2017-08-04 21:32 | 15h | SAW Welder; Helper | 30h | 30h | 1,781.25 | 1,781.25 | 1,781.25 |
| 379 | 1.7.29.2 | CH F1+CH FIT UP | 6h | 2017-08-10 16:00 A | 2017-08-10 22:00 A | 56, 378 | 100% | 2017-08-09 08:50 | 2017-08-09 14:51 | 6h | Fitter [200%]; Helper | 18h | 18h | 1,125 | 1,125 | 1,125 |
| 380 | 1.7.29.3 | CS WELDING | 25h | 2017-08-11 06:00 A | 2017-08-14 15:02 A | 379 | 100% | 2017-08-09 14:51 | 2017-08-11 07:52 | 25h | SAW Welder; Helper | 50h | 50h | 2,968.75 | 2,968.75 | 2,968.75 |
| 381 | 1.7.29.4 | FLUSH GRIND | 10h | 2017-08-14 15:02 A | 2017-08-16 09:02 A | 380 | 100% | 2017-08-11 07:52 | 2017-08-11 17:53 | 10h | Grinder | 10h | 10h | 562.5 | 562.5 | 562.5 |
| 382 | 1.7.29.5 | INSPECTION | 0.91d | 2017-08-16 09:02 A | 2017-08-16 16:18 A | 381 | 100% | 2017-08-11 17:53 | 2017-08-14 09:08 | 0.91d | Fitter | 7.25h | 7.25h | 498.44 | 498.44 | 498.44 |
| 383 | 1.7.29.6 | CH F2+CH FIT UP | 6h | 2017-08-16 16:18 A | 2017-08-17 06:18 A | 37, 56, 382 | 100% | 2017-08-14 09:08 | 2017-08-14 15:09 | 6h | Fitter [200%]; Helper | 18h | 18h | 1,125 | 1,125 | 1,125 |
| 384 | 1.7.29.7 | CS WELDING | 25h | 2017-08-17 06:18 A | 2017-08-18 15:20 A | 383 | 100% | 2017-08-14 15:09 | 2017-08-17 08:10 | 25h | SAW Welder; Helper | 50h | 50h | 2,968.75 | 2,968.75 | 2,968.75 |
| 385 | 1.7.29.8 | FLUSH GRIND | 10h | 2017-08-18 15:20 A | 2017-08-19 09:20 A | 384 | 100% | 2017-08-17 08:10 | 2017-08-17 18:11 | 10h | Grinder [200%] | 20h | 20h | 1,125 | 1,125 | 1,125 |
| 386 | 1.7.29.9 | INSPECTION | 0.91d | 2017-08-19 09:20 A | 2017-08-19 16:36 A | 385 | 100% | 2017-08-17 18:11 | 2017-08-18 09:26 | 0.91d | Fitter [200%]; Helper | 21.75h | 21.75h | 1,359.38 | 1,359.38 | 1,359.38 |
| 387 | 1.7.29.10 | CH COVER AND CH FIT UP | 6h | 2017-12-11 16:37 A | 2017-12-12 06:37 A | 370, 382 | 100% | 2017-12-11 07:08 | 2017-12-11 13:08 | 6h | Fitter [200%]; Helper [200%] | 24h | 24h | 1,425 | 1,425 | 1,425 |
| 388 | 1.7.29.11 | CH+SHELL FIT UP | 10h | 2017-12-12 06:37 A | 2017-12-12 16:38 A | 370, 387 | 100% | 2017-12-11 13:08 | 2017-12-12 07:09 | 10h | Fitter [200%]; Helper | 30h | 30h | 1,875 | 1,875 | 1,875 |
| 389 | 1.7.29.12 | INSPECTION | 1.81d | 2017-12-12 16:38 A | 2017-12-13 15:09 A | 388 | 100% | 2017-12-12 07:09 | 2017-12-12 21:40 | 1.81d | Fitter | 14.5h | 14.5h | 996.88 | 996.88 | 996.88 |
| 390 | 1.7.30 | **HYDRO TEST** | 10.29d | 2017-12-13 15:09 A | 2017-12-27 08:30 A |  | 100% | 2017-12-12 21:40 | 2017-12-22 16:04 | 17.28d |  | 305.25h | 305.25h | 19,035.95 | 19,035.94 | 19,035.95 |
| 391 | 1.7.30.1 | NDE CLEARANCE | 1.81d | 2017-12-13 15:09 A | 2017-12-14 13:39 A | 356, 377 | 100% | 2017-12-12 21:40 | 2017-12-13 20:11 | 1.81d | Fitter | 14.5h | 14.5h | 996.88 | 996.88 | 996.88 |
| 392 | 1.7.30.2 | PWHT | 3.62d | 2017-12-14 13:39 A | 2017-12-19 09:39 A | 391 | 100% | 2017-12-13 20:11 | 2017-12-15 17:13 | 3.62d |  |  |  |  |  |  |
| 393 | 1.7.30.3 | CLEANING AFTER PWHT | 12h | 2017-12-19 09:39 A | 2017-12-19 21:40 A | 392 | 100% | 2017-12-15 17:13 | 2017-12-16 13:13 | 12h | Fitter; Helper | 24h | 24h | 1,425 | 1,425 | 1,425 |
| 394 | 1.7.30.4 | NDE AFTER PWHT | 15h | 2017-12-19 21:40 A | 2017-12-20 20:41 A | 393 | 100% | 2017-12-16 13:13 | 2017-12-18 12:14 | 15h | Fitter | 15h | 15h | 1,031.25 | 1,031.25 | 1,031.25 |
| 395 | 1.7.30.5 | SHELL SIDE PNUEMATIC TEST | 10h | 2017-12-20 20:41 A | 2017-12-21 14:42 A | 394 | 100% | 2017-12-18 12:14 | 2017-12-19 06:15 | 10h | Fitter [300%]; Helper [200%] | 50h | 50h | 3,062.5 | 3,062.5 | 3,062.5 |
| 396 | 1.7.30.6 | TUBE BUNDLE OUTSIDE TEST | 12h | 2017-12-21 14:42 A | 2017-12-22 10:42 A | 395 | 100% | 2017-12-19 06:15 | 2017-12-19 18:16 | 12h | Fitter [300%]; Helper [200%] | 60h | 60h | 3,675 | 3,675 | 3,675 |
| 397 | 1.7.30.7 | TPI WITNESS | 0.91d | 2017-12-22 10:42 A | 2017-12-22 17:58 A | 396 | 100% | 2017-12-19 18:16 | 2017-12-20 09:31 | 0.91d | Fitter | 7.25h | 7.25h | 498.44 | 498.44 | 498.44 |
| 398 | 1.7.30.8 | SHELL SIDE HYDRO TEST | 12h | 2017-12-22 17:58 A | 2017-12-25 13:58 A | 397 | 100% | 2017-12-20 09:31 | 2017-12-20 21:32 | 12h | Fitter [300%]; Helper [200%] | 60h | 60h | 3,675 | 3,675 | 3,675 |
| 399 | 1.7.30.9 | TPI WITNESS | 0.91d | 2017-12-25 13:58 A | 2017-12-25 21:14 A | 398 | 100% | 2017-12-20 21:32 | 2017-12-21 12:47 | 0.91d | Fitter | 7.25h | 7.25h | 498.44 | 498.44 | 498.44 |
| 400 | 1.7.30.10 | CH ASSY AND HYDRO TEST | 12h | 2017-12-25 21:14 A | 2017-12-26 17:15 A | 399 | 100% | 2017-12-21 12:47 | 2017-12-22 08:48 | 12h | Fitter [300%]; Helper [200%] | 60h | 60h | 3,675 | 3,675 | 3,675 |
| 401 | 1.7.30.11 | TPI WITNESS | 0.91d | 2017-12-26 17:15 A | 2017-12-27 08:30 A | 400 | 100% | 2017-12-22 08:48 | 2017-12-22 16:04 | 0.91d | Fitter | 7.25h | 7.25h | 498.44 | 498.44 | 498.44 |

Notes:
- 392: SC

| ID | WBS | Task | Duration | Start | Finish | Predecessors | Complete | Baseline start | Baseline finish | Baseline duration | Constraint | Resources | Work | Actual work | Cost | Baseline cost | Actual cost |
| --- | --- | --- | --- | --- | --- | --- | --- | --- | --- | --- | --- | --- | --- | --- | --- | --- | --- |
| 402 | 1.7.31 | **BLAST CLEANING & PAINTING** | 30.94d | 2017-12-27 08:30 A | 2018-02-05 17:00 A |  | 100% | 2017-12-22 16:04 | 2017-12-30 17:10 | 12.12d |  |  | 132h | 132h | 6,562.5 | 8,003.12 | 6,562.5 |
| 403 | 1.7.31.1 | PREPARATION FOR BLAST CLEANING | 15h | 2017-12-27 08:30 A | 2017-12-28 07:31 A | 390 | 100% | 2017-12-22 16:04 | 2017-12-25 15:05 | 15h |  | Fitter [200%]; Helper [200%] | 60h | 60h | 3,562.5 | 3,562.5 | 3,562.5 |
| 404 | 1.7.31.2 | BLAST CLEAN | 3.62d | 2017-12-28 08:30 A | 2018-01-01 14:30 A | 403 | 100% | 2017-12-25 15:05 | 2017-12-27 12:06 | 3.62d |  |  |  |  |  |  |  |
| 405 | 1.7.31.3 | PAINTING - PRIMER | 12h | 2018-01-01 14:30 A | 2018-01-02 10:30 A | 404 | 100% | 2017-12-27 12:06 | 2017-12-28 08:07 | 12h |  | Painter | 12h | 12h |  |  |  |
| 406 | 1.7.31.4 | PAINTING - TOP COAT | 12h | 2018-01-26 08:00 A | 2018-01-29 18:01 A | 405 | 100% | 2017-12-28 08:07 | 2017-12-28 20:08 | 12h |  | Painter | 12h | 12h |  |  |  |
| 407 | 1.7.31.5 | TPI WITNESS | 1d | 2018-01-29 08:00 A | 2018-01-29 16:01 A | 406 | 100% | 2017-12-28 20:08 | 2017-12-29 11:23 | 0.91d | finish no earlier than 2018-01-29 17:00 | Fitter | 8h | 8h | 550 | 498.44 | 550 |
| 408 | 1.7.31.6 | DESPATCH CLEARANCE | 1d | 2018-01-29 17:00 A | 2018-01-30 09:00 A | 407 | 100% | 2017-12-29 11:23 | 2017-12-29 18:39 | 0.91d |  | Fitter | 8h | 8h | 550 | 498.44 | 550 |
| 409 | 1.7.31.7 | DESPATCH | 1d | 2018-02-05 08:59 A | 2018-02-05 17:00 A | 408 | 100% | 2017-12-29 18:39 | 2017-12-30 17:10 | 1.81d | finish no earlier than 2018-02-05 17:00 | Fitter [200%]; Helper [200%] | 32h | 32h | 1,900 | 3,443.75 | 1,900 |

Notes:
- 404: SC
