# 4180 NIOT

Schedule from MS Project, 2017-06-02 to 2018-03-16, costs in Rs., A marks actual dates.

## Calendars

- TEAM_Stand_Calendar: Mon-Sat 08:30-12:30, 13:30-17:30; Sun off. Exceptions (off unless hours are given): 2017-01-13 to 2023-08-12 (2nd Sat, recurring), 2017-01-26 to 2036-01-26 (Republic Day, recurring), 2017-01-27 to 2023-08-26 (4th Sat, recurring), 2017-05-01 to 2036-05-01 (May Day, recurring), 2017-08-15 to 2036-08-15 (Independence Day, recurring), 2017-08-25 (Vinakya Chaturthi'2017), 2017-09-29 (Ayudha Pooja'2017), 2017-10-02 to 2036-10-02 (Gandhi Jayanti, recurring), 2017-10-18 (Deepavali'2017), 2018-01-15 (Thiruvalluvar Day'2018).

## Resources

| Resource | Rate |
| --- | --- |
| SAW Welder | 68.75 |
| Lathe Operator | 120 |
| Helper | 50 |
| Grinder | 56.25 |
| Fitter | 68.75 |
| Driller | 68.75 |
| Gas Cutter | 68.75 |
| Client |  |
| Pipe (Cost) |  |
| Plate (Cost) |  |
| Rod (Cost) |  |
| PPC Engineer |  |
| Purchase Engineer |  |
| Forging Std (Cost) |  |
| Store |  |
| Finance |  |

## Schedule

| ID | WBS | Task | Type | Duration | Start | Finish | Predecessors | Complete | Baseline start | Baseline finish | Baseline duration | Constraint | Resources | Work | Actual work | Cost | Baseline cost | Actual cost |
| --- | --- | --- | --- | --- | --- | --- | --- | --- | --- | --- | --- | --- | --- | --- | --- | --- | --- | --- |
| 1 | 1 | PO RECEIPT |  | 1.06d | 2017-06-02 A | 2017-06-03 A |  | 100% | 2017-06-02 | 2017-06-03 | 1.06d |  |  |  |  |  |  |  |
| 2 | 2 | WORKORDER |  | 1.06d | 2017-06-03 A | 2017-06-05 A | 1 | 100% | 2017-06-03 | 2017-06-05 | 1.06d |  |  |  |  |  |  |  |
| 3 | 3 | CRM |  | 1.06d | 2017-06-05 A | 2017-06-06 A | 2 | 100% | 2017-06-05 | 2017-06-06 | 1.06d |  |  |  |  |  |  |  |
| 4 | 4 | DRAWING |  | 15.01d | 2017-06-06 A | 2017-06-26 A | 3 | 100% | 2017-06-06 | 2017-06-26 | 15.01d |  |  |  |  |  |  |  |
| 5 | 5 | PBG (PS) 5% |  | 2d | 2017-06-03 A | 2017-06-06 A | 1 | 100% | 2017-06-03 | 2017-06-06 | 2d |  |  |  |  |  |  |  |
| 6 | 6 | ABG (BG) 30% |  | 2d | 2017-06-26 A | 2017-06-28 A | 4 | 100% | 2017-06-26 | 2017-06-28 | 2d |  |  |  |  |  |  |  |
| 7 | 7 | **PR ISSUE** |  | 10d | 2017-06-26 A | 2017-07-07 A |  | 100% | 2017-06-26 | 2017-07-07 | 10d |  |  | 17h | 17h |  |  |  |
| 8 | 7.1 | 6AL 4VPLATE-TI GR.5 | milestone | 0d | 2017-07-07 A | 2017-07-07 A | 4FS+10d | 100% | 2017-07-07 | 2017-07-07 | 0d |  | Plate (Cost) [0.1%]; PPC Engineer |  |  |  |  |  |
| 9 | 7.2 | ROD-TI GR.5 |  | 1.06d | 2017-06-26 A | 2017-06-27 A | 4 | 100% | 2017-06-26 | 2017-06-27 | 1.06d |  | PPC Engineer; Rod (Cost) [0.1%] | 8.5h | 8.5h |  |  |  |
| 10 | 7.3 | FORGING-TI GR.5 |  | 1.06d | 2017-06-26 A | 2017-06-27 A | 4 | 100% | 2017-06-26 | 2017-06-27 | 1.06d |  | PPC Engineer; Forging Std (Cost) [0.1%] | 8.5h | 8.5h |  |  |  |
| 11 | 7.4 | FILLER WIRE-TI GR.5 |  | 1.06d | 2017-06-26 A | 2017-06-27 A | 4 | 100% | 2017-06-26 | 2017-06-27 | 1.06d |  |  |  |  |  |  |  |
| 12 | 7.5 | VITON 90 "O"RING |  | 1.06d | 2017-06-26 A | 2017-06-27 A | 4 | 100% | 2017-06-26 | 2017-06-27 | 1.06d |  |  |  |  |  |  |  |
| 13 | 8 | **MATERIAL ORDERING AND RECEIVING** |  | 65.06d | 2017-06-27 A | 2017-09-19 A |  | 100% | 2017-06-27 | 2017-09-19 | 65.06d |  |  | 1059.35h | 1059.35h |  |  |  |
| 14 | 8.1 | 6AL 4VPLATE-TI GR.5 |  | 55.06d | 2017-07-10 A | 2017-09-19 A | 8 | 100% | 2017-07-10 | 2017-09-19 | 55.06d |  | Plate (Cost) [0.1%]; Purchase Engineer | 440.45h | 440.45h |  |  |  |
| 15 | 8.2 | ROD-TI GR.5 |  | 22.31d | 2017-06-27 A | 2017-07-25 A | 9 | 100% | 2017-06-27 | 2017-07-25 | 22.31d |  | Purchase Engineer; Rod (Cost) [0.1%] | 178.5h | 178.5h |  |  |  |
| 16 | 8.3 | FORGING-TI GR.5 |  | 55.05d | 2017-06-27 A | 2017-09-06 A | 10 | 100% | 2017-06-27 | 2017-09-06 | 55.05d |  | Forging Std (Cost) [0.1%]; Purchase Engineer | 440.4h | 440.4h |  |  |  |
| 17 | 8.4 | FILLER WIRE-TI GR.5 |  | 45.04d | 2017-06-27 A | 2017-08-23 A | 11 | 100% | 2017-06-27 | 2017-08-23 | 45.04d |  |  |  |  |  |  |  |
| 18 | 8.5 | VITON 90 "O"RING |  | 33.56d | 2017-06-27 A | 2017-08-07 A | 12 | 100% | 2017-06-27 | 2017-08-07 | 33.56d |  |  |  |  |  |  |  |
| 19 | 9 | **Fabrication** |  | 53d | 2017-11-24 A | 2018-02-01 A |  | 100% | 2017-11-24 | 2018-02-01 | 53d |  |  | 3857h | 3857h | 258,442.46 | 258,442.46 | 258,442.46 |
| 20 | 9.1 | **Fabrication-A** |  | 53d | 2017-11-24 A | 2018-02-01 A |  | 100% | 2017-11-24 | 2018-02-01 | 53d |  |  | 1928h | 1928h | 129,192.48 | 129,192.48 | 129,192.48 |
| 21 | 9.1.1 | **MATERIAL RECEIPT** |  | 2d | 2017-11-24 A | 2017-11-27 A |  | 100% | 2017-11-24 | 2017-11-27 | 2d |  |  | 96h | 96h |  |  |  |
| 22 | 9.1.1.1 | SHELL |  | 2d | 2017-11-24 A | 2017-11-27 A |  | 100% | 2017-11-24 | 2017-11-27 | 2d | start no earlier than 2017-11-24 | Plate (Cost) [0.1%]; Store | 16h | 16h |  |  |  |
| 23 | 9.1.1.2 | LHS & RHS FLANGE |  | 2d | 2017-11-24 A | 2017-11-27 A | 22SS | 100% | 2017-11-24 | 2017-11-27 | 2d |  | Forging Std (Cost) [0.1%]; Store | 16h | 16h |  |  |  |
| 24 | 9.1.1.3 | LHS & RHS FLANGE |  | 2d | 2017-11-24 A | 2017-11-27 A | 22SS | 100% | 2017-11-24 | 2017-11-27 | 2d |  | Forging Std (Cost) [0.1%]; Store | 16h | 16h |  |  |  |
| 25 | 9.1.1.4 | END CAP FLANGE |  | 2d | 2017-11-24 A | 2017-11-27 A | 22SS | 100% | 2017-11-24 | 2017-11-27 | 2d |  | Forging Std (Cost) [0.1%]; Store | 16h | 16h |  |  |  |
| 26 | 9.1.1.5 | END CAP DISH |  | 2d | 2017-11-24 A | 2017-11-27 A | 22SS | 100% | 2017-11-24 | 2017-11-27 | 2d |  | Plate (Cost) [0.1%]; Store | 16h | 16h |  |  |  |
| 27 | 9.1.1.6 | ROD |  | 2d | 2017-11-24 A | 2017-11-27 A | 22SS | 100% | 2017-11-24 | 2017-11-27 | 2d |  | Rod (Cost) [0.1%]; Store | 16h | 16h |  |  |  |
| 28 | 9.1.1.7 | POSITIONING GUIDE |  | 2d | 2017-11-24 A | 2017-11-27 A | 22SS | 100% | 2017-11-24 | 2017-11-27 | 2d |  |  |  |  |  |  |  |

Notes:
- 22: Ti-6AI-4V(Gr.5)
- 23: Ti-6AI-4V(Gr.5)
- 24: Ti-6AI-4V(Gr.5)
- 25: Ti-6AI-4V(Gr.5)
- 26: Ti-6AI-4V(Gr.5)
- 27: Ti-6AI-4V(Gr.5)
- 28: Ti-6AI-4V(Gr.5)

| ID | WBS | Task | Duration | Start | Finish | Predecessors | Complete | Baseline start | Baseline finish | Baseline duration | Constraint | Resources | Work | Actual work | Cost | Baseline cost | Actual cost |
| --- | --- | --- | --- | --- | --- | --- | --- | --- | --- | --- | --- | --- | --- | --- | --- | --- | --- |
| 29 | 9.1.2 | **PLUG & DOWEL PIN M/C** | 10d | 2017-11-27 A | 2017-12-08 A |  | 100% | 2017-11-27 | 2017-12-08 | 10d |  |  | 208h | 208h | 19,740 | 19,740 | 19,740 |
| 30 | 9.1.2.1 | ROD MARKING | 1d | 2017-11-27 A | 2017-11-28 A | 27 | 100% | 2017-11-27 | 2017-11-28 | 1d |  | Fitter; Helper; Rod (Cost) [0.1%] | 16h | 16h | 950 | 950 | 950 |
| 31 | 9.1.2.2 | CUTTING | 1d | 2017-11-28 A | 2017-11-28 A | 30 | 100% | 2017-11-28 | 2017-11-28 | 1d |  | Gas Cutter; Helper | 16h | 16h | 950 | 950 | 950 |
| 32 | 9.1.2.3 | M/C | 14d | 2017-11-28 A | 2017-12-06 A | 31 | 100% | 2017-11-28 | 2017-12-06 | 14d |  | Lathe Operator | 112h | 112h | 13,440 | 13,440 | 13,440 |
| 33 | 9.1.2.4 | INSPECTION | 4d | 2017-12-06 A | 2017-12-08 A | 32 | 100% | 2017-12-06 | 2017-12-08 | 4d |  | Fitter [200%] | 64h | 64h | 4,400 | 4,400 | 4,400 |
| 34 | 9.1.3 | **SHELL FAB** | 51d | 2017-11-28 A | 2018-02-01 A |  | 100% | 2017-11-28 | 2018-02-01 | 51d |  |  | 152h | 152h | 11,760 | 11,760 | 11,760 |
| 35 | 9.1.3.1 | RECEIPT OF SHELL | 1d | 2017-11-28 A | 2017-11-28 A | 22 | 100% | 2017-11-28 | 2017-11-28 | 1d |  | Store; Plate (Cost) [0.1%] | 8h | 8h |  |  |  |
| 36 | 9.1.3.2 | INWARD INSPECTION | 2d | 2017-11-28 A | 2017-11-29 A | 35 | 100% | 2017-11-28 | 2017-11-29 | 2d |  | Fitter [200%]; Helper | 48h | 48h | 3,000 | 3,000 | 3,000 |
| 37 | 9.1.3.3 | MACHINING | 6d | 2017-11-29 A | 2017-12-02 A | 36 | 100% | 2017-11-29 | 2017-12-02 | 6d |  | Lathe Operator | 48h | 48h | 5,760 | 5,760 | 5,760 |
| 38 | 9.1.3.4 | ANODISING | 3d | 2018-01-29 A | 2018-01-31 A |  | 100% | 2018-01-29 | 2018-01-31 | 3d | start no earlier than 2018-01-29 |  |  |  |  |  |  |
| 39 | 9.1.3.5 | FINAL INSPECTION | 2d | 2018-01-31 A | 2018-02-01 A | 38 | 100% | 2018-01-31 | 2018-02-01 | 2d |  | Fitter [200%]; Helper | 48h | 48h | 3,000 | 3,000 | 3,000 |
| 40 | 9.1.4 | **FLG M/C** | 4d | 2017-11-27 A | 2017-12-01 A |  | 100% | 2017-11-27 | 2017-12-01 | 4d |  |  | 80h | 80h | 7,140 | 7,140 | 7,140 |
| 41 | 9.1.4.1 | FLG M/C | 4d | 2017-11-27 A | 2017-11-29 A | 24 | 100% | 2017-11-27 | 2017-11-29 | 4d |  | Lathe Operator; Forging Std (Cost) [0.1%] | 32h | 32h | 3,840 | 3,840 | 3,840 |
| 42 | 9.1.4.2 | FLG CHAMFERING | 2d | 2017-11-29 A | 2017-11-30 A | 41 | 100% | 2017-11-29 | 2017-11-30 | 2d |  | Driller | 16h | 16h | 1,100 | 1,100 | 1,100 |
| 43 | 9.1.4.3 | INSPECTION | 2d | 2017-11-30 A | 2017-12-01 A | 42 | 100% | 2017-11-30 | 2017-12-01 | 2d |  | Fitter [200%] | 32h | 32h | 2,200 | 2,200 | 2,200 |
| 44 | 9.1.5 | **FLG WELDING WITH SHELL** | 7d | 2017-12-08 A | 2017-12-18 A |  | 100% | 2017-12-08 | 2017-12-18 | 7d |  |  | 229h | 229h | 13,431.24 | 13,431.24 | 13,431.24 |
| 45 | 9.1.5.1 | LHS FLANGE FITUP WITH SHELL | 1d | 2017-12-08 A | 2017-12-11 A | 29, 34, 40 | 100% | 2017-12-08 | 2017-12-11 | 1d |  | Fitter; SAW Welder; Helper [200%] | 32h | 32h | 1,900 | 1,900 | 1,900 |
| 46 | 9.1.5.2 | FITUP INSPECTION | 1d | 2017-12-11 A | 2017-12-11 A | 45 | 100% | 2017-12-11 | 2017-12-11 | 1d |  | Fitter [200%]; Helper | 24h | 24h | 1,500 | 1,500 | 1,500 |
| 47 | 9.1.5.3 | ROOT WELDING | 1.5h | 2017-12-11 A | 2017-12-11 A | 46 | 100% | 2017-12-11 | 2017-12-11 | 1.5h |  | SAW Welder; Helper [200%] | 4.5h | 4.5h | 253.12 | 253.12 | 253.12 |
| 48 | 9.1.5.4 | BACK CHIP | 1h | 2017-12-11 A | 2017-12-11 A | 47 | 100% | 2017-12-11 | 2017-12-11 | 1h |  | Grinder | 1h | 1h | 56.25 | 56.25 | 56.25 |
| 49 | 9.1.5.5 | OUTSIDE WELDING | 9h | 2017-12-11 A | 2017-12-12 A | 48 | 100% | 2017-12-11 | 2017-12-12 | 9h |  | SAW Welder; Helper [200%] | 27h | 27h | 1,518.75 | 1,518.75 | 1,518.75 |
| 50 | 9.1.5.6 | FLUSH GRIND | 4h | 2017-12-12 A | 2017-12-12 A | 49 | 100% | 2017-12-12 | 2017-12-12 | 4h |  | Grinder | 4h | 4h | 225 | 225 | 225 |
| 51 | 9.1.5.7 | DP CHECK | 2h | 2017-12-12 A | 2017-12-12 A | 50 | 100% | 2017-12-12 | 2017-12-12 | 2h |  | Fitter; Helper | 4h | 4h | 237.5 | 237.5 | 237.5 |
| 52 | 9.1.5.8 | INSIDE WELDING | 4h | 2017-12-12 A | 2017-12-13 A | 51 | 100% | 2017-12-12 | 2017-12-13 | 4h |  | SAW Welder; Helper [200%] | 12h | 12h | 675 | 675 | 675 |
| 53 | 9.1.5.9 | FLUSH GRIND | 2h | 2017-12-13 A | 2017-12-13 A | 52 | 100% | 2017-12-13 | 2017-12-13 | 2h |  | Grinder | 2h | 2h | 112.5 | 112.5 | 112.5 |
| 54 | 9.1.5.10 | DP CHECK | 2h | 2017-12-13 A | 2017-12-13 A | 53 | 100% | 2017-12-13 | 2017-12-13 | 2h |  | Fitter; Helper | 4h | 4h | 237.5 | 237.5 | 237.5 |
| 55 | 9.1.5.11 | RT | 1d | 2017-12-13 A | 2017-12-14 A | 54 | 100% | 2017-12-13 | 2017-12-14 | 1d |  |  |  |  |  |  |  |
| 56 | 9.1.5.12 | LHS FLANGE FITUP WITH SHELL | 1d | 2017-12-14 A | 2017-12-14 A | 55 | 100% | 2017-12-14 | 2017-12-14 | 1d |  | Fitter; SAW Welder; Helper [200%] | 32h | 32h | 1,900 | 1,900 | 1,900 |
| 57 | 9.1.5.13 | FITUP INSPECTION | 1d | 2017-12-14 A | 2017-12-15 A | 56 | 100% | 2017-12-14 | 2017-12-15 | 1d |  | Fitter [200%]; Helper | 24h | 24h | 1,500 | 1,500 | 1,500 |
| 58 | 9.1.5.14 | ROOT WELDING | 1.5h | 2017-12-15 A | 2017-12-15 A | 57 | 100% | 2017-12-15 | 2017-12-15 | 1.5h |  | SAW Welder; Helper [200%] | 4.5h | 4.5h | 253.12 | 253.12 | 253.12 |
| 59 | 9.1.5.15 | BACK CHIP | 1h | 2017-12-15 A | 2017-12-15 A | 58 | 100% | 2017-12-15 | 2017-12-15 | 1h |  | Grinder | 1h | 1h | 56.25 | 56.25 | 56.25 |
| 60 | 9.1.5.16 | WELDING | 9h | 2017-12-15 A | 2017-12-15 A | 57 | 100% | 2017-12-15 | 2017-12-15 | 9h |  | SAW Welder; Helper [200%] | 27h | 27h | 1,518.75 | 1,518.75 | 1,518.75 |
| 61 | 9.1.5.17 | FLUSH GRIND | 4h | 2017-12-15 A | 2017-12-16 A | 60 | 100% | 2017-12-15 | 2017-12-16 | 4h |  | Grinder | 4h | 4h | 225 | 225 | 225 |
| 62 | 9.1.5.18 | DP CHECK | 2h | 2017-12-16 A | 2017-12-16 A | 61 | 100% | 2017-12-16 | 2017-12-16 | 2h |  | Fitter; Helper | 4h | 4h | 237.5 | 237.5 | 237.5 |
| 63 | 9.1.5.19 | INSIDE WELDING | 4h | 2017-12-16 A | 2017-12-16 A | 62 | 100% | 2017-12-16 | 2017-12-16 | 4h |  | SAW Welder; Helper [200%] | 12h | 12h | 675 | 675 | 675 |
| 64 | 9.1.5.20 | FLUSH GRIND | 2h | 2017-12-16 A | 2017-12-16 A | 63 | 100% | 2017-12-16 | 2017-12-16 | 2h |  | Grinder | 2h | 2h | 112.5 | 112.5 | 112.5 |
| 65 | 9.1.5.21 | DP CHECK | 2h | 2017-12-16 A | 2017-12-16 A | 64 | 100% | 2017-12-16 | 2017-12-16 | 2h |  | Fitter; Helper | 4h | 4h | 237.5 | 237.5 | 237.5 |
| 66 | 9.1.5.22 | RT | 1d | 2017-12-18 A | 2017-12-18 A | 65 | 100% | 2017-12-18 | 2017-12-18 | 1d |  |  |  |  |  |  |  |

Notes:
- 29: 20NOS+10 NOS SPARE
- 34: OD465/ID420*350Lg
- 38: SC
- 44: 2NOS
- 45: OD530/ID420*120T
- 55: SC
- 66: SC

| ID | WBS | Task | Duration | Start | Finish | Predecessors | Complete | Baseline start | Baseline finish | Baseline duration | Resources | Work | Actual work | Cost | Baseline cost | Actual cost |
| --- | --- | --- | --- | --- | --- | --- | --- | --- | --- | --- | --- | --- | --- | --- | --- | --- |
| 67 | 9.1.6 | **POSITIONING GUIDE** | 5.14d | 2018-01-01 A | 2018-01-08 A |  | 100% | 2018-01-01 | 2018-01-08 | 5.14d |  | 128h | 128h | 9,170 | 9,170 | 9,170 |
| 68 | 9.1.6.1 | M/C | 2d | 2018-01-01 A | 2018-01-02 A | 28FS+28d | 100% | 2018-01-01 | 2018-01-02 | 2d | Lathe Operator | 16h | 16h | 1,920 | 1,920 | 1,920 |
| 69 | 9.1.6.2 | HOLES MARKING | 1d | 2018-01-02 A | 2018-01-03 A | 68 | 100% | 2018-01-02 | 2018-01-03 | 1d | Fitter; Helper | 16h | 16h | 950 | 950 | 950 |
| 70 | 9.1.6.3 | DRILLING AND TAPPING | 2d | 2018-01-03 A | 2018-01-05 A | 69 | 100% | 2018-01-03 | 2018-01-05 | 2d | Driller | 16h | 16h | 1,100 | 1,100 | 1,100 |
| 71 | 9.1.6.4 | INSPECTION | 2d | 2018-01-05 A | 2018-01-06 A | 70 | 100% | 2018-01-05 | 2018-01-06 | 2d | Fitter [200%] | 32h | 32h | 2,200 | 2,200 | 2,200 |
| 72 | 9.1.6.5 | FITUP WITH SHELL | 1d | 2018-01-06 A | 2018-01-06 A | 44, 71 | 100% | 2018-01-06 | 2018-01-06 | 1d | Fitter; SAW Welder; Helper [200%] | 32h | 32h | 1,900 | 1,900 | 1,900 |
| 73 | 9.1.6.6 | INSPECTION | 1d | 2018-01-06 A | 2018-01-08 A | 72 | 100% | 2018-01-06 | 2018-01-08 | 1d | Fitter [200%] | 16h | 16h | 1,100 | 1,100 | 1,100 |
| 74 | 9.1.7 | **DISH FABRICATION** | 12d | 2017-11-29 A | 2017-12-14 A |  | 100% | 2017-11-29 | 2017-12-14 | 12d |  | 130h | 130h | 9,220 | 9,220 | 9,220 |
| 75 | 9.1.7.1 | DISH PLATE MARKING | 3h | 2017-11-29 A | 2017-11-29 A | 26, 36 | 100% | 2017-11-29 | 2017-11-29 | 3h | Fitter; Helper; Plate (Cost) | 6h | 6h | 356.25 | 356.25 | 356.25 |
| 76 | 9.1.7.2 | DISH PLATE CUTTING | 4h | 2017-11-29 A | 2017-11-30 A | 75 | 100% | 2017-11-29 | 2017-11-30 | 4h | Gas Cutter; Helper | 8h | 8h | 475 | 475 | 475 |
| 77 | 9.1.7.3 | DISH PLATE GRINDING | 3h | 2017-11-30 A | 2017-11-30 A | 76 | 100% | 2017-11-30 | 2017-11-30 | 3h | Grinder | 3h | 3h | 168.75 | 168.75 | 168.75 |
| 78 | 9.1.7.4 | DISH FORMING | 7d | 2017-11-30 A | 2017-12-08 A | 77 | 100% | 2017-11-30 | 2017-12-08 | 7d |  |  |  |  |  |  |
| 79 | 9.1.7.5 | DISH INSPECTION | 2d | 2017-12-08 A | 2017-12-11 A | 78 | 100% | 2017-12-08 | 2017-12-11 | 2d | Fitter [200%] | 32h | 32h | 2,200 | 2,200 | 2,200 |
| 80 | 9.1.7.6 | DISH SURFACE GRINDING | 2d | 2017-12-11 A | 2017-12-12 A | 79 | 100% | 2017-12-11 | 2017-12-12 | 2d | Grinder | 16h | 16h | 900 | 900 | 900 |
| 81 | 9.1.7.7 | DISH EP | 3h | 2017-12-12 A | 2017-12-12 A | 80 | 100% | 2017-12-12 | 2017-12-12 | 3h | Grinder | 3h | 3h | 168.75 | 168.75 | 168.75 |
| 82 | 9.1.7.8 | SLOT MARKING | 3h | 2017-12-12 A | 2017-12-12 A | 81 | 100% | 2017-12-12 | 2017-12-12 | 3h | Fitter; Helper | 6h | 6h | 356.25 | 356.25 | 356.25 |
| 83 | 9.1.7.9 | CUTTING | 4h | 2017-12-12 A | 2017-12-12 A | 82 | 100% | 2017-12-12 | 2017-12-12 | 4h | Gas Cutter; Helper | 8h | 8h | 475 | 475 | 475 |
| 84 | 9.1.7.10 | MACHINING | 2d | 2017-12-12 A | 2017-12-13 A | 83 | 100% | 2017-12-12 | 2017-12-13 | 2d | Lathe Operator | 16h | 16h | 1,920 | 1,920 | 1,920 |
| 85 | 9.1.7.11 | DISH INSPECTION | 2d | 2017-12-13 A | 2017-12-14 A | 84 | 100% | 2017-12-13 | 2017-12-14 | 2d | Fitter [200%] | 32h | 32h | 2,200 | 2,200 | 2,200 |
| 86 | 9.1.8 | **FABRICATED COUPLING** | 9.5d | 2017-11-29 A | 2017-12-12 A |  | 100% | 2017-11-29 | 2017-12-12 | 9.5d |  | 320h | 320h | 21,490 | 21,490 | 21,490 |
| 87 | 9.1.8.1 | MARKING | 0.5d | 2017-11-29 A | 2017-11-30 A | 27, 75 | 100% | 2017-11-29 | 2017-11-30 | 0.5d | Fitter; Helper | 8h | 8h | 475 | 475 | 475 |
| 88 | 9.1.8.2 | CUTTING | 0.5d | 2017-11-30 A | 2017-11-30 A | 87 | 100% | 2017-11-30 | 2017-11-30 | 0.5d | Gas Cutter; Helper | 8h | 8h | 475 | 475 | 475 |
| 89 | 9.1.8.3 | M/C | 4d | 2017-11-30 A | 2017-12-02 A | 88 | 100% | 2017-11-30 | 2017-12-02 | 4d | Lathe Operator | 32h | 32h | 3,840 | 3,840 | 3,840 |
| 90 | 9.1.8.4 | FORMING | 4d | 2017-12-02 A | 2017-12-05 A | 89 | 100% | 2017-12-02 | 2017-12-05 | 4d | Fitter [200%]; Helper | 96h | 96h | 6,000 | 6,000 | 6,000 |
| 91 | 9.1.8.5 | DRILLING | 2d | 2017-12-05 A | 2017-12-06 A | 90 | 100% | 2017-12-05 | 2017-12-06 | 2d | Driller | 16h | 16h | 1,100 | 1,100 | 1,100 |
| 92 | 9.1.8.6 | EP | 1d | 2017-12-06 A | 2017-12-06 A | 91 | 100% | 2017-12-06 | 2017-12-06 | 1d | Grinder | 8h | 8h | 450 | 450 | 450 |
| 93 | 9.1.8.7 | FITUP WITH DISH | 2d | 2017-12-06 A | 2017-12-07 A | 92 | 100% | 2017-12-06 | 2017-12-07 | 2d | Fitter; SAW Welder; Helper [200%] | 64h | 64h | 3,800 | 3,800 | 3,800 |
| 94 | 9.1.8.8 | FITUP INSPECTION | 2d | 2017-12-07 A | 2017-12-08 A | 93 | 100% | 2017-12-07 | 2017-12-08 | 2d | Fitter [200%] | 32h | 32h | 2,200 | 2,200 | 2,200 |
| 95 | 9.1.8.9 | WELDING | 2d | 2017-12-08 A | 2017-12-11 A | 94 | 100% | 2017-12-08 | 2017-12-11 | 2d | SAW Welder; Helper [200%] | 48h | 48h | 2,700 | 2,700 | 2,700 |
| 96 | 9.1.8.10 | FLUSH GRIND | 1d | 2017-12-11 A | 2017-12-12 A | 95 | 100% | 2017-12-11 | 2017-12-12 | 1d | Grinder | 8h | 8h | 450 | 450 | 450 |

Notes:
- 74: 2NOS
- 75: BLANK DIA~625*16T
- 78: SC

| ID | WBS | Task | Duration | Start | Finish | Predecessors | Complete | Baseline start | Baseline finish | Baseline duration | Resources | Work | Actual work | Cost | Baseline cost | Actual cost |
| --- | --- | --- | --- | --- | --- | --- | --- | --- | --- | --- | --- | --- | --- | --- | --- | --- |
| 97 | 9.1.9 | **END CAP M/C** | 7d | 2017-12-02 A | 2017-12-12 A |  | 100% | 2017-12-02 | 2017-12-12 | 7d |  | 144h | 144h | 12,060 | 12,060 | 12,060 |
| 98 | 9.1.9.1 | END CAP M/C | 6d | 2017-12-02 A | 2017-12-06 A | 25, 89 | 100% | 2017-12-02 | 2017-12-06 | 6d | Lathe Operator | 48h | 48h | 5,760 | 5,760 | 5,760 |
| 99 | 9.1.9.2 | END CAP CHAMFERING | 6d | 2017-12-06 A | 2017-12-11 A | 98 | 100% | 2017-12-06 | 2017-12-11 | 6d | Driller | 48h | 48h | 3,300 | 3,300 | 3,300 |
| 100 | 9.1.9.3 | INSPECTION | 2d | 2017-12-11 A | 2017-12-12 A | 99 | 100% | 2017-12-11 | 2017-12-12 | 2d | Fitter [200%]; Helper | 48h | 48h | 3,000 | 3,000 | 3,000 |
| 101 | 9.1.10 | **DISH WELDING WITH END CAP** | 6.36d | 2018-01-08 A | 2018-01-17 A |  | 100% | 2018-01-08 | 2018-01-17 | 6.36d |  | 193h | 193h | 11,381.24 | 11,381.24 | 11,381.24 |
| 102 | 9.1.10.1 | LHS END CAP FITUP WITH SHELL | 1d | 2018-01-08 A | 2018-01-08 A | 67, 74, 97 | 100% | 2018-01-08 | 2018-01-08 | 1d | Fitter; SAW Welder; Helper [200%] | 32h | 32h | 1,900 | 1,900 | 1,900 |
| 103 | 9.1.10.2 | FITUP INSPECTION | 1d | 2018-01-08 A | 2018-01-09 A | 102 | 100% | 2018-01-08 | 2018-01-09 | 1d | Fitter [200%]; Helper | 24h | 24h | 1,500 | 1,500 | 1,500 |
| 104 | 9.1.10.3 | ROOT WELDING | 1.5h | 2018-01-09 A | 2018-01-09 A | 103 | 100% | 2018-01-09 | 2018-01-09 | 1.5h | SAW Welder; Helper [200%] | 4.5h | 4.5h | 253.12 | 253.12 | 253.12 |
| 105 | 9.1.10.4 | BACK CHIP | 1h | 2018-01-09 A | 2018-01-09 A | 104 | 100% | 2018-01-09 | 2018-01-09 | 1h | Grinder | 1h | 1h | 56.25 | 56.25 | 56.25 |
| 106 | 9.1.10.5 | OUTSIDE WELDING | 9h | 2018-01-09 A | 2018-01-09 A | 105 | 100% | 2018-01-09 | 2018-01-09 | 9h | SAW Welder; Helper [200%] | 27h | 27h | 1,518.75 | 1,518.75 | 1,518.75 |
| 107 | 9.1.10.6 | FLUSH GRIND | 4h | 2018-01-09 A | 2018-01-10 A | 106 | 100% | 2018-01-09 | 2018-01-10 | 4h | Grinder | 4h | 4h | 225 | 225 | 225 |
| 108 | 9.1.10.7 | DP CHECK | 2h | 2018-01-10 A | 2018-01-10 A | 107 | 100% | 2018-01-10 | 2018-01-10 | 2h | Fitter; Helper | 4h | 4h | 237.5 | 237.5 | 237.5 |
| 109 | 9.1.10.8 | RT | 1d | 2018-01-10 A | 2018-01-11 A | 108 | 100% | 2018-01-10 | 2018-01-11 | 1d |  |  |  |  |  |  |
| 110 | 9.1.10.9 | LHS END CAP FITUP WITH SHELL | 1d | 2018-01-11 A | 2018-01-11 A | 109 | 100% | 2018-01-11 | 2018-01-11 | 1d | Fitter; SAW Welder; Helper [200%] | 32h | 32h | 1,900 | 1,900 | 1,900 |
| 111 | 9.1.10.10 | FITUP INSPECTION | 1d | 2018-01-11 A | 2018-01-12 A | 110 | 100% | 2018-01-11 | 2018-01-12 | 1d | Fitter [200%]; Helper | 24h | 24h | 1,500 | 1,500 | 1,500 |
| 112 | 9.1.10.11 | ROOT WELDING | 1.5h | 2018-01-12 A | 2018-01-12 A | 111 | 100% | 2018-01-12 | 2018-01-12 | 1.5h | SAW Welder; Helper [200%] | 4.5h | 4.5h | 253.12 | 253.12 | 253.12 |
| 113 | 9.1.10.12 | BACK CHIP | 1h | 2018-01-12 A | 2018-01-12 A | 112 | 100% | 2018-01-12 | 2018-01-12 | 1h | Grinder | 1h | 1h | 56.25 | 56.25 | 56.25 |
| 114 | 9.1.10.13 | OUTSIDE WELDING | 9h | 2018-01-12 A | 2018-01-16 A | 113 | 100% | 2018-01-12 | 2018-01-16 | 9h | SAW Welder; Helper [200%] | 27h | 27h | 1,518.75 | 1,518.75 | 1,518.75 |
| 115 | 9.1.10.14 | FLUSH GRIND | 4h | 2018-01-16 A | 2018-01-16 A | 114 | 100% | 2018-01-16 | 2018-01-16 | 4h | Grinder | 4h | 4h | 225 | 225 | 225 |
| 116 | 9.1.10.15 | DP CHECK | 2h | 2018-01-16 A | 2018-01-16 A | 115 | 100% | 2018-01-16 | 2018-01-16 | 2h | Fitter; Helper | 4h | 4h | 237.5 | 237.5 | 237.5 |
| 117 | 9.1.10.16 | RT | 1d | 2018-01-16 A | 2018-01-17 A | 116 | 100% | 2018-01-16 | 2018-01-17 | 1d |  |  |  |  |  |  |
| 118 | 9.1.11 | **FINAL INSPECTION AND DESPATCH** | 5d | 2018-01-17 A | 2018-01-23 A |  | 100% | 2018-01-17 | 2018-01-23 | 5d |  | 248h | 248h | 13,800 | 13,800 | 13,800 |
| 119 | 9.1.11.1 | FINAL INSPECTION AND TESTING | 6d | 2018-01-17 A | 2018-01-20 A | 101 | 100% | 2018-01-17 | 2018-01-20 | 6d | Fitter [200%]; Helper [300%] | 240h | 240h | 13,800 | 13,800 | 13,800 |
| 120 | 9.1.11.2 | DESPATCH CLEARANCE | 1d | 2018-01-20 A | 2018-01-22 A | 119 | 100% | 2018-01-20 | 2018-01-22 | 1d |  |  |  |  |  |  |
| 121 | 9.1.11.3 | DESPATCH | 1d | 2018-01-22 A | 2018-01-23 A | 120 | 100% | 2018-01-22 | 2018-01-23 | 1d | Store | 8h | 8h |  |  |  |

Notes:
- 102: OD530/ID400*30T
- 109: SC
- 110: OD530/ID400*30T
- 117: SC

| ID | WBS | Task | Duration | Start | Finish | Predecessors | Complete | Baseline start | Baseline finish | Baseline duration | Constraint | Resources | Work | Actual work | Cost | Baseline cost | Actual cost |
| --- | --- | --- | --- | --- | --- | --- | --- | --- | --- | --- | --- | --- | --- | --- | --- | --- | --- |
| 122 | 9.2 | **Fabrication-B** | 46d | 2017-11-24 A | 2018-01-22 A |  | 100% | 2017-11-24 | 2018-01-22 | 46d |  |  | 1929h | 1929h | 129,249.98 | 129,249.98 | 129,249.98 |
| 123 | 9.2.1 | **MATERIAL RECEIPT** | 2d | 2017-11-24 A | 2017-11-27 A |  | 100% | 2017-11-24 | 2017-11-27 | 2d |  |  | 96h | 96h |  |  |  |
| 124 | 9.2.1.1 | SHELL | 2d | 2017-11-24 A | 2017-11-27 A |  | 100% | 2017-11-24 | 2017-11-27 | 2d | start no earlier than 2017-11-24 | Plate (Cost) [0.1%]; Store | 16h | 16h |  |  |  |
| 125 | 9.2.1.2 | LHS & RHS FLANGE | 2d | 2017-11-24 A | 2017-11-27 A | 124SS | 100% | 2017-11-24 | 2017-11-27 | 2d |  | Forging Std (Cost) [0.1%]; Store | 16h | 16h |  |  |  |
| 126 | 9.2.1.3 | LHS & RHS FLANGE | 2d | 2017-11-24 A | 2017-11-27 A | 124SS | 100% | 2017-11-24 | 2017-11-27 | 2d |  | Forging Std (Cost) [0.1%]; Store | 16h | 16h |  |  |  |
| 127 | 9.2.1.4 | END CAP FLANGE | 2d | 2017-11-24 A | 2017-11-27 A | 124SS | 100% | 2017-11-24 | 2017-11-27 | 2d |  | Forging Std (Cost) [0.1%]; Store | 16h | 16h |  |  |  |
| 128 | 9.2.1.5 | END CAP DISH | 2d | 2017-11-24 A | 2017-11-27 A | 124SS | 100% | 2017-11-24 | 2017-11-27 | 2d |  | Plate (Cost) [0.1%]; Store | 16h | 16h |  |  |  |
| 129 | 9.2.1.6 | ROD | 2d | 2017-11-24 A | 2017-11-27 A | 124SS | 100% | 2017-11-24 | 2017-11-27 | 2d |  | Rod (Cost) [0.1%]; Store | 16h | 16h |  |  |  |
| 130 | 9.2.1.7 | POSITIONING GUIDE | 2d | 2017-11-24 A | 2017-11-27 A | 124SS | 100% | 2017-11-24 | 2017-11-27 | 2d |  |  |  |  |  |  |  |
| 131 | 9.2.2 | **PLUG & DOWEL PIN M/C** | 10d | 2017-11-27 A | 2017-12-08 A |  | 100% | 2017-11-27 | 2017-12-08 | 10d |  |  | 208h | 208h | 19,740 | 19,740 | 19,740 |
| 132 | 9.2.2.1 | ROD MARKING | 1d | 2017-11-27 A | 2017-11-28 A | 129 | 100% | 2017-11-27 | 2017-11-28 | 1d |  | Fitter; Helper; Rod (Cost) [0.1%] | 16h | 16h | 950 | 950 | 950 |
| 133 | 9.2.2.2 | CUTTING | 1d | 2017-11-28 A | 2017-11-28 A | 132 | 100% | 2017-11-28 | 2017-11-28 | 1d |  | Gas Cutter; Helper | 16h | 16h | 950 | 950 | 950 |
| 134 | 9.2.2.3 | M/C | 14d | 2017-11-28 A | 2017-12-06 A | 133 | 100% | 2017-11-28 | 2017-12-06 | 14d |  | Lathe Operator | 112h | 112h | 13,440 | 13,440 | 13,440 |
| 135 | 9.2.2.4 | INSPECTION | 4d | 2017-12-06 A | 2017-12-08 A | 134 | 100% | 2017-12-06 | 2017-12-08 | 4d |  | Fitter [200%] | 64h | 64h | 4,400 | 4,400 | 4,400 |
| 136 | 9.2.3 | **SHELL FAB** | 9d | 2017-11-28 A | 2017-12-07 A |  | 100% | 2017-11-28 | 2017-12-07 | 9d |  |  | 152h | 152h | 11,760 | 11,760 | 11,760 |
| 137 | 9.2.3.1 | RECEIPT OF SHELL | 1d | 2017-11-28 A | 2017-11-28 A | 124 | 100% | 2017-11-28 | 2017-11-28 | 1d |  | Store; Plate (Cost) [0.1%] | 8h | 8h |  |  |  |
| 138 | 9.2.3.2 | INWARD INSPECTION | 2d | 2017-11-28 A | 2017-11-29 A | 137 | 100% | 2017-11-28 | 2017-11-29 | 2d |  | Fitter [200%]; Helper | 48h | 48h | 3,000 | 3,000 | 3,000 |
| 139 | 9.2.3.3 | MACHINING | 6d | 2017-11-29 A | 2017-12-02 A | 138 | 100% | 2017-11-29 | 2017-12-02 | 6d |  | Lathe Operator | 48h | 48h | 5,760 | 5,760 | 5,760 |
| 140 | 9.2.3.4 | ANODISING | 3d | 2017-12-04 A | 2017-12-06 A | 139 | 100% | 2017-12-04 | 2017-12-06 | 3d |  |  |  |  |  |  |  |
| 141 | 9.2.3.5 | FINAL INSPECTION | 2d | 2017-12-06 A | 2017-12-07 A | 140 | 100% | 2017-12-06 | 2017-12-07 | 2d |  | Fitter [200%]; Helper | 48h | 48h | 3,000 | 3,000 | 3,000 |
| 142 | 9.2.4 | **FLG M/C** | 4d | 2017-11-27 A | 2017-12-01 A |  | 100% | 2017-11-27 | 2017-12-01 | 4d |  |  | 80h | 80h | 7,140 | 7,140 | 7,140 |
| 143 | 9.2.4.1 | FLG M/C | 4d | 2017-11-27 A | 2017-11-29 A | 126 | 100% | 2017-11-27 | 2017-11-29 | 4d |  | Lathe Operator; Forging Std (Cost) [0.1%] | 32h | 32h | 3,840 | 3,840 | 3,840 |
| 144 | 9.2.4.2 | FLG CHAMFERING | 2d | 2017-11-29 A | 2017-11-30 A | 143 | 100% | 2017-11-29 | 2017-11-30 | 2d |  | Driller [50%] | 16h | 16h | 1,100 | 1,100 | 1,100 |
| 145 | 9.2.4.3 | INSPECTION | 2d | 2017-11-30 A | 2017-12-01 A | 144 | 100% | 2017-11-30 | 2017-12-01 | 2d |  | Fitter [200%] | 32h | 32h | 2,200 | 2,200 | 2,200 |

Notes:
- 124: Ti-6AI-4V(Gr.5)
- 125: Ti-6AI-4V(Gr.5)
- 126: Ti-6AI-4V(Gr.5)
- 127: Ti-6AI-4V(Gr.5)
- 128: Ti-6AI-4V(Gr.5)
- 129: Ti-6AI-4V(Gr.5)
- 130: Ti-6AI-4V(Gr.5)
- 131: 20NOS+10 NOS SPARE
- 136: OD465/ID420*350Lg
- 140: SC

| ID | WBS | Task | Duration | Start | Finish | Predecessors | Complete | Baseline start | Baseline finish | Baseline duration | Resources | Work | Actual work | Cost | Baseline cost | Actual cost |
| --- | --- | --- | --- | --- | --- | --- | --- | --- | --- | --- | --- | --- | --- | --- | --- | --- |
| 146 | 9.2.5 | **FLG WELDING WITH SHELL** | 7d | 2017-12-08 A | 2017-12-18 A |  | 100% | 2017-12-08 | 2017-12-18 | 7d |  | 229h | 229h | 13,431.24 | 13,431.24 | 13,431.24 |
| 147 | 9.2.5.1 | LHS FLANGE FITUP WITH SHELL | 1d | 2017-12-08 A | 2017-12-11 A | 131, 136, 142 | 100% | 2017-12-08 | 2017-12-11 | 1d | Fitter; SAW Welder; Helper [200%] | 32h | 32h | 1,900 | 1,900 | 1,900 |
| 148 | 9.2.5.2 | FITUP INSPECTION | 1d | 2017-12-11 A | 2017-12-11 A | 147 | 100% | 2017-12-11 | 2017-12-11 | 1d | Fitter [200%]; Helper | 24h | 24h | 1,500 | 1,500 | 1,500 |
| 149 | 9.2.5.3 | ROOT WELDING | 1.5h | 2017-12-11 A | 2017-12-11 A | 148 | 100% | 2017-12-11 | 2017-12-11 | 1.5h | SAW Welder; Helper [200%] | 4.5h | 4.5h | 253.12 | 253.12 | 253.12 |
| 150 | 9.2.5.4 | BACK CHIP | 1h | 2017-12-11 A | 2017-12-11 A | 149 | 100% | 2017-12-11 | 2017-12-11 | 1h | Grinder | 1h | 1h | 56.25 | 56.25 | 56.25 |
| 151 | 9.2.5.5 | OUTSIDE WELDING | 9h | 2017-12-11 A | 2017-12-12 A | 150 | 100% | 2017-12-11 | 2017-12-12 | 9h | SAW Welder; Helper [200%] | 27h | 27h | 1,518.75 | 1,518.75 | 1,518.75 |
| 152 | 9.2.5.6 | FLUSH GRIND | 4h | 2017-12-12 A | 2017-12-12 A | 151 | 100% | 2017-12-12 | 2017-12-12 | 4h | Grinder | 4h | 4h | 225 | 225 | 225 |
| 153 | 9.2.5.7 | DP CHECK | 2h | 2017-12-12 A | 2017-12-12 A | 152 | 100% | 2017-12-12 | 2017-12-12 | 2h | Fitter; Helper | 4h | 4h | 237.5 | 237.5 | 237.5 |
| 154 | 9.2.5.8 | INSIDE WELDING | 4h | 2017-12-12 A | 2017-12-13 A | 153 | 100% | 2017-12-12 | 2017-12-13 | 4h | SAW Welder; Helper [200%] | 12h | 12h | 675 | 675 | 675 |
| 155 | 9.2.5.9 | FLUSH GRIND | 2h | 2017-12-13 A | 2017-12-13 A | 154 | 100% | 2017-12-13 | 2017-12-13 | 2h | Grinder | 2h | 2h | 112.5 | 112.5 | 112.5 |
| 156 | 9.2.5.10 | DP CHECK | 2h | 2017-12-13 A | 2017-12-13 A | 155 | 100% | 2017-12-13 | 2017-12-13 | 2h | Fitter; Helper | 4h | 4h | 237.5 | 237.5 | 237.5 |
| 157 | 9.2.5.11 | RT | 1d | 2017-12-13 A | 2017-12-14 A | 156 | 100% | 2017-12-13 | 2017-12-14 | 1d |  |  |  |  |  |  |
| 158 | 9.2.5.12 | LHS FLANGE FITUP WITH SHELL | 1d | 2017-12-14 A | 2017-12-14 A | 157 | 100% | 2017-12-14 | 2017-12-14 | 1d | Fitter; SAW Welder; Helper [200%] | 32h | 32h | 1,900 | 1,900 | 1,900 |
| 159 | 9.2.5.13 | FITUP INSPECTION | 1d | 2017-12-14 A | 2017-12-15 A | 158 | 100% | 2017-12-14 | 2017-12-15 | 1d | Fitter [200%]; Helper | 24h | 24h | 1,500 | 1,500 | 1,500 |
| 160 | 9.2.5.14 | ROOT WELDING | 1.5h | 2017-12-15 A | 2017-12-15 A | 159 | 100% | 2017-12-15 | 2017-12-15 | 1.5h | SAW Welder; Helper [200%] | 4.5h | 4.5h | 253.12 | 253.12 | 253.12 |
| 161 | 9.2.5.15 | BACK CHIP | 1h | 2017-12-15 A | 2017-12-15 A | 160 | 100% | 2017-12-15 | 2017-12-15 | 1h | Grinder | 1h | 1h | 56.25 | 56.25 | 56.25 |
| 162 | 9.2.5.16 | WELDING | 9h | 2017-12-15 A | 2017-12-15 A | 159 | 100% | 2017-12-15 | 2017-12-15 | 9h | SAW Welder; Helper [200%] | 27h | 27h | 1,518.75 | 1,518.75 | 1,518.75 |
| 163 | 9.2.5.17 | FLUSH GRIND | 4h | 2017-12-15 A | 2017-12-16 A | 162 | 100% | 2017-12-15 | 2017-12-16 | 4h | Grinder | 4h | 4h | 225 | 225 | 225 |
| 164 | 9.2.5.18 | DP CHECK | 2h | 2017-12-16 A | 2017-12-16 A | 163 | 100% | 2017-12-16 | 2017-12-16 | 2h | Fitter; Helper | 4h | 4h | 237.5 | 237.5 | 237.5 |
| 165 | 9.2.5.19 | INSIDE WELDING | 4h | 2017-12-16 A | 2017-12-16 A | 164 | 100% | 2017-12-16 | 2017-12-16 | 4h | SAW Welder; Helper [200%] | 12h | 12h | 675 | 675 | 675 |
| 166 | 9.2.5.20 | FLUSH GRIND | 2h | 2017-12-16 A | 2017-12-16 A | 165 | 100% | 2017-12-16 | 2017-12-16 | 2h | Grinder | 2h | 2h | 112.5 | 112.5 | 112.5 |
| 167 | 9.2.5.21 | DP CHECK | 2h | 2017-12-16 A | 2017-12-16 A | 166 | 100% | 2017-12-16 | 2017-12-16 | 2h | Fitter; Helper | 4h | 4h | 237.5 | 237.5 | 237.5 |
| 168 | 9.2.5.22 | RT | 1d | 2017-12-18 A | 2017-12-18 A | 167 | 100% | 2017-12-18 | 2017-12-18 | 1d |  |  |  |  |  |  |
| 169 | 9.2.6 | **POSITIONING GUIDE** | 5.14d | 2018-01-01 A | 2018-01-08 A |  | 100% | 2018-01-01 | 2018-01-08 | 5.14d |  | 128h | 128h | 9,170 | 9,170 | 9,170 |
| 170 | 9.2.6.1 | M/C | 2d | 2018-01-01 A | 2018-01-02 A | 130FS+28d | 100% | 2018-01-01 | 2018-01-02 | 2d | Lathe Operator | 16h | 16h | 1,920 | 1,920 | 1,920 |
| 171 | 9.2.6.2 | HOLES MARKING | 1d | 2018-01-02 A | 2018-01-03 A | 170 | 100% | 2018-01-02 | 2018-01-03 | 1d | Fitter; Helper | 16h | 16h | 950 | 950 | 950 |
| 172 | 9.2.6.3 | DRILLING AND TAPPING | 2d | 2018-01-03 A | 2018-01-05 A | 171 | 100% | 2018-01-03 | 2018-01-05 | 2d | Driller [50%] | 16h | 16h | 1,100 | 1,100 | 1,100 |
| 173 | 9.2.6.4 | INSPECTION | 2d | 2018-01-05 A | 2018-01-06 A | 172 | 100% | 2018-01-05 | 2018-01-06 | 2d | Fitter [200%] | 32h | 32h | 2,200 | 2,200 | 2,200 |
| 174 | 9.2.6.5 | FITUP WITH SHELL | 1d | 2018-01-06 A | 2018-01-06 A | 146, 173 | 100% | 2018-01-06 | 2018-01-06 | 1d | Fitter; SAW Welder; Helper [200%] | 32h | 32h | 1,900 | 1,900 | 1,900 |
| 175 | 9.2.6.6 | INSPECTION | 1d | 2018-01-06 A | 2018-01-08 A | 174 | 100% | 2018-01-06 | 2018-01-08 | 1d | Fitter [200%] | 16h | 16h | 1,100 | 1,100 | 1,100 |

Notes:
- 146: 2NOS
- 147: OD530/ID420*120T
- 157: SC
- 168: SC

| ID | WBS | Task | Duration | Start | Finish | Predecessors | Complete | Baseline start | Baseline finish | Baseline duration | Resources | Work | Actual work | Cost | Baseline cost | Actual cost |
| --- | --- | --- | --- | --- | --- | --- | --- | --- | --- | --- | --- | --- | --- | --- | --- | --- |
| 176 | 9.2.7 | **DISH FABRICATION** | 12d | 2017-11-29 A | 2017-12-14 A |  | 100% | 2017-11-29 | 2017-12-14 | 12d |  | 130h | 130h | 9,220 | 9,220 | 9,220 |
| 177 | 9.2.7.1 | DISH PLATE MARKING | 3h | 2017-11-29 A | 2017-11-29 A | 128, 138 | 100% | 2017-11-29 | 2017-11-29 | 3h | Fitter; Helper; Plate (Cost) | 6h | 6h | 356.25 | 356.25 | 356.25 |
| 178 | 9.2.7.2 | DISH PLATE CUTTING | 4h | 2017-11-29 A | 2017-11-30 A | 177 | 100% | 2017-11-29 | 2017-11-30 | 4h | Gas Cutter; Helper | 8h | 8h | 475 | 475 | 475 |
| 179 | 9.2.7.3 | DISH PLATE GRINDING | 3h | 2017-11-30 A | 2017-11-30 A | 178 | 100% | 2017-11-30 | 2017-11-30 | 3h | Grinder | 3h | 3h | 168.75 | 168.75 | 168.75 |
| 180 | 9.2.7.4 | DISH FORMING | 7d | 2017-11-30 A | 2017-12-08 A | 179 | 100% | 2017-11-30 | 2017-12-08 | 7d |  |  |  |  |  |  |
| 181 | 9.2.7.5 | DISH INSPECTION | 2d | 2017-12-08 A | 2017-12-11 A | 180 | 100% | 2017-12-08 | 2017-12-11 | 2d | Fitter [200%] | 32h | 32h | 2,200 | 2,200 | 2,200 |
| 182 | 9.2.7.6 | DISH SURFACE GRINDING | 2d | 2017-12-11 A | 2017-12-12 A | 181 | 100% | 2017-12-11 | 2017-12-12 | 2d | Grinder | 16h | 16h | 900 | 900 | 900 |
| 183 | 9.2.7.7 | DISH EP | 3h | 2017-12-12 A | 2017-12-12 A | 182 | 100% | 2017-12-12 | 2017-12-12 | 3h | Grinder | 3h | 3h | 168.75 | 168.75 | 168.75 |
| 184 | 9.2.7.8 | SLOT MARKING | 3h | 2017-12-12 A | 2017-12-12 A | 183 | 100% | 2017-12-12 | 2017-12-12 | 3h | Fitter; Helper | 6h | 6h | 356.25 | 356.25 | 356.25 |
| 185 | 9.2.7.9 | CUTTING | 4h | 2017-12-12 A | 2017-12-12 A | 184 | 100% | 2017-12-12 | 2017-12-12 | 4h | Gas Cutter; Helper | 8h | 8h | 475 | 475 | 475 |
| 186 | 9.2.7.10 | MACHINING | 2d | 2017-12-12 A | 2017-12-13 A | 185 | 100% | 2017-12-12 | 2017-12-13 | 2d | Lathe Operator | 16h | 16h | 1,920 | 1,920 | 1,920 |
| 187 | 9.2.7.11 | DISH INSPECTION | 2d | 2017-12-13 A | 2017-12-14 A | 186 | 100% | 2017-12-13 | 2017-12-14 | 2d | Fitter [200%] | 32h | 32h | 2,200 | 2,200 | 2,200 |
| 188 | 9.2.8 | **FABRICATED COUPLING** | 9.5d | 2017-11-29 A | 2017-12-12 A |  | 100% | 2017-11-29 | 2017-12-12 | 9.5d |  | 320h | 320h | 21,490 | 21,490 | 21,490 |
| 189 | 9.2.8.1 | MARKING | 0.5d | 2017-11-29 A | 2017-11-30 A | 129, 177 | 100% | 2017-11-29 | 2017-11-30 | 0.5d | Fitter; Helper | 8h | 8h | 475 | 475 | 475 |
| 190 | 9.2.8.2 | CUTTING | 0.5d | 2017-11-30 A | 2017-11-30 A | 189 | 100% | 2017-11-30 | 2017-11-30 | 0.5d | Gas Cutter; Helper | 8h | 8h | 475 | 475 | 475 |
| 191 | 9.2.8.3 | M/C | 4d | 2017-11-30 A | 2017-12-02 A | 190 | 100% | 2017-11-30 | 2017-12-02 | 4d | Lathe Operator | 32h | 32h | 3,840 | 3,840 | 3,840 |
| 192 | 9.2.8.4 | FORMING | 4d | 2017-12-02 A | 2017-12-05 A | 191 | 100% | 2017-12-02 | 2017-12-05 | 4d | Fitter [200%]; Helper | 96h | 96h | 6,000 | 6,000 | 6,000 |
| 193 | 9.2.8.5 | DRILLING | 2d | 2017-12-05 A | 2017-12-06 A | 192 | 100% | 2017-12-05 | 2017-12-06 | 2d | Driller [50%] | 16h | 16h | 1,100 | 1,100 | 1,100 |
| 194 | 9.2.8.6 | EP | 1d | 2017-12-06 A | 2017-12-06 A | 193 | 100% | 2017-12-06 | 2017-12-06 | 1d | Grinder | 8h | 8h | 450 | 450 | 450 |
| 195 | 9.2.8.7 | FITUP WITH DISH | 2d | 2017-12-06 A | 2017-12-07 A | 194 | 100% | 2017-12-06 | 2017-12-07 | 2d | Fitter; SAW Welder; Helper [200%] | 64h | 64h | 3,800 | 3,800 | 3,800 |
| 196 | 9.2.8.8 | FITUP INSPECTION | 2d | 2017-12-07 A | 2017-12-08 A | 195 | 100% | 2017-12-07 | 2017-12-08 | 2d | Fitter [200%] | 32h | 32h | 2,200 | 2,200 | 2,200 |
| 197 | 9.2.8.9 | WELDING | 2d | 2017-12-08 A | 2017-12-11 A | 196 | 100% | 2017-12-08 | 2017-12-11 | 2d | SAW Welder; Helper [200%] | 48h | 48h | 2,700 | 2,700 | 2,700 |
| 198 | 9.2.8.10 | FLUSH GRIND | 1d | 2017-12-11 A | 2017-12-12 A | 197 | 100% | 2017-12-11 | 2017-12-12 | 1d | Grinder | 8h | 8h | 450 | 450 | 450 |
| 199 | 9.2.9 | **END CAP M/C** | 7d | 2017-12-02 A | 2017-12-12 A |  | 100% | 2017-12-02 | 2017-12-12 | 7d |  | 144h | 144h | 12,060 | 12,060 | 12,060 |
| 200 | 9.2.9.1 | END CAP M/C | 6d | 2017-12-02 A | 2017-12-06 A | 127, 191 | 100% | 2017-12-02 | 2017-12-06 | 6d | Lathe Operator | 48h | 48h | 5,760 | 5,760 | 5,760 |
| 201 | 9.2.9.2 | END CAP CHAMFERING | 6d | 2017-12-06 A | 2017-12-11 A | 200 | 100% | 2017-12-06 | 2017-12-11 | 6d | Driller [50%] | 48h | 48h | 3,300 | 3,300 | 3,300 |
| 202 | 9.2.9.3 | INSPECTION | 2d | 2017-12-11 A | 2017-12-12 A | 201 | 100% | 2017-12-11 | 2017-12-12 | 2d | Fitter [200%]; Helper | 48h | 48h | 3,000 | 3,000 | 3,000 |

Notes:
- 176: 2NOS
- 177: BLANK DIA~625*16T
- 180: SC

| ID | WBS | Task | Duration | Start | Finish | Predecessors | Complete | Baseline start | Baseline finish | Baseline duration | Constraint | Resources | Work | Actual work | Cost | Baseline cost | Actual cost |
| --- | --- | --- | --- | --- | --- | --- | --- | --- | --- | --- | --- | --- | --- | --- | --- | --- | --- |
| 203 | 9.2.10 | **DISH WELDING WITH END CAP** | 6.36d | 2018-01-08 A | 2018-01-17 A |  | 100% | 2018-01-08 | 2018-01-17 | 6.36d |  |  | 193h | 193h | 11,381.24 | 11,381.24 | 11,381.24 |
| 204 | 9.2.10.1 | LHS END CAP FITUP WITH SHELL | 1d | 2018-01-08 A | 2018-01-08 A | 169, 176, 199 | 100% | 2018-01-08 | 2018-01-08 | 1d |  | Fitter; SAW Welder; Helper [200%] | 32h | 32h | 1,900 | 1,900 | 1,900 |
| 205 | 9.2.10.2 | FITUP INSPECTION | 1d | 2018-01-08 A | 2018-01-09 A | 204 | 100% | 2018-01-08 | 2018-01-09 | 1d |  | Fitter [200%]; Helper | 24h | 24h | 1,500 | 1,500 | 1,500 |
| 206 | 9.2.10.3 | ROOT WELDING | 1.5h | 2018-01-09 A | 2018-01-09 A | 205 | 100% | 2018-01-09 | 2018-01-09 | 1.5h |  | SAW Welder; Helper [200%] | 4.5h | 4.5h | 253.12 | 253.12 | 253.12 |
| 207 | 9.2.10.4 | BACK CHIP | 1h | 2018-01-09 A | 2018-01-09 A | 206 | 100% | 2018-01-09 | 2018-01-09 | 1h |  | Grinder | 1h | 1h | 56.25 | 56.25 | 56.25 |
| 208 | 9.2.10.5 | OUTSIDE WELDING | 9h | 2018-01-09 A | 2018-01-09 A | 207 | 100% | 2018-01-09 | 2018-01-09 | 9h |  | SAW Welder; Helper [200%] | 27h | 27h | 1,518.75 | 1,518.75 | 1,518.75 |
| 209 | 9.2.10.6 | FLUSH GRIND | 4h | 2018-01-09 A | 2018-01-10 A | 208 | 100% | 2018-01-09 | 2018-01-10 | 4h |  | Grinder | 4h | 4h | 225 | 225 | 225 |
| 210 | 9.2.10.7 | DP CHECK | 2h | 2018-01-10 A | 2018-01-10 A | 209 | 100% | 2018-01-10 | 2018-01-10 | 2h |  | Fitter; Helper | 4h | 4h | 237.5 | 237.5 | 237.5 |
| 211 | 9.2.10.8 | RT | 1d | 2018-01-10 A | 2018-01-11 A | 210 | 100% | 2018-01-10 | 2018-01-11 | 1d |  |  |  |  |  |  |  |
| 212 | 9.2.10.9 | LHS END CAP FITUP WITH SHELL | 1d | 2018-01-11 A | 2018-01-11 A | 211 | 100% | 2018-01-11 | 2018-01-11 | 1d |  | Fitter; SAW Welder; Helper [200%] | 32h | 32h | 1,900 | 1,900 | 1,900 |
| 213 | 9.2.10.10 | FITUP INSPECTION | 1d | 2018-01-11 A | 2018-01-12 A | 212 | 100% | 2018-01-11 | 2018-01-12 | 1d |  | Fitter [200%]; Helper | 24h | 24h | 1,500 | 1,500 | 1,500 |
| 214 | 9.2.10.11 | ROOT WELDING | 1.5h | 2018-01-12 A | 2018-01-12 A | 213 | 100% | 2018-01-12 | 2018-01-12 | 1.5h |  | SAW Welder; Helper [200%] | 4.5h | 4.5h | 253.12 | 253.12 | 253.12 |
| 215 | 9.2.10.12 | BACK CHIP | 1h | 2018-01-12 A | 2018-01-12 A | 214 | 100% | 2018-01-12 | 2018-01-12 | 1h |  | Grinder | 1h | 1h | 56.25 | 56.25 | 56.25 |
| 216 | 9.2.10.13 | OUTSIDE WELDING | 9h | 2018-01-12 A | 2018-01-16 A | 215 | 100% | 2018-01-12 | 2018-01-16 | 9h |  | SAW Welder; Helper [200%] | 27h | 27h | 1,518.75 | 1,518.75 | 1,518.75 |
| 217 | 9.2.10.14 | FLUSH GRIND | 4h | 2018-01-16 A | 2018-01-16 A | 216 | 100% | 2018-01-16 | 2018-01-16 | 4h |  | Grinder | 4h | 4h | 225 | 225 | 225 |
| 218 | 9.2.10.15 | DP CHECK | 2h | 2018-01-16 A | 2018-01-16 A | 217 | 100% | 2018-01-16 | 2018-01-16 | 2h |  | Fitter; Helper | 4h | 4h | 237.5 | 237.5 | 237.5 |
| 219 | 9.2.10.16 | RT | 1d | 2018-01-16 A | 2018-01-17 A | 218 | 100% | 2018-01-16 | 2018-01-17 | 1d |  |  |  |  |  |  |  |
| 220 | 9.2.11 | **FINAL INSPECTION AND DESPATCH** | 4.5d | 2018-01-17 A | 2018-01-22 A |  | 100% | 2018-01-17 | 2018-01-22 | 4.5d |  |  | 249h | 249h | 13,857.5 | 13,857.5 | 13,857.5 |
| 221 | 9.2.11.1 | FINAL INSPECTION AND TESTING | 6.03d | 2018-01-17 A | 2018-01-20 A | 203 | 100% | 2018-01-17 | 2018-01-20 | 6.03d |  | Fitter [200%]; Helper [300%] | 241h | 241h | 13,857.5 | 13,857.5 | 13,857.5 |
| 222 | 9.2.11.2 | DESPATCH CLEARANCE | 1d | 2018-01-20 A | 2018-01-22 A | 221 | 100% | 2018-01-20 | 2018-01-22 | 1d |  |  |  |  |  |  |  |
| 223 | 9.2.11.3 | DESPATCH | 1d | 2018-01-22 A | 2018-01-22 A | 222 | 100% | 2018-01-22 | 2018-01-22 | 1d |  | Store | 8h | 8h |  |  |  |
| 224 | 10 | **PBG** | 11.94d | 2018-03-02 A | 2018-03-16 A |  | 100% | 2018-03-02 | 2018-03-16 | 11.94d |  |  | 6h | 6h |  |  |  |
| 225 | 10.1 | PBG Submission 5% | 1d | 2018-03-02 A | 2018-03-02 A | 223 | 100% | 2018-03-02 | 2018-03-02 | 1d |  | Finance | 4h | 4h |  |  |  |
| 226 | 10.2 | Approval | 2d | 2018-03-14 A | 2018-03-16 A | 225FS+5d | 100% | 2018-03-14 | 2018-03-16 | 2d | finish no earlier than 2018-03-16 | Finance | 2h | 2h |  |  |  |

Notes:
- 204: OD530/ID400*30T
- 211: SC
- 212: OD530/ID400*30T
- 219: SC
