# 4182-UPL-Nickel

Schedule from MS Project, 2017-06-08 to 2018-02-05, costs in ₹, A marks actual dates.

## Calendars

- TEAM_Stand_Calendar: Mon-Sat 08:30-12:30, 13:30-17:30; Sun off. Exceptions (off unless hours are given): 2017-01-13 to 2023-08-12 (2nd Sat, recurring), 2017-01-26 to 2036-01-26 (Republic Day, recurring), 2017-01-27 to 2023-08-26 (4th Sat, recurring), 2017-05-01 to 2036-05-01 (May Day, recurring), 2017-08-15 to 2036-08-15 (Independence Day, recurring), 2017-08-25 (Vinakya Chaturthi'2017), 2017-09-29 (Ayudha Pooja'2017), 2017-10-02 to 2036-10-02 (Gandhi Jayanti, recurring), 2017-10-18 (Deepavali'2017), 2018-01-15 (Thiruvalluvar Day'2018).

## Resources

| Resource | Rate |
| --- | --- |
| SAW Welder | 68.75 |
| Painter |  |
| Lathe Operator | 120 |
| Helper | 50 |
| Grinder | 56.25 |
| Fitter | 68.75 |
| Driller | 68.75 |
| Gas Cutter | 68.75 |

## Schedule

| ID | WBS | Task | Type | Duration | Start | Finish | Predecessors | Complete | Baseline start | Baseline finish | Baseline duration |
| --- | --- | --- | --- | --- | --- | --- | --- | --- | --- | --- | --- |
| 1 | 1 | **Initation & Purchase** |  | 163d | 2017-06-08 08:00 A | 2018-01-05 17:30 A |  | 100% | 2017-06-08 08:00 | 2018-01-05 17:30 | 163d |
| 2 | 1.1 | **4182-40-E-04A/B/C** |  | 163d | 2017-06-08 08:00 A | 2018-01-05 17:30 A |  | 100% | 2017-06-08 08:00 | 2018-01-05 17:30 | 163d |
| 3 | 1.1.1 | PO RECEIPT |  | 1d | 2017-06-08 08:00 A | 2017-06-08 17:00 A |  | 100% | 2017-06-08 08:00 | 2017-06-08 17:00 | 1d |
| 4 | 1.1.2 | CRM |  | 2d | 2017-06-14 08:00 A | 2017-06-15 17:00 A | 3 | 100% | 2017-06-14 08:00 | 2017-06-15 17:00 | 2d |
| 5 | 1.1.3 | DRAWING SUBMISSION FOR APPROVAL |  | 23d | 2017-06-14 08:00 A | 2017-07-14 17:00 A | 4 | 100% | 2017-06-14 08:00 | 2017-07-14 17:00 | 23d |
| 6 | 1.1.4 | **MATERIAL INDENTING** |  | 27.94d | 2017-06-17 08:00 A | 2017-07-21 17:00 A |  | 100% | 2017-06-17 08:00 | 2017-07-21 17:00 | 27.94d |
| 7 | 1.1.4.1 | Plates and Rods-SB162 N02200 | milestone | 0d | 2017-06-20 08:00 A | 2017-06-20 08:00 A | 5FS+3d | 100% | 2017-06-20 08:00 | 2017-06-20 08:00 | 0d |
| 8 | 1.1.4.2 | NICKEL TUBESHEET-28THK |  | 1d | 2017-06-20 08:00 A | 2017-06-20 17:00 A | 5SS+5d | 100% | 2017-06-20 08:00 | 2017-06-20 17:00 | 1d |
| 9 | 1.1.4.3 | Tube-SB163 N02200 | milestone | 0d | 2017-06-17 08:00 A | 2017-06-17 08:00 A | 5FS+3d | 100% | 2017-06-17 08:00 | 2017-06-17 08:00 | 0d |
| 10 | 1.1.4.4 | PLATES-SA 516 GR.70 |  | 2d | 2017-07-19 08:00 A | 2017-07-20 17:00 A | 5FS+3d | 100% | 2017-07-19 08:00 | 2017-07-20 17:00 | 2d |
| 11 | 1.1.4.5 | Standard Forging-SA105 | milestone | 0d | 2017-06-20 08:00 A | 2017-06-20 08:00 A | 5FS+3d | 100% | 2017-06-20 08:00 | 2017-06-20 08:00 | 0d |
| 12 | 1.1.4.6 | Pipe-NI 200 |  | 1d | 2017-06-20 08:00 A | 2017-06-20 17:00 A | 5FS+3d | 100% | 2017-06-20 08:00 | 2017-06-20 17:00 | 1d |
| 13 | 1.1.4.7 | Gaskets- | milestone | 0d | 2017-07-13 08:00 A | 2017-07-13 08:00 A | 5FS+3d | 100% | 2017-07-13 08:00 | 2017-07-13 08:00 | 0d |
| 14 | 1.1.4.8 | Fasteners- |  | 3d | 2017-07-13 08:00 A | 2017-07-21 17:00 A | 5FS+3d | 100% | 2017-07-13 08:00 | 2017-07-21 17:00 | 3d |
| 15 | 1.1.4.9 | Consumables-NI 200 | milestone | 0d | 2017-06-20 08:00 A | 2017-06-20 08:00 A | 5FS+3d | 100% | 2017-06-20 08:00 | 2017-06-20 08:00 | 0d |
| 16 | 1.1.5 | **MATERIAL RECEIPT** |  | 152d | 2017-06-22 08:00 A | 2018-01-05 17:30 A |  | 100% | 2017-06-22 08:00 | 2018-01-05 17:30 | 152d |
| 17 | 1.1.5.1 | Plates and Rods-SB162 N02200 |  | 39d | 2017-07-28 08:00 A | 2017-09-13 17:00 A | 7 | 100% | 2017-07-28 08:00 | 2017-09-13 17:00 | 39d |
| 18 | 1.1.5.2 | NICKEL TUBESHEET-28THK |  | 65d | 2017-08-31 08:00 A | 2017-11-23 17:30 A | 8 | 100% | 2017-08-31 08:00 | 2017-11-23 17:30 | 65d |
| 19 | 1.1.5.3 | Tube-SB163 N02200 |  | 130d | 2017-07-20 08:00 A | 2018-01-05 17:30 A | 9 | 100% | 2017-07-20 08:00 | 2018-01-05 17:30 | 130d |
| 20 | 1.1.5.4 | PLATE-SA 516 GR.70 |  | 16d | 2017-07-26 08:00 A | 2017-08-14 17:00 A | 10 | 100% | 2017-07-26 08:00 | 2017-08-14 17:00 | 16d |
| 21 | 1.1.5.5 | Standard Forging-SA105 |  | 61d | 2017-06-22 08:00 A | 2017-09-04 17:00 A | 11 | 100% | 2017-06-22 08:00 | 2017-09-04 17:00 | 61d |
| 22 | 1.1.5.6 | Pipe-NI 200 |  | 54d | 2017-08-17 08:00 A | 2017-10-21 17:00 A | 12 | 100% | 2017-08-17 08:00 | 2017-10-21 17:00 | 54d |
| 23 | 1.1.5.7 | Gaskets- |  | 17d | 2017-08-21 08:00 A | 2017-09-08 17:00 A | 13 | 100% | 2017-08-21 08:00 | 2017-09-08 17:00 | 17d |
| 24 | 1.1.5.8 | Fasteners- |  | 69d | 2017-08-01 08:00 A | 2017-10-24 17:00 A | 14 | 100% | 2017-08-01 08:00 | 2017-10-24 17:00 | 69d |
| 25 | 1.1.5.9 | Consumables-NI 200 |  | 39d | 2017-08-03 08:00 A | 2017-09-19 17:00 A | 15 | 100% | 2017-08-03 08:00 | 2017-09-19 17:00 | 39d |

| ID | WBS | Task | Type | Duration | Start | Finish | Predecessors | Complete | Baseline start | Baseline finish | Baseline duration |
| --- | --- | --- | --- | --- | --- | --- | --- | --- | --- | --- | --- |
| 26 | 1.2 | **4182-40-E-06A/B/C** |  | 163d | 2017-06-08 08:00 A | 2018-01-05 17:30 A |  | 100% | 2017-06-08 08:00 | 2018-01-05 17:30 | 163d |
| 27 | 1.2.1 | PO RECEIPT |  | 1d | 2017-06-08 08:00 A | 2017-06-08 17:00 A |  | 100% | 2017-06-08 08:00 | 2017-06-08 17:00 | 1d |
| 28 | 1.2.2 | CRM |  | 1d | 2017-06-14 08:00 A | 2017-06-14 17:00 A | 27 | 100% | 2017-06-14 08:00 | 2017-06-14 17:00 | 1d |
| 29 | 1.2.3 | DRAWING SUBMISSION FOR APPROVAL |  | 24d | 2017-06-15 08:00 A | 2017-07-14 17:00 A | 28 | 100% | 2017-06-15 08:00 | 2017-07-14 17:00 | 24d |
| 30 | 1.2.4 | **MATERIAL INDENTING** |  | 27.94d | 2017-06-17 08:00 A | 2017-07-21 17:00 A |  | 100% | 2017-06-17 08:00 | 2017-07-21 17:00 | 27.94d |
| 31 | 1.2.4.1 | Plates and Rods-SB162 N02200 |  | 1d | 2017-06-20 08:00 A | 2017-06-20 17:00 A | 29FS+3d | 100% | 2017-06-20 08:00 | 2017-06-20 17:00 | 1d |
| 32 | 1.2.4.2 | NICKEL TUBESHEET-28THK |  | 1d | 2017-06-20 08:00 A | 2017-06-20 17:00 A | 29SS+3d | 100% | 2017-06-20 08:00 | 2017-06-20 17:00 | 1d |
| 33 | 1.2.4.3 | Tube-SB163 N02200 |  | 1d | 2017-06-17 08:00 A | 2017-06-17 17:00 A | 29FS+3d | 100% | 2017-06-17 08:00 | 2017-06-17 17:00 | 1d |
| 34 | 1.2.4.4 | SA 516 GR.70 |  | 2d | 2017-07-19 08:00 A | 2017-07-20 17:00 A | 29FS+3d | 100% | 2017-07-19 08:00 | 2017-07-20 17:00 | 2d |
| 35 | 1.2.4.5 | Standard Forging-SA105 |  | 1d | 2017-06-20 08:00 A | 2017-06-20 17:00 A | 29FS+3d | 100% | 2017-06-20 08:00 | 2017-06-20 17:00 | 1d |
| 36 | 1.2.4.6 | Pipe-NI 200 |  | 1d | 2017-06-20 08:00 A | 2017-06-20 17:00 A | 29FS+3d | 100% | 2017-06-20 08:00 | 2017-06-20 17:00 | 1d |
| 37 | 1.2.4.7 | Gaskets- | milestone | 0d | 2017-07-13 08:00 A | 2017-07-13 08:00 A | 29FS+3d | 100% | 2017-07-13 08:00 | 2017-07-13 08:00 | 0d |
| 38 | 1.2.4.8 | Fasteners- |  | 3d | 2017-07-13 08:00 A | 2017-07-21 17:00 A | 29FS+3d | 100% | 2017-07-13 08:00 | 2017-07-21 17:00 | 3d |
| 39 | 1.2.4.9 | Consumables-NI 200 |  | 1d | 2017-06-20 08:00 A | 2017-06-20 17:00 A | 29FS+3d | 100% | 2017-06-20 08:00 | 2017-06-20 17:00 | 1d |
| 40 | 1.2.5 | **MATERIAL RECEIPT** |  | 152d | 2017-06-22 08:00 A | 2018-01-05 17:30 A |  | 100% | 2017-06-22 08:00 | 2018-01-05 17:30 | 152d |
| 41 | 1.2.5.1 | Plates and Rods-SB162 N02200 |  | 39d | 2017-07-28 08:00 A | 2017-09-13 17:00 A | 31 | 100% | 2017-07-28 08:00 | 2017-09-13 17:00 | 39d |
| 42 | 1.2.5.2 | NICKEL TUBESHEET-28THK |  | 65d | 2017-08-31 08:00 A | 2017-11-23 17:30 A | 32 | 100% | 2017-08-31 08:00 | 2017-11-23 17:30 | 65d |
| 43 | 1.2.5.3 | Tube-SB163 N02200 |  | 130d | 2017-07-20 08:00 A | 2018-01-05 17:30 A | 33 | 100% | 2017-07-20 08:00 | 2018-01-05 17:30 | 130d |
| 44 | 1.2.5.4 | SA 516 GR.70 |  | 16d | 2017-07-26 08:00 A | 2017-08-14 17:00 A | 34 | 100% | 2017-07-26 08:00 | 2017-08-14 17:00 | 16d |
| 45 | 1.2.5.5 | Standard Forging-SA105 |  | 61d | 2017-06-22 08:00 A | 2017-09-04 17:00 A | 35 | 100% | 2017-06-22 08:00 | 2017-09-04 17:00 | 61d |
| 46 | 1.2.5.6 | Pipe-NI 200 |  | 54d | 2017-08-17 08:00 A | 2017-10-21 17:00 A | 36 | 100% | 2017-08-17 08:00 | 2017-10-21 17:00 | 54d |
| 47 | 1.2.5.7 | Gaskets- |  | 17d | 2017-08-21 08:00 A | 2017-09-08 17:00 A | 37 | 100% | 2017-08-21 08:00 | 2017-09-08 17:00 | 17d |
| 48 | 1.2.5.8 | Fasteners- |  | 69d | 2017-08-01 08:00 A | 2017-10-24 17:00 A | 38 | 100% | 2017-08-01 08:00 | 2017-10-24 17:00 | 69d |
| 49 | 1.2.5.9 | Consumables-NI 200 |  | 39d | 2017-08-03 08:00 A | 2017-09-19 17:00 A | 39 | 100% | 2017-08-03 08:00 | 2017-09-19 17:00 | 39d |

| ID | WBS | Task | Duration | Start | Finish | Predecessors | Complete | Baseline start | Baseline finish | Baseline duration | Constraint | Resources | Work | Actual work | Cost | Baseline cost | Actual cost |
| --- | --- | --- | --- | --- | --- | --- | --- | --- | --- | --- | --- | --- | --- | --- | --- | --- | --- |
| 50 | 2 | **Fabrication** | 156.94d | 2017-07-14 08:30 A | 2018-02-05 17:00 A |  | 100% | 2017-07-14 08:30 | 2017-12-13 16:18 | 115.85d |  |  | 9153.57h | 9153.57h | 570,894.88 | 624,789.38 | 570,894.88 |
| 51 | 2.1 | **MATERIAL RECEIPT** | 12.9d | 2017-07-14 08:30 A | 2017-07-29 16:43 A |  | 100% | 2017-07-14 08:30 | 2017-07-29 16:43 | 12.9d |  |  | 581.13h | 581.13h | 36,556.75 | 36,556.67 | 36,556.75 |
| 52 | 2.1.1 | PLATE FOR SHELL | 1.81d | 2017-07-14 08:30 A | 2017-07-15 16:00 A |  | 100% | 2017-07-14 08:30 | 2017-07-15 16:00 | 1.81d | start no earlier than 2017-07-14 08:00 |  |  |  |  |  |  |
| 53 | 2.1.2 | PLATE FOR CHANNEL | 1.81d | 2017-07-14 08:30 A | 2017-07-15 16:00 A | 52SS | 100% | 2017-07-14 08:30 | 2017-07-15 16:00 | 1.81d |  |  |  |  |  |  |  |
| 54 | 2.1.3 | CHANNEL FLANGE | 1.81d | 2017-07-14 08:30 A | 2017-07-15 16:00 A | 52SS | 100% | 2017-07-14 08:30 | 2017-07-15 16:00 | 1.81d |  |  |  |  |  |  |  |
| 55 | 2.1.4 | NOZZLE PIPE | 1.81d | 2017-07-14 08:30 A | 2017-07-15 16:00 A | 52SS | 100% | 2017-07-14 08:30 | 2017-07-15 16:00 | 1.81d |  |  |  |  |  |  |  |
| 56 | 2.1.5 | NOZZLE FLG | 1.81d | 2017-07-14 08:30 A | 2017-07-15 16:00 A | 52SS | 100% | 2017-07-14 08:30 | 2017-07-15 16:00 | 1.81d |  |  |  |  |  |  |  |
| 57 | 2.1.6 | TUBE | 1.81d | 2017-07-14 08:30 A | 2017-07-15 16:00 A | 52SS | 100% | 2017-07-14 08:30 | 2017-07-15 16:00 | 1.81d |  |  |  |  |  |  |  |
| 58 | 2.1.7 | TUBE SHEET | 1.81d | 2017-07-14 08:30 A | 2017-07-15 16:00 A | 52SS | 100% | 2017-07-14 08:30 | 2017-07-15 16:00 | 1.81d |  |  |  |  |  |  |  |
| 59 | 2.1.8 | PP PLATE | 1.81d | 2017-07-14 08:30 A | 2017-07-15 16:00 A | 52SS | 100% | 2017-07-14 08:30 | 2017-07-15 16:00 | 1.81d |  |  |  |  |  |  |  |
| 60 | 2.1.9 | NAME PLATE | 1.81d | 2017-07-14 08:30 A | 2017-07-15 16:00 A | 52SS | 100% | 2017-07-14 08:30 | 2017-07-15 16:00 | 1.81d |  |  |  |  |  |  |  |
| 61 | 2.1.10 | BAFFLE PLATES | 1.81d | 2017-07-14 08:30 A | 2017-07-15 16:00 A | 52SS | 100% | 2017-07-14 08:30 | 2017-07-15 16:00 | 1.81d |  |  |  |  |  |  |  |
| 62 | 2.1.11 | SADDLE MATERIAL | 1.81d | 2017-07-14 08:30 A | 2017-07-15 16:00 A | 52SS | 100% | 2017-07-14 08:30 | 2017-07-15 16:00 | 1.81d |  |  |  |  |  |  |  |
| 63 | 2.1.12 | SPACER TUBE | 1.81d | 2017-07-14 08:30 A | 2017-07-15 16:00 A | 52SS | 100% | 2017-07-14 08:30 | 2017-07-15 16:00 | 1.81d |  |  |  |  |  |  |  |
| 64 | 2.1.13 | TIE ROD & SEAL ROD | 1.81d | 2017-07-14 08:30 A | 2017-07-15 16:00 A | 52SS | 100% | 2017-07-14 08:30 | 2017-07-15 16:00 | 1.81d |  |  |  |  |  |  |  |
| 65 | 2.1.14 | LIFTING LUG | 1.81d | 2017-07-14 08:30 A | 2017-07-15 16:00 A | 52SS | 100% | 2017-07-14 08:30 | 2017-07-15 16:00 | 1.81d |  |  |  |  |  |  |  |
| 66 | 2.1.15 | INSULATION CLEAT | 1.81d | 2017-07-14 08:30 A | 2017-07-15 16:00 A | 52SS | 100% | 2017-07-14 08:30 | 2017-07-15 16:00 | 1.81d |  |  |  |  |  |  |  |
| 67 | 2.1.16 | FASTENERS | 1.81d | 2017-07-14 08:30 A | 2017-07-15 16:00 A | 52SS | 100% | 2017-07-14 08:30 | 2017-07-15 16:00 | 1.81d |  |  |  |  |  |  |  |
| 68 | 2.1.17 | GASKETS | 1.81d | 2017-07-14 08:30 A | 2017-07-15 16:00 A | 52SS | 100% | 2017-07-14 08:30 | 2017-07-15 16:00 | 1.81d |  |  |  |  |  |  |  |
| 69 | 2.1.18 | MATL HANDELING | 200h | 2017-07-14 08:30 A | 2017-07-29 16:43 A | 52SS | 100% | 2017-07-14 08:30 | 2017-07-29 16:43 | 200h |  | Fitter [200%]; Helper [200%] | 581.13h | 581.13h | 36,556.75 | 36,556.67 | 36,556.75 |
| 70 | 2.2 | **CHANNEL(LHS) LS1- FABRICATION** | 6.51d | 2017-07-15 16:00 A | 2017-07-25 11:04 A |  | 100% | 2017-07-15 16:00 | 2017-07-25 11:04 | 6.51d |  |  | 175.11h | 175.11h | 10,526.43 | 10,526.77 | 10,526.43 |
| 71 | 2.2.1 | LS1-PLATE MARKING | 4h | 2017-07-15 16:00 A | 2017-07-15 20:00 A | 52 | 100% | 2017-07-15 16:00 | 2017-07-15 20:00 | 4h |  | Fitter; Helper | 5.11h | 5.11h | 276.43 | 276.77 | 276.43 |
| 72 | 2.2.2 | LS1- STAMPING | 3.5h | 2017-07-15 20:00 A | 2017-07-17 07:30 A | 71 | 100% | 2017-07-15 20:00 | 2017-07-17 07:30 | 3.5h |  | Fitter [200%]; Helper | 7h | 7h | 481.25 | 481.25 | 481.25 |
| 73 | 2.2.3 | LS1-PL CUTTING | 3.5h | 2017-07-17 07:30 A | 2017-07-17 11:00 A | 72 | 100% | 2017-07-17 07:30 | 2017-07-17 11:00 | 3.5h |  | Gas Cutter; Helper | 7h | 7h | 415.62 | 415.62 | 415.62 |
| 74 | 2.2.4 | LS1-GRINDING | 4h | 2017-07-17 11:00 A | 2017-07-17 15:01 A | 73 | 100% | 2017-07-17 11:00 | 2017-07-17 15:01 | 4h |  | Grinder [200%] | 8h | 8h | 450 | 450 | 450 |
| 75 | 2.2.5 | LS1-EDGE PREPARATION | 5h | 2017-07-17 15:01 A | 2017-07-17 20:01 A | 74 | 100% | 2017-07-17 15:01 | 2017-07-17 20:01 | 5h |  | Grinder [200%] | 10h | 10h | 562.5 | 562.5 | 562.5 |
| 76 | 2.2.6 | LS1-PRE BENDING | 4.5h | 2017-07-17 20:01 A | 2017-07-18 08:31 A | 75 | 100% | 2017-07-17 20:01 | 2017-07-18 08:31 | 4.5h |  | Fitter [200%]; Helper | 10h | 10h | 668.75 | 668.75 | 668.75 |
| 77 | 2.2.7 | LS1-PREBEND CUTOFF | 2.5h | 2017-07-18 08:31 A | 2017-07-18 11:01 A | 76 | 100% | 2017-07-18 08:31 | 2017-07-18 11:01 | 2.5h |  | Gas Cutter; Helper | 5h | 5h | 296.88 | 296.88 | 296.88 |
| 78 | 2.2.8 | LS1-EDGE PREPARTION | 2.5h | 2017-07-18 11:01 A | 2017-07-18 13:31 A | 77 | 100% | 2017-07-18 11:01 | 2017-07-18 13:31 | 2.5h |  | Grinder [200%] | 5h | 5h | 281.25 | 281.25 | 281.25 |
| 79 | 2.2.9 | LS1-ROLLING | 7.5h | 2017-07-18 13:31 A | 2017-07-18 21:02 A | 78 | 100% | 2017-07-18 13:31 | 2017-07-18 21:02 | 7.5h |  | Fitter [200%]; Helper | 22.5h | 22.5h | 1,406.25 | 1,406.25 | 1,406.25 |
| 80 | 2.2.10 | LS1- CLEANING | 6h | 2017-07-18 21:02 A | 2017-07-19 11:02 A | 79 | 100% | 2017-07-18 21:02 | 2017-07-19 11:02 | 6h |  | Helper [200%] | 12h | 12h | 600 | 600 | 600 |
| 81 | 2.2.11 | LS1-FITUP | 8h | 2017-07-19 11:02 A | 2017-07-19 19:03 A | 80 | 100% | 2017-07-19 11:02 | 2017-07-19 19:03 | 8h |  | Fitter; Helper [200%]; SAW Welder | 30.5h | 30.5h | 1,825 | 1,825 | 1,825 |
| 82 | 2.2.12 | LS1-SPIDERUP | 6h | 2017-07-19 19:03 A | 2017-07-20 09:03 A | 81 | 100% | 2017-07-19 19:03 | 2017-07-20 09:03 | 6h |  | Fitter; Helper | 11h | 11h | 662.5 | 662.5 | 662.5 |
| 83 | 2.2.13 | LS1-FITUP INSPECTION | 4h | 2017-07-20 09:03 A | 2017-07-20 13:03 A | 82 | 100% | 2017-07-20 09:03 | 2017-07-20 13:03 | 4h |  | Fitter | 4h | 4h | 275 | 275 | 275 |
| 84 | 2.2.14 | LS1-WELDING | 3h | 2017-07-20 13:03 A | 2017-07-20 16:04 A | 83 | 100% | 2017-07-20 13:03 | 2017-07-20 16:04 | 3h |  | Helper [200%]; SAW Welder | 9h | 9h | 506.25 | 506.25 | 506.25 |
| 85 | 2.2.15 | LS1-FLUSH GRIND | 2.5h | 2017-07-20 16:04 A | 2017-07-20 18:34 A | 84 | 100% | 2017-07-20 16:04 | 2017-07-20 18:34 | 2.5h |  | Grinder [200%] | 5h | 5h | 281.25 | 281.25 | 281.25 |
| 86 | 2.2.16 | LS1-REROLLING | 7h | 2017-07-20 18:34 A | 2017-07-21 09:34 A | 85 | 100% | 2017-07-20 18:34 | 2017-07-21 09:34 | 7h |  | Fitter [200%]; Helper | 20h | 20h | 1,262.5 | 1,262.5 | 1,262.5 |
| 87 | 2.2.17 | LS1-DPCHECK | 4h | 2017-07-21 09:34 A | 2017-07-21 13:34 A | 86 | 100% | 2017-07-21 09:34 | 2017-07-21 13:34 | 4h |  | Fitter | 4h | 4h | 275 | 275 | 275 |
| 88 | 2.2.18 | LS1-RADIOGRAPHY | 1.81d | 2017-07-21 13:34 A | 2017-07-25 11:04 A | 87 | 100% | 2017-07-21 13:34 | 2017-07-25 11:04 | 1.81d |  |  |  |  |  |  |  |

Notes:
- 52: SB162 UNS N02200
- 53: SB162 UNS N02200
- 54: SA516 Gr 70
- 55: SB162 UNS N02200
- 56: SA105
- 57: SB162 UNS N02200
- 58: SB162 UNS N02200
- 59: SB162 UNS N02200
- 60: SS 316L
- 61: SB162 UNS N02200
- 63: SB161 UNS N02200
- 64: SB160 UNS N02200
- 65: SA516 Gr 70
- 66: SB162 UNS N02200
- 70: 3NOS
- 71: ID240*206lg*4T
- 88: RT

| ID | WBS | Task | Duration | Start | Finish | Predecessors | Complete | Baseline start | Baseline finish | Baseline duration | Resources | Work | Actual work | Cost | Baseline cost | Actual cost |
| --- | --- | --- | --- | --- | --- | --- | --- | --- | --- | --- | --- | --- | --- | --- | --- | --- |
| 89 | 2.3 | **SHELL LS2-FABRICATION** | 8.58d | 2017-07-15 20:00 A | 2017-07-27 14:07 A |  | 100% | 2017-07-15 20:00 | 2017-07-27 14:07 | 8.58d |  | 243.11h | 243.11h | 14,357.69 | 14,358.02 | 14,357.69 |
| 90 | 2.3.1 | LS2-PLATE MARKING | 8h | 2017-07-15 20:00 A | 2017-07-17 12:00 A | 52, 71 | 100% | 2017-07-15 20:00 | 2017-07-17 12:00 | 8h | Fitter; Helper | 9.11h | 9.11h | 476.43 | 476.77 | 476.43 |
| 91 | 2.3.2 | LS2-STAMPING | 6h | 2017-07-17 12:00 A | 2017-07-17 18:01 A | 90 | 100% | 2017-07-17 12:00 | 2017-07-17 18:01 | 6h | Fitter [200%]; Helper | 17h | 17h | 1,075 | 1,075 | 1,075 |
| 92 | 2.3.3 | LS2-PL CUTTING | 7h | 2017-07-17 18:01 A | 2017-07-18 09:01 A | 91 | 100% | 2017-07-17 18:01 | 2017-07-18 09:01 | 7h | Gas Cutter; Helper | 14h | 14h | 831.25 | 831.25 | 831.25 |
| 93 | 2.3.4 | LS2-GRINDING | 8h | 2017-07-18 09:01 A | 2017-07-18 17:02 A | 92 | 100% | 2017-07-18 09:01 | 2017-07-18 17:02 | 8h | Grinder [200%] | 16h | 16h | 900 | 900 | 900 |
| 94 | 2.3.5 | LS2-EDGE PREPARATION | 5h | 2017-07-18 17:02 A | 2017-07-19 06:02 A | 93 | 100% | 2017-07-18 17:02 | 2017-07-19 06:02 | 5h | Grinder [200%] | 10h | 10h | 562.5 | 562.5 | 562.5 |
| 95 | 2.3.6 | LS2-PREBENDING | 6h | 2017-07-19 06:02 A | 2017-07-19 12:02 A | 94 | 100% | 2017-07-19 06:02 | 2017-07-19 12:02 | 6h | Fitter [200%]; Helper | 18h | 18h | 1,125 | 1,125 | 1,125 |
| 96 | 2.3.7 | LS2-PREBEND CUTOFF | 4h | 2017-07-19 12:02 A | 2017-07-19 16:03 A | 95 | 100% | 2017-07-19 12:02 | 2017-07-19 16:03 | 4h | Gas Cutter; Helper | 8h | 8h | 475 | 475 | 475 |
| 97 | 2.3.8 | LS2-EDGE PREPARTION | 5h | 2017-07-19 16:03 A | 2017-07-19 21:03 A | 96 | 100% | 2017-07-19 16:03 | 2017-07-19 21:03 | 5h | Grinder [200%] | 10h | 10h | 562.5 | 562.5 | 562.5 |
| 98 | 2.3.9 | LS2-ROLLING | 9h | 2017-07-19 21:03 A | 2017-07-20 14:04 A | 97 | 100% | 2017-07-19 21:03 | 2017-07-20 14:04 | 9h | Fitter [200%]; Helper | 23.5h | 23.5h | 1,446.88 | 1,446.88 | 1,446.88 |
| 99 | 2.3.10 | LS2-CLEANING | 7.5h | 2017-07-20 14:04 A | 2017-07-20 21:34 A | 98 | 100% | 2017-07-20 14:04 | 2017-07-20 21:34 | 7.5h | Helper [200%] | 15h | 15h | 750 | 750 | 750 |
| 100 | 2.3.11 | LS2-FITUP | 9h | 2017-07-20 21:34 A | 2017-07-21 14:35 A | 99 | 100% | 2017-07-20 21:34 | 2017-07-21 14:35 | 9h | Fitter; Helper [200%]; SAW Welder | 33h | 33h | 1,968.75 | 1,968.75 | 1,968.75 |
| 101 | 2.3.12 | LS2-SPIDERUP | 6h | 2017-07-21 14:35 A | 2017-07-21 20:35 A | 100 | 100% | 2017-07-21 14:35 | 2017-07-21 20:35 | 6h | Fitter; Helper | 11h | 11h | 662.5 | 662.5 | 662.5 |
| 102 | 2.3.13 | LS2-FITUP INSPECTION | 4h | 2017-07-21 20:35 A | 2017-07-24 08:35 A | 101 | 100% | 2017-07-21 20:35 | 2017-07-24 08:35 | 4h | Fitter | 4h | 4h | 275 | 275 | 275 |
| 103 | 2.3.14 | LS2-WELDING | 6h | 2017-07-24 08:35 A | 2017-07-24 14:36 A | 102 | 100% | 2017-07-24 08:35 | 2017-07-24 14:36 | 6h | Helper [200%]; SAW Welder | 18h | 18h | 1,012.5 | 1,012.5 | 1,012.5 |
| 104 | 2.3.15 | LS2-FLUSHGRIND | 5h | 2017-07-24 14:36 A | 2017-07-24 19:36 A | 103 | 100% | 2017-07-24 14:36 | 2017-07-24 19:36 | 5h | Grinder [200%] | 10h | 10h | 562.5 | 562.5 | 562.5 |
| 105 | 2.3.16 | LS2-REROLLING | 8h | 2017-07-24 19:36 A | 2017-07-25 11:36 A | 104 | 100% | 2017-07-24 19:36 | 2017-07-25 11:36 | 8h | Fitter [200%]; Helper | 22.5h | 22.5h | 1,396.88 | 1,396.88 | 1,396.88 |
| 106 | 2.3.17 | LS2-DPCHECK | 4h | 2017-07-25 11:36 A | 2017-07-25 15:37 A | 105 | 100% | 2017-07-25 11:36 | 2017-07-25 15:37 | 4h | Fitter | 4h | 4h | 275 | 275 | 275 |
| 107 | 2.3.18 | LS2-RADIOGRAPHY | 1.81d | 2017-07-25 15:37 A | 2017-07-27 14:07 A | 106 | 100% | 2017-07-25 15:37 | 2017-07-27 14:07 | 1.81d |  |  |  |  |  |  |
| 108 | 2.4 | **SHELL LS3- FABRICATION** | 8.51d | 2017-07-17 12:00 A | 2017-07-27 17:07 A |  | 100% | 2017-07-17 12:00 | 2017-07-27 17:07 | 8.51d |  | 227.61h | 227.61h | 13,273.31 | 13,273.65 | 13,273.31 |
| 109 | 2.4.1 | LS3-PLATE MARKING | 8h | 2017-07-17 12:00 A | 2017-07-17 20:01 A | 52, 90 | 100% | 2017-07-17 12:00 | 2017-07-17 20:01 | 8h | Fitter; Helper | 9.11h | 9.11h | 476.43 | 476.77 | 476.43 |
| 110 | 2.4.2 | LS3-STAMPING | 6h | 2017-07-17 20:01 A | 2017-07-18 10:01 A | 109 | 100% | 2017-07-17 20:01 | 2017-07-18 10:01 | 6h | Fitter [200%]; Helper | 17h | 17h | 1,075 | 1,075 | 1,075 |
| 111 | 2.4.3 | LS3-PL CUTTING | 7h | 2017-07-18 10:01 A | 2017-07-18 17:02 A | 110 | 100% | 2017-07-18 10:01 | 2017-07-18 17:02 | 7h | Gas Cutter; Helper | 8h | 8h | 418.75 | 418.75 | 418.75 |
| 112 | 2.4.4 | LS3-GRINDING | 8h | 2017-07-18 17:02 A | 2017-07-19 09:02 A | 111 | 100% | 2017-07-18 17:02 | 2017-07-19 09:02 | 8h | Grinder [200%] | 16h | 16h | 900 | 900 | 900 |
| 113 | 2.4.5 | LS3-EDGE PREPARATION | 5h | 2017-07-19 09:02 A | 2017-07-19 14:03 A | 112 | 100% | 2017-07-19 09:02 | 2017-07-19 14:03 | 5h | Grinder [200%] | 10h | 10h | 562.5 | 562.5 | 562.5 |
| 114 | 2.4.6 | LS3-PREBENDING | 7h | 2017-07-19 14:03 A | 2017-07-19 21:03 A | 113 | 100% | 2017-07-19 14:03 | 2017-07-19 21:03 | 7h | Fitter [200%]; Helper | 20h | 20h | 1,262.5 | 1,262.5 | 1,262.5 |
| 115 | 2.4.7 | LS3-PREBEND CUTOFF | 4h | 2017-07-19 21:03 A | 2017-07-20 09:03 A | 114 | 100% | 2017-07-19 21:03 | 2017-07-20 09:03 | 4h | Gas Cutter; Helper | 8h | 8h | 475 | 475 | 475 |
| 116 | 2.4.8 | LS3-EDGE PREPARTION | 5h | 2017-07-20 09:03 A | 2017-07-20 14:04 A | 115 | 100% | 2017-07-20 09:03 | 2017-07-20 14:04 | 5h | Grinder [200%] | 10h | 10h | 562.5 | 562.5 | 562.5 |
| 117 | 2.4.9 | LS3-ROLLING | 10h | 2017-07-20 14:04 A | 2017-07-21 08:04 A | 116 | 100% | 2017-07-20 14:04 | 2017-07-21 08:04 | 10h | Fitter [200%]; Helper | 12h | 12h | 637.5 | 637.5 | 637.5 |
| 118 | 2.4.10 | LS3-CLEANING | 7.5h | 2017-07-21 08:04 A | 2017-07-21 15:35 A | 117 | 100% | 2017-07-21 08:04 | 2017-07-21 15:35 | 7.5h | Helper [200%] | 15h | 15h | 750 | 750 | 750 |
| 119 | 2.4.11 | LS3-FITUP | 9h | 2017-07-21 15:35 A | 2017-07-24 08:35 A | 118 | 100% | 2017-07-21 15:35 | 2017-07-24 08:35 | 9h | Fitter; Helper [200%]; SAW Welder | 33h | 33h | 1,968.75 | 1,968.75 | 1,968.75 |
| 120 | 2.4.12 | LS3-SPIDERUP | 6h | 2017-07-24 08:35 A | 2017-07-24 14:36 A | 119 | 100% | 2017-07-24 08:35 | 2017-07-24 14:36 | 6h | Fitter; Helper | 11h | 11h | 662.5 | 662.5 | 662.5 |
| 121 | 2.4.13 | LS3-FITUP INSPECTION | 4h | 2017-07-24 14:36 A | 2017-07-24 18:36 A | 120 | 100% | 2017-07-24 14:36 | 2017-07-24 18:36 | 4h | Fitter | 4h | 4h | 275 | 275 | 275 |
| 122 | 2.4.14 | LS3-WELDING | 6h | 2017-07-24 18:36 A | 2017-07-25 08:36 A | 121 | 100% | 2017-07-24 18:36 | 2017-07-25 08:36 | 6h | Helper [200%]; SAW Welder | 18h | 18h | 1,012.5 | 1,012.5 | 1,012.5 |
| 123 | 2.4.15 | LS3-FLUSHGRIND | 5h | 2017-07-25 08:36 A | 2017-07-25 13:36 A | 122 | 100% | 2017-07-25 08:36 | 2017-07-25 13:36 | 5h | Grinder [200%] | 10h | 10h | 562.5 | 562.5 | 562.5 |
| 124 | 2.4.16 | LS3-REROLLING | 8h | 2017-07-25 13:36 A | 2017-07-25 21:37 A | 123 | 100% | 2017-07-25 13:36 | 2017-07-25 21:37 | 8h | Fitter [200%]; Helper | 22.5h | 22.5h | 1,396.88 | 1,396.88 | 1,396.88 |
| 125 | 2.4.17 | LS3-DPCHECK | 4h | 2017-07-25 21:37 A | 2017-07-26 09:37 A | 124 | 100% | 2017-07-25 21:37 | 2017-07-26 09:37 | 4h | Fitter | 4h | 4h | 275 | 275 | 275 |
| 126 | 2.4.18 | LS3-RADIOGRAPHY | 1.81d | 2017-07-26 09:37 A | 2017-07-27 17:07 A | 125 | 100% | 2017-07-26 09:37 | 2017-07-27 17:07 | 1.81d |  |  |  |  |  |  |

Notes:
- 89: 3NOS
- 90: ID240*1382lg*4T
- 107: RT
- 108: 3NOS
- 109: 1963*1000*5T
- 126: RT

| ID | WBS | Task | Duration | Start | Finish | Predecessors | Complete | Baseline start | Baseline finish | Baseline duration | Resources | Work | Actual work | Cost | Baseline cost | Actual cost |
| --- | --- | --- | --- | --- | --- | --- | --- | --- | --- | --- | --- | --- | --- | --- | --- | --- |
| 127 | 2.5 | **SHELL LS4- FABRICATION** | 8.7d | 2017-07-17 20:01 A | 2017-07-28 15:08 A |  | 100% | 2017-07-17 20:01 | 2017-07-28 15:08 | 8.7d |  | 247.11h | 247.11h | 14,679.56 | 14,679.9 | 14,679.56 |
| 128 | 2.5.1 | LS4-PLATE MARKING | 8h | 2017-07-17 20:01 A | 2017-07-18 12:01 A | 52, 109 | 100% | 2017-07-17 20:01 | 2017-07-18 12:01 | 8h | Fitter; Helper | 9.11h | 9.11h | 476.43 | 476.77 | 476.43 |
| 129 | 2.5.2 | LS4-STAMPING | 6h | 2017-07-18 12:01 A | 2017-07-18 18:02 A | 128 | 100% | 2017-07-18 12:01 | 2017-07-18 18:02 | 6h | Fitter [200%]; Helper | 17h | 17h | 1,075 | 1,075 | 1,075 |
| 130 | 2.5.3 | LS4-PL CUTTING | 7h | 2017-07-18 18:02 A | 2017-07-19 09:02 A | 129 | 100% | 2017-07-18 18:02 | 2017-07-19 09:02 | 7h | Gas Cutter; Helper | 13h | 13h | 781.25 | 781.25 | 781.25 |
| 131 | 2.5.4 | LS4-GRINDING | 8h | 2017-07-19 09:02 A | 2017-07-19 17:03 A | 130 | 100% | 2017-07-19 09:02 | 2017-07-19 17:03 | 8h | Grinder [200%] | 16h | 16h | 900 | 900 | 900 |
| 132 | 2.5.5 | LS4-EDGE PREPARATION | 5h | 2017-07-19 17:03 A | 2017-07-20 06:03 A | 131 | 100% | 2017-07-19 17:03 | 2017-07-20 06:03 | 5h | Grinder [200%] | 10h | 10h | 562.5 | 562.5 | 562.5 |
| 133 | 2.5.6 | LS4-PREBENDING | 7h | 2017-07-20 06:03 A | 2017-07-20 13:03 A | 132 | 100% | 2017-07-20 06:03 | 2017-07-20 13:03 | 7h | Fitter [200%]; Helper | 20h | 20h | 1,262.5 | 1,262.5 | 1,262.5 |
| 134 | 2.5.7 | LS4-PREBEND CUTOFF | 4h | 2017-07-20 13:03 A | 2017-07-20 17:04 A | 133 | 100% | 2017-07-20 13:03 | 2017-07-20 17:04 | 4h | Gas Cutter; Helper | 8h | 8h | 475 | 475 | 475 |
| 135 | 2.5.8 | LS4-EDGE PREPARTION | 5h | 2017-07-20 17:04 A | 2017-07-21 06:04 A | 134 | 100% | 2017-07-20 17:04 | 2017-07-21 06:04 | 5h | Grinder [200%] | 10h | 10h | 562.5 | 562.5 | 562.5 |
| 136 | 2.5.9 | LS4-ROLLING | 10h | 2017-07-21 06:04 A | 2017-07-21 16:05 A | 135 | 100% | 2017-07-21 06:04 | 2017-07-21 16:05 | 10h | Fitter [200%]; Helper | 29h | 29h | 1,825 | 1,825 | 1,825 |
| 137 | 2.5.10 | LS4- CLEANING | 7.5h | 2017-07-21 16:05 A | 2017-07-24 07:35 A | 136 | 100% | 2017-07-21 16:05 | 2017-07-24 07:35 | 7.5h | Helper [200%] | 15h | 15h | 750 | 750 | 750 |
| 138 | 2.5.11 | LS4-FITUP | 8h | 2017-07-24 07:35 A | 2017-07-24 15:36 A | 137 | 100% | 2017-07-24 07:35 | 2017-07-24 15:36 | 8h | Fitter; Helper [200%]; SAW Welder | 30.5h | 30.5h | 1,825 | 1,825 | 1,825 |
| 139 | 2.5.12 | LS4-SPIDERUP | 6h | 2017-07-24 15:36 A | 2017-07-24 21:36 A | 138 | 100% | 2017-07-24 15:36 | 2017-07-24 21:36 | 6h | Fitter; Helper | 11h | 11h | 662.5 | 662.5 | 662.5 |
| 140 | 2.5.13 | LS4-FITUP INSPECTION | 4h | 2017-07-24 21:36 A | 2017-07-25 09:36 A | 139 | 100% | 2017-07-24 21:36 | 2017-07-25 09:36 | 4h | Fitter | 4h | 4h | 275 | 275 | 275 |
| 141 | 2.5.14 | LS4-WELDING | 6h | 2017-07-25 09:36 A | 2017-07-25 15:37 A | 140 | 100% | 2017-07-25 09:36 | 2017-07-25 15:37 | 6h | Helper [200%]; SAW Welder | 18h | 18h | 1,012.5 | 1,012.5 | 1,012.5 |
| 142 | 2.5.15 | LS4-FLUSHGRIND | 5h | 2017-07-25 15:37 A | 2017-07-25 20:37 A | 141 | 100% | 2017-07-25 15:37 | 2017-07-25 20:37 | 5h | Grinder [200%] | 10h | 10h | 562.5 | 562.5 | 562.5 |
| 143 | 2.5.16 | LS4-REROLLING | 8h | 2017-07-25 20:37 A | 2017-07-26 12:37 A | 142 | 100% | 2017-07-25 20:37 | 2017-07-26 12:37 | 8h | Fitter [200%]; Helper | 22.5h | 22.5h | 1,396.88 | 1,396.88 | 1,396.88 |
| 144 | 2.5.17 | LS4-DPCHECK | 4h | 2017-07-26 12:37 A | 2017-07-26 16:38 A | 143 | 100% | 2017-07-26 12:37 | 2017-07-26 16:38 | 4h | Fitter | 4h | 4h | 275 | 275 | 275 |
| 145 | 2.5.18 | LS4-RADIOGRAPHY | 1.81d | 2017-07-26 16:38 A | 2017-07-28 15:08 A | 144 | 100% | 2017-07-26 16:38 | 2017-07-28 15:08 | 1.81d |  |  |  |  |  |  |
| 146 | 2.6 | **CHANNEL(RHS) LS5-FABRICATION** | 6.51d | 2017-07-18 12:01 A | 2017-07-26 17:06 A |  | 100% | 2017-07-18 12:01 | 2017-07-26 17:06 | 6.51d |  | 184h | 184h | 11,015.63 | 11,015.62 | 11,015.63 |
| 147 | 2.6.1 | LS5-PLATE MARKING | 4h | 2017-07-18 12:01 A | 2017-07-18 16:02 A | 52, 128 | 100% | 2017-07-18 12:01 | 2017-07-18 16:02 | 4h | Fitter; Helper | 8h | 8h | 475 | 475 | 475 |
| 148 | 2.6.2 | LS5-STAMPING | 3.5h | 2017-07-18 16:02 A | 2017-07-18 19:32 A | 147 | 100% | 2017-07-18 16:02 | 2017-07-18 19:32 | 3.5h | Fitter [200%]; Helper | 10.5h | 10.5h | 656.25 | 656.25 | 656.25 |
| 149 | 2.6.3 | LS5-PLCUTTING | 3.5h | 2017-07-18 19:32 A | 2017-07-19 07:02 A | 148 | 100% | 2017-07-18 19:32 | 2017-07-19 07:02 | 3.5h | Gas Cutter; Helper | 7h | 7h | 415.62 | 415.62 | 415.62 |
| 150 | 2.6.4 | LS5-GRINDING | 4h | 2017-07-19 07:02 A | 2017-07-19 11:02 A | 149 | 100% | 2017-07-19 07:02 | 2017-07-19 11:02 | 4h | Grinder [200%] | 8h | 8h | 450 | 450 | 450 |
| 151 | 2.6.5 | LS5-EDGE PREPARATION | 5h | 2017-07-19 11:02 A | 2017-07-19 16:03 A | 150 | 100% | 2017-07-19 11:02 | 2017-07-19 16:03 | 5h | Grinder [200%] | 10h | 10h | 562.5 | 562.5 | 562.5 |
| 152 | 2.6.6 | LS5-PRE BENDING | 4.5h | 2017-07-19 16:03 A | 2017-07-19 20:33 A | 151 | 100% | 2017-07-19 16:03 | 2017-07-19 20:33 | 4.5h | Fitter [200%]; Helper | 13h | 13h | 818.75 | 818.75 | 818.75 |
| 153 | 2.6.7 | LS5-PREBEND CUTOFF | 2.5h | 2017-07-19 20:33 A | 2017-07-20 07:03 A | 152 | 100% | 2017-07-19 20:33 | 2017-07-20 07:03 | 2.5h | Gas Cutter; Helper | 5h | 5h | 296.88 | 296.88 | 296.88 |
| 154 | 2.6.8 | LS5-EDGE PREPARTION | 2.5h | 2017-07-20 07:03 A | 2017-07-20 09:33 A | 153 | 100% | 2017-07-20 07:03 | 2017-07-20 09:33 | 2.5h | Grinder [200%] | 5h | 5h | 281.25 | 281.25 | 281.25 |
| 155 | 2.6.9 | LS5-ROLLING | 7.5h | 2017-07-20 09:33 A | 2017-07-20 17:04 A | 154 | 100% | 2017-07-20 09:33 | 2017-07-20 17:04 | 7.5h | Fitter [200%]; Helper | 22h | 22h | 1,371.88 | 1,371.88 | 1,371.88 |
| 156 | 2.6.10 | LS5- CLEANING | 6h | 2017-07-20 17:04 A | 2017-07-21 07:04 A | 155 | 100% | 2017-07-20 17:04 | 2017-07-21 07:04 | 6h | Helper [200%] | 12h | 12h | 600 | 600 | 600 |
| 157 | 2.6.11 | LS5-FITUP | 8h | 2017-07-21 07:04 A | 2017-07-21 15:05 A | 156 | 100% | 2017-07-21 07:04 | 2017-07-21 15:05 | 8h | Fitter; Helper [200%]; SAW Welder | 30.5h | 30.5h | 1,825 | 1,825 | 1,825 |
| 158 | 2.6.12 | LS5-SPIDERUP | 6h | 2017-07-21 15:05 A | 2017-07-21 21:05 A | 157 | 100% | 2017-07-21 15:05 | 2017-07-21 21:05 | 6h | Fitter; Helper | 11h | 11h | 662.5 | 662.5 | 662.5 |
| 159 | 2.6.13 | LS5-FITUP INSPECTION | 4h | 2017-07-21 21:05 A | 2017-07-24 09:05 A | 158 | 100% | 2017-07-21 21:05 | 2017-07-24 09:05 | 4h | Fitter | 4h | 4h | 275 | 275 | 275 |
| 160 | 2.6.14 | LS5-WELDING | 3h | 2017-07-24 09:05 A | 2017-07-24 12:05 A | 159 | 100% | 2017-07-24 09:05 | 2017-07-24 12:05 | 3h | Helper [200%]; SAW Welder | 9h | 9h | 506.25 | 506.25 | 506.25 |
| 161 | 2.6.15 | LS5-FLUSHGRIND | 2.5h | 2017-07-24 12:05 A | 2017-07-24 14:36 A | 160 | 100% | 2017-07-24 12:05 | 2017-07-24 14:36 | 2.5h | Grinder [200%] | 5h | 5h | 281.25 | 281.25 | 281.25 |
| 162 | 2.6.16 | LS5-REROLLING | 7h | 2017-07-24 14:36 A | 2017-07-24 21:36 A | 161 | 100% | 2017-07-24 14:36 | 2017-07-24 21:36 | 7h | Fitter [200%]; Helper | 20h | 20h | 1,262.5 | 1,262.5 | 1,262.5 |
| 163 | 2.6.17 | LS5-DPCHECK | 4h | 2017-07-24 21:36 A | 2017-07-25 09:36 A | 162 | 100% | 2017-07-24 21:36 | 2017-07-25 09:36 | 4h | Fitter | 4h | 4h | 275 | 275 | 275 |
| 164 | 2.6.18 | LS5-RADIOGRAPHY | 1.81d | 2017-07-25 09:36 A | 2017-07-26 17:06 A | 163 | 100% | 2017-07-25 09:36 | 2017-07-26 17:06 | 1.81d |  |  |  |  |  |  |

Notes:
- 127: 3NOS
- 128: 1602*1696L*5T
- 145: RT
- 146: 3NOS
- 147: ID240*206lg*4T
- 164: RT

| ID | WBS | Task | Duration | Start | Finish | Predecessors | Complete | Baseline start | Baseline finish | Baseline duration | Resources | Work | Actual work | Cost | Baseline cost | Actual cost |
| --- | --- | --- | --- | --- | --- | --- | --- | --- | --- | --- | --- | --- | --- | --- | --- | --- |
| 165 | 2.7 | **CH BONNET DISH FORMING** | 34.18d | 2017-07-18 16:02 A | 2017-09-01 18:19 A |  | 100% | 2017-07-18 16:02 | 2017-09-01 18:19 | 34.18d |  | 447h | 447h | 26,506.26 | 26,506.25 | 26,506.26 |
| 166 | 2.7.1 | DISH PLATE MARKING | 12h | 2017-07-18 16:02 A | 2017-07-19 12:02 A | 53, 147 | 100% | 2017-07-18 16:02 | 2017-07-19 12:02 | 12h | Fitter [300%]; Helper [200%] | 58h | 58h | 3,575 | 3,575 | 3,575 |
| 167 | 2.7.2 | DISH PLATE CUTTING | 8h | 2017-07-19 12:02 A | 2017-07-19 20:03 A | 166 | 100% | 2017-07-19 12:02 | 2017-07-19 20:03 | 8h | Gas Cutter [200%]; Helper | 24h | 24h | 1,500 | 1,500 | 1,500 |
| 168 | 2.7.3 | DISH PLATE GRINDING | 12h | 2017-07-19 20:03 A | 2017-07-20 16:04 A | 167 | 100% | 2017-07-19 20:03 | 2017-07-20 16:04 | 12h | Grinder [200%] | 24h | 24h | 1,350 | 1,350 | 1,350 |
| 169 | 2.7.4 | DISH FORMING | 21.75d | 2017-07-20 16:04 A | 2017-08-18 14:04 A | 168 | 100% | 2017-07-20 16:04 | 2017-08-18 14:04 | 21.75d |  |  |  |  |  |  |
| 170 | 2.7.5 | DISH INSPECTION | 1.81d | 2017-08-18 14:04 A | 2017-08-19 12:34 A | 169 | 100% | 2017-08-18 14:04 | 2017-08-19 12:34 | 1.81d | Fitter [200%] | 29h | 29h | 1,993.75 | 1,993.75 | 1,993.75 |
| 171 | 2.7.6 | DISH SURFACE GRINDING | 60h | 2017-08-19 12:34 A | 2017-08-24 08:38 A | 170 | 100% | 2017-08-19 12:34 | 2017-08-24 08:38 | 60h | Grinder [300%] | 180h | 180h | 10,125 | 10,125 | 10,125 |
| 172 | 2.7.7 | SF MARKING | 14.33h | 2017-08-24 08:38 A | 2017-08-28 14:15 A | 171 | 100% | 2017-08-24 08:38 | 2017-08-28 14:15 | 14.33h | Fitter [200%]; Helper | 27.5h | 27.5h | 1,646.88 | 1,646.88 | 1,646.88 |
| 173 | 2.7.8 | SF CUTTING | 17h | 2017-08-28 14:15 A | 2017-08-29 15:16 A | 172 | 100% | 2017-08-28 14:15 | 2017-08-29 15:16 | 17h | Gas Cutter [200%]; Helper | 31.5h | 31.5h | 1,846.88 | 1,846.88 | 1,846.88 |
| 174 | 2.7.9 | GRINDING | 12h | 2017-08-29 15:16 A | 2017-08-30 11:16 A | 173 | 100% | 2017-08-29 15:16 | 2017-08-30 11:16 | 12h | Grinder [200%] | 24h | 24h | 1,350 | 1,350 | 1,350 |
| 175 | 2.7.10 | DISH EP | 10h | 2017-08-30 11:16 A | 2017-08-30 21:17 A | 174 | 100% | 2017-08-30 11:16 | 2017-08-30 21:17 | 10h | Grinder [200%] | 20h | 20h | 1,125 | 1,125 | 1,125 |
| 176 | 2.7.11 | DISH INSPECTION | 3.62d | 2017-08-30 21:17 A | 2017-09-01 18:19 A | 175 | 100% | 2017-08-30 21:17 | 2017-09-01 18:19 | 3.62d | Fitter | 29h | 29h | 1,993.75 | 1,993.75 | 1,993.75 |
| 177 | 2.8 | **PASS PARTITION PLATE WELDING** | 5.56d | 2017-07-19 12:02 A | 2017-07-27 07:06 A |  | 100% | 2017-07-19 12:02 | 2017-07-27 07:06 | 5.56d |  | 53.37h | 53.37h | 3,106.17 | 3,105.83 | 3,106.17 |
| 178 | 2.8.1 | PP PLATE MARKING | 4h | 2017-07-19 12:02 A | 2017-07-19 16:03 A | 59, 166 | 100% | 2017-07-19 12:02 | 2017-07-19 16:03 | 4h | Fitter [200%]; Helper | 9.37h | 9.37h | 618.67 | 618.33 | 618.67 |
| 179 | 2.8.2 | CUTTING | 4h | 2017-07-19 16:03 A | 2017-07-19 20:03 A | 178 | 100% | 2017-07-19 16:03 | 2017-07-19 20:03 | 4h | Gas Cutter; Helper | 8h | 8h | 475 | 475 | 475 |
| 180 | 2.8.3 | GRINDING | 7h | 2017-07-19 20:03 A | 2017-07-20 11:03 A | 179 | 100% | 2017-07-19 20:03 | 2017-07-20 11:03 | 7h | Grinder [200%] | 14h | 14h | 787.5 | 787.5 | 787.5 |
| 181 | 2.8.4 | WELDING ONTO CHANNEL(LHS) | 2h | 2017-07-25 11:04 A | 2017-07-25 13:04 A | 70, 180 | 100% | 2017-07-25 11:04 | 2017-07-25 13:04 | 2h | SAW Welder; Helper [200%] | 6h | 6h | 337.5 | 337.5 | 337.5 |
| 182 | 2.8.5 | FLUSH GRIND | 2h | 2017-07-25 13:04 A | 2017-07-25 15:05 A | 181 | 100% | 2017-07-25 13:04 | 2017-07-25 15:05 | 2h | Grinder [200%] | 4h | 4h | 225 | 225 | 225 |
| 183 | 2.8.6 | WELDING ONTO CHANNEL(RHS) | 2h | 2017-07-26 17:06 A | 2017-07-26 19:06 A | 146, 180 | 100% | 2017-07-26 17:06 | 2017-07-26 19:06 | 2h | SAW Welder; Helper [200%] | 6h | 6h | 337.5 | 337.5 | 337.5 |
| 184 | 2.8.7 | FLUSH GRIND | 2h | 2017-07-26 19:06 A | 2017-07-26 21:06 A | 183 | 100% | 2017-07-26 19:06 | 2017-07-26 21:06 | 2h | Grinder [200%] | 4h | 4h | 225 | 225 | 225 |
| 185 | 2.8.8 | CLEANING | 2h | 2017-07-26 21:06 A | 2017-07-27 07:06 A | 184 | 100% | 2017-07-26 21:06 | 2017-07-27 07:06 | 2h | Helper | 2h | 2h | 100 | 100 | 100 |
| 186 | 2.9 | **NOZZLE FABRICATION** | 18.69d | 2017-07-15 16:00 A | 2017-08-08 13:33 A |  | 100% | 2017-07-15 16:00 | 2017-08-08 13:33 | 18.69d |  | 519.53h | 519.53h | 30,903.91 | 30,904.17 | 30,903.91 |
| 187 | 2.9.1 | PIPE MARKING | 10h | 2017-07-15 16:00 A | 2017-07-17 10:00 A | 55 | 100% | 2017-07-15 16:00 | 2017-07-17 10:00 | 10h | Fitter [200%]; Helper [200%] | 22.67h | 22.67h | 1,183.33 | 1,183.33 | 1,183.33 |
| 188 | 2.9.2 | STAMPING | 14h | 2017-07-17 10:00 A | 2017-07-18 08:01 A | 187 | 100% | 2017-07-17 10:00 | 2017-07-18 08:01 | 14h | Fitter [300%]; Helper [200%] | 42.5h | 42.5h | 2,396.88 | 2,396.88 | 2,396.88 |
| 189 | 2.9.3 | CUTTING | 12h | 2017-07-18 08:01 A | 2017-07-18 20:02 A | 188 | 100% | 2017-07-18 08:01 | 2017-07-18 20:02 | 12h | Gas Cutter [300%]; Helper [200%] | 29h | 29h | 1,543.75 | 1,543.75 | 1,543.75 |
| 190 | 2.9.4 | EDGE PREPARATION | 14h | 2017-07-18 20:02 A | 2017-07-19 18:03 A | 189 | 100% | 2017-07-18 20:02 | 2017-07-19 18:03 | 14h | Grinder [300%]; Helper | 18h | 18h | 925 | 925 | 925 |
| 191 | 2.9.5 | FLANGE FIT UP | 27.5h | 2017-07-19 18:03 A | 2017-07-21 13:34 A | 56, 190 | 100% | 2017-07-19 18:03 | 2017-07-21 13:34 | 27.5h | Fitter [200%]; Helper [200%]; SAW Welder | 45h | 45h | 2,821.87 | 2,821.88 | 2,821.87 |
| 192 | 2.9.6 | WELDING | 24h | 2017-07-21 13:34 A | 2017-07-25 12:51 A | 191 | 100% | 2017-07-21 13:34 | 2017-07-25 12:51 | 24h | Helper [200%]; SAW Welder | 38.5h | 38.5h | 2,375 | 2,375 | 2,375 |
| 193 | 2.9.7 | FLUSH GRIND | 22h | 2017-07-25 12:51 A | 2017-07-26 18:53 A | 192 | 100% | 2017-07-25 12:51 | 2017-07-26 18:53 | 22h | Grinder [200%]; Helper | 45.86h | 45.86h | 2,474.33 | 2,474.58 | 2,474.33 |
| 194 | 2.9.8 | INSIDE WELDING | 24h | 2017-07-26 18:53 A | 2017-07-28 10:54 A | 193 | 100% | 2017-07-26 18:53 | 2017-07-28 10:54 | 24h | SAW Welder; Helper [200%] | 53h | 53h | 3,100 | 3,100 | 3,100 |
| 195 | 2.9.9 | FLUSH GRIND | 22h | 2017-07-28 10:54 A | 2017-07-29 16:56 A | 194 | 100% | 2017-07-28 10:54 | 2017-07-29 16:56 | 22h | Grinder [200%]; Helper | 66h | 66h | 3,575 | 3,575 | 3,575 |
| 196 | 2.9.10 | DP CHECK | 24h | 2017-07-29 16:56 A | 2017-08-01 08:57 A | 195 | 100% | 2017-07-29 16:56 | 2017-08-01 08:57 | 24h | Fitter | 24h | 24h | 1,650 | 1,650 | 1,650 |
| 197 | 2.9.11 | MACHINING | 27h | 2017-08-01 08:57 A | 2017-08-03 06:29 A | 196 | 100% | 2017-08-01 08:57 | 2017-08-03 06:29 | 27h | Lathe Operator | 27h | 27h | 3,240 | 3,240 | 3,240 |
| 198 | 2.9.12 | PROFILE MARKING | 20h | 2017-08-03 06:29 A | 2017-08-04 10:30 A | 197 | 100% | 2017-08-03 06:29 | 2017-08-04 10:30 | 20h | Fitter [200%]; Helper [200%] | 44h | 44h | 2,275 | 2,275 | 2,275 |
| 199 | 2.9.13 | PROFILE CUTTING | 24h | 2017-08-04 10:30 A | 2017-08-05 18:32 A | 198 | 100% | 2017-08-04 10:30 | 2017-08-05 18:32 | 24h | Gas Cutter [200%]; Helper | 29h | 29h | 1,543.75 | 1,543.75 | 1,543.75 |
| 200 | 2.9.14 | PROFILE GRINDING | 15h | 2017-08-05 18:32 A | 2017-08-07 17:33 A | 199 | 100% | 2017-08-05 18:32 | 2017-08-07 17:33 | 15h | Grinder [200%]; Helper | 19h | 19h | 975 | 975 | 975 |
| 201 | 2.9.15 | EDEGE PREPARATION | 12h | 2017-08-07 17:33 A | 2017-08-08 13:33 A | 200 | 100% | 2017-08-07 17:33 | 2017-08-08 13:33 | 12h | Grinder [200%]; Helper | 16h | 16h | 825 | 825 | 825 |

Notes:
- 165: 6NOS
- 169: SC
- 177: 6NOS
- 186: 24NOS

| ID | WBS | Task | Duration | Start | Finish | Predecessors | Complete | Baseline start | Baseline finish | Baseline duration | Resources | Work | Actual work | Cost | Baseline cost | Actual cost |
| --- | --- | --- | --- | --- | --- | --- | --- | --- | --- | --- | --- | --- | --- | --- | --- | --- |
| 202 | 2.10 | **TUBESHEET FABRICATION** | 8.58d | 2017-07-17 10:00 A | 2017-07-27 15:39 A |  | 100% | 2017-07-17 10:00 | 2017-07-27 15:39 | 8.58d |  | 295h | 295h | 19,553.13 | 19,553.12 | 19,553.13 |
| 203 | 2.10.1 | TUBESHEET MARKING | 6h | 2017-07-17 10:00 A | 2017-07-17 16:01 A | 58, 187 | 100% | 2017-07-17 10:00 | 2017-07-17 16:01 | 6h | Fitter [200%]; Helper [200%] | 24h | 24h | 1,425 | 1,425 | 1,425 |
| 204 | 2.10.2 | STAMPING | 5h | 2017-07-17 16:01 A | 2017-07-17 21:01 A | 203 | 100% | 2017-07-17 16:01 | 2017-07-17 21:01 | 5h | Fitter [200%]; Helper | 14.5h | 14.5h | 912.5 | 912.5 | 912.5 |
| 205 | 2.10.3 | PLASMA ARC CUTTING | 10h | 2017-07-17 21:01 A | 2017-07-18 15:02 A | 204 | 100% | 2017-07-17 21:01 | 2017-07-18 15:02 | 10h | Gas Cutter [200%]; Helper | 30h | 30h | 1,875 | 1,875 | 1,875 |
| 206 | 2.10.4 | GRINDING | 12h | 2017-07-18 15:02 A | 2017-07-19 11:02 A | 205 | 100% | 2017-07-18 15:02 | 2017-07-19 11:02 | 12h | Grinder [200%]; Helper | 36h | 36h | 1,950 | 1,950 | 1,950 |
| 207 | 2.10.5 | MACHINING | 10h | 2017-07-19 11:02 A | 2017-07-19 21:03 A | 206 | 100% | 2017-07-19 11:02 | 2017-07-19 21:03 | 10h | Lathe Operator [200%] | 20h | 20h | 2,400 | 2,400 | 2,400 |
| 208 | 2.10.6 | HOLES MARKING | 14.5h | 2017-07-19 21:03 A | 2017-07-20 19:34 A | 207 | 100% | 2017-07-19 21:03 | 2017-07-20 19:34 | 14.5h | Fitter [200%]; Helper | 43h | 43h | 2,693.75 | 2,693.75 | 2,693.75 |
| 209 | 2.10.7 | DRILLING | 25h | 2017-07-20 19:34 A | 2017-07-24 12:35 A | 208 | 100% | 2017-07-20 19:34 | 2017-07-24 12:35 | 25h | Driller | 25h | 25h | 1,718.75 | 1,718.75 | 1,718.75 |
| 210 | 2.10.8 | EXPANSION GROOVING | 14.5h | 2017-07-24 12:35 A | 2017-07-25 11:06 A | 209 | 100% | 2017-07-24 12:35 | 2017-07-25 11:06 | 14.5h | Fitter [200%]; Helper | 43h | 43h | 2,693.75 | 2,693.75 | 2,693.75 |
| 211 | 2.10.9 | TIE ROD HOLE MARKING | 12h | 2017-07-25 11:06 A | 2017-07-26 07:07 A | 210 | 100% | 2017-07-25 11:06 | 2017-07-26 07:07 | 12h | Fitter [200%]; Helper | 35h | 35h | 2,200 | 2,200 | 2,200 |
| 212 | 2.10.10 | TIE ROD HOLE DRILLING | 10h | 2017-07-26 07:07 A | 2017-07-26 17:08 A | 211 | 100% | 2017-07-26 07:07 | 2017-07-26 17:08 | 10h | Driller | 10h | 10h | 687.5 | 687.5 | 687.5 |
| 213 | 2.10.11 | FINAL INSPECTION | 1.81d | 2017-07-26 17:08 A | 2017-07-27 15:39 A | 212 | 100% | 2017-07-26 17:08 | 2017-07-27 15:39 | 1.81d | Fitter | 14.5h | 14.5h | 996.88 | 996.88 | 996.88 |
| 214 | 2.11 | **BAFFLE PREPARATION** | 60.19d | 2017-07-15 16:00 A | 2017-10-04 20:01 A |  | 100% | 2017-07-15 16:00 | 2017-10-04 20:01 | 60.19d |  | 2040.75h | 2040.75h | 146,206.25 | 146,206.25 | 146,206.25 |
| 215 | 2.11.1 | PLATE MARKING | 48h | 2017-07-15 16:00 A | 2017-07-19 16:03 A | 61 | 100% | 2017-07-15 16:00 | 2017-07-19 16:03 | 48h | Fitter [300%]; Helper [200%] | 158.5h | 158.5h | 10,625 | 10,625 | 10,625 |
| 216 | 2.11.2 | CUTTING | 50h | 2017-07-19 16:03 A | 2017-07-24 18:06 A | 215 | 100% | 2017-07-19 16:03 | 2017-07-24 18:06 | 50h | Gas Cutter [200%]; Helper | 150h | 150h | 9,375 | 9,375 | 9,375 |
| 217 | 2.11.3 | GRINDING | 55h | 2017-07-24 18:06 A | 2017-07-28 09:09 A | 216 | 100% | 2017-07-24 18:06 | 2017-07-28 09:09 | 55h | Grinder [200%]; Helper | 165h | 165h | 8,937.5 | 8,937.5 | 8,937.5 |
| 218 | 2.11.4 | AXIS LINE MARKING | 24h | 2017-07-28 09:09 A | 2017-07-29 17:11 A | 217 | 100% | 2017-07-28 09:09 | 2017-07-29 17:11 | 24h | Fitter [200%] | 48h | 48h | 3,300 | 3,300 | 3,300 |
| 219 | 2.11.5 | STACKKING | 39h | 2017-07-29 17:11 A | 2017-08-02 08:13 A | 218 | 100% | 2017-07-29 17:11 | 2017-08-02 08:13 | 39h | Helper [200%] | 78h | 78h | 3,900 | 3,900 | 3,900 |
| 220 | 2.11.6 | DRILLING | 300h | 2017-08-02 08:13 A | 2017-08-28 20:32 A | 219 | 100% | 2017-08-02 08:13 | 2017-08-28 20:32 | 300h | Driller [200%] | 600h | 600h | 41,250 | 41,250 | 41,250 |
| 221 | 2.11.7 | DRILLING INSPECTION | 25h | 2017-08-28 20:32 A | 2017-08-30 13:33 A | 220 | 100% | 2017-08-28 20:32 | 2017-08-30 13:33 | 25h | Driller [200%] | 50h | 50h | 3,437.5 | 3,437.5 | 3,437.5 |
| 222 | 2.11.8 | OD MACHINING | 120h | 2017-08-30 13:33 A | 2017-09-07 21:41 A | 221 | 100% | 2017-08-30 13:33 | 2017-09-07 21:41 | 120h | Lathe Operator [200%] | 240h | 240h | 28,800 | 28,800 | 28,800 |
| 223 | 2.11.9 | DE-STACKING | 39h | 2017-09-07 21:41 A | 2017-09-12 12:43 A | 222 | 100% | 2017-09-07 21:41 | 2017-09-12 12:43 | 39h | Helper [200%] | 78h | 78h | 3,900 | 3,900 | 3,900 |
| 224 | 2.11.10 | GRIND THE STACKS | 60h | 2017-09-12 12:43 A | 2017-09-16 08:47 A | 223 | 100% | 2017-09-12 12:43 | 2017-09-16 08:47 | 60h | Grinder [200%]; Helper | 76h | 76h | 3,981.25 | 3,981.25 | 3,981.25 |
| 225 | 2.11.11 | HOLE CHAMFERING | 85h | 2017-09-16 08:47 A | 2017-09-22 13:52 A | 224 | 100% | 2017-09-16 08:47 | 2017-09-22 13:52 | 85h | Lathe Operator; Helper | 170h | 170h | 14,450 | 14,450 | 14,450 |
| 226 | 2.11.12 | BAFFLE NUMERING | 29.75h | 2017-09-22 13:52 A | 2017-09-26 11:39 A | 225 | 100% | 2017-09-22 13:52 | 2017-09-26 11:39 | 29.75h | Fitter [200%]; Helper | 44.25h | 44.25h | 2,484.38 | 2,484.38 | 2,484.38 |
| 227 | 2.11.13 | BAFFLET YPE-A & B ASSY | 24.75h | 2017-09-26 11:39 A | 2017-09-27 20:26 A | 226 | 100% | 2017-09-26 11:39 | 2017-09-27 20:26 | 24.75h | Fitter [200%]; Helper | 64h | 64h | 4,128.12 | 4,128.12 | 4,128.12 |
| 228 | 2.11.14 | BAFFLE TYPE-A & B HOLE MATCHING | 40h | 2017-09-27 20:26 A | 2017-09-30 12:28 A | 227 | 100% | 2017-09-27 20:26 | 2017-09-30 12:28 | 40h | Fitter | 40h | 40h | 2,750 | 2,750 | 2,750 |
| 229 | 2.11.15 | BAFFLE TYPE A & B HOLES DRILLING IF REQD | 25h | 2017-09-30 12:28 A | 2017-10-03 21:30 A | 228 | 100% | 2017-09-30 12:28 | 2017-10-03 21:30 | 25h | Driller [200%] | 50h | 50h | 3,437.5 | 3,437.5 | 3,437.5 |
| 230 | 2.11.16 | CLEANING | 1.81d | 2017-10-03 21:30 A | 2017-10-04 20:01 A | 229 | 100% | 2017-10-03 21:30 | 2017-10-04 20:01 | 1.81d | Helper [200%] | 29h | 29h | 1,450 | 1,450 | 1,450 |

Notes:
- 202: 6NOS
- 203: Φ358*25T
- 214: 78NOS
- 215: Φ237*4T

| ID | WBS | Task | Duration | Start | Finish | Predecessors | Complete | Baseline start | Baseline finish | Baseline duration | Constraint | Resources | Work | Actual work | Cost | Baseline cost | Actual cost |
| --- | --- | --- | --- | --- | --- | --- | --- | --- | --- | --- | --- | --- | --- | --- | --- | --- | --- |
| 231 | 2.12 | **TIE ROD PREPARATION** | 2.18d | 2017-07-19 16:03 A | 2017-07-24 06:05 A |  | 100% | 2017-07-19 16:03 | 2017-07-24 06:05 | 2.18d |  |  | 58h | 58h | 4,125 | 4,125 | 4,125 |
| 232 | 2.12.1 | TIE ROD MARKING | 6h | 2017-07-19 16:03 A | 2017-07-20 06:03 A | 64, 215 | 100% | 2017-07-19 16:03 | 2017-07-20 06:03 | 6h |  | Fitter; Helper | 12h | 12h | 712.5 | 712.5 | 712.5 |
| 233 | 2.12.2 | TIE ROD CUTTING | 6h | 2017-07-20 06:03 A | 2017-07-20 12:03 A | 232 | 100% | 2017-07-20 06:03 | 2017-07-20 12:03 | 6h |  | Gas Cutter; Helper | 12h | 12h | 712.5 | 712.5 | 712.5 |
| 234 | 2.12.3 | LENGTH JOINT WELDING IF REQD | 8h | 2017-07-20 12:03 A | 2017-07-20 20:04 A | 233 | 100% | 2017-07-20 12:03 | 2017-07-20 20:04 | 8h |  | SAW Welder; Helper | 16h | 16h | 950 | 950 | 950 |
| 235 | 2.12.4 | THREAD MC | 10h | 2017-07-20 20:04 A | 2017-07-21 14:05 A | 234 | 100% | 2017-07-20 20:04 | 2017-07-21 14:05 | 10h |  | Lathe Operator | 10h | 10h | 1,200 | 1,200 | 1,200 |
| 236 | 2.12.5 | CLEANING | 8h | 2017-07-21 14:05 A | 2017-07-24 06:05 A | 235 | 100% | 2017-07-21 14:05 | 2017-07-24 06:05 | 8h |  | Fitter | 8h | 8h | 550 | 550 | 550 |
| 237 | 2.13 | **SPACER TUBE PREPARATION** | 117.41d | 2017-07-29 14:11 A | 2017-12-30 22:00 A |  | 100% | 2017-07-20 06:03 | 2017-07-31 06:11 | 8d |  |  | 176.5h | 176.5h | 13,403.13 | 13,403.12 | 13,403.13 |
| 238 | 2.13.1 | TUBE MARKING | 24.99h | 2017-12-27 06:00 A | 2017-12-28 15:01 A | 63, 232 | 100% | 2017-07-20 06:03 | 2017-07-24 08:05 | 34h | finish no later than 2017-12-27 22:00 | Fitter; Helper | 48.5h | 48.5h | 2,696.88 | 2,696.88 | 2,696.88 |
| 239 | 2.13.2 | TUBE CUTTING | 31.97h | 2017-12-29 06:00 A | 2017-12-30 22:00 A | 238 | 100% | 2017-07-24 08:05 | 2017-07-26 11:07 | 35h |  | Gas Cutter; Helper | 70h | 70h | 4,156.25 | 4,156.25 | 4,156.25 |
| 240 | 2.13.3 | TUBE M/C | 31.97h | 2017-12-28 06:00 A | 2017-12-29 22:00 A | 239 | 100% | 2017-07-26 11:07 | 2017-07-29 14:11 | 50h |  | Lathe Operator | 50h | 50h | 6,000 | 6,000 | 6,000 |
| 241 | 2.13.4 | CLEANING | 8h | 2017-07-29 14:11 A | 2017-12-30 13:55 A | 240 | 100% | 2017-07-29 14:11 | 2017-07-31 06:11 | 8h |  | Fitter | 8h | 8h | 550 | 550 | 550 |
| 242 | 2.14 | **SEALING STRIP WELDING** | 4.21d | 2017-07-24 08:05 A | 2017-07-28 10:09 A |  | 100% | 2017-07-24 08:05 | 2017-07-28 10:09 | 4.21d |  |  | 182h | 182h | 10,975 | 10,975 | 10,975 |
| 243 | 2.14.1 | MARKING | 12h | 2017-07-24 08:05 A | 2017-07-24 20:06 A | 59, 238 | 100% | 2017-07-24 08:05 | 2017-07-24 20:06 | 12h |  | Fitter [200%]; Helper | 35h | 35h | 2,200 | 2,200 | 2,200 |
| 244 | 2.14.2 | CUTTING | 15h | 2017-07-24 20:06 A | 2017-07-25 19:07 A | 243 | 100% | 2017-07-24 20:06 | 2017-07-25 19:07 | 15h |  | Gas Cutter [200%]; Helper | 45h | 45h | 2,812.5 | 2,812.5 | 2,812.5 |
| 245 | 2.14.3 | GRINDING | 24h | 2017-07-25 19:07 A | 2017-07-27 11:08 A | 244 | 100% | 2017-07-25 19:07 | 2017-07-27 11:08 | 24h |  | Grinder [200%]; Helper | 72h | 72h | 3,900 | 3,900 | 3,900 |
| 246 | 2.14.4 | BEND REMOVAL | 15h | 2017-07-27 11:08 A | 2017-07-28 10:09 A | 245 | 100% | 2017-07-27 11:08 | 2017-07-28 10:09 | 15h |  | Fitter [200%] | 30h | 30h | 2,062.5 | 2,062.5 | 2,062.5 |
| 247 | 2.15 | **SHELL CS1-FITUP & WELDING** | 4.19d | 2017-07-27 17:07 A | 2017-08-02 09:39 A |  | 100% | 2017-07-27 17:07 | 2017-08-02 09:39 | 4.19d |  |  | 83h | 83h | 4,793.75 | 4,793.75 | 4,793.75 |
| 248 | 2.15.1 | SHELL LS2+LS3 READY | 5h | 2017-07-27 17:07 A | 2017-07-28 06:07 A | 89, 108 | 100% | 2017-07-27 17:07 | 2017-07-28 06:07 | 5h |  | Helper | 5h | 5h | 250 | 250 | 250 |
| 249 | 2.15.2 | SHELL EP CORRECTION | 6h | 2017-07-28 06:07 A | 2017-07-28 12:07 A | 248 | 100% | 2017-07-28 06:07 | 2017-07-28 12:07 | 6h |  | Grinder [200%]; Helper | 7h | 7h | 356.25 | 356.25 | 356.25 |
| 250 | 2.15.3 | CS1-FITUP | 6h | 2017-07-28 12:07 A | 2017-07-28 18:08 A | 249 | 100% | 2017-07-28 12:07 | 2017-07-28 18:08 | 6h |  | Fitter; Helper [200%]; SAW Welder | 21h | 21h | 1,256.25 | 1,256.25 | 1,256.25 |
| 251 | 2.15.4 | CS1-FITUP INSPECTION | 5h | 2017-07-28 18:08 A | 2017-07-29 07:08 A | 250 | 100% | 2017-07-28 18:08 | 2017-07-29 07:08 | 5h |  | Fitter | 5h | 5h | 343.75 | 343.75 | 343.75 |
| 252 | 2.15.5 | CS1-WELDING | 4h | 2017-07-29 07:08 A | 2017-07-29 11:08 A | 251 | 100% | 2017-07-29 07:08 | 2017-07-29 11:08 | 4h |  | SAW Welder; Helper [200%] | 12h | 12h | 675 | 675 | 675 |
| 253 | 2.15.6 | CS1-FLUSHGRIND | 3h | 2017-07-29 11:08 A | 2017-07-29 14:09 A | 252 | 100% | 2017-07-29 11:08 | 2017-07-29 14:09 | 3h |  | Grinder [200%] | 6h | 6h | 337.5 | 337.5 | 337.5 |
| 254 | 2.15.7 | CS1-DPCHECK | 3h | 2017-07-29 14:09 A | 2017-07-29 17:09 A | 253 | 100% | 2017-07-29 14:09 | 2017-07-29 17:09 | 3h |  | Fitter | 3h | 3h | 206.25 | 206.25 | 206.25 |
| 255 | 2.15.8 | CS1-INSIDE WELDING | 4h | 2017-07-29 17:09 A | 2017-07-29 21:09 A | 254 | 100% | 2017-07-29 17:09 | 2017-07-29 21:09 | 4h |  | SAW Welder; Helper [200%] | 12h | 12h | 675 | 675 | 675 |
| 256 | 2.15.9 | CS1-DRESSUP | 3h | 2017-07-29 21:09 A | 2017-07-31 08:09 A | 255 | 100% | 2017-07-29 21:09 | 2017-07-31 08:09 | 3h |  | Grinder [200%]; Helper | 9h | 9h | 487.5 | 487.5 | 487.5 |
| 257 | 2.15.10 | CS1-DPCHECK | 3h | 2017-07-31 08:09 A | 2017-07-31 11:09 A | 256 | 100% | 2017-07-31 08:09 | 2017-07-31 11:09 | 3h |  | Fitter | 3h | 3h | 206.25 | 206.25 | 206.25 |
| 258 | 2.15.11 | CS1-RT | 1.81d | 2017-07-31 11:09 A | 2017-08-02 09:39 A | 257 | 100% | 2017-07-31 11:09 | 2017-08-02 09:39 | 1.81d |  |  |  |  |  |  |  |

Notes:
- 231: 12NOS
- 237: 246NOS
- 242: 12NOS
- 247: 3NOS
- 258: RT

| ID | WBS | Task | Duration | Start | Finish | Predecessors | Complete | Baseline start | Baseline finish | Baseline duration | Resources | Work | Actual work | Cost | Baseline cost | Actual cost |
| --- | --- | --- | --- | --- | --- | --- | --- | --- | --- | --- | --- | --- | --- | --- | --- | --- |
| 259 | 2.16 | **SHELL CS2-FITUP & WELDING** | 4.67d | 2017-08-02 09:39 A | 2017-08-07 16:00 A |  | 100% | 2017-08-02 09:39 | 2017-08-07 16:00 | 4.67d |  | 97h | 97h | 5,581.25 | 5,581.25 | 5,581.25 |
| 260 | 2.16.1 | SHELL CS1+LS4 READY | 5h | 2017-08-02 09:39 A | 2017-08-02 14:40 A | 127, 247 | 100% | 2017-08-02 09:39 | 2017-08-02 14:40 | 5h | Helper | 5h | 5h | 250 | 250 | 250 |
| 261 | 2.16.2 | SHELL EP CORRECTION | 6h | 2017-08-02 14:40 A | 2017-08-02 20:40 A | 260 | 100% | 2017-08-02 14:40 | 2017-08-02 20:40 | 6h | Grinder [200%]; Helper | 18h | 18h | 975 | 975 | 975 |
| 262 | 2.16.3 | CS2-FITUP | 6h | 2017-08-02 20:40 A | 2017-08-03 10:40 A | 261 | 100% | 2017-08-02 20:40 | 2017-08-03 10:40 | 6h | Fitter; Helper [200%]; SAW Welder | 24h | 24h | 1,425 | 1,425 | 1,425 |
| 263 | 2.16.4 | CS2-FITUP INSPECTION | 5h | 2017-08-03 10:40 A | 2017-08-03 15:41 A | 262 | 100% | 2017-08-03 10:40 | 2017-08-03 15:41 | 5h | Fitter | 5h | 5h | 343.75 | 343.75 | 343.75 |
| 264 | 2.16.5 | CS2-WELDING | 4h | 2017-08-03 15:41 A | 2017-08-03 19:41 A | 263 | 100% | 2017-08-03 15:41 | 2017-08-03 19:41 | 4h | SAW Welder; Helper [200%] | 12h | 12h | 675 | 675 | 675 |
| 265 | 2.16.6 | CS2-FLUSHGRIND | 3h | 2017-08-03 19:41 A | 2017-08-04 06:41 A | 264 | 100% | 2017-08-03 19:41 | 2017-08-04 06:41 | 3h | Grinder [200%] | 6h | 6h | 337.5 | 337.5 | 337.5 |
| 266 | 2.16.7 | CS2-DPCHECK | 3h | 2017-08-04 06:41 A | 2017-08-04 09:41 A | 265 | 100% | 2017-08-04 06:41 | 2017-08-04 09:41 | 3h | Fitter | 3h | 3h | 206.25 | 206.25 | 206.25 |
| 267 | 2.16.8 | CS2-INSIDE WELDING | 4h | 2017-08-04 09:41 A | 2017-08-04 13:41 A | 266 | 100% | 2017-08-04 09:41 | 2017-08-04 13:41 | 4h | SAW Welder; Helper [200%] | 12h | 12h | 675 | 675 | 675 |
| 268 | 2.16.9 | CS3-DRESSUP | 3h | 2017-08-04 13:41 A | 2017-08-04 16:42 A | 267 | 100% | 2017-08-04 13:41 | 2017-08-04 16:42 | 3h | Grinder [200%]; Helper | 9h | 9h | 487.5 | 487.5 | 487.5 |
| 269 | 2.16.10 | CS2-DPCHECK | 3h | 2017-08-04 16:42 A | 2017-08-04 19:42 A | 268 | 100% | 2017-08-04 16:42 | 2017-08-04 19:42 | 3h | Fitter | 3h | 3h | 206.25 | 206.25 | 206.25 |
| 270 | 2.16.11 | CS2-RT | 1.81d | 2017-08-05 08:30 A | 2017-08-07 16:00 A | 269 | 100% | 2017-08-05 08:30 | 2017-08-07 16:00 | 1.81d |  |  |  |  |  |  |
| 271 | 2.17 | **CHANNEL FLG ASSY** | 2.91d | 2017-07-25 11:04 A | 2017-07-28 10:22 A |  | 100% | 2017-07-25 11:04 | 2017-07-28 10:22 | 2.91d |  | 117.25h | 117.25h | 6,823.44 | 6,823.44 | 6,823.44 |
| 272 | 2.17.1 | CHANNEL(LHS)+FLG FIT UP | 7h | 2017-07-25 11:04 A | 2017-07-25 18:05 A | 54, 70 | 100% | 2017-07-25 11:04 | 2017-07-25 18:05 | 7h | Fitter; Helper [200%]; SAW Welder | 25h | 25h | 1,493.75 | 1,493.75 | 1,493.75 |
| 273 | 2.17.2 | CS WELDING | 4h | 2017-07-25 18:05 A | 2017-07-26 06:05 A | 272 | 100% | 2017-07-25 18:05 | 2017-07-26 06:05 | 4h | SAW Welder; Helper [200%] | 12h | 12h | 675 | 675 | 675 |
| 274 | 2.17.3 | FLUSH GRIND | 3h | 2017-07-26 06:05 A | 2017-07-26 09:05 A | 273 | 100% | 2017-07-26 06:05 | 2017-07-26 09:05 | 3h | Grinder; Helper | 6h | 6h | 318.75 | 318.75 | 318.75 |
| 275 | 2.17.4 | INSIDE WELDING | 4h | 2017-07-26 09:05 A | 2017-07-26 13:05 A | 274 | 100% | 2017-07-26 09:05 | 2017-07-26 13:05 | 4h | SAW Welder; Helper [200%] | 12h | 12h | 675 | 675 | 675 |
| 276 | 2.17.5 | CHANNEL(RHS)+FLG FIT UP | 7h | 2017-07-26 17:06 A | 2017-07-27 08:06 A | 54, 146 | 100% | 2017-07-26 17:06 | 2017-07-27 08:06 | 7h | Fitter; Helper [200%]; SAW Welder | 25h | 25h | 1,493.75 | 1,493.75 | 1,493.75 |
| 277 | 2.17.6 | CS WELDING | 4h | 2017-07-27 08:06 A | 2017-07-27 12:06 A | 276 | 100% | 2017-07-27 08:06 | 2017-07-27 12:06 | 4h | SAW Welder; Helper [200%] | 12h | 12h | 675 | 675 | 675 |
| 278 | 2.17.7 | FLUSH GRIND | 3h | 2017-07-27 12:06 A | 2017-07-27 15:07 A | 277 | 100% | 2017-07-27 12:06 | 2017-07-27 15:07 | 3h | Grinder; Helper | 6h | 6h | 318.75 | 318.75 | 318.75 |
| 279 | 2.17.8 | INSIDE WELDING | 4h | 2017-07-27 15:07 A | 2017-07-27 19:07 A | 278 | 100% | 2017-07-27 15:07 | 2017-07-27 19:07 | 4h | SAW Welder; Helper [200%] | 12h | 12h | 675 | 675 | 675 |
| 280 | 2.17.9 | INSPECTION | 0.91d | 2017-07-27 19:07 A | 2017-07-28 10:22 A | 279 | 100% | 2017-07-27 19:07 | 2017-07-28 10:22 | 0.91d | Fitter | 7.25h | 7.25h | 498.44 | 498.44 | 498.44 |
| 281 | 2.18 | **CH CS3-FITUP & WELDING** | 4.58d | 2017-07-28 10:22 A | 2017-08-02 16:00 A |  | 100% | 2017-07-28 10:22 | 2017-08-02 16:00 | 4.58d |  | 98h | 98h | 5,650 | 5,650 | 5,650 |
| 282 | 2.18.1 | SHELL CH(LHS)+LS1 READY | 5h | 2017-07-28 10:22 A | 2017-07-28 15:23 A | 70, 271 | 100% | 2017-07-28 10:22 | 2017-07-28 15:23 | 5h | Helper | 5h | 5h | 250 | 250 | 250 |
| 283 | 2.18.2 | SHELL EP CORRECTION | 6h | 2017-07-28 15:23 A | 2017-07-28 21:23 A | 282 | 100% | 2017-07-28 15:23 | 2017-07-28 21:23 | 6h | Grinder [200%]; Helper | 18h | 18h | 975 | 975 | 975 |
| 284 | 2.18.3 | CS3-FITUP | 7h | 2017-07-28 21:23 A | 2017-07-29 12:23 A | 283 | 100% | 2017-07-28 21:23 | 2017-07-29 12:23 | 7h | Fitter; Helper [200%]; SAW Welder | 25h | 25h | 1,493.75 | 1,493.75 | 1,493.75 |
| 285 | 2.18.4 | CS3-FITUP INSPECTION | 5h | 2017-07-29 12:23 A | 2017-07-29 17:24 A | 284 | 100% | 2017-07-29 12:23 | 2017-07-29 17:24 | 5h | Fitter | 5h | 5h | 343.75 | 343.75 | 343.75 |
| 286 | 2.18.5 | CS3-WELDING | 4h | 2017-07-29 17:24 A | 2017-07-29 21:24 A | 285 | 100% | 2017-07-29 17:24 | 2017-07-29 21:24 | 4h | SAW Welder; Helper [200%] | 12h | 12h | 675 | 675 | 675 |
| 287 | 2.18.6 | CS3-FLUSHGRIND | 3h | 2017-07-29 21:24 A | 2017-07-31 08:24 A | 286 | 100% | 2017-07-29 21:24 | 2017-07-31 08:24 | 3h | Grinder [200%] | 6h | 6h | 337.5 | 337.5 | 337.5 |
| 288 | 2.18.7 | CS3-DPCHECK | 3h | 2017-07-31 08:24 A | 2017-07-31 11:24 A | 287 | 100% | 2017-07-31 08:24 | 2017-07-31 11:24 | 3h | Fitter | 3h | 3h | 206.25 | 206.25 | 206.25 |
| 289 | 2.18.8 | CS3-INSIDE WELDING | 4h | 2017-07-31 11:24 A | 2017-07-31 15:25 A | 288 | 100% | 2017-07-31 11:24 | 2017-07-31 15:25 | 4h | SAW Welder; Helper [200%] | 12h | 12h | 675 | 675 | 675 |
| 290 | 2.18.9 | CS3-DRESSUP | 3h | 2017-07-31 15:25 A | 2017-07-31 18:25 A | 289 | 100% | 2017-07-31 15:25 | 2017-07-31 18:25 | 3h | Grinder [200%]; Helper | 9h | 9h | 487.5 | 487.5 | 487.5 |
| 291 | 2.18.10 | CS3-DPCHECK | 3h | 2017-07-31 18:25 A | 2017-07-31 21:25 A | 290 | 100% | 2017-07-31 18:25 | 2017-07-31 21:25 | 3h | Fitter | 3h | 3h | 206.25 | 206.25 | 206.25 |
| 292 | 2.18.11 | CS3-RT | 1.81d | 2017-08-01 08:30 A | 2017-08-02 16:00 A | 291 | 100% | 2017-08-01 08:30 | 2017-08-02 16:00 | 1.81d |  |  |  |  |  |  |

Notes:
- 259: 3NOS
- 270: RT
- 272: 3NOS
- 276: 3NOS
- 292: RT

| ID | WBS | Task | Duration | Start | Finish | Predecessors | Complete | Baseline start | Baseline finish | Baseline duration | Resources | Work | Actual work | Cost | Baseline cost | Actual cost |
| --- | --- | --- | --- | --- | --- | --- | --- | --- | --- | --- | --- | --- | --- | --- | --- | --- |
| 293 | 2.19 | **CH CS4-FITUP & WELDING** | 4.58d | 2017-07-28 10:22 A | 2017-08-02 16:00 A |  | 100% | 2017-07-28 10:22 | 2017-08-02 16:00 | 4.58d |  | 98h | 98h | 5,650 | 5,650 | 5,650 |
| 294 | 2.19.1 | SHELL CH(RHS)+LS5 READY | 5h | 2017-07-28 10:22 A | 2017-07-28 15:23 A | 146, 271 | 100% | 2017-07-28 10:22 | 2017-07-28 15:23 | 5h | Helper | 5h | 5h | 250 | 250 | 250 |
| 295 | 2.19.2 | SHELL EP CORRECTION | 6h | 2017-07-28 15:23 A | 2017-07-28 21:23 A | 294 | 100% | 2017-07-28 15:23 | 2017-07-28 21:23 | 6h | Grinder [200%]; Helper | 18h | 18h | 975 | 975 | 975 |
| 296 | 2.19.3 | CS4-FITUP | 7h | 2017-07-28 21:23 A | 2017-07-29 12:23 A | 295 | 100% | 2017-07-28 21:23 | 2017-07-29 12:23 | 7h | Fitter; Helper [200%]; SAW Welder | 25h | 25h | 1,493.75 | 1,493.75 | 1,493.75 |
| 297 | 2.19.4 | CS4-FITUP INSPECTION | 5h | 2017-07-29 12:23 A | 2017-07-29 17:24 A | 296 | 100% | 2017-07-29 12:23 | 2017-07-29 17:24 | 5h | Fitter | 5h | 5h | 343.75 | 343.75 | 343.75 |
| 298 | 2.19.5 | CS4-WELDING | 4h | 2017-07-29 17:24 A | 2017-07-29 21:24 A | 297 | 100% | 2017-07-29 17:24 | 2017-07-29 21:24 | 4h | SAW Welder; Helper [200%] | 12h | 12h | 675 | 675 | 675 |
| 299 | 2.19.6 | CS4-FLUSHGRIND | 3h | 2017-07-29 21:24 A | 2017-07-31 08:24 A | 298 | 100% | 2017-07-29 21:24 | 2017-07-31 08:24 | 3h | Grinder [200%] | 6h | 6h | 337.5 | 337.5 | 337.5 |
| 300 | 2.19.7 | CS4-DPCHECK | 3h | 2017-07-31 08:24 A | 2017-07-31 11:24 A | 299 | 100% | 2017-07-31 08:24 | 2017-07-31 11:24 | 3h | Fitter | 3h | 3h | 206.25 | 206.25 | 206.25 |
| 301 | 2.19.8 | CS4-INSIDE WELDING | 4h | 2017-07-31 11:24 A | 2017-07-31 15:25 A | 300 | 100% | 2017-07-31 11:24 | 2017-07-31 15:25 | 4h | SAW Welder; Helper [200%] | 12h | 12h | 675 | 675 | 675 |
| 302 | 2.19.9 | CS4-DRESSUP | 3h | 2017-07-31 15:25 A | 2017-07-31 18:25 A | 301 | 100% | 2017-07-31 15:25 | 2017-07-31 18:25 | 3h | Grinder [200%]; Helper | 9h | 9h | 487.5 | 487.5 | 487.5 |
| 303 | 2.19.10 | CS4-DPCHECK | 3h | 2017-07-31 18:25 A | 2017-07-31 21:25 A | 302 | 100% | 2017-07-31 18:25 | 2017-07-31 21:25 | 3h | Fitter | 3h | 3h | 206.25 | 206.25 | 206.25 |
| 304 | 2.19.11 | CS4-RT | 1.81d | 2017-08-01 08:30 A | 2017-08-02 16:00 A | 303 | 100% | 2017-08-01 08:30 | 2017-08-02 16:00 | 1.81d |  |  |  |  |  |  |
| 305 | 2.20 | **NOZZLE WITH PAD WELDING** | 6.3d | 2017-08-08 13:33 A | 2017-08-17 15:55 A |  | 100% | 2017-08-08 13:33 | 2017-08-17 15:55 | 6.3d |  | 285h | 285h | 16,853.13 | 16,853.12 | 16,853.13 |
| 306 | 2.20.1 | NOZZLE READY | 3h | 2017-08-08 13:33 A | 2017-08-08 16:34 A | 186 | 100% | 2017-08-08 13:33 | 2017-08-08 16:34 | 3h | Helper | 3h | 3h | 150 | 150 | 150 |
| 307 | 2.20.2 | ORIENTATION MARKING | 6h | 2017-08-08 16:34 A | 2017-08-09 06:34 A | 306 | 100% | 2017-08-08 16:34 | 2017-08-09 06:34 | 6h | Fitter [200%]; Helper | 17h | 17h | 1,075 | 1,075 | 1,075 |
| 308 | 2.20.3 | NOZZLE OPENING | 8h | 2017-08-09 06:34 A | 2017-08-09 14:35 A | 307 | 100% | 2017-08-09 06:34 | 2017-08-09 14:35 | 8h | Gas Cutter [200%]; Helper | 24h | 24h | 1,500 | 1,500 | 1,500 |
| 309 | 2.20.4 | NOZZLE EP | 7h | 2017-08-09 14:35 A | 2017-08-09 21:35 A | 308 | 100% | 2017-08-09 14:35 | 2017-08-09 21:35 | 7h | Grinder [200%] | 14h | 14h | 787.5 | 787.5 | 787.5 |
| 310 | 2.20.5 | NOZZLE FIT UP | 8h | 2017-08-09 21:35 A | 2017-08-10 13:35 A | 309 | 100% | 2017-08-09 21:35 | 2017-08-10 13:35 | 8h | Fitter; SAW Welder; Helper [200%] | 32h | 32h | 1,900 | 1,900 | 1,900 |
| 311 | 2.20.6 | NOZZLE WELDING | 8h | 2017-08-10 13:35 A | 2017-08-10 21:36 A | 310 | 100% | 2017-08-10 13:35 | 2017-08-10 21:36 | 8h | SAW Welder; Helper [200%] | 24h | 24h | 1,350 | 1,350 | 1,350 |
| 312 | 2.20.7 | RF PAD FIT UP | 8h | 2017-08-10 21:36 A | 2017-08-11 13:36 A | 311 | 100% | 2017-08-10 21:36 | 2017-08-11 13:36 | 8h | Fitter; SAW Welder; Helper [200%] | 32h | 32h | 1,900 | 1,900 | 1,900 |
| 313 | 2.20.8 | RF PAD WELDING | 8h | 2017-08-11 13:36 A | 2017-08-11 21:37 A | 312 | 100% | 2017-08-11 13:36 | 2017-08-11 21:37 | 8h | SAW Welder; Helper [200%] | 24h | 24h | 1,350 | 1,350 | 1,350 |
| 314 | 2.20.9 | FLUSH GRIND | 7h | 2017-08-11 21:37 A | 2017-08-14 12:37 A | 313 | 100% | 2017-08-11 21:37 | 2017-08-14 12:37 | 7h | Grinder [200%]; Helper | 21h | 21h | 1,137.5 | 1,137.5 | 1,137.5 |
| 315 | 2.20.10 | NOZZLE INSIDE WELD | 8h | 2017-08-14 12:37 A | 2017-08-14 20:38 A | 314 | 100% | 2017-08-14 12:37 | 2017-08-14 20:38 | 8h | SAW Welder; Helper [200%] | 22.5h | 22.5h | 1,275 | 1,275 | 1,275 |
| 316 | 2.20.11 | NOZZLE LINER FITUP | 6h | 2017-08-14 20:38 A | 2017-08-16 10:38 A | 315 | 100% | 2017-08-14 20:38 | 2017-08-16 10:38 | 6h | SAW Welder; Helper [200%]; Fitter | 21h | 21h | 1,256.25 | 1,256.25 | 1,256.25 |
| 317 | 2.20.12 | WELDING | 8h | 2017-08-16 10:38 A | 2017-08-16 18:39 A | 316 | 100% | 2017-08-16 10:38 | 2017-08-16 18:39 | 8h | SAW Welder; Helper [200%] | 24h | 24h | 1,350 | 1,350 | 1,350 |
| 318 | 2.20.13 | DP/AIR TEST | 6h | 2017-08-16 18:39 A | 2017-08-17 08:39 A | 317 | 100% | 2017-08-16 18:39 | 2017-08-17 08:39 | 6h | Fitter [200%] | 12h | 12h | 825 | 825 | 825 |
| 319 | 2.20.14 | INSPECTION | 0.91d | 2017-08-17 08:39 A | 2017-08-17 15:55 A | 318 | 100% | 2017-08-17 08:39 | 2017-08-17 15:55 | 0.91d | Fitter [200%] | 14.5h | 14.5h | 996.88 | 996.88 | 996.88 |

Notes:
- 298: .36KG/MTR-1.602
- 304: RT
- 305: 6NOS

| ID | WBS | Task | Duration | Start | Finish | Predecessors | Complete | Baseline start | Baseline finish | Baseline duration | Resources | Work | Actual work | Cost | Baseline cost | Actual cost |
| --- | --- | --- | --- | --- | --- | --- | --- | --- | --- | --- | --- | --- | --- | --- | --- | --- |
| 320 | 2.21 | **NOZZLE STIFFENER WELDING** | 6.3d | 2017-08-08 13:33 A | 2017-08-17 15:55 A |  | 100% | 2017-08-08 13:33 | 2017-08-17 15:55 | 6.3d |  | 272h | 272h | 16,165.63 | 16,165.62 | 16,165.63 |
| 321 | 2.21.1 | NOZZLE READY | 3h | 2017-08-08 13:33 A | 2017-08-08 16:34 A | 186 | 100% | 2017-08-08 13:33 | 2017-08-08 16:34 | 3h | Helper | 3h | 3h | 150 | 150 | 150 |
| 322 | 2.21.2 | ORIENTATION MARKING | 6h | 2017-08-08 16:34 A | 2017-08-09 06:34 A | 321 | 100% | 2017-08-08 16:34 | 2017-08-09 06:34 | 6h | Fitter [200%]; Helper | 17h | 17h | 1,075 | 1,075 | 1,075 |
| 323 | 2.21.3 | NOZZLE OPENING | 8h | 2017-08-09 06:34 A | 2017-08-09 14:35 A | 322 | 100% | 2017-08-09 06:34 | 2017-08-09 14:35 | 8h | Gas Cutter [200%]; Helper | 24h | 24h | 1,500 | 1,500 | 1,500 |
| 324 | 2.21.4 | NOZZLE EP | 7h | 2017-08-09 14:35 A | 2017-08-09 21:35 A | 323 | 100% | 2017-08-09 14:35 | 2017-08-09 21:35 | 7h | Grinder [200%] | 14h | 14h | 787.5 | 787.5 | 787.5 |
| 325 | 2.21.5 | NOZZLE FIT UP | 8h | 2017-08-09 21:35 A | 2017-08-10 13:35 A | 324 | 100% | 2017-08-09 21:35 | 2017-08-10 13:35 | 8h | Fitter; Helper [200%]; SAW Welder | 29h | 29h | 1,731.25 | 1,731.25 | 1,731.25 |
| 326 | 2.21.6 | NOZZLE WELDING | 8h | 2017-08-10 13:35 A | 2017-08-10 21:36 A | 325 | 100% | 2017-08-10 13:35 | 2017-08-10 21:36 | 8h | SAW Welder; Helper [200%] | 24h | 24h | 1,350 | 1,350 | 1,350 |
| 327 | 2.21.7 | STIFFENER FIT UP | 8h | 2017-08-10 21:36 A | 2017-08-11 13:36 A | 326 | 100% | 2017-08-10 21:36 | 2017-08-11 13:36 | 8h | Fitter; Helper [200%]; SAW Welder | 29h | 29h | 1,731.25 | 1,731.25 | 1,731.25 |
| 328 | 2.21.8 | STIFFENER WELDING | 8h | 2017-08-11 13:36 A | 2017-08-11 21:37 A | 327 | 100% | 2017-08-11 13:36 | 2017-08-11 21:37 | 8h | SAW Welder; Helper [200%] | 24h | 24h | 1,350 | 1,350 | 1,350 |
| 329 | 2.21.9 | FLUSH GRIND | 7h | 2017-08-11 21:37 A | 2017-08-14 12:37 A | 328 | 100% | 2017-08-11 21:37 | 2017-08-14 12:37 | 7h | Grinder [200%] | 14h | 14h | 787.5 | 787.5 | 787.5 |
| 330 | 2.21.10 | NOZZLE INSIDE WELD | 8h | 2017-08-14 12:37 A | 2017-08-14 20:38 A | 329 | 100% | 2017-08-14 12:37 | 2017-08-14 20:38 | 8h | SAW Welder; Helper [200%] | 22.5h | 22.5h | 1,275 | 1,275 | 1,275 |
| 331 | 2.21.11 | NOZZLE LINER FITUP | 6h | 2017-08-14 20:38 A | 2017-08-16 10:38 A | 330 | 100% | 2017-08-14 20:38 | 2017-08-16 10:38 | 6h | SAW Welder; Helper [200%]; Fitter | 21h | 21h | 1,256.25 | 1,256.25 | 1,256.25 |
| 332 | 2.21.12 | WELDING | 8h | 2017-08-16 10:38 A | 2017-08-16 18:39 A | 331 | 100% | 2017-08-16 10:38 | 2017-08-16 18:39 | 8h | SAW Welder; Helper [200%] | 24h | 24h | 1,350 | 1,350 | 1,350 |
| 333 | 2.21.13 | DP/AIR TEST | 6h | 2017-08-16 18:39 A | 2017-08-17 08:39 A | 332 | 100% | 2017-08-16 18:39 | 2017-08-17 08:39 | 6h | Fitter [200%] | 12h | 12h | 825 | 825 | 825 |
| 334 | 2.21.14 | INSPECTION | 0.91d | 2017-08-17 08:39 A | 2017-08-17 15:55 A | 333 | 100% | 2017-08-17 08:39 | 2017-08-17 15:55 | 0.91d | Fitter [200%] | 14.5h | 14.5h | 996.88 | 996.88 | 996.88 |
| 335 | 2.22 | **NOZZLE ELBOW WITH STIFFENER WELDING** | 7.49d | 2017-08-08 13:33 A | 2017-08-18 18:56 A |  | 100% | 2017-08-08 13:33 | 2017-08-18 18:56 | 7.49d |  | 343.5h | 343.5h | 20,296.88 | 20,296.88 | 20,296.88 |
| 336 | 2.22.1 | NOZZLE S6&S7 READY | 3h | 2017-08-08 13:33 A | 2017-08-08 16:34 A | 186 | 100% | 2017-08-08 13:33 | 2017-08-08 16:34 | 3h | Helper | 3h | 3h | 150 | 150 | 150 |
| 337 | 2.22.2 | ORIENTATION MARKING | 6h | 2017-08-08 16:34 A | 2017-08-09 06:34 A | 336 | 100% | 2017-08-08 16:34 | 2017-08-09 06:34 | 6h | Fitter [200%]; Helper | 18h | 18h | 1,125 | 1,125 | 1,125 |
| 338 | 2.22.3 | NOZZLE OPENING | 8h | 2017-08-09 06:34 A | 2017-08-09 14:35 A | 337 | 100% | 2017-08-09 06:34 | 2017-08-09 14:35 | 8h | Gas Cutter [200%]; Helper | 24h | 24h | 1,500 | 1,500 | 1,500 |
| 339 | 2.22.4 | NOZZLE EP | 7h | 2017-08-09 14:35 A | 2017-08-09 21:35 A | 338 | 100% | 2017-08-09 14:35 | 2017-08-09 21:35 | 7h | Grinder [200%] | 14h | 14h | 787.5 | 787.5 | 787.5 |
| 340 | 2.22.5 | ELBOW FIT UP | 8h | 2017-08-09 21:35 A | 2017-08-10 13:35 A | 339 | 100% | 2017-08-09 21:35 | 2017-08-10 13:35 | 8h | SAW Welder; Helper [200%]; Fitter | 32h | 32h | 1,900 | 1,900 | 1,900 |
| 341 | 2.22.6 | WELDING | 8h | 2017-08-10 13:35 A | 2017-08-10 21:36 A | 340 | 100% | 2017-08-10 13:35 | 2017-08-10 21:36 | 8h | SAW Welder; Helper [200%] | 24h | 24h | 1,350 | 1,350 | 1,350 |
| 342 | 2.22.7 | NOZZLE FIT UP | 8h | 2017-08-10 21:36 A | 2017-08-11 13:36 A | 341 | 100% | 2017-08-10 21:36 | 2017-08-11 13:36 | 8h | Fitter; Helper [200%]; SAW Welder | 32h | 32h | 1,900 | 1,900 | 1,900 |
| 343 | 2.22.8 | NOZZLE WELDING | 8h | 2017-08-11 13:36 A | 2017-08-11 21:37 A | 342 | 100% | 2017-08-11 13:36 | 2017-08-11 21:37 | 8h | SAW Welder; Helper [200%] | 24h | 24h | 1,350 | 1,350 | 1,350 |
| 344 | 2.22.9 | STIFFNER FIT UP | 8h | 2017-08-11 21:37 A | 2017-08-14 13:37 A | 343 | 100% | 2017-08-11 21:37 | 2017-08-14 13:37 | 8h | Fitter; Helper [200%]; SAW Welder | 29h | 29h | 1,731.25 | 1,731.25 | 1,731.25 |
| 345 | 2.22.10 | STIFFNER WELDING | 8h | 2017-08-14 13:37 A | 2017-08-14 21:38 A | 344 | 100% | 2017-08-14 13:37 | 2017-08-14 21:38 | 8h | SAW Welder; Helper [200%] | 24h | 24h | 1,350 | 1,350 | 1,350 |
| 346 | 2.22.11 | FLUSH GRIND | 8h | 2017-08-14 21:38 A | 2017-08-16 13:38 A | 345 | 100% | 2017-08-14 21:38 | 2017-08-16 13:38 | 8h | Grinder [200%] | 16h | 16h | 900 | 900 | 900 |
| 347 | 2.22.12 | NOZZLE INSIDE WELD | 8h | 2017-08-16 13:38 A | 2017-08-16 21:39 A | 346 | 100% | 2017-08-16 13:38 | 2017-08-16 21:39 | 8h | SAW Welder; Helper [200%] | 24h | 24h | 1,350 | 1,350 | 1,350 |
| 348 | 2.22.13 | NOZZLE LINER FITUP | 8h | 2017-08-16 21:39 A | 2017-08-17 13:39 A | 347 | 100% | 2017-08-16 21:39 | 2017-08-17 13:39 | 8h | SAW Welder; Helper [200%]; Fitter | 29h | 29h | 1,731.25 | 1,731.25 | 1,731.25 |
| 349 | 2.22.14 | WELDING | 8h | 2017-08-17 13:39 A | 2017-08-17 21:40 A | 348 | 100% | 2017-08-17 13:39 | 2017-08-17 21:40 | 8h | SAW Welder; Helper [200%] | 24h | 24h | 1,350 | 1,350 | 1,350 |
| 350 | 2.22.15 | DP/AIR TEST | 6h | 2017-08-17 21:40 A | 2017-08-18 11:40 A | 349 | 100% | 2017-08-17 21:40 | 2017-08-18 11:40 | 6h | Fitter [200%] | 12h | 12h | 825 | 825 | 825 |
| 351 | 2.22.16 | INSPECTION | 0.91d | 2017-08-18 11:40 A | 2017-08-18 18:56 A | 350 | 100% | 2017-08-18 11:40 | 2017-08-18 18:56 | 0.91d | Fitter [200%] | 14.5h | 14.5h | 996.88 | 996.88 | 996.88 |

Notes:
- 320: 6NOS
- 335: 12NOS

| ID | WBS | Task | Duration | Start | Finish | Predecessors | Complete | Baseline start | Baseline finish | Baseline duration | Resources | Work | Actual work | Cost | Baseline cost | Actual cost |
| --- | --- | --- | --- | --- | --- | --- | --- | --- | --- | --- | --- | --- | --- | --- | --- | --- |
| 352 | 2.23 | **SADDLE WELDING** | 19.79d | 2017-08-08 16:34 A | 2017-09-05 14:54 A |  | 100% | 2017-08-08 16:34 | 2017-09-05 14:54 | 19.79d |  | 643.75h | 643.75h | 38,437.52 | 38,437.5 | 38,437.52 |
| 353 | 2.23.1 | SADDLE PLATE MARKING | 3.62d | 2017-08-08 16:34 A | 2017-08-10 13:35 A | 62, 336 | 100% | 2017-08-08 16:34 | 2017-08-10 13:35 | 3.62d | Fitter [200%]; Helper | 43.5h | 43.5h | 2,446.88 | 2,446.88 | 2,446.88 |
| 354 | 2.23.2 | SADDLE PLATE CUTTING | 3.62d | 2017-08-10 13:35 A | 2017-08-14 10:37 A | 353 | 100% | 2017-08-10 13:35 | 2017-08-14 10:37 | 3.62d | Helper; Gas Cutter | 58h | 58h | 3,443.75 | 3,443.75 | 3,443.75 |
| 355 | 2.23.3 | SADDLE PLATE GRINDING | 5.44d | 2017-08-14 10:37 A | 2017-08-18 06:10 A | 354 | 100% | 2017-08-14 10:37 | 2017-08-18 06:10 | 5.44d | Grinder [200%] | 87h | 87h | 4,893.75 | 4,893.75 | 4,893.75 |
| 356 | 2.23.4 | DRILLING | 1.81d | 2017-08-18 06:10 A | 2017-08-18 20:41 A | 355 | 100% | 2017-08-18 06:10 | 2017-08-18 20:41 | 1.81d | Driller | 14.5h | 14.5h | 996.88 | 996.88 | 996.88 |
| 357 | 2.23.5 | SADDLE PLATE FIT UP | 8.16d | 2017-08-18 20:41 A | 2017-08-23 22:00 A | 356 | 100% | 2017-08-18 20:41 | 2017-08-23 22:00 | 8.16d | Fitter; Helper [200%]; SAW Welder | 246h | 246h | 14,653.13 | 14,653.12 | 14,653.13 |
| 358 | 2.23.6 | SADDLE WELDING | 10.88d | 2017-08-24 06:00 A | 2017-09-01 13:05 A | 259, 357 | 100% | 2017-08-24 06:00 | 2017-09-01 13:05 | 10.88d | SAW Welder; Helper [200%] | 101.5h | 101.5h | 6,706.25 | 6,706.25 | 6,706.25 |
| 359 | 2.23.7 | BEND REMOVAL | 2.59d | 2017-09-01 13:05 A | 2017-09-02 17:52 A | 358 | 100% | 2017-09-01 13:05 | 2017-09-02 17:52 | 2.59d | Fitter [200%]; Helper | 35.25h | 35.25h | 2,034.38 | 2,034.38 | 2,034.38 |
| 360 | 2.23.8 | GRINDING | 3.62d | 2017-09-02 17:52 A | 2017-09-05 14:54 A | 359 | 100% | 2017-09-02 17:52 | 2017-09-05 14:54 | 3.62d | Grinder [200%] | 58h | 58h | 3,262.5 | 3,262.5 | 3,262.5 |
| 361 | 2.24 | **NAME PLATE WELDING** | 2.13d | 2017-08-10 13:35 A | 2017-08-14 14:38 A |  | 100% | 2017-08-10 13:35 | 2017-08-14 14:38 | 2.13d |  | 56.5h | 56.5h | 3,231.25 | 3,231.25 | 3,231.25 |
| 362 | 2.24.1 | NAME PLATE MARKING | 4h | 2017-08-10 13:35 A | 2017-08-10 17:36 A | 60, 353 | 100% | 2017-08-10 13:35 | 2017-08-10 17:36 | 4h | Fitter; Helper | 8h | 8h | 475 | 475 | 475 |
| 363 | 2.24.2 | CUTTING | 5h | 2017-08-10 17:36 A | 2017-08-11 06:36 A | 362 | 100% | 2017-08-10 17:36 | 2017-08-11 06:36 | 5h | Gas Cutter; Helper | 10h | 10h | 593.75 | 593.75 | 593.75 |
| 364 | 2.24.3 | GRINDING | 8h | 2017-08-11 06:36 A | 2017-08-11 14:37 A | 363 | 100% | 2017-08-11 06:36 | 2017-08-11 14:37 | 8h | Grinder | 8h | 8h | 450 | 450 | 450 |
| 365 | 2.24.4 | WELDING | 10h | 2017-08-11 14:37 A | 2017-08-14 08:37 A | 259, 364 | 100% | 2017-08-11 14:37 | 2017-08-14 08:37 | 10h | SAW Welder; Helper [200%] | 24.5h | 24.5h | 1,412.5 | 1,412.5 | 1,412.5 |
| 366 | 2.24.5 | CLEANING | 6h | 2017-08-14 08:37 A | 2017-08-14 14:38 A | 365 | 100% | 2017-08-14 08:37 | 2017-08-14 14:38 | 6h | Helper | 6h | 6h | 300 | 300 | 300 |
| 367 | 2.25 | **LIFTING LUG WELDING** | 2d | 2017-08-10 17:36 A | 2017-08-16 07:38 A |  | 100% | 2017-08-10 17:36 | 2017-08-16 07:38 | 2d |  | 64.5h | 64.5h | 3,725 | 3,725 | 3,725 |
| 368 | 2.25.1 | PLATE MARKING | 6h | 2017-08-10 17:36 A | 2017-08-11 07:36 A | 52, 362 | 100% | 2017-08-10 17:36 | 2017-08-11 07:36 | 6h | Fitter; Helper | 12h | 12h | 712.5 | 712.5 | 712.5 |
| 369 | 2.25.2 | CUTTING | 6h | 2017-08-11 07:36 A | 2017-08-11 13:36 A | 368 | 100% | 2017-08-11 07:36 | 2017-08-11 13:36 | 6h | Gas Cutter; Helper | 12h | 12h | 712.5 | 712.5 | 712.5 |
| 370 | 2.25.3 | GRINDING | 8h | 2017-08-11 13:36 A | 2017-08-11 21:37 A | 369 | 100% | 2017-08-11 13:36 | 2017-08-11 21:37 | 8h | Grinder | 8h | 8h | 450 | 450 | 450 |
| 371 | 2.25.4 | WELDING | 12h | 2017-08-11 21:37 A | 2017-08-14 17:38 A | 259, 370 | 100% | 2017-08-11 21:37 | 2017-08-14 17:38 | 12h | SAW Welder; Helper [200%] | 26.5h | 26.5h | 1,550 | 1,550 | 1,550 |
| 372 | 2.25.5 | CLEANING | 6h | 2017-08-14 17:38 A | 2017-08-16 07:38 A | 371 | 100% | 2017-08-14 17:38 | 2017-08-16 07:38 | 6h | Helper | 6h | 6h | 300 | 300 | 300 |
| 373 | 2.26 | **INSULATION CLEAT WELDING** | 2.64d | 2017-08-11 07:36 A | 2017-08-16 14:39 A |  | 100% | 2017-08-11 07:36 | 2017-08-16 14:39 | 2.64d |  | 71h | 71h | 4,293.75 | 4,293.75 | 4,293.75 |
| 374 | 2.26.1 | PLATE MARKING | 6h | 2017-08-11 07:36 A | 2017-08-11 13:36 A | 66, 368 | 100% | 2017-08-11 07:36 | 2017-08-11 13:36 | 6h | Fitter; Helper | 12h | 12h | 712.5 | 712.5 | 712.5 |
| 375 | 2.26.2 | CUTTING | 6h | 2017-08-11 13:36 A | 2017-08-11 19:37 A | 374 | 100% | 2017-08-11 13:36 | 2017-08-11 19:37 | 6h | Gas Cutter; Helper | 12h | 12h | 712.5 | 712.5 | 712.5 |
| 376 | 2.26.3 | GRINDING | 8h | 2017-08-11 19:37 A | 2017-08-14 11:37 A | 375 | 100% | 2017-08-11 19:37 | 2017-08-14 11:37 | 8h | Grinder | 8h | 8h | 450 | 450 | 450 |
| 377 | 2.26.4 | BENDING | 10h | 2017-08-14 11:37 A | 2017-08-14 21:38 A | 376 | 100% | 2017-08-14 11:37 | 2017-08-14 21:38 | 10h | Fitter [200%] | 20h | 20h | 1,375 | 1,375 | 1,375 |
| 378 | 2.26.5 | WELDING | 5h | 2017-08-14 21:38 A | 2017-08-16 10:38 A | 259, 377 | 100% | 2017-08-14 21:38 | 2017-08-16 10:38 | 5h | SAW Welder; Helper [200%] | 15h | 15h | 843.75 | 843.75 | 843.75 |
| 379 | 2.26.6 | CLEANING | 4h | 2017-08-16 10:38 A | 2017-08-16 14:39 A | 378 | 100% | 2017-08-16 10:38 | 2017-08-16 14:39 | 4h | Helper | 4h | 4h | 200 | 200 | 200 |

Notes:
- 352: 3NOS
- 361: 3NOS
- 367: 6NOS
- 373: 12NOS

| ID | WBS | Task | Type | Duration | Start | Finish | Predecessors | Complete | Baseline start | Baseline finish | Baseline duration | Constraint | Resources | Work | Actual work | Cost | Baseline cost | Actual cost |
| --- | --- | --- | --- | --- | --- | --- | --- | --- | --- | --- | --- | --- | --- | --- | --- | --- | --- | --- |
| 380 | 2.27 | **TUBE BUNDLE ASSEMBLY** |  | 18.94d | 2018-01-04 06:00 A | 2018-01-30 17:00 A |  | 100% | 2017-07-27 15:39 | 2017-11-13 09:45 | 80.39d |  |  | 776.27h | 776.27h | 42,543.19 | 69,889.06 | 42,543.19 |
| 381 | 2.27.1 | TUBE SHEET ST INSPECTION |  | 24.98h | 2018-01-05 06:00 A | 2018-01-06 15:01 A | 202 | 100% | 2017-07-27 15:39 | 2017-07-28 17:40 | 18h |  | Fitter [200%] | 36h | 36h | 2,475 | 2,475 | 2,475 |
| 382 | 2.27.2 | ASSY FRAME SET UP |  | 9.99d | 2018-01-04 06:00 A | 2018-01-09 22:00 A | 381 | 100% | 2017-07-28 17:40 | 2017-08-05 13:31 | 13.47d |  | Fitter [200%]; Helper | 136.75h | 136.75h | 7,381.25 | 7,381.25 | 7,381.25 |
| 383 | 2.27.3 | TUBE BUNDLE ASSY |  | 11.99d | 2018-01-09 06:00 A | 2018-01-17 22:00 A | 57, 214, 231, 237, 242, 382 | 100% | 2017-10-04 20:01 | 2017-10-12 15:53 | 13.47d |  | Fitter [200%]; Helper [300%] | 352.25h | 352.25h | 18,156.25 | 18,156.25 | 18,156.25 |
| 384 | 2.27.4 | TUBE TIE ROD STACK WELD |  | 12h | 2018-01-18 06:00 A | 2018-01-18 18:01 A | 383 | 100% | 2017-10-12 15:53 | 2017-10-13 11:53 | 12h |  | SAW Welder; Helper [200%] | 26.5h | 26.5h | 1,550 | 1,550 | 1,550 |
| 385 | 2.27.5 | TUBE BUNDLE INSERT |  | 3.94d | 2018-01-18 18:01 A | 2018-01-22 07:32 A | 259, 305, 320, 335, 384 | 100% | 2017-10-13 11:53 | 2017-10-21 17:59 | 10.75d | finish no later than 2018-01-25 14:06 | Fitter [200%]; Helper [200%] | 110.92h | 110.92h | 6,089.75 | 10,593.75 | 6,089.75 |
| 386 | 2.27.6 | TUBE SHEET 2 FIT UP |  | 37.97h | 2018-01-23 06:00 A | 2018-01-25 12:00 A | 385 | 100% | 2017-10-21 17:59 | 2017-10-23 13:59 | 12h |  | Fitter; SAW Welder; Helper [200%] | 45h | 45h | 2,681.25 | 2,681.25 | 2,681.25 |
| 387 | 2.27.7 | TUBE SHEET WELDING |  | 4.98h | 2018-01-25 08:00 A | 2018-01-25 17:00 A | 386 | 100% | 2017-10-23 13:59 | 2017-10-25 06:01 | 24h |  | SAW Welder; Helper [200%] | 14.95h | 14.95h | 840.93 | 2,375 | 840.93 |
| 388 | 2.27.8 | TUBE ROOT WELDING | milestone | 0h | 2018-01-26 08:00 A | 2018-01-26 08:00 A | 387 | 100% | 2017-10-25 06:01 | 2017-10-30 06:04 | 48h |  | SAW Welder; Helper [200%] |  |  |  | 4,025 |  |
| 389 | 2.27.9 | TUBE ROOT WELDING DP | milestone | 0d | 2018-01-27 08:00 A | 2018-01-27 08:00 A | 388 | 100% | 2017-10-30 06:04 | 2017-10-30 13:19 | 0.91d |  | Fitter |  |  |  | 498.44 |  |
| 390 | 2.27.10 | AIR TEST | milestone | 0d | 2018-01-27 08:00 A | 2018-01-27 08:00 A | 389 | 100% | 2017-10-30 13:19 | 2017-10-30 20:35 | 0.91d |  | Fitter [200%] |  |  |  | 996.88 |  |
| 391 | 2.27.11 | TUBE WELDING-FINAL | milestone | 0h | 2018-01-28 08:00 A | 2018-01-28 08:00 A | 390 | 100% | 2017-10-30 20:35 | 2017-11-03 06:38 | 50h |  | SAW Welder; Helper [200%] |  |  |  | 4,887.5 |  |
| 392 | 2.27.12 | TUBE TRIMMING |  | 1.12d | 2018-01-29 08:00 A | 2018-01-29 17:00 A | 391 | 100% | 2017-11-03 06:38 | 2017-11-06 18:11 | 5.44d |  | Gas Cutter [200%]; Helper | 26.95h | 26.95h | 1,684.38 | 8,156.25 | 1,684.38 |
| 393 | 2.27.13 | TUBE EXPANSION |  | 1.12d | 2018-01-30 08:00 A | 2018-01-30 17:00 A | 392 | 100% | 2017-11-06 18:11 | 2017-11-09 12:43 | 5.31d |  | Fitter [200%]; Helper | 26.95h | 26.95h | 1,684.38 | 4,118.75 | 1,684.38 |
| 394 | 2.27.14 | DP CHECK | milestone | 0d | 2018-01-30 08:00 A | 2018-01-30 08:00 A | 393 | 100% | 2017-11-09 12:43 | 2017-11-13 09:45 | 3.62d |  | Fitter |  |  |  | 1,993.75 |  |
| 395 | 2.28 | **DISH +CH WELDING** |  | 3.81d | 2017-09-01 18:19 A | 2017-09-06 16:00 A |  | 100% | 2017-09-01 18:19 | 2017-09-06 16:00 | 3.81d |  |  | 357.5h | 357.5h | 20,212.5 | 20,212.5 | 20,212.5 |
| 396 | 2.28.1 | LHS-DISH+CH READY |  | 5h | 2017-09-01 18:19 A | 2017-09-02 07:19 A | 70, 165 | 100% | 2017-09-01 18:19 | 2017-09-02 07:19 | 5h |  | Helper [200%] | 10h | 10h | 500 | 500 | 500 |
| 397 | 2.28.2 | LHS-DISH+CH EP |  | 8h | 2017-09-02 07:19 A | 2017-09-02 15:20 A | 396 | 100% | 2017-09-02 07:19 | 2017-09-02 15:20 | 8h |  | Grinder [200%]; Helper [200%] | 30.5h | 30.5h | 1,625 | 1,625 | 1,625 |
| 398 | 2.28.3 | LHS-DISH+CH FIT UP |  | 9h | 2017-09-02 15:20 A | 2017-09-04 08:20 A | 397 | 100% | 2017-09-02 15:20 | 2017-09-04 08:20 | 9h |  | Fitter [200%]; Helper [400%]; SAW Welder [200%] | 72h | 72h | 4,275 | 4,275 | 4,275 |
| 399 | 2.28.4 | LHS-DISH+CH WELDING |  | 6h | 2017-09-04 08:20 A | 2017-09-04 14:21 A | 398 | 100% | 2017-09-04 08:20 | 2017-09-04 14:21 | 6h |  | SAW Welder [200%]; Helper [400%] | 36h | 36h | 2,025 | 2,025 | 2,025 |
| 400 | 2.28.5 | LHS-DISH+CH FLUSH GRIND |  | 6h | 2017-09-04 14:21 A | 2017-09-04 20:21 A | 399 | 100% | 2017-09-04 14:21 | 2017-09-04 20:21 | 6h |  | Grinder [200%]; Helper [200%] | 24h | 24h | 1,275 | 1,275 | 1,275 |
| 401 | 2.28.6 | LHS-DP CHECK |  | 3h | 2017-09-04 20:21 A | 2017-09-05 07:21 A | 400 | 100% | 2017-09-04 20:21 | 2017-09-05 07:21 | 3h |  | Fitter [200%]; Helper | 8h | 8h | 512.5 | 512.5 | 512.5 |
| 402 | 2.28.7 | LHS-RT |  | 1.81d | 2017-09-05 08:30 A | 2017-09-06 16:00 A | 401 | 100% | 2017-09-05 08:30 | 2017-09-06 16:00 | 1.81d |  |  |  |  |  |  |  |
| 403 | 2.28.8 | RHS-DISH+CH READY |  | 5h | 2017-09-01 18:19 A | 2017-09-02 07:19 A | 146, 165 | 100% | 2017-09-01 18:19 | 2017-09-02 07:19 | 5h |  | Helper [200%] | 10h | 10h | 500 | 500 | 500 |
| 404 | 2.28.9 | RHS-DISH+CH EP |  | 8h | 2017-09-02 07:19 A | 2017-09-02 15:20 A | 403 | 100% | 2017-09-02 07:19 | 2017-09-02 15:20 | 8h |  | Grinder [200%]; Helper [200%] | 32h | 32h | 1,700 | 1,700 | 1,700 |
| 405 | 2.28.10 | RHS-DISH+CH FIT UP |  | 9h | 2017-09-02 15:20 A | 2017-09-04 08:20 A | 404 | 100% | 2017-09-02 15:20 | 2017-09-04 08:20 | 9h |  | Fitter [200%]; Helper [400%]; SAW Welder [200%] | 66h | 66h | 3,937.5 | 3,937.5 | 3,937.5 |
| 406 | 2.28.11 | RHS-DISH+CH WELDING |  | 6h | 2017-09-04 08:20 A | 2017-09-04 14:21 A | 405 | 100% | 2017-09-04 08:20 | 2017-09-04 14:21 | 6h |  | SAW Welder [200%]; Helper [400%] | 36h | 36h | 2,025 | 2,025 | 2,025 |
| 407 | 2.28.12 | RHS-DISH+CH FLUSH GRIND |  | 6h | 2017-09-04 14:21 A | 2017-09-04 20:21 A | 406 | 100% | 2017-09-04 14:21 | 2017-09-04 20:21 | 6h |  | Grinder [200%]; Helper [200%] | 24h | 24h | 1,275 | 1,275 | 1,275 |
| 408 | 2.28.13 | RHS-DP CHECK |  | 3h | 2017-09-04 20:21 A | 2017-09-05 07:21 A | 407 | 100% | 2017-09-04 20:21 | 2017-09-05 07:21 | 3h |  | Fitter [200%]; Helper | 9h | 9h | 562.5 | 562.5 | 562.5 |
| 409 | 2.28.14 | RHS-RT |  | 1.81d | 2017-09-05 08:30 A | 2017-09-06 16:00 A | 408 | 100% | 2017-09-05 08:30 | 2017-09-06 16:00 | 1.81d |  |  |  |  |  |  |  |

Notes:
- 402: SC
- 409: SC

| ID | WBS | Task | Type | Duration | Start | Finish | Predecessors | Complete | Baseline start | Baseline finish | Baseline duration | Resources | Work | Actual work | Cost | Baseline cost | Actual cost |
| --- | --- | --- | --- | --- | --- | --- | --- | --- | --- | --- | --- | --- | --- | --- | --- | --- | --- |
| 410 | 2.29 | **TUBESHEET & SHELL ASSY** |  | 2d | 2018-01-30 06:00 A | 2018-01-31 18:01 A |  | 100% | 2017-11-13 09:45 | 2017-11-14 16:02 | 1.66d |  | 66.5h | 66.5h | 3,812.5 | 4,310.94 | 3,812.5 |
| 411 | 2.29.1 | TUBESHEET AND SHELL FIT UP |  | 15.98h | 2018-01-30 06:00 A | 2018-01-30 22:00 A | 259, 380 | 100% | 2017-11-13 09:45 | 2017-11-13 12:45 | 3h | Fitter [200%]; Helper [400%]; SAW Welder [200%] | 22h | 22h | 1,287.5 | 1,287.5 | 1,287.5 |
| 412 | 2.29.2 | WELDING |  | 6h | 2018-01-31 06:00 A | 2018-01-31 12:00 A | 411 | 100% | 2017-11-13 12:45 | 2017-11-13 18:46 | 6h | SAW Welder [200%]; Helper [400%] | 26.5h | 26.5h | 1,550 | 1,550 | 1,550 |
| 413 | 2.29.3 | FLUSH GRIND |  | 6h | 2018-01-31 12:00 A | 2018-01-31 18:01 A | 412 | 100% | 2017-11-13 18:46 | 2017-11-14 08:46 | 6h | Grinder [200%]; Helper | 18h | 18h | 975 | 975 | 975 |
| 414 | 2.29.4 | INSPECTION | milestone | 0d | 2018-01-31 17:00 A | 2018-01-31 17:00 A | 413 | 100% | 2017-11-14 08:46 | 2017-11-14 16:02 | 0.91d | Fitter |  |  |  | 498.44 |  |
| 415 | 2.30 | **CH & SH ASSY** |  | 3d | 2018-01-23 08:00 A | 2018-01-27 08:00 A |  | 100% | 2017-11-13 09:45 | 2017-11-14 16:02 | 1.66d |  | 86.85h | 86.85h | 4,904.17 | 4,448.44 | 4,904.17 |
| 416 | 2.30.1 | TUBESHEET+CH FIT UP |  | 3h | 2018-01-23 08:00 A | 2018-01-23 17:00 A | 281, 293, 380 | 100% | 2017-11-13 09:45 | 2017-11-13 12:45 | 3h | Fitter [200%]; Helper [400%]; SAW Welder [200%] | 6h | 6h | 412.5 | 1,425 | 412.5 |
| 417 | 2.30.2 | CS WELDING |  | 8.98h | 2018-01-24 08:00 A | 2018-01-24 17:00 A | 416 | 100% | 2017-11-13 12:45 | 2017-11-13 18:46 | 6h | SAW Welder [200%]; Helper [400%] | 53.9h | 53.9h | 3,031.88 | 1,550 | 3,031.88 |
| 418 | 2.30.3 | FLUSH GRIND |  | 8.98h | 2018-01-25 08:00 A | 2018-01-25 17:00 A | 417 | 100% | 2017-11-13 18:46 | 2017-11-14 08:46 | 6h | Grinder [200%]; Helper | 26.95h | 26.95h | 1,459.79 | 975 | 1,459.79 |
| 419 | 2.30.4 | INSPECTION | milestone | 0d | 2018-01-27 08:00 A | 2018-01-27 08:00 A | 418 | 100% | 2017-11-14 08:46 | 2017-11-14 16:02 | 0.91d | Fitter |  |  |  | 498.44 |  |
| 420 | 2.31 | **ITEM NO: 40E04 A/B/C ASSY** |  | 2.94d | 2018-01-29 06:00 A | 2018-01-31 17:00 A |  | 100% | 2017-11-14 16:02 | 2017-11-21 06:07 | 5.18d |  | 125.87h | 125.87h | 7,679.59 | 14,956.25 | 7,679.59 |
| 421 | 2.31.1 | ITEM NO: 40E04 A/B/C READY |  | 1.81d | 2018-01-29 06:00 A | 2018-01-29 20:31 A | 415 | 100% | 2017-11-14 16:02 | 2017-11-15 14:33 | 1.81d | Helper [200%]; Fitter [200%] | 56h | 56h | 3,343.75 | 3,343.75 | 3,343.75 |
| 422 | 2.31.2 | ITEM NO: 40E04 A/B/C FIT UP |  | 1.56d | 2018-01-29 20:31 A | 2018-01-30 17:00 A | 421 | 100% | 2017-11-15 14:33 | 2017-11-18 09:05 | 5.31d | Fitter [200%]; SAW Welder; Helper [200%] | 51.9h | 51.9h | 3,100.63 | 8,168.75 | 3,100.63 |
| 423 | 2.31.3 | INSPECTION |  | 1.12d | 2018-01-31 08:00 A | 2018-01-31 17:00 A | 422 | 100% | 2017-11-18 09:05 | 2017-11-20 07:36 | 1.81d | Fitter [200%] | 17.97h | 17.97h | 1,235.21 | 1,993.75 | 1,235.21 |
| 424 | 2.31.4 | CLEANING | milestone | 0d | 2018-01-31 08:00 A | 2018-01-31 16:59 A | 423 | 100% | 2017-11-20 07:36 | 2017-11-21 06:07 | 1.81d | Helper [200%] |  |  |  | 1,450 |  |
| 425 | 2.32 | **HYDRO TEST** |  | 1.94d | 2018-02-01 08:00 A | 2018-02-02 17:00 A |  | 100% | 2017-11-21 06:07 | 2017-11-30 08:14 | 7d |  | 26.95h | 26.95h | 1,852.8 | 10,231.25 | 1,852.8 |
| 426 | 2.32.1 | NDE CLEARANCE |  | 1.12d | 2018-02-01 08:00 A | 2018-02-01 17:00 A | 420 | 100% | 2017-11-21 06:07 | 2017-11-21 20:38 | 1.81d | Fitter | 8.98h | 8.98h | 617.6 | 996.88 | 617.6 |
| 427 | 2.32.2 | TUBE SIDE TEST | milestone | 0d | 2018-02-01 08:00 A | 2018-02-01 08:00 A | 426 | 100% | 2017-11-21 20:38 | 2017-11-24 15:11 | 5.31d | Fitter [200%]; Helper |  |  |  | 4,118.75 |  |
| 428 | 2.32.3 | TPI WITNESS |  | 1.12d | 2018-02-02 08:00 A | 2018-02-02 17:00 A | 427 | 100% | 2017-11-24 15:11 | 2017-11-27 06:26 | 0.91d | Fitter | 8.98h | 8.98h | 617.6 | 498.44 | 617.6 |
| 429 | 2.32.4 | SHELL SIDE HYDRO TEST | milestone | 0d | 2018-02-02 08:00 A | 2018-02-02 08:00 A | 428 | 100% | 2017-11-27 06:26 | 2017-11-29 16:59 | 5.31d | Fitter [200%]; Helper |  |  |  | 4,118.75 |  |
| 430 | 2.32.5 | TPI WITNESS |  | 1.12d | 2018-02-02 08:00 A | 2018-02-02 17:00 A | 429 | 100% | 2017-11-29 16:59 | 2017-11-30 08:14 | 0.91d | Fitter | 8.98h | 8.98h | 617.6 | 498.44 | 617.6 |
| 431 | 2.33 | **BLAST CLEANING** |  | 1.94d | 2018-02-03 08:00 A | 2018-02-05 17:00 A |  | 100% | 2017-09-02 15:20 | 2017-12-13 16:18 | 77.12d |  | 53.9h | 53.9h | 3,200.31 | 14,050 | 3,200.31 |
| 432 | 2.33.1 | PREPARATION FOR BLAST CLEANING |  | 1.12d | 2018-02-03 08:00 A | 2018-02-03 17:00 A | 425 | 100% | 2017-11-30 08:14 | 2017-12-02 19:47 | 5.44d | Fitter [200%]; Helper [300%] | 44.92h | 44.92h | 2,582.71 | 12,056.25 | 2,582.71 |
| 433 | 2.33.2 | DESPATCH CLEARANCE | milestone | 0d | 2018-02-04 08:00 A | 2018-02-04 08:00 A |  | 100% | 2017-09-04 06:35 | 2017-09-04 13:50 | 0.91d | Fitter |  |  |  | 498.44 |  |
| 434 | 2.33.3 | DESPATCH |  | 1.12d | 2018-02-05 08:00 A | 2018-02-05 17:00 A | 433 | 100% | 2017-09-04 13:50 | 2017-09-05 12:21 | 1.81d | Fitter | 8.98h | 8.98h | 617.6 | 996.88 | 617.6 |
