# TEAM-J-4183-IOCL

Schedule from MS Project, 2017-06-08 to 2018-05-17, costs in Rs., A marks actual dates.

## Calendars

- TEAM_Stand_Calendar: Mon-Sat 08:30-12:30, 13:30-17:30; Sun off. Exceptions (off unless hours are given): 2017-01-13 to 2023-08-12 (2nd Sat, recurring), 2017-01-26 to 2036-01-26 (Republic Day, recurring), 2017-01-27 to 2023-08-26 (4th Sat, recurring), 2017-05-01 to 2036-05-01 (May Day, recurring), 2017-08-15 to 2036-08-15 (Independence Day, recurring), 2017-08-25 (Vinakya Chaturthi'2017), 2017-09-29 (Ayudha Pooja'2017), 2017-10-02 to 2036-10-02 (Gandhi Jayanti, recurring), 2017-10-18 (Deepavali'2017), 2018-01-15 (Thiruvalluvar Day'2018).

## Resources

| Resource | Rate |
| --- | --- |
| SAW Welder | 68.75 |
| Painter |  |
| Lathe Operator | 120 |
| Helper | 50 |
| Grinder | 56.25 |
| Fitter | 68.75 |
| Driller | 68.75 |
| Gas Cutter | 68.75 |
| Fastners (Cost) |  |
| Forging Non-Std (Cost) |  |
| Forging Std (Cost) |  |
| Gaskets (Cost) |  |
| Paint (Cost) |  |
| Pipe (Cost) |  |
| Plate (Cost) |  |
| Rod (Cost) |  |
| Tube (Cost) |  |
| Tube Sheet (Cost) |  |
| Vehicle |  |
| Finance |  |
| QC Engineer |  |
| Budget Cost Labour Expenses |  |
| Budget Cost Material Expenses |  |
| Budget Cost P&F/Transport |  |
| Budget Cost Subcontract |  |
| Budget Cost TPI Charges |  |
| Budget Hours Contract |  |
| Budget Hours TEAM |  |

## Schedule

| ID | WBS | Task | Type | Duration | Start | Finish | Predecessors | Complete | Baseline start | Baseline finish | Baseline duration | Work | Actual work | Cost | Baseline cost | Actual cost |
| --- | --- | --- | --- | --- | --- | --- | --- | --- | --- | --- | --- | --- | --- | --- | --- | --- |
| 1 | 1 | **J-4183-IOCL-2093-E-11C** |  | 264d | 2017-06-08 08:00 A | 2018-05-17 17:30 A |  | 100% | 2017-06-08 08:00 | 2018-04-10 10:00 | 235.19d | 7768.59h | 7768.59h | 472,949.61 | 504,134.38 | 472,949.61 |
| 2 | 1.1 | PO RECEIPT |  | 1d | 2017-06-08 08:00 A | 2017-06-08 17:00 A |  | 100% | 2017-06-08 08:00 | 2017-06-08 17:00 | 1d |  |  |  |  |  |
| 3 | 1.2 | WORK ORDER |  | 1d | 2017-06-12 08:00 A | 2017-06-12 17:00 A | 2 | 100% | 2017-06-12 08:00 | 2017-06-12 17:00 | 1d |  |  |  |  |  |
| 4 | 1.3 | CRM |  | 1d | 2017-06-14 08:00 A | 2017-06-14 17:00 A | 3 | 100% | 2017-06-14 08:00 | 2017-06-14 17:00 | 1d |  |  |  |  |  |
| 5 | 1.4 | **DESIGN** |  | 35.94d | 2017-07-27 08:00 A | 2017-09-12 17:00 A |  | 100% | 2017-07-27 08:00 | 2017-09-12 17:00 | 71.05d |  |  |  |  |  |
| 6 | 1.4.1 | DRAWING SUBMISSION FOR APPROVAL |  | 37d | 2017-07-27 08:00 A | 2017-09-12 17:00 A | 3 | 100% | 2017-07-27 08:00 | 2017-09-12 17:00 | 37d |  |  |  |  |  |
| 7 | 1.5 | **PR ISSUE** |  | 26.94d | 2017-08-10 08:00 A | 2017-09-15 17:00 A |  | 100% | 2017-08-10 08:00 | 2017-09-15 17:00 | 53.07d |  |  |  |  |  |
| 8 | 1.5.1 | PLATES AND RODS-SA 516 GR.70 |  | 1d | 2017-08-10 08:00 A | 2017-08-10 17:00 A | 6 | 100% | 2017-08-10 08:00 | 2017-08-10 17:00 | 1d |  |  |  |  |  |
| 9 | 1.5.2 | PLATES AND RODS-SA 240 GR.410S | milestone | 0d | 2017-08-10 08:00 A | 2017-08-10 08:00 A | 6 | 100% | 2017-08-10 08:00 | 2017-08-10 08:00 | 0d |  |  |  |  |  |
| 10 | 1.5.3 | PLATES&RODS-IS 2062 GR.B |  | 1d | 2017-08-10 08:00 A | 2017-08-10 17:00 A | 6 | 100% | 2017-08-10 08:00 | 2017-08-10 17:00 | 1d |  |  |  |  |  |
| 11 | 1.5.4 | TUBE-SA 268 TP410 |  | 1d | 2017-08-10 08:00 A | 2017-08-10 17:00 A | 6 | 100% | 2017-08-10 08:00 | 2017-08-10 17:00 | 1d |  |  |  |  |  |
| 12 | 1.5.5 | BLANK FORGING-SA 266GR.2 |  | 3d | 2017-08-28 08:00 A | 2017-08-30 17:00 A | 6 | 100% | 2017-08-28 08:00 | 2017-08-30 17:00 | 3d |  |  |  |  |  |
| 13 | 1.5.6 | STD FORGING-SA 105 |  | 3d | 2017-08-28 08:00 A | 2017-08-30 17:00 A | 6 | 100% | 2017-08-28 08:00 | 2017-08-30 17:00 | 3d |  |  |  |  |  |
| 14 | 1.5.7 | NON STD FORGING-SA 266 GR.2 |  | 1d | 2017-08-10 08:00 A | 2017-08-10 17:00 A | 6 | 100% | 2017-08-10 08:00 | 2017-08-10 17:00 | 1d |  |  |  |  |  |
| 15 | 1.5.8 | PIPE-SA 106 GR.B |  | 1d | 2017-08-10 08:00 A | 2017-08-10 17:00 A | 6 | 100% | 2017-08-10 08:00 | 2017-08-10 17:00 | 1d |  |  |  |  |  |
| 16 | 1.5.9 | GASKET |  | 1d | 2017-08-28 08:00 A | 2017-08-28 17:00 A | 6 | 100% | 2017-08-28 08:00 | 2017-08-28 17:00 | 1d |  |  |  |  |  |
| 17 | 1.5.10 | FASTENERS |  | 1d | 2017-08-30 08:00 A | 2017-08-30 17:00 A | 6 | 100% | 2017-08-30 08:00 | 2017-08-30 17:00 | 1d |  |  |  |  |  |
| 18 | 1.5.11 | CONSUMABLES-CS&SS |  | 1d | 2017-09-14 08:00 A | 2017-09-14 17:00 A | 6 | 100% | 2017-09-14 08:00 | 2017-09-14 17:00 | 1d |  |  |  |  |  |
| 19 | 1.5.12 | CONSUMABLES-309 LMO |  | 1d | 2017-09-15 08:00 A | 2017-09-15 17:00 A | 6 | 100% | 2017-09-15 08:00 | 2017-09-15 17:00 | 1d |  |  |  |  |  |
| 20 | 1.6 | **MATERIAL ORDERING AND RECEIPT** |  | 123d | 2017-07-17 08:00 A | 2017-12-25 17:30 A |  | 100% | 2017-07-17 08:00 | 2017-12-02 16:18 | 212.81d |  |  |  |  |  |
| 21 | 1.6.1 | PLATES AND RODS-SA 516 GR.70 |  | 10d | 2017-08-21 08:00 A | 2017-09-01 17:00 A | 8 | 100% | 2017-08-21 08:00 | 2017-09-01 17:00 | 10d |  |  |  |  |  |
| 22 | 1.6.2 | PLATES AND RODS-SA 240 GR.410S |  | 58d | 2017-07-17 08:00 A | 2017-10-23 17:00 A | 9 | 100% | 2017-07-17 08:00 | 2017-10-23 17:00 | 58d |  |  |  |  |  |
| 23 | 1.6.3 | PLATES&RODS-IS 2062 GR.B |  | 35d | 2017-07-17 08:00 A | 2017-09-25 17:00 A | 10 | 100% | 2017-07-17 08:00 | 2017-09-25 17:00 | 35d |  |  |  |  |  |
| 24 | 1.6.4 | TUBE-SA 268 TP410 |  | 90d | 2017-08-30 08:00 A | 2017-12-25 17:30 A | 11 | 100% | 2017-08-30 08:00 | 2017-10-27 08:45 | 90d |  |  |  |  |  |
| 25 | 1.6.5 | BLANK FORGING-SA 266GR.2 |  | 60d | 2017-09-12 08:00 A | 2017-11-29 17:30 A | 12 | 100% | 2017-09-12 08:00 | 2017-10-21 08:30 | 60d |  |  |  |  |  |
| 26 | 1.6.6 | STD FORGING-SA 105,SA 266 GR.2 |  | 60d | 2017-09-12 08:00 A | 2017-11-29 17:30 A | 13 | 100% | 2017-09-12 08:00 | 2017-10-21 08:30 | 60d |  |  |  |  |  |
| 27 | 1.6.7 | NON STD FORGING-SA 266 GR.2 |  | 55d | 2017-09-12 08:00 A | 2017-11-22 17:30 A | 14 | 100% | 2017-09-12 08:00 | 2017-10-17 16:28 | 55d |  |  |  |  |  |
| 28 | 1.6.8 | PIPE-SA 106 GR.B |  | 45d | 2017-08-10 17:00 A | 2017-10-11 17:00 A | 15 | 100% | 2017-08-10 17:00 | 2017-09-12 09:22 | 45d |  |  |  |  |  |
| 29 | 1.6.9 | GASKET |  | 34d | 2017-09-16 08:00 A | 2017-10-30 17:00 A | 16 | 100% | 2017-09-16 08:00 | 2017-10-30 17:00 | 34d |  |  |  |  |  |
| 30 | 1.6.10 | FASTENERS |  | 35d | 2017-11-10 08:00 A | 2017-12-25 17:30 A | 17 | 100% | 2017-11-10 08:00 | 2017-12-02 16:18 | 35d |  |  |  |  |  |
| 31 | 1.6.11 | CONSUMABLES-CS&SS |  | 30d | 2017-09-20 08:00 A | 2017-10-31 17:30 A | 18 | 100% | 2017-09-20 08:00 | 2017-10-10 08:15 | 30d |  |  |  |  |  |
| 32 | 1.6.12 | CONSUMABLES-309 LMO |  | 30d | 2017-09-20 08:00 A | 2017-10-31 17:30 A | 19 | 100% | 2017-09-20 08:00 | 2017-10-10 08:15 | 30d |  |  |  |  |  |

| ID | WBS | Task | Duration | Start | Finish | Predecessors | Complete | Baseline start | Baseline finish | Baseline duration | Constraint | Work | Actual work | Cost | Baseline cost | Actual cost |
| --- | --- | --- | --- | --- | --- | --- | --- | --- | --- | --- | --- | --- | --- | --- | --- | --- |
| 33 | 1.7 | **Fabrication** | 162.19d | 2017-09-01 08:30 A | 2018-03-31 10:00 A |  | 100% | 2017-08-16 08:00 | 2018-02-27 20:22 | 299.23d |  | 7765.34h | 7765.34h | 472,949.61 | 504,134.38 | 472,949.61 |
| 34 | 1.7.1 | **RECEIPT OF MATERIALS** | 114.81d | 2017-09-01 08:30 A | 2018-01-30 16:00 A |  | 100% | 2017-08-16 08:00 | 2017-08-17 06:31 | 1.81d |  |  |  |  |  |  |
| 35 | 1.7.1.1 | PLATE FOR SHELL | 0.94d | 2017-09-01 08:30 A | 2017-09-01 17:00 A |  | 100% | 2017-08-16 08:00 | 2017-08-17 06:31 | 1.81d | finish no earlier than 2017-09-01 17:00 |  |  |  |  |  |
| 36 | 1.7.1.2 | SHELL FLANGE | 0.94d | 2017-12-07 08:30 A | 2017-12-07 17:00 A | 35SS | 100% | 2017-08-16 08:00 | 2017-08-17 06:31 | 1.81d | finish no earlier than 2017-12-07 17:00 |  |  |  |  |  |
| 37 | 1.7.1.3 | PLATE FOR CHANNEL | 1.81d | 2017-09-01 08:30 A | 2017-09-02 16:00 A | 35SS | 100% | 2017-08-16 08:00 | 2017-08-17 06:31 | 1.81d |  |  |  |  |  |  |
| 38 | 1.7.1.4 | CLAD PLATE | 1.81d | 2017-09-01 08:30 A | 2017-09-02 16:00 A | 35SS | 100% | 2017-08-16 08:00 | 2017-08-17 06:31 | 1.81d |  |  |  |  |  |  |
| 39 | 1.7.1.5 | CHANNEL FLANGE | 1.81d | 2017-12-07 08:30 A | 2017-12-08 16:00 A | 35SS | 100% | 2017-08-16 08:00 | 2017-08-17 06:31 | 1.81d | start no earlier than 2017-12-07 08:00 |  |  |  |  |  |
| 40 | 1.7.1.6 | FLOATING HEAD DISH | 1.81d | 2017-09-01 08:30 A | 2017-09-02 16:00 A | 35SS | 100% | 2017-08-16 08:00 | 2017-08-17 06:31 | 1.81d |  |  |  |  |  |  |
| 41 | 1.7.1.7 | FLOATING HEAD FLANGE | 1.81d | 2017-12-07 08:30 A | 2017-12-08 16:00 A | 35SS | 100% | 2017-08-16 08:00 | 2017-08-17 06:31 | 1.81d | start no earlier than 2017-12-07 08:00 |  |  |  |  |  |
| 42 | 1.7.1.8 | NOZZLE PIPE | 1.81d | 2017-09-01 08:30 A | 2017-09-02 16:00 A | 35SS | 100% | 2017-08-16 08:00 | 2017-08-17 06:31 | 1.81d |  |  |  |  |  |  |
| 43 | 1.7.1.9 | NOZZLE FLG | 1.81d | 2017-12-07 08:30 A | 2017-12-08 16:00 A | 35SS | 100% | 2017-08-16 08:00 | 2017-08-17 06:31 | 1.81d | start no earlier than 2017-12-07 08:00 |  |  |  |  |  |
| 44 | 1.7.1.10 | PLATE FOR DAVIT ASSY | 1.81d | 2017-09-01 08:30 A | 2017-09-02 16:00 A | 35SS | 100% | 2017-08-16 08:00 | 2017-08-17 06:31 | 1.81d |  |  |  |  |  |  |
| 45 | 1.7.1.11 | TUBE | 1.81d | 2018-01-29 08:30 A | 2018-01-30 16:00 A | 35SS | 100% | 2017-08-16 08:00 | 2017-08-17 06:31 | 1.81d | start no earlier than 2018-01-29 08:00 |  |  |  |  |  |
| 46 | 1.7.1.12 | TUBE SHEET | 1.81d | 2017-09-01 08:30 A | 2017-09-02 16:00 A | 35SS | 100% | 2017-08-16 08:00 | 2017-08-17 06:31 | 1.81d |  |  |  |  |  |  |
| 47 | 1.7.1.13 | NAME PLATE | 1.81d | 2017-09-01 08:30 A | 2017-09-02 16:00 A | 35SS | 100% | 2017-08-16 08:00 | 2017-08-17 06:31 | 1.81d |  |  |  |  |  |  |
| 48 | 1.7.1.14 | PP PLATE | 1.81d | 2017-09-01 08:30 A | 2017-09-02 16:00 A | 35SS | 100% | 2017-08-16 08:00 | 2017-08-17 06:31 | 1.81d |  |  |  |  |  |  |
| 49 | 1.7.1.15 | FULL SUPPORT PLATE | 1.81d | 2017-09-01 08:30 A | 2017-09-02 16:00 A | 35SS | 100% | 2017-08-16 08:00 | 2017-08-17 06:31 | 1.81d |  |  |  |  |  |  |
| 50 | 1.7.1.16 | BAFFLE PLATES | 1.81d | 2017-09-01 08:30 A | 2017-09-02 16:00 A | 35SS | 100% | 2017-08-16 08:00 | 2017-08-17 06:31 | 1.81d |  |  |  |  |  |  |
| 51 | 1.7.1.17 | SADDLE MATERIAL | 1.81d | 2017-09-01 08:30 A | 2017-09-02 16:00 A | 35SS | 100% | 2017-08-16 08:00 | 2017-08-17 06:31 | 1.81d |  |  |  |  |  |  |
| 52 | 1.7.1.18 | LIFTING LUG | 1.81d | 2017-09-01 08:30 A | 2017-09-02 16:00 A | 35SS | 100% | 2017-08-16 08:00 | 2017-08-17 06:31 | 1.81d |  |  |  |  |  |  |
| 53 | 1.7.1.19 | SPACER TUBE | 1.81d | 2017-09-01 08:30 A | 2017-09-02 16:00 A | 35SS | 100% | 2017-08-16 08:00 | 2017-08-17 06:31 | 1.81d |  |  |  |  |  |  |
| 54 | 1.7.1.20 | TIE ROD & SEALING STRIP | 1.81d | 2017-09-01 08:30 A | 2017-09-02 16:00 A | 35SS | 100% | 2017-08-16 08:00 | 2017-08-17 06:31 | 1.81d |  |  |  |  |  |  |
| 55 | 1.7.1.21 | INSULATION CLEAT | 1.81d | 2017-09-01 08:30 A | 2017-09-02 16:00 A | 35SS | 100% | 2017-08-16 08:00 | 2017-08-17 06:31 | 1.81d |  |  |  |  |  |  |
| 56 | 1.7.1.22 | FASTENERS | 1.81d | 2017-09-01 08:30 A | 2017-09-02 16:00 A | 35SS | 100% | 2017-08-16 08:00 | 2017-08-17 06:31 | 1.81d |  |  |  |  |  |  |
| 57 | 1.7.1.23 | GASKETS | 1.81d | 2017-10-30 08:30 A | 2017-10-31 16:00 A | 35SS | 100% | 2017-08-16 08:00 | 2017-08-17 06:31 | 1.81d | start no earlier than 2017-10-30 08:00 |  |  |  |  |  |

Notes:
- 35: SA516 Gr 70
- 36: SA266 Gr 2
- 37: SA516 Gr 70
- 38: SS410S
- 39: SA266 Gr 2
- 40: SA 516 Gr 70
- 41: SA266 Gr 2
- 42: SA105
- 43: SA105
- 45: SA268 TP 410
- 46: SA266 Gr 2
- 47: SS304
- 48: SA516 Gr 70
- 49: SA516 Gr 70
- 50: SA516 Gr 70
- 52: SA516 Gr 70
- 53: SA106 Gr B
- 54: SA106 Gr B/IS 2062
- 55: SA516 Gr 70

| ID | WBS | Task | Type | Duration | Start | Finish | Predecessors | Complete | Baseline start | Baseline finish | Baseline duration | Constraint | Resources | Work | Actual work | Cost | Baseline cost | Actual cost |
| --- | --- | --- | --- | --- | --- | --- | --- | --- | --- | --- | --- | --- | --- | --- | --- | --- | --- | --- |
| 58 | 1.7.2 | **MARKING OF BASE PLATE** |  | 4.12d | 2017-09-06 08:00 A | 2017-09-12 09:30 A |  | 100% | 2017-08-17 06:31 | 2017-08-17 08:31 | 0.25d |  |  | 15h | 15h | 890.62 | 890.62 | 890.62 |
| 59 | 1.7.2.1 | MARKING OF BASE FOR CHANNEL SHELL |  | 2h | 2017-09-06 08:00 A | 2017-09-06 10:00 A | 35 | 100% | 2017-08-17 06:31 | 2017-08-17 08:31 | 2h |  | Fitter; Helper; Plate (Cost) [0.1%] | 4h | 4h | 237.5 | 237.5 | 237.5 |
| 60 | 1.7.2.2 | MARKING OF BASE PLATE FOR CH COVER |  | 24.97h | 2017-09-07 08:00 A | 2017-09-08 17:00 A | 37 | 100% | 2017-08-17 06:31 | 2017-08-17 08:31 | 2h | finish no earlier than 2017-09-08 17:00 | Fitter; Helper | 4h | 4h | 237.5 | 237.5 | 237.5 |
| 61 | 1.7.2.3 | MARKING OF BASE PLATE FOR TUBE SHEET |  | 2h | 2017-09-09 08:00 A | 2017-09-11 08:00 A | 35 | 100% | 2017-08-17 06:31 | 2017-08-17 08:31 | 2h |  | Fitter; Helper | 4h | 4h | 237.5 | 237.5 | 237.5 |
| 62 | 1.7.2.4 | MARKING OF BASE PLATE FOR FL HEAD DISH |  | 1.5h | 2017-09-12 08:00 A | 2017-09-12 09:30 A | 37 | 100% | 2017-08-17 06:31 | 2017-08-17 08:01 | 1.5h |  | Fitter; Helper | 3h | 3h | 178.12 | 178.12 | 178.12 |
| 63 | 1.7.3 | **MARKING OF CLAD PLATE** |  | 2.19d | 2017-10-20 08:00 A | 2017-10-23 10:00 A |  | 100% | 2017-08-17 08:31 | 2017-08-17 16:02 | 0.94d |  |  | 60.93h | 60.93h | 3,617.91 | 890.62 | 3,617.91 |
| 64 | 1.7.3.1 | MARKING OF CLAD FOR CH SHELL |  | 24.97h | 2017-10-20 08:00 A | 2017-10-21 17:00 A | 38 | 100% | 2017-08-17 08:31 | 2017-08-17 10:31 | 2h | finish no earlier than 2017-10-21 17:00 | Fitter; Helper; Plate (Cost) [0.1%] | 49.93h | 49.93h | 2,964.79 | 237.5 | 2,964.79 |
| 65 | 1.7.3.2 | MARKING OF CLAD PLATE FOR CH COVER |  | 2h | 2017-10-22 08:00 A | 2017-10-23 08:00 A | 64 | 100% | 2017-08-17 10:31 | 2017-08-17 12:31 | 2h |  | Fitter; Helper | 4h | 4h | 237.5 | 237.5 | 237.5 |
| 66 | 1.7.3.3 | MARKING OF CLAD PLATE FOR TUBE SHEET |  | 2h | 2017-10-23 08:00 A | 2017-10-23 10:00 A | 65 | 100% | 2017-08-17 12:31 | 2017-08-17 14:32 | 2h |  | Fitter; Helper | 4h | 4h | 237.5 | 237.5 | 237.5 |
| 67 | 1.7.3.4 | MARKING OF CLAD PLATE FOR FH HEAD DISH |  | 1.5h | 2017-10-23 08:00 A | 2017-10-23 09:30 A | 66 | 100% | 2017-08-17 14:32 | 2017-08-17 16:02 | 1.5h |  | Fitter; Helper | 3h | 3h | 178.12 | 178.12 | 178.12 |
| 68 | 1.7.4 | **CUTTING OF PLATE FOR CLADDING** |  | 2d | 2017-10-24 08:00 A | 2017-10-26 08:00 A |  | 100% | 2017-08-17 08:31 | 2017-08-18 08:02 | 1.94d |  |  | 40.95h | 40.95h | 2,515.63 | 1,931.25 | 2,515.63 |
| 69 | 1.7.4.1 | CUTTING OF BASE PLATE |  | 24.97h | 2017-10-24 08:00 A | 2017-10-25 17:00 A | 58 | 100% | 2017-08-17 08:31 | 2017-08-17 18:32 | 10h | finish no earlier than 2017-10-25 17:00 | Gas Cutter; Helper; Plate (Cost) [0.1%] | 40.95h | 40.95h | 2,515.63 | 1,187.5 | 2,515.63 |
| 70 | 1.7.4.2 | CUTTING OF CLAD PLATE | milestone | 0h | 2017-10-26 08:00 A | 2017-10-26 08:00 A | 63 | 100% | 2017-08-17 16:02 | 2017-08-18 08:02 | 8h |  | Gas Cutter; Helper |  |  |  | 743.75 |  |
| 71 | 1.7.5 | **EXPLOSION BONDING** |  | 12.81d | 2017-10-26 08:30 A | 2017-11-10 16:00 A |  | 100% | 2017-08-18 08:02 | 2017-08-28 14:39 | 12.81d |  |  |  |  |  |  |  |
| 72 | 1.7.5.1 | EXPLOSION BONDING |  | 2.17w | 2017-10-26 08:30 A | 2017-11-10 16:00 A | 68 | 100% | 2017-08-18 08:02 | 2017-08-24 15:08 | 2.17w |  |  |  |  |  |  |  |
| 73 | 1.7.5.2 | RECEIPT FROM CLADDING |  | 1.81d | 2017-11-08 16:30 A | 2017-11-10 15:00 A | 72 | 100% | 2017-08-24 15:08 | 2017-08-28 13:38 | 1.81d |  |  |  |  |  |  |  |
| 74 | 1.7.5.3 | INWARD INSPECTION |  | 1h | 2017-11-10 15:00 A | 2017-11-10 16:00 A | 73 | 100% | 2017-08-28 13:38 | 2017-08-28 14:39 | 1h |  |  |  |  |  |  |  |
| 75 | 1.7.6 | **CHANNEL LS1- FABRICATION** |  | 7.92d | 2017-09-05 16:00 A | 2017-09-15 15:21 A |  | 100% | 2017-08-28 14:39 | 2017-09-05 07:00 | 13.03d |  |  | 152.25h | 152.25h | 9,151.58 | 9,151.56 | 9,151.58 |
| 76 | 1.7.6.1 | LS1-PLATE MARKING |  | 2h | 2017-09-05 16:00 A | 2017-09-06 09:00 A | 71 | 100% | 2017-08-28 14:39 | 2017-08-28 16:39 | 2h |  | Fitter; Helper; Plate (Cost) [0.1%] | 4h | 4h | 237.5 | 237.5 | 237.5 |
| 77 | 1.7.6.2 | LS1- STAMPING |  | 1h | 2017-09-06 09:00 A | 2017-09-06 10:00 A | 76 | 100% | 2017-08-28 16:39 | 2017-08-28 17:39 | 1h |  | Fitter [200%] | 2h | 2h | 137.5 | 137.5 | 137.5 |
| 78 | 1.7.6.3 | LS1-PL CUTTING |  | 2.5h | 2017-09-06 10:00 A | 2017-09-06 12:30 A | 77 | 100% | 2017-08-28 17:39 | 2017-08-28 20:09 | 2.5h |  | Gas Cutter; Helper | 5h | 5h | 296.88 | 296.88 | 296.88 |
| 79 | 1.7.6.4 | LS1-GRINDING |  | 2.5h | 2017-09-06 12:30 A | 2017-09-06 15:01 A | 78 | 100% | 2017-08-28 20:09 | 2017-08-29 06:39 | 2.5h |  | Grinder | 2.5h | 2.5h | 140.62 | 140.62 | 140.62 |
| 80 | 1.7.6.5 | LS1-CLAD CHIP OFF |  | 2h | 2017-09-06 15:01 A | 2017-09-06 17:01 A | 79 | 100% | 2017-08-29 06:39 | 2017-08-29 08:39 | 2h |  | Grinder | 2h | 2h | 112.5 | 112.5 | 112.5 |
| 81 | 1.7.6.6 | LS1-EDGE PREPARATION |  | 1.5h | 2017-09-06 17:01 A | 2017-09-06 18:31 A | 80 | 100% | 2017-08-29 08:39 | 2017-08-29 10:09 | 1.5h |  | Grinder | 1.5h | 1.5h | 84.38 | 84.38 | 84.38 |
| 82 | 1.7.6.7 | LS1-PRE BENDING |  | 2.5h | 2017-09-06 18:31 A | 2017-09-06 21:01 A | 81 | 100% | 2017-08-29 10:09 | 2017-08-29 12:39 | 2.5h |  | Fitter; Helper [200%] | 7.5h | 7.5h | 421.88 | 421.88 | 421.88 |
| 83 | 1.7.6.8 | LS1-PREBEND CUTOFF |  | 2h | 2017-09-06 21:01 A | 2017-09-07 07:01 A | 82 | 100% | 2017-08-29 12:39 | 2017-08-29 14:40 | 2h |  | Gas Cutter; Helper | 4h | 4h | 237.5 | 237.5 | 237.5 |
| 84 | 1.7.6.9 | LS1-EDGE PREPARTION |  | 1.5h | 2017-09-07 07:01 A | 2017-09-07 08:31 A | 83 | 100% | 2017-08-29 14:40 | 2017-08-29 16:10 | 1.5h |  | Grinder | 1.5h | 1.5h | 84.38 | 84.38 | 84.38 |
| 85 | 1.7.6.10 | LS1-ROLLING |  | 3h | 2017-09-07 08:31 A | 2017-09-07 11:31 A | 84 | 100% | 2017-08-29 16:10 | 2017-08-29 19:10 | 3h |  | Fitter; Helper [200%] | 9h | 9h | 506.25 | 506.25 | 506.25 |
| 86 | 1.7.6.11 | LS1-FITUP |  | 3h | 2017-09-07 11:31 A | 2017-09-07 14:32 A | 85 | 100% | 2017-08-29 19:10 | 2017-08-30 06:10 | 3h |  | Fitter; Helper [200%]; SAW Welder | 10h | 10h | 612.5 | 612.5 | 612.5 |
| 87 | 1.7.6.12 | LS1-SPIDERUP |  | 2h | 2017-09-07 14:32 A | 2017-09-07 16:32 A | 86 | 100% | 2017-08-30 06:10 | 2017-08-30 08:10 | 2h |  | Fitter; Helper | 4h | 4h | 237.5 | 237.5 | 237.5 |
| 88 | 1.7.6.13 | LS1-FITUP INSPECTION |  | 0.91d | 2017-09-07 16:32 A | 2017-09-08 07:47 A | 87 | 100% | 2017-08-30 08:10 | 2017-08-30 15:26 | 0.91d |  | Fitter | 7.25h | 7.25h | 498.44 | 498.44 | 498.44 |
| 89 | 1.7.6.14 | LS1-WELDING |  | 7h | 2017-09-08 07:47 A | 2017-09-08 14:48 A | 88 | 100% | 2017-08-30 15:26 | 2017-08-31 06:26 | 7h |  | SAW Welder; Helper [200%] | 20h | 20h | 1,131.25 | 1,131.25 | 1,131.25 |
| 90 | 1.7.6.15 | LS1-FLUSH GRIND |  | 5h | 2017-09-08 14:48 A | 2017-09-08 19:48 A | 89 | 100% | 2017-08-31 06:26 | 2017-08-31 11:26 | 5h |  | Grinder | 5h | 5h | 281.25 | 281.25 | 281.25 |
| 91 | 1.7.6.16 | LS1-INSIDE WELDING |  | 7h | 2017-09-08 19:48 A | 2017-09-11 10:48 A | 90 | 100% | 2017-08-31 11:26 | 2017-08-31 18:27 | 7h |  | Helper [200%]; SAW Welder | 21h | 21h | 1,181.25 | 1,181.25 | 1,181.25 |
| 92 | 1.7.6.17 | LS1-BACKCHIP |  | 5h | 2017-09-11 10:48 A | 2017-09-11 15:49 A | 91 | 100% | 2017-08-31 18:27 | 2017-09-01 07:27 | 5h |  | Grinder | 5h | 5h | 281.25 | 281.25 | 281.25 |
| 93 | 1.7.6.18 | LS1-REROLLING |  | 32h | 2017-09-11 15:49 A | 2017-09-13 15:51 A | 92 | 100% | 2017-09-01 07:27 | 2017-09-04 07:29 | 32h |  | Fitter; Helper [200%] | 40h | 40h | 2,600 | 2,600 | 2,600 |
| 94 | 1.7.6.19 | LS1-DPCHECK |  | 1h | 2017-09-13 15:51 A | 2017-09-13 16:51 A | 93 | 100% | 2017-09-04 07:29 | 2017-09-04 08:29 | 1h |  | Fitter | 1h | 1h | 68.75 | 68.75 | 68.75 |
| 95 | 1.7.6.20 | LS1-RADIOGRAPHY |  | 1.81d | 2017-09-13 16:51 A | 2017-09-15 15:21 A | 94 | 100% | 2017-09-04 08:29 | 2017-09-05 07:00 | 1.81d |  |  |  |  |  |  |  |

Notes:
- 72: SC
- 73: SC
- 74: TPI
- 76: 4666*88O*(25+5)T
- 89: 4.34Kg/m
- 95: SC

| ID | WBS | Task | Duration | Start | Finish | Predecessors | Complete | Baseline start | Baseline finish | Baseline duration | Resources | Work | Actual work | Cost | Baseline cost | Actual cost |
| --- | --- | --- | --- | --- | --- | --- | --- | --- | --- | --- | --- | --- | --- | --- | --- | --- |
| 96 | 1.7.7 | **SHELL LS2-FABRICATION** | 7.06d | 2017-11-14 15:30 A | 2017-11-22 16:00 A |  | 100% | 2017-08-28 16:39 | 2017-09-04 21:30 | 12.59d |  | 155h | 155h | 9,262.51 | 9,262.5 | 9,262.51 |
| 97 | 1.7.7.1 | LS2-PLATEMARKING | 2h | 2017-11-14 15:30 A | 2017-11-14 17:30 A | 71, 76 | 100% | 2017-08-28 16:39 | 2017-08-28 18:39 | 2h | Fitter; Helper; Plate (Cost) [0.1%] | 4h | 4h | 237.5 | 237.5 | 237.5 |
| 98 | 1.7.7.2 | LS2-STAMPING | 2h | 2017-11-14 17:30 A | 2017-11-14 19:30 A | 97 | 100% | 2017-08-28 18:39 | 2017-08-28 20:39 | 2h | Fitter [200%] | 4h | 4h | 275 | 275 | 275 |
| 99 | 1.7.7.3 | LS2-PLCUTTING | 3h | 2017-11-14 19:30 A | 2017-11-15 06:30 A | 98 | 100% | 2017-08-28 20:39 | 2017-08-29 07:39 | 3h | Gas Cutter; Helper | 6h | 6h | 356.25 | 356.25 | 356.25 |
| 100 | 1.7.7.4 | LS2-GRINDING | 3h | 2017-11-15 06:30 A | 2017-11-15 09:30 A | 99 | 100% | 2017-08-29 07:39 | 2017-08-29 10:39 | 3h | Grinder | 3h | 3h | 168.75 | 168.75 | 168.75 |
| 101 | 1.7.7.5 | LS2-EDGEPREPARATION | 1.5h | 2017-11-15 09:30 A | 2017-11-15 11:00 A | 100 | 100% | 2017-08-29 10:39 | 2017-08-29 12:09 | 1.5h | Grinder | 1.5h | 1.5h | 84.38 | 84.38 | 84.38 |
| 102 | 1.7.7.6 | LS2-PREBENDING | 3h | 2017-11-15 11:00 A | 2017-11-15 14:00 A | 101 | 100% | 2017-08-29 12:09 | 2017-08-29 15:10 | 3h | Fitter; Helper | 6h | 6h | 356.25 | 356.25 | 356.25 |
| 103 | 1.7.7.7 | LS2-PREBENDCUTOFF | 2h | 2017-11-15 14:01 A | 2017-11-15 16:01 A | 102 | 100% | 2017-08-29 15:10 | 2017-08-29 17:10 | 2h | Gas Cutter; Helper | 3.5h | 3.5h | 203.12 | 203.12 | 203.12 |
| 104 | 1.7.7.8 | LS2-EDGEPREPARTION | 1.5h | 2017-11-15 16:01 A | 2017-11-15 17:31 A | 103 | 100% | 2017-08-29 17:10 | 2017-08-29 18:40 | 1.5h | Grinder | 1.5h | 1.5h | 84.38 | 84.38 | 84.38 |
| 105 | 1.7.7.9 | LS2-ROLLING | 3h | 2017-11-15 17:31 A | 2017-11-15 20:31 A | 104 | 100% | 2017-08-29 18:40 | 2017-08-29 21:40 | 3h | Fitter; Helper [200%] | 9h | 9h | 506.25 | 506.25 | 506.25 |
| 106 | 1.7.7.10 | LS2-FITUP | 3h | 2017-11-15 20:31 A | 2017-11-16 07:31 A | 105 | 100% | 2017-08-29 21:40 | 2017-08-30 08:40 | 3h | Fitter; Helper [200%]; SAW Welder | 11h | 11h | 662.5 | 662.5 | 662.5 |
| 107 | 1.7.7.11 | LS2-SPIDERUP | 2h | 2017-11-16 07:31 A | 2017-11-16 09:31 A | 106 | 100% | 2017-08-30 08:40 | 2017-08-30 10:40 | 2h | Fitter; Helper | 4h | 4h | 237.5 | 237.5 | 237.5 |
| 108 | 1.7.7.12 | LS2-FITUPINSPECTION | 0.91d | 2017-11-16 09:31 A | 2017-11-16 16:47 A | 107 | 100% | 2017-08-30 10:40 | 2017-08-30 17:56 | 0.91d | Fitter [200%] | 14.5h | 14.5h | 996.88 | 996.88 | 996.88 |
| 109 | 1.7.7.13 | LS2-WELDING | 15h | 2017-11-16 16:47 A | 2017-11-17 15:48 A | 108 | 100% | 2017-08-30 17:56 | 2017-08-31 16:57 | 15h | SAW Welder; Helper [200%] | 29h | 29h | 1,731.25 | 1,731.25 | 1,731.25 |
| 110 | 1.7.7.14 | LS2-FLUSHGRIND | 10h | 2017-11-17 15:48 A | 2017-11-18 09:48 A | 109 | 100% | 2017-08-31 16:57 | 2017-09-01 10:57 | 10h | Grinder | 10h | 10h | 562.5 | 562.5 | 562.5 |
| 111 | 1.7.7.15 | LS2-INSIDEWELDING | 14h | 2017-11-18 09:48 A | 2017-11-20 07:49 A | 110 | 100% | 2017-09-01 10:57 | 2017-09-02 08:58 | 14h | Helper [200%]; SAW Welder | 28h | 28h | 1,662.5 | 1,662.5 | 1,662.5 |
| 112 | 1.7.7.16 | LS2-FLUSHGRIND | 10h | 2017-11-20 07:49 A | 2017-11-20 17:50 A | 111 | 100% | 2017-09-02 08:58 | 2017-09-02 18:59 | 10h | Grinder | 10h | 10h | 562.5 | 562.5 | 562.5 |
| 113 | 1.7.7.17 | LS2-REROLLING | 3h | 2017-11-20 17:50 A | 2017-11-20 20:50 A | 112 | 100% | 2017-09-02 18:59 | 2017-09-02 21:59 | 3h | Fitter; Helper [200%] | 9h | 9h | 506.25 | 506.25 | 506.25 |
| 114 | 1.7.7.18 | LS2-DPCHECK | 1h | 2017-11-20 20:50 A | 2017-11-20 21:50 A | 113 | 100% | 2017-09-02 21:59 | 2017-09-04 06:59 | 1h | Fitter | 1h | 1h | 68.75 | 68.75 | 68.75 |
| 115 | 1.7.7.19 | LS2-RADIOGRAPHY | 1.81d | 2017-11-21 08:30 A | 2017-11-22 16:00 A | 114 | 100% | 2017-09-04 06:59 | 2017-09-04 21:30 | 1.81d |  |  |  |  |  |  |
| 116 | 1.7.8 | **SHELL LS3-FABRICATION** | 6.81d | 2017-11-14 17:30 A | 2017-11-22 16:00 A |  | 100% | 2017-08-28 18:39 | 2017-09-05 07:30 | 12.59d |  | 151.5h | 151.5h | 9,021.89 | 9,021.88 | 9,021.89 |
| 117 | 1.7.8.1 | LS3-PLATEMARKING | 2h | 2017-11-14 17:30 A | 2017-11-14 19:30 A | 71, 97 | 100% | 2017-08-28 18:39 | 2017-08-28 20:39 | 2h | Fitter; Helper; Plate (Cost) | 4h | 4h | 237.5 | 237.5 | 237.5 |
| 118 | 1.7.8.2 | LS3-STAMPING | 2h | 2017-11-14 19:30 A | 2017-11-14 21:30 A | 117 | 100% | 2017-08-28 20:39 | 2017-08-29 06:39 | 2h | Fitter [200%] | 4h | 4h | 275 | 275 | 275 |
| 119 | 1.7.8.3 | LS3-PLCUTTING | 3h | 2017-11-14 21:30 A | 2017-11-15 08:30 A | 118 | 100% | 2017-08-29 06:39 | 2017-08-29 09:39 | 3h | Gas Cutter; Helper | 4h | 4h | 218.75 | 218.75 | 218.75 |
| 120 | 1.7.8.4 | LS3-GRINDING | 3h | 2017-11-15 08:30 A | 2017-11-15 11:30 A | 119 | 100% | 2017-08-29 09:39 | 2017-08-29 12:39 | 3h | Grinder | 3h | 3h | 168.75 | 168.75 | 168.75 |
| 121 | 1.7.8.5 | LS3-EDGEPREPARATION | 1.5h | 2017-11-15 11:30 A | 2017-11-15 13:00 A | 120 | 100% | 2017-08-29 12:39 | 2017-08-29 14:10 | 1.5h | Grinder | 1.5h | 1.5h | 84.38 | 84.38 | 84.38 |
| 122 | 1.7.8.6 | LS3-PREBENDING | 3h | 2017-11-15 13:00 A | 2017-11-15 16:01 A | 121 | 100% | 2017-08-29 14:10 | 2017-08-29 17:10 | 3h | Fitter; Helper | 6h | 6h | 356.25 | 356.25 | 356.25 |
| 123 | 1.7.8.7 | LS3-PREBENDCUTOFF | 2h | 2017-11-15 16:01 A | 2017-11-15 18:01 A | 122 | 100% | 2017-08-29 17:10 | 2017-08-29 19:10 | 2h | Gas Cutter; Helper | 2h | 2h | 100 | 100 | 100 |
| 124 | 1.7.8.8 | LS3-EDGEPREPARTION | 1.5h | 2017-11-15 18:01 A | 2017-11-15 19:31 A | 123 | 100% | 2017-08-29 19:10 | 2017-08-29 20:40 | 1.5h | Grinder | 1.5h | 1.5h | 84.38 | 84.38 | 84.38 |
| 125 | 1.7.8.9 | LS3-ROLLING | 3h | 2017-11-15 19:31 A | 2017-11-16 06:31 A | 124 | 100% | 2017-08-29 20:40 | 2017-08-30 07:40 | 3h | Fitter; Helper [200%] | 9h | 9h | 506.25 | 506.25 | 506.25 |
| 126 | 1.7.8.10 | LS3-FITUP | 3h | 2017-11-16 06:31 A | 2017-11-16 09:31 A | 125 | 100% | 2017-08-30 07:40 | 2017-08-30 10:40 | 3h | Fitter; Helper [200%]; SAW Welder | 11h | 11h | 662.5 | 662.5 | 662.5 |
| 127 | 1.7.8.11 | LS3-SPIDERUP | 2h | 2017-11-16 09:31 A | 2017-11-16 11:31 A | 126 | 100% | 2017-08-30 10:40 | 2017-08-30 12:40 | 2h | Fitter; Helper | 4h | 4h | 237.5 | 237.5 | 237.5 |
| 128 | 1.7.8.12 | LS3-FITUPINSPECTION | 0.91d | 2017-11-16 11:31 A | 2017-11-16 18:47 A | 127 | 100% | 2017-08-30 12:40 | 2017-08-30 19:56 | 0.91d | Fitter [200%] | 14.5h | 14.5h | 996.88 | 996.88 | 996.88 |
| 129 | 1.7.8.13 | LS3-WELDING | 15h | 2017-11-16 18:47 A | 2017-11-17 17:48 A | 128 | 100% | 2017-08-30 19:56 | 2017-08-31 18:57 | 15h | SAW Welder; Helper [200%] | 29h | 29h | 1,731.25 | 1,731.25 | 1,731.25 |
| 130 | 1.7.8.14 | LS3-FLUSHGRIND | 10h | 2017-11-17 17:48 A | 2017-11-18 11:48 A | 129 | 100% | 2017-08-31 18:57 | 2017-09-01 12:57 | 10h | Grinder | 10h | 10h | 562.5 | 562.5 | 562.5 |
| 131 | 1.7.8.15 | LS3-INSIDEWELDING | 14h | 2017-11-18 11:48 A | 2017-11-20 09:49 A | 130 | 100% | 2017-09-01 12:57 | 2017-09-02 10:58 | 14h | Helper [200%]; SAW Welder | 28h | 28h | 1,662.5 | 1,662.5 | 1,662.5 |
| 132 | 1.7.8.16 | LS3-FLUSHGRIND | 10h | 2017-11-20 09:49 A | 2017-11-20 19:50 A | 131 | 100% | 2017-09-02 10:58 | 2017-09-02 20:59 | 10h | Grinder | 10h | 10h | 562.5 | 562.5 | 562.5 |
| 133 | 1.7.8.17 | LS3-REROLLING | 3h | 2017-11-20 19:50 A | 2017-11-21 06:50 A | 132 | 100% | 2017-09-02 20:59 | 2017-09-04 07:59 | 3h | Fitter; Helper [200%] | 9h | 9h | 506.25 | 506.25 | 506.25 |
| 134 | 1.7.8.18 | LS3-DPCHECK | 1h | 2017-11-21 06:50 A | 2017-11-21 07:50 A | 133 | 100% | 2017-09-04 07:59 | 2017-09-04 08:59 | 1h | Fitter | 1h | 1h | 68.75 | 68.75 | 68.75 |
| 135 | 1.7.8.19 | LS3-RADIOGRAPHY | 1.81d | 2017-11-21 08:30 A | 2017-11-22 16:00 A | 134 | 100% | 2017-09-04 08:59 | 2017-09-05 07:30 | 1.81d |  |  |  |  |  |  |

Notes:
- 97: 4634*2000Lg*25T
- 109: 4.34Kg/m
- 115: SC
- 117: 4634*2000Lg*25T
- 129: 4.34Kg/m
- 135: SC

| ID | WBS | Task | Duration | Start | Finish | Predecessors | Complete | Baseline start | Baseline finish | Baseline duration | Resources | Work | Actual work | Cost | Baseline cost | Actual cost |
| --- | --- | --- | --- | --- | --- | --- | --- | --- | --- | --- | --- | --- | --- | --- | --- | --- |
| 136 | 1.7.9 | **SHELL LS4-FABRICATION** | 5.81d | 2017-11-14 19:30 A | 2017-11-21 16:00 A |  | 100% | 2017-08-28 20:39 | 2017-09-04 07:59 | 10.41d |  | 132.5h | 132.5h | 7,818.76 | 7,818.75 | 7,818.76 |
| 137 | 1.7.9.1 | LS4-PLATEMARKING | 1.5h | 2017-11-14 19:30 A | 2017-11-14 21:00 A | 71, 117 | 100% | 2017-08-28 20:39 | 2017-08-29 06:09 | 1.5h | Fitter; Helper; Plate (Cost) | 3h | 3h | 178.12 | 178.12 | 178.12 |
| 138 | 1.7.9.2 | LS4-STAMPING | 1h | 2017-11-14 21:00 A | 2017-11-14 22:00 A | 137 | 100% | 2017-08-29 06:09 | 2017-08-29 07:09 | 1h | Fitter [200%] | 2h | 2h | 137.5 | 137.5 | 137.5 |
| 139 | 1.7.9.3 | LS4-PLATE CUTTING | 2h | 2017-11-15 06:00 A | 2017-11-15 08:00 A | 138 | 100% | 2017-08-29 07:09 | 2017-08-29 09:09 | 2h | Gas Cutter; Helper | 3h | 3h | 168.75 | 168.75 | 168.75 |
| 140 | 1.7.9.4 | LS4-GRINDING | 3h | 2017-11-15 08:00 A | 2017-11-15 11:00 A | 139 | 100% | 2017-08-29 09:09 | 2017-08-29 12:09 | 3h | Grinder | 3h | 3h | 168.75 | 168.75 | 168.75 |
| 141 | 1.7.9.5 | LS4-EDGE PREPARATION | 1.5h | 2017-11-15 11:00 A | 2017-11-15 12:30 A | 140 | 100% | 2017-08-29 12:09 | 2017-08-29 13:39 | 1.5h | Grinder | 1.5h | 1.5h | 84.38 | 84.38 | 84.38 |
| 142 | 1.7.9.6 | LS4-PRE BENDING | 3h | 2017-11-15 12:30 A | 2017-11-15 15:31 A | 141 | 100% | 2017-08-29 13:39 | 2017-08-29 16:40 | 3h | Fitter; Helper | 6h | 6h | 356.25 | 356.25 | 356.25 |
| 143 | 1.7.9.7 | LS4-PRE BEND CUTOFF | 2h | 2017-11-15 15:31 A | 2017-11-15 17:31 A | 142 | 100% | 2017-08-29 16:40 | 2017-08-29 18:40 | 2h | Gas Cutter; Helper | 2h | 2h | 100 | 100 | 100 |
| 144 | 1.7.9.8 | LS4-EDGE PREPARTION | 1.5h | 2017-11-15 17:31 A | 2017-11-15 19:01 A | 143 | 100% | 2017-08-29 18:40 | 2017-08-29 20:10 | 1.5h | Grinder | 1.5h | 1.5h | 84.38 | 84.38 | 84.38 |
| 145 | 1.7.9.9 | LS4-ROLLING | 3h | 2017-11-15 19:01 A | 2017-11-16 06:01 A | 144 | 100% | 2017-08-29 20:10 | 2017-08-30 07:10 | 3h | Fitter; Helper [200%] | 9h | 9h | 506.25 | 506.25 | 506.25 |
| 146 | 1.7.9.10 | LS4-FITUP | 3h | 2017-11-16 06:01 A | 2017-11-16 09:01 A | 145 | 100% | 2017-08-30 07:10 | 2017-08-30 10:10 | 3h | Fitter; Helper [200%]; SAW Welder | 11h | 11h | 662.5 | 662.5 | 662.5 |
| 147 | 1.7.9.11 | LS4-SPIDERUP | 2h | 2017-11-16 09:01 A | 2017-11-16 11:01 A | 146 | 100% | 2017-08-30 10:10 | 2017-08-30 12:10 | 2h | Fitter; Helper | 4h | 4h | 237.5 | 237.5 | 237.5 |
| 148 | 1.7.9.12 | LS4-FITUP INSPECTION | 0.91d | 2017-11-16 11:01 A | 2017-11-16 18:17 A | 147 | 100% | 2017-08-30 12:10 | 2017-08-30 19:26 | 0.91d | Fitter [200%] | 14.5h | 14.5h | 996.88 | 996.88 | 996.88 |
| 149 | 1.7.9.13 | LS4-WELDING | 10h | 2017-11-16 18:17 A | 2017-11-17 12:17 A | 148 | 100% | 2017-08-30 19:26 | 2017-08-31 13:26 | 10h | SAW Welder; Helper [200%] | 24h | 24h | 1,387.5 | 1,387.5 | 1,387.5 |
| 150 | 1.7.9.14 | LS4-FLUSH GRIND | 7h | 2017-11-17 12:17 A | 2017-11-17 19:18 A | 149 | 100% | 2017-08-31 13:26 | 2017-08-31 20:27 | 7h | Grinder | 7h | 7h | 393.75 | 393.75 | 393.75 |
| 151 | 1.7.9.15 | LS4-INSIDE WELDING | 10h | 2017-11-17 19:18 A | 2017-11-18 13:18 A | 150 | 100% | 2017-08-31 20:27 | 2017-09-01 14:28 | 10h | Helper [200%]; SAW Welder | 24h | 24h | 1,387.5 | 1,387.5 | 1,387.5 |
| 152 | 1.7.9.16 | LS4-FLUSH GRIND | 7h | 2017-11-18 13:18 A | 2017-11-18 20:19 A | 151 | 100% | 2017-09-01 14:28 | 2017-09-01 21:28 | 7h | Grinder | 7h | 7h | 393.75 | 393.75 | 393.75 |
| 153 | 1.7.9.17 | LS4-REROLLING | 3h | 2017-11-18 20:19 A | 2017-11-20 07:19 A | 152 | 100% | 2017-09-01 21:28 | 2017-09-02 08:28 | 3h | Fitter; Helper [200%] | 9h | 9h | 506.25 | 506.25 | 506.25 |
| 154 | 1.7.9.18 | LS4-DPCHECK | 1h | 2017-11-20 07:19 A | 2017-11-20 08:19 A | 153 | 100% | 2017-09-02 08:28 | 2017-09-02 09:28 | 1h | Fitter | 1h | 1h | 68.75 | 68.75 | 68.75 |
| 155 | 1.7.9.19 | LS4-RADIOGRAPHY | 1.81d | 2017-11-20 08:30 A | 2017-11-21 16:00 A | 154 | 100% | 2017-09-02 09:28 | 2017-09-04 07:59 | 1.81d |  |  |  |  |  |  |
| 156 | 1.7.10 | **SHELL COVER LS5-FABRICATION** | 3.75d | 2017-11-14 15:30 A | 2017-11-18 12:48 A |  | 100% | 2017-08-28 14:39 | 2017-09-01 11:57 | 7.66d |  | 115h | 115h | 6,971.88 | 6,971.88 | 6,971.88 |
| 157 | 1.7.10.1 | LS5-PLATEMARKING | 1h | 2017-11-14 15:30 A | 2017-11-14 16:30 A | 71 | 100% | 2017-08-28 14:39 | 2017-08-28 15:39 | 1h | Fitter; Helper; Plate (Cost) [0.1%] | 2h | 2h | 118.75 | 118.75 | 118.75 |
| 158 | 1.7.10.2 | LS5-STAMPING | 1h | 2017-11-14 16:30 A | 2017-11-14 17:30 A | 157 | 100% | 2017-08-28 15:39 | 2017-08-28 16:39 | 1h | Fitter [200%] | 2h | 2h | 137.5 | 137.5 | 137.5 |
| 159 | 1.7.10.3 | LS5-PLCUTTING | 2h | 2017-11-14 17:30 A | 2017-11-14 19:30 A | 158 | 100% | 2017-08-28 16:39 | 2017-08-28 18:39 | 2h | Gas Cutter; Helper | 4h | 4h | 237.5 | 237.5 | 237.5 |
| 160 | 1.7.10.4 | LS5-GRINDING | 3h | 2017-11-14 19:30 A | 2017-11-15 06:30 A | 159 | 100% | 2017-08-28 18:39 | 2017-08-28 21:39 | 3h | Grinder | 3h | 3h | 168.75 | 168.75 | 168.75 |
| 161 | 1.7.10.5 | LS5-EDGEPREPARATION | 1h | 2017-11-15 06:30 A | 2017-11-15 07:30 A | 160 | 100% | 2017-08-28 21:39 | 2017-08-29 06:39 | 1h | Grinder | 1h | 1h | 56.25 | 56.25 | 56.25 |
| 162 | 1.7.10.6 | LS5-PREBENDING | 2h | 2017-11-15 07:30 A | 2017-11-15 09:30 A | 161 | 100% | 2017-08-29 06:39 | 2017-08-29 08:39 | 2h | Fitter; Helper | 4h | 4h | 237.5 | 237.5 | 237.5 |
| 163 | 1.7.10.7 | LS5-PREBENDCUTOFF | 1.5h | 2017-11-15 09:30 A | 2017-11-15 11:00 A | 162 | 100% | 2017-08-29 08:39 | 2017-08-29 10:09 | 1.5h | Gas Cutter; Helper | 3h | 3h | 178.12 | 178.12 | 178.12 |
| 164 | 1.7.10.8 | LS5-EDGEPREPARTION | 1h | 2017-11-15 11:00 A | 2017-11-15 12:00 A | 163 | 100% | 2017-08-29 10:09 | 2017-08-29 11:09 | 1h | Grinder | 1h | 1h | 56.25 | 56.25 | 56.25 |
| 165 | 1.7.10.9 | LS5-ROLLING | 3h | 2017-11-15 12:00 A | 2017-11-15 15:01 A | 164 | 100% | 2017-08-29 11:09 | 2017-08-29 14:10 | 3h | Fitter; Helper [200%] | 9h | 9h | 506.25 | 506.25 | 506.25 |
| 166 | 1.7.10.10 | LS5-FITUP | 3h | 2017-11-15 15:01 A | 2017-11-15 18:01 A | 165 | 100% | 2017-08-29 14:10 | 2017-08-29 17:10 | 3h | Fitter; Helper [200%]; SAW Welder | 12h | 12h | 712.5 | 712.5 | 712.5 |
| 167 | 1.7.10.11 | LS5-SPIDERUP | 2h | 2017-11-15 18:01 A | 2017-11-15 20:01 A | 166 | 100% | 2017-08-29 17:10 | 2017-08-29 19:10 | 2h | Fitter; Helper | 4h | 4h | 237.5 | 237.5 | 237.5 |
| 168 | 1.7.10.12 | LS5-FITUPINSPECTION | 0.91d | 2017-11-15 20:01 A | 2017-11-16 11:16 A | 167 | 100% | 2017-08-29 19:10 | 2017-08-30 10:25 | 0.91d | Fitter [200%] | 14.5h | 14.5h | 996.88 | 996.88 | 996.88 |
| 169 | 1.7.10.13 | LS5-WELDING | 4h | 2017-11-16 11:16 A | 2017-11-16 15:17 A | 168 | 100% | 2017-08-30 10:25 | 2017-08-30 14:26 | 4h | SAW Welder; Helper [200%] | 12h | 12h | 675 | 675 | 675 |
| 170 | 1.7.10.14 | LS5-FLUSHGRIND | 3h | 2017-11-16 15:17 A | 2017-11-16 18:17 A | 169 | 100% | 2017-08-30 14:26 | 2017-08-30 17:26 | 3h | Grinder | 3h | 3h | 168.75 | 168.75 | 168.75 |
| 171 | 1.7.10.15 | LS5-INSIDEWELDING | 4h | 2017-11-16 18:17 A | 2017-11-17 06:17 A | 170 | 100% | 2017-08-30 17:26 | 2017-08-30 21:26 | 4h | Helper [200%]; SAW Welder | 12h | 12h | 675 | 675 | 675 |
| 172 | 1.7.10.16 | LS5-FLUSHGRIND | 3h | 2017-11-17 06:17 A | 2017-11-17 09:17 A | 171 | 100% | 2017-08-30 21:26 | 2017-08-31 08:26 | 3h | Grinder | 3h | 3h | 168.75 | 168.75 | 168.75 |
| 173 | 1.7.10.17 | LS5-REROLLING | 3h | 2017-11-17 09:17 A | 2017-11-17 12:17 A | 172 | 100% | 2017-08-31 08:26 | 2017-08-31 11:26 | 3h | Fitter; Helper [200%] | 9h | 9h | 506.25 | 506.25 | 506.25 |
| 174 | 1.7.10.18 | LS5-DPCHECK | 2h | 2017-11-17 12:17 A | 2017-11-17 14:18 A | 173 | 100% | 2017-08-31 11:26 | 2017-08-31 13:26 | 2h | Fitter | 2h | 2h | 137.5 | 137.5 | 137.5 |
| 175 | 1.7.10.19 | LS5-RADIOGRAPHY | 1.81d | 2017-11-17 14:18 A | 2017-11-18 12:48 A | 174 | 100% | 2017-08-31 13:26 | 2017-09-01 11:57 | 1.81d | Fitter | 14.5h | 14.5h | 996.88 | 996.88 | 996.88 |

Notes:
- 137: 4634*1270Lg*25T
- 149: 4.34Kg/m
- 155: SC
- 157: 4634*444.5Lg*25T
- 169: 4.34Kg/m
- 175: SC

| ID | WBS | Task | Duration | Start | Finish | Predecessors | Complete | Baseline start | Baseline finish | Baseline duration | Resources | Work | Actual work | Cost | Baseline cost | Actual cost |
| --- | --- | --- | --- | --- | --- | --- | --- | --- | --- | --- | --- | --- | --- | --- | --- | --- |
| 176 | 1.7.11 | **PASS PARTITION PLATE WELDING** | 18.5d | 2018-02-23 06:00 A | 2018-03-19 12:30 A |  | 100% | 2017-08-28 15:39 | 2017-09-07 09:47 | 17.25d |  | 154.5h | 154.5h | 8,503.14 | 12,509.38 | 8,503.14 |
| 177 | 1.7.11.1 | PP PLATE MARKING | 16h | 2018-02-23 06:00 A | 2018-02-23 22:00 A | 48, 157 | 100% | 2017-08-28 15:39 | 2017-08-28 18:39 | 3h | Fitter; Helper; Plate (Cost) [0.1%] | 6h | 6h | 356.25 | 356.25 | 356.25 |
| 178 | 1.7.11.2 | CUTTING | 4h | 2018-02-26 06:00 A | 2018-02-26 10:00 A | 177 | 100% | 2017-08-28 18:39 | 2017-08-29 06:39 | 4h | Gas Cutter; Helper | 8h | 8h | 475 | 475 | 475 |
| 179 | 1.7.11.3 | GRINDING | 15h | 2018-02-26 10:00 A | 2018-02-27 09:00 A | 178 | 100% | 2017-08-29 06:39 | 2017-08-29 21:40 | 15h | Grinder | 15h | 15h | 843.75 | 843.75 | 843.75 |
| 180 | 1.7.11.4 | FLUSH GRIND | 32h | 2018-03-08 06:00 A | 2018-03-09 22:00 A | 179 | 100% | 2017-09-01 08:42 | 2017-09-02 12:43 | 20h | Grinder | 20h | 20h | 1,125 | 1,125 | 1,125 |
| 181 | 1.7.11.5 | WELDING | 55.5h | 2018-03-13 06:00 A | 2018-03-16 13:30 A | 180 | 100% | 2017-09-02 12:43 | 2017-09-05 10:45 | 30h | SAW Welder; Helper [200%] | 74.5h | 74.5h | 3,996.89 | 3,996.88 | 3,996.89 |
| 182 | 1.7.11.6 | FLUSH GRIND | 25h | 2018-03-16 13:30 A | 2018-03-19 06:30 A | 181 | 100% | 2017-09-05 10:45 | 2017-09-06 19:47 | 25h | Grinder | 25h | 25h | 1,406.25 | 1,406.25 | 1,406.25 |
| 183 | 1.7.11.7 | CLEANING | 6h | 2018-03-19 06:30 A | 2018-03-19 12:30 A | 182 | 100% | 2017-09-06 19:47 | 2017-09-07 09:47 | 6h | Helper | 6h | 6h | 300 | 300 | 300 |
| 184 | 1.7.12 | **BARREL DISH FORMING** | 8.68d | 2017-11-14 19:30 A | 2017-11-24 14:55 A |  | 100% | 2017-08-28 18:39 | 2017-09-04 21:07 | 12.3d |  | 83.75h | 83.75h | 5,057.82 | 5,057.81 | 5,057.82 |
| 185 | 1.7.12.1 | DISH PLATE MARKING | 2h | 2017-11-14 19:30 A | 2017-11-14 21:30 A | 35, 177 | 100% | 2017-08-28 18:39 | 2017-08-28 20:39 | 2h | Fitter; Helper; Plate (Cost) | 4h | 4h | 237.5 | 237.5 | 237.5 |
| 186 | 1.7.12.2 | DISH PLATE CUTTING | 2h | 2017-11-14 21:30 A | 2017-11-15 07:30 A | 185 | 100% | 2017-08-28 20:39 | 2017-08-29 06:39 | 2h | Gas Cutter; Helper | 4h | 4h | 237.5 | 237.5 | 237.5 |
| 187 | 1.7.12.3 | DISH PLATE GRINDING | 4h | 2017-11-15 07:30 A | 2017-11-15 11:30 A | 186 | 100% | 2017-08-29 06:39 | 2017-08-29 10:39 | 4h | Grinder [200%] | 8h | 8h | 450 | 450 | 450 |
| 188 | 1.7.12.4 | DISH FORMING | 5.44d | 2017-11-15 11:30 A | 2017-11-21 16:00 A | 187 | 100% | 2017-08-29 10:39 | 2017-09-01 06:12 | 5.44d |  |  |  |  |  |  |
| 189 | 1.7.12.5 | DISH INSPECTION | 0.45d | 2017-11-21 16:00 A | 2017-11-21 19:37 A | 188 | 100% | 2017-09-01 06:12 | 2017-09-01 09:49 | 0.45d | Fitter [200%] | 7.25h | 7.25h | 498.44 | 498.44 | 498.44 |
| 190 | 1.7.12.6 | DISH SURFACE GRINDING | 25h | 2017-11-21 19:37 A | 2017-11-23 12:38 A | 189 | 100% | 2017-09-01 09:49 | 2017-09-02 18:51 | 25h | Grinder | 25h | 25h | 1,406.25 | 1,406.25 | 1,406.25 |
| 191 | 1.7.12.7 | SF MARKING | 2h | 2017-11-23 12:38 A | 2017-11-23 14:39 A | 190 | 100% | 2017-09-02 18:51 | 2017-09-02 20:51 | 2h | Fitter [200%]; Helper | 6h | 6h | 375 | 375 | 375 |
| 192 | 1.7.12.8 | SF CUTTING | 2h | 2017-11-23 14:39 A | 2017-11-23 16:39 A | 191 | 100% | 2017-09-02 20:51 | 2017-09-04 06:51 | 2h | Gas Cutter; Helper | 4h | 4h | 237.5 | 237.5 | 237.5 |
| 193 | 1.7.12.9 | GRINDING | 4h | 2017-11-23 16:39 A | 2017-11-23 20:39 A | 192 | 100% | 2017-09-04 06:51 | 2017-09-04 10:51 | 4h | Grinder [200%] | 8h | 8h | 450 | 450 | 450 |
| 194 | 1.7.12.10 | DISH EP | 3h | 2017-11-23 20:39 A | 2017-11-24 07:39 A | 193 | 100% | 2017-09-04 10:51 | 2017-09-04 13:51 | 3h | Grinder | 3h | 3h | 168.75 | 168.75 | 168.75 |
| 195 | 1.7.12.11 | DISH READY FOR INS | 0.91d | 2017-11-24 07:39 A | 2017-11-24 14:55 A | 194 | 100% | 2017-09-04 13:51 | 2017-09-04 21:07 | 0.91d | Fitter [200%] | 14.5h | 14.5h | 996.88 | 996.88 | 996.88 |
| 196 | 1.7.13 | **FLOATING HEAD DISH FORMING** | 8.18d | 2017-11-14 21:30 A | 2017-11-24 09:54 A |  | 100% | 2017-08-28 20:39 | 2017-09-04 17:07 | 11.55d |  | 71.75h | 71.75h | 4,357.82 | 4,357.81 | 4,357.82 |
| 197 | 1.7.13.1 | DISH PLATE MARKING | 2h | 2017-11-14 21:30 A | 2017-11-15 07:30 A | 71, 185 | 100% | 2017-08-28 20:39 | 2017-08-29 06:39 | 2h | Fitter; Helper; Plate (Cost) | 2h | 2h | 100 | 100 | 100 |
| 198 | 1.7.13.2 | DISH PLATE CUTTING | 2h | 2017-11-15 07:30 A | 2017-11-15 09:30 A | 197 | 100% | 2017-08-29 06:39 | 2017-08-29 08:39 | 2h | Gas Cutter; Helper | 4h | 4h | 237.5 | 237.5 | 237.5 |
| 199 | 1.7.13.3 | DISH PLATE GRINDING | 4h | 2017-11-15 09:30 A | 2017-11-15 13:30 A | 198 | 100% | 2017-08-29 08:39 | 2017-08-29 12:39 | 4h | Grinder | 4h | 4h | 225 | 225 | 225 |
| 200 | 1.7.13.4 | DISH FORMING | 5.44d | 2017-11-15 13:30 A | 2017-11-21 17:00 A | 199 | 100% | 2017-08-29 12:39 | 2017-09-01 08:12 | 5.44d |  |  |  |  |  |  |
| 201 | 1.7.13.5 | DISH INSPECTION | 0.91d | 2017-11-21 17:00 A | 2017-11-22 08:15 A | 200 | 100% | 2017-09-01 08:12 | 2017-09-01 15:28 | 0.91d | Fitter [200%] | 14.5h | 14.5h | 996.88 | 996.88 | 996.88 |
| 202 | 1.7.13.6 | DISH SURFACE GRINDING | 15h | 2017-11-22 08:15 A | 2017-11-23 07:16 A | 201 | 100% | 2017-09-01 15:28 | 2017-09-02 14:29 | 15h | Grinder | 15h | 15h | 843.75 | 843.75 | 843.75 |
| 203 | 1.7.13.7 | SF MARKING | 2h | 2017-11-23 07:16 A | 2017-11-23 09:16 A | 202 | 100% | 2017-09-02 14:29 | 2017-09-02 16:29 | 2h | Fitter [200%]; Helper | 6h | 6h | 375 | 375 | 375 |
| 204 | 1.7.13.8 | SF CUTTING | 2h | 2017-11-23 09:16 A | 2017-11-23 11:16 A | 203 | 100% | 2017-09-02 16:29 | 2017-09-02 18:29 | 2h | Gas Cutter; Helper | 4h | 4h | 237.5 | 237.5 | 237.5 |
| 205 | 1.7.13.9 | CLAD CHIP OFF | 4h | 2017-11-23 11:16 A | 2017-11-23 15:17 A | 204 | 100% | 2017-09-02 18:29 | 2017-09-04 06:29 | 4h | Grinder | 4h | 4h | 225 | 225 | 225 |
| 206 | 1.7.13.10 | GRINDING | 4h | 2017-11-23 15:17 A | 2017-11-23 19:17 A | 205 | 100% | 2017-09-04 06:29 | 2017-09-04 10:29 | 4h | Grinder [200%] | 8h | 8h | 450 | 450 | 450 |
| 207 | 1.7.13.11 | DISH EP | 3h | 2017-11-23 19:17 A | 2017-11-24 06:17 A | 206 | 100% | 2017-09-04 10:29 | 2017-09-04 13:29 | 3h | Grinder | 3h | 3h | 168.75 | 168.75 | 168.75 |
| 208 | 1.7.13.12 | DISH READY FOR INS | 0.45d | 2017-11-24 06:17 A | 2017-11-24 09:54 A | 207 | 100% | 2017-09-04 13:29 | 2017-09-04 17:07 | 0.45d | Fitter [200%] | 7.25h | 7.25h | 498.44 | 498.44 | 498.44 |

Notes:
- 185: DIA1910*25T
- 188: SC
- 200: SC

| ID | WBS | Task | Duration | Start | Finish | Predecessors | Complete | Baseline start | Baseline finish | Baseline duration | Constraint | Resources | Work | Actual work | Cost | Baseline cost | Actual cost |
| --- | --- | --- | --- | --- | --- | --- | --- | --- | --- | --- | --- | --- | --- | --- | --- | --- | --- |
| 209 | 1.7.14 | **NOZZLE FABRICATION** | 26d | 2018-01-13 08:00 A | 2018-02-19 07:13 A |  | 100% | 2017-08-17 06:31 | 2017-10-07 12:10 | 78.62d |  |  | 1307h | 1307h | 78,948.75 | 78,948.75 | 78,948.75 |
| 210 | 1.7.14.1 | PLATE MARKING | 10h | 2018-01-13 08:00 A | 2018-01-16 16:01 A | 35 | 100% | 2017-08-17 06:31 | 2017-08-17 16:32 | 10h |  | Fitter [200%]; Helper [200%]; Pipe (Cost) [0.1%] | 28h | 28h | 1,775 | 1,775 | 1,775 |
| 211 | 1.7.14.2 | STAMPING | 8h | 2018-01-16 16:01 A | 2018-01-17 08:01 A | 210 | 100% | 2017-08-17 16:32 | 2017-08-18 08:32 | 8h |  | Fitter [200%] | 16h | 16h | 1,100 | 1,100 | 1,100 |
| 212 | 1.7.14.3 | PL CUTTING | 12h | 2018-01-17 08:01 A | 2018-01-17 20:02 A | 211 | 100% | 2017-08-18 08:32 | 2017-08-18 20:33 | 12h |  | Gas Cutter [200%]; Helper [200%] | 24h | 24h | 1,200 | 1,200 | 1,200 |
| 213 | 1.7.14.4 | GRINDING | 20h | 2018-01-17 20:02 A | 2018-01-19 08:03 A | 212 | 100% | 2017-08-18 20:33 | 2017-08-21 08:34 | 20h |  | Grinder [200%] | 40h | 40h | 2,250 | 2,250 | 2,250 |
| 214 | 1.7.14.5 | EDGE PREPARATION | 18h | 2018-01-19 08:03 A | 2018-01-20 10:04 A | 213 | 100% | 2017-08-21 08:34 | 2017-08-22 10:35 | 18h |  | Grinder [200%] | 36h | 36h | 2,025 | 2,025 | 2,025 |
| 215 | 1.7.14.6 | PRE BENDING | 25h | 2018-01-20 10:04 A | 2018-01-22 19:06 A | 214 | 100% | 2017-08-22 10:35 | 2017-08-23 19:37 | 25h |  | Fitter; Helper | 40h | 40h | 2,468.75 | 2,468.75 | 2,468.75 |
| 216 | 1.7.14.7 | PREBEND CUTOFF | 20h | 2018-01-22 19:06 A | 2018-01-24 07:07 A | 215 | 100% | 2017-08-23 19:37 | 2017-08-28 07:38 | 20h |  | Gas Cutter; Helper | 40h | 40h | 2,375 | 2,375 | 2,375 |
| 217 | 1.7.14.8 | EDGE PREPARTION | 18h | 2018-01-24 07:07 A | 2018-01-25 09:08 A | 216 | 100% | 2017-08-28 07:38 | 2017-08-29 09:39 | 18h |  | Grinder [200%] | 36h | 36h | 2,025 | 2,025 | 2,025 |
| 218 | 1.7.14.9 | ROLLING | 36h | 2018-01-25 09:08 A | 2018-01-30 13:10 A | 217 | 100% | 2017-08-29 09:39 | 2017-08-31 13:41 | 36h |  | Fitter; Helper [200%] | 86h | 86h | 4,975 | 4,975 | 4,975 |
| 219 | 1.7.14.10 | FITUP | 36h | 2018-01-30 13:10 A | 2018-02-01 17:13 A | 218 | 100% | 2017-08-31 13:41 | 2017-09-02 17:44 | 36h |  | Fitter; Helper [200%]; SAW Welder | 80h | 80h | 5,087.5 | 5,087.5 | 5,087.5 |
| 220 | 1.7.14.11 | SPIDERUP | 25h | 2018-02-01 17:13 A | 2018-02-03 10:14 A | 219 | 100% | 2017-09-02 17:44 | 2017-09-05 10:45 | 25h |  | Fitter; Helper | 50h | 50h | 2,968.75 | 2,968.75 | 2,968.75 |
| 221 | 1.7.14.12 | FITUP INSPECTION | 3.62d | 2018-02-03 10:14 A | 2018-02-06 07:16 A | 220 | 100% | 2017-09-05 10:45 | 2017-09-07 07:47 | 3.62d |  | Fitter [200%] | 58h | 58h | 3,987.5 | 3,987.5 | 3,987.5 |
| 222 | 1.7.14.13 | WELDING | 16h | 2018-02-06 07:16 A | 2018-02-07 07:17 A | 221 | 100% | 2017-09-07 07:47 | 2017-09-08 07:48 | 16h |  | SAW Welder; Helper [200%] | 32h | 32h | 1,900 | 1,900 | 1,900 |
| 223 | 1.7.14.14 | FLUSH GRIND | 12h | 2018-02-07 07:17 A | 2018-02-07 19:18 A | 222 | 100% | 2017-09-08 07:48 | 2017-09-08 19:49 | 12h |  | Grinder [200%] | 24h | 24h | 1,350 | 1,350 | 1,350 |
| 224 | 1.7.14.15 | INSIDE WELDING | 16h | 2018-02-07 19:18 A | 2018-02-08 19:19 A | 223 | 100% | 2017-09-08 19:49 | 2017-09-11 19:50 | 16h |  | Helper [200%]; SAW Welder | 32h | 32h | 1,900 | 1,900 | 1,900 |
| 225 | 1.7.14.16 | FLUSH GRIND | 12h | 2018-02-08 19:19 A | 2018-02-09 15:20 A | 224 | 100% | 2017-09-11 19:50 | 2017-09-12 15:51 | 12h |  | Grinder [200%] | 24h | 24h | 1,350 | 1,350 | 1,350 |
| 226 | 1.7.14.17 | REROLLING | 36h | 2018-02-09 15:20 A | 2018-02-13 19:22 A | 225 | 100% | 2017-09-12 15:51 | 2017-09-14 19:53 | 36h |  | Fitter; Helper [200%] | 86h | 86h | 4,975 | 4,975 | 4,975 |
| 227 | 1.7.14.18 | DPCHECK | 12h | 2018-02-13 19:22 A | 2018-02-14 15:23 A | 226 | 100% | 2017-09-14 19:53 | 2017-09-15 15:54 | 12h |  | Fitter | 12h | 12h | 825 | 825 | 825 |
| 228 | 1.7.14.19 | RADIOGRAPHY | 3.62d | 2018-02-14 15:23 A | 2018-02-16 12:24 A | 227 | 100% | 2017-09-15 15:54 | 2017-09-18 12:55 | 3.62d |  | Fitter; Helper | 58h | 58h | 3,443.75 | 3,443.75 | 3,443.75 |
| 229 | 1.7.14.20 | WELD OVERLAY | 35h | 2018-01-29 08:00 A | 2018-01-31 11:02 A |  | 100% | 2017-09-18 12:55 | 2017-09-20 15:58 | 35h | start no earlier than 2018-01-29 08:00 | SAW Welder [200%]; Helper [400%] | 210h | 210h | 11,812.5 | 11,812.5 | 11,812.5 |
| 230 | 1.7.14.21 | FLANGE FIT UP | 18h | 2018-01-31 11:02 A | 2018-02-01 13:03 A | 43, 229 | 100% | 2017-09-20 15:58 | 2017-09-21 17:59 | 18h |  | Fitter; Helper [200%]; SAW Welder | 72h | 72h | 4,275 | 4,275 | 4,275 |
| 231 | 1.7.14.22 | WELDING | 16h | 2018-02-01 13:03 A | 2018-02-02 13:04 A | 230 | 100% | 2017-09-21 17:59 | 2017-09-22 18:00 | 16h |  | Helper [200%]; SAW Welder | 32h | 32h | 1,900 | 1,900 | 1,900 |
| 232 | 1.7.14.23 | FLUSH GRIND | 12h | 2018-02-02 13:04 A | 2018-02-03 09:05 A | 231 | 100% | 2017-09-22 18:00 | 2017-09-25 14:00 | 12h |  | Grinder [200%] | 24h | 24h | 1,350 | 1,350 | 1,350 |
| 233 | 1.7.14.24 | INSIDE WELDING | 16h | 2018-02-03 09:05 A | 2018-02-05 09:06 A | 232 | 100% | 2017-09-25 14:01 | 2017-09-26 14:02 | 16h |  | Helper [200%]; SAW Welder | 32h | 32h | 1,900 | 1,900 | 1,900 |
| 234 | 1.7.14.25 | FLUSH GRIND | 12h | 2018-02-05 09:06 A | 2018-02-05 21:07 A | 233 | 100% | 2017-09-26 14:02 | 2017-09-27 10:02 | 12h |  | Grinder | 12h | 12h | 675 | 675 | 675 |
| 235 | 1.7.14.26 | DP CHECK | 12h | 2018-02-05 21:07 A | 2018-02-06 17:08 A | 234 | 100% | 2017-09-27 10:02 | 2017-09-28 06:03 | 12h |  | Fitter | 12h | 12h | 825 | 825 | 825 |
| 236 | 1.7.14.27 | RT | 3.62d | 2018-02-06 17:08 A | 2018-02-12 14:08 A | 235 | 100% | 2017-09-28 06:03 | 2017-09-29 19:05 | 3.62d |  |  |  |  |  |  |  |
| 237 | 1.7.14.28 | MACHINING | 3.62d | 2018-02-12 14:08 A | 2018-02-14 11:09 A | 236 | 100% | 2017-09-29 19:05 | 2017-10-03 16:07 | 3.62d |  | Lathe Operator | 29h | 29h | 3,480 | 3,480 | 3,480 |
| 238 | 1.7.14.29 | PROFILE MARKING | 10h | 2018-02-14 11:09 A | 2018-02-14 21:10 A | 237 | 100% | 2017-10-03 16:07 | 2017-10-04 10:07 | 10h |  | Fitter; Helper | 20h | 20h | 1,187.5 | 1,187.5 | 1,187.5 |
| 239 | 1.7.14.30 | PROFILE CUTTING | 12h | 2018-02-14 21:10 A | 2018-02-15 17:11 A | 238 | 100% | 2017-10-04 10:07 | 2017-10-05 06:08 | 12h |  | Gas Cutter; Helper | 24h | 24h | 1,425 | 1,425 | 1,425 |
| 240 | 1.7.14.31 | PROFILE GRINDING | 20h | 2018-02-15 17:11 A | 2018-02-16 21:12 A | 239 | 100% | 2017-10-05 06:08 | 2017-10-06 10:09 | 20h |  | Grinder | 20h | 20h | 1,125 | 1,125 | 1,125 |
| 241 | 1.7.14.32 | EDEGE PREPARATION | 18h | 2018-02-16 21:12 A | 2018-02-19 07:13 A | 240 | 100% | 2017-10-06 10:09 | 2017-10-07 12:10 | 18h |  | Grinder | 18h | 18h | 1,012.5 | 1,012.5 | 1,012.5 |

Notes:
- 209: 12NOS
- 236: SC

| ID | WBS | Task | Duration | Start | Finish | Predecessors | Complete | Baseline start | Baseline finish | Baseline duration | Constraint | Resources | Work | Actual work | Cost | Baseline cost | Actual cost |
| --- | --- | --- | --- | --- | --- | --- | --- | --- | --- | --- | --- | --- | --- | --- | --- | --- | --- |
| 242 | 1.7.15 | **FLANGE WELD OVERLAY & M/C** | 21.44d | 2018-02-05 06:00 A | 2018-03-03 12:00 A |  | 100% | 2017-08-17 06:31 | 2017-08-21 18:35 | 7.5d |  |  | 90h | 90h | 5,343.75 | 10,687.5 | 5,343.75 |
| 243 | 1.7.15.1 | CH COVER FLG | 48h | 2018-02-05 06:00 A | 2018-02-28 22:00 A | 39 | 100% | 2017-08-17 21:32 | 2017-08-18 20:33 | 15h |  | SAW Welder; Helper [200%]; Forging Non-Std (Cost) [0.1%] | 30h | 30h | 1,781.25 | 1,781.25 | 1,781.25 |
| 244 | 1.7.15.2 | CH FRONT FLG | 23h | 2018-03-01 06:00 A | 2018-03-02 13:00 A | 39, 243 | 100% | 2017-08-18 20:33 | 2017-08-19 19:34 | 15h |  | SAW Welder; Helper [200%] | 30h | 30h | 1,781.25 | 1,781.25 | 1,781.25 |
| 245 | 1.7.15.3 | FLOATING HEAD FLG | 15h | 2018-03-02 13:00 A | 2018-03-03 12:00 A | 41, 244 | 100% | 2017-08-19 19:34 | 2017-08-21 18:35 | 15h |  | Helper [200%]; SAW Welder | 30h | 30h | 1,781.25 | 1,781.25 | 1,781.25 |
| 246 | 1.7.16 | **TUBESHEET FABRICATION** | 8.39d | 2018-01-16 16:01 A | 2018-01-29 10:09 A |  | 100% | 2017-12-29 06:00 | 2018-01-08 16:09 | 17.25d |  |  | 212h | 212h | 14,290 | 14,290 | 14,290 |
| 247 | 1.7.16.1 | TUBESHEET MARKING | 4h | 2018-01-16 16:01 A | 2018-01-16 20:01 A | 71, 210 | 100% | 2017-12-29 06:00 | 2017-12-29 10:00 | 4h | start no earlier than 2017-12-29 06:00 | Fitter [200%]; Helper; Tube Sheet (Cost) [0.1%] | 4h | 4h | 200 | 200 | 200 |
| 248 | 1.7.16.2 | STAMPING | 2h | 2018-01-16 20:01 A | 2018-01-17 06:01 A | 247 | 100% | 2017-12-29 10:00 | 2017-12-29 12:00 | 2h |  | Fitter | 2h | 2h | 137.5 | 137.5 | 137.5 |
| 249 | 1.7.16.3 | PLASMA ARC CUTTING | 7h | 2018-01-17 06:01 A | 2018-01-17 13:01 A | 248 | 100% | 2017-12-29 12:00 | 2017-12-29 19:01 | 7h |  | Gas Cutter [200%]; Helper | 21h | 21h | 1,312.5 | 1,312.5 | 1,312.5 |
| 250 | 1.7.16.4 | GRINDING | 7h | 2018-01-17 13:01 A | 2018-01-17 20:02 A | 249 | 100% | 2017-12-29 19:01 | 2017-12-30 10:01 | 7h |  | Grinder [200%] | 14h | 14h | 787.5 | 787.5 | 787.5 |
| 251 | 1.7.16.5 | MACHINING | 1.81d | 2018-01-17 20:02 A | 2018-01-18 18:33 A | 250 | 100% | 2017-12-30 10:01 | 2018-01-01 08:32 | 1.81d |  | Lathe Operator; Helper | 29h | 29h | 2,465 | 2,465 | 2,465 |
| 252 | 1.7.16.6 | HOLES MARKING | 1.81d | 2018-01-18 18:33 A | 2018-01-19 17:04 A | 251 | 100% | 2018-01-01 08:32 | 2018-01-02 07:03 | 1.81d |  | Fitter [200%] | 29h | 29h | 1,993.75 | 1,993.75 | 1,993.75 |
| 253 | 1.7.16.7 | DRILLING | 5.44d | 2018-01-19 17:04 A | 2018-01-23 12:36 A | 252 | 100% | 2018-01-02 07:03 | 2018-01-04 18:36 | 5.44d |  | Driller | 43.5h | 43.5h | 2,990.62 | 2,990.62 | 2,990.62 |
| 254 | 1.7.16.8 | EXPANSION GROOVING | 12h | 2018-01-23 12:36 A | 2018-01-24 08:37 A | 253 | 100% | 2018-01-04 18:36 | 2018-01-05 14:37 | 12h |  | Fitter; Helper [200%] | 32h | 32h | 1,825 | 1,825 | 1,825 |
| 255 | 1.7.16.9 | TIE ROD HOLE MARKING | 4h | 2018-01-24 08:37 A | 2018-01-24 12:37 A | 254 | 100% | 2018-01-05 14:37 | 2018-01-05 18:37 | 4h |  | Fitter [200%] | 8h | 8h | 550 | 550 | 550 |
| 256 | 1.7.16.10 | TIE ROD HOLE DRILLING | 15h | 2018-01-24 12:37 A | 2018-01-25 11:38 A | 255 | 100% | 2018-01-05 18:37 | 2018-01-06 17:38 | 15h |  | Driller | 15h | 15h | 1,031.25 | 1,031.25 | 1,031.25 |
| 257 | 1.7.16.11 | FINAL INSPECTION | 1.81d | 2018-01-25 11:38 A | 2018-01-29 10:09 A | 256 | 100% | 2018-01-06 17:38 | 2018-01-08 16:09 | 1.81d |  | Fitter | 14.5h | 14.5h | 996.88 | 996.88 | 996.88 |
| 258 | 1.7.17 | **FULL SUPPORT PLATE PREPARATION** | 8.56d | 2018-02-26 06:00 A | 2018-03-07 14:00 A |  | 100% | 2017-12-29 10:00 | 2018-01-06 21:08 | 15.38d |  |  | 244h | 244h | 16,212.5 | 15,975 | 16,212.5 |
| 259 | 1.7.17.1 | PLATE MARKING | 32h | 2018-02-26 06:00 A | 2018-02-27 22:00 A | 49, 247 | 100% | 2017-12-29 10:00 | 2017-12-29 12:00 | 2h |  | Fitter; Helper; Plate (Cost) [0.1%] | 6h | 6h | 337.5 | 237.5 | 337.5 |
| 260 | 1.7.17.2 | CUTTING | 18h | 2018-02-26 06:00 A | 2018-02-28 08:00 A | 259 | 100% | 2017-12-29 12:00 | 2017-12-29 14:00 | 2h |  | Gas Cutter; Helper | 6h | 6h | 375 | 237.5 | 375 |
| 261 | 1.7.17.3 | GRINDING | 16h | 2018-02-26 06:00 A | 2018-02-26 22:00 A | 260 | 100% | 2017-12-29 14:01 | 2017-12-29 19:01 | 5h |  | Grinder | 5h | 5h | 281.25 | 281.25 | 281.25 |
| 262 | 1.7.17.4 | AXIS LINE MARKING | 16h | 2018-02-26 06:00 A | 2018-02-26 22:00 A | 261 | 100% | 2017-12-29 19:01 | 2017-12-29 20:01 | 1h |  | Fitter [200%] | 2h | 2h | 137.5 | 137.5 | 137.5 |
| 263 | 1.7.17.5 | SLOT MARKING | 18h | 2018-02-26 06:00 A | 2018-02-27 08:00 A | 262 | 100% | 2017-12-29 20:01 | 2017-12-30 06:01 | 2h |  | Fitter [200%]; Helper | 6h | 6h | 375 | 375 | 375 |
| 264 | 1.7.17.6 | SLOT CUTTING | 3h | 2018-02-27 08:00 A | 2018-02-27 11:00 A | 263 | 100% | 2017-12-30 06:01 | 2017-12-30 09:01 | 3h |  | Gas Cutter; Helper | 6h | 6h | 356.25 | 356.25 | 356.25 |
| 265 | 1.7.17.7 | GRINDING | 4h | 2018-02-27 11:00 A | 2018-02-27 15:00 A | 264 | 100% | 2017-12-30 09:01 | 2017-12-30 13:01 | 4h |  | Grinder | 4h | 4h | 225 | 225 | 225 |
| 266 | 1.7.17.8 | DRILLING | 52h | 2018-02-27 15:00 A | 2018-03-02 19:00 A | 265 | 100% | 2017-12-30 13:01 | 2018-01-03 10:04 | 45h |  | Driller [200%] | 90h | 90h | 6,187.5 | 6,187.5 | 6,187.5 |
| 267 | 1.7.17.9 | HOLE CHAMFERING | 40h | 2018-03-02 19:00 A | 2018-03-06 11:00 A | 266 | 100% | 2018-01-03 10:04 | 2018-01-05 18:07 | 40h |  | Driller [200%] | 80h | 80h | 5,500 | 5,500 | 5,500 |
| 268 | 1.7.17.10 | NOTCH FOR SEALING/SLIDING STRIP | 9h | 2018-03-06 11:00 A | 2018-03-06 20:00 A | 267 | 100% | 2018-01-05 18:07 | 2018-01-06 11:07 | 9h |  | Gas Cutter; Helper; Fitter | 27h | 27h | 1,687.5 | 1,687.5 | 1,687.5 |
| 269 | 1.7.17.11 | TIE ROD/SEAL ROAD DRILLING | 8h | 2018-03-06 20:00 A | 2018-03-07 12:00 A | 268 | 100% | 2018-01-06 11:07 | 2018-01-06 19:08 | 8h |  | Driller | 8h | 8h | 550 | 550 | 550 |
| 270 | 1.7.17.12 | CLEANING | 2h | 2018-03-07 12:00 A | 2018-03-07 14:00 A | 269 | 100% | 2018-01-06 19:08 | 2018-01-06 21:08 | 2h |  | Helper [200%] | 4h | 4h | 200 | 200 | 200 |

Notes:
- 247: STATIONARY+FLOATING

| ID | WBS | Task | Duration | Start | Finish | Predecessors | Complete | Baseline start | Baseline finish | Baseline duration | Constraint | Resources | Work | Actual work | Cost | Baseline cost | Actual cost |
| --- | --- | --- | --- | --- | --- | --- | --- | --- | --- | --- | --- | --- | --- | --- | --- | --- | --- |
| 271 | 1.7.18 | **BAFFLE PREPARATION** | 29.21d | 2017-10-16 08:00 A | 2017-11-22 10:10 A |  | 100% | 2017-12-29 12:00 | 2018-02-03 09:42 | 53.66d |  |  | 910.75h | 910.75h | 57,517.19 | 57,517.19 | 57,517.19 |
| 272 | 1.7.18.1 | PLATE MARKING | 4h | 2017-10-16 08:00 A | 2017-10-16 12:00 A |  | 100% | 2017-12-29 12:00 | 2017-12-29 16:01 | 4h | start no earlier than 2017-10-16 08:00 | Fitter; Helper; Plate (Cost) [0.1%] | 8h | 8h | 475 | 475 | 475 |
| 273 | 1.7.18.2 | CUTTING | 6h | 2017-10-17 08:00 A | 2017-10-17 14:00 A |  | 100% | 2017-12-29 16:01 | 2017-12-30 06:01 | 6h | start no earlier than 2017-10-17 08:00 | Gas Cutter [200%]; Helper [200%] | 12h | 12h | 600 | 600 | 600 |
| 274 | 1.7.18.3 | GRINDING | 15h | 2017-10-17 14:01 A | 2017-10-18 13:01 A | 273 | 100% | 2017-12-30 06:01 | 2017-12-30 21:02 | 15h |  | Grinder [200%] | 30h | 30h | 1,687.5 | 1,687.5 | 1,687.5 |
| 275 | 1.7.18.4 | AXIS LINE MARKING | 2.5h | 2017-10-18 13:01 A | 2017-10-18 15:32 A | 274 | 100% | 2017-12-30 21:02 | 2018-01-01 07:32 | 2.5h |  | Fitter [200%] | 5h | 5h | 343.75 | 343.75 | 343.75 |
| 276 | 1.7.18.5 | STACKKING | 4h | 2017-10-21 08:00 A | 2017-10-21 12:00 A |  | 100% | 2018-01-01 07:32 | 2018-01-01 11:32 | 4h | start no earlier than 2017-10-21 08:00 | Helper [200%] | 8h | 8h | 400 | 400 | 400 |
| 277 | 1.7.18.6 | DRILLING | 4.35w | 2017-10-21 12:00 A | 2017-11-04 10:11 A | 276 | 100% | 2018-01-01 11:32 | 2018-01-16 09:43 | 4.35w |  | Driller | 174h | 174h | 11,962.5 | 11,962.5 | 11,962.5 |
| 278 | 1.7.18.7 | DE-STACKING | 4h | 2017-11-04 10:11 A | 2017-11-04 14:12 A | 277 | 100% | 2018-01-16 09:43 | 2018-01-16 13:43 | 4h |  | Helper [200%] | 8h | 8h | 400 | 400 | 400 |
| 279 | 1.7.18.8 | GRIND THE STACKS | 25h | 2017-11-04 14:12 A | 2017-11-07 07:13 A | 278 | 100% | 2018-01-16 13:43 | 2018-01-18 06:45 | 25h |  | Grinder [200%] | 50h | 50h | 2,812.5 | 2,812.5 | 2,812.5 |
| 280 | 1.7.18.9 | HOLE CHAMFERING | 3.26w | 2017-11-07 07:13 A | 2017-11-17 09:51 A | 279 | 100% | 2018-01-18 06:45 | 2018-01-30 09:23 | 3.26w |  | Fitter [200%]; Helper | 391.5h | 391.5h | 24,468.75 | 24,468.75 | 24,468.75 |
| 281 | 1.7.18.10 | NOTCH FOR SEALING/SLIDING STRIP | 28h | 2017-11-17 09:51 A | 2017-11-18 21:53 A | 280 | 100% | 2018-01-30 09:23 | 2018-01-31 21:25 | 28h |  | Gas Cutter [200%]; Helper; Fitter | 112h | 112h | 7,175 | 7,175 | 7,175 |
| 282 | 1.7.18.11 | TIE ROD/SEAL ROAD DRILLING | 28h | 2017-11-18 21:53 A | 2017-11-21 17:55 A | 281 | 100% | 2018-01-31 21:25 | 2018-02-02 17:27 | 28h |  | Driller [50%]; Rod (Cost) [0.1%] | 28h | 28h | 1,925 | 1,925 | 1,925 |
| 283 | 1.7.18.12 | BAFFLE NUMERING | 3h | 2017-11-17 09:51 A | 2017-11-17 12:51 A | 280 | 100% | 2018-01-30 09:23 | 2018-01-30 12:23 | 3h |  | Fitter; Helper | 6h | 6h | 356.25 | 356.25 | 356.25 |
| 284 | 1.7.18.13 | BAFFLE TYPE A & B ASSY | 17h | 2017-11-17 12:51 A | 2017-11-18 13:52 A | 283 | 100% | 2018-01-30 12:23 | 2018-01-31 13:24 | 17h |  | Fitter; Helper | 34h | 34h | 2,018.75 | 2,018.75 | 2,018.75 |
| 285 | 1.7.18.14 | BAFFLE TYPE A & B HOLE MATCHING | 2.72d | 2017-11-18 13:52 A | 2017-11-20 19:39 A | 284 | 100% | 2018-01-31 13:24 | 2018-02-01 19:11 | 2.72d |  | Fitter | 21.75h | 21.75h | 1,495.31 | 1,495.31 | 1,495.31 |
| 286 | 1.7.18.15 | BAFFLE TYPE A & B HOLES DRILLING IF REQD | 1.81d | 2017-11-20 19:39 A | 2017-11-21 18:10 A | 285 | 100% | 2018-02-01 19:11 | 2018-02-02 17:42 | 1.81d |  | Driller | 14.5h | 14.5h | 996.88 | 996.88 | 996.88 |
| 287 | 1.7.18.16 | CLEANING | 8h | 2017-11-21 18:10 A | 2017-11-22 10:10 A | 286 | 100% | 2018-02-02 17:42 | 2018-02-03 09:42 | 8h |  | Helper | 8h | 8h | 400 | 400 | 400 |
| 288 | 1.7.19 | **SEALING STRIP** | 5.94d | 2018-02-27 06:00 A | 2018-03-05 17:00 A |  | 100% | 2017-12-29 16:01 | 2018-01-04 06:05 | 8.75d |  |  | 113h | 113h | 7,243.75 | 7,243.75 | 7,243.75 |
| 289 | 1.7.19.1 | SEALING STRIP MARKING | 23.5h | 2018-02-27 06:00 A | 2018-02-28 13:30 A | 54, 272 | 100% | 2017-12-29 16:01 | 2017-12-30 15:02 | 15h |  | Fitter [200%]; Plate (Cost) [0.1%] | 30h | 30h | 2,062.5 | 2,062.5 | 2,062.5 |
| 290 | 1.7.19.2 | SEAL/SLIDING STRIP CUTTING | 33h | 2018-02-28 13:30 A | 2018-03-02 14:30 A | 289 | 100% | 2017-12-30 15:02 | 2018-01-01 17:03 | 18h |  | Gas Cutter; Helper | 36h | 36h | 2,137.5 | 2,137.5 | 2,137.5 |
| 291 | 1.7.19.3 | STRIP GRINDING | 7.5h | 2018-03-02 14:30 A | 2018-03-02 22:00 A | 290 | 100% | 2018-01-01 17:03 | 2018-01-02 16:04 | 15h |  | Grinder | 15h | 15h | 843.75 | 843.75 | 843.75 |
| 292 | 1.7.19.4 | STRIP BEND REMEOVAL | 21h | 2018-03-03 06:00 A | 2018-03-05 11:00 A | 291 | 100% | 2018-01-02 16:04 | 2018-01-03 10:04 | 10h |  | Fitter [200%] | 20h | 20h | 1,375 | 1,375 | 1,375 |
| 293 | 1.7.19.5 | STRIP MATCHING | 27h | 2018-03-03 06:00 A | 2018-03-05 17:00 A | 292 | 100% | 2018-01-03 10:04 | 2018-01-04 06:05 | 12h |  | Fitter | 12h | 12h | 825 | 825 | 825 |
| 294 | 1.7.20 | **TIE ROD PREPARATION** | 1.69d | 2017-10-17 11:00 A | 2017-10-20 08:02 A |  | 100% | 2017-12-30 15:02 | 2018-01-02 12:03 | 3.62d |  |  | 29h | 29h | 2,736.87 | 2,736.88 | 2,736.87 |
| 295 | 1.7.20.1 | TIE ROD MARKING | 7.5h | 2017-10-17 11:00 A | 2017-10-17 18:31 A | 54, 289 | 100% | 2017-12-30 15:02 | 2018-01-01 06:32 | 7.5h |  | Fitter; Rod (Cost) [0.1%] | 7.5h | 7.5h | 515.62 | 515.62 | 515.62 |
| 296 | 1.7.20.2 | TIE ROD CUTTING | 7h | 2017-10-17 18:30 A | 2017-10-18 09:32 A | 295 | 100% | 2018-01-01 06:32 | 2018-01-01 13:32 | 7h |  | Gas Cutter | 7h | 7h | 481.25 | 481.25 | 481.25 |
| 297 | 1.7.20.3 | THREAD MC | 1.81d | 2017-10-18 09:30 A | 2017-10-20 08:02 A | 296 | 100% | 2018-01-01 13:32 | 2018-01-02 12:03 | 1.81d |  | Lathe Operator | 14.5h | 14.5h | 1,740 | 1,740 | 1,740 |

Notes:
- 288: 10NOS
- 294: 10NOS

| ID | WBS | Task | Duration | Start | Finish | Predecessors | Complete | Baseline start | Baseline finish | Baseline duration | Constraint | Resources | Work | Actual work | Cost | Baseline cost | Actual cost |
| --- | --- | --- | --- | --- | --- | --- | --- | --- | --- | --- | --- | --- | --- | --- | --- | --- | --- |
| 298 | 1.7.21 | **SPACER TUBE PREPARATION** | 4d | 2018-01-29 08:00 A | 2018-02-01 18:04 A |  | 100% | 2018-01-01 06:32 | 2018-01-04 16:36 | 7.25d |  |  | 79h | 79h | 6,805 | 6,805 | 6,805 |
| 299 | 1.7.21.1 | TUBE MARKING | 15h | 2018-01-29 08:00 A | 2018-01-30 07:01 A | 53, 295 | 100% | 2018-01-01 06:32 | 2018-01-01 21:33 | 15h | start no earlier than 2018-01-29 08:00 | Fitter [200%]; Tube (Cost) [0.1%] | 30h | 30h | 2,062.5 | 2,062.5 | 2,062.5 |
| 300 | 1.7.21.2 | TUBE CUTTING | 14h | 2018-01-30 07:01 A | 2018-01-30 21:02 A | 299 | 100% | 2018-01-01 21:33 | 2018-01-02 19:34 | 14h |  | Gas Cutter; Helper | 20h | 20h | 1,262.5 | 1,262.5 | 1,262.5 |
| 301 | 1.7.21.3 | TUBE M/C | 3.62d | 2018-01-30 21:02 A | 2018-02-01 18:04 A | 300 | 100% | 2018-01-02 19:34 | 2018-01-04 16:36 | 3.62d |  | Lathe Operator | 29h | 29h | 3,480 | 3,480 | 3,480 |
| 302 | 1.7.22 | **TUBE BUNDLE ASSEMBLY** | 38.65d | 2018-01-29 10:09 A | 2018-03-17 16:22 A |  | 100% | 2018-01-08 16:09 | 2018-02-05 06:20 | 38.73d |  |  | 751.88h | 751.88h | 45,353.92 | 46,591.41 | 45,353.92 |
| 303 | 1.7.22.1 | TUBE SHEET ST INSPECTION | 0.91d | 2018-01-29 10:09 A | 2018-01-29 17:25 A | 246 | 100% | 2018-01-08 16:09 | 2018-01-09 07:24 | 0.91d |  | Fitter [200%]; Tube Sheet (Cost) [0.1%] | 14.5h | 14.5h | 996.88 | 996.88 | 996.88 |
| 304 | 1.7.22.2 | TUBE SHEET FL INSPECTON | 0.91d | 2018-01-29 17:25 A | 2018-01-30 08:40 A | 303 | 100% | 2018-01-09 07:24 | 2018-01-09 14:40 | 0.91d |  | Fitter [200%] | 14.5h | 14.5h | 996.88 | 996.88 | 996.88 |
| 305 | 1.7.22.3 | ASSY FRAME SET UP | 19.98h | 2018-02-20 06:00 A | 2018-02-21 10:00 A | 304 | 100% | 2018-01-09 14:40 | 2018-01-10 06:40 | 8h |  | Fitter [200%]; Helper; SAW Welder | 32h | 32h | 2,050 | 2,050 | 2,050 |
| 306 | 1.7.22.4 | TUBE BUNDLE ASSY | 37h | 2018-02-21 10:00 A | 2018-02-23 15:00 A | 305 | 100% | 2018-01-10 06:40 | 2018-01-11 15:42 | 25h |  | Fitter [200%]; Helper; SAW Welder | 82h | 82h | 5,168.75 | 6,406.25 | 5,168.75 |
| 307 | 1.7.22.5 | TUBE TIE ROD STACK WELD | 15h | 2018-02-23 15:00 A | 2018-02-26 14:00 A | 306 | 100% | 2018-01-11 15:42 | 2018-01-12 14:43 | 15h |  | SAW Welder; Helper | 30h | 30h | 1,781.25 | 1,781.25 | 1,781.25 |
| 308 | 1.7.22.6 | SEALING+SLIDING STRIP ASSEMBLY | 18h | 2018-02-26 14:00 A | 2018-02-27 16:00 A | 307 | 100% | 2018-01-12 14:43 | 2018-01-16 16:44 | 18h |  | Fitter [200%]; Helper | 54h | 54h | 3,375 | 3,375 | 3,375 |
| 309 | 1.7.22.7 | SEALING STRIP WELDING | 32h | 2018-02-26 06:00 A | 2018-02-27 22:00 A | 308 | 100% | 2018-01-16 16:44 | 2018-01-17 15:45 | 15h |  | SAW Welder; Helper [200%] | 30h | 30h | 1,781.25 | 1,781.25 | 1,781.25 |
| 310 | 1.7.22.8 | TUBE WELDING | 6.12d | 2018-02-28 06:00 A | 2018-03-03 07:00 A | 309 | 100% | 2018-01-17 15:45 | 2018-01-19 12:46 | 3.62d |  | SAW Welder; Helper [200%]; Tube (Cost) [0.1%] | 87h | 87h | 4,893.75 | 4,893.75 | 4,893.75 |
| 311 | 1.7.22.9 | TUBE WELDING DP | 0.45d | 2018-03-03 07:00 A | 2018-03-03 10:37 A | 310 | 100% | 2018-01-19 12:46 | 2018-01-19 16:24 | 0.45d |  | Fitter | 3.62h | 3.62h | 249.22 | 249.22 | 249.22 |
| 312 | 1.7.22.10 | TUBE TRIMMING | 3.62d | 2018-03-03 10:37 A | 2018-03-06 07:37 A | 311 | 100% | 2018-01-19 16:24 | 2018-01-22 13:25 | 3.62d |  | Gas Cutter; Helper | 58h | 58h | 3,443.75 | 3,443.75 | 3,443.75 |
| 313 | 1.7.22.11 | TUBE EXPANSION | 3.62d | 2018-03-06 07:37 A | 2018-03-07 20:37 A | 312 | 100% | 2018-01-22 13:25 | 2018-01-24 10:27 | 3.62d |  | Fitter [200%]; Helper | 87h | 87h | 5,437.5 | 5,437.5 | 5,437.5 |
| 314 | 1.7.22.12 | SEALING STRIP DRESS UP | 12h | 2018-03-07 20:37 A | 2018-03-08 16:37 A | 313 | 100% | 2018-01-24 10:27 | 2018-01-25 06:28 | 12h |  | Grinder; Helper | 24h | 24h | 1,275 | 1,275 | 1,275 |
| 315 | 1.7.22.13 | INSPECTION | 0.91d | 2018-03-08 16:37 A | 2018-03-09 07:52 A | 314 | 100% | 2018-01-25 06:28 | 2018-01-25 13:43 | 0.91d |  | Fitter | 7.25h | 7.25h | 498.44 | 498.44 | 498.44 |
| 316 | 1.7.22.14 | FLOATING HEAD FLG FIT UP | 5h | 2018-03-09 07:52 A | 2018-03-09 12:52 A | 315 | 100% | 2018-01-25 13:43 | 2018-01-25 18:44 | 5h |  | Fitter; Helper [200%]; SAW Welder; Forging Non-Std (Cost) [0.1%] | 20h | 20h | 1,187.5 | 1,187.5 | 1,187.5 |
| 317 | 1.7.22.15 | WELDING OF FLG | 22h | 2018-03-09 12:52 A | 2018-03-12 18:52 A | 316 | 100% | 2018-01-25 18:44 | 2018-01-30 08:45 | 22h |  | SAW Welder; Helper [200%] | 52h | 52h | 3,012.5 | 3,012.5 | 3,012.5 |
| 318 | 1.7.22.16 | WELDING FLUSH GRIND | 18h | 2018-03-12 18:52 A | 2018-03-13 20:52 A | 317 | 100% | 2018-01-30 08:45 | 2018-01-31 10:46 | 18h |  | SAW Welder; Helper [200%] | 38h | 38h | 2,237.5 | 2,237.5 | 2,237.5 |
| 319 | 1.7.22.17 | FL HEAD DISH FITUP | 5h | 2018-03-13 20:52 A | 2018-03-14 09:52 A | 196, 318 | 100% | 2018-01-31 10:46 | 2018-01-31 15:47 | 5h |  | Helper; Plate (Cost) [0.1%] | 5h | 5h | 250 | 250 | 250 |
| 320 | 1.7.22.18 | WELDING OF DISH | 22h | 2018-03-14 09:52 A | 2018-03-15 15:52 A | 319 | 100% | 2018-01-31 15:47 | 2018-02-01 21:48 | 22h |  | SAW Welder; Helper [200%] | 66h | 66h | 3,712.5 | 3,712.5 | 3,712.5 |
| 321 | 1.7.22.19 | FLUSH GIND | 18h | 2018-03-15 15:52 A | 2018-03-16 17:52 A | 320 | 100% | 2018-02-01 21:48 | 2018-02-03 07:49 | 18h |  | Grinder | 18h | 18h | 1,012.5 | 1,012.5 | 1,012.5 |
| 322 | 1.7.22.20 | INSPECTION | 1.81d | 2018-03-16 17:52 A | 2018-03-17 16:22 A | 321 | 100% | 2018-02-03 07:49 | 2018-02-05 06:20 | 1.81d |  | Fitter [200%] | 29h | 29h | 1,993.75 | 1,993.75 | 1,993.75 |

Notes:
- 298: 80NOS

| ID | WBS | Task | Duration | Start | Finish | Predecessors | Complete | Baseline start | Baseline finish | Baseline duration | Resources | Work | Actual work | Cost | Baseline cost | Actual cost |
| --- | --- | --- | --- | --- | --- | --- | --- | --- | --- | --- | --- | --- | --- | --- | --- | --- |
| 323 | 1.7.23 | **CS1-FITUP & WELDING** | 11d | 2017-11-22 16:00 A | 2017-12-06 16:00 A |  | 100% | 2017-09-05 07:30 | 2017-09-18 14:26 | 20.84d |  | 294.25h | 294.25h | 17,179.69 | 17,179.69 | 17,179.69 |
| 324 | 1.7.23.1 | SHELL LS2+LS3 READY | 3h | 2017-11-22 16:00 A | 2017-11-22 19:00 A | 96, 116 | 100% | 2017-09-05 07:30 | 2017-09-05 10:30 | 3h | Fitter; Plate (Cost) [0.1%] | 3h | 3h | 206.25 | 206.25 | 206.25 |
| 325 | 1.7.23.2 | SHELL EP CORRECTION | 5h | 2017-11-22 19:00 A | 2017-11-23 08:00 A | 324 | 100% | 2017-09-05 10:30 | 2017-09-05 15:31 | 5h | Grinder | 5h | 5h | 281.25 | 281.25 | 281.25 |
| 326 | 1.7.23.3 | CS1-FITUP | 6h | 2017-11-23 08:00 A | 2017-11-23 14:00 A | 325 | 100% | 2017-09-05 15:31 | 2017-09-05 21:31 | 6h | Fitter; SAW Welder; Helper [200%] | 24h | 24h | 1,425 | 1,425 | 1,425 |
| 327 | 1.7.23.4 | CS1-FITUP INSPECTION | 0.91d | 2017-11-23 14:01 A | 2017-11-23 21:16 A | 326 | 100% | 2017-09-05 21:31 | 2017-09-06 12:46 | 0.91d | Fitter | 7.25h | 7.25h | 498.44 | 498.44 | 498.44 |
| 328 | 1.7.23.5 | CS1-WELDING | 35h | 2017-11-23 21:16 A | 2017-11-28 08:18 A | 327 | 100% | 2017-09-06 12:46 | 2017-09-08 15:49 | 35h | SAW Welder; Helper [200%] | 77h | 77h | 4,506.25 | 4,506.25 | 4,506.25 |
| 329 | 1.7.23.6 | CS1-FLUSH GRIND | 20h | 2017-11-28 08:18 A | 2017-11-29 12:19 A | 328 | 100% | 2017-09-08 15:49 | 2017-09-11 19:50 | 20h | Grinder [200%] | 40h | 40h | 2,250 | 2,250 | 2,250 |
| 330 | 1.7.23.7 | CS1-DPCHECK | 3h | 2017-11-29 12:19 A | 2017-11-29 15:20 A | 329 | 100% | 2017-09-11 19:50 | 2017-09-12 06:50 | 3h | Fitter | 3h | 3h | 206.25 | 206.25 | 206.25 |
| 331 | 1.7.23.8 | CS1-INSIDE WELDING | 35h | 2017-11-29 15:20 A | 2017-12-01 18:22 A | 330 | 100% | 2017-09-12 06:50 | 2017-09-14 09:52 | 35h | Helper [200%]; SAW Welder | 77h | 77h | 4,506.25 | 4,506.25 | 4,506.25 |
| 332 | 1.7.23.9 | CS1-FLUSH GRIND | 20h | 2017-12-01 18:22 A | 2017-12-04 06:23 A | 331 | 100% | 2017-09-14 09:52 | 2017-09-15 13:53 | 20h | Grinder [200%] | 40h | 40h | 2,250 | 2,250 | 2,250 |
| 333 | 1.7.23.10 | CS1-DRESSUP | 15h | 2017-12-04 06:23 A | 2017-12-04 21:24 A | 332 | 100% | 2017-09-15 13:53 | 2017-09-16 12:54 | 15h | Grinder | 15h | 15h | 843.75 | 843.75 | 843.75 |
| 334 | 1.7.23.11 | CS1-DPCHECK | 3h | 2017-12-04 21:24 A | 2017-12-05 08:24 A | 333 | 100% | 2017-09-16 12:54 | 2017-09-16 15:55 | 3h | Fitter | 3h | 3h | 206.25 | 206.25 | 206.25 |
| 335 | 1.7.23.12 | CS1-RT | 1.81d | 2017-12-05 08:30 A | 2017-12-06 16:00 A | 334 | 100% | 2017-09-16 15:55 | 2017-09-18 14:26 | 1.81d |  |  |  |  |  |  |
| 336 | 1.7.24 | **CS2-FITUP & WELDING** | 11d | 2017-12-06 16:00 A | 2017-12-20 16:00 A |  | 100% | 2017-09-18 14:26 | 2017-09-30 21:21 | 20.84d |  | 294.25h | 294.25h | 17,179.69 | 17,179.69 | 17,179.69 |
| 337 | 1.7.24.1 | SHELL CS1+LS4 READY | 3h | 2017-12-06 16:00 A | 2017-12-06 19:00 A | 136, 323 | 100% | 2017-09-18 14:26 | 2017-09-18 17:26 | 3h | Fitter; Plate (Cost) [0.1%] | 3h | 3h | 206.25 | 206.25 | 206.25 |
| 338 | 1.7.24.2 | SHELL EP CORRECTION | 5h | 2017-12-06 19:00 A | 2017-12-07 08:00 A | 337 | 100% | 2017-09-18 17:26 | 2017-09-19 06:26 | 5h | Grinder | 5h | 5h | 281.25 | 281.25 | 281.25 |
| 339 | 1.7.24.3 | CS2-FITUP | 6h | 2017-12-07 08:00 A | 2017-12-07 14:00 A | 338 | 100% | 2017-09-19 06:26 | 2017-09-19 12:26 | 6h | Fitter; SAW Welder; Helper [200%] | 24h | 24h | 1,425 | 1,425 | 1,425 |
| 340 | 1.7.24.4 | CS2-FITUP INSPECTION | 0.91d | 2017-12-07 14:01 A | 2017-12-07 21:16 A | 339 | 100% | 2017-09-19 12:26 | 2017-09-19 19:42 | 0.91d | Fitter | 7.25h | 7.25h | 498.44 | 498.44 | 498.44 |
| 341 | 1.7.24.5 | CS2-WELDING | 35h | 2017-12-07 21:16 A | 2017-12-12 08:18 A | 340 | 100% | 2017-09-19 19:42 | 2017-09-22 06:44 | 35h | SAW Welder; Helper [200%] | 77h | 77h | 4,506.25 | 4,506.25 | 4,506.25 |
| 342 | 1.7.24.6 | CS2-FLUSH GRIND | 20h | 2017-12-12 08:18 A | 2017-12-13 12:19 A | 341 | 100% | 2017-09-22 06:44 | 2017-09-25 10:45 | 20h | Grinder [200%] | 40h | 40h | 2,250 | 2,250 | 2,250 |
| 343 | 1.7.24.7 | CS2-DPCHECK | 3h | 2017-12-13 12:19 A | 2017-12-13 15:20 A | 342 | 100% | 2017-09-25 10:45 | 2017-09-25 13:45 | 3h | Fitter | 3h | 3h | 206.25 | 206.25 | 206.25 |
| 344 | 1.7.24.8 | CS2-INSIDE WELDING | 35h | 2017-12-13 15:20 A | 2017-12-15 18:22 A | 343 | 100% | 2017-09-25 13:45 | 2017-09-27 16:48 | 35h | Helper [200%]; SAW Welder | 77h | 77h | 4,506.25 | 4,506.25 | 4,506.25 |
| 345 | 1.7.24.9 | CS2-FLUSH GRIND | 20h | 2017-12-15 18:22 A | 2017-12-18 06:23 A | 344 | 100% | 2017-09-27 16:48 | 2017-09-28 20:49 | 20h | Grinder [200%] | 40h | 40h | 2,250 | 2,250 | 2,250 |
| 346 | 1.7.24.10 | CS3-DRESSUP | 15h | 2017-12-18 06:23 A | 2017-12-18 21:24 A | 345 | 100% | 2017-09-28 20:49 | 2017-09-29 19:50 | 15h | Grinder | 15h | 15h | 843.75 | 843.75 | 843.75 |
| 347 | 1.7.24.11 | CS2-DPCHECK | 3h | 2017-12-18 21:24 A | 2017-12-19 08:24 A | 346 | 100% | 2017-09-29 19:50 | 2017-09-30 06:50 | 3h | Fitter | 3h | 3h | 206.25 | 206.25 | 206.25 |
| 348 | 1.7.24.12 | CS2-RT | 1.81d | 2017-12-19 08:30 A | 2017-12-20 16:00 A | 347 | 100% | 2017-09-30 06:50 | 2017-09-30 21:21 | 1.81d |  |  |  |  |  |  |

Notes:
- 328: 4.34Kg/m
- 335: SC
- 341: 4.34Kg/m
- 348: SC

| ID | WBS | Task | Type | Duration | Start | Finish | Predecessors | Complete | Baseline start | Baseline finish | Baseline duration | Constraint | Resources | Work | Actual work | Cost | Baseline cost | Actual cost |
| --- | --- | --- | --- | --- | --- | --- | --- | --- | --- | --- | --- | --- | --- | --- | --- | --- | --- | --- |
| 349 | 1.7.25 | **CS3-FITUP & WELDING** |  | 11.13d | 2017-11-24 14:55 A | 2017-12-08 16:00 A |  | 100% | 2017-09-04 21:07 | 2017-09-18 12:02 | 20.84d |  |  | 294.25h | 294.25h | 17,179.69 | 17,179.69 | 17,179.69 |
| 350 | 1.7.25.1 | SHELL LS7+BARREL DISH READY |  | 3h | 2017-11-24 14:55 A | 2017-11-24 17:55 A | 156, 184 | 100% | 2017-09-04 21:07 | 2017-09-05 08:07 | 3h |  | Fitter; Plate (Cost) [0.1%] | 3h | 3h | 206.25 | 206.25 | 206.25 |
| 351 | 1.7.25.2 | SHELL EP CORRECTION |  | 5h | 2017-11-24 17:55 A | 2017-11-27 06:55 A | 350 | 100% | 2017-09-05 08:07 | 2017-09-05 13:07 | 5h |  | Grinder | 5h | 5h | 281.25 | 281.25 | 281.25 |
| 352 | 1.7.25.3 | CS5-FITUP |  | 6h | 2017-11-27 06:55 A | 2017-11-27 12:55 A | 351 | 100% | 2017-09-05 13:07 | 2017-09-05 19:08 | 6h |  | Fitter; SAW Welder; Helper [200%] | 24h | 24h | 1,425 | 1,425 | 1,425 |
| 353 | 1.7.25.4 | CS5-FITUP INSPECTION |  | 0.91d | 2017-11-27 12:55 A | 2017-11-27 20:11 A | 352 | 100% | 2017-09-05 19:08 | 2017-09-06 10:23 | 0.91d |  | Fitter | 7.25h | 7.25h | 498.44 | 498.44 | 498.44 |
| 354 | 1.7.25.5 | CS5-WELDING |  | 35h | 2017-11-27 20:11 A | 2017-11-30 07:13 A | 353 | 100% | 2017-09-06 10:23 | 2017-09-08 13:25 | 35h |  | SAW Welder; Helper [200%] | 77h | 77h | 4,506.25 | 4,506.25 | 4,506.25 |
| 355 | 1.7.25.6 | CS5-FLUSH GRIND |  | 20h | 2017-11-30 07:13 A | 2017-12-01 11:14 A | 354 | 100% | 2017-09-08 13:25 | 2017-09-11 17:27 | 20h |  | Grinder [200%] | 40h | 40h | 2,250 | 2,250 | 2,250 |
| 356 | 1.7.25.7 | CS5-DPCHECK |  | 3h | 2017-12-01 11:14 A | 2017-12-01 14:15 A | 355 | 100% | 2017-09-11 17:27 | 2017-09-11 20:27 | 3h |  | Fitter | 3h | 3h | 206.25 | 206.25 | 206.25 |
| 357 | 1.7.25.8 | CS5-INSIDE WELDING |  | 35h | 2017-12-01 14:15 A | 2017-12-04 17:17 A | 356 | 100% | 2017-09-11 20:27 | 2017-09-14 07:29 | 35h |  | Helper [200%]; SAW Welder | 77h | 77h | 4,506.25 | 4,506.25 | 4,506.25 |
| 358 | 1.7.25.9 | CS5-FLUSH GRIND |  | 20h | 2017-12-04 17:17 A | 2017-12-05 21:18 A | 357 | 100% | 2017-09-14 07:29 | 2017-09-15 11:30 | 20h |  | Grinder [200%] | 40h | 40h | 2,250 | 2,250 | 2,250 |
| 359 | 1.7.25.10 | CS5-DRESSUP |  | 15h | 2017-12-05 21:18 A | 2017-12-06 20:19 A | 358 | 100% | 2017-09-15 11:30 | 2017-09-16 10:31 | 15h |  | Grinder | 15h | 15h | 843.75 | 843.75 | 843.75 |
| 360 | 1.7.25.11 | CS5-DPCHECK |  | 3h | 2017-12-06 20:19 A | 2017-12-07 07:19 A | 359 | 100% | 2017-09-16 10:31 | 2017-09-16 13:31 | 3h |  | Fitter | 3h | 3h | 206.25 | 206.25 | 206.25 |
| 361 | 1.7.25.12 | CS5-RT |  | 1.81d | 2017-12-07 08:30 A | 2017-12-08 16:00 A | 360 | 100% | 2017-09-16 13:31 | 2017-09-18 12:02 | 1.81d |  |  |  |  |  |  |  |
| 362 | 1.7.26 | **NOZZLE WELDING** |  | 9.94d | 2018-01-28 08:00 A | 2018-02-08 17:00 A |  | 100% | 2017-10-07 12:10 | 2017-10-18 16:49 | 16.56d |  |  | 148.75h | 148.75h | 8,959.99 | 14,221.88 | 8,959.99 |
| 363 | 1.7.26.1 | NOZZLE READY | milestone | 0h | 2018-01-28 08:00 A | 2018-01-28 08:00 A | 209 | 100% | 2017-10-07 12:10 | 2017-10-07 18:11 | 6h |  | Fitter; Pipe (Cost) |  |  |  | 412.5 |  |
| 364 | 1.7.26.2 | ORIENTATION MARKING |  | 8.98h | 2018-01-29 08:00 A | 2018-01-29 17:00 A | 349, 363 | 100% | 2017-10-07 18:11 | 2017-10-09 07:11 | 5h |  | Fitter; Helper | 17.97h | 17.97h | 1,066.77 | 593.75 | 1,066.77 |
| 365 | 1.7.26.3 | POSITION MARKING |  | 8.98h | 2018-01-30 08:00 A | 2018-01-30 17:00 A | 364 | 100% | 2017-10-09 07:11 | 2017-10-09 19:12 | 12h |  | Fitter; Helper | 17.97h | 17.97h | 1,066.77 | 1,425 | 1,066.77 |
| 366 | 1.7.26.4 | NOZZLE OPENING |  | 8.98h | 2018-01-31 08:00 A | 2018-01-31 17:00 A | 365 | 100% | 2017-10-09 19:12 | 2017-10-10 18:13 | 15h |  | Gas Cutter; Helper | 17.97h | 17.97h | 1,066.77 | 1,781.25 | 1,066.77 |
| 367 | 1.7.26.5 | NOZZLE EP |  | 8.98h | 2018-02-01 08:00 A | 2018-02-01 17:00 A | 366 | 100% | 2017-10-10 18:13 | 2017-10-11 20:14 | 18h |  | Grinder | 8.98h | 8.98h | 505.31 | 1,012.5 | 505.31 |
| 368 | 1.7.26.6 | NOZZLE FIT UP |  | 8.98h | 2018-02-03 08:00 A | 2018-02-03 17:00 A | 367 | 100% | 2017-10-11 20:14 | 2017-10-13 06:15 | 18h |  | Fitter; SAW Welder; Helper [200%] | 35.93h | 35.93h | 2,133.53 | 3,725 | 2,133.53 |
| 369 | 1.7.26.7 | NOZZLE WELDING | milestone | 0h | 2018-02-04 08:00 A | 2018-02-04 08:00 A | 368 | 100% | 2017-10-13 06:15 | 2017-10-16 14:17 | 24h |  | SAW Welder; Helper [200%] |  |  |  | 3,150 |  |
| 370 | 1.7.26.8 | FLUSH GRIND |  | 24.97h | 2018-02-05 08:00 A | 2018-02-06 17:00 A | 369 | 100% | 2017-10-16 14:17 | 2017-10-17 18:18 | 20h |  | Grinder | 24.97h | 24.97h | 1,404.38 | 1,125 | 1,404.38 |
| 371 | 1.7.26.9 | INSPECTION |  | 3.12d | 2018-02-07 08:00 A | 2018-02-08 17:00 A | 370 | 100% | 2017-10-17 18:18 | 2017-10-18 16:49 | 1.81d |  | Fitter | 24.97h | 24.97h | 1,716.46 | 996.88 | 1,716.46 |
| 372 | 1.7.27 | **DAVIT ARM ITEM MARKING** |  | 36.06d | 2018-01-29 17:00 A | 2018-03-15 20:00 A |  | 100% | 2017-10-09 07:11 | 2017-10-20 11:19 | 16.5d |  |  | 300h | 300h | 17,662.5 | 24,675 | 17,662.5 |
| 373 | 1.7.27.1 | DAVIT ARM PLATE MARKING |  | 5h | 2018-01-29 17:00 A | 2018-01-29 22:00 A | 349, 364 | 100% | 2017-10-09 07:11 | 2017-10-09 12:11 | 5h |  | Fitter; Helper [200%]; Pipe (Cost) [0.1%] | 15h | 15h | 843.75 | 843.75 | 843.75 |
| 374 | 1.7.27.2 | DAVIT ARM PIPE MARKING |  | 7h | 2018-01-30 06:00 A | 2018-01-30 13:00 A | 373 | 100% | 2017-10-09 12:11 | 2017-10-09 19:12 | 7h |  | Fitter; Helper [200%] | 21h | 21h | 1,181.25 | 1,181.25 | 1,181.25 |
| 375 | 1.7.27.3 | DAVIT ARM CUTTING |  | 10h | 2018-01-30 13:00 A | 2018-01-31 07:00 A | 374 | 100% | 2017-10-09 19:12 | 2017-10-10 13:12 | 10h |  | Gas Cutter [200%]; Helper | 30h | 30h | 1,875 | 1,875 | 1,875 |
| 376 | 1.7.27.4 | GRINDING |  | 12h | 2018-01-31 07:00 A | 2018-01-31 19:00 A | 375 | 100% | 2017-10-10 13:12 | 2017-10-11 09:13 | 12h |  | Grinder [200%] | 24h | 24h | 1,350 | 1,350 | 1,350 |
| 377 | 1.7.27.5 | DAVIT ARM FIT UP |  | 45h | 2018-01-31 19:00 A | 2018-02-03 16:00 A | 376 | 100% | 2017-10-11 09:13 | 2017-10-16 06:16 | 45h |  | Fitter; Helper [200%]; SAW Welder | 180h | 180h | 10,687.5 | 10,687.5 | 10,687.5 |
| 378 | 1.7.27.6 | DAVIT ARM WELDING |  | 12h | 2018-03-14 21:00 A | 2018-03-15 17:00 A |  | 100% | 2017-10-16 06:16 | 2017-10-20 08:19 | 50h | finish no earlier than 2018-03-15 17:00 | SAW Welder; Helper [200%] | 24h | 24h | 1,425 | 8,437.5 | 1,425 |
| 379 | 1.7.27.7 | CLEANING |  | 3h | 2018-03-15 17:00 A | 2018-03-15 20:00 A | 378 | 100% | 2017-10-20 08:19 | 2017-10-20 11:19 | 3h |  | Helper [200%] | 6h | 6h | 300 | 300 | 300 |

Notes:
- 354: 4.34Kg/m
- 361: SC
- 362: 12NOS

| ID | WBS | Task | Duration | Start | Finish | Predecessors | Complete | Baseline start | Baseline finish | Baseline duration | Resources | Work | Actual work | Cost | Baseline cost | Actual cost |
| --- | --- | --- | --- | --- | --- | --- | --- | --- | --- | --- | --- | --- | --- | --- | --- | --- |
| 380 | 1.7.28 | **SADDLE WELDING** | 8.83d | 2018-01-30 06:00 A | 2018-02-08 16:09 A |  | 100% | 2017-10-09 12:11 | 2017-10-21 06:20 | 17.25d |  | 257h | 257h | 16,000 | 16,000 | 16,000 |
| 381 | 1.7.28.1 | SADDLE PLATE MARKING | 6h | 2018-01-30 06:00 A | 2018-01-30 12:00 A | 51, 373 | 100% | 2017-10-09 12:11 | 2017-10-09 18:12 | 6h | Fitter [200%]; Plate (Cost) [0.1%] | 12h | 12h | 825 | 825 | 825 |
| 382 | 1.7.28.2 | SADDLE PLATE CUTTING | 8h | 2018-01-30 12:00 A | 2018-01-30 20:01 A | 381 | 100% | 2017-10-09 18:12 | 2017-10-10 10:12 | 8h | Gas Cutter; Helper | 16h | 16h | 950 | 950 | 950 |
| 383 | 1.7.28.3 | SADDLE PLATE GRINDING | 15h | 2018-01-30 20:01 A | 2018-01-31 19:02 A | 382 | 100% | 2017-10-10 10:12 | 2017-10-11 09:13 | 15h | Grinder | 15h | 15h | 843.75 | 843.75 | 843.75 |
| 384 | 1.7.28.4 | DRILLING | 4h | 2018-01-31 19:02 A | 2018-02-01 07:02 A | 383 | 100% | 2017-10-11 09:13 | 2017-10-11 13:13 | 4h | Driller | 4h | 4h | 275 | 275 | 275 |
| 385 | 1.7.28.5 | SADDLE PLATE FIT UP | 35h | 2018-02-01 07:02 A | 2018-02-03 10:04 A | 384 | 100% | 2017-10-11 13:13 | 2017-10-13 16:16 | 35h | Fitter; SAW Welder; Helper [200%] | 90h | 90h | 5,812.5 | 5,812.5 | 5,812.5 |
| 386 | 1.7.28.6 | SADDLE WELDING | 40h | 2018-02-03 10:04 A | 2018-02-06 18:07 A | 385 | 100% | 2017-10-13 16:16 | 2017-10-18 08:18 | 40h | SAW Welder; Helper [200%] | 75h | 75h | 4,500 | 4,500 | 4,500 |
| 387 | 1.7.28.7 | BEND REMOVAL | 12h | 2018-02-06 18:07 A | 2018-02-07 14:08 A | 386 | 100% | 2017-10-18 08:18 | 2017-10-18 20:19 | 12h | Fitter [200%] | 24h | 24h | 1,650 | 1,650 | 1,650 |
| 388 | 1.7.28.8 | GRINDING | 15h | 2018-02-07 14:08 A | 2018-02-08 13:08 A | 387 | 100% | 2017-10-18 20:19 | 2017-10-20 19:20 | 15h | Grinder | 15h | 15h | 843.75 | 843.75 | 843.75 |
| 389 | 1.7.28.9 | CLEANING | 3h | 2018-02-08 13:08 A | 2018-02-08 16:09 A | 388 | 100% | 2017-10-20 19:20 | 2017-10-21 06:20 | 3h | Helper [200%] | 6h | 6h | 300 | 300 | 300 |
| 390 | 1.7.29 | **NAME PLATE WELDING** | 0.56d | 2018-01-30 12:00 A | 2018-01-31 08:00 A |  | 100% | 2017-10-09 18:12 | 2017-10-10 14:13 | 1.5d |  | 24h | 24h | 1,431.25 | 1,431.25 | 1,431.25 |
| 391 | 1.7.29.1 | NAME PLATE MARKING | 2h | 2018-01-30 12:00 A | 2018-01-30 14:00 A | 47, 381 | 100% | 2017-10-09 18:12 | 2017-10-09 20:12 | 2h | Fitter [200%]; Plate (Cost) [0.1%] | 4h | 4h | 275 | 275 | 275 |
| 392 | 1.7.29.2 | CUTTING | 2h | 2018-01-30 14:00 A | 2018-01-30 16:00 A | 391 | 100% | 2017-10-09 20:12 | 2017-10-10 06:12 | 2h | Gas Cutter; Helper | 3h | 3h | 187.5 | 187.5 | 187.5 |
| 393 | 1.7.29.3 | GRINDING | 1h | 2018-01-30 16:00 A | 2018-01-30 17:00 A | 392 | 100% | 2017-10-10 06:12 | 2017-10-10 07:12 | 1h | Grinder | 1h | 1h | 56.25 | 56.25 | 56.25 |
| 394 | 1.7.29.4 | FORMING | 3h | 2018-01-30 17:00 A | 2018-01-30 20:00 A | 393 | 100% | 2017-10-10 07:12 | 2017-10-10 10:12 | 3h | Fitter; Helper | 6h | 6h | 356.25 | 356.25 | 356.25 |
| 395 | 1.7.29.5 | WELDING | 3h | 2018-01-30 20:00 A | 2018-01-31 07:00 A | 394 | 100% | 2017-10-10 10:12 | 2017-10-10 13:12 | 3h | SAW Welder; Helper [200%] | 9h | 9h | 506.25 | 506.25 | 506.25 |
| 396 | 1.7.29.6 | CLEANING | 1h | 2018-01-31 07:00 A | 2018-01-31 08:00 A | 395 | 100% | 2017-10-10 13:12 | 2017-10-10 14:13 | 1h | Helper | 1h | 1h | 50 | 50 | 50 |
| 397 | 1.7.30 | **LIFTING LUG WELDING** | 1.19d | 2018-01-30 14:01 A | 2018-01-31 15:32 A |  | 100% | 2017-10-09 20:12 | 2017-10-10 21:43 | 2.19d |  | 31.5h | 31.5h | 1,871.88 | 1,871.88 | 1,871.88 |
| 398 | 1.7.30.1 | PLATE MARKING | 2h | 2018-01-30 14:01 A | 2018-01-30 16:01 A | 35, 37, 391 | 100% | 2017-10-09 20:12 | 2017-10-10 06:12 | 2h | Fitter [200%]; Plate (Cost) [0.1%] | 4h | 4h | 275 | 275 | 275 |
| 399 | 1.7.30.2 | CUTTING | 2.5h | 2018-01-30 16:01 A | 2018-01-30 18:31 A | 398 | 100% | 2017-10-10 06:12 | 2017-10-10 08:42 | 2.5h | Gas Cutter; Helper | 4.5h | 4.5h | 271.88 | 271.88 | 271.88 |
| 400 | 1.7.30.3 | GRINDING | 4h | 2018-01-30 18:31 A | 2018-01-31 06:31 A | 399 | 100% | 2017-10-10 08:42 | 2017-10-10 12:42 | 4h | Grinder | 4h | 4h | 225 | 225 | 225 |
| 401 | 1.7.30.4 | WELDING | 8h | 2018-01-31 06:31 A | 2018-01-31 14:32 A | 400 | 100% | 2017-10-10 12:42 | 2017-10-10 20:43 | 8h | SAW Welder; Helper [200%] | 18h | 18h | 1,050 | 1,050 | 1,050 |
| 402 | 1.7.30.5 | CLEANING | 1h | 2018-01-31 14:32 A | 2018-01-31 15:32 A | 401 | 100% | 2017-10-10 20:43 | 2017-10-10 21:43 | 1h | Helper | 1h | 1h | 50 | 50 | 50 |
| 403 | 1.7.31 | **INSULATION CLEAT WELDING** | 1.19d | 2018-01-30 16:01 A | 2018-02-01 07:02 A |  | 100% | 2017-10-10 06:12 | 2017-10-11 13:13 | 2.88d |  | 29.25h | 29.25h | 1,610.94 | 1,610.94 | 1,610.94 |
| 404 | 1.7.31.1 | PLATE MARKING | 3h | 2018-01-30 16:01 A | 2018-01-30 19:01 A | 55, 398 | 100% | 2017-10-10 06:12 | 2017-10-10 09:12 | 3h | Fitter; Helper; Plate (Cost) [0.1%] | 5h | 5h | 287.5 | 287.5 | 287.5 |
| 405 | 1.7.31.2 | CUTTING | 5h | 2018-01-30 19:01 A | 2018-01-31 08:01 A | 404 | 100% | 2017-10-10 09:12 | 2017-10-10 14:13 | 5h | Gas Cutter; Helper | 6h | 6h | 318.75 | 318.75 | 318.75 |
| 406 | 1.7.31.3 | GRINDING | 5h | 2018-01-31 08:01 A | 2018-01-31 13:01 A | 405 | 100% | 2017-10-10 14:13 | 2017-10-10 19:13 | 5h | Grinder | 5h | 5h | 281.25 | 281.25 | 281.25 |
| 407 | 1.7.31.4 | WELDING | 6h | 2018-01-31 13:01 A | 2018-01-31 19:02 A | 406 | 100% | 2017-10-10 19:13 | 2017-10-11 09:13 | 6h | SAW Welder; Helper | 9.25h | 9.25h | 523.44 | 523.44 | 523.44 |
| 408 | 1.7.31.5 | CLEANING | 4h | 2018-01-31 19:02 A | 2018-02-01 07:02 A | 407 | 100% | 2017-10-11 09:13 | 2017-10-11 13:13 | 4h | Helper | 4h | 4h | 200 | 200 | 200 |

| ID | WBS | Task | Type | Duration | Start | Finish | Predecessors | Complete | Baseline start | Baseline finish | Baseline duration | Resources | Work | Actual work | Cost | Baseline cost | Actual cost |
| --- | --- | --- | --- | --- | --- | --- | --- | --- | --- | --- | --- | --- | --- | --- | --- | --- | --- |
| 409 | 1.7.32 | **SHELL ASSY** |  | 8d | 2018-01-24 08:00 A | 2018-02-04 08:00 A |  | 100% | 2017-08-17 21:32 | 2017-08-28 17:16 | 13.45d |  | 322.58h | 322.58h | 18,369.87 | 16,523.44 | 18,369.87 |
| 410 | 1.7.32.1 | SHELL FLG 1 FIT UP |  | 8.98h | 2018-01-24 08:00 A | 2018-01-24 17:00 A |  | 100% | 2017-08-17 21:32 | 2017-08-18 13:32 | 8h | Fitter; Helper [200%]; SAW Welder; Forging Non-Std (Cost) [0.1%] | 35.93h | 35.93h | 2,133.53 | 1,900 | 2,133.53 |
| 411 | 1.7.32.2 | SHELL FLG 2 FIT UP |  | 8.98h | 2018-01-25 08:00 A | 2018-01-25 17:00 A |  | 100% | 2017-08-17 21:32 | 2017-08-18 13:32 | 8h | Fitter; Helper [200%]; SAW Welder; Forging Non-Std (Cost) [0.1%] | 35.93h | 35.93h | 2,133.53 | 1,900 | 2,133.53 |
| 412 | 1.7.32.3 | CS WELDING F1 |  | 8.98h | 2018-01-29 08:00 A | 2018-01-29 17:00 A | 410 | 100% | 2017-08-18 13:32 | 2017-08-21 09:34 | 28h | SAW Welder; Helper [200%] | 26.95h | 26.95h | 1,515.93 | 3,325 | 1,515.93 |
| 413 | 1.7.32.4 | CS WELDING F2 |  | 31.97h | 2018-01-25 17:00 A | 2018-01-30 17:00 A | 411 | 100% | 2017-08-18 13:32 | 2017-08-21 09:34 | 28h | SAW Welder; Helper [200%] | 95.9h | 95.9h | 5,394.38 | 3,325 | 5,394.38 |
| 414 | 1.7.32.5 | FLUSH GRIND |  | 15.98h | 2018-01-30 17:00 A | 2018-01-31 17:00 A | 412, 413 | 100% | 2017-08-21 09:34 | 2017-08-22 13:35 | 20h | Grinder | 15.98h | 15.98h | 899.06 | 1,125 | 899.06 |
| 415 | 1.7.32.6 | INSIDE WELDING |  | 31.97h | 2018-01-31 17:00 A | 2018-02-02 17:00 A | 414 | 100% | 2017-08-22 13:35 | 2017-08-24 09:37 | 28h | SAW Welder; Helper [200%] | 95.9h | 95.9h | 5,394.38 | 3,325 | 5,394.38 |
| 416 | 1.7.32.7 | FLUSH GRIND |  | 15.98h | 2018-02-02 17:00 A | 2018-02-03 17:00 A | 415 | 100% | 2017-08-24 09:37 | 2017-08-28 13:38 | 20h | Grinder | 15.98h | 15.98h | 899.06 | 1,125 | 899.06 |
| 417 | 1.7.32.8 | INSPECTION | milestone | 0d | 2018-02-04 08:00 A | 2018-02-04 08:00 A | 416 | 100% | 2017-08-28 13:38 | 2017-08-28 17:16 | 0.45d | Fitter [200%] |  |  |  | 498.44 |  |
| 418 | 1.7.33 | **CHANNEL CS & SHELL ASSY** |  | 9.44d | 2018-02-06 14:00 A | 2018-02-17 18:30 A |  | 100% | 2017-08-28 17:16 | 2017-09-07 06:54 | 16.69d |  | 346.5h | 346.5h | 20,584.38 | 20,584.38 | 20,584.38 |
| 419 | 1.7.33.1 | CHANNEL FLG 1 FIT UP |  | 8h | 2018-02-06 14:00 A | 2018-02-06 22:00 A | 243, 409 | 100% | 2017-08-28 17:16 | 2017-08-29 09:16 | 8h | Fitter; Helper [200%]; SAW Welder; Forging Non-Std (Cost) [0.1%] | 32h | 32h | 1,900 | 1,900 | 1,900 |
| 420 | 1.7.33.2 | CHANNEL FLG 2 FIT UP |  | 8h | 2018-02-07 13:00 A | 2018-02-07 21:00 A | 244, 409 | 100% | 2017-08-28 17:16 | 2017-08-29 09:16 | 8h | Fitter; Helper [200%]; SAW Welder; Forging Non-Std (Cost) [0.1%] | 32h | 32h | 1,900 | 1,900 | 1,900 |
| 421 | 1.7.33.3 | CS WELDING F1 |  | 28h | 2018-02-07 06:00 A | 2018-02-08 18:00 A | 419 | 100% | 2017-08-29 09:16 | 2017-08-30 21:18 | 28h | SAW Welder; Helper [200%] | 56h | 56h | 3,325 | 3,325 | 3,325 |
| 422 | 1.7.33.4 | CS WELDING F2 |  | 28h | 2018-02-07 21:00 A | 2018-02-09 17:00 A | 420 | 100% | 2017-08-29 09:16 | 2017-08-30 21:18 | 28h | SAW Welder; Helper [200%] | 56h | 56h | 3,325 | 3,325 | 3,325 |
| 423 | 1.7.33.5 | FLUSH GRIND |  | 20h | 2018-02-09 17:00 A | 2018-02-12 21:00 A | 422 | 100% | 2017-08-30 21:18 | 2017-09-01 09:19 | 20h | Grinder | 20h | 20h | 1,125 | 1,125 | 1,125 |
| 424 | 1.7.33.6 | INSIDE WELDING |  | 28h | 2018-02-12 21:00 A | 2018-02-14 17:00 A | 423 | 100% | 2017-09-01 09:19 | 2017-09-02 21:21 | 28h | SAW Welder; Helper [200%] | 56h | 56h | 3,325 | 3,325 | 3,325 |
| 425 | 1.7.33.7 | FLUSH GRIND |  | 20h | 2018-02-14 17:00 A | 2018-02-15 21:00 A | 424 | 100% | 2017-09-02 21:21 | 2017-09-05 09:22 | 20h | Grinder | 20h | 20h | 1,125 | 1,125 | 1,125 |
| 426 | 1.7.33.8 | INSPECTION |  | 0.91d | 2018-02-15 21:00 A | 2018-02-16 12:15 A | 425 | 100% | 2017-09-05 09:22 | 2017-09-05 16:38 | 0.91d | Fitter | 7.25h | 7.25h | 498.44 | 498.44 | 498.44 |
| 427 | 1.7.33.9 | SHELL AND CHANNEL ASSEMBLY |  | 15h | 2018-02-16 12:15 A | 2018-02-17 11:15 A | 426 | 100% | 2017-09-05 16:38 | 2017-09-06 15:39 | 15h | Fitter [200%]; Helper [200%] | 60h | 60h | 3,562.5 | 3,562.5 | 3,562.5 |
| 428 | 1.7.33.10 | INSPECTION |  | 0.91d | 2018-02-17 11:15 A | 2018-02-17 18:30 A | 427 | 100% | 2017-09-06 15:39 | 2017-09-07 06:54 | 0.91d | Fitter | 7.25h | 7.25h | 498.44 | 498.44 | 498.44 |
| 429 | 1.7.34 | **SHELL COVER CS & SHELL ASSY** |  | 8d | 2018-02-07 21:00 A | 2018-02-17 19:15 A |  | 100% | 2017-08-29 09:16 | 2017-09-07 07:39 | 15.78d |  | 251.25h | 251.25h | 15,110.94 | 15,110.94 | 15,110.94 |
| 430 | 1.7.34.1 | SHELL FLG 1 FIT UP |  | 8h | 2018-02-07 21:00 A | 2018-02-08 13:00 A | 420 | 100% | 2017-08-29 09:16 | 2017-08-29 17:17 | 8h | Fitter; Helper [200%]; SAW Welder; Forging Non-Std (Cost) [0.1%] | 32h | 32h | 1,900 | 1,900 | 1,900 |
| 431 | 1.7.34.2 | CS WELDING F1 |  | 28h | 2018-02-08 13:00 A | 2018-02-12 09:00 A | 430 | 100% | 2017-08-29 17:17 | 2017-08-31 13:18 | 28h | SAW Welder; Helper [200%] | 56h | 56h | 3,325 | 3,325 | 3,325 |
| 432 | 1.7.34.3 | FLUSH GRIND |  | 20h | 2018-02-12 09:00 A | 2018-02-13 13:00 A | 431 | 100% | 2017-08-31 13:18 | 2017-09-01 17:20 | 20h | Grinder | 20h | 20h | 1,125 | 1,125 | 1,125 |
| 433 | 1.7.34.4 | INSIDE WELDING |  | 28h | 2018-02-13 13:00 A | 2018-02-15 09:00 A | 432 | 100% | 2017-09-01 17:20 | 2017-09-04 13:21 | 28h | SAW Welder; Helper [200%] | 56h | 56h | 3,325 | 3,325 | 3,325 |
| 434 | 1.7.34.5 | INSPECTION |  | 20h | 2018-02-15 09:00 A | 2018-02-16 13:00 A | 433 | 100% | 2017-09-04 13:21 | 2017-09-05 17:23 | 20h | Fitter | 20h | 20h | 1,375 | 1,375 | 1,375 |
| 435 | 1.7.34.6 | SHELL COVER AND SHELL ASSEMBLY |  | 15h | 2018-02-16 13:00 A | 2018-02-17 12:00 A | 434 | 100% | 2017-09-05 17:23 | 2017-09-06 16:24 | 15h | Fitter [200%]; Helper [200%] | 60h | 60h | 3,562.5 | 3,562.5 | 3,562.5 |
| 436 | 1.7.34.7 | INSPECTION |  | 0.91d | 2018-02-17 12:00 A | 2018-02-17 19:15 A | 435 | 100% | 2017-09-06 16:24 | 2017-09-07 07:39 | 0.91d | Fitter | 7.25h | 7.25h | 498.44 | 498.44 | 498.44 |

| ID | WBS | Task | Duration | Start | Finish | Predecessors | Complete | Baseline start | Baseline finish | Baseline duration | Resources | Work | Actual work | Cost | Baseline cost | Actual cost |
| --- | --- | --- | --- | --- | --- | --- | --- | --- | --- | --- | --- | --- | --- | --- | --- | --- |
| 437 | 1.7.35 | **HYDRO TEST** | 6.2d | 2018-03-17 16:22 A | 2018-03-27 09:00 A |  | 100% | 2018-02-05 06:20 | 2018-02-19 10:15 | 22.47d |  | 254h | 254h | 15,812.5 | 26,115.47 | 15,812.5 |
| 438 | 1.7.35.1 | NDE CLEARANCE | 1d | 2018-03-17 16:22 A | 2018-03-19 08:22 A | 302 | 100% | 2018-02-05 06:20 | 2018-02-05 20:51 | 1.81d | Fitter | 8h | 8h | 550 | 996.88 | 550 |
| 439 | 1.7.35.2 | NDE AFTER PWHT | 6h | 2018-03-19 08:22 A | 2018-03-19 14:22 A | 438 | 100% | 2018-02-09 12:24 | 2018-02-12 08:25 | 12h | Fitter | 6h | 6h | 412.5 | 825 | 412.5 |
| 440 | 1.7.35.3 | SHELL SIDE PNUEMATIC TEST | 6h | 2018-03-19 14:22 A | 2018-03-19 20:22 A | 439 | 100% | 2018-02-12 08:25 | 2018-02-12 18:26 | 10h | Fitter [300%]; Helper [200%] | 30h | 30h | 1,837.5 | 3,062.5 | 1,837.5 |
| 441 | 1.7.35.4 | TUBE BUNDLE OUTSIDE TEST | 6.29h | 2018-03-19 20:22 A | 2018-03-20 10:40 A | 440 | 100% | 2018-02-12 18:26 | 2018-02-13 14:27 | 12h | Fitter [300%]; Helper [200%] | 30h | 30h | 1,837.5 | 3,675 | 1,837.5 |
| 442 | 1.7.35.5 | TPI WITNESS | 0.5d | 2018-03-20 10:40 A | 2018-03-20 14:40 A | 441 | 100% | 2018-02-13 14:27 | 2018-02-13 21:42 | 0.91d | Fitter | 4h | 4h | 275 | 498.44 | 275 |
| 443 | 1.7.35.6 | TUBE BUNDLE INSERT | 14h | 2018-03-20 14:40 A | 2018-03-21 12:40 A | 442 | 100% | 2018-02-13 21:42 | 2018-02-14 15:43 | 10h | Fitter [300%]; Helper [200%] | 50h | 50h | 3,062.5 | 3,062.5 | 3,062.5 |
| 444 | 1.7.35.7 | SHELL SIDE HYDRO TEST | 16h | 2018-03-21 12:40 A | 2018-03-22 12:40 A | 443 | 100% | 2018-02-14 15:43 | 2018-02-15 11:43 | 12h | Fitter [300%]; Helper [200%] | 40h | 40h | 2,450 | 3,675 | 2,450 |
| 445 | 1.7.35.8 | TPI WITNESS | 0.5d | 2018-03-22 12:40 A | 2018-03-22 16:40 A | 444 | 100% | 2018-02-15 11:43 | 2018-02-15 18:59 | 0.91d | Fitter | 4h | 4h | 275 | 498.44 | 275 |
| 446 | 1.7.35.9 | CH ASSY AND HYDRO TEST | 6h | 2018-03-22 16:40 A | 2018-03-23 06:40 A | 445 | 100% | 2018-02-15 18:59 | 2018-02-16 15:00 | 12h | Fitter [300%]; Helper [200%] | 30h | 30h | 1,837.5 | 3,675 | 1,837.5 |
| 447 | 1.7.35.10 | TPI WITNESS | 0.5d | 2018-03-23 06:40 A | 2018-03-23 10:40 A | 446 | 100% | 2018-02-16 15:00 | 2018-02-17 06:59 | 1d | Fitter | 4h | 4h | 275 | 548.28 | 275 |
| 448 | 1.7.35.11 | BARREL ASSY & HYDRO | 19h | 2018-03-26 06:00 A | 2018-03-27 09:00 A | 447 | 100% | 2018-02-17 06:59 | 2018-02-17 19:00 | 12h | Fitter [300%]; Helper [200%] | 40h | 40h | 2,450 | 3,675 | 2,450 |
| 449 | 1.7.35.12 | TPI WITNESS | 2d | 2018-03-26 06:00 A | 2018-03-26 22:00 A | 448 | 100% | 2018-02-17 19:00 | 2018-02-19 10:15 | 0.91d | Fitter | 8h | 8h | 550 | 498.44 | 550 |
| 450 | 1.7.36 | **BLAST CLEANING & PAINTING** | 5.19d | 2018-03-26 06:00 A | 2018-03-31 10:00 A |  | 100% | 2018-02-19 10:15 | 2018-02-27 20:22 | 13.25d |  | 48h | 48h | 2,375 | 5,790.62 | 2,375 |
| 451 | 1.7.36.1 | PREPARATION FOR BLAST CLEANING | 8h | 2018-03-27 06:00 A | 2018-03-27 14:00 A | 449 | 100% | 2018-02-19 10:15 | 2018-02-19 18:16 | 8h | Fitter; Helper [300%] | 24h | 24h | 1,350 | 1,350 | 1,350 |
| 452 | 1.7.36.2 | PAINTING | 2d | 2018-03-26 06:00 A | 2018-03-26 22:00 A | 451 | 100% | 2018-02-21 18:18 | 2018-02-22 10:18 | 1d | Painter [200%] | 8h | 8h |  |  |  |
| 453 | 1.7.36.3 | TPI WITNESS | 2d | 2018-03-26 06:00 A | 2018-03-26 22:00 A | 452 | 100% | 2018-02-26 07:20 | 2018-02-26 14:36 | 0.91d | Fitter | 4h | 4h | 275 | 498.44 | 275 |
| 454 | 1.7.36.4 | DESPATCH CLEARANCE | 2d | 2018-03-28 06:00 A | 2018-03-28 22:00 A | 453 | 100% | 2018-02-26 14:36 | 2018-02-26 21:51 | 0.91d | Fitter | 4h | 4h | 275 | 498.44 | 275 |
| 455 | 1.7.36.5 | DESPATCH | 0.25d | 2018-03-31 08:00 A | 2018-03-31 10:00 A | 454FS+4d | 100% | 2018-02-26 21:51 | 2018-02-27 20:22 | 1.81d | Fitter [200%]; Helper [200%] | 8h | 8h | 475 | 3,443.75 | 475 |
| 456 | 1.8 | **Pbg** | 18d | 2018-04-24 08:30 A | 2018-05-17 17:30 A |  | 100% | 2018-03-15 08:30 | 2018-04-10 10:00 | 21.19d |  | 3.25h | 3.25h |  | -0 |  |
| 457 | 1.8.1 | Pbg submission to client | 1d | 2018-04-24 08:30 A | 2018-04-24 17:30 A | 450FS+17d | 100% | 2018-03-15 08:30 | 2018-03-15 17:30 | 1d? | Finance [25%] | 1h | 1h |  |  |  |
| 458 | 1.8.2 | Final Documentation | 8h | 2018-05-17 08:30 A | 2018-05-17 17:30 A | 455FS+35d | 100% | 2018-04-09 10:00 | 2018-04-10 10:00 | 1d | QC Engineer [37.5%] | 2.25h | 2.25h |  |  |  |
