# 4192-0

Schedule from MS Project, 2017-07-15 to 2018-06-20, status date 2017-07-15, A marks actual dates.

## Calendars

- TEAM_Stand_Calendar: Mon-Sat 08:30-12:30, 13:30-17:30; Sun off. Exceptions (off unless hours are given): 2017-01-13 to 2023-08-12 (2nd Sat, recurring), 2017-01-26 to 2036-01-26 (Republic Day, recurring), 2017-01-27 to 2023-08-26 (4th Sat, recurring), 2017-05-01 to 2036-05-01 (May Day, recurring), 2017-08-15 to 2036-08-15 (Independence Day, recurring), 2017-08-25 (Vinakya Chaturthi'2017), 2017-09-29 (Ayudha Pooja'2017), 2017-10-02 to 2036-10-02 (Gandhi Jayanti, recurring), 2017-10-18 (Deepavali'2017), 2018-01-15 (Thiruvalluvar Day'2018).

## Resources

| Resource | Rate |
| --- | --- |
| Finance-New |  |
| PMO Head |  |
| Draftman |  |
| Client |  |
| Crane(G) |  |
| Helper | 50 |
| Store |  |
| Fitter(G) | 68.75 |
| Cutting Machine(G) |  |
| Expanding Machine(G) |  |
| Foreman(G) |  |
| Forming Machine(G) |  |
| PM |  |
| PPC Engineer |  |
| QC Engineer |  |
| Production Eng(G) |  |
| Driller | 68.75 |
| Consumables (Cost) |  |
| Fastners (Cost) |  |
| Gaskets (Cost) |  |
| N2 Gas Cylinder (Cost) |  |
| SC Radiography (Cost) |  |
| SC Transport (Cost) |  |
| SC (Cost) |  |
| TPI (Cost) |  |
| Production Engineer |  |
| Pipe (Cost) |  |
| Plate (Cost) |  |
| Rod (Cost) |  |
| DesignEng |  |
| PPCEngineer |  |
| ProductionEng(G) |  |
| PurchaseEng |  |
| QCEngineer |  |
| Pipe(Cost) |  |
| Plate(Cost) |  |
| Rod(Cost) |  |
| Consumables(Cost) |  |
| N2GasCylinder(Cost) |  |
| SCRadiography(Cost) |  |
| Fastners(Cost) |  |
| Gaskets(Cost) |  |
| SC(Cost) |  |
| Purchase Engineer |  |
| Design Engineer |  |
| Marketing |  |

## Schedule

| ID | WBS | Task | Duration | Start | Finish | Predecessors | Complete | Baseline start | Baseline finish | Baseline duration | Resources | Work | Actual work | Baseline cost |
| --- | --- | --- | --- | --- | --- | --- | --- | --- | --- | --- | --- | --- | --- | --- |
| 1 | 1 | **Project Initiation** | 13d | 2017-07-15 A | 2017-07-31 A |  | 100% | 2017-07-15 | 2017-07-21 | 6d |  | 64h | 64h | -0 |
| 2 | 1.1 | PO Receipt | 3d | 2017-07-15 A | 2017-07-18 A |  | 100% | 2017-07-15 | 2017-07-18 | 3d | PM | 16h | 16h |  |
| 3 | 1.2 | CRM: WO Creation and CRM | 3d | 2017-07-19 A | 2017-07-21 A | 2 | 100% | 2017-07-19 | 2017-07-21 | 3d | PM | 16h | 16h |  |
| 4 | 1.3 | Kick Off Meeting | 3d | 2017-07-28 A | 2017-07-31 A | 3FS+5d | 100% | 2017-07-15 | 2017-07-18 | 3d | PM; ProductionEng(G); Design Engineer; PPC Engineer; Purchase Engineer | 32h | 32h |  |
| 5 | 2 | **Material Ordering & Receipt 1** | 209d | 2017-08-01 A | 2018-04-30 A |  | 100% | 2017-07-19 | 2017-11-16 | 104d |  | 263h | 263h | -0 |
| 6 | 2.1 | Filler Wire Indenting (Initial Lot) | 1d | 2017-08-01 A | 2017-08-01 A | 4 | 100% | 2017-07-19 | 2017-07-19 | 1d | PPCEngineer | 8h | 8h |  |
| 7 | 2.2 | Filler Wire Ordering (Initial Lot) | 5d | 2017-08-02 A | 2017-08-07 A | 6 | 100% | 2017-07-20 | 2017-07-25 | 5d | PurchaseEng | 16h | 16h |  |
| 8 | 2.3 | Filler Wire Indenting (Bulk Lot) | 2d | 2017-08-02 A | 2017-08-03 A | 6 | 100% | 2017-07-20 | 2017-07-21 | 2d | PPCEngineer | 5h | 5h |  |
| 9 | 2.4 | Filler Wire Ordering (Bulk Lot) | 5d | 2017-08-04 A | 2017-08-09 A | 8 | 100% | 2017-07-22 | 2017-07-27 | 5d | PurchaseEng | 16h | 16h |  |
| 10 | 2.5 | Filler Wire Receipt (Initial Lot) | 1d | 2017-11-21 A | 2017-11-21 A | 7FS+78d | 100% | 2017-10-25 | 2017-10-25 | 1d | Store | 4h | 4h |  |
| 11 | 2.6 | Filler Wire Receipt (Bulk Lot) | 1d | 2018-04-10 A | 2018-04-10 A | 9FS+185d | 100% | 2017-10-06 | 2017-10-06 | 1d | Store; Purchase Engineer | 12h | 12h |  |
| 12 | 2.7 | Filler Wire Qualification (Batch 1) | 17d | 2017-11-24 A | 2017-12-15 A | 10FS+2d | 100% | 2017-10-28 | 2017-11-16 | 17d | QCEngineer | 25h | 25h |  |
| 13 | 2.8 | Filler Wire Qualification (Batch 2) | 17d | 2017-11-24 A | 2017-12-15 A | 10FS+2d | 100% | 2017-10-28 | 2017-11-16 | 17d | QCEngineer | 25h | 25h |  |
| 14 | 2.9 | Filler Wire Qualification (Batch 2) | 5d | 2018-04-12 A | 2018-04-18 A | 10FS+110d | 100% | 2017-10-28 | 2017-11-16 | 17d | QC Engineer | 40h | 40h |  |
| 15 | 2.10 | Manway Gaskets Indenting | 1d | 2017-08-04 A | 2017-08-04 A | 8 | 100% | 2017-07-22 | 2017-07-22 | 1d | PPCEngineer | 4h | 4h |  |
| 16 | 2.11 | Manway Gaskets Ordering | 1d | 2018-02-07 A | 2018-02-07 A | 15 | 100% | 2017-07-24 | 2017-07-28 | 5d | PurchaseEng | 8h | 8h |  |
| 17 | 2.12 | Manway Gaskets Receipt | 1d | 2018-03-06 A | 2018-03-06 A | 16FS+45d | 100% | 2017-09-20 | 2017-09-20 | 1d | Store | 4h | 4h |  |
| 18 | 2.13 | Fasteners Indenting | 1d | 2018-01-08 A | 2018-01-08 A | 8 | 100% | 2017-07-22 | 2017-07-22 | 1d | PPCEngineer | 4h | 4h |  |
| 19 | 2.14 | FastenersOrdering | 1d | 2018-02-02 A | 2018-02-02 A | 18 | 100% | 2017-07-24 | 2017-07-28 | 5d | PurchaseEng | 8h | 8h |  |
| 20 | 2.15 | FastenersReceipt | 1d | 2018-04-30 A | 2018-04-30 A | 19FS+67d | 100% | 2017-09-20 | 2017-09-20 | 1d | Store | 4h | 4h |  |
| 21 | 2.16 | Free Issue Material - Lot 1 | 5d | 2017-10-21 A | 2017-10-26 A | 4FS+60d | 100% | 2017-09-27 | 2017-10-02 | 5d | Store; Pipe(Cost); Plate(Cost); Rod(Cost) | 20h | 20h |  |
| 22 | 2.17 | Free Issue Material - Lot 2 | 4d | 2017-11-16 A | 2017-11-20 A | 21FS+15d | 100% | 2017-10-20 | 2017-10-24 | 4d | Store; Pipe(Cost); Plate(Cost); Rod(Cost) | 20h | 20h |  |
| 23 | 2.18 | Free Issue Material - Lot 3 | 4d | 2017-11-30 A | 2017-12-04 A | 22FS+7d | 100% | 2017-11-02 | 2017-11-06 | 4d | Store; Pipe(Cost); Plate(Cost); Rod(Cost) | 20h | 20h |  |
| 24 | 2.19 | Free Issue Material - Lot 4 | 4d | 2017-11-30 A | 2017-12-04 A | 22FS+7d | 100% | 2017-11-02 | 2017-11-06 | 4d | Store; Pipe(Cost); Plate(Cost); Rod(Cost) | 20h | 20h |  |

Notes:
- 4: 5 Days delay in starting this activity because of client availability.

| ID | WBS | Task | Type | Duration | Start | Finish | Predecessors | Complete | Remaining | Baseline start | Baseline finish | Baseline duration | Total slack | Free slack | Resources | Work | Actual work | Baseline cost |
| --- | --- | --- | --- | --- | --- | --- | --- | --- | --- | --- | --- | --- | --- | --- | --- | --- | --- | --- |
| 25 | 3 | **Material Costing** |  | 0d | 2018-04-30 A | 2018-04-30 A |  | 100% |  |  |  |  |  |  |  |  |  |  |
| 26 | 3.1 | Material Costing | milestone | 0min | 2018-04-30 A | 2018-04-30 A | 5 | 100% |  |  |  |  |  |  |  |  |  |  |
| 27 | 3.2 | Material Costing HC-150 | milestone | 0min | 2018-04-30 A | 2018-04-30 A | 26 | 100% |  |  |  |  |  |  |  |  |  |  |
| 28 | 3.3 | Material Costing HC-40000 | milestone | 0min | 2018-04-30 A | 2018-04-30 A | 26 | 100% |  |  |  |  |  |  |  |  |  |  |
| 29 | 3.4 | Material Costing HC-40000 | milestone | 0min | 2018-04-30 A | 2018-04-30 A | 26 | 100% |  |  |  |  |  |  |  |  |  |  |
| 30 | 3.5 | Material Costing HC-40000 | milestone | 0min | 2018-04-30 A | 2018-04-30 A | 26 | 100% |  |  |  |  |  |  |  |  |  |  |
| 31 | 3.6 | Material Costing HC-40000 | milestone | 0min | 2018-04-30 A | 2018-04-30 A | 26 | 100% |  |  |  |  |  |  |  |  |  |  |
| 32 | 4 | **Design** |  | 261.12d | 2017-07-15 A | 2018-06-20 |  | 67% | 86.08d | 2017-07-15 | 2017-10-05 | 70.25d | 124.65d |  |  | 347h | 228h | -0 |
| 33 | 4.1 | **Design HC-150** |  | 47.12d | 2017-07-15 A | 2017-09-15 A |  | 100% |  | 2017-07-15 | 2017-08-16 | 27.12d |  |  |  | 97h | 97h | -0 |
| 34 | 4.1.1 | Drawing Submission |  | 12d | 2017-07-15 A | 2017-07-29 A |  | 100% |  | 2017-07-15 | 2017-07-28 | 12d |  |  | Draftman [80%]; DesignEng [20%] | 96h | 96h |  |
| 35 | 4.1.2 | Drawing Approval |  | 1h | 2017-09-15 A | 2017-09-15 A | 34FS+15d | 100% |  | 2017-08-16 | 2017-08-16 | 1h |  |  | Client | 1h | 1h |  |
| 36 | 4.2 | **Design HC-40000** |  | 119d | 2017-10-10 A | 2018-03-13 A |  | 100% |  | 2017-08-16 | 2017-09-07 | 19.12d |  |  |  | 33h | 33h | -0 |
| 37 | 4.2.1 | Drawing Submission |  | 4d | 2017-10-10 A | 2017-10-13 A | 35 | 100% |  | 2017-08-16 | 2017-08-21 | 4d |  |  | Draftman [80%]; DesignEng [20%] | 32h | 32h |  |
| 38 | 4.2.2 | Drawing Approval |  | 8h | 2018-03-13 A | 2018-03-13 A | 37FS+15d | 100% |  | 2017-09-07 | 2017-09-07 | 1h |  |  | Client | 1h | 1h |  |
| 39 | 4.3 | **Design VC-2000** |  | 29.5d | 2018-04-19 A | 2018-05-28 |  | 89% | 3.28d | 2017-08-21 | 2017-09-12 | 19.12d | 143.28d |  |  | 36h | 32h | -0 |
| 40 | 4.3.1 | Drawing Submission |  | 4d | 2018-04-19 A | 2018-04-23 A | 3FS+207d | 100% |  | 2017-08-21 | 2017-08-25 | 4d |  |  | Draftman [80%]; DesignEng [20%] | 32h | 32h |  |
| 41 | 4.3.2 | Drawing Approval |  | 4h | 2018-05-28 | 2018-05-28 | 40FS+25d |  |  | 2017-09-12 | 2017-09-12 | 1h | 143.28d |  | Client | 4h |  |  |
| 42 | 4.4 | **Design WV-VC-4000** |  | 15.12d | 2018-06-01 | 2018-06-20 |  |  |  | 2017-08-25 | 2017-09-16 | 19.12d | 124.65d |  |  | 41h |  | -0 |
| 43 | 4.4.1 | Drawing Submission |  | 5d | 2018-06-01 | 2018-06-06 | 3FS+240d |  |  | 2017-08-25 | 2017-08-30 | 4d | 124.65d | 0d | Draftman [80%]; Design Engineer [20%] | 40h |  |  |
| 44 | 4.4.2 | Drawing Approval |  | 1h | 2018-06-20 | 2018-06-20 | 43FS+10d |  |  | 2017-09-16 | 2017-09-16 | 1h | 124.65d |  | Client | 1h |  |  |
| 45 | 4.5 | **Design WV-VC-4000A** |  | 15.12d | 2018-06-01 | 2018-06-20 |  |  |  | 2017-08-30 | 2017-09-21 | 19.12d | 124.65d |  |  | 41h |  | -0 |
| 46 | 4.5.1 | Drawing Submission |  | 5d | 2018-06-01 | 2018-06-06 | 3FS+240d |  |  | 2017-08-30 | 2017-09-04 | 4d | 124.65d | 0d | Draftman [80%]; Design Engineer [20%] | 40h |  |  |
| 47 | 4.5.2 | Drawing Approval |  | 1h | 2018-06-20 | 2018-06-20 | 46FS+10d |  |  | 2017-09-21 | 2017-09-21 | 1h | 124.65d |  | Client | 1h |  |  |
| 48 | 4.6 | **Design WV-VC-4000J** |  | 14.12d | 2018-06-01 | 2018-06-19 |  |  |  | 2017-09-04 | 2017-09-26 | 19.12d | 125.65d |  |  | 33h |  | -0 |
| 49 | 4.6.1 | Drawing Submission |  | 4d | 2018-06-01 | 2018-06-05 | 3FS+240d |  |  | 2017-09-04 | 2017-09-08 | 4d | 125.65d | 0d | Draftman [80%]; Design Engineer [20%] | 32h |  |  |
| 50 | 4.6.2 | Drawing Approval |  | 1h | 2018-06-19 | 2018-06-19 | 49FS+10d |  |  | 2017-09-26 | 2017-09-26 | 1h | 125.65d |  | Client | 1h |  |  |

| ID | WBS | Task | Duration | Start | Finish | Predecessors | Complete | Baseline start | Baseline finish | Baseline duration | Constraint | Resources | Work | Actual work | Baseline cost |
| --- | --- | --- | --- | --- | --- | --- | --- | --- | --- | --- | --- | --- | --- | --- | --- |
| 51 | 4.7 | **Design WV-VC-100** | 139d | 2017-09-15 A | 2018-03-16 A |  | 100% | 2017-09-08 | 2017-09-30 | 19.12d |  |  | 33h | 33h | -0 |
| 52 | 4.7.1 | Drawing Submission | 4d | 2017-09-15 A | 2017-09-20 A | 49 | 100% | 2017-09-08 | 2017-09-13 | 4d |  | Draftman [80%]; DesignEng [20%] | 32h | 32h |  |
| 53 | 4.7.2 | Drawing Approval | 1h | 2018-03-16 A | 2018-03-16 A | 52FS+15d | 100% | 2017-09-30 | 2017-09-30 | 1h | start no earlier than 2018-03-17 | Client | 1h | 1h |  |
| 54 | 4.8 | **Design WV-VC-600** | 132.88d | 2017-09-20 A | 2018-03-13 A |  | 100% | 2017-09-13 | 2017-10-05 | 19.12d |  |  | 33h | 33h | -0 |
| 55 | 4.8.1 | Drawing Submission | 4d | 2017-09-20 A | 2017-09-26 A | 52 | 100% | 2017-09-13 | 2017-09-18 | 4d |  | Draftman [80%]; DesignEng [20%] | 32h | 32h |  |
| 56 | 4.8.2 | Drawing Approval | 8h | 2018-03-13 A | 2018-03-13 A | 55FS+15d | 100% | 2017-10-05 | 2017-10-05 | 1h |  | Client | 1h | 1h |  |
