# 4192-HC40000

Schedule from MS Project, 2018-08-17 to 2018-10-24, costs in ₹.

## Calendars

- TEAM_2Shift_Calendar-1: Mon-Sat 06:00-22:00; Sun off. Exceptions (off unless hours are given): 2017-01-13 to 2023-02-11 (2nd Sat, recurring), 2017-01-26 to 2036-01-26 (Republic Day, recurring), 2017-01-27 to 2023-08-26 (4th Sat, recurring), 2017-05-01 to 2036-05-01 (May Day, recurring), 2017-08-15 to 2036-08-15 (Indepdence Day, recurring), 2017-10-02 to 2036-10-02 (Gandhi Jayanti, recurring), 2018-09-13 (Vinakya Chaturthi'2018), 2018-10-18 (Ayudha Pooja'2018).
- TEAM_Stand_Calendar: Mon-Sat 08:30-12:30, 13:30-17:30; Sun off. Exceptions (off unless hours are given): 2017-01-13 to 2023-08-12 (2nd Sat, recurring), 2017-01-26 to 2036-01-26 (Republic Day, recurring), 2017-01-27 to 2023-08-26 (4th Sat, recurring), 2017-05-01 to 2036-05-01 (May Day, recurring), 2017-08-15 to 2036-08-15 (Independence Day, recurring), 2017-10-02 to 2036-10-02 (Gandhi Jayanti, recurring), 2018-09-13 (Vinakaya Chaturthi'2018), 2018-10-18 (Ayudha Pooja'2018).

## Resources

| Resource | Rate |
| --- | --- |
| TIG Welder | 125 |
| Helper | 50 |
| Grinder | 56.25 |
| Fitter | 68.75 |
| Driller | 68.75 |
| Gas Cutter | 68.75 |
| Milling Operator | 120 |
| TIGWelder |  |
| GasCutter |  |
| MillingOperator |  |
| SC (Cost) |  |
| QC Engineer |  |
| TPI (Cost) |  |

## Schedule

| ID | WBS | Task | Type | Duration | Start | Finish | Predecessors | Baseline start | Baseline finish | Baseline duration | Total slack | Free slack | Calendar | Resources | Work | Cost | Baseline cost |
| --- | --- | --- | --- | --- | --- | --- | --- | --- | --- | --- | --- | --- | --- | --- | --- | --- | --- |
| 1 | 1 | **RECEIPT OF MATERIALS** |  | 54d | 2018-08-17 08:00 | 2018-09-21 08:00 |  | 2018-08-17 08:00 | 2018-09-21 08:00 | 54d | 55.81d |  | TEAM_2Shift_Calendar-1 |  |  |  |  |
| 2 | 1.1 | PLATE FOR DISH END+SH | milestone | 0d | 2018-08-17 08:00 | 2018-08-17 08:00 |  | 2018-08-17 08:00 | 2018-08-17 08:00 | 0d | 55.81d | 0d | TEAM_2Shift_Calendar-1 |  |  |  |  |
| 3 | 1.2 | NOZZLE ROD | milestone | 0d | 2018-09-21 08:00 | 2018-09-21 08:00 | 2FS+54d | 2018-09-21 08:00 | 2018-09-21 08:00 | 0d | 104.97d |  | TEAM_2Shift_Calendar-1 |  |  |  |  |
| 4 | 1.3 | NOZZLE PIPE | milestone | 0d | 2018-09-21 08:00 | 2018-09-21 08:00 | 2FS+54d | 2018-09-21 08:00 | 2018-09-21 08:00 | 0d | 55.81d | 0d | TEAM_2Shift_Calendar-1 |  |  |  |  |
| 5 | 1.4 | FILLER WIRE | milestone | 0d | 2018-09-21 08:00 | 2018-09-21 08:00 | 2FS+54d | 2018-09-21 08:00 | 2018-09-21 08:00 | 0d | 104.97d |  | TEAM_2Shift_Calendar-1 |  |  |  |  |
| 6 | 1.5 | SADDLE | milestone | 0d | 2018-09-21 08:00 | 2018-09-21 08:00 | 2FS+54d | 2018-09-21 08:00 | 2018-09-21 08:00 | 0d | 71.3d | 0d | TEAM_2Shift_Calendar-1 |  |  |  |  |
| 7 | 2 | **HC40000-1/2** |  | 103.14d | 2018-08-17 08:00 | 2018-10-24 17:07 |  | 2018-08-17 08:00 | 2018-10-24 17:07 | 103.14d | 0d |  | TEAM_2Shift_Calendar-1 |  | 4419h | 187,705.21 | 187,705.21 |
| 8 | 2.1 | **NOZZLE FAB** |  | 79.19d | 2018-08-17 08:00 | 2018-10-08 17:30 |  | 2018-08-17 08:00 | 2018-10-08 17:30 | 79.19d | 23.95d |  | TEAM_2Shift_Calendar-1 |  | 1123h | 50,647.92 | 50,647.92 |
| 9 | 2.1.1 | **PIPE BENDING** |  | 10.88d | 2018-09-21 08:00 | 2018-09-28 15:00 |  | 2018-09-21 08:00 | 2018-09-28 15:00 | 10.88d | 0.09d |  | TEAM_2Shift_Calendar-1 |  | 210h | 11,400 | 11,400 |
| 10 | 2.1.1.1 | PIPE MARKING |  | 12h | 2018-09-21 08:00 | 2018-09-21 20:00 | 4 | 2018-09-21 08:00 | 2018-09-21 20:00 | 12h | 55.81d | 0d | TEAM_2Shift_Calendar-1 | Helper; Fitter [200%] | 36h | 2,250 | 2,250 |
| 11 | 2.1.1.2 | PIPE BENDING |  | 5d | 2018-09-21 20:00 | 2018-09-26 12:00 | 10 | 2018-09-21 20:00 | 2018-09-26 12:00 | 5d | 55.81d | 0d | TEAM_2Shift_Calendar-1 | Fitter [300%] | 120h | 8,250 | 8,250 |
| 12 | 2.1.1.3 | PIPE JOINT WELDING |  | 27h | 2018-09-26 12:00 | 2018-09-28 15:00 | 11 | 2018-09-26 12:00 | 2018-09-28 15:00 | 27h | 55.72d | 0d | TEAM_2Shift_Calendar-1 | Helper; TIGWelder [200%] | 54h | 900 | 900 |
| 13 | 2.1.2 | **MANHOLE M1 Fabrication** |  | 15.6d | 2018-09-21 20:00 | 2018-10-03 16:50 |  | 2018-09-21 20:00 | 2018-10-03 16:50 | 15.6d | 14.24d |  | TEAM_2Shift_Calendar-1 |  | 195h | 8,860.42 | 8,860.42 |
| 14 | 2.1.2.1 | LS-PLATE MARKING |  | 2h | 2018-09-21 20:00 | 2018-09-21 22:00 | 10, 2 | 2018-09-21 20:00 | 2018-09-21 22:00 | 2h | 70.69d | 0d | TEAM_2Shift_Calendar-1 | Helper [200%]; Fitter | 4h | 237.5 | 237.5 |
| 15 | 2.1.2.2 | LS- STAMPING |  | 2h | 2018-09-24 06:00 | 2018-09-24 08:00 | 14 | 2018-09-24 06:00 | 2018-09-24 08:00 | 2h | 70.69d | 0d | TEAM_2Shift_Calendar-1 | Helper; Fitter | 4h | 237.5 | 237.5 |
| 16 | 2.1.2.3 | LS-PL CUTTING |  | 4.5h | 2018-09-24 08:00 | 2018-09-24 12:30 | 15 | 2018-09-24 08:00 | 2018-09-24 12:30 | 4.5h | 70.69d | 0d | TEAM_2Shift_Calendar-1 | Helper [200%]; GasCutter [200%] | 16h | 400 | 400 |
| 17 | 2.1.2.4 | LS-GRINDING |  | 5h | 2018-09-24 12:30 | 2018-09-24 17:30 | 16 | 2018-09-24 12:30 | 2018-09-24 17:30 | 5h | 70.96d | 0d | TEAM_2Shift_Calendar-1 | Grinder [200%] | 10h | 562.5 | 562.5 |
| 18 | 2.1.2.5 | LS-EDGE PREPARATION |  | 4h | 2018-09-24 17:30 | 2018-09-24 21:30 | 17 | 2018-09-24 17:30 | 2018-09-24 21:30 | 4h | 70.96d | 0d | TEAM_2Shift_Calendar-1 | Grinder [200%] | 8h | 450 | 450 |
| 19 | 2.1.2.6 | LS-PRE BENDING |  | 3h | 2018-09-24 21:30 | 2018-09-25 08:30 | 18 | 2018-09-24 21:30 | 2018-09-25 08:30 | 3h | 70.96d | 0d | TEAM_2Shift_Calendar-1 | Helper [200%]; Fitter [200%] | 12h | 712.5 | 712.5 |
| 20 | 2.1.2.7 | LS-PREBEND CUTOFF |  | 1h | 2018-09-25 08:30 | 2018-09-25 09:30 | 19 | 2018-09-25 08:30 | 2018-09-25 09:30 | 1h | 70.96d | 0d | TEAM_2Shift_Calendar-1 | Helper [200%]; GasCutter [200%] | 4h | 100 | 100 |
| 21 | 2.1.2.8 | LS-EDGE PREPARTION |  | 4h | 2018-09-25 09:30 | 2018-09-25 13:30 | 20 | 2018-09-25 09:30 | 2018-09-25 13:30 | 4h | 70.96d | 0d | TEAM_2Shift_Calendar-1 | Grinder [200%] | 8h | 450 | 450 |
| 22 | 2.1.2.9 | LS-ROLLING |  | 4h | 2018-09-25 13:30 | 2018-09-25 17:30 | 21 | 2018-09-25 13:30 | 2018-09-25 17:30 | 4h | 70.96d | 0d | TEAM_2Shift_Calendar-1 | Helper [200%]; Fitter [200%] | 16h | 950 | 950 |
| 23 | 2.1.2.10 | LS-ACID CLEANING |  | 3h | 2018-09-25 17:30 | 2018-09-25 20:30 | 22 | 2018-09-25 17:30 | 2018-09-25 20:30 | 3h | 70.96d | 0d | TEAM_2Shift_Calendar-1 | Helper [200%] | 6h | 300 | 300 |
| 24 | 2.1.2.11 | LS-FITUP |  | 9.33h | 2018-09-25 20:30 | 2018-09-26 14:50 | 23 | 2018-09-25 20:30 | 2018-09-26 14:50 | 9.33h | 70.96d | 0d | TEAM_2Shift_Calendar-1 | Helper [200%]; Fitter; TIGWelder | 16h | 633.33 | 633.33 |
| 25 | 2.1.2.12 | LS-SPIDERUP |  | 3h | 2018-09-26 14:50 | 2018-09-26 17:50 | 24 | 2018-09-26 14:50 | 2018-09-26 17:50 | 3h | 71.33d | 0d | TEAM_2Shift_Calendar-1 | Helper [200%]; Fitter [200%] | 12h | 712.5 | 712.5 |
| 26 | 2.1.2.13 | LS-FITUP INSPECTION |  | 2h | 2018-09-26 17:50 | 2018-09-26 19:50 | 25 | 2018-09-26 17:50 | 2018-09-26 19:50 | 2h | 71.33d | 0d | TEAM_2Shift_Calendar-1 | Fitter [200%] | 4h | 275 | 275 |
| 27 | 2.1.2.14 | LS-WELDING |  | 4.5h | 2018-09-26 19:50 | 2018-09-27 11:30 | 26 | 2018-09-26 19:50 | 2018-09-27 11:30 | 4.5h | 70.83d | 0d | TEAM_2Shift_Calendar-1 | Helper [200%]; TIGWelder | 6h | 150 | 150 |
| 28 | 2.1.2.15 | LS-FLUSH GRIND |  | 2h | 2018-09-27 11:30 | 2018-09-27 13:30 | 27 | 2018-09-27 11:30 | 2018-09-27 13:30 | 2h | 70.83d | 0d | TEAM_2Shift_Calendar-1 | Grinder [200%] | 4h | 225 | 225 |
| 29 | 2.1.2.16 | LS-REROLLING |  | 3h | 2018-09-27 13:30 | 2018-09-27 16:30 | 28 | 2018-09-27 13:30 | 2018-09-27 16:30 | 3h | 70.83d | 0d | TEAM_2Shift_Calendar-1 | Helper [200%]; Fitter [200%] | 12h | 712.5 | 712.5 |
| 30 | 2.1.2.17 | LS-DPCHECK |  | 2h | 2018-09-27 16:30 | 2018-09-27 18:30 | 29 | 2018-09-27 16:30 | 2018-09-27 18:30 | 2h | 70.83d | 0d | TEAM_2Shift_Calendar-1 | Helper; Fitter | 4h | 237.5 | 237.5 |
| 31 | 2.1.2.18 | LS-RADIOGRAPHY |  | 2d | 2018-09-27 18:30 | 2018-09-28 18:30 | 30 | 2018-09-27 18:30 | 2018-09-28 18:30 | 2d | 70.83d | 0.75d | TEAM_2Shift_Calendar-1 | SC (Cost) [0.1%] |  |  |  |
| 32 | 2.1.2.19 | MACHINING |  | 1d | 2018-09-29 08:30 | 2018-09-29 17:30 | 31 | 2018-09-29 08:30 | 2018-09-29 17:30 | 1d | 70.08d | 0d | TEAM_2Shift_Calendar-1 | MillingOperator | 8h |  |  |
| 33 | 2.1.2.20 | MANHOLE FLANGE FIT UP |  | 10.67h | 2018-09-29 17:30 | 2018-10-01 14:50 | 32 | 2018-09-29 17:30 | 2018-10-01 14:50 | 10.67h | 70.08d | 0d | TEAM_2Shift_Calendar-1 | Helper [200%]; Fitter; TIGWelder | 16h | 633.33 | 633.33 |
| 34 | 2.1.2.21 | WELDING |  | 6.33h | 2018-10-01 14:50 | 2018-10-03 11:50 | 33 | 2018-10-01 14:50 | 2018-10-03 11:50 | 6.33h | 70.08d | 0d | TEAM_2Shift_Calendar-1 | Helper [200%]; TIGWelder | 12h | 300 | 300 |
| 35 | 2.1.2.22 | FLUSH GRIND |  | 2h | 2018-10-03 11:50 | 2018-10-03 13:50 | 34 | 2018-10-03 11:50 | 2018-10-03 13:50 | 2h | 70.08d | 0d | TEAM_2Shift_Calendar-1 | Grinder [200%] | 4h | 225 | 225 |
| 36 | 2.1.2.23 | MANHOLE COVER FIT UP |  | 3h | 2018-10-03 13:50 | 2018-10-03 16:50 | 35 | 2018-10-03 13:50 | 2018-10-03 16:50 | 3h | 70.08d | 9.49d | TEAM_2Shift_Calendar-1 | Helper [200%]; Fitter; TIGWelder | 9h | 356.25 | 356.25 |

Notes:
- 13: 1 NO
- 31: SC

| ID | WBS | Task | Duration | Start | Finish | Predecessors | Baseline start | Baseline finish | Baseline duration | Total slack | Free slack | Calendar | Resources | Work | Cost | Baseline cost |
| --- | --- | --- | --- | --- | --- | --- | --- | --- | --- | --- | --- | --- | --- | --- | --- | --- |
| 37 | 2.1.3 | **NOZZLE PIPE FABRICATION** | 59.62d | 2018-08-17 08:00 | 2018-09-25 21:00 |  | 2018-08-17 08:00 | 2018-09-25 21:00 | 59.62d | 43.52d |  | TEAM_2Shift_Calendar-1 |  | 70h | 3,243.75 | 3,243.75 |
| 38 | 2.1.3.1 | PIPE MARKING | 3h | 2018-09-24 06:00 | 2018-09-24 09:00 | 14 | 2018-09-24 06:00 | 2018-09-24 09:00 | 3h | 79.62d | 0d | TEAM_2Shift_Calendar-1 | Helper; Fitter [200%] | 6h | 356.25 | 356.25 |
| 39 | 2.1.3.2 | STAMPING | 1h | 2018-09-24 09:00 | 2018-09-24 10:00 | 38 | 2018-09-24 09:00 | 2018-09-24 10:00 | 1h | 98.53d | 0d | TEAM_2Shift_Calendar-1 | Fitter [200%] | 2h | 137.5 | 137.5 |
| 40 | 2.1.3.3 | CUTTING | 7.5h | 2018-09-24 10:00 | 2018-09-24 17:30 | 39 | 2018-09-24 10:00 | 2018-09-24 17:30 | 7.5h | 98.53d | 0d | TEAM_2Shift_Calendar-1 | Helper; GasCutter [200%] | 15h | 375 | 375 |
| 41 | 2.1.3.4 | EDGE PREPARATION | 4h | 2018-09-24 17:30 | 2018-09-24 21:30 | 40 | 2018-09-24 17:30 | 2018-09-24 21:30 | 4h | 98.94d | 0d | TEAM_2Shift_Calendar-1 | Grinder [200%] | 8h | 450 | 450 |
| 42 | 2.1.3.5 | NOZZLE CAP FIT UP | 4h | 2018-09-24 21:30 | 2018-09-25 09:30 | 41 | 2018-09-24 21:30 | 2018-09-25 09:30 | 4h | 98.94d | 0d | TEAM_2Shift_Calendar-1 | Fitter [200%] | 8h | 550 | 550 |
| 43 | 2.1.3.6 | WELDING | 7.5h | 2018-09-25 09:30 | 2018-09-25 17:00 | 42 | 2018-09-25 09:30 | 2018-09-25 17:00 | 7.5h | 98.94d | 0d | TEAM_2Shift_Calendar-1 | Helper; TIGWelder [200%] | 15h | 375 | 375 |
| 44 | 2.1.3.7 | FLUSH GRIND | 4h | 2018-09-25 17:00 | 2018-09-25 21:00 | 43 | 2018-09-25 17:00 | 2018-09-25 21:00 | 4h | 99.34d |  | TEAM_2Shift_Calendar-1 | Grinder [200%] | 8h | 450 | 450 |
| 45 | 2.1.3.8 | DP CHECK | 4h | 2018-08-17 08:00 | 2018-08-17 12:00 |  | 2018-08-17 08:00 | 2018-08-17 12:00 | 4h | 140.03d | 0d | TEAM_2Shift_Calendar-1 | Fitter [200%] | 8h | 550 | 550 |
| 46 | 2.1.3.9 | RT | 2d | 2018-08-17 12:00 | 2018-08-18 12:00 | 45 | 2018-08-17 12:00 | 2018-08-18 12:00 | 2d | 140.03d | 79.28d | TEAM_2Shift_Calendar-1 | SC (Cost) [0.1%] |  |  |  |
| 47 | 2.1.4 | **NOZZLE HBN FABRICATION** | 79.19d | 2018-08-17 08:00 | 2018-10-08 17:30 |  | 2018-08-17 08:00 | 2018-10-08 17:30 | 79.19d | 23.95d |  | TEAM_2Shift_Calendar-1 |  | 306h | 12,134.38 | 12,134.38 |
| 48 | 2.1.4.1 | PIPE MARKING | 16.5h | 2018-09-24 09:00 | 2018-09-25 09:30 | 38 | 2018-09-24 09:00 | 2018-09-25 09:30 | 16.5h | 79.62d | 0d | TEAM_2Shift_Calendar-1 | Helper; Fitter [200%] | 33h | 1,959.38 | 1,959.38 |
| 49 | 2.1.4.2 | STAMPING | 9h | 2018-09-25 09:30 | 2018-09-25 18:30 | 48 | 2018-09-25 09:30 | 2018-09-25 18:30 | 9h | 79.62d | 0d | TEAM_2Shift_Calendar-1 | Fitter [200%] | 18h | 1,237.5 | 1,237.5 |
| 50 | 2.1.4.3 | CUTTING | 25.25h | 2018-09-25 18:30 | 2018-09-27 11:45 | 49 | 2018-09-25 18:30 | 2018-09-27 11:45 | 25.25h | 79.62d | 0d | TEAM_2Shift_Calendar-1 | Helper; GasCutter [200%] | 45h | 1,125 | 1,125 |
| 51 | 2.1.4.4 | MACHINING | 36h | 2018-09-27 11:45 | 2018-10-03 16:45 | 50 | 2018-09-27 11:45 | 2018-10-03 16:45 | 36h | 79.75d | 0d | TEAM_2Shift_Calendar-1 | MillingOperator | 36h |  |  |
| 52 | 2.1.4.5 | NOZZLE CAP FIT UP | 17h | 2018-10-03 16:45 | 2018-10-04 17:45 | 51 | 2018-10-03 16:45 | 2018-10-04 17:45 | 17h | 79.75d | 0d | TEAM_2Shift_Calendar-1 | Fitter [200%] | 34h | 2,337.5 | 2,337.5 |
| 53 | 2.1.4.6 | WELDING | 30.75h | 2018-10-04 17:45 | 2018-10-06 16:30 | 52 | 2018-10-04 17:45 | 2018-10-06 16:30 | 30.75h | 79.75d | 0d | TEAM_2Shift_Calendar-1 | Helper; TIGWelder [200%] | 60h | 1,500 | 1,500 |
| 54 | 2.1.4.7 | FLUSH GRIND | 17h | 2018-10-06 16:30 | 2018-10-08 17:30 | 53 | 2018-10-06 16:30 | 2018-10-08 17:30 | 17h | 79.78d |  | TEAM_2Shift_Calendar-1 | Grinder [200%] | 34h | 1,912.5 | 1,912.5 |
| 55 | 2.1.4.8 | DP CHECK | 15h | 2018-08-17 08:00 | 2018-08-18 07:00 |  | 2018-08-17 08:00 | 2018-08-18 07:00 | 15h | 123.03d | 0d | TEAM_2Shift_Calendar-1 | Fitter [200%] | 30h | 2,062.5 | 2,062.5 |
| 56 | 2.1.4.9 | RT | 2d | 2018-08-18 07:00 | 2018-08-20 07:00 | 55 | 2018-08-18 07:00 | 2018-08-20 07:00 | 2d | 123.03d | 0.19d | TEAM_2Shift_Calendar-1 | SC (Cost) [0.1%] |  |  |  |
| 57 | 2.1.4.10 | MACHINING-FILLET | 16h | 2018-08-20 08:30 | 2018-08-21 17:30 | 56 | 2018-08-20 08:30 | 2018-08-21 17:30 | 16h | 122.84d | 51.06d | TEAM_2Shift_Calendar-1 | MillingOperator | 16h |  |  |
| 58 | 2.1.5 | **NOZZLE HBN/PIPE FABRICATION** | 65.69d | 2018-08-17 08:00 | 2018-09-28 21:30 |  | 2018-08-17 08:00 | 2018-09-28 21:30 | 65.69d | 37.45d |  | TEAM_2Shift_Calendar-1 |  | 154h | 6,793.75 | 6,793.75 |
| 59 | 2.1.5.1 | PIPE MARKING | 3h | 2018-09-25 09:30 | 2018-09-25 12:30 | 48 | 2018-09-25 09:30 | 2018-09-25 12:30 | 3h | 88.88d | 0d | TEAM_2Shift_Calendar-1 | Helper; Fitter [200%] | 6h | 356.25 | 356.25 |
| 60 | 2.1.5.2 | STAMPING | 3h | 2018-09-25 12:30 | 2018-09-25 15:30 | 59 | 2018-09-25 12:30 | 2018-09-25 15:30 | 3h | 93.62d | 0d | TEAM_2Shift_Calendar-1 | Fitter [200%] | 6h | 412.5 | 412.5 |
| 61 | 2.1.5.3 | CUTTING | 3h | 2018-09-25 15:30 | 2018-09-25 18:30 | 60 | 2018-09-25 15:30 | 2018-09-25 18:30 | 3h | 93.62d | 0.75d | TEAM_2Shift_Calendar-1 | Helper; GasCutter [200%] | 6h | 150 | 150 |
| 62 | 2.1.5.4 | MACHINING | 2h | 2018-09-26 08:30 | 2018-09-26 10:30 | 61 | 2018-09-26 08:30 | 2018-09-26 10:30 | 2h | 92.88d | 0d | TEAM_2Shift_Calendar-1 | MillingOperator | 2h |  |  |
| 63 | 2.1.5.5 | HBN/PIPE TO PIPE EP | 2h | 2018-09-26 10:30 | 2018-09-26 12:30 | 62 | 2018-09-26 10:30 | 2018-09-26 12:30 | 2h | 93.53d | 0d | TEAM_2Shift_Calendar-1 | Grinder [200%] | 4h | 225 | 225 |
| 64 | 2.1.5.6 | WELDING | 9.5h | 2018-09-26 12:30 | 2018-09-27 09:00 | 63 | 2018-09-26 12:30 | 2018-09-27 09:00 | 9.5h | 93.09d | 0d | TEAM_2Shift_Calendar-1 | Helper; TIGWelder [200%] | 18h | 450 | 450 |
| 65 | 2.1.5.7 | NOZZLE CAP FIT UP | 8h | 2018-09-27 09:00 | 2018-09-27 17:00 | 64 | 2018-09-27 09:00 | 2018-09-27 17:00 | 8h | 93.09d | 0d | TEAM_2Shift_Calendar-1 | Fitter [200%] | 16h | 1,100 | 1,100 |
| 66 | 2.1.5.8 | THERMOWELL FITTING IF REQD | 2h | 2018-09-27 17:00 | 2018-09-27 19:00 | 65 | 2018-09-27 17:00 | 2018-09-27 19:00 | 2h | 93.09d | 0d | TEAM_2Shift_Calendar-1 | Fitter [200%] | 4h | 275 | 275 |
| 67 | 2.1.5.9 | WELDING | 12.5h | 2018-09-27 19:00 | 2018-09-28 15:30 | 66 | 2018-09-27 19:00 | 2018-09-28 15:30 | 12.5h | 93.09d | 0d | TEAM_2Shift_Calendar-1 | Helper; TIGWelder [200%] | 24h | 600 | 600 |
| 68 | 2.1.5.10 | FLUSH GRIND | 6h | 2018-09-28 15:30 | 2018-09-28 21:30 | 67 | 2018-09-28 15:30 | 2018-09-28 21:30 | 6h | 93.28d |  | TEAM_2Shift_Calendar-1 | Grinder [200%] | 12h | 675 | 675 |
| 69 | 2.1.5.11 | DP CHECK | 8h | 2018-08-17 08:00 | 2018-08-17 16:00 |  | 2018-08-17 08:00 | 2018-08-17 16:00 | 8h | 131.31d | 0d | TEAM_2Shift_Calendar-1 | Fitter [200%] | 16h | 1,100 | 1,100 |
| 70 | 2.1.5.12 | RT | 2d | 2018-08-17 16:00 | 2018-08-18 16:00 | 69 | 2018-08-17 16:00 | 2018-08-18 16:00 | 2d | 131.31d | 0d | TEAM_2Shift_Calendar-1 | SC (Cost) [0.1%] |  |  |  |
| 71 | 2.1.5.13 | MACHINING-FILLET | 6h | 2018-08-18 16:00 | 2018-08-20 14:00 | 70 | 2018-08-18 16:00 | 2018-08-20 14:00 | 6h | 130.44d | 0d | TEAM_2Shift_Calendar-1 | MillingOperator | 6h |  |  |
| 72 | 2.1.5.14 | PROFILE MARKING | 4h | 2018-08-20 14:00 | 2018-08-20 18:00 | 71 | 2018-08-20 14:00 | 2018-08-20 18:00 | 4h | 131.19d | 0.81d | TEAM_2Shift_Calendar-1 | Fitter [200%] | 8h | 550 | 550 |
| 73 | 2.1.5.15 | PROFILE CUTTING | 5h | 2018-08-21 08:30 | 2018-08-21 14:30 | 72 | 2018-08-21 08:30 | 2018-08-21 14:30 | 5h | 130.38d | 0d | TEAM_2Shift_Calendar-1 | GasCutter [200%] | 10h |  |  |
| 74 | 2.1.5.16 | PROFILE GRINDING | 8h | 2018-08-21 14:30 | 2018-08-22 06:30 | 73 | 2018-08-21 14:30 | 2018-08-22 06:30 | 8h | 130.49d | 53.31d | TEAM_2Shift_Calendar-1 | Grinder [200%] | 16h | 900 | 900 |

Notes:
- 37: 1 NO
- 46: SC
- 47: 43NOS
- 56: SC
- 58: 12NOS
- 70: SC

| ID | WBS | Task | Duration | Start | Finish | Predecessors | Baseline start | Baseline finish | Baseline duration | Total slack | Free slack | Calendar | Resources | Work | Cost | Baseline cost |
| --- | --- | --- | --- | --- | --- | --- | --- | --- | --- | --- | --- | --- | --- | --- | --- | --- |
| 75 | 2.1.6 | **NOZZLE HBN/PIPE FABRICATION** | 69.81d | 2018-08-17 08:00 | 2018-10-03 06:30 |  | 2018-08-17 08:00 | 2018-10-03 06:30 | 69.81d | 33.33d |  | TEAM_2Shift_Calendar-1 |  | 188h | 8,215.62 | 8,215.62 |
| 76 | 2.1.6.1 | PIPE MARKING | 4.5h | 2018-09-25 12:30 | 2018-09-25 17:00 | 59 | 2018-09-25 12:30 | 2018-09-25 17:00 | 4.5h | 88.88d | 0d | TEAM_2Shift_Calendar-1 | Helper; Fitter [200%] | 9h | 534.38 | 534.38 |
| 77 | 2.1.6.2 | STAMPING | 2h | 2018-09-25 17:00 | 2018-09-25 19:00 | 76 | 2018-09-25 17:00 | 2018-09-25 19:00 | 2h | 88.88d | 0d | TEAM_2Shift_Calendar-1 | Fitter [200%] | 4h | 275 | 275 |
| 78 | 2.1.6.3 | CUTTING | 15h | 2018-09-25 19:00 | 2018-09-26 18:00 | 77 | 2018-09-25 19:00 | 2018-09-26 18:00 | 15h | 88.88d | 0.81d | TEAM_2Shift_Calendar-1 | Helper; GasCutter [200%] | 30h | 750 | 750 |
| 79 | 2.1.6.4 | MACHINING | 8h | 2018-09-27 08:30 | 2018-09-27 17:30 | 78 | 2018-09-27 08:30 | 2018-09-27 17:30 | 8h | 88.12d | 0d | TEAM_2Shift_Calendar-1 | MillingOperator | 8h |  |  |
| 80 | 2.1.6.5 | HBN/PIPE TO PIPE EP | 5h | 2018-09-27 17:30 | 2018-09-28 06:30 | 79 | 2018-09-27 17:30 | 2018-09-28 06:30 | 5h | 89d | 0d | TEAM_2Shift_Calendar-1 | Grinder [200%] | 10h | 562.5 | 562.5 |
| 81 | 2.1.6.6 | WELDING | 6h | 2018-09-28 06:30 | 2018-09-28 12:30 | 80 | 2018-09-28 06:30 | 2018-09-28 12:30 | 6h | 89d | 0d | TEAM_2Shift_Calendar-1 | Helper; TIGWelder [200%] | 12h | 300 | 300 |
| 82 | 2.1.6.7 | NOZZLE CAP FIT UP | 3h | 2018-09-28 12:30 | 2018-09-28 15:30 | 81 | 2018-09-28 12:30 | 2018-09-28 15:30 | 3h | 89.15d | 0d | TEAM_2Shift_Calendar-1 | Fitter [200%] | 6h | 412.5 | 412.5 |
| 83 | 2.1.6.8 | FOOT PIECE TO HBN/PIPE EP | 5h | 2018-09-28 15:30 | 2018-09-28 20:30 | 82 | 2018-09-28 15:30 | 2018-09-28 20:30 | 5h | 89.15d | 0d | TEAM_2Shift_Calendar-1 | Grinder [200%] | 10h | 562.5 | 562.5 |
| 84 | 2.1.6.9 | PIPE BENDING | 15h | 2018-09-28 20:30 | 2018-09-29 19:30 | 83, 4 | 2018-09-28 20:30 | 2018-09-29 19:30 | 15h | 89.15d | 0d | TEAM_2Shift_Calendar-1 | Helper; Fitter [200%] | 30h | 1,781.25 | 1,781.25 |
| 85 | 2.1.6.10 | EP-2 SIDES | 10h | 2018-09-29 19:30 | 2018-10-01 13:30 | 84 | 2018-09-29 19:30 | 2018-10-01 13:30 | 10h | 89.15d | 0d | TEAM_2Shift_Calendar-1 | Grinder [200%] | 20h | 1,125 | 1,125 |
| 86 | 2.1.6.11 | WELDING | 6h | 2018-10-01 13:30 | 2018-10-01 19:30 | 85 | 2018-10-01 13:30 | 2018-10-01 19:30 | 6h | 89.15d | 0d | TEAM_2Shift_Calendar-1 | Helper; TIGWelder [200%] | 12h | 300 | 300 |
| 87 | 2.1.6.12 | FLUSH GRIND | 3h | 2018-10-01 19:30 | 2018-10-03 06:30 | 86 | 2018-10-01 19:30 | 2018-10-03 06:30 | 3h | 89.15d |  | TEAM_2Shift_Calendar-1 | Grinder [200%] | 6h | 337.5 | 337.5 |
| 88 | 2.1.6.13 | DP CHECK | 3h | 2018-08-17 08:00 | 2018-08-17 11:00 |  | 2018-08-17 08:00 | 2018-08-17 11:00 | 3h | 153.84d | 0d | TEAM_2Shift_Calendar-1 | Fitter [200%] | 6h | 412.5 | 412.5 |
| 89 | 2.1.6.14 | RT | 2d | 2018-08-17 11:00 | 2018-08-18 11:00 | 88 | 2018-08-17 11:00 | 2018-08-18 11:00 | 2d | 153.84d | 0d | TEAM_2Shift_Calendar-1 | SC (Cost) [0.1%] |  |  |  |
| 90 | 2.1.6.15 | MACHINING-FILLET | 3h | 2018-08-18 11:00 | 2018-08-18 15:00 | 89 | 2018-08-18 11:00 | 2018-08-18 15:00 | 3h | 153.84d | 0d | TEAM_2Shift_Calendar-1 | MillingOperator | 3h |  |  |
| 91 | 2.1.6.16 | PROFILE MARKING | 3h | 2018-08-18 15:00 | 2018-08-18 18:00 | 90 | 2018-08-18 15:00 | 2018-08-18 18:00 | 3h | 153.84d | 0.81d | TEAM_2Shift_Calendar-1 | Fitter [200%] | 6h | 412.5 | 412.5 |
| 92 | 2.1.6.17 | PROFILE CUTTING | 4h | 2018-08-20 08:30 | 2018-08-20 12:30 | 91 | 2018-08-20 08:30 | 2018-08-20 12:30 | 4h | 153.03d | 0d | TEAM_2Shift_Calendar-1 | GasCutter [200%] | 8h |  |  |
| 93 | 2.1.6.18 | PROFILE GRINDING | 4h | 2018-08-20 12:30 | 2018-08-20 16:30 | 92 | 2018-08-20 12:30 | 2018-08-20 16:30 | 4h | 153.9d |  | TEAM_2Shift_Calendar-1 | Grinder [200%] | 8h | 450 | 450 |
| 94 | 2.2 | **SADDLE FAB** | 15.58d | 2018-09-21 08:00 | 2018-10-01 20:40 |  | 2018-09-21 08:00 | 2018-10-01 20:40 | 15.58d | 15.35d | 0d | TEAM_2Shift_Calendar-1 |  | 214h | 9,635.42 | 9,635.42 |
| 95 | 2.2.1 | SADDLE PLATE MARKING | 1.12d | 2018-09-21 08:00 | 2018-09-21 17:00 | 6 | 2018-09-21 08:00 | 2018-09-21 17:00 | 1.12d | 71.3d | 0d | TEAM_2Shift_Calendar-1 | Fitter [200%] | 18h | 1,237.5 | 1,237.5 |
| 96 | 2.2.2 | SADDLE PLATE CUTTING | 2d | 2018-09-21 17:00 | 2018-09-25 09:00 | 95 | 2018-09-21 17:00 | 2018-09-25 09:00 | 2d | 70.42d | 0d | TEAM_2Shift_Calendar-1 | Helper; GasCutter | 18h | 450 | 450 |
| 97 | 2.2.3 | SADDLE PLATE GRINDING | 2.81d | 2018-09-25 09:00 | 2018-09-26 15:30 | 96 | 2018-09-25 09:00 | 2018-09-26 15:30 | 2.81d | 70.42d | 0d | TEAM_2Shift_Calendar-1 | Grinder [200%] | 45h | 2,531.25 | 2,531.25 |
| 98 | 2.2.4 | DRILLING | 1d | 2018-09-26 15:30 | 2018-09-27 07:30 | 97 | 2018-09-26 15:30 | 2018-09-27 07:30 | 1d | 70.42d | 0d | TEAM_2Shift_Calendar-1 | Driller | 8h | 550 | 550 |
| 99 | 2.2.5 | SADDLE PLATE FIT UP | 1.08d | 2018-09-27 07:30 | 2018-09-27 16:10 | 98 | 2018-09-27 07:30 | 2018-09-27 16:10 | 1.08d | 70.42d | 0d | TEAM_2Shift_Calendar-1 | Helper [200%]; Fitter [83.3%]; TIGWelder | 20h | 791.67 | 791.67 |
| 100 | 2.2.6 | SADDLE WELDING | 4.06d | 2018-09-27 16:10 | 2018-09-29 16:40 | 99 | 2018-09-27 16:10 | 2018-09-29 16:40 | 4.06d | 71.17d | 0d | TEAM_2Shift_Calendar-1 | Helper; TIGWelder [200%] | 65h | 1,625 | 1,625 |
| 101 | 2.2.7 | BEND REMOVAL | 1d | 2018-09-29 16:40 | 2018-10-01 08:40 | 100 | 2018-09-29 16:40 | 2018-10-01 08:40 | 1d | 71.17d | 0d | TEAM_2Shift_Calendar-1 | Fitter [200%] | 16h | 1,100 | 1,100 |
| 102 | 2.2.8 | GRINDING | 1.5d | 2018-10-01 08:40 | 2018-10-01 20:40 | 101 | 2018-10-01 08:40 | 2018-10-01 20:40 | 1.5d | 71.17d |  | TEAM_2Shift_Calendar-1 | Grinder [200%] | 24h | 1,350 | 1,350 |

Notes:
- 75: SD1,SD2,AL1,AL2
- 89: SC

| ID | WBS | Task | Duration | Start | Finish | Predecessors | Baseline start | Baseline finish | Baseline duration | Total slack | Free slack | Calendar | Resources | Work | Cost | Baseline cost |
| --- | --- | --- | --- | --- | --- | --- | --- | --- | --- | --- | --- | --- | --- | --- | --- | --- |
| 103 | 2.3 | **LIFTING LUG FAB** | 4.62d | 2018-09-21 17:00 | 2018-09-25 22:00 |  | 2018-09-21 17:00 | 2018-09-25 22:00 | 4.62d | 43.06d |  | TEAM_2Shift_Calendar-1 |  | 57h | 2,906.25 | 2,906.25 |
| 104 | 2.3.1 | PLATE MARKING | 4h | 2018-09-21 17:00 | 2018-09-21 21:00 | 95, 2 | 2018-09-21 17:00 | 2018-09-21 21:00 | 4h | 98.78d | 0d | TEAM_2Shift_Calendar-1 | Fitter [200%] | 8h | 550 | 550 |
| 105 | 2.3.2 | CUTTING | 1.5d | 2018-09-21 21:00 | 2018-09-24 17:30 | 104 | 2018-09-21 21:00 | 2018-09-24 17:30 | 1.5d | 98.78d | 0d | TEAM_2Shift_Calendar-1 | Helper; GasCutter | 16h | 400 | 400 |
| 106 | 2.3.3 | GRINDING | 1.56d | 2018-09-24 17:30 | 2018-09-25 14:00 | 105 | 2018-09-24 17:30 | 2018-09-25 14:00 | 1.56d | 99.22d | 0d | TEAM_2Shift_Calendar-1 | Grinder [200%] | 25h | 1,406.25 | 1,406.25 |
| 107 | 2.3.4 | DRILLING | 1d | 2018-09-25 14:00 | 2018-09-25 22:00 | 106 | 2018-09-25 14:00 | 2018-09-25 22:00 | 1d | 99.22d |  | TEAM_2Shift_Calendar-1 | Driller | 8h | 550 | 550 |
| 108 | 2.4 | **DISH FORMING** | 58.25d | 2018-08-17 08:00 | 2018-09-25 10:00 |  | 2018-08-17 08:00 | 2018-09-25 10:00 | 58.25d | 8.44d | 0d | TEAM_2Shift_Calendar-1 |  | 445h | 17,905.21 | 17,905.21 |
| 109 | 2.4.1 | MATERIAL MARKING | 0.75d | 2018-08-17 08:00 | 2018-08-17 14:00 | 2 | 2018-08-17 08:00 | 2018-08-17 14:00 | 0.75d | 65.83d | 0d | TEAM_2Shift_Calendar-1 | Fitter [200%] | 12h | 825 | 825 |
| 110 | 2.4.2 | MATERIAL STAMPING | 0.5d | 2018-08-17 14:00 | 2018-08-17 18:00 | 109 | 2018-08-17 14:00 | 2018-08-17 18:00 | 0.5d | 65.83d | 0d | TEAM_2Shift_Calendar-1 | Fitter [200%] | 8h | 550 | 550 |
| 111 | 2.4.3 | DISH PL CUTTING | 1.38d | 2018-08-17 18:00 | 2018-08-18 14:00 | 110 | 2018-08-17 18:00 | 2018-08-18 14:00 | 1.38d | 65.77d | 0d | TEAM_2Shift_Calendar-1 | Helper; GasCutter [200%] | 18h | 450 | 450 |
| 112 | 2.4.4 | GRINDING/EP | 0.88d | 2018-08-18 14:00 | 2018-08-18 21:00 | 111 | 2018-08-18 14:00 | 2018-08-18 21:00 | 0.88d | 65.77d | 0d | TEAM_2Shift_Calendar-1 | Grinder [200%] | 14h | 787.5 | 787.5 |
| 113 | 2.4.5 | DP CHECK | 1d | 2018-08-18 21:00 | 2018-08-20 13:00 | 112 | 2018-08-18 21:00 | 2018-08-20 13:00 | 1d | 65.77d | 0d | TEAM_2Shift_Calendar-1 | Helper; Fitter [87.5%] | 14h | 831.25 | 831.25 |
| 114 | 2.4.6 | WELDING | 2.31d | 2018-08-20 13:00 | 2018-08-22 11:30 | 113 | 2018-08-20 13:00 | 2018-08-22 11:30 | 2.31d | 65.77d | 0d | TEAM_2Shift_Calendar-1 | Helper [400%]; TIGWelder [200%] | 60h | 1,500 | 1,500 |
| 115 | 2.4.7 | PL FITUP | 1.46d | 2018-08-22 11:30 | 2018-08-23 11:50 | 114 | 2018-08-22 11:30 | 2018-08-23 11:50 | 1.46d | 65.83d | 0d | TEAM_2Shift_Calendar-1 | Helper [200%]; Fitter; TIGWelder | 25h | 989.58 | 989.58 |
| 116 | 2.4.8 | ROOT WELDING | 1.38d | 2018-08-23 11:50 | 2018-08-24 14:50 | 115 | 2018-08-23 11:50 | 2018-08-24 14:50 | 1.38d | 65.77d | 0d | TEAM_2Shift_Calendar-1 | Helper [200%]; TIGWelder | 20h | 500 | 500 |
| 117 | 2.4.9 | DP CHECK | 0.5d | 2018-08-24 14:50 | 2018-08-24 18:50 | 116 | 2018-08-24 14:50 | 2018-08-24 18:50 | 0.5d | 65.77d | 0d | TEAM_2Shift_Calendar-1 | Helper; Fitter [75%] | 6h | 356.25 | 356.25 |
| 118 | 2.4.10 | FINAL WELDING ONSIDE | 1.59d | 2018-08-24 18:50 | 2018-08-28 09:00 | 117 | 2018-08-24 18:50 | 2018-08-28 09:00 | 1.59d | 65.73d | 0d | TEAM_2Shift_Calendar-1 | Helper [200%]; TIGWelder | 17h | 425 | 425 |
| 119 | 2.4.11 | BACKCHIP GRINDING | 1d | 2018-08-28 09:00 | 2018-08-28 17:00 | 118 | 2018-08-28 09:00 | 2018-08-28 17:00 | 1d | 65.73d | 0d | TEAM_2Shift_Calendar-1 | Grinder [75%] | 6h | 337.5 | 337.5 |
| 120 | 2.4.12 | FINAL WELDING ON BACKCHIP SIDE | 1.62d | 2018-08-28 17:00 | 2018-08-30 09:00 | 119 | 2018-08-28 17:00 | 2018-08-30 09:00 | 1.62d | 64.85d | 0d | TEAM_2Shift_Calendar-1 | Helper [200%]; TIGWelder | 18h | 450 | 450 |
| 121 | 2.4.13 | LS-FITUP | 0.88d | 2018-08-30 09:00 | 2018-08-30 16:00 | 120 | 2018-08-30 09:00 | 2018-08-30 16:00 | 0.88d | 64.85d | 0d | TEAM_2Shift_Calendar-1 | Helper [200%]; Fitter; TIGWelder | 18h | 712.5 | 712.5 |
| 122 | 2.4.14 | ROOT WELDING | 1.5d | 2018-08-30 16:00 | 2018-08-31 17:00 | 121 | 2018-08-30 16:00 | 2018-08-31 17:00 | 1.5d | 65.73d | 0d | TEAM_2Shift_Calendar-1 | Helper [200%]; TIGWelder | 18h | 450 | 450 |
| 123 | 2.4.15 | ROOT WELDING DP CHECK | 1.67h | 2018-08-31 17:00 | 2018-08-31 18:40 | 122 | 2018-08-31 17:00 | 2018-08-31 18:40 | 1.67h | 65.73d | 0d | TEAM_2Shift_Calendar-1 | Fitter [300%] | 5h | 343.75 | 343.75 |
| 124 | 2.4.16 | ONSIDE FINAL WELDING | 1.69d | 2018-08-31 18:40 | 2018-09-03 09:30 | 123 | 2018-08-31 18:40 | 2018-09-03 09:30 | 1.69d | 65.19d | 0d | TEAM_2Shift_Calendar-1 | Helper [200%]; TIGWelder | 18h | 450 | 450 |
| 125 | 2.4.17 | BACKCHIP GRINDING | 1d | 2018-09-03 09:30 | 2018-09-03 17:30 | 124 | 2018-09-03 09:30 | 2018-09-03 17:30 | 1d | 65.19d | 0d | TEAM_2Shift_Calendar-1 | Grinder [75%] | 6h | 337.5 | 337.5 |
| 126 | 2.4.18 | BACKCHIP SIDE WELDING | 1.69d | 2018-09-03 17:30 | 2018-09-05 09:30 | 125 | 2018-09-03 17:30 | 2018-09-05 09:30 | 1.69d | 64.31d | 0d | TEAM_2Shift_Calendar-1 | Helper [200%]; TIGWelder | 18h | 450 | 450 |
| 127 | 2.4.19 | WELDING BACKCHIP GRINDING | 1d | 2018-09-05 09:30 | 2018-09-05 17:30 | 126 | 2018-09-05 09:30 | 2018-09-05 17:30 | 1d | 64.31d | 0d | TEAM_2Shift_Calendar-1 | Grinder [75%] | 6h | 337.5 | 337.5 |
| 128 | 2.4.20 | INSIDE POLISHING | 2d | 2018-09-05 17:30 | 2018-09-06 17:30 | 127 | 2018-09-05 17:30 | 2018-09-06 17:30 | 2d | 64.31d | 0d | TEAM_2Shift_Calendar-1 | Grinder [75%] | 12h | 675 | 675 |
| 129 | 2.4.21 | OUTSIDE POLISHING | 1d | 2018-09-06 17:30 | 2018-09-07 09:30 | 128 | 2018-09-06 17:30 | 2018-09-07 09:30 | 1d | 64.31d | 0d | TEAM_2Shift_Calendar-1 | Grinder [75%] | 6h | 337.5 | 337.5 |
| 130 | 2.4.22 | DP TEST | 0.75d | 2018-09-07 09:30 | 2018-09-07 15:30 | 129 | 2018-09-07 09:30 | 2018-09-07 15:30 | 0.75d | 64.31d | 0d | TEAM_2Shift_Calendar-1 | Helper; Fitter | 12h | 712.5 | 712.5 |
| 131 | 2.4.23 | EP GRINDING | 2d | 2018-09-07 15:30 | 2018-09-10 15:30 | 130 | 2018-09-07 15:30 | 2018-09-10 15:30 | 2d | 64.31d | 0d | TEAM_2Shift_Calendar-1 | Grinder [75%] | 12h | 675 | 675 |
| 132 | 2.4.24 | EP DP CHECK | 0.5d | 2018-09-10 15:30 | 2018-09-10 19:30 | 131 | 2018-09-10 15:30 | 2018-09-10 19:30 | 0.5d | 64.31d | 0d | TEAM_2Shift_Calendar-1 | Helper; Fitter [75%] | 6h | 356.25 | 356.25 |
| 133 | 2.4.25 | RT | 1d | 2018-09-10 19:30 | 2018-09-11 11:30 | 132 | 2018-09-10 19:30 | 2018-09-11 11:30 | 1d | 64.31d | 0d | TEAM_2Shift_Calendar-1 | SC (Cost) [0.1%] |  |  |  |
| 134 | 2.4.26 | DISH FORMING | 15d | 2018-09-11 11:30 | 2018-09-20 19:30 | 133 | 2018-09-11 11:30 | 2018-09-20 19:30 | 15d | 64.31d | 0d | TEAM_2Shift_Calendar-1 | SC (Cost) [0.1%] |  |  |  |
| 135 | 2.4.27 | INWARD INSPECTION | 0.09d | 2018-09-20 19:30 | 2018-09-20 20:15 | 134 | 2018-09-20 19:30 | 2018-09-20 20:15 | 0.09d | 64.31d | 0d | TEAM_2Shift_Calendar-1 | Helper [200%]; Fitter [200%] | 3h | 178.12 | 178.12 |
| 136 | 2.4.28 | SF MARKING | 0.62d | 2018-09-20 20:15 | 2018-09-21 09:15 | 135 | 2018-09-20 20:15 | 2018-09-21 09:15 | 0.62d | 64.31d | 0d | TEAM_2Shift_Calendar-1 | Helper [200%]; Fitter [200%] | 20h | 1,187.5 | 1,187.5 |
| 137 | 2.4.29 | CUTTING(HEIGHT) | 1.28d | 2018-09-21 09:15 | 2018-09-24 10:00 | 136 | 2018-09-21 09:15 | 2018-09-24 10:00 | 1.28d | 64.31d | 0d | TEAM_2Shift_Calendar-1 | Helper [200%]; GasCutter [200%] | 35h | 875 | 875 |
| 138 | 2.4.30 | GRINDING | 1.5d | 2018-09-24 10:00 | 2018-09-24 22:00 | 137 | 2018-09-24 10:00 | 2018-09-24 22:00 | 1.5d | 64.33d | 0d | TEAM_2Shift_Calendar-1 | Grinder [200%] | 24h | 1,350 | 1,350 |
| 139 | 2.4.31 | INSPECTION | 0.5d | 2018-09-25 06:00 | 2018-09-25 10:00 | 138 | 2018-09-25 06:00 | 2018-09-25 10:00 | 0.5d | 64.33d |  | TEAM_2Shift_Calendar-1 | Helper; Fitter [200%] | 8h | 475 | 475 |

Notes:
- 103: 8NOS
- 109: 8 PLATES/TANK
- 115: ALS1,ALS3,BLS1,BLS3
- 119: ALS1,ALS3,BLS1,BLS3
- 121: ALS2,BLS2
- 122: ALS2,BLS2
- 123: ALS2,BLS2
- 133: SC
- 134: SC
- 135: SC

| ID | WBS | Task | Duration | Start | Finish | Predecessors | Baseline start | Baseline finish | Baseline duration | Total slack | Free slack | Calendar | Resources | Work | Cost | Baseline cost |
| --- | --- | --- | --- | --- | --- | --- | --- | --- | --- | --- | --- | --- | --- | --- | --- | --- |
| 140 | 2.5 | **SHELL FABRICATION** | 27.69d | 2018-08-17 08:00 | 2018-09-03 21:30 |  | 2018-08-17 08:00 | 2018-09-03 21:30 | 27.69d | 24.06d |  | TEAM_2Shift_Calendar-1 |  | 648h | 30,159.38 | 30,159.38 |
| 141 | 2.5.1 | **SHELL 1- FABRICATION** | 25.69d | 2018-08-17 08:00 | 2018-09-01 21:30 |  | 2018-08-17 08:00 | 2018-09-01 21:30 | 25.69d | 24.06d | 2d | TEAM_2Shift_Calendar-1 |  | 216h | 10,053.12 | 10,053.12 |
| 142 | 2.5.1.1 | SH1-PLATE MARKING | 0.75d | 2018-08-17 08:00 | 2018-08-17 14:00 | 2 | 2018-08-17 08:00 | 2018-08-17 14:00 | 0.75d | 80.06d | 0d | TEAM_2Shift_Calendar-1 | Fitter [200%] | 12h | 825 | 825 |
| 143 | 2.5.1.2 | SH1- STAMPING | 3h | 2018-08-17 14:00 | 2018-08-17 17:00 | 142 | 2018-08-17 14:00 | 2018-08-17 17:00 | 3h | 83.56d | 0d | TEAM_2Shift_Calendar-1 | Fitter | 3h | 206.25 | 206.25 |
| 144 | 2.5.1.3 | SH1-PL CUTTING | 0.88d | 2018-08-17 17:00 | 2018-08-18 12:00 | 143 | 2018-08-17 17:00 | 2018-08-18 12:00 | 0.88d | 82.69d | 0d | TEAM_2Shift_Calendar-1 | Helper; GasCutter [87.5%] | 7h | 175 | 175 |
| 145 | 2.5.1.4 | SH1-GRINDING | 1d | 2018-08-18 12:00 | 2018-08-18 20:00 | 144 | 2018-08-18 12:00 | 2018-08-18 20:00 | 1d | 82.69d | 0d | TEAM_2Shift_Calendar-1 | Grinder [75%] | 6h | 337.5 | 337.5 |
| 146 | 2.5.1.5 | SH1-EDGE PREPARATION/DP CHECK | 1d | 2018-08-18 20:00 | 2018-08-20 12:00 | 145 | 2018-08-18 20:00 | 2018-08-20 12:00 | 1d | 82.69d | 0d | TEAM_2Shift_Calendar-1 | Grinder [75%] | 6h | 337.5 | 337.5 |
| 147 | 2.5.1.6 | SH1-PRE BENDING | 1.56d | 2018-08-20 12:00 | 2018-08-21 08:30 | 146 | 2018-08-20 12:00 | 2018-08-21 08:30 | 1.56d | 82.69d | 0d | TEAM_2Shift_Calendar-1 | Fitter [200%] | 25h | 1,718.75 | 1,718.75 |
| 148 | 2.5.1.7 | SH1-PREBEND CUTOFF | 0.5d | 2018-08-21 08:30 | 2018-08-21 12:30 | 147 | 2018-08-21 08:30 | 2018-08-21 12:30 | 0.5d | 82.69d | 0d | TEAM_2Shift_Calendar-1 | Helper; GasCutter [75%] | 6h | 150 | 150 |
| 149 | 2.5.1.8 | SH1-EDGE PREPARTION | 2d | 2018-08-21 12:30 | 2018-08-22 12:30 | 148 | 2018-08-21 12:30 | 2018-08-22 12:30 | 2d | 83.56d | 0d | TEAM_2Shift_Calendar-1 | Grinder [75%] | 12h | 675 | 675 |
| 150 | 2.5.1.9 | SH1-ROLLING | 0.94d | 2018-08-22 12:30 | 2018-08-22 20:00 | 149 | 2018-08-22 12:30 | 2018-08-22 20:00 | 0.94d | 83.56d | 0d | TEAM_2Shift_Calendar-1 | Helper; Fitter [200%] | 15h | 890.62 | 890.62 |
| 151 | 2.5.1.10 | SH1-ACID CLEANING | 1d | 2018-08-22 20:00 | 2018-08-23 12:00 | 150 | 2018-08-22 20:00 | 2018-08-23 12:00 | 1d | 83.56d | 0d | TEAM_2Shift_Calendar-1 | Helper [75%] | 6h | 300 | 300 |
| 152 | 2.5.1.11 | SH1-FITUP | 1.44d | 2018-08-23 12:00 | 2018-08-24 12:00 | 151 | 2018-08-23 12:00 | 2018-08-24 12:00 | 1.44d | 82.94d | 0d | TEAM_2Shift_Calendar-1 | Helper [200%]; Fitter; TIGWelder | 24h | 950 | 950 |
| 153 | 2.5.1.12 | SH1-SPIDERUP | 0.38d | 2018-08-24 12:00 | 2018-08-24 15:00 | 152 | 2018-08-24 12:00 | 2018-08-24 15:00 | 0.38d | 82.94d | 0d | TEAM_2Shift_Calendar-1 | Fitter [200%] | 6h | 412.5 | 412.5 |
| 154 | 2.5.1.13 | SH1-FITUP INSPECTION | 0.5d | 2018-08-24 15:00 | 2018-08-24 19:00 | 153 | 2018-08-24 15:00 | 2018-08-24 19:00 | 0.5d | 82.94d | 0d | TEAM_2Shift_Calendar-1 | Helper; Fitter [75%] | 6h | 356.25 | 356.25 |
| 155 | 2.5.1.14 | SH1-ROOT WELDING | 1.44d | 2018-08-24 19:00 | 2018-08-27 15:30 | 154 | 2018-08-24 19:00 | 2018-08-27 15:30 | 1.44d | 82.94d | 0d | TEAM_2Shift_Calendar-1 | Helper; TIGWelder | 12h | 300 | 300 |
| 156 | 2.5.1.15 | SH1-ROOT WELD VISUAL INSP | 2h | 2018-08-27 15:30 | 2018-08-27 17:30 | 155 | 2018-08-27 15:30 | 2018-08-27 17:30 | 2h | 83.12d | 0d | TEAM_2Shift_Calendar-1 | TIGWelder | 2h |  |  |
| 157 | 2.5.1.16 | SH1-DPCHECK | 3h | 2018-08-27 17:30 | 2018-08-27 20:30 | 156 | 2018-08-27 17:30 | 2018-08-27 20:30 | 3h | 83.12d | 0d | TEAM_2Shift_Calendar-1 | Fitter | 3h | 206.25 | 206.25 |
| 158 | 2.5.1.17 | SH1-WELDING | 2.12d | 2018-08-27 20:30 | 2018-08-29 12:30 | 157 | 2018-08-27 20:30 | 2018-08-29 12:30 | 2.12d | 83d | 0d | TEAM_2Shift_Calendar-1 | Helper; TIGWelder | 24h | 600 | 600 |
| 159 | 2.5.1.18 | SH1- BACKCHIP GRIND | 0.5d | 2018-08-29 12:30 | 2018-08-29 16:30 | 158 | 2018-08-29 12:30 | 2018-08-29 16:30 | 0.5d | 83d | 0d | TEAM_2Shift_Calendar-1 | Grinder | 4h | 225 | 225 |
| 160 | 2.5.1.19 | SH1-INSIDE WELDING | 2.38d | 2018-08-29 16:30 | 2018-08-31 11:30 | 159 | 2018-08-29 16:30 | 2018-08-31 11:30 | 2.38d | 82.19d | 0d | TEAM_2Shift_Calendar-1 | Helper; TIGWelder | 24h | 600 | 600 |
| 161 | 2.5.1.20 | SH1-BACKCHIP GRIND | 0.5d | 2018-08-31 11:30 | 2018-08-31 15:30 | 160 | 2018-08-31 11:30 | 2018-08-31 15:30 | 0.5d | 82.19d | 0d | TEAM_2Shift_Calendar-1 | Grinder | 4h | 225 | 225 |
| 162 | 2.5.1.21 | SH1-REROLLING | 0.38d | 2018-08-31 15:30 | 2018-08-31 18:30 | 161 | 2018-08-31 15:30 | 2018-08-31 18:30 | 0.38d | 82.19d | 0d | TEAM_2Shift_Calendar-1 | Helper; Fitter [200%] | 6h | 356.25 | 356.25 |
| 163 | 2.5.1.22 | SH1-DPCHECK | 3h | 2018-08-31 18:30 | 2018-08-31 21:30 | 162 | 2018-08-31 18:30 | 2018-08-31 21:30 | 3h | 82.19d | 0d | TEAM_2Shift_Calendar-1 | Fitter | 3h | 206.25 | 206.25 |
| 164 | 2.5.1.23 | SH1-RADIOGRAPHY | 2d | 2018-08-31 21:30 | 2018-09-01 21:30 | 163 | 2018-08-31 21:30 | 2018-09-01 21:30 | 2d | 82.19d |  | TEAM_2Shift_Calendar-1 | SC (Cost) [0.1%] |  |  |  |

Notes:
- 141: 1000*14803*12T
- 147: 2PLATES-4 SIDES
- 150: 2 PLATES
- 151: 2 PIESCES
- 152: LS1+LS2
- 155: 0.2Kg/m-LS1+LS2
- 158: 0.64Kg/m
- 160: 0.64Kg/m
- 164: SC

| ID | WBS | Task | Duration | Start | Finish | Predecessors | Baseline start | Baseline finish | Baseline duration | Total slack | Free slack | Calendar | Resources | Work | Cost | Baseline cost |
| --- | --- | --- | --- | --- | --- | --- | --- | --- | --- | --- | --- | --- | --- | --- | --- | --- |
| 165 | 2.5.2 | **SHELL 2- FABRICATION** | 24.94d | 2018-08-18 14:00 | 2018-09-03 21:30 |  | 2018-08-18 14:00 | 2018-09-03 21:30 | 24.94d | 24.06d | 0d | TEAM_2Shift_Calendar-1 |  | 216h | 10,053.12 | 10,053.12 |
| 166 | 2.5.2.1 | SH1-PLATE MARKING | 0.75d | 2018-08-18 14:00 | 2018-08-18 20:00 | 142FS+2d | 2018-08-18 14:00 | 2018-08-18 20:00 | 0.75d | 80.06d | 0d | TEAM_2Shift_Calendar-1 | Fitter [200%] | 12h | 825 | 825 |
| 167 | 2.5.2.2 | SH1- STAMPING | 3h | 2018-08-18 20:00 | 2018-08-20 07:00 | 166 | 2018-08-18 20:00 | 2018-08-20 07:00 | 3h | 80.81d | 0d | TEAM_2Shift_Calendar-1 | Fitter | 3h | 206.25 | 206.25 |
| 168 | 2.5.2.3 | SH1-PL CUTTING | 0.69d | 2018-08-20 07:00 | 2018-08-20 12:30 | 167 | 2018-08-20 07:00 | 2018-08-20 12:30 | 0.69d | 80.62d | 0d | TEAM_2Shift_Calendar-1 | Helper; GasCutter [87.5%] | 7h | 175 | 175 |
| 169 | 2.5.2.4 | SH1-GRINDING | 1d | 2018-08-20 12:30 | 2018-08-20 20:30 | 168 | 2018-08-20 12:30 | 2018-08-20 20:30 | 1d | 80.62d | 0d | TEAM_2Shift_Calendar-1 | Grinder [75%] | 6h | 337.5 | 337.5 |
| 170 | 2.5.2.5 | SH1-EDGE PREPARATION/DP CHECK | 1d | 2018-08-20 20:30 | 2018-08-21 12:30 | 169 | 2018-08-20 20:30 | 2018-08-21 12:30 | 1d | 80.62d | 0d | TEAM_2Shift_Calendar-1 | Grinder [75%] | 6h | 337.5 | 337.5 |
| 171 | 2.5.2.6 | SH1-PRE BENDING | 1.56d | 2018-08-21 12:30 | 2018-08-22 09:00 | 170 | 2018-08-21 12:30 | 2018-08-22 09:00 | 1.56d | 80.62d | 0d | TEAM_2Shift_Calendar-1 | Fitter [200%] | 25h | 1,718.75 | 1,718.75 |
| 172 | 2.5.2.7 | SH1-PREBEND CUTOFF | 0.5d | 2018-08-22 09:00 | 2018-08-22 14:00 | 171 | 2018-08-22 09:00 | 2018-08-22 14:00 | 0.5d | 80.62d | 0d | TEAM_2Shift_Calendar-1 | Helper; GasCutter [75%] | 6h | 150 | 150 |
| 173 | 2.5.2.8 | SH1-EDGE PREPARTION/DP CHECK | 2d | 2018-08-22 14:00 | 2018-08-23 14:00 | 172 | 2018-08-22 14:00 | 2018-08-23 14:00 | 2d | 81.38d | 0d | TEAM_2Shift_Calendar-1 | Grinder [75%] | 12h | 675 | 675 |
| 174 | 2.5.2.9 | SH1-ROLLING | 0.94d | 2018-08-23 14:00 | 2018-08-23 21:30 | 173 | 2018-08-23 14:00 | 2018-08-23 21:30 | 0.94d | 81.38d | 0d | TEAM_2Shift_Calendar-1 | Helper; Fitter [200%] | 15h | 890.62 | 890.62 |
| 175 | 2.5.2.10 | SH1-ACID CLEANING | 1d | 2018-08-23 21:30 | 2018-08-24 13:30 | 174 | 2018-08-23 21:30 | 2018-08-24 13:30 | 1d | 81.38d | 0d | TEAM_2Shift_Calendar-1 | Helper [75%] | 6h | 300 | 300 |
| 176 | 2.5.2.11 | SH1-FITUP | 1.5d | 2018-08-24 13:30 | 2018-08-27 12:30 | 175 | 2018-08-24 13:30 | 2018-08-27 12:30 | 1.5d | 80.88d | 0d | TEAM_2Shift_Calendar-1 | Helper [200%]; Fitter; TIGWelder | 24h | 950 | 950 |
| 177 | 2.5.2.12 | SH1-SPIDERUP | 0.38d | 2018-08-27 12:30 | 2018-08-27 15:30 | 176 | 2018-08-27 12:30 | 2018-08-27 15:30 | 0.38d | 80.88d | 0d | TEAM_2Shift_Calendar-1 | Fitter [200%] | 6h | 412.5 | 412.5 |
| 178 | 2.5.2.13 | SH1-FITUP INSPECTION | 0.5d | 2018-08-27 15:30 | 2018-08-27 19:30 | 177 | 2018-08-27 15:30 | 2018-08-27 19:30 | 0.5d | 80.88d | 0d | TEAM_2Shift_Calendar-1 | Helper; Fitter [75%] | 6h | 356.25 | 356.25 |
| 179 | 2.5.2.14 | SH1-ROOT WELDING | 1.38d | 2018-08-27 19:30 | 2018-08-28 15:30 | 178 | 2018-08-27 19:30 | 2018-08-28 15:30 | 1.38d | 80.88d | 0d | TEAM_2Shift_Calendar-1 | Helper; TIGWelder | 12h | 300 | 300 |
| 180 | 2.5.2.15 | SH1-ROOT WELD VISUAL INSP | 2h | 2018-08-28 15:30 | 2018-08-28 17:30 | 179 | 2018-08-28 15:30 | 2018-08-28 17:30 | 2h | 81.12d | 0d | TEAM_2Shift_Calendar-1 | TIGWelder | 2h |  |  |
| 181 | 2.5.2.16 | SH1-DPCHECK | 3h | 2018-08-28 17:30 | 2018-08-28 20:30 | 180 | 2018-08-28 17:30 | 2018-08-28 20:30 | 3h | 81.12d | 0d | TEAM_2Shift_Calendar-1 | Fitter | 3h | 206.25 | 206.25 |
| 182 | 2.5.2.17 | SH1-WELDING | 2.12d | 2018-08-28 20:30 | 2018-08-30 12:30 | 181 | 2018-08-28 20:30 | 2018-08-30 12:30 | 2.12d | 81d | 0d | TEAM_2Shift_Calendar-1 | Helper; TIGWelder | 24h | 600 | 600 |
| 183 | 2.5.2.18 | SH1- BACKCHIP GRIND | 0.5d | 2018-08-30 12:30 | 2018-08-30 16:30 | 182 | 2018-08-30 12:30 | 2018-08-30 16:30 | 0.5d | 81d | 0d | TEAM_2Shift_Calendar-1 | Grinder | 4h | 225 | 225 |
| 184 | 2.5.2.19 | SH1-INSIDE WELDING | 2.38d | 2018-08-30 16:30 | 2018-09-01 11:30 | 183 | 2018-08-30 16:30 | 2018-09-01 11:30 | 2.38d | 80.19d | 0d | TEAM_2Shift_Calendar-1 | Helper; TIGWelder | 24h | 600 | 600 |
| 185 | 2.5.2.20 | SH1-BACKCHIP GRIND | 0.5d | 2018-09-01 11:30 | 2018-09-01 15:30 | 184 | 2018-09-01 11:30 | 2018-09-01 15:30 | 0.5d | 80.19d | 0d | TEAM_2Shift_Calendar-1 | Grinder | 4h | 225 | 225 |
| 186 | 2.5.2.21 | SH1-REROLLING | 0.38d | 2018-09-01 15:30 | 2018-09-01 18:30 | 185 | 2018-09-01 15:30 | 2018-09-01 18:30 | 0.38d | 80.19d | 0d | TEAM_2Shift_Calendar-1 | Helper; Fitter [200%] | 6h | 356.25 | 356.25 |
| 187 | 2.5.2.22 | SH1-DPCHECK | 3h | 2018-09-01 18:30 | 2018-09-01 21:30 | 186 | 2018-09-01 18:30 | 2018-09-01 21:30 | 3h | 80.19d | 0d | TEAM_2Shift_Calendar-1 | Fitter | 3h | 206.25 | 206.25 |
| 188 | 2.5.2.23 | SH1-RADIOGRAPHY | 2d | 2018-09-01 21:30 | 2018-09-03 21:30 | 187 | 2018-09-01 21:30 | 2018-09-03 21:30 | 2d | 80.19d |  | TEAM_2Shift_Calendar-1 | SC (Cost) [0.1%] |  |  |  |

Notes:
- 165: 1500*14803*12T
- 171: 2PLATES-4 SIDES
- 174: 2 PLATES
- 175: 2 PIESCES
- 176: LS1+LS2
- 179: 0.2Kg/m-LS3+LS4
- 182: 0.64Kg/m
- 184: 0.64Kg/m
- 188: SC

| ID | WBS | Task | Duration | Start | Finish | Predecessors | Baseline start | Baseline finish | Baseline duration | Total slack | Free slack | Calendar | Resources | Work | Cost | Baseline cost |
| --- | --- | --- | --- | --- | --- | --- | --- | --- | --- | --- | --- | --- | --- | --- | --- | --- |
| 189 | 2.5.3 | **SHELL 3-FABRICATION** | 24.19d | 2018-08-18 20:00 | 2018-09-03 21:30 |  | 2018-08-18 20:00 | 2018-09-03 21:30 | 24.19d | 24.06d | 0d | TEAM_2Shift_Calendar-1 |  | 216h | 10,053.12 | 10,053.12 |
| 190 | 2.5.3.1 | SH1-PLATE MARKING | 0.75d | 2018-08-18 20:00 | 2018-08-20 10:00 | 166 | 2018-08-18 20:00 | 2018-08-20 10:00 | 0.75d | 80.06d | 0d | TEAM_2Shift_Calendar-1 | Fitter [200%] | 12h | 825 | 825 |
| 191 | 2.5.3.2 | SH1- STAMPING | 3h | 2018-08-20 10:00 | 2018-08-20 13:00 | 190 | 2018-08-20 10:00 | 2018-08-20 13:00 | 3h | 80.06d | 0d | TEAM_2Shift_Calendar-1 | Fitter | 3h | 206.25 | 206.25 |
| 192 | 2.5.3.3 | SH1-PL CUTTING | 0.56d | 2018-08-20 13:00 | 2018-08-20 17:30 | 191 | 2018-08-20 13:00 | 2018-08-20 17:30 | 0.56d | 80d | 0d | TEAM_2Shift_Calendar-1 | Helper; GasCutter [87.5%] | 7h | 175 | 175 |
| 193 | 2.5.3.4 | SH1-GRINDING | 1d | 2018-08-20 17:30 | 2018-08-21 09:30 | 192 | 2018-08-20 17:30 | 2018-08-21 09:30 | 1d | 80d | 0d | TEAM_2Shift_Calendar-1 | Grinder [75%] | 6h | 337.5 | 337.5 |
| 194 | 2.5.3.5 | SH1-EDGE PREPARATION/DP CHECK | 1d | 2018-08-21 09:30 | 2018-08-21 17:30 | 193 | 2018-08-21 09:30 | 2018-08-21 17:30 | 1d | 80d | 0d | TEAM_2Shift_Calendar-1 | Grinder [75%] | 6h | 337.5 | 337.5 |
| 195 | 2.5.3.6 | SH1-PRE BENDING | 1.56d | 2018-08-21 17:30 | 2018-08-22 14:00 | 194 | 2018-08-21 17:30 | 2018-08-22 14:00 | 1.56d | 80d | 0d | TEAM_2Shift_Calendar-1 | Fitter [200%] | 25h | 1,718.75 | 1,718.75 |
| 196 | 2.5.3.7 | SH1-PREBEND CUTOFF | 0.5d | 2018-08-22 14:00 | 2018-08-23 09:00 | 195 | 2018-08-22 14:00 | 2018-08-23 09:00 | 0.5d | 80d | 0d | TEAM_2Shift_Calendar-1 | Helper; GasCutter [75%] | 6h | 150 | 150 |
| 197 | 2.5.3.8 | SH1-EDGE PREPARTION/DP CHECK | 2d | 2018-08-23 09:00 | 2018-08-24 09:00 | 196 | 2018-08-23 09:00 | 2018-08-24 09:00 | 2d | 80d | 0d | TEAM_2Shift_Calendar-1 | Grinder [75%] | 12h | 675 | 675 |
| 198 | 2.5.3.9 | SH1-ROLLING | 0.94d | 2018-08-24 09:00 | 2018-08-24 16:30 | 197 | 2018-08-24 09:00 | 2018-08-24 16:30 | 0.94d | 80d | 0d | TEAM_2Shift_Calendar-1 | Helper; Fitter [200%] | 15h | 890.62 | 890.62 |
| 199 | 2.5.3.10 | SH1-ACID CLEANING | 1d | 2018-08-24 16:30 | 2018-08-27 08:30 | 198 | 2018-08-24 16:30 | 2018-08-27 08:30 | 1d | 80d | 0d | TEAM_2Shift_Calendar-1 | Helper [75%] | 6h | 300 | 300 |
| 200 | 2.5.3.11 | SH1-FITUP | 1.12d | 2018-08-27 08:30 | 2018-08-27 17:30 | 199 | 2018-08-27 08:30 | 2018-08-27 17:30 | 1.12d | 80d | 0d | TEAM_2Shift_Calendar-1 | Helper [200%]; Fitter; TIGWelder | 24h | 950 | 950 |
| 201 | 2.5.3.12 | SH1-SPIDERUP | 0.38d | 2018-08-27 17:30 | 2018-08-27 20:30 | 200 | 2018-08-27 17:30 | 2018-08-27 20:30 | 0.38d | 80.25d | 0d | TEAM_2Shift_Calendar-1 | Fitter [200%] | 6h | 412.5 | 412.5 |
| 202 | 2.5.3.13 | SH1-FITUP INSPECTION | 0.5d | 2018-08-27 20:30 | 2018-08-28 08:30 | 201 | 2018-08-27 20:30 | 2018-08-28 08:30 | 0.5d | 80.25d | 0d | TEAM_2Shift_Calendar-1 | Helper; Fitter [75%] | 6h | 356.25 | 356.25 |
| 203 | 2.5.3.14 | SH1-ROOT WELDING | 0.88d | 2018-08-28 08:30 | 2018-08-28 15:30 | 202 | 2018-08-28 08:30 | 2018-08-28 15:30 | 0.88d | 80.25d | 0d | TEAM_2Shift_Calendar-1 | Helper; TIGWelder | 12h | 300 | 300 |
| 204 | 2.5.3.15 | SH1-ROOT WELD VISUAL INSP | 2h | 2018-08-28 15:30 | 2018-08-28 17:30 | 203 | 2018-08-28 15:30 | 2018-08-28 17:30 | 2h | 81.12d | 0d | TEAM_2Shift_Calendar-1 | TIGWelder | 2h |  |  |
| 205 | 2.5.3.16 | SH1-DPCHECK | 3h | 2018-08-28 17:30 | 2018-08-28 20:30 | 204 | 2018-08-28 17:30 | 2018-08-28 20:30 | 3h | 81.12d | 0d | TEAM_2Shift_Calendar-1 | Fitter | 3h | 206.25 | 206.25 |
| 206 | 2.5.3.17 | SH1-WELDING | 2.12d | 2018-08-28 20:30 | 2018-08-30 12:30 | 205 | 2018-08-28 20:30 | 2018-08-30 12:30 | 2.12d | 81d | 0d | TEAM_2Shift_Calendar-1 | Helper; TIGWelder | 24h | 600 | 600 |
| 207 | 2.5.3.18 | SH1- BACKCHIP GRIND | 0.5d | 2018-08-30 12:30 | 2018-08-30 16:30 | 206 | 2018-08-30 12:30 | 2018-08-30 16:30 | 0.5d | 81d | 0d | TEAM_2Shift_Calendar-1 | Grinder | 4h | 225 | 225 |
| 208 | 2.5.3.19 | SH1-INSIDE WELDING | 2.38d | 2018-08-30 16:30 | 2018-09-01 11:30 | 207 | 2018-08-30 16:30 | 2018-09-01 11:30 | 2.38d | 80.19d | 0d | TEAM_2Shift_Calendar-1 | Helper; TIGWelder | 24h | 600 | 600 |
| 209 | 2.5.3.20 | SH1-BACKCHIP GRIND | 0.5d | 2018-09-01 11:30 | 2018-09-01 15:30 | 208 | 2018-09-01 11:30 | 2018-09-01 15:30 | 0.5d | 80.19d | 0d | TEAM_2Shift_Calendar-1 | Grinder | 4h | 225 | 225 |
| 210 | 2.5.3.21 | SH1-REROLLING | 0.38d | 2018-09-01 15:30 | 2018-09-01 18:30 | 209 | 2018-09-01 15:30 | 2018-09-01 18:30 | 0.38d | 80.19d | 0d | TEAM_2Shift_Calendar-1 | Helper; Fitter [200%] | 6h | 356.25 | 356.25 |
| 211 | 2.5.3.22 | SH1-DPCHECK | 3h | 2018-09-01 18:30 | 2018-09-01 21:30 | 210 | 2018-09-01 18:30 | 2018-09-01 21:30 | 3h | 80.19d | 0d | TEAM_2Shift_Calendar-1 | Fitter | 3h | 206.25 | 206.25 |
| 212 | 2.5.3.23 | SH1-RADIOGRAPHY | 2d | 2018-09-01 21:30 | 2018-09-03 21:30 | 211 | 2018-09-01 21:30 | 2018-09-03 21:30 | 2d | 80.19d |  | TEAM_2Shift_Calendar-1 | SC (Cost) [0.1%] |  |  |  |

Notes:
- 189: 1500*14803*12T
- 195: 2PLATES-4 SIDES
- 198: 2 PLATES
- 199: 2 PIESCES
- 200: LS1+LS2
- 203: 0.2Kg/m-LS5+LS6
- 206: 0.64Kg/m
- 208: 0.64Kg/m
- 212: SC

| ID | WBS | Task | Duration | Start | Finish | Predecessors | Baseline start | Baseline finish | Baseline duration | Total slack | Free slack | Calendar | Resources | Work | Cost | Baseline cost |
| --- | --- | --- | --- | --- | --- | --- | --- | --- | --- | --- | --- | --- | --- | --- | --- | --- |
| 213 | 2.6 | **CS FITUP & WELDING** | 20.69d | 2018-09-03 21:30 | 2018-09-18 11:00 |  | 2018-09-03 21:30 | 2018-09-18 11:00 | 20.69d | 24.19d | 16.88d | TEAM_2Shift_Calendar-1 |  | 352h | 14,900 | 14,900 |
| 214 | 2.6.1 | **CS1-FITUP & WELDING** | 20.69d | 2018-09-03 21:30 | 2018-09-18 11:00 |  | 2018-09-03 21:30 | 2018-09-18 11:00 | 20.69d | 24.19d |  | TEAM_2Shift_Calendar-1 |  | 176h | 7,450 | 7,450 |
| 215 | 2.6.1.1 | SHELL SH1+SH2 READY | 0.5d | 2018-09-03 21:30 | 2018-09-04 09:30 | 141, 165 | 2018-09-03 21:30 | 2018-09-04 09:30 | 0.5d | 80.19d | 0d | TEAM_2Shift_Calendar-1 | Helper | 4h | 200 | 200 |
| 216 | 2.6.1.2 | SHELL EP CORRECTION | 1.5d | 2018-09-04 09:30 | 2018-09-04 21:30 | 215 | 2018-09-04 09:30 | 2018-09-04 21:30 | 1.5d | 80.19d | 0d | TEAM_2Shift_Calendar-1 | Grinder [200%] | 24h | 1,350 | 1,350 |
| 217 | 2.6.1.3 | CS1-FITUP | 1.5d | 2018-09-04 21:30 | 2018-09-05 17:30 | 216 | 2018-09-04 21:30 | 2018-09-05 17:30 | 1.5d | 80.19d | 0d | TEAM_2Shift_Calendar-1 | Helper; Fitter [200%] | 24h | 1,425 | 1,425 |
| 218 | 2.6.1.4 | CS1-FITUP INSPECTION | 1d | 2018-09-05 17:30 | 2018-09-06 09:30 | 217 | 2018-09-05 17:30 | 2018-09-06 09:30 | 1d | 80.19d | 0d | TEAM_2Shift_Calendar-1 | Fitter [75%] | 6h | 412.5 | 412.5 |
| 219 | 2.6.1.5 | CS1-ROOT WELDING | 0.88d | 2018-09-06 09:30 | 2018-09-06 16:30 | 218 | 2018-09-06 09:30 | 2018-09-06 16:30 | 0.88d | 80.19d | 0d | TEAM_2Shift_Calendar-1 | Helper; TIGWelder | 12h | 300 | 300 |
| 220 | 2.6.1.6 | CS1-ROOT WELD VISUAL INSP | 3h | 2018-09-06 16:30 | 2018-09-07 10:30 | 219 | 2018-09-06 16:30 | 2018-09-07 10:30 | 3h | 80.19d | 0d | TEAM_2Shift_Calendar-1 | TIGWelder | 3h |  |  |
| 221 | 2.6.1.7 | CS1-DPCHECK | 0.5d | 2018-09-07 10:30 | 2018-09-07 14:30 | 220 | 2018-09-07 10:30 | 2018-09-07 14:30 | 0.5d | 80.19d | 0d | TEAM_2Shift_Calendar-1 | Fitter | 4h | 275 | 275 |
| 222 | 2.6.1.8 | CS1-WELDING | 4.25d | 2018-09-07 14:30 | 2018-09-12 12:00 | 221 | 2018-09-07 14:30 | 2018-09-12 12:00 | 4.25d | 80.19d | 0d | TEAM_2Shift_Calendar-1 | Helper; TIGWelder | 45h | 1,125 | 1,125 |
| 223 | 2.6.1.9 | CS1- BACKCHIP GRIND | 1.5d | 2018-09-12 12:00 | 2018-09-14 08:00 | 222 | 2018-09-12 12:00 | 2018-09-14 08:00 | 1.5d | 80.31d | 0d | TEAM_2Shift_Calendar-1 | Grinder | 12h | 675 | 675 |
| 224 | 2.6.1.10 | CS1-DPCHECK | 3h | 2018-09-14 08:00 | 2018-09-14 11:00 | 223 | 2018-09-14 08:00 | 2018-09-14 11:00 | 3h | 80.31d | 0d | TEAM_2Shift_Calendar-1 | Fitter | 3h | 206.25 | 206.25 |
| 225 | 2.6.1.11 | CS1-INSIDE WELDING | 2.31d | 2018-09-14 11:00 | 2018-09-15 16:00 | 224 | 2018-09-14 11:00 | 2018-09-15 16:00 | 2.31d | 80.22d | 0d | TEAM_2Shift_Calendar-1 | Helper; TIGWelder | 24h | 600 | 600 |
| 226 | 2.6.1.12 | CS1-DRESSUP | 2d | 2018-09-15 16:00 | 2018-09-17 16:00 | 225 | 2018-09-15 16:00 | 2018-09-17 16:00 | 2d | 80.22d | 0d | TEAM_2Shift_Calendar-1 | Grinder [75%] | 12h | 675 | 675 |
| 227 | 2.6.1.13 | CS1-DPCHECK | 3h | 2018-09-17 16:00 | 2018-09-17 19:00 | 226 | 2018-09-17 16:00 | 2018-09-17 19:00 | 3h | 80.22d | 0d | TEAM_2Shift_Calendar-1 | Fitter | 3h | 206.25 | 206.25 |
| 228 | 2.6.1.14 | CS1-RT | 1d | 2018-09-17 19:00 | 2018-09-18 11:00 | 227 | 2018-09-17 19:00 | 2018-09-18 11:00 | 1d | 80.22d |  | TEAM_2Shift_Calendar-1 | SC (Cost) [0.1%] |  |  |  |
| 229 | 2.6.2 | **CS2-FITUP & WELDING** | 20.69d | 2018-09-03 21:30 | 2018-09-18 11:00 |  | 2018-09-03 21:30 | 2018-09-18 11:00 | 20.69d | 24.19d |  | TEAM_2Shift_Calendar-1 |  | 176h | 7,450 | 7,450 |
| 230 | 2.6.2.1 | SHELL SH3+SH4 READY | 0.5d | 2018-09-03 21:30 | 2018-09-04 09:30 | 189 | 2018-09-03 21:30 | 2018-09-04 09:30 | 0.5d | 80.19d | 0d | TEAM_2Shift_Calendar-1 | Helper | 4h | 200 | 200 |
| 231 | 2.6.2.2 | SHELL EP CORRECTION | 1.5d | 2018-09-04 09:30 | 2018-09-04 21:30 | 230 | 2018-09-04 09:30 | 2018-09-04 21:30 | 1.5d | 80.19d | 0d | TEAM_2Shift_Calendar-1 | Grinder [200%] | 24h | 1,350 | 1,350 |
| 232 | 2.6.2.3 | CS2-FITUP | 1.5d | 2018-09-04 21:30 | 2018-09-05 17:30 | 231 | 2018-09-04 21:30 | 2018-09-05 17:30 | 1.5d | 80.19d | 0d | TEAM_2Shift_Calendar-1 | Helper; Fitter [200%] | 24h | 1,425 | 1,425 |
| 233 | 2.6.2.4 | CS2-FITUP INSPECTION | 1d | 2018-09-05 17:30 | 2018-09-06 09:30 | 232 | 2018-09-05 17:30 | 2018-09-06 09:30 | 1d | 80.19d | 0d | TEAM_2Shift_Calendar-1 | Fitter [75%] | 6h | 412.5 | 412.5 |
| 234 | 2.6.2.5 | CS2-ROOT WELDING | 0.88d | 2018-09-06 09:30 | 2018-09-06 16:30 | 233 | 2018-09-06 09:30 | 2018-09-06 16:30 | 0.88d | 80.19d | 0d | TEAM_2Shift_Calendar-1 | Helper; TIGWelder | 12h | 300 | 300 |
| 235 | 2.6.2.6 | CS2-ROOT WELD VISUAL INSP | 3h | 2018-09-06 16:30 | 2018-09-07 10:30 | 234 | 2018-09-06 16:30 | 2018-09-07 10:30 | 3h | 80.19d | 0d | TEAM_2Shift_Calendar-1 | TIGWelder | 3h |  |  |
| 236 | 2.6.2.7 | CS2-DPCHECK | 0.5d | 2018-09-07 10:30 | 2018-09-07 14:30 | 235 | 2018-09-07 10:30 | 2018-09-07 14:30 | 0.5d | 80.19d | 0d | TEAM_2Shift_Calendar-1 | Fitter | 4h | 275 | 275 |
| 237 | 2.6.2.8 | CS2-WELDING | 4.25d | 2018-09-07 14:30 | 2018-09-12 12:00 | 236 | 2018-09-07 14:30 | 2018-09-12 12:00 | 4.25d | 80.19d | 0d | TEAM_2Shift_Calendar-1 | Helper; TIGWelder | 45h | 1,125 | 1,125 |
| 238 | 2.6.2.9 | CS2- BACKCHIP GRIND | 1.5d | 2018-09-12 12:00 | 2018-09-14 08:00 | 237 | 2018-09-12 12:00 | 2018-09-14 08:00 | 1.5d | 80.31d | 0d | TEAM_2Shift_Calendar-1 | Grinder | 12h | 675 | 675 |
| 239 | 2.6.2.10 | CS2-DPCHECK | 3h | 2018-09-14 08:00 | 2018-09-14 11:00 | 238 | 2018-09-14 08:00 | 2018-09-14 11:00 | 3h | 80.31d | 0d | TEAM_2Shift_Calendar-1 | Fitter | 3h | 206.25 | 206.25 |
| 240 | 2.6.2.11 | CS2-INSIDE WELDING | 2.31d | 2018-09-14 11:00 | 2018-09-15 16:00 | 239 | 2018-09-14 11:00 | 2018-09-15 16:00 | 2.31d | 80.22d | 0d | TEAM_2Shift_Calendar-1 | Helper; TIGWelder | 24h | 600 | 600 |
| 241 | 2.6.2.12 | CS2-DRESSUP | 2d | 2018-09-15 16:00 | 2018-09-17 16:00 | 240 | 2018-09-15 16:00 | 2018-09-17 16:00 | 2d | 80.22d | 0d | TEAM_2Shift_Calendar-1 | Grinder [75%] | 12h | 675 | 675 |
| 242 | 2.6.2.13 | CS2-DPCHECK | 3h | 2018-09-17 16:00 | 2018-09-17 19:00 | 241 | 2018-09-17 16:00 | 2018-09-17 19:00 | 3h | 80.22d | 0d | TEAM_2Shift_Calendar-1 | Fitter | 3h | 206.25 | 206.25 |
| 243 | 2.6.2.14 | CS2-RT | 1d | 2018-09-17 19:00 | 2018-09-18 11:00 | 242 | 2018-09-17 19:00 | 2018-09-18 11:00 | 1d | 80.22d |  | TEAM_2Shift_Calendar-1 | SC (Cost) [0.1%] |  |  |  |

Notes:
- 222: 0.64Kg/m
- 225: 0.64Kg/m
- 228: SC
- 237: 0.64Kg/m
- 240: 0.64Kg/m
- 243: SC

| ID | WBS | Task | Duration | Start | Finish | Predecessors | Baseline start | Baseline finish | Baseline duration | Total slack | Free slack | Calendar | Resources | Work | Cost | Baseline cost |
| --- | --- | --- | --- | --- | --- | --- | --- | --- | --- | --- | --- | --- | --- | --- | --- | --- |
| 244 | 2.7 | **NOZZLE WELDING** | 34.31d | 2018-09-25 10:00 | 2018-10-17 12:30 |  | 2018-09-25 10:00 | 2018-10-17 12:30 | 34.31d | 0.12d | 0d | TEAM_2Shift_Calendar-1 |  | 838h | 31,942.71 | 31,942.71 |
| 245 | 2.7.1 | **PIPE WELDING** | 27.69d | 2018-09-28 15:00 | 2018-10-17 12:30 |  | 2018-09-28 15:00 | 2018-10-17 12:30 | 27.69d | 0.09d |  | TEAM_2Shift_Calendar-1 |  | 343h | 13,300 | 13,300 |
| 246 | 2.7.1.1 | NOZZLE END PIPE ORIENTATION MARKING | 15h | 2018-09-28 15:00 | 2018-09-29 14:00 | 12, 213FS-8d | 2018-09-28 15:00 | 2018-09-29 14:00 | 15h | 55.72d | 0d | TEAM_2Shift_Calendar-1 | Fitter [200%] | 30h | 2,062.5 | 2,062.5 |
| 247 | 2.7.1.2 | PIPE OPENING FOR NOZZLES | 7.34d | 2018-09-29 14:00 | 2018-10-05 09:45 | 246 | 2018-09-29 14:00 | 2018-10-05 09:45 | 7.34d | 55.72d | 0d | TEAM_2Shift_Calendar-1 | Helper; GasCutter [200%] | 115h | 2,875 | 2,875 |
| 248 | 2.7.1.3 | EP | 15h | 2018-10-05 09:45 | 2018-10-06 08:45 | 247 | 2018-10-05 09:45 | 2018-10-06 08:45 | 15h | 55.79d | 0d | TEAM_2Shift_Calendar-1 | Grinder [200%] | 30h | 1,687.5 | 1,687.5 |
| 249 | 2.7.1.4 | PIPE FIT UP WITH SHELL | 4.5d | 2018-10-06 08:45 | 2018-10-09 12:45 | 248 | 2018-10-06 08:45 | 2018-10-09 12:45 | 4.5d | 55.79d | 0d | TEAM_2Shift_Calendar-1 | Helper; Fitter [200%] | 72h | 4,275 | 4,275 |
| 250 | 2.7.1.5 | WELDING | 7.5d | 2018-10-09 12:45 | 2018-10-17 12:30 | 249 | 2018-10-09 12:45 | 2018-10-17 12:30 | 7.5d | 55.79d |  | TEAM_2Shift_Calendar-1 | Helper [200%]; TIGWelder | 96h | 2,400 | 2,400 |
| 251 | 2.7.2 | **MANHOLE WELDING** | 2.91d | 2018-10-09 12:45 | 2018-10-10 20:00 |  | 2018-10-09 12:45 | 2018-10-10 20:00 | 2.91d | 4.75d |  | TEAM_2Shift_Calendar-1 |  | 37h | 1,403.12 | 1,403.12 |
| 252 | 2.7.2.1 | ORIENTATION MARKING | 1.5h | 2018-10-09 12:45 | 2018-10-09 14:15 | 36, 249 | 2018-10-09 12:45 | 2018-10-09 14:15 | 1.5h | 60.75d | 0d | TEAM_2Shift_Calendar-1 | Helper; Fitter [200%] | 3h | 178.12 | 178.12 |
| 253 | 2.7.2.2 | NOZ OPENING | 3h | 2018-10-09 14:15 | 2018-10-09 17:15 | 252 | 2018-10-09 14:15 | 2018-10-09 17:15 | 3h | 64.22d | 0d | TEAM_2Shift_Calendar-1 | Helper; GasCutter [200%] | 6h | 150 | 150 |
| 254 | 2.7.2.3 | GRINDING/EP | 2h | 2018-10-09 17:15 | 2018-10-09 19:15 | 253 | 2018-10-09 17:15 | 2018-10-09 19:15 | 2h | 64.88d | 0d | TEAM_2Shift_Calendar-1 | Grinder [200%] | 4h | 225 | 225 |
| 255 | 2.7.2.4 | FITUP & INSPECTION | 5.33h | 2018-10-09 19:15 | 2018-10-10 11:10 | 254 | 2018-10-09 19:15 | 2018-10-10 11:10 | 5.33h | 64.34d | 0d | TEAM_2Shift_Calendar-1 | Helper [200%]; Fitter; TIGWelder | 8h | 316.67 | 316.67 |
| 256 | 2.7.2.5 | NOZ WITH SHELL FIT UP | 0.17d | 2018-10-10 11:10 | 2018-10-10 12:30 | 255 | 2018-10-10 11:10 | 2018-10-10 12:30 | 0.17d | 64.34d | 0d | TEAM_2Shift_Calendar-1 | Fitter; Helper [200%]; TIGWelder | 4h | 158.33 | 158.33 |
| 257 | 2.7.2.6 | WELDING | 4.5h | 2018-10-10 12:30 | 2018-10-10 17:00 | 256 | 2018-10-10 12:30 | 2018-10-10 17:00 | 4.5h | 64.34d | 0d | TEAM_2Shift_Calendar-1 | Helper; TIGWelder [200%] | 9h | 225 | 225 |
| 258 | 2.7.2.7 | CLEANING | 3h | 2018-10-10 17:00 | 2018-10-10 20:00 | 257 | 2018-10-10 17:00 | 2018-10-10 20:00 | 3h | 64.89d |  | TEAM_2Shift_Calendar-1 | Helper | 3h | 150 | 150 |
| 259 | 2.7.3 | **NOZZLE PIPE WELDING** | 5.96d | 2018-10-10 06:15 | 2018-10-12 21:55 |  | 2018-10-10 06:15 | 2018-10-12 21:55 | 5.96d | 4.75d |  | TEAM_2Shift_Calendar-1 |  | 76h | 2,960.42 | 2,960.42 |
| 260 | 2.7.3.1 | LOCATION MARKING | 3h | 2018-10-10 06:15 | 2018-10-10 09:15 | 46, 252FS+1d | 2018-10-10 06:15 | 2018-10-10 09:15 | 3h | 60.75d | 0d | TEAM_2Shift_Calendar-1 | Helper; Fitter [200%] | 6h | 356.25 | 356.25 |
| 261 | 2.7.3.2 | NOZ OPENING | 4.5h | 2018-10-10 09:15 | 2018-10-10 13:45 | 260 | 2018-10-10 09:15 | 2018-10-10 13:45 | 4.5h | 60.75d | 0d | TEAM_2Shift_Calendar-1 | Helper; GasCutter [200%] | 9h | 225 | 225 |
| 262 | 2.7.3.3 | GRINDING | 3h | 2018-10-10 13:45 | 2018-10-10 16:45 | 261 | 2018-10-10 13:45 | 2018-10-10 16:45 | 3h | 61.17d | 0d | TEAM_2Shift_Calendar-1 | Grinder [200%] | 6h | 337.5 | 337.5 |
| 263 | 2.7.3.4 | NOZ WITH SHELL FIT UP | 17.67h | 2018-10-10 16:45 | 2018-10-12 10:25 | 262 | 2018-10-10 16:45 | 2018-10-12 10:25 | 17.67h | 60.42d | 0d | TEAM_2Shift_Calendar-1 | Helper [200%]; Fitter; TIGWelder | 32h | 1,266.67 | 1,266.67 |
| 264 | 2.7.3.5 | WELDING | 7.5h | 2018-10-12 10:25 | 2018-10-12 17:55 | 263 | 2018-10-12 10:25 | 2018-10-12 17:55 | 7.5h | 60.42d | 0d | TEAM_2Shift_Calendar-1 | Helper; TIGWelder [200%] | 15h | 375 | 375 |
| 265 | 2.7.3.6 | CLEANING | 4h | 2018-10-12 17:55 | 2018-10-12 21:55 | 264 | 2018-10-12 17:55 | 2018-10-12 21:55 | 4h | 60.65d |  | TEAM_2Shift_Calendar-1 | Helper [200%] | 8h | 400 | 400 |
| 266 | 2.7.4 | **NOZZLE HBN WELDING** | 17.69d | 2018-09-25 10:00 | 2018-10-06 07:30 |  | 2018-09-25 10:00 | 2018-10-06 07:30 | 17.69d | 16.75d |  | TEAM_2Shift_Calendar-1 |  | 250h | 9,625 | 9,625 |
| 267 | 2.7.4.1 | LOCATION MARKING | 15h | 2018-09-25 10:00 | 2018-09-26 09:00 | 57, 108, 213FS-7d | 2018-09-25 10:00 | 2018-09-26 09:00 | 15h | 72.66d | 0d | TEAM_2Shift_Calendar-1 | Helper; Fitter [200%] | 30h | 1,781.25 | 1,781.25 |
| 268 | 2.7.4.2 | NOZ OPENING | 22.5h | 2018-09-26 09:00 | 2018-09-27 15:30 | 267 | 2018-09-26 09:00 | 2018-09-27 15:30 | 22.5h | 72.66d | 0d | TEAM_2Shift_Calendar-1 | Helper; GasCutter [200%] | 45h | 1,125 | 1,125 |
| 269 | 2.7.4.3 | GRINDING/EP | 20h | 2018-09-27 15:30 | 2018-09-28 19:30 | 268 | 2018-09-27 15:30 | 2018-09-28 19:30 | 20h | 72.95d | 0d | TEAM_2Shift_Calendar-1 | Grinder [200%] | 40h | 2,250 | 2,250 |
| 270 | 2.7.4.4 | NOZ WITH SH & DISH FIT UP | 31h | 2018-09-28 19:30 | 2018-10-04 09:30 | 269 | 2018-09-28 19:30 | 2018-10-04 09:30 | 31h | 72.33d | 0d | TEAM_2Shift_Calendar-1 | Helper [200%]; Fitter [200%]; TIGWelder | 75h | 2,968.75 | 2,968.75 |
| 271 | 2.7.4.5 | WELDING | 30h | 2018-10-04 09:30 | 2018-10-06 07:30 | 270 | 2018-10-04 09:30 | 2018-10-06 07:30 | 30h | 72.33d |  | TEAM_2Shift_Calendar-1 | Helper; TIGWelder [200%] | 60h | 1,500 | 1,500 |

Notes:
- 251: 2NOS-12T
- 259: 4NOS
- 266: 43NOS

| ID | WBS | Task | Duration | Start | Finish | Predecessors | Baseline start | Baseline finish | Baseline duration | Total slack | Free slack | Calendar | Resources | Work | Cost | Baseline cost |
| --- | --- | --- | --- | --- | --- | --- | --- | --- | --- | --- | --- | --- | --- | --- | --- | --- |
| 272 | 2.7.5 | **NOZZLE HBN/PIPE WELDING** | 9.96d | 2018-09-26 17:00 | 2018-10-03 16:40 |  | 2018-09-26 17:00 | 2018-10-03 16:40 | 9.96d | 21.6d |  | TEAM_2Shift_Calendar-1 |  | 132h | 4,654.17 | 4,654.17 |
| 273 | 2.7.5.1 | LOCATION MARKING | 6h | 2018-09-26 17:00 | 2018-09-27 07:00 | 74, 267FS+1d | 2018-09-26 17:00 | 2018-09-27 07:00 | 6h | 77.18d | 0d | TEAM_2Shift_Calendar-1 | Helper; Fitter [200%] | 12h | 712.5 | 712.5 |
| 274 | 2.7.5.2 | NOZ OPENING | 6h | 2018-09-27 07:00 | 2018-09-27 13:00 | 273 | 2018-09-27 07:00 | 2018-09-27 13:00 | 6h | 77.18d | 0d | TEAM_2Shift_Calendar-1 | Helper; GasCutter [200%] | 12h | 300 | 300 |
| 275 | 2.7.5.3 | GRINDING/EP | 2h | 2018-09-27 13:00 | 2018-09-27 15:00 | 274 | 2018-09-27 13:00 | 2018-09-27 15:00 | 2h | 77.68d | 0d | TEAM_2Shift_Calendar-1 | Grinder [200%] | 4h | 225 | 225 |
| 276 | 2.7.5.4 | NOZ WITH SHEL FIT UP | 26.83h | 2018-09-27 15:00 | 2018-10-01 08:40 | 275 | 2018-09-27 15:00 | 2018-10-01 08:40 | 26.83h | 76.93d | 0d | TEAM_2Shift_Calendar-1 | Helper [200%]; Fitter; TIGWelder | 56h | 2,216.67 | 2,216.67 |
| 277 | 2.7.5.5 | WELDING | 24h | 2018-10-01 08:40 | 2018-10-03 16:40 | 276 | 2018-10-01 08:40 | 2018-10-03 16:40 | 24h | 76.93d |  | TEAM_2Shift_Calendar-1 | Helper; TIGWelder [200%] | 48h | 1,200 | 1,200 |
| 278 | 2.8 | **SHELL AND DISH CS WELDING** | 26.06d | 2018-09-25 10:00 | 2018-10-11 10:30 |  | 2018-09-25 10:00 | 2018-10-11 10:30 | 26.06d | 8.38d | 8.25d | TEAM_2Shift_Calendar-1 |  | 368h | 13,759.38 | 13,759.38 |
| 279 | 2.8.1 | SHELL DISH END+SHELL READY | 0.25d | 2018-09-25 10:00 | 2018-09-25 12:00 | 108, 140 | 2018-09-25 10:00 | 2018-09-25 12:00 | 0.25d | 64.33d | 0d | TEAM_2Shift_Calendar-1 | Fitter [200%] | 4h | 275 | 275 |
| 280 | 2.8.2 | SHELL EP CORRECTION | 2d | 2018-09-25 12:00 | 2018-09-26 12:00 | 279 | 2018-09-25 12:00 | 2018-09-26 12:00 | 2d | 64.33d | 0d | TEAM_2Shift_Calendar-1 | Grinder [200%] | 32h | 1,800 | 1,800 |
| 281 | 2.8.3 | CS-FITUP | 1d | 2018-09-26 12:00 | 2018-09-26 20:00 | 280 | 2018-09-26 12:00 | 2018-09-26 20:00 | 1d | 64.33d | 0d | TEAM_2Shift_Calendar-1 | Helper; Fitter [200%] | 16h | 950 | 950 |
| 282 | 2.8.4 | CS-FITUP INSPECTION | 1d | 2018-09-26 20:00 | 2018-09-27 12:00 | 281 | 2018-09-26 20:00 | 2018-09-27 12:00 | 1d | 64.33d | 0d | TEAM_2Shift_Calendar-1 | Fitter | 8h | 550 | 550 |
| 283 | 2.8.5 | CS-ROOT WELD | 1.69d | 2018-09-27 12:00 | 2018-09-28 17:00 | 282 | 2018-09-27 12:00 | 2018-09-28 17:00 | 1.69d | 64.33d | 0d | TEAM_2Shift_Calendar-1 | Helper [200%]; TIGWelder | 24h | 600 | 600 |
| 284 | 2.8.6 | CS -VISUAL INSPECTION | 5h | 2018-09-28 17:00 | 2018-09-29 14:00 | 283 | 2018-09-28 17:00 | 2018-09-29 14:00 | 5h | 64.2d | 0d | TEAM_2Shift_Calendar-1 | TIGWelder | 5h |  |  |
| 285 | 2.8.7 | CS-WELDING | 6.25d | 2018-09-29 14:00 | 2018-10-04 16:00 | 284 | 2018-09-29 14:00 | 2018-10-04 16:00 | 6.25d | 64.2d | 0d | TEAM_2Shift_Calendar-1 | Helper; TIGWelder [200%] | 100h | 2,500 | 2,500 |
| 286 | 2.8.8 | CS- FLUSH GRIND | 2.19d | 2018-10-04 16:00 | 2018-10-05 17:30 | 285 | 2018-10-04 16:00 | 2018-10-05 17:30 | 2.19d | 64.2d | 0d | TEAM_2Shift_Calendar-1 | Helper; Grinder [200%] | 35h | 1,859.38 | 1,859.38 |
| 287 | 2.8.9 | CS-DPCHECK | 5h | 2018-10-05 17:30 | 2018-10-06 06:30 | 286 | 2018-10-05 17:30 | 2018-10-06 06:30 | 5h | 64.2d | 0d | TEAM_2Shift_Calendar-1 | Fitter [200%] | 10h | 687.5 | 687.5 |
| 288 | 2.8.10 | CS INSIDE WELDING | 6.38d | 2018-10-06 06:30 | 2018-10-10 09:30 | 287 | 2018-10-06 06:30 | 2018-10-10 09:30 | 6.38d | 64.08d | 0d | TEAM_2Shift_Calendar-1 | Helper; TIGWelder [200%] | 100h | 2,500 | 2,500 |
| 289 | 2.8.11 | CS-FLUSH GRIND | 1.5d | 2018-10-10 09:30 | 2018-10-10 21:30 | 288 | 2018-10-10 09:30 | 2018-10-10 21:30 | 1.5d | 64.08d | 0d | TEAM_2Shift_Calendar-1 | Grinder [200%] | 24h | 1,350 | 1,350 |
| 290 | 2.8.12 | CS-DP CHECK | 5h | 2018-10-10 21:30 | 2018-10-11 10:30 | 289 | 2018-10-10 21:30 | 2018-10-11 10:30 | 5h | 64.08d |  | TEAM_2Shift_Calendar-1 | Fitter [200%] | 10h | 687.5 | 687.5 |
| 291 | 2.9 | **SADDLE & L.L ASSY** | 18.69d | 2018-10-01 20:40 | 2018-10-15 10:10 |  | 2018-10-01 20:40 | 2018-10-15 10:10 | 18.69d | 14.87d |  | TEAM_2Shift_Calendar-1 |  | 201h | 6,089.58 | 6,089.58 |
| 292 | 2.9.1 | SADDLE PAD FITUP | 1.58d | 2018-10-01 20:40 | 2018-10-04 08:50 | 94, 213 | 2018-10-01 20:40 | 2018-10-04 08:50 | 1.58d | 70.7d | 0d | TEAM_2Shift_Calendar-1 | Helper [200%]; Fitter; TIGWelder | 25h | 989.58 | 989.58 |
| 293 | 2.9.2 | WELDING | 5.5d | 2018-10-04 08:50 | 2018-10-09 13:50 | 292 | 2018-10-04 08:50 | 2018-10-09 13:50 | 5.5d | 70.7d | 0d | TEAM_2Shift_Calendar-1 | Helper [200%]; TIGWelder | 72h | 1,800 | 1,800 |
| 294 | 2.9.3 | SADDLE FITUP | 0.88d | 2018-10-09 13:50 | 2018-10-10 10:10 | 293 | 2018-10-09 13:50 | 2018-10-10 10:10 | 0.88d | 70.7d | 0d | TEAM_2Shift_Calendar-1 | Helper [200%]; Fitter; TIGWelder | 16h | 633.33 | 633.33 |
| 295 | 2.9.4 | WELDING | 3.71d | 2018-10-10 10:10 | 2018-10-15 10:10 | 294 | 2018-10-10 10:10 | 2018-10-15 10:10 | 3.71d | 70.7d |  | TEAM_2Shift_Calendar-1 | Helper [200%]; TIGWelder | 48h | 1,200 | 1,200 |
| 296 | 2.9.5 | L.L FITUP | 0.67d | 2018-10-01 20:40 | 2018-10-03 11:10 | 94, 213 | 2018-10-01 20:40 | 2018-10-03 11:10 | 0.67d | 84.7d | 0d | TEAM_2Shift_Calendar-1 | Helper [200%]; Fitter; TIGWelder | 8h | 316.67 | 316.67 |
| 297 | 2.9.6 | WELDING | 1.62d | 2018-10-03 11:10 | 2018-10-04 16:10 | 296 | 2018-10-03 11:10 | 2018-10-04 16:10 | 1.62d | 84.7d | 0d | TEAM_2Shift_Calendar-1 | Helper [200%]; TIGWelder | 24h | 600 | 600 |
| 298 | 2.9.7 | INSPECTION | 0.5d | 2018-10-04 16:10 | 2018-10-04 20:10 | 297 | 2018-10-04 16:10 | 2018-10-04 20:10 | 0.5d | 85.45d |  | TEAM_2Shift_Calendar-1 | Fitter [200%] | 8h | 550 | 550 |

Notes:
- 272: 16NOS
- 283: 0.20Kg/m
- 285: 0.64Kg/m
- 288: 0.64Kg/m

| ID | WBS | Task | Duration | Start | Finish | Predecessors | Baseline start | Baseline finish | Baseline duration | Total slack | Free slack | Calendar | Resources | Work | Cost | Baseline cost |
| --- | --- | --- | --- | --- | --- | --- | --- | --- | --- | --- | --- | --- | --- | --- | --- | --- |
| 299 | 2.10 | **HYDRO TEST** | 5.33d | 2018-10-17 12:30 | 2018-10-22 07:07 |  | 2018-10-17 12:30 | 2018-10-22 07:07 | 5.33d | 0d |  | TEAM_2Shift_Calendar-1 |  | 89h | 4,959.38 | 4,959.38 |
| 300 | 2.10.1 | NDE CLEARANCE | 1d | 2018-10-17 12:30 | 2018-10-19 12:30 | 244, 278 | 2018-10-17 12:30 | 2018-10-19 12:30 | 1d | 55.83d | 0d | TEAM_2Shift_Calendar-1 | QC Engineer; TPI (Cost) [0.1%] | 8h |  |  |
| 301 | 2.10.2 | PNUEMATIC TEST | 0.62d | 2018-10-19 12:30 | 2018-10-19 17:30 | 300 | 2018-10-19 12:30 | 2018-10-19 17:30 | 0.62d | 55.83d | 0d | TEAM_2Shift_Calendar-1 | Helper [200%]; Fitter [200%] | 20h | 1,187.5 | 1,187.5 |
| 302 | 2.10.3 | TPI WITNESS | 1d | 2018-10-19 17:30 | 2018-10-20 09:30 | 301 | 2018-10-19 17:30 | 2018-10-20 09:30 | 1d | 55.83d | 0d | TEAM_2Shift_Calendar-1 | Fitter | 8h | 550 | 550 |
| 303 | 2.10.4 | HYDRO TEST | 0.7d | 2018-10-20 09:30 | 2018-10-20 15:07 | 302 | 2018-10-20 09:30 | 2018-10-20 15:07 | 0.7d | 55.83d | 0d | TEAM_2Shift_Calendar-1 | Helper [500%]; Fitter [400%] | 45h | 2,671.88 | 2,671.88 |
| 304 | 2.10.5 | TPI WITNESS | 1d | 2018-10-20 15:07 | 2018-10-22 07:07 | 303 | 2018-10-20 15:07 | 2018-10-22 07:07 | 1d | 55.83d |  | TEAM_2Shift_Calendar-1 | Fitter | 8h | 550 | 550 |
| 305 | 2.11 | **ACID CLEANING AND PICKLING** | 5.25d | 2018-10-22 07:07 | 2018-10-24 17:07 |  | 2018-10-22 07:07 | 2018-10-24 17:07 | 5.25d | 0d |  | TEAM_2Shift_Calendar-1 |  | 84h | 4,800 | 4,800 |
| 306 | 2.11.1 | PREPARATION FOR ACID CLEANING | 1d | 2018-10-22 07:07 | 2018-10-22 15:07 | 299 | 2018-10-22 07:07 | 2018-10-22 15:07 | 1d | 55.83d | 0d | TEAM_2Shift_Calendar-1 | Helper [200%]; Fitter [200%] | 32h | 1,900 | 1,900 |
| 307 | 2.11.2 | ACID CLEANING AND PICKLING | 2d | 2018-10-22 15:07 | 2018-10-23 15:07 | 306 | 2018-10-22 15:07 | 2018-10-23 15:07 | 2d | 55.83d | 0d | TEAM_2Shift_Calendar-1 | Helper [200%] | 32h | 1,600 | 1,600 |
| 308 | 2.11.3 | TPI WITNESS | 1d | 2018-10-23 15:07 | 2018-10-24 07:07 | 307 | 2018-10-23 15:07 | 2018-10-24 07:07 | 1d | 55.83d | 0d | TEAM_2Shift_Calendar-1 | Fitter | 8h | 550 | 550 |
| 309 | 2.11.4 | DESPATCH CLEARANCE | 1d | 2018-10-24 07:07 | 2018-10-24 15:07 | 308 | 2018-10-24 07:07 | 2018-10-24 15:07 | 1d | 55.83d | 0d | TEAM_2Shift_Calendar-1 | Fitter [50%] | 4h | 275 | 275 |
| 310 | 2.11.5 | DESPATCH | 0.25d | 2018-10-24 15:07 | 2018-10-24 17:07 | 309 | 2018-10-24 15:07 | 2018-10-24 17:07 | 0.25d | 55.83d |  | TEAM_2Shift_Calendar-1 | Helper [200%]; Fitter [200%] | 8h | 475 | 475 |
| 311 | 3 | **HC40000-2/2** | 103.14d | 2018-08-17 08:00 | 2018-10-24 17:07 |  | 2018-08-17 08:00 | 2018-10-24 17:07 | 103.14d | 0d |  | TEAM_2Shift_Calendar-1 |  | 4419h | 187,705.21 | 187,705.21 |
| 312 | 3.1 | **NOZZLE FAB** | 79.19d | 2018-08-17 08:00 | 2018-10-08 17:30 |  | 2018-08-17 08:00 | 2018-10-08 17:30 | 79.19d | 23.95d |  | TEAM_2Shift_Calendar-1 |  | 1123h | 50,647.92 | 50,647.92 |
| 313 | 3.1.1 | **PIPE BENDING** | 10.88d | 2018-09-21 08:00 | 2018-09-28 15:00 |  | 2018-09-21 08:00 | 2018-09-28 15:00 | 10.88d | 0.09d |  | TEAM_2Shift_Calendar-1 |  | 210h | 11,400 | 11,400 |
| 314 | 3.1.1.1 | PIPE MARKING | 12h | 2018-09-21 08:00 | 2018-09-21 20:00 | 4 | 2018-09-21 08:00 | 2018-09-21 20:00 | 12h | 55.81d | 0d | TEAM_2Shift_Calendar-1 | Helper; Fitter [200%] | 36h | 2,250 | 2,250 |
| 315 | 3.1.1.2 | PIPE BENDING | 5d | 2018-09-21 20:00 | 2018-09-26 12:00 | 314 | 2018-09-21 20:00 | 2018-09-26 12:00 | 5d | 55.81d | 0d | TEAM_2Shift_Calendar-1 | Fitter [300%] | 120h | 8,250 | 8,250 |
| 316 | 3.1.1.3 | PIPE JOINT WELDING | 27h | 2018-09-26 12:00 | 2018-09-28 15:00 | 315 | 2018-09-26 12:00 | 2018-09-28 15:00 | 27h | 55.72d | 0d | TEAM_2Shift_Calendar-1 | Helper; TIGWelder [200%] | 54h | 900 | 900 |
| 317 | 3.1.2 | **MANHOLE M1 Fabrication** | 15.6d | 2018-09-21 20:00 | 2018-10-03 16:50 |  | 2018-09-21 20:00 | 2018-10-03 16:50 | 15.6d | 14.24d |  | TEAM_2Shift_Calendar-1 |  | 195h | 8,860.42 | 8,860.42 |
| 318 | 3.1.2.1 | LS-PLATE MARKING | 2h | 2018-09-21 20:00 | 2018-09-21 22:00 | 2, 314 | 2018-09-21 20:00 | 2018-09-21 22:00 | 2h | 70.69d | 0d | TEAM_2Shift_Calendar-1 | Helper [200%]; Fitter | 4h | 237.5 | 237.5 |
| 319 | 3.1.2.2 | LS- STAMPING | 2h | 2018-09-24 06:00 | 2018-09-24 08:00 | 318 | 2018-09-24 06:00 | 2018-09-24 08:00 | 2h | 70.69d | 0d | TEAM_2Shift_Calendar-1 | Helper; Fitter | 4h | 237.5 | 237.5 |
| 320 | 3.1.2.3 | LS-PL CUTTING | 4.5h | 2018-09-24 08:00 | 2018-09-24 12:30 | 319 | 2018-09-24 08:00 | 2018-09-24 12:30 | 4.5h | 70.69d | 0d | TEAM_2Shift_Calendar-1 | Helper [200%]; GasCutter [200%] | 16h | 400 | 400 |
| 321 | 3.1.2.4 | LS-GRINDING | 5h | 2018-09-24 12:30 | 2018-09-24 17:30 | 320 | 2018-09-24 12:30 | 2018-09-24 17:30 | 5h | 70.96d | 0d | TEAM_2Shift_Calendar-1 | Grinder [200%] | 10h | 562.5 | 562.5 |
| 322 | 3.1.2.5 | LS-EDGE PREPARATION | 4h | 2018-09-24 17:30 | 2018-09-24 21:30 | 321 | 2018-09-24 17:30 | 2018-09-24 21:30 | 4h | 70.96d | 0d | TEAM_2Shift_Calendar-1 | Grinder [200%] | 8h | 450 | 450 |
| 323 | 3.1.2.6 | LS-PRE BENDING | 3h | 2018-09-24 21:30 | 2018-09-25 08:30 | 322 | 2018-09-24 21:30 | 2018-09-25 08:30 | 3h | 70.96d | 0d | TEAM_2Shift_Calendar-1 | Helper [200%]; Fitter [200%] | 12h | 712.5 | 712.5 |
| 324 | 3.1.2.7 | LS-PREBEND CUTOFF | 1h | 2018-09-25 08:30 | 2018-09-25 09:30 | 323 | 2018-09-25 08:30 | 2018-09-25 09:30 | 1h | 70.96d | 0d | TEAM_2Shift_Calendar-1 | Helper [200%]; GasCutter [200%] | 4h | 100 | 100 |
| 325 | 3.1.2.8 | LS-EDGE PREPARTION | 4h | 2018-09-25 09:30 | 2018-09-25 13:30 | 324 | 2018-09-25 09:30 | 2018-09-25 13:30 | 4h | 70.96d | 0d | TEAM_2Shift_Calendar-1 | Grinder [200%] | 8h | 450 | 450 |
| 326 | 3.1.2.9 | LS-ROLLING | 4h | 2018-09-25 13:30 | 2018-09-25 17:30 | 325 | 2018-09-25 13:30 | 2018-09-25 17:30 | 4h | 70.96d | 0d | TEAM_2Shift_Calendar-1 | Helper [200%]; Fitter [200%] | 16h | 950 | 950 |
| 327 | 3.1.2.10 | LS-ACID CLEANING | 3h | 2018-09-25 17:30 | 2018-09-25 20:30 | 326 | 2018-09-25 17:30 | 2018-09-25 20:30 | 3h | 70.96d | 0d | TEAM_2Shift_Calendar-1 | Helper [200%] | 6h | 300 | 300 |
| 328 | 3.1.2.11 | LS-FITUP | 9.33h | 2018-09-25 20:30 | 2018-09-26 14:50 | 327 | 2018-09-25 20:30 | 2018-09-26 14:50 | 9.33h | 70.96d | 0d | TEAM_2Shift_Calendar-1 | Helper [200%]; Fitter; TIGWelder | 16h | 633.33 | 633.33 |
| 329 | 3.1.2.12 | LS-SPIDERUP | 3h | 2018-09-26 14:50 | 2018-09-26 17:50 | 328 | 2018-09-26 14:50 | 2018-09-26 17:50 | 3h | 71.33d | 0d | TEAM_2Shift_Calendar-1 | Helper [200%]; Fitter [200%] | 12h | 712.5 | 712.5 |
| 330 | 3.1.2.13 | LS-FITUP INSPECTION | 2h | 2018-09-26 17:50 | 2018-09-26 19:50 | 329 | 2018-09-26 17:50 | 2018-09-26 19:50 | 2h | 71.33d | 0d | TEAM_2Shift_Calendar-1 | Fitter [200%] | 4h | 275 | 275 |
| 331 | 3.1.2.14 | LS-WELDING | 4.5h | 2018-09-26 19:50 | 2018-09-27 11:30 | 330 | 2018-09-26 19:50 | 2018-09-27 11:30 | 4.5h | 70.83d | 0d | TEAM_2Shift_Calendar-1 | Helper [200%]; TIGWelder | 6h | 150 | 150 |
| 332 | 3.1.2.15 | LS-FLUSH GRIND | 2h | 2018-09-27 11:30 | 2018-09-27 13:30 | 331 | 2018-09-27 11:30 | 2018-09-27 13:30 | 2h | 70.83d | 0d | TEAM_2Shift_Calendar-1 | Grinder [200%] | 4h | 225 | 225 |
| 333 | 3.1.2.16 | LS-REROLLING | 3h | 2018-09-27 13:30 | 2018-09-27 16:30 | 332 | 2018-09-27 13:30 | 2018-09-27 16:30 | 3h | 70.83d | 0d | TEAM_2Shift_Calendar-1 | Helper [200%]; Fitter [200%] | 12h | 712.5 | 712.5 |
| 334 | 3.1.2.17 | LS-DPCHECK | 2h | 2018-09-27 16:30 | 2018-09-27 18:30 | 333 | 2018-09-27 16:30 | 2018-09-27 18:30 | 2h | 70.83d | 0d | TEAM_2Shift_Calendar-1 | Helper; Fitter | 4h | 237.5 | 237.5 |
| 335 | 3.1.2.18 | LS-RADIOGRAPHY | 2d | 2018-09-27 18:30 | 2018-09-28 18:30 | 334 | 2018-09-27 18:30 | 2018-09-28 18:30 | 2d | 70.83d | 0.75d | TEAM_2Shift_Calendar-1 | SC (Cost) [0.1%] |  |  |  |
| 336 | 3.1.2.19 | MACHINING | 1d | 2018-09-29 08:30 | 2018-09-29 17:30 | 335 | 2018-09-29 08:30 | 2018-09-29 17:30 | 1d | 70.08d | 0d | TEAM_2Shift_Calendar-1 | MillingOperator | 8h |  |  |
| 337 | 3.1.2.20 | MANHOLE FLANGE FIT UP | 10.67h | 2018-09-29 17:30 | 2018-10-01 14:50 | 336 | 2018-09-29 17:30 | 2018-10-01 14:50 | 10.67h | 70.08d | 0d | TEAM_2Shift_Calendar-1 | Helper [200%]; Fitter; TIGWelder | 16h | 633.33 | 633.33 |
| 338 | 3.1.2.21 | WELDING | 6.33h | 2018-10-01 14:50 | 2018-10-03 11:50 | 337 | 2018-10-01 14:50 | 2018-10-03 11:50 | 6.33h | 70.08d | 0d | TEAM_2Shift_Calendar-1 | Helper [200%]; TIGWelder | 12h | 300 | 300 |
| 339 | 3.1.2.22 | FLUSH GRIND | 2h | 2018-10-03 11:50 | 2018-10-03 13:50 | 338 | 2018-10-03 11:50 | 2018-10-03 13:50 | 2h | 70.08d | 0d | TEAM_2Shift_Calendar-1 | Grinder [200%] | 4h | 225 | 225 |
| 340 | 3.1.2.23 | MANHOLE COVER FIT UP | 3h | 2018-10-03 13:50 | 2018-10-03 16:50 | 339 | 2018-10-03 13:50 | 2018-10-03 16:50 | 3h | 70.08d | 9.49d | TEAM_2Shift_Calendar-1 | Helper [200%]; Fitter; TIGWelder | 9h | 356.25 | 356.25 |

Notes:
- 300: SC
- 307: SC
- 317: 1 NO
- 335: SC

| ID | WBS | Task | Duration | Start | Finish | Predecessors | Baseline start | Baseline finish | Baseline duration | Total slack | Free slack | Calendar | Resources | Work | Cost | Baseline cost |
| --- | --- | --- | --- | --- | --- | --- | --- | --- | --- | --- | --- | --- | --- | --- | --- | --- |
| 341 | 3.1.3 | **NOZZLE PIPE FABRICATION** | 59.62d | 2018-08-17 08:00 | 2018-09-25 21:00 |  | 2018-08-17 08:00 | 2018-09-25 21:00 | 59.62d | 43.52d |  | TEAM_2Shift_Calendar-1 |  | 70h | 3,243.75 | 3,243.75 |
| 342 | 3.1.3.1 | PIPE MARKING | 3h | 2018-09-24 06:00 | 2018-09-24 09:00 | 318 | 2018-09-24 06:00 | 2018-09-24 09:00 | 3h | 79.62d | 0d | TEAM_2Shift_Calendar-1 | Helper; Fitter [200%] | 6h | 356.25 | 356.25 |
| 343 | 3.1.3.2 | STAMPING | 1h | 2018-09-24 09:00 | 2018-09-24 10:00 | 342 | 2018-09-24 09:00 | 2018-09-24 10:00 | 1h | 98.53d | 0d | TEAM_2Shift_Calendar-1 | Fitter [200%] | 2h | 137.5 | 137.5 |
| 344 | 3.1.3.3 | CUTTING | 7.5h | 2018-09-24 10:00 | 2018-09-24 17:30 | 343 | 2018-09-24 10:00 | 2018-09-24 17:30 | 7.5h | 98.53d | 0d | TEAM_2Shift_Calendar-1 | Helper; GasCutter [200%] | 15h | 375 | 375 |
| 345 | 3.1.3.4 | EDGE PREPARATION | 4h | 2018-09-24 17:30 | 2018-09-24 21:30 | 344 | 2018-09-24 17:30 | 2018-09-24 21:30 | 4h | 98.94d | 0d | TEAM_2Shift_Calendar-1 | Grinder [200%] | 8h | 450 | 450 |
| 346 | 3.1.3.5 | NOZZLE CAP FIT UP | 4h | 2018-09-24 21:30 | 2018-09-25 09:30 | 345 | 2018-09-24 21:30 | 2018-09-25 09:30 | 4h | 98.94d | 0d | TEAM_2Shift_Calendar-1 | Fitter [200%] | 8h | 550 | 550 |
| 347 | 3.1.3.6 | WELDING | 7.5h | 2018-09-25 09:30 | 2018-09-25 17:00 | 346 | 2018-09-25 09:30 | 2018-09-25 17:00 | 7.5h | 98.94d | 0d | TEAM_2Shift_Calendar-1 | Helper; TIGWelder [200%] | 15h | 375 | 375 |
| 348 | 3.1.3.7 | FLUSH GRIND | 4h | 2018-09-25 17:00 | 2018-09-25 21:00 | 347 | 2018-09-25 17:00 | 2018-09-25 21:00 | 4h | 99.34d |  | TEAM_2Shift_Calendar-1 | Grinder [200%] | 8h | 450 | 450 |
| 349 | 3.1.3.8 | DP CHECK | 4h | 2018-08-17 08:00 | 2018-08-17 12:00 |  | 2018-08-17 08:00 | 2018-08-17 12:00 | 4h | 140.03d | 0d | TEAM_2Shift_Calendar-1 | Fitter [200%] | 8h | 550 | 550 |
| 350 | 3.1.3.9 | RT | 2d | 2018-08-17 12:00 | 2018-08-18 12:00 | 349 | 2018-08-17 12:00 | 2018-08-18 12:00 | 2d | 140.03d | 79.28d | TEAM_2Shift_Calendar-1 | SC (Cost) [0.1%] |  |  |  |
| 351 | 3.1.4 | **NOZZLE HBN FABRICATION** | 79.19d | 2018-08-17 08:00 | 2018-10-08 17:30 |  | 2018-08-17 08:00 | 2018-10-08 17:30 | 79.19d | 23.95d |  | TEAM_2Shift_Calendar-1 |  | 306h | 12,134.38 | 12,134.38 |
| 352 | 3.1.4.1 | PIPE MARKING | 16.5h | 2018-09-24 09:00 | 2018-09-25 09:30 | 342 | 2018-09-24 09:00 | 2018-09-25 09:30 | 16.5h | 79.62d | 0d | TEAM_2Shift_Calendar-1 | Helper; Fitter [200%] | 33h | 1,959.38 | 1,959.38 |
| 353 | 3.1.4.2 | STAMPING | 9h | 2018-09-25 09:30 | 2018-09-25 18:30 | 352 | 2018-09-25 09:30 | 2018-09-25 18:30 | 9h | 79.62d | 0d | TEAM_2Shift_Calendar-1 | Fitter [200%] | 18h | 1,237.5 | 1,237.5 |
| 354 | 3.1.4.3 | CUTTING | 25.25h | 2018-09-25 18:30 | 2018-09-27 11:45 | 353 | 2018-09-25 18:30 | 2018-09-27 11:45 | 25.25h | 79.62d | 0d | TEAM_2Shift_Calendar-1 | Helper; GasCutter [200%] | 45h | 1,125 | 1,125 |
| 355 | 3.1.4.4 | MACHINING | 36h | 2018-09-27 11:45 | 2018-10-03 16:45 | 354 | 2018-09-27 11:45 | 2018-10-03 16:45 | 36h | 79.75d | 0d | TEAM_2Shift_Calendar-1 | MillingOperator | 36h |  |  |
| 356 | 3.1.4.5 | NOZZLE CAP FIT UP | 17h | 2018-10-03 16:45 | 2018-10-04 17:45 | 355 | 2018-10-03 16:45 | 2018-10-04 17:45 | 17h | 79.75d | 0d | TEAM_2Shift_Calendar-1 | Fitter [200%] | 34h | 2,337.5 | 2,337.5 |
| 357 | 3.1.4.6 | WELDING | 30.75h | 2018-10-04 17:45 | 2018-10-06 16:30 | 356 | 2018-10-04 17:45 | 2018-10-06 16:30 | 30.75h | 79.75d | 0d | TEAM_2Shift_Calendar-1 | Helper; TIGWelder [200%] | 60h | 1,500 | 1,500 |
| 358 | 3.1.4.7 | FLUSH GRIND | 17h | 2018-10-06 16:30 | 2018-10-08 17:30 | 357 | 2018-10-06 16:30 | 2018-10-08 17:30 | 17h | 79.78d |  | TEAM_2Shift_Calendar-1 | Grinder [200%] | 34h | 1,912.5 | 1,912.5 |
| 359 | 3.1.4.8 | DP CHECK | 15h | 2018-08-17 08:00 | 2018-08-18 07:00 |  | 2018-08-17 08:00 | 2018-08-18 07:00 | 15h | 123.03d | 0d | TEAM_2Shift_Calendar-1 | Fitter [200%] | 30h | 2,062.5 | 2,062.5 |
| 360 | 3.1.4.9 | RT | 2d | 2018-08-18 07:00 | 2018-08-20 07:00 | 359 | 2018-08-18 07:00 | 2018-08-20 07:00 | 2d | 123.03d | 0.19d | TEAM_2Shift_Calendar-1 | SC (Cost) [0.1%] |  |  |  |
| 361 | 3.1.4.10 | MACHINING-FILLET | 16h | 2018-08-20 08:30 | 2018-08-21 17:30 | 360 | 2018-08-20 08:30 | 2018-08-21 17:30 | 16h | 122.84d | 51.06d | TEAM_2Shift_Calendar-1 | MillingOperator | 16h |  |  |
| 362 | 3.1.5 | **NOZZLE HBN/PIPE FABRICATION** | 65.69d | 2018-08-17 08:00 | 2018-09-28 21:30 |  | 2018-08-17 08:00 | 2018-09-28 21:30 | 65.69d | 37.45d |  | TEAM_2Shift_Calendar-1 |  | 154h | 6,793.75 | 6,793.75 |
| 363 | 3.1.5.1 | PIPE MARKING | 3h | 2018-09-25 09:30 | 2018-09-25 12:30 | 352 | 2018-09-25 09:30 | 2018-09-25 12:30 | 3h | 88.88d | 0d | TEAM_2Shift_Calendar-1 | Helper; Fitter [200%] | 6h | 356.25 | 356.25 |
| 364 | 3.1.5.2 | STAMPING | 3h | 2018-09-25 12:30 | 2018-09-25 15:30 | 363 | 2018-09-25 12:30 | 2018-09-25 15:30 | 3h | 93.62d | 0d | TEAM_2Shift_Calendar-1 | Fitter [200%] | 6h | 412.5 | 412.5 |
| 365 | 3.1.5.3 | CUTTING | 3h | 2018-09-25 15:30 | 2018-09-25 18:30 | 364 | 2018-09-25 15:30 | 2018-09-25 18:30 | 3h | 93.62d | 0.75d | TEAM_2Shift_Calendar-1 | Helper; GasCutter [200%] | 6h | 150 | 150 |
| 366 | 3.1.5.4 | MACHINING | 2h | 2018-09-26 08:30 | 2018-09-26 10:30 | 365 | 2018-09-26 08:30 | 2018-09-26 10:30 | 2h | 92.88d | 0d | TEAM_2Shift_Calendar-1 | MillingOperator | 2h |  |  |
| 367 | 3.1.5.5 | HBN/PIPE TO PIPE EP | 2h | 2018-09-26 10:30 | 2018-09-26 12:30 | 366 | 2018-09-26 10:30 | 2018-09-26 12:30 | 2h | 93.53d | 0d | TEAM_2Shift_Calendar-1 | Grinder [200%] | 4h | 225 | 225 |
| 368 | 3.1.5.6 | WELDING | 9.5h | 2018-09-26 12:30 | 2018-09-27 09:00 | 367 | 2018-09-26 12:30 | 2018-09-27 09:00 | 9.5h | 93.09d | 0d | TEAM_2Shift_Calendar-1 | Helper; TIGWelder [200%] | 18h | 450 | 450 |
| 369 | 3.1.5.7 | NOZZLE CAP FIT UP | 8h | 2018-09-27 09:00 | 2018-09-27 17:00 | 368 | 2018-09-27 09:00 | 2018-09-27 17:00 | 8h | 93.09d | 0d | TEAM_2Shift_Calendar-1 | Fitter [200%] | 16h | 1,100 | 1,100 |
| 370 | 3.1.5.8 | THERMOWELL FITTING IF REQD | 2h | 2018-09-27 17:00 | 2018-09-27 19:00 | 369 | 2018-09-27 17:00 | 2018-09-27 19:00 | 2h | 93.09d | 0d | TEAM_2Shift_Calendar-1 | Fitter [200%] | 4h | 275 | 275 |
| 371 | 3.1.5.9 | WELDING | 12.5h | 2018-09-27 19:00 | 2018-09-28 15:30 | 370 | 2018-09-27 19:00 | 2018-09-28 15:30 | 12.5h | 93.09d | 0d | TEAM_2Shift_Calendar-1 | Helper; TIGWelder [200%] | 24h | 600 | 600 |
| 372 | 3.1.5.10 | FLUSH GRIND | 6h | 2018-09-28 15:30 | 2018-09-28 21:30 | 371 | 2018-09-28 15:30 | 2018-09-28 21:30 | 6h | 93.28d |  | TEAM_2Shift_Calendar-1 | Grinder [200%] | 12h | 675 | 675 |
| 373 | 3.1.5.11 | DP CHECK | 8h | 2018-08-17 08:00 | 2018-08-17 16:00 |  | 2018-08-17 08:00 | 2018-08-17 16:00 | 8h | 131.31d | 0d | TEAM_2Shift_Calendar-1 | Fitter [200%] | 16h | 1,100 | 1,100 |
| 374 | 3.1.5.12 | RT | 2d | 2018-08-17 16:00 | 2018-08-18 16:00 | 373 | 2018-08-17 16:00 | 2018-08-18 16:00 | 2d | 131.31d | 0d | TEAM_2Shift_Calendar-1 | SC (Cost) [0.1%] |  |  |  |
| 375 | 3.1.5.13 | MACHINING-FILLET | 6h | 2018-08-18 16:00 | 2018-08-20 14:00 | 374 | 2018-08-18 16:00 | 2018-08-20 14:00 | 6h | 130.44d | 0d | TEAM_2Shift_Calendar-1 | MillingOperator | 6h |  |  |
| 376 | 3.1.5.14 | PROFILE MARKING | 4h | 2018-08-20 14:00 | 2018-08-20 18:00 | 375 | 2018-08-20 14:00 | 2018-08-20 18:00 | 4h | 131.19d | 0.81d | TEAM_2Shift_Calendar-1 | Fitter [200%] | 8h | 550 | 550 |
| 377 | 3.1.5.15 | PROFILE CUTTING | 5h | 2018-08-21 08:30 | 2018-08-21 14:30 | 376 | 2018-08-21 08:30 | 2018-08-21 14:30 | 5h | 130.38d | 0d | TEAM_2Shift_Calendar-1 | GasCutter [200%] | 10h |  |  |
| 378 | 3.1.5.16 | PROFILE GRINDING | 8h | 2018-08-21 14:30 | 2018-08-22 06:30 | 377 | 2018-08-21 14:30 | 2018-08-22 06:30 | 8h | 130.49d | 53.31d | TEAM_2Shift_Calendar-1 | Grinder [200%] | 16h | 900 | 900 |

Notes:
- 341: 1 NO
- 350: SC
- 351: 43NOS
- 360: SC
- 362: 12NOS
- 374: SC

| ID | WBS | Task | Duration | Start | Finish | Predecessors | Baseline start | Baseline finish | Baseline duration | Total slack | Free slack | Calendar | Resources | Work | Cost | Baseline cost |
| --- | --- | --- | --- | --- | --- | --- | --- | --- | --- | --- | --- | --- | --- | --- | --- | --- |
| 379 | 3.1.6 | **NOZZLE HBN/PIPE FABRICATION** | 69.81d | 2018-08-17 08:00 | 2018-10-03 06:30 |  | 2018-08-17 08:00 | 2018-10-03 06:30 | 69.81d | 33.33d |  | TEAM_2Shift_Calendar-1 |  | 188h | 8,215.62 | 8,215.62 |
| 380 | 3.1.6.1 | PIPE MARKING | 4.5h | 2018-09-25 12:30 | 2018-09-25 17:00 | 363 | 2018-09-25 12:30 | 2018-09-25 17:00 | 4.5h | 88.88d | 0d | TEAM_2Shift_Calendar-1 | Helper; Fitter [200%] | 9h | 534.38 | 534.38 |
| 381 | 3.1.6.2 | STAMPING | 2h | 2018-09-25 17:00 | 2018-09-25 19:00 | 380 | 2018-09-25 17:00 | 2018-09-25 19:00 | 2h | 88.88d | 0d | TEAM_2Shift_Calendar-1 | Fitter [200%] | 4h | 275 | 275 |
| 382 | 3.1.6.3 | CUTTING | 15h | 2018-09-25 19:00 | 2018-09-26 18:00 | 381 | 2018-09-25 19:00 | 2018-09-26 18:00 | 15h | 88.88d | 0.81d | TEAM_2Shift_Calendar-1 | Helper; GasCutter [200%] | 30h | 750 | 750 |
| 383 | 3.1.6.4 | MACHINING | 8h | 2018-09-27 08:30 | 2018-09-27 17:30 | 382 | 2018-09-27 08:30 | 2018-09-27 17:30 | 8h | 88.12d | 0d | TEAM_2Shift_Calendar-1 | MillingOperator | 8h |  |  |
| 384 | 3.1.6.5 | HBN/PIPE TO PIPE EP | 5h | 2018-09-27 17:30 | 2018-09-28 06:30 | 383 | 2018-09-27 17:30 | 2018-09-28 06:30 | 5h | 89d | 0d | TEAM_2Shift_Calendar-1 | Grinder [200%] | 10h | 562.5 | 562.5 |
| 385 | 3.1.6.6 | WELDING | 6h | 2018-09-28 06:30 | 2018-09-28 12:30 | 384 | 2018-09-28 06:30 | 2018-09-28 12:30 | 6h | 89d | 0d | TEAM_2Shift_Calendar-1 | Helper; TIGWelder [200%] | 12h | 300 | 300 |
| 386 | 3.1.6.7 | NOZZLE CAP FIT UP | 3h | 2018-09-28 12:30 | 2018-09-28 15:30 | 385 | 2018-09-28 12:30 | 2018-09-28 15:30 | 3h | 89.15d | 0d | TEAM_2Shift_Calendar-1 | Fitter [200%] | 6h | 412.5 | 412.5 |
| 387 | 3.1.6.8 | FOOT PIECE TO HBN/PIPE EP | 5h | 2018-09-28 15:30 | 2018-09-28 20:30 | 386 | 2018-09-28 15:30 | 2018-09-28 20:30 | 5h | 89.15d | 0d | TEAM_2Shift_Calendar-1 | Grinder [200%] | 10h | 562.5 | 562.5 |
| 388 | 3.1.6.9 | PIPE BENDING | 15h | 2018-09-28 20:30 | 2018-09-29 19:30 | 4, 387 | 2018-09-28 20:30 | 2018-09-29 19:30 | 15h | 89.15d | 0d | TEAM_2Shift_Calendar-1 | Helper; Fitter [200%] | 30h | 1,781.25 | 1,781.25 |
| 389 | 3.1.6.10 | EP-2 SIDES | 10h | 2018-09-29 19:30 | 2018-10-01 13:30 | 388 | 2018-09-29 19:30 | 2018-10-01 13:30 | 10h | 89.15d | 0d | TEAM_2Shift_Calendar-1 | Grinder [200%] | 20h | 1,125 | 1,125 |
| 390 | 3.1.6.11 | WELDING | 6h | 2018-10-01 13:30 | 2018-10-01 19:30 | 389 | 2018-10-01 13:30 | 2018-10-01 19:30 | 6h | 89.15d | 0d | TEAM_2Shift_Calendar-1 | Helper; TIGWelder [200%] | 12h | 300 | 300 |
| 391 | 3.1.6.12 | FLUSH GRIND | 3h | 2018-10-01 19:30 | 2018-10-03 06:30 | 390 | 2018-10-01 19:30 | 2018-10-03 06:30 | 3h | 89.15d |  | TEAM_2Shift_Calendar-1 | Grinder [200%] | 6h | 337.5 | 337.5 |
| 392 | 3.1.6.13 | DP CHECK | 3h | 2018-08-17 08:00 | 2018-08-17 11:00 |  | 2018-08-17 08:00 | 2018-08-17 11:00 | 3h | 153.84d | 0d | TEAM_2Shift_Calendar-1 | Fitter [200%] | 6h | 412.5 | 412.5 |
| 393 | 3.1.6.14 | RT | 2d | 2018-08-17 11:00 | 2018-08-18 11:00 | 392 | 2018-08-17 11:00 | 2018-08-18 11:00 | 2d | 153.84d | 0d | TEAM_2Shift_Calendar-1 | SC (Cost) [0.1%] |  |  |  |
| 394 | 3.1.6.15 | MACHINING-FILLET | 3h | 2018-08-18 11:00 | 2018-08-18 15:00 | 393 | 2018-08-18 11:00 | 2018-08-18 15:00 | 3h | 153.84d | 0d | TEAM_2Shift_Calendar-1 | MillingOperator | 3h |  |  |
| 395 | 3.1.6.16 | PROFILE MARKING | 3h | 2018-08-18 15:00 | 2018-08-18 18:00 | 394 | 2018-08-18 15:00 | 2018-08-18 18:00 | 3h | 153.84d | 0.81d | TEAM_2Shift_Calendar-1 | Fitter [200%] | 6h | 412.5 | 412.5 |
| 396 | 3.1.6.17 | PROFILE CUTTING | 4h | 2018-08-20 08:30 | 2018-08-20 12:30 | 395 | 2018-08-20 08:30 | 2018-08-20 12:30 | 4h | 153.03d | 0d | TEAM_2Shift_Calendar-1 | GasCutter [200%] | 8h |  |  |
| 397 | 3.1.6.18 | PROFILE GRINDING | 4h | 2018-08-20 12:30 | 2018-08-20 16:30 | 396 | 2018-08-20 12:30 | 2018-08-20 16:30 | 4h | 153.9d |  | TEAM_2Shift_Calendar-1 | Grinder [200%] | 8h | 450 | 450 |
| 398 | 3.2 | **SADDLE FAB** | 15.58d | 2018-09-21 08:00 | 2018-10-01 20:40 |  | 2018-09-21 08:00 | 2018-10-01 20:40 | 15.58d | 15.35d | 0d | TEAM_2Shift_Calendar-1 |  | 214h | 9,635.42 | 9,635.42 |
| 399 | 3.2.1 | SADDLE PLATE MARKING | 1.12d | 2018-09-21 08:00 | 2018-09-21 17:00 | 6 | 2018-09-21 08:00 | 2018-09-21 17:00 | 1.12d | 71.3d | 0d | TEAM_2Shift_Calendar-1 | Fitter [200%] | 18h | 1,237.5 | 1,237.5 |
| 400 | 3.2.2 | SADDLE PLATE CUTTING | 2d | 2018-09-21 17:00 | 2018-09-25 09:00 | 399 | 2018-09-21 17:00 | 2018-09-25 09:00 | 2d | 70.42d | 0d | TEAM_2Shift_Calendar-1 | Helper; GasCutter | 18h | 450 | 450 |
| 401 | 3.2.3 | SADDLE PLATE GRINDING | 2.81d | 2018-09-25 09:00 | 2018-09-26 15:30 | 400 | 2018-09-25 09:00 | 2018-09-26 15:30 | 2.81d | 70.42d | 0d | TEAM_2Shift_Calendar-1 | Grinder [200%] | 45h | 2,531.25 | 2,531.25 |
| 402 | 3.2.4 | DRILLING | 1d | 2018-09-26 15:30 | 2018-09-27 07:30 | 401 | 2018-09-26 15:30 | 2018-09-27 07:30 | 1d | 70.42d | 0d | TEAM_2Shift_Calendar-1 | Driller | 8h | 550 | 550 |
| 403 | 3.2.5 | SADDLE PLATE FIT UP | 1.08d | 2018-09-27 07:30 | 2018-09-27 16:10 | 402 | 2018-09-27 07:30 | 2018-09-27 16:10 | 1.08d | 70.42d | 0d | TEAM_2Shift_Calendar-1 | Helper [200%]; Fitter [83.3%]; TIGWelder | 20h | 791.67 | 791.67 |
| 404 | 3.2.6 | SADDLE WELDING | 4.06d | 2018-09-27 16:10 | 2018-09-29 16:40 | 403 | 2018-09-27 16:10 | 2018-09-29 16:40 | 4.06d | 71.17d | 0d | TEAM_2Shift_Calendar-1 | Helper; TIGWelder [200%] | 65h | 1,625 | 1,625 |
| 405 | 3.2.7 | BEND REMOVAL | 1d | 2018-09-29 16:40 | 2018-10-01 08:40 | 404 | 2018-09-29 16:40 | 2018-10-01 08:40 | 1d | 71.17d | 0d | TEAM_2Shift_Calendar-1 | Fitter [200%] | 16h | 1,100 | 1,100 |
| 406 | 3.2.8 | GRINDING | 1.5d | 2018-10-01 08:40 | 2018-10-01 20:40 | 405 | 2018-10-01 08:40 | 2018-10-01 20:40 | 1.5d | 71.17d |  | TEAM_2Shift_Calendar-1 | Grinder [200%] | 24h | 1,350 | 1,350 |

Notes:
- 379: SD1,SD2,AL1,AL2
- 393: SC

| ID | WBS | Task | Duration | Start | Finish | Predecessors | Baseline start | Baseline finish | Baseline duration | Total slack | Free slack | Calendar | Resources | Work | Cost | Baseline cost |
| --- | --- | --- | --- | --- | --- | --- | --- | --- | --- | --- | --- | --- | --- | --- | --- | --- |
| 407 | 3.3 | **LIFTING LUG FAB** | 4.62d | 2018-09-21 17:00 | 2018-09-25 22:00 |  | 2018-09-21 17:00 | 2018-09-25 22:00 | 4.62d | 43.06d |  | TEAM_2Shift_Calendar-1 |  | 57h | 2,906.25 | 2,906.25 |
| 408 | 3.3.1 | PLATE MARKING | 4h | 2018-09-21 17:00 | 2018-09-21 21:00 | 2, 399 | 2018-09-21 17:00 | 2018-09-21 21:00 | 4h | 98.78d | 0d | TEAM_2Shift_Calendar-1 | Fitter [200%] | 8h | 550 | 550 |
| 409 | 3.3.2 | CUTTING | 1.5d | 2018-09-21 21:00 | 2018-09-24 17:30 | 408 | 2018-09-21 21:00 | 2018-09-24 17:30 | 1.5d | 98.78d | 0d | TEAM_2Shift_Calendar-1 | Helper; GasCutter | 16h | 400 | 400 |
| 410 | 3.3.3 | GRINDING | 1.56d | 2018-09-24 17:30 | 2018-09-25 14:00 | 409 | 2018-09-24 17:30 | 2018-09-25 14:00 | 1.56d | 99.22d | 0d | TEAM_2Shift_Calendar-1 | Grinder [200%] | 25h | 1,406.25 | 1,406.25 |
| 411 | 3.3.4 | DRILLING | 1d | 2018-09-25 14:00 | 2018-09-25 22:00 | 410 | 2018-09-25 14:00 | 2018-09-25 22:00 | 1d | 99.22d |  | TEAM_2Shift_Calendar-1 | Driller | 8h | 550 | 550 |
| 412 | 3.4 | **DISH FORMING** | 58.25d | 2018-08-17 08:00 | 2018-09-25 10:00 |  | 2018-08-17 08:00 | 2018-09-25 10:00 | 58.25d | 8.44d | 0d | TEAM_2Shift_Calendar-1 |  | 445h | 17,905.21 | 17,905.21 |
| 413 | 3.4.1 | MATERIAL MARKING | 0.75d | 2018-08-17 08:00 | 2018-08-17 14:00 | 2 | 2018-08-17 08:00 | 2018-08-17 14:00 | 0.75d | 65.83d | 0d | TEAM_2Shift_Calendar-1 | Fitter [200%] | 12h | 825 | 825 |
| 414 | 3.4.2 | MATERIAL STAMPING | 0.5d | 2018-08-17 14:00 | 2018-08-17 18:00 | 413 | 2018-08-17 14:00 | 2018-08-17 18:00 | 0.5d | 65.83d | 0d | TEAM_2Shift_Calendar-1 | Fitter [200%] | 8h | 550 | 550 |
| 415 | 3.4.3 | DISH PL CUTTING | 1.38d | 2018-08-17 18:00 | 2018-08-18 14:00 | 414 | 2018-08-17 18:00 | 2018-08-18 14:00 | 1.38d | 65.77d | 0d | TEAM_2Shift_Calendar-1 | Helper; GasCutter [200%] | 18h | 450 | 450 |
| 416 | 3.4.4 | GRINDING/EP | 0.88d | 2018-08-18 14:00 | 2018-08-18 21:00 | 415 | 2018-08-18 14:00 | 2018-08-18 21:00 | 0.88d | 65.77d | 0d | TEAM_2Shift_Calendar-1 | Grinder [200%] | 14h | 787.5 | 787.5 |
| 417 | 3.4.5 | DP CHECK | 1d | 2018-08-18 21:00 | 2018-08-20 13:00 | 416 | 2018-08-18 21:00 | 2018-08-20 13:00 | 1d | 65.77d | 0d | TEAM_2Shift_Calendar-1 | Helper; Fitter [87.5%] | 14h | 831.25 | 831.25 |
| 418 | 3.4.6 | WELDING | 2.31d | 2018-08-20 13:00 | 2018-08-22 11:30 | 417 | 2018-08-20 13:00 | 2018-08-22 11:30 | 2.31d | 65.77d | 0d | TEAM_2Shift_Calendar-1 | Helper [400%]; TIGWelder [200%] | 60h | 1,500 | 1,500 |
| 419 | 3.4.7 | PL FITUP | 1.46d | 2018-08-22 11:30 | 2018-08-23 11:50 | 418 | 2018-08-22 11:30 | 2018-08-23 11:50 | 1.46d | 65.83d | 0d | TEAM_2Shift_Calendar-1 | Helper [200%]; Fitter; TIGWelder | 25h | 989.58 | 989.58 |
| 420 | 3.4.8 | ROOT WELDING | 1.38d | 2018-08-23 11:50 | 2018-08-24 14:50 | 419 | 2018-08-23 11:50 | 2018-08-24 14:50 | 1.38d | 65.77d | 0d | TEAM_2Shift_Calendar-1 | Helper [200%]; TIGWelder | 20h | 500 | 500 |
| 421 | 3.4.9 | DP CHECK | 0.5d | 2018-08-24 14:50 | 2018-08-24 18:50 | 420 | 2018-08-24 14:50 | 2018-08-24 18:50 | 0.5d | 65.77d | 0d | TEAM_2Shift_Calendar-1 | Helper; Fitter [75%] | 6h | 356.25 | 356.25 |
| 422 | 3.4.10 | FINAL WELDING ONSIDE | 1.59d | 2018-08-24 18:50 | 2018-08-28 09:00 | 421 | 2018-08-24 18:50 | 2018-08-28 09:00 | 1.59d | 65.73d | 0d | TEAM_2Shift_Calendar-1 | Helper [200%]; TIGWelder | 17h | 425 | 425 |
| 423 | 3.4.11 | BACKCHIP GRINDING | 1d | 2018-08-28 09:00 | 2018-08-28 17:00 | 422 | 2018-08-28 09:00 | 2018-08-28 17:00 | 1d | 65.73d | 0d | TEAM_2Shift_Calendar-1 | Grinder [75%] | 6h | 337.5 | 337.5 |
| 424 | 3.4.12 | FINAL WELDING ON BACKCHIP SIDE | 1.62d | 2018-08-28 17:00 | 2018-08-30 09:00 | 423 | 2018-08-28 17:00 | 2018-08-30 09:00 | 1.62d | 64.85d | 0d | TEAM_2Shift_Calendar-1 | Helper [200%]; TIGWelder | 18h | 450 | 450 |
| 425 | 3.4.13 | LS-FITUP | 0.88d | 2018-08-30 09:00 | 2018-08-30 16:00 | 424 | 2018-08-30 09:00 | 2018-08-30 16:00 | 0.88d | 64.85d | 0d | TEAM_2Shift_Calendar-1 | Helper [200%]; Fitter; TIGWelder | 18h | 712.5 | 712.5 |
| 426 | 3.4.14 | ROOT WELDING | 1.5d | 2018-08-30 16:00 | 2018-08-31 17:00 | 425 | 2018-08-30 16:00 | 2018-08-31 17:00 | 1.5d | 65.73d | 0d | TEAM_2Shift_Calendar-1 | Helper [200%]; TIGWelder | 18h | 450 | 450 |
| 427 | 3.4.15 | ROOT WELDING DP CHECK | 1.67h | 2018-08-31 17:00 | 2018-08-31 18:40 | 426 | 2018-08-31 17:00 | 2018-08-31 18:40 | 1.67h | 65.73d | 0d | TEAM_2Shift_Calendar-1 | Fitter [300%] | 5h | 343.75 | 343.75 |
| 428 | 3.4.16 | ONSIDE FINAL WELDING | 1.69d | 2018-08-31 18:40 | 2018-09-03 09:30 | 427 | 2018-08-31 18:40 | 2018-09-03 09:30 | 1.69d | 65.19d | 0d | TEAM_2Shift_Calendar-1 | Helper [200%]; TIGWelder | 18h | 450 | 450 |
| 429 | 3.4.17 | BACKCHIP GRINDING | 1d | 2018-09-03 09:30 | 2018-09-03 17:30 | 428 | 2018-09-03 09:30 | 2018-09-03 17:30 | 1d | 65.19d | 0d | TEAM_2Shift_Calendar-1 | Grinder [75%] | 6h | 337.5 | 337.5 |
| 430 | 3.4.18 | BACKCHIP SIDE WELDING | 1.69d | 2018-09-03 17:30 | 2018-09-05 09:30 | 429 | 2018-09-03 17:30 | 2018-09-05 09:30 | 1.69d | 64.31d | 0d | TEAM_2Shift_Calendar-1 | Helper [200%]; TIGWelder | 18h | 450 | 450 |
| 431 | 3.4.19 | WELDING BACKCHIP GRINDING | 1d | 2018-09-05 09:30 | 2018-09-05 17:30 | 430 | 2018-09-05 09:30 | 2018-09-05 17:30 | 1d | 64.31d | 0d | TEAM_2Shift_Calendar-1 | Grinder [75%] | 6h | 337.5 | 337.5 |
| 432 | 3.4.20 | INSIDE POLISHING | 2d | 2018-09-05 17:30 | 2018-09-06 17:30 | 431 | 2018-09-05 17:30 | 2018-09-06 17:30 | 2d | 64.31d | 0d | TEAM_2Shift_Calendar-1 | Grinder [75%] | 12h | 675 | 675 |
| 433 | 3.4.21 | OUTSIDE POLISHING | 1d | 2018-09-06 17:30 | 2018-09-07 09:30 | 432 | 2018-09-06 17:30 | 2018-09-07 09:30 | 1d | 64.31d | 0d | TEAM_2Shift_Calendar-1 | Grinder [75%] | 6h | 337.5 | 337.5 |
| 434 | 3.4.22 | DP TEST | 0.75d | 2018-09-07 09:30 | 2018-09-07 15:30 | 433 | 2018-09-07 09:30 | 2018-09-07 15:30 | 0.75d | 64.31d | 0d | TEAM_2Shift_Calendar-1 | Helper; Fitter | 12h | 712.5 | 712.5 |
| 435 | 3.4.23 | EP GRINDING | 2d | 2018-09-07 15:30 | 2018-09-10 15:30 | 434 | 2018-09-07 15:30 | 2018-09-10 15:30 | 2d | 64.31d | 0d | TEAM_2Shift_Calendar-1 | Grinder [75%] | 12h | 675 | 675 |
| 436 | 3.4.24 | EP DP CHECK | 0.5d | 2018-09-10 15:30 | 2018-09-10 19:30 | 435 | 2018-09-10 15:30 | 2018-09-10 19:30 | 0.5d | 64.31d | 0d | TEAM_2Shift_Calendar-1 | Helper; Fitter [75%] | 6h | 356.25 | 356.25 |
| 437 | 3.4.25 | RT | 1d | 2018-09-10 19:30 | 2018-09-11 11:30 | 436 | 2018-09-10 19:30 | 2018-09-11 11:30 | 1d | 64.31d | 0d | TEAM_2Shift_Calendar-1 | SC (Cost) [0.1%] |  |  |  |
| 438 | 3.4.26 | DISH FORMING | 15d | 2018-09-11 11:30 | 2018-09-20 19:30 | 437 | 2018-09-11 11:30 | 2018-09-20 19:30 | 15d | 64.31d | 0d | TEAM_2Shift_Calendar-1 | SC (Cost) [0.1%] |  |  |  |
| 439 | 3.4.27 | INWARD INSPECTION | 0.09d | 2018-09-20 19:30 | 2018-09-20 20:15 | 438 | 2018-09-20 19:30 | 2018-09-20 20:15 | 0.09d | 64.31d | 0d | TEAM_2Shift_Calendar-1 | Helper [200%]; Fitter [200%] | 3h | 178.12 | 178.12 |
| 440 | 3.4.28 | SF MARKING | 0.62d | 2018-09-20 20:15 | 2018-09-21 09:15 | 439 | 2018-09-20 20:15 | 2018-09-21 09:15 | 0.62d | 64.31d | 0d | TEAM_2Shift_Calendar-1 | Helper [200%]; Fitter [200%] | 20h | 1,187.5 | 1,187.5 |
| 441 | 3.4.29 | CUTTING(HEIGHT) | 1.28d | 2018-09-21 09:15 | 2018-09-24 10:00 | 440 | 2018-09-21 09:15 | 2018-09-24 10:00 | 1.28d | 64.31d | 0d | TEAM_2Shift_Calendar-1 | Helper [200%]; GasCutter [200%] | 35h | 875 | 875 |
| 442 | 3.4.30 | GRINDING | 1.5d | 2018-09-24 10:00 | 2018-09-24 22:00 | 441 | 2018-09-24 10:00 | 2018-09-24 22:00 | 1.5d | 64.33d | 0d | TEAM_2Shift_Calendar-1 | Grinder [200%] | 24h | 1,350 | 1,350 |
| 443 | 3.4.31 | INSPECTION | 0.5d | 2018-09-25 06:00 | 2018-09-25 10:00 | 442 | 2018-09-25 06:00 | 2018-09-25 10:00 | 0.5d | 64.33d |  | TEAM_2Shift_Calendar-1 | Helper; Fitter [200%] | 8h | 475 | 475 |

Notes:
- 407: 8NOS
- 413: 8 PLATES/TANK
- 419: ALS1,ALS3,BLS1,BLS3
- 423: ALS1,ALS3,BLS1,BLS3
- 425: ALS2,BLS2
- 426: ALS2,BLS2
- 427: ALS2,BLS2
- 437: SC
- 438: SC
- 439: SC

| ID | WBS | Task | Duration | Start | Finish | Predecessors | Baseline start | Baseline finish | Baseline duration | Total slack | Free slack | Calendar | Resources | Work | Cost | Baseline cost |
| --- | --- | --- | --- | --- | --- | --- | --- | --- | --- | --- | --- | --- | --- | --- | --- | --- |
| 444 | 3.5 | **SHELL FABRICATION** | 27.69d | 2018-08-17 08:00 | 2018-09-03 21:30 |  | 2018-08-17 08:00 | 2018-09-03 21:30 | 27.69d | 24.06d |  | TEAM_2Shift_Calendar-1 |  | 648h | 30,159.38 | 30,159.38 |
| 445 | 3.5.1 | **SHELL 1- FABRICATION** | 25.69d | 2018-08-17 08:00 | 2018-09-01 21:30 |  | 2018-08-17 08:00 | 2018-09-01 21:30 | 25.69d | 24.06d | 2d | TEAM_2Shift_Calendar-1 |  | 216h | 10,053.12 | 10,053.12 |
| 446 | 3.5.1.1 | SH1-PLATE MARKING | 0.75d | 2018-08-17 08:00 | 2018-08-17 14:00 | 2 | 2018-08-17 08:00 | 2018-08-17 14:00 | 0.75d | 80.06d | 0d | TEAM_2Shift_Calendar-1 | Fitter [200%] | 12h | 825 | 825 |
| 447 | 3.5.1.2 | SH1- STAMPING | 3h | 2018-08-17 14:00 | 2018-08-17 17:00 | 446 | 2018-08-17 14:00 | 2018-08-17 17:00 | 3h | 83.56d | 0d | TEAM_2Shift_Calendar-1 | Fitter | 3h | 206.25 | 206.25 |
| 448 | 3.5.1.3 | SH1-PL CUTTING | 0.88d | 2018-08-17 17:00 | 2018-08-18 12:00 | 447 | 2018-08-17 17:00 | 2018-08-18 12:00 | 0.88d | 82.69d | 0d | TEAM_2Shift_Calendar-1 | Helper; GasCutter [87.5%] | 7h | 175 | 175 |
| 449 | 3.5.1.4 | SH1-GRINDING | 1d | 2018-08-18 12:00 | 2018-08-18 20:00 | 448 | 2018-08-18 12:00 | 2018-08-18 20:00 | 1d | 82.69d | 0d | TEAM_2Shift_Calendar-1 | Grinder [75%] | 6h | 337.5 | 337.5 |
| 450 | 3.5.1.5 | SH1-EDGE PREPARATION/DP CHECK | 1d | 2018-08-18 20:00 | 2018-08-20 12:00 | 449 | 2018-08-18 20:00 | 2018-08-20 12:00 | 1d | 82.69d | 0d | TEAM_2Shift_Calendar-1 | Grinder [75%] | 6h | 337.5 | 337.5 |
| 451 | 3.5.1.6 | SH1-PRE BENDING | 1.56d | 2018-08-20 12:00 | 2018-08-21 08:30 | 450 | 2018-08-20 12:00 | 2018-08-21 08:30 | 1.56d | 82.69d | 0d | TEAM_2Shift_Calendar-1 | Fitter [200%] | 25h | 1,718.75 | 1,718.75 |
| 452 | 3.5.1.7 | SH1-PREBEND CUTOFF | 0.5d | 2018-08-21 08:30 | 2018-08-21 12:30 | 451 | 2018-08-21 08:30 | 2018-08-21 12:30 | 0.5d | 82.69d | 0d | TEAM_2Shift_Calendar-1 | Helper; GasCutter [75%] | 6h | 150 | 150 |
| 453 | 3.5.1.8 | SH1-EDGE PREPARTION | 2d | 2018-08-21 12:30 | 2018-08-22 12:30 | 452 | 2018-08-21 12:30 | 2018-08-22 12:30 | 2d | 83.56d | 0d | TEAM_2Shift_Calendar-1 | Grinder [75%] | 12h | 675 | 675 |
| 454 | 3.5.1.9 | SH1-ROLLING | 0.94d | 2018-08-22 12:30 | 2018-08-22 20:00 | 453 | 2018-08-22 12:30 | 2018-08-22 20:00 | 0.94d | 83.56d | 0d | TEAM_2Shift_Calendar-1 | Helper; Fitter [200%] | 15h | 890.62 | 890.62 |
| 455 | 3.5.1.10 | SH1-ACID CLEANING | 1d | 2018-08-22 20:00 | 2018-08-23 12:00 | 454 | 2018-08-22 20:00 | 2018-08-23 12:00 | 1d | 83.56d | 0d | TEAM_2Shift_Calendar-1 | Helper [75%] | 6h | 300 | 300 |
| 456 | 3.5.1.11 | SH1-FITUP | 1.44d | 2018-08-23 12:00 | 2018-08-24 12:00 | 455 | 2018-08-23 12:00 | 2018-08-24 12:00 | 1.44d | 82.94d | 0d | TEAM_2Shift_Calendar-1 | Helper [200%]; Fitter; TIGWelder | 24h | 950 | 950 |
| 457 | 3.5.1.12 | SH1-SPIDERUP | 0.38d | 2018-08-24 12:00 | 2018-08-24 15:00 | 456 | 2018-08-24 12:00 | 2018-08-24 15:00 | 0.38d | 82.94d | 0d | TEAM_2Shift_Calendar-1 | Fitter [200%] | 6h | 412.5 | 412.5 |
| 458 | 3.5.1.13 | SH1-FITUP INSPECTION | 0.5d | 2018-08-24 15:00 | 2018-08-24 19:00 | 457 | 2018-08-24 15:00 | 2018-08-24 19:00 | 0.5d | 82.94d | 0d | TEAM_2Shift_Calendar-1 | Helper; Fitter [75%] | 6h | 356.25 | 356.25 |
| 459 | 3.5.1.14 | SH1-ROOT WELDING | 1.44d | 2018-08-24 19:00 | 2018-08-27 15:30 | 458 | 2018-08-24 19:00 | 2018-08-27 15:30 | 1.44d | 82.94d | 0d | TEAM_2Shift_Calendar-1 | Helper; TIGWelder | 12h | 300 | 300 |
| 460 | 3.5.1.15 | SH1-ROOT WELD VISUAL INSP | 2h | 2018-08-27 15:30 | 2018-08-27 17:30 | 459 | 2018-08-27 15:30 | 2018-08-27 17:30 | 2h | 83.12d | 0d | TEAM_2Shift_Calendar-1 | TIGWelder | 2h |  |  |
| 461 | 3.5.1.16 | SH1-DPCHECK | 3h | 2018-08-27 17:30 | 2018-08-27 20:30 | 460 | 2018-08-27 17:30 | 2018-08-27 20:30 | 3h | 83.12d | 0d | TEAM_2Shift_Calendar-1 | Fitter | 3h | 206.25 | 206.25 |
| 462 | 3.5.1.17 | SH1-WELDING | 2.12d | 2018-08-27 20:30 | 2018-08-29 12:30 | 461 | 2018-08-27 20:30 | 2018-08-29 12:30 | 2.12d | 83d | 0d | TEAM_2Shift_Calendar-1 | Helper; TIGWelder | 24h | 600 | 600 |
| 463 | 3.5.1.18 | SH1- BACKCHIP GRIND | 0.5d | 2018-08-29 12:30 | 2018-08-29 16:30 | 462 | 2018-08-29 12:30 | 2018-08-29 16:30 | 0.5d | 83d | 0d | TEAM_2Shift_Calendar-1 | Grinder | 4h | 225 | 225 |
| 464 | 3.5.1.19 | SH1-INSIDE WELDING | 2.38d | 2018-08-29 16:30 | 2018-08-31 11:30 | 463 | 2018-08-29 16:30 | 2018-08-31 11:30 | 2.38d | 82.19d | 0d | TEAM_2Shift_Calendar-1 | Helper; TIGWelder | 24h | 600 | 600 |
| 465 | 3.5.1.20 | SH1-BACKCHIP GRIND | 0.5d | 2018-08-31 11:30 | 2018-08-31 15:30 | 464 | 2018-08-31 11:30 | 2018-08-31 15:30 | 0.5d | 82.19d | 0d | TEAM_2Shift_Calendar-1 | Grinder | 4h | 225 | 225 |
| 466 | 3.5.1.21 | SH1-REROLLING | 0.38d | 2018-08-31 15:30 | 2018-08-31 18:30 | 465 | 2018-08-31 15:30 | 2018-08-31 18:30 | 0.38d | 82.19d | 0d | TEAM_2Shift_Calendar-1 | Helper; Fitter [200%] | 6h | 356.25 | 356.25 |
| 467 | 3.5.1.22 | SH1-DPCHECK | 3h | 2018-08-31 18:30 | 2018-08-31 21:30 | 466 | 2018-08-31 18:30 | 2018-08-31 21:30 | 3h | 82.19d | 0d | TEAM_2Shift_Calendar-1 | Fitter | 3h | 206.25 | 206.25 |
| 468 | 3.5.1.23 | SH1-RADIOGRAPHY | 2d | 2018-08-31 21:30 | 2018-09-01 21:30 | 467 | 2018-08-31 21:30 | 2018-09-01 21:30 | 2d | 82.19d |  | TEAM_2Shift_Calendar-1 | SC (Cost) [0.1%] |  |  |  |

Notes:
- 445: 1000*14803*12T
- 451: 2PLATES-4 SIDES
- 454: 2 PLATES
- 455: 2 PIESCES
- 456: LS1+LS2
- 459: 0.2Kg/m-LS1+LS2
- 462: 0.64Kg/m
- 464: 0.64Kg/m
- 468: SC

| ID | WBS | Task | Duration | Start | Finish | Predecessors | Baseline start | Baseline finish | Baseline duration | Total slack | Free slack | Calendar | Resources | Work | Cost | Baseline cost |
| --- | --- | --- | --- | --- | --- | --- | --- | --- | --- | --- | --- | --- | --- | --- | --- | --- |
| 469 | 3.5.2 | **SHELL 2- FABRICATION** | 24.94d | 2018-08-18 14:00 | 2018-09-03 21:30 |  | 2018-08-18 14:00 | 2018-09-03 21:30 | 24.94d | 24.06d | 0d | TEAM_2Shift_Calendar-1 |  | 216h | 10,053.12 | 10,053.12 |
| 470 | 3.5.2.1 | SH1-PLATE MARKING | 0.75d | 2018-08-18 14:00 | 2018-08-18 20:00 | 446FS+2d | 2018-08-18 14:00 | 2018-08-18 20:00 | 0.75d | 80.06d | 0d | TEAM_2Shift_Calendar-1 | Fitter [200%] | 12h | 825 | 825 |
| 471 | 3.5.2.2 | SH1- STAMPING | 3h | 2018-08-18 20:00 | 2018-08-20 07:00 | 470 | 2018-08-18 20:00 | 2018-08-20 07:00 | 3h | 80.81d | 0d | TEAM_2Shift_Calendar-1 | Fitter | 3h | 206.25 | 206.25 |
| 472 | 3.5.2.3 | SH1-PL CUTTING | 0.69d | 2018-08-20 07:00 | 2018-08-20 12:30 | 471 | 2018-08-20 07:00 | 2018-08-20 12:30 | 0.69d | 80.62d | 0d | TEAM_2Shift_Calendar-1 | Helper; GasCutter [87.5%] | 7h | 175 | 175 |
| 473 | 3.5.2.4 | SH1-GRINDING | 1d | 2018-08-20 12:30 | 2018-08-20 20:30 | 472 | 2018-08-20 12:30 | 2018-08-20 20:30 | 1d | 80.62d | 0d | TEAM_2Shift_Calendar-1 | Grinder [75%] | 6h | 337.5 | 337.5 |
| 474 | 3.5.2.5 | SH1-EDGE PREPARATION/DP CHECK | 1d | 2018-08-20 20:30 | 2018-08-21 12:30 | 473 | 2018-08-20 20:30 | 2018-08-21 12:30 | 1d | 80.62d | 0d | TEAM_2Shift_Calendar-1 | Grinder [75%] | 6h | 337.5 | 337.5 |
| 475 | 3.5.2.6 | SH1-PRE BENDING | 1.56d | 2018-08-21 12:30 | 2018-08-22 09:00 | 474 | 2018-08-21 12:30 | 2018-08-22 09:00 | 1.56d | 80.62d | 0d | TEAM_2Shift_Calendar-1 | Fitter [200%] | 25h | 1,718.75 | 1,718.75 |
| 476 | 3.5.2.7 | SH1-PREBEND CUTOFF | 0.5d | 2018-08-22 09:00 | 2018-08-22 14:00 | 475 | 2018-08-22 09:00 | 2018-08-22 14:00 | 0.5d | 80.62d | 0d | TEAM_2Shift_Calendar-1 | Helper; GasCutter [75%] | 6h | 150 | 150 |
| 477 | 3.5.2.8 | SH1-EDGE PREPARTION/DP CHECK | 2d | 2018-08-22 14:00 | 2018-08-23 14:00 | 476 | 2018-08-22 14:00 | 2018-08-23 14:00 | 2d | 81.38d | 0d | TEAM_2Shift_Calendar-1 | Grinder [75%] | 12h | 675 | 675 |
| 478 | 3.5.2.9 | SH1-ROLLING | 0.94d | 2018-08-23 14:00 | 2018-08-23 21:30 | 477 | 2018-08-23 14:00 | 2018-08-23 21:30 | 0.94d | 81.38d | 0d | TEAM_2Shift_Calendar-1 | Helper; Fitter [200%] | 15h | 890.62 | 890.62 |
| 479 | 3.5.2.10 | SH1-ACID CLEANING | 1d | 2018-08-23 21:30 | 2018-08-24 13:30 | 478 | 2018-08-23 21:30 | 2018-08-24 13:30 | 1d | 81.38d | 0d | TEAM_2Shift_Calendar-1 | Helper [75%] | 6h | 300 | 300 |
| 480 | 3.5.2.11 | SH1-FITUP | 1.5d | 2018-08-24 13:30 | 2018-08-27 12:30 | 479 | 2018-08-24 13:30 | 2018-08-27 12:30 | 1.5d | 80.88d | 0d | TEAM_2Shift_Calendar-1 | Helper [200%]; Fitter; TIGWelder | 24h | 950 | 950 |
| 481 | 3.5.2.12 | SH1-SPIDERUP | 0.38d | 2018-08-27 12:30 | 2018-08-27 15:30 | 480 | 2018-08-27 12:30 | 2018-08-27 15:30 | 0.38d | 80.88d | 0d | TEAM_2Shift_Calendar-1 | Fitter [200%] | 6h | 412.5 | 412.5 |
| 482 | 3.5.2.13 | SH1-FITUP INSPECTION | 0.5d | 2018-08-27 15:30 | 2018-08-27 19:30 | 481 | 2018-08-27 15:30 | 2018-08-27 19:30 | 0.5d | 80.88d | 0d | TEAM_2Shift_Calendar-1 | Helper; Fitter [75%] | 6h | 356.25 | 356.25 |
| 483 | 3.5.2.14 | SH1-ROOT WELDING | 1.38d | 2018-08-27 19:30 | 2018-08-28 15:30 | 482 | 2018-08-27 19:30 | 2018-08-28 15:30 | 1.38d | 80.88d | 0d | TEAM_2Shift_Calendar-1 | Helper; TIGWelder | 12h | 300 | 300 |
| 484 | 3.5.2.15 | SH1-ROOT WELD VISUAL INSP | 2h | 2018-08-28 15:30 | 2018-08-28 17:30 | 483 | 2018-08-28 15:30 | 2018-08-28 17:30 | 2h | 81.12d | 0d | TEAM_2Shift_Calendar-1 | TIGWelder | 2h |  |  |
| 485 | 3.5.2.16 | SH1-DPCHECK | 3h | 2018-08-28 17:30 | 2018-08-28 20:30 | 484 | 2018-08-28 17:30 | 2018-08-28 20:30 | 3h | 81.12d | 0d | TEAM_2Shift_Calendar-1 | Fitter | 3h | 206.25 | 206.25 |
| 486 | 3.5.2.17 | SH1-WELDING | 2.12d | 2018-08-28 20:30 | 2018-08-30 12:30 | 485 | 2018-08-28 20:30 | 2018-08-30 12:30 | 2.12d | 81d | 0d | TEAM_2Shift_Calendar-1 | Helper; TIGWelder | 24h | 600 | 600 |
| 487 | 3.5.2.18 | SH1- BACKCHIP GRIND | 0.5d | 2018-08-30 12:30 | 2018-08-30 16:30 | 486 | 2018-08-30 12:30 | 2018-08-30 16:30 | 0.5d | 81d | 0d | TEAM_2Shift_Calendar-1 | Grinder | 4h | 225 | 225 |
| 488 | 3.5.2.19 | SH1-INSIDE WELDING | 2.38d | 2018-08-30 16:30 | 2018-09-01 11:30 | 487 | 2018-08-30 16:30 | 2018-09-01 11:30 | 2.38d | 80.19d | 0d | TEAM_2Shift_Calendar-1 | Helper; TIGWelder | 24h | 600 | 600 |
| 489 | 3.5.2.20 | SH1-BACKCHIP GRIND | 0.5d | 2018-09-01 11:30 | 2018-09-01 15:30 | 488 | 2018-09-01 11:30 | 2018-09-01 15:30 | 0.5d | 80.19d | 0d | TEAM_2Shift_Calendar-1 | Grinder | 4h | 225 | 225 |
| 490 | 3.5.2.21 | SH1-REROLLING | 0.38d | 2018-09-01 15:30 | 2018-09-01 18:30 | 489 | 2018-09-01 15:30 | 2018-09-01 18:30 | 0.38d | 80.19d | 0d | TEAM_2Shift_Calendar-1 | Helper; Fitter [200%] | 6h | 356.25 | 356.25 |
| 491 | 3.5.2.22 | SH1-DPCHECK | 3h | 2018-09-01 18:30 | 2018-09-01 21:30 | 490 | 2018-09-01 18:30 | 2018-09-01 21:30 | 3h | 80.19d | 0d | TEAM_2Shift_Calendar-1 | Fitter | 3h | 206.25 | 206.25 |
| 492 | 3.5.2.23 | SH1-RADIOGRAPHY | 2d | 2018-09-01 21:30 | 2018-09-03 21:30 | 491 | 2018-09-01 21:30 | 2018-09-03 21:30 | 2d | 80.19d |  | TEAM_2Shift_Calendar-1 | SC (Cost) [0.1%] |  |  |  |

Notes:
- 469: 1500*14803*12T
- 475: 2PLATES-4 SIDES
- 478: 2 PLATES
- 479: 2 PIESCES
- 480: LS1+LS2
- 483: 0.2Kg/m-LS3+LS4
- 486: 0.64Kg/m
- 488: 0.64Kg/m
- 492: SC

| ID | WBS | Task | Duration | Start | Finish | Predecessors | Baseline start | Baseline finish | Baseline duration | Total slack | Free slack | Calendar | Resources | Work | Cost | Baseline cost |
| --- | --- | --- | --- | --- | --- | --- | --- | --- | --- | --- | --- | --- | --- | --- | --- | --- |
| 493 | 3.5.3 | **SHELL 3-FABRICATION** | 24.19d | 2018-08-18 20:00 | 2018-09-03 21:30 |  | 2018-08-18 20:00 | 2018-09-03 21:30 | 24.19d | 24.06d | 0d | TEAM_2Shift_Calendar-1 |  | 216h | 10,053.12 | 10,053.12 |
| 494 | 3.5.3.1 | SH1-PLATE MARKING | 0.75d | 2018-08-18 20:00 | 2018-08-20 10:00 | 470 | 2018-08-18 20:00 | 2018-08-20 10:00 | 0.75d | 80.06d | 0d | TEAM_2Shift_Calendar-1 | Fitter [200%] | 12h | 825 | 825 |
| 495 | 3.5.3.2 | SH1- STAMPING | 3h | 2018-08-20 10:00 | 2018-08-20 13:00 | 494 | 2018-08-20 10:00 | 2018-08-20 13:00 | 3h | 80.06d | 0d | TEAM_2Shift_Calendar-1 | Fitter | 3h | 206.25 | 206.25 |
| 496 | 3.5.3.3 | SH1-PL CUTTING | 0.56d | 2018-08-20 13:00 | 2018-08-20 17:30 | 495 | 2018-08-20 13:00 | 2018-08-20 17:30 | 0.56d | 80d | 0d | TEAM_2Shift_Calendar-1 | Helper; GasCutter [87.5%] | 7h | 175 | 175 |
| 497 | 3.5.3.4 | SH1-GRINDING | 1d | 2018-08-20 17:30 | 2018-08-21 09:30 | 496 | 2018-08-20 17:30 | 2018-08-21 09:30 | 1d | 80d | 0d | TEAM_2Shift_Calendar-1 | Grinder [75%] | 6h | 337.5 | 337.5 |
| 498 | 3.5.3.5 | SH1-EDGE PREPARATION/DP CHECK | 1d | 2018-08-21 09:30 | 2018-08-21 17:30 | 497 | 2018-08-21 09:30 | 2018-08-21 17:30 | 1d | 80d | 0d | TEAM_2Shift_Calendar-1 | Grinder [75%] | 6h | 337.5 | 337.5 |
| 499 | 3.5.3.6 | SH1-PRE BENDING | 1.56d | 2018-08-21 17:30 | 2018-08-22 14:00 | 498 | 2018-08-21 17:30 | 2018-08-22 14:00 | 1.56d | 80d | 0d | TEAM_2Shift_Calendar-1 | Fitter [200%] | 25h | 1,718.75 | 1,718.75 |
| 500 | 3.5.3.7 | SH1-PREBEND CUTOFF | 0.5d | 2018-08-22 14:00 | 2018-08-23 09:00 | 499 | 2018-08-22 14:00 | 2018-08-23 09:00 | 0.5d | 80d | 0d | TEAM_2Shift_Calendar-1 | Helper; GasCutter [75%] | 6h | 150 | 150 |
| 501 | 3.5.3.8 | SH1-EDGE PREPARTION/DP CHECK | 2d | 2018-08-23 09:00 | 2018-08-24 09:00 | 500 | 2018-08-23 09:00 | 2018-08-24 09:00 | 2d | 80d | 0d | TEAM_2Shift_Calendar-1 | Grinder [75%] | 12h | 675 | 675 |
| 502 | 3.5.3.9 | SH1-ROLLING | 0.94d | 2018-08-24 09:00 | 2018-08-24 16:30 | 501 | 2018-08-24 09:00 | 2018-08-24 16:30 | 0.94d | 80d | 0d | TEAM_2Shift_Calendar-1 | Helper; Fitter [200%] | 15h | 890.62 | 890.62 |
| 503 | 3.5.3.10 | SH1-ACID CLEANING | 1d | 2018-08-24 16:30 | 2018-08-27 08:30 | 502 | 2018-08-24 16:30 | 2018-08-27 08:30 | 1d | 80d | 0d | TEAM_2Shift_Calendar-1 | Helper [75%] | 6h | 300 | 300 |
| 504 | 3.5.3.11 | SH1-FITUP | 1.12d | 2018-08-27 08:30 | 2018-08-27 17:30 | 503 | 2018-08-27 08:30 | 2018-08-27 17:30 | 1.12d | 80d | 0d | TEAM_2Shift_Calendar-1 | Helper [200%]; Fitter; TIGWelder | 24h | 950 | 950 |
| 505 | 3.5.3.12 | SH1-SPIDERUP | 0.38d | 2018-08-27 17:30 | 2018-08-27 20:30 | 504 | 2018-08-27 17:30 | 2018-08-27 20:30 | 0.38d | 80.25d | 0d | TEAM_2Shift_Calendar-1 | Fitter [200%] | 6h | 412.5 | 412.5 |
| 506 | 3.5.3.13 | SH1-FITUP INSPECTION | 0.5d | 2018-08-27 20:30 | 2018-08-28 08:30 | 505 | 2018-08-27 20:30 | 2018-08-28 08:30 | 0.5d | 80.25d | 0d | TEAM_2Shift_Calendar-1 | Helper; Fitter [75%] | 6h | 356.25 | 356.25 |
| 507 | 3.5.3.14 | SH1-ROOT WELDING | 0.88d | 2018-08-28 08:30 | 2018-08-28 15:30 | 506 | 2018-08-28 08:30 | 2018-08-28 15:30 | 0.88d | 80.25d | 0d | TEAM_2Shift_Calendar-1 | Helper; TIGWelder | 12h | 300 | 300 |
| 508 | 3.5.3.15 | SH1-ROOT WELD VISUAL INSP | 2h | 2018-08-28 15:30 | 2018-08-28 17:30 | 507 | 2018-08-28 15:30 | 2018-08-28 17:30 | 2h | 81.12d | 0d | TEAM_2Shift_Calendar-1 | TIGWelder | 2h |  |  |
| 509 | 3.5.3.16 | SH1-DPCHECK | 3h | 2018-08-28 17:30 | 2018-08-28 20:30 | 508 | 2018-08-28 17:30 | 2018-08-28 20:30 | 3h | 81.12d | 0d | TEAM_2Shift_Calendar-1 | Fitter | 3h | 206.25 | 206.25 |
| 510 | 3.5.3.17 | SH1-WELDING | 2.12d | 2018-08-28 20:30 | 2018-08-30 12:30 | 509 | 2018-08-28 20:30 | 2018-08-30 12:30 | 2.12d | 81d | 0d | TEAM_2Shift_Calendar-1 | Helper; TIGWelder | 24h | 600 | 600 |
| 511 | 3.5.3.18 | SH1- BACKCHIP GRIND | 0.5d | 2018-08-30 12:30 | 2018-08-30 16:30 | 510 | 2018-08-30 12:30 | 2018-08-30 16:30 | 0.5d | 81d | 0d | TEAM_2Shift_Calendar-1 | Grinder | 4h | 225 | 225 |
| 512 | 3.5.3.19 | SH1-INSIDE WELDING | 2.38d | 2018-08-30 16:30 | 2018-09-01 11:30 | 511 | 2018-08-30 16:30 | 2018-09-01 11:30 | 2.38d | 80.19d | 0d | TEAM_2Shift_Calendar-1 | Helper; TIGWelder | 24h | 600 | 600 |
| 513 | 3.5.3.20 | SH1-BACKCHIP GRIND | 0.5d | 2018-09-01 11:30 | 2018-09-01 15:30 | 512 | 2018-09-01 11:30 | 2018-09-01 15:30 | 0.5d | 80.19d | 0d | TEAM_2Shift_Calendar-1 | Grinder | 4h | 225 | 225 |
| 514 | 3.5.3.21 | SH1-REROLLING | 0.38d | 2018-09-01 15:30 | 2018-09-01 18:30 | 513 | 2018-09-01 15:30 | 2018-09-01 18:30 | 0.38d | 80.19d | 0d | TEAM_2Shift_Calendar-1 | Helper; Fitter [200%] | 6h | 356.25 | 356.25 |
| 515 | 3.5.3.22 | SH1-DPCHECK | 3h | 2018-09-01 18:30 | 2018-09-01 21:30 | 514 | 2018-09-01 18:30 | 2018-09-01 21:30 | 3h | 80.19d | 0d | TEAM_2Shift_Calendar-1 | Fitter | 3h | 206.25 | 206.25 |
| 516 | 3.5.3.23 | SH1-RADIOGRAPHY | 2d | 2018-09-01 21:30 | 2018-09-03 21:30 | 515 | 2018-09-01 21:30 | 2018-09-03 21:30 | 2d | 80.19d |  | TEAM_2Shift_Calendar-1 | SC (Cost) [0.1%] |  |  |  |

Notes:
- 493: 1500*14803*12T
- 499: 2PLATES-4 SIDES
- 502: 2 PLATES
- 503: 2 PIESCES
- 504: LS1+LS2
- 507: 0.2Kg/m-LS5+LS6
- 510: 0.64Kg/m
- 512: 0.64Kg/m
- 516: SC

| ID | WBS | Task | Duration | Start | Finish | Predecessors | Baseline start | Baseline finish | Baseline duration | Total slack | Free slack | Calendar | Resources | Work | Cost | Baseline cost |
| --- | --- | --- | --- | --- | --- | --- | --- | --- | --- | --- | --- | --- | --- | --- | --- | --- |
| 517 | 3.6 | **CS FITUP & WELDING** | 20.69d | 2018-09-03 21:30 | 2018-09-18 11:00 |  | 2018-09-03 21:30 | 2018-09-18 11:00 | 20.69d | 24.19d | 16.88d | TEAM_2Shift_Calendar-1 |  | 352h | 14,900 | 14,900 |
| 518 | 3.6.1 | **CS1-FITUP & WELDING** | 20.69d | 2018-09-03 21:30 | 2018-09-18 11:00 |  | 2018-09-03 21:30 | 2018-09-18 11:00 | 20.69d | 24.19d |  | TEAM_2Shift_Calendar-1 |  | 176h | 7,450 | 7,450 |
| 519 | 3.6.1.1 | SHELL SH1+SH2 READY | 0.5d | 2018-09-03 21:30 | 2018-09-04 09:30 | 445, 469 | 2018-09-03 21:30 | 2018-09-04 09:30 | 0.5d | 80.19d | 0d | TEAM_2Shift_Calendar-1 | Helper | 4h | 200 | 200 |
| 520 | 3.6.1.2 | SHELL EP CORRECTION | 1.5d | 2018-09-04 09:30 | 2018-09-04 21:30 | 519 | 2018-09-04 09:30 | 2018-09-04 21:30 | 1.5d | 80.19d | 0d | TEAM_2Shift_Calendar-1 | Grinder [200%] | 24h | 1,350 | 1,350 |
| 521 | 3.6.1.3 | CS1-FITUP | 1.5d | 2018-09-04 21:30 | 2018-09-05 17:30 | 520 | 2018-09-04 21:30 | 2018-09-05 17:30 | 1.5d | 80.19d | 0d | TEAM_2Shift_Calendar-1 | Helper; Fitter [200%] | 24h | 1,425 | 1,425 |
| 522 | 3.6.1.4 | CS1-FITUP INSPECTION | 1d | 2018-09-05 17:30 | 2018-09-06 09:30 | 521 | 2018-09-05 17:30 | 2018-09-06 09:30 | 1d | 80.19d | 0d | TEAM_2Shift_Calendar-1 | Fitter [75%] | 6h | 412.5 | 412.5 |
| 523 | 3.6.1.5 | CS1-ROOT WELDING | 0.88d | 2018-09-06 09:30 | 2018-09-06 16:30 | 522 | 2018-09-06 09:30 | 2018-09-06 16:30 | 0.88d | 80.19d | 0d | TEAM_2Shift_Calendar-1 | Helper; TIGWelder | 12h | 300 | 300 |
| 524 | 3.6.1.6 | CS1-ROOT WELD VISUAL INSP | 3h | 2018-09-06 16:30 | 2018-09-07 10:30 | 523 | 2018-09-06 16:30 | 2018-09-07 10:30 | 3h | 80.19d | 0d | TEAM_2Shift_Calendar-1 | TIGWelder | 3h |  |  |
| 525 | 3.6.1.7 | CS1-DPCHECK | 0.5d | 2018-09-07 10:30 | 2018-09-07 14:30 | 524 | 2018-09-07 10:30 | 2018-09-07 14:30 | 0.5d | 80.19d | 0d | TEAM_2Shift_Calendar-1 | Fitter | 4h | 275 | 275 |
| 526 | 3.6.1.8 | CS1-WELDING | 4.25d | 2018-09-07 14:30 | 2018-09-12 12:00 | 525 | 2018-09-07 14:30 | 2018-09-12 12:00 | 4.25d | 80.19d | 0d | TEAM_2Shift_Calendar-1 | Helper; TIGWelder | 45h | 1,125 | 1,125 |
| 527 | 3.6.1.9 | CS1- BACKCHIP GRIND | 1.5d | 2018-09-12 12:00 | 2018-09-14 08:00 | 526 | 2018-09-12 12:00 | 2018-09-14 08:00 | 1.5d | 80.31d | 0d | TEAM_2Shift_Calendar-1 | Grinder | 12h | 675 | 675 |
| 528 | 3.6.1.10 | CS1-DPCHECK | 3h | 2018-09-14 08:00 | 2018-09-14 11:00 | 527 | 2018-09-14 08:00 | 2018-09-14 11:00 | 3h | 80.31d | 0d | TEAM_2Shift_Calendar-1 | Fitter | 3h | 206.25 | 206.25 |
| 529 | 3.6.1.11 | CS1-INSIDE WELDING | 2.31d | 2018-09-14 11:00 | 2018-09-15 16:00 | 528 | 2018-09-14 11:00 | 2018-09-15 16:00 | 2.31d | 80.22d | 0d | TEAM_2Shift_Calendar-1 | Helper; TIGWelder | 24h | 600 | 600 |
| 530 | 3.6.1.12 | CS1-DRESSUP | 2d | 2018-09-15 16:00 | 2018-09-17 16:00 | 529 | 2018-09-15 16:00 | 2018-09-17 16:00 | 2d | 80.22d | 0d | TEAM_2Shift_Calendar-1 | Grinder [75%] | 12h | 675 | 675 |
| 531 | 3.6.1.13 | CS1-DPCHECK | 3h | 2018-09-17 16:00 | 2018-09-17 19:00 | 530 | 2018-09-17 16:00 | 2018-09-17 19:00 | 3h | 80.22d | 0d | TEAM_2Shift_Calendar-1 | Fitter | 3h | 206.25 | 206.25 |
| 532 | 3.6.1.14 | CS1-RT | 1d | 2018-09-17 19:00 | 2018-09-18 11:00 | 531 | 2018-09-17 19:00 | 2018-09-18 11:00 | 1d | 80.22d |  | TEAM_2Shift_Calendar-1 | SC (Cost) [0.1%] |  |  |  |
| 533 | 3.6.2 | **CS2-FITUP & WELDING** | 20.69d | 2018-09-03 21:30 | 2018-09-18 11:00 |  | 2018-09-03 21:30 | 2018-09-18 11:00 | 20.69d | 24.19d |  | TEAM_2Shift_Calendar-1 |  | 176h | 7,450 | 7,450 |
| 534 | 3.6.2.1 | SHELL SH3+SH4 READY | 0.5d | 2018-09-03 21:30 | 2018-09-04 09:30 | 493 | 2018-09-03 21:30 | 2018-09-04 09:30 | 0.5d | 80.19d | 0d | TEAM_2Shift_Calendar-1 | Helper | 4h | 200 | 200 |
| 535 | 3.6.2.2 | SHELL EP CORRECTION | 1.5d | 2018-09-04 09:30 | 2018-09-04 21:30 | 534 | 2018-09-04 09:30 | 2018-09-04 21:30 | 1.5d | 80.19d | 0d | TEAM_2Shift_Calendar-1 | Grinder [200%] | 24h | 1,350 | 1,350 |
| 536 | 3.6.2.3 | CS2-FITUP | 1.5d | 2018-09-04 21:30 | 2018-09-05 17:30 | 535 | 2018-09-04 21:30 | 2018-09-05 17:30 | 1.5d | 80.19d | 0d | TEAM_2Shift_Calendar-1 | Helper; Fitter [200%] | 24h | 1,425 | 1,425 |
| 537 | 3.6.2.4 | CS2-FITUP INSPECTION | 1d | 2018-09-05 17:30 | 2018-09-06 09:30 | 536 | 2018-09-05 17:30 | 2018-09-06 09:30 | 1d | 80.19d | 0d | TEAM_2Shift_Calendar-1 | Fitter [75%] | 6h | 412.5 | 412.5 |
| 538 | 3.6.2.5 | CS2-ROOT WELDING | 0.88d | 2018-09-06 09:30 | 2018-09-06 16:30 | 537 | 2018-09-06 09:30 | 2018-09-06 16:30 | 0.88d | 80.19d | 0d | TEAM_2Shift_Calendar-1 | Helper; TIGWelder | 12h | 300 | 300 |
| 539 | 3.6.2.6 | CS2-ROOT WELD VISUAL INSP | 3h | 2018-09-06 16:30 | 2018-09-07 10:30 | 538 | 2018-09-06 16:30 | 2018-09-07 10:30 | 3h | 80.19d | 0d | TEAM_2Shift_Calendar-1 | TIGWelder | 3h |  |  |
| 540 | 3.6.2.7 | CS2-DPCHECK | 0.5d | 2018-09-07 10:30 | 2018-09-07 14:30 | 539 | 2018-09-07 10:30 | 2018-09-07 14:30 | 0.5d | 80.19d | 0d | TEAM_2Shift_Calendar-1 | Fitter | 4h | 275 | 275 |
| 541 | 3.6.2.8 | CS2-WELDING | 4.25d | 2018-09-07 14:30 | 2018-09-12 12:00 | 540 | 2018-09-07 14:30 | 2018-09-12 12:00 | 4.25d | 80.19d | 0d | TEAM_2Shift_Calendar-1 | Helper; TIGWelder | 45h | 1,125 | 1,125 |
| 542 | 3.6.2.9 | CS2- BACKCHIP GRIND | 1.5d | 2018-09-12 12:00 | 2018-09-14 08:00 | 541 | 2018-09-12 12:00 | 2018-09-14 08:00 | 1.5d | 80.31d | 0d | TEAM_2Shift_Calendar-1 | Grinder | 12h | 675 | 675 |
| 543 | 3.6.2.10 | CS2-DPCHECK | 3h | 2018-09-14 08:00 | 2018-09-14 11:00 | 542 | 2018-09-14 08:00 | 2018-09-14 11:00 | 3h | 80.31d | 0d | TEAM_2Shift_Calendar-1 | Fitter | 3h | 206.25 | 206.25 |
| 544 | 3.6.2.11 | CS2-INSIDE WELDING | 2.31d | 2018-09-14 11:00 | 2018-09-15 16:00 | 543 | 2018-09-14 11:00 | 2018-09-15 16:00 | 2.31d | 80.22d | 0d | TEAM_2Shift_Calendar-1 | Helper; TIGWelder | 24h | 600 | 600 |
| 545 | 3.6.2.12 | CS2-DRESSUP | 2d | 2018-09-15 16:00 | 2018-09-17 16:00 | 544 | 2018-09-15 16:00 | 2018-09-17 16:00 | 2d | 80.22d | 0d | TEAM_2Shift_Calendar-1 | Grinder [75%] | 12h | 675 | 675 |
| 546 | 3.6.2.13 | CS2-DPCHECK | 3h | 2018-09-17 16:00 | 2018-09-17 19:00 | 545 | 2018-09-17 16:00 | 2018-09-17 19:00 | 3h | 80.22d | 0d | TEAM_2Shift_Calendar-1 | Fitter | 3h | 206.25 | 206.25 |
| 547 | 3.6.2.14 | CS2-RT | 1d | 2018-09-17 19:00 | 2018-09-18 11:00 | 546 | 2018-09-17 19:00 | 2018-09-18 11:00 | 1d | 80.22d |  | TEAM_2Shift_Calendar-1 | SC (Cost) [0.1%] |  |  |  |

Notes:
- 526: 0.64Kg/m
- 529: 0.64Kg/m
- 532: SC
- 541: 0.64Kg/m
- 544: 0.64Kg/m
- 547: SC

| ID | WBS | Task | Duration | Start | Finish | Predecessors | Baseline start | Baseline finish | Baseline duration | Total slack | Free slack | Calendar | Resources | Work | Cost | Baseline cost |
| --- | --- | --- | --- | --- | --- | --- | --- | --- | --- | --- | --- | --- | --- | --- | --- | --- |
| 548 | 3.7 | **NOZZLE WELDING** | 34.31d | 2018-09-25 10:00 | 2018-10-17 12:30 |  | 2018-09-25 10:00 | 2018-10-17 12:30 | 34.31d | 0.12d | 0d | TEAM_2Shift_Calendar-1 |  | 838h | 31,942.71 | 31,942.71 |
| 549 | 3.7.1 | **PIPE WELDING** | 27.69d | 2018-09-28 15:00 | 2018-10-17 12:30 |  | 2018-09-28 15:00 | 2018-10-17 12:30 | 27.69d | 0.09d |  | TEAM_2Shift_Calendar-1 |  | 343h | 13,300 | 13,300 |
| 550 | 3.7.1.1 | NOZZLE END PIPE ORIENTATION MARKING | 15h | 2018-09-28 15:00 | 2018-09-29 14:00 | 316, 517FS-8d | 2018-09-28 15:00 | 2018-09-29 14:00 | 15h | 55.72d | 0d | TEAM_2Shift_Calendar-1 | Fitter [200%] | 30h | 2,062.5 | 2,062.5 |
| 551 | 3.7.1.2 | PIPE OPENING FOR NOZZLES | 7.34d | 2018-09-29 14:00 | 2018-10-05 09:45 | 550 | 2018-09-29 14:00 | 2018-10-05 09:45 | 7.34d | 55.72d | 0d | TEAM_2Shift_Calendar-1 | Helper; GasCutter [200%] | 115h | 2,875 | 2,875 |
| 552 | 3.7.1.3 | EP | 15h | 2018-10-05 09:45 | 2018-10-06 08:45 | 551 | 2018-10-05 09:45 | 2018-10-06 08:45 | 15h | 55.79d | 0d | TEAM_2Shift_Calendar-1 | Grinder [200%] | 30h | 1,687.5 | 1,687.5 |
| 553 | 3.7.1.4 | PIPE FIT UP WITH SHELL | 4.5d | 2018-10-06 08:45 | 2018-10-09 12:45 | 552 | 2018-10-06 08:45 | 2018-10-09 12:45 | 4.5d | 55.79d | 0d | TEAM_2Shift_Calendar-1 | Helper; Fitter [200%] | 72h | 4,275 | 4,275 |
| 554 | 3.7.1.5 | WELDING | 7.5d | 2018-10-09 12:45 | 2018-10-17 12:30 | 553 | 2018-10-09 12:45 | 2018-10-17 12:30 | 7.5d | 55.79d |  | TEAM_2Shift_Calendar-1 | Helper [200%]; TIGWelder | 96h | 2,400 | 2,400 |
| 555 | 3.7.2 | **MANHOLE WELDING** | 2.91d | 2018-10-09 12:45 | 2018-10-10 20:00 |  | 2018-10-09 12:45 | 2018-10-10 20:00 | 2.91d | 4.75d |  | TEAM_2Shift_Calendar-1 |  | 37h | 1,403.12 | 1,403.12 |
| 556 | 3.7.2.1 | ORIENTATION MARKING | 1.5h | 2018-10-09 12:45 | 2018-10-09 14:15 | 340, 553 | 2018-10-09 12:45 | 2018-10-09 14:15 | 1.5h | 60.75d | 0d | TEAM_2Shift_Calendar-1 | Helper; Fitter [200%] | 3h | 178.12 | 178.12 |
| 557 | 3.7.2.2 | NOZ OPENING | 3h | 2018-10-09 14:15 | 2018-10-09 17:15 | 556 | 2018-10-09 14:15 | 2018-10-09 17:15 | 3h | 64.22d | 0d | TEAM_2Shift_Calendar-1 | Helper; GasCutter [200%] | 6h | 150 | 150 |
| 558 | 3.7.2.3 | GRINDING/EP | 2h | 2018-10-09 17:15 | 2018-10-09 19:15 | 557 | 2018-10-09 17:15 | 2018-10-09 19:15 | 2h | 64.88d | 0d | TEAM_2Shift_Calendar-1 | Grinder [200%] | 4h | 225 | 225 |
| 559 | 3.7.2.4 | FITUP & INSPECTION | 5.33h | 2018-10-09 19:15 | 2018-10-10 11:10 | 558 | 2018-10-09 19:15 | 2018-10-10 11:10 | 5.33h | 64.34d | 0d | TEAM_2Shift_Calendar-1 | Helper [200%]; Fitter; TIGWelder | 8h | 316.67 | 316.67 |
| 560 | 3.7.2.5 | NOZ WITH SHELL FIT UP | 0.17d | 2018-10-10 11:10 | 2018-10-10 12:30 | 559 | 2018-10-10 11:10 | 2018-10-10 12:30 | 0.17d | 64.34d | 0d | TEAM_2Shift_Calendar-1 | Fitter; Helper [200%]; TIGWelder | 4h | 158.33 | 158.33 |
| 561 | 3.7.2.6 | WELDING | 4.5h | 2018-10-10 12:30 | 2018-10-10 17:00 | 560 | 2018-10-10 12:30 | 2018-10-10 17:00 | 4.5h | 64.34d | 0d | TEAM_2Shift_Calendar-1 | Helper; TIGWelder [200%] | 9h | 225 | 225 |
| 562 | 3.7.2.7 | CLEANING | 3h | 2018-10-10 17:00 | 2018-10-10 20:00 | 561 | 2018-10-10 17:00 | 2018-10-10 20:00 | 3h | 64.89d |  | TEAM_2Shift_Calendar-1 | Helper | 3h | 150 | 150 |
| 563 | 3.7.3 | **NOZZLE PIPE WELDING** | 5.96d | 2018-10-10 06:15 | 2018-10-12 21:55 |  | 2018-10-10 06:15 | 2018-10-12 21:55 | 5.96d | 4.75d |  | TEAM_2Shift_Calendar-1 |  | 76h | 2,960.42 | 2,960.42 |
| 564 | 3.7.3.1 | LOCATION MARKING | 3h | 2018-10-10 06:15 | 2018-10-10 09:15 | 350, 556FS+1d | 2018-10-10 06:15 | 2018-10-10 09:15 | 3h | 60.75d | 0d | TEAM_2Shift_Calendar-1 | Helper; Fitter [200%] | 6h | 356.25 | 356.25 |
| 565 | 3.7.3.2 | NOZ OPENING | 4.5h | 2018-10-10 09:15 | 2018-10-10 13:45 | 564 | 2018-10-10 09:15 | 2018-10-10 13:45 | 4.5h | 60.75d | 0d | TEAM_2Shift_Calendar-1 | Helper; GasCutter [200%] | 9h | 225 | 225 |
| 566 | 3.7.3.3 | GRINDING | 3h | 2018-10-10 13:45 | 2018-10-10 16:45 | 565 | 2018-10-10 13:45 | 2018-10-10 16:45 | 3h | 61.17d | 0d | TEAM_2Shift_Calendar-1 | Grinder [200%] | 6h | 337.5 | 337.5 |
| 567 | 3.7.3.4 | NOZ WITH SHELL FIT UP | 17.67h | 2018-10-10 16:45 | 2018-10-12 10:25 | 566 | 2018-10-10 16:45 | 2018-10-12 10:25 | 17.67h | 60.42d | 0d | TEAM_2Shift_Calendar-1 | Helper [200%]; Fitter; TIGWelder | 32h | 1,266.67 | 1,266.67 |
| 568 | 3.7.3.5 | WELDING | 7.5h | 2018-10-12 10:25 | 2018-10-12 17:55 | 567 | 2018-10-12 10:25 | 2018-10-12 17:55 | 7.5h | 60.42d | 0d | TEAM_2Shift_Calendar-1 | Helper; TIGWelder [200%] | 15h | 375 | 375 |
| 569 | 3.7.3.6 | CLEANING | 4h | 2018-10-12 17:55 | 2018-10-12 21:55 | 568 | 2018-10-12 17:55 | 2018-10-12 21:55 | 4h | 60.65d |  | TEAM_2Shift_Calendar-1 | Helper [200%] | 8h | 400 | 400 |
| 570 | 3.7.4 | **NOZZLE HBN WELDING** | 17.69d | 2018-09-25 10:00 | 2018-10-06 07:30 |  | 2018-09-25 10:00 | 2018-10-06 07:30 | 17.69d | 16.75d |  | TEAM_2Shift_Calendar-1 |  | 250h | 9,625 | 9,625 |
| 571 | 3.7.4.1 | LOCATION MARKING | 15h | 2018-09-25 10:00 | 2018-09-26 09:00 | 361, 412, 517FS-7d | 2018-09-25 10:00 | 2018-09-26 09:00 | 15h | 72.66d | 0d | TEAM_2Shift_Calendar-1 | Helper; Fitter [200%] | 30h | 1,781.25 | 1,781.25 |
| 572 | 3.7.4.2 | NOZ OPENING | 22.5h | 2018-09-26 09:00 | 2018-09-27 15:30 | 571 | 2018-09-26 09:00 | 2018-09-27 15:30 | 22.5h | 72.66d | 0d | TEAM_2Shift_Calendar-1 | Helper; GasCutter [200%] | 45h | 1,125 | 1,125 |
| 573 | 3.7.4.3 | GRINDING/EP | 20h | 2018-09-27 15:30 | 2018-09-28 19:30 | 572 | 2018-09-27 15:30 | 2018-09-28 19:30 | 20h | 72.95d | 0d | TEAM_2Shift_Calendar-1 | Grinder [200%] | 40h | 2,250 | 2,250 |
| 574 | 3.7.4.4 | NOZ WITH SH & DISH FIT UP | 31h | 2018-09-28 19:30 | 2018-10-04 09:30 | 573 | 2018-09-28 19:30 | 2018-10-04 09:30 | 31h | 72.33d | 0d | TEAM_2Shift_Calendar-1 | Helper [200%]; Fitter [200%]; TIGWelder | 75h | 2,968.75 | 2,968.75 |
| 575 | 3.7.4.5 | WELDING | 30h | 2018-10-04 09:30 | 2018-10-06 07:30 | 574 | 2018-10-04 09:30 | 2018-10-06 07:30 | 30h | 72.33d |  | TEAM_2Shift_Calendar-1 | Helper; TIGWelder [200%] | 60h | 1,500 | 1,500 |

Notes:
- 555: 2NOS-12T
- 563: 4NOS
- 570: 43NOS

| ID | WBS | Task | Duration | Start | Finish | Predecessors | Baseline start | Baseline finish | Baseline duration | Total slack | Free slack | Calendar | Resources | Work | Cost | Baseline cost |
| --- | --- | --- | --- | --- | --- | --- | --- | --- | --- | --- | --- | --- | --- | --- | --- | --- |
| 576 | 3.7.5 | **NOZZLE HBN/PIPE WELDING** | 9.96d | 2018-09-26 17:00 | 2018-10-03 16:40 |  | 2018-09-26 17:00 | 2018-10-03 16:40 | 9.96d | 21.6d |  | TEAM_2Shift_Calendar-1 |  | 132h | 4,654.17 | 4,654.17 |
| 577 | 3.7.5.1 | LOCATION MARKING | 6h | 2018-09-26 17:00 | 2018-09-27 07:00 | 378, 571FS+1d | 2018-09-26 17:00 | 2018-09-27 07:00 | 6h | 77.18d | 0d | TEAM_2Shift_Calendar-1 | Helper; Fitter [200%] | 12h | 712.5 | 712.5 |
| 578 | 3.7.5.2 | NOZ OPENING | 6h | 2018-09-27 07:00 | 2018-09-27 13:00 | 577 | 2018-09-27 07:00 | 2018-09-27 13:00 | 6h | 77.18d | 0d | TEAM_2Shift_Calendar-1 | Helper; GasCutter [200%] | 12h | 300 | 300 |
| 579 | 3.7.5.3 | GRINDING/EP | 2h | 2018-09-27 13:00 | 2018-09-27 15:00 | 578 | 2018-09-27 13:00 | 2018-09-27 15:00 | 2h | 77.68d | 0d | TEAM_2Shift_Calendar-1 | Grinder [200%] | 4h | 225 | 225 |
| 580 | 3.7.5.4 | NOZ WITH SHEL FIT UP | 26.83h | 2018-09-27 15:00 | 2018-10-01 08:40 | 579 | 2018-09-27 15:00 | 2018-10-01 08:40 | 26.83h | 76.93d | 0d | TEAM_2Shift_Calendar-1 | Helper [200%]; Fitter; TIGWelder | 56h | 2,216.67 | 2,216.67 |
| 581 | 3.7.5.5 | WELDING | 24h | 2018-10-01 08:40 | 2018-10-03 16:40 | 580 | 2018-10-01 08:40 | 2018-10-03 16:40 | 24h | 76.93d |  | TEAM_2Shift_Calendar-1 | Helper; TIGWelder [200%] | 48h | 1,200 | 1,200 |
| 582 | 3.8 | **SHELL AND DISH CS WELDING** | 26.06d | 2018-09-25 10:00 | 2018-10-11 10:30 |  | 2018-09-25 10:00 | 2018-10-11 10:30 | 26.06d | 8.38d | 8.25d | TEAM_2Shift_Calendar-1 |  | 368h | 13,759.38 | 13,759.38 |
| 583 | 3.8.1 | SHELL DISH END+SHELL READY | 0.25d | 2018-09-25 10:00 | 2018-09-25 12:00 | 412, 444 | 2018-09-25 10:00 | 2018-09-25 12:00 | 0.25d | 64.33d | 0d | TEAM_2Shift_Calendar-1 | Fitter [200%] | 4h | 275 | 275 |
| 584 | 3.8.2 | SHELL EP CORRECTION | 2d | 2018-09-25 12:00 | 2018-09-26 12:00 | 583 | 2018-09-25 12:00 | 2018-09-26 12:00 | 2d | 64.33d | 0d | TEAM_2Shift_Calendar-1 | Grinder [200%] | 32h | 1,800 | 1,800 |
| 585 | 3.8.3 | CS-FITUP | 1d | 2018-09-26 12:00 | 2018-09-26 20:00 | 584 | 2018-09-26 12:00 | 2018-09-26 20:00 | 1d | 64.33d | 0d | TEAM_2Shift_Calendar-1 | Helper; Fitter [200%] | 16h | 950 | 950 |
| 586 | 3.8.4 | CS-FITUP INSPECTION | 1d | 2018-09-26 20:00 | 2018-09-27 12:00 | 585 | 2018-09-26 20:00 | 2018-09-27 12:00 | 1d | 64.33d | 0d | TEAM_2Shift_Calendar-1 | Fitter | 8h | 550 | 550 |
| 587 | 3.8.5 | CS-ROOT WELD | 1.69d | 2018-09-27 12:00 | 2018-09-28 17:00 | 586 | 2018-09-27 12:00 | 2018-09-28 17:00 | 1.69d | 64.33d | 0d | TEAM_2Shift_Calendar-1 | Helper [200%]; TIGWelder | 24h | 600 | 600 |
| 588 | 3.8.6 | CS -VISUAL INSPECTION | 5h | 2018-09-28 17:00 | 2018-09-29 14:00 | 587 | 2018-09-28 17:00 | 2018-09-29 14:00 | 5h | 64.2d | 0d | TEAM_2Shift_Calendar-1 | TIGWelder | 5h |  |  |
| 589 | 3.8.7 | CS-WELDING | 6.25d | 2018-09-29 14:00 | 2018-10-04 16:00 | 588 | 2018-09-29 14:00 | 2018-10-04 16:00 | 6.25d | 64.2d | 0d | TEAM_2Shift_Calendar-1 | Helper; TIGWelder [200%] | 100h | 2,500 | 2,500 |
| 590 | 3.8.8 | CS- FLUSH GRIND | 2.19d | 2018-10-04 16:00 | 2018-10-05 17:30 | 589 | 2018-10-04 16:00 | 2018-10-05 17:30 | 2.19d | 64.2d | 0d | TEAM_2Shift_Calendar-1 | Helper; Grinder [200%] | 35h | 1,859.38 | 1,859.38 |
| 591 | 3.8.9 | CS-DPCHECK | 5h | 2018-10-05 17:30 | 2018-10-06 06:30 | 590 | 2018-10-05 17:30 | 2018-10-06 06:30 | 5h | 64.2d | 0d | TEAM_2Shift_Calendar-1 | Fitter [200%] | 10h | 687.5 | 687.5 |
| 592 | 3.8.10 | CS INSIDE WELDING | 6.38d | 2018-10-06 06:30 | 2018-10-10 09:30 | 591 | 2018-10-06 06:30 | 2018-10-10 09:30 | 6.38d | 64.08d | 0d | TEAM_2Shift_Calendar-1 | Helper; TIGWelder [200%] | 100h | 2,500 | 2,500 |
| 593 | 3.8.11 | CS-FLUSH GRIND | 1.5d | 2018-10-10 09:30 | 2018-10-10 21:30 | 592 | 2018-10-10 09:30 | 2018-10-10 21:30 | 1.5d | 64.08d | 0d | TEAM_2Shift_Calendar-1 | Grinder [200%] | 24h | 1,350 | 1,350 |
| 594 | 3.8.12 | CS-DP CHECK | 5h | 2018-10-10 21:30 | 2018-10-11 10:30 | 593 | 2018-10-10 21:30 | 2018-10-11 10:30 | 5h | 64.08d |  | TEAM_2Shift_Calendar-1 | Fitter [200%] | 10h | 687.5 | 687.5 |
| 595 | 3.9 | **SADDLE & L.L ASSY** | 18.69d | 2018-10-01 20:40 | 2018-10-15 10:10 |  | 2018-10-01 20:40 | 2018-10-15 10:10 | 18.69d | 14.87d |  | TEAM_2Shift_Calendar-1 |  | 201h | 6,089.58 | 6,089.58 |
| 596 | 3.9.1 | SADDLE PAD FITUP | 1.58d | 2018-10-01 20:40 | 2018-10-04 08:50 | 398, 517 | 2018-10-01 20:40 | 2018-10-04 08:50 | 1.58d | 70.7d | 0d | TEAM_2Shift_Calendar-1 | Helper [200%]; Fitter; TIGWelder | 25h | 989.58 | 989.58 |
| 597 | 3.9.2 | WELDING | 5.5d | 2018-10-04 08:50 | 2018-10-09 13:50 | 596 | 2018-10-04 08:50 | 2018-10-09 13:50 | 5.5d | 70.7d | 0d | TEAM_2Shift_Calendar-1 | Helper [200%]; TIGWelder | 72h | 1,800 | 1,800 |
| 598 | 3.9.3 | SADDLE FITUP | 0.88d | 2018-10-09 13:50 | 2018-10-10 10:10 | 597 | 2018-10-09 13:50 | 2018-10-10 10:10 | 0.88d | 70.7d | 0d | TEAM_2Shift_Calendar-1 | Helper [200%]; Fitter; TIGWelder | 16h | 633.33 | 633.33 |
| 599 | 3.9.4 | WELDING | 3.71d | 2018-10-10 10:10 | 2018-10-15 10:10 | 598 | 2018-10-10 10:10 | 2018-10-15 10:10 | 3.71d | 70.7d |  | TEAM_2Shift_Calendar-1 | Helper [200%]; TIGWelder | 48h | 1,200 | 1,200 |
| 600 | 3.9.5 | L.L FITUP | 0.67d | 2018-10-01 20:40 | 2018-10-03 11:10 | 398, 517 | 2018-10-01 20:40 | 2018-10-03 11:10 | 0.67d | 84.7d | 0d | TEAM_2Shift_Calendar-1 | Helper [200%]; Fitter; TIGWelder | 8h | 316.67 | 316.67 |
| 601 | 3.9.6 | WELDING | 1.62d | 2018-10-03 11:10 | 2018-10-04 16:10 | 600 | 2018-10-03 11:10 | 2018-10-04 16:10 | 1.62d | 84.7d | 0d | TEAM_2Shift_Calendar-1 | Helper [200%]; TIGWelder | 24h | 600 | 600 |
| 602 | 3.9.7 | INSPECTION | 0.5d | 2018-10-04 16:10 | 2018-10-04 20:10 | 601 | 2018-10-04 16:10 | 2018-10-04 20:10 | 0.5d | 85.45d |  | TEAM_2Shift_Calendar-1 | Fitter [200%] | 8h | 550 | 550 |

Notes:
- 576: 16NOS
- 587: 0.20Kg/m
- 589: 0.64Kg/m
- 592: 0.64Kg/m

| ID | WBS | Task | Duration | Start | Finish | Predecessors | Baseline start | Baseline finish | Baseline duration | Total slack | Free slack | Calendar | Resources | Work | Cost | Baseline cost |
| --- | --- | --- | --- | --- | --- | --- | --- | --- | --- | --- | --- | --- | --- | --- | --- | --- |
| 603 | 3.10 | **HYDRO TEST** | 5.33d | 2018-10-17 12:30 | 2018-10-22 07:07 |  | 2018-10-17 12:30 | 2018-10-22 07:07 | 5.33d | 0d |  | TEAM_2Shift_Calendar-1 |  | 89h | 4,959.38 | 4,959.38 |
| 604 | 3.10.1 | NDE CLEARANCE | 1d | 2018-10-17 12:30 | 2018-10-19 12:30 | 548, 582 | 2018-10-17 12:30 | 2018-10-19 12:30 | 1d | 55.83d | 0d | TEAM_2Shift_Calendar-1 | QC Engineer; TPI (Cost) [0.1%] | 8h |  |  |
| 605 | 3.10.2 | PNUEMATIC TEST | 0.62d | 2018-10-19 12:30 | 2018-10-19 17:30 | 604 | 2018-10-19 12:30 | 2018-10-19 17:30 | 0.62d | 55.83d | 0d | TEAM_2Shift_Calendar-1 | Helper [200%]; Fitter [200%] | 20h | 1,187.5 | 1,187.5 |
| 606 | 3.10.3 | TPI WITNESS | 1d | 2018-10-19 17:30 | 2018-10-20 09:30 | 605 | 2018-10-19 17:30 | 2018-10-20 09:30 | 1d | 55.83d | 0d | TEAM_2Shift_Calendar-1 | Fitter | 8h | 550 | 550 |
| 607 | 3.10.4 | HYDRO TEST | 0.7d | 2018-10-20 09:30 | 2018-10-20 15:07 | 606 | 2018-10-20 09:30 | 2018-10-20 15:07 | 0.7d | 55.83d | 0d | TEAM_2Shift_Calendar-1 | Helper [500%]; Fitter [400%] | 45h | 2,671.88 | 2,671.88 |
| 608 | 3.10.5 | TPI WITNESS | 1d | 2018-10-20 15:07 | 2018-10-22 07:07 | 607 | 2018-10-20 15:07 | 2018-10-22 07:07 | 1d | 55.83d |  | TEAM_2Shift_Calendar-1 | Fitter | 8h | 550 | 550 |
| 609 | 3.11 | **ACID CLEANING AND PICKLING** | 5.25d | 2018-10-22 07:07 | 2018-10-24 17:07 |  | 2018-10-22 07:07 | 2018-10-24 17:07 | 5.25d | 0d |  | TEAM_2Shift_Calendar-1 |  | 84h | 4,800 | 4,800 |
| 610 | 3.11.1 | PREPARATION FOR ACID CLEANING | 1d | 2018-10-22 07:07 | 2018-10-22 15:07 | 603 | 2018-10-22 07:07 | 2018-10-22 15:07 | 1d | 55.83d | 0d | TEAM_2Shift_Calendar-1 | Helper [200%]; Fitter [200%] | 32h | 1,900 | 1,900 |
| 611 | 3.11.2 | ACID CLEANING AND PICKLING | 2d | 2018-10-22 15:07 | 2018-10-23 15:07 | 610 | 2018-10-22 15:07 | 2018-10-23 15:07 | 2d | 55.83d | 0d | TEAM_2Shift_Calendar-1 | Helper [200%] | 32h | 1,600 | 1,600 |
| 612 | 3.11.3 | TPI WITNESS | 1d | 2018-10-23 15:07 | 2018-10-24 07:07 | 611 | 2018-10-23 15:07 | 2018-10-24 07:07 | 1d | 55.83d | 0d | TEAM_2Shift_Calendar-1 | Fitter | 8h | 550 | 550 |
| 613 | 3.11.4 | DESPATCH CLEARANCE | 1d | 2018-10-24 07:07 | 2018-10-24 15:07 | 612 | 2018-10-24 07:07 | 2018-10-24 15:07 | 1d | 55.83d | 0d | TEAM_2Shift_Calendar-1 | Fitter [50%] | 4h | 275 | 275 |
| 614 | 3.11.5 | DESPATCH | 0.25d | 2018-10-24 15:07 | 2018-10-24 17:07 | 613 | 2018-10-24 15:07 | 2018-10-24 17:07 | 0.25d | 55.83d |  | TEAM_2Shift_Calendar-1 | Helper [200%]; Fitter [200%] | 8h | 475 | 475 |

Notes:
- 604: SC
- 611: SC
