# 4192-VC

Schedule from MS Project, 2018-07-02 to 2019-06-29, 16 hours a day, costs in ₹.

## Calendars

- Standard: Mon-Fri 08:00-12:00, 13:00-17:00; Sat-Sun off.

## Resources

| Resource | Rate |
| --- | --- |
| Fitter | 68.75 |
| Grinder | 56.25 |
| SMAW Welder | 68.75 |
| Helper | 50 |
| Gas Cutter | 68.75 |
| Milling Operator | 120 |
| Driller | 68.75 |
| Forging Non-Std (Cost) |  |
| Forging Std (Cost) |  |
| Pipe (Cost) |  |
| Plate (Cost) |  |
| Rod (Cost) |  |
| Tube (Cost) |  |
| Tube Sheet (Cost) |  |
| Store |  |

## Schedule

| ID | WBS | Task | Duration | Start | Finish | Predecessors | Baseline start | Baseline finish | Baseline duration | Total slack | Free slack | Resources | Work | Cost | Baseline cost |
| --- | --- | --- | --- | --- | --- | --- | --- | --- | --- | --- | --- | --- | --- | --- | --- |
| 1 | 1 | **RECEIPT OF MATERIALS** | 2d | 2018-07-02 | 2018-07-05 |  | 2018-04-02 | 2018-04-05 | 2d | 114.5d |  |  |  |  |  |
| 2 | 1.1 | PLATE FOR DISH END+SH | 2d | 2018-07-02 | 2018-07-05 |  | 2018-04-02 | 2018-04-05 | 2d | 114.5d | 0d |  |  |  |  |
| 3 | 1.2 | NOZZLE ROD | 2d | 2018-07-02 | 2018-07-05 |  | 2018-04-02 | 2018-04-05 | 2d | 128d |  |  |  |  |  |
| 4 | 1.3 | NOZZLE PIPE | 2d | 2018-07-02 | 2018-07-05 |  | 2018-04-02 | 2018-04-05 | 2d | 121.69d | 0d |  |  |  |  |
| 5 | 1.4 | FILLER WIRE | 2d | 2018-07-02 | 2018-07-05 |  | 2018-04-02 | 2018-04-05 | 2d | 128d |  |  |  |  |  |
| 6 | 1.5 | SADDLE | 2d | 2018-07-02 | 2018-07-05 |  | 2018-04-02 | 2018-04-05 | 2d | 128d |  |  |  |  |  |
| 7 | 2 | **NOZZLE HBN FABRICATION** | 5d | 2018-07-05 | 2018-07-19 |  | 2018-04-05 | 2018-04-19 | 5d | 121.69d | 0.5d |  | 1400h | 105,000 | 105,000 |
| 8 | 2.1 | PIPE MARKING | 2h | 2018-07-05 | 2018-07-06 | 4 | 2018-04-05 | 2018-04-06 | 2h | 121.69d | 0d | Fitter; Helper | 100h | 5,937.5 | 5,937.5 |
| 9 | 2.2 | STAMPING | 1h | 2018-07-06 | 2018-07-09 | 8SS+8h | 2018-04-06 | 2018-04-09 | 1h | 123d | 0d | Fitter | 25h | 1,718.75 | 1,718.75 |
| 10 | 2.3 | CUTTING | 2h | 2018-07-09 | 2018-07-10 | 9SS+8h | 2018-04-09 | 2018-04-10 | 2h | 123d | 0d | Gas Cutter; Helper | 100h | 5,937.5 | 5,937.5 |
| 11 | 2.4 | MACHINING | 16h | 2018-07-10 | 2018-07-12 | 10SS+8h | 2018-04-10 | 2018-04-12 | 16h | 123d | 0d | Milling Operator | 250h | 30,000 | 30,000 |
| 12 | 2.5 | NOZZLE CAP FIT UP | 3h | 2018-07-11 | 2018-07-12 | 11SS+8h | 2018-04-11 | 2018-04-12 | 3h | 123d | 0d | Fitter; SMAW Welder; Helper [200%] | 300h | 17,812.5 | 17,812.5 |
| 13 | 2.6 | WELDING | 4h | 2018-07-12 | 2018-07-13 | 12SS+8h | 2018-04-12 | 2018-04-13 | 4h | 123d | 0d | SMAW Welder; Helper [200%] | 300h | 16,875 | 16,875 |
| 14 | 2.7 | FLUSH GRIND | 2h | 2018-07-13 | 2018-07-16 | 13SS+8h | 2018-04-13 | 2018-04-16 | 2h | 123d | 0d | Grinder | 50h | 2,812.5 | 2,812.5 |
| 15 | 2.8 | DP CHECK | 3h | 2018-07-16 | 2018-07-17 | 14SS+8h | 2018-04-16 | 2018-04-17 | 3h | 123d | 0d | Fitter; Helper | 150h | 8,906.25 | 8,906.25 |
| 16 | 2.9 | RT | 1d | 2018-07-18 | 2018-07-19 | 15SS+8h | 2018-04-18 | 2018-04-19 | 1d | 123d | 0d |  |  |  |  |
| 17 | 2.10 | MACHINING-FILLET | 5h | 2018-07-18 | 2018-07-19 | 16SS+8h | 2018-04-18 | 2018-04-19 | 5h | 123.19d |  | Milling Operator | 125h | 15,000 | 15,000 |
| 18 | 3 | **PIPE & RING FORMING** | 5.5d | 2018-07-06 | 2018-07-24 |  | 2018-04-06 | 2018-04-24 | 5.5d | 121.69d |  |  | 650h | 46,062.5 | 46,062.5 |
| 19 | 3.1 | MARKING | 25h | 2018-07-06 | 2018-07-09 | 8SS+8h | 2018-04-06 | 2018-04-09 | 25h | 121.69d | 0d | Fitter; Helper | 50h | 2,968.75 | 2,968.75 |
| 20 | 3.2 | CUTTING | 25h | 2018-07-09 | 2018-07-11 | 19SS+8h | 2018-04-09 | 2018-04-11 | 25h | 121.38d | 0d | Gas Cutter; Helper | 50h | 2,968.75 | 2,968.75 |
| 21 | 3.3 | BENDING | 25h | 2018-07-10 | 2018-07-12 | 20SS+8h | 2018-04-10 | 2018-04-12 | 25h | 123.25d | 0d | Fitter; Helper | 50h | 2,968.75 | 2,968.75 |
| 22 | 3.4 | END M/C | 100h | 2018-07-11 | 2018-07-19 | 21SS+8h | 2018-04-11 | 2018-04-19 | 100h | 123d |  | Milling Operator | 100h | 12,000 | 12,000 |
| 23 | 3.5 | RING FORMING | 125h | 2018-07-10 | 2018-07-20 | 20SS+8h | 2018-04-10 | 2018-04-20 | 125h | 121.69d | 0d | Fitter; Helper | 250h | 14,843.75 | 14,843.75 |
| 24 | 3.6 | HOLE DRILLING | 150h | 2018-07-11 | 2018-07-24 | 23SS+8h | 2018-04-11 | 2018-04-24 | 150h | 121.69d |  | Driller | 150h | 10,312.5 | 10,312.5 |

Notes:
- 7: 40NOS
- 16: SC
- 18: 20NOS
- 21: 2NOS
- 23: SPACER RING

| ID | WBS | Task | Duration | Start | Finish | Predecessors | Baseline start | Baseline finish | Baseline duration | Total slack | Free slack | Resources | Work | Cost | Baseline cost | Text1 |
| --- | --- | --- | --- | --- | --- | --- | --- | --- | --- | --- | --- | --- | --- | --- | --- | --- |
| 25 | 4 | **LIFTING LUG FAB** | 1.56d | 2018-07-05 | 2018-07-11 |  | 2018-04-05 | 2018-04-11 | 1.56d | 125.78d | 0.5d |  | 375h | 22,031.25 | 22,031.25 |  |
| 26 | 4.1 | PLATE MARKING | 2h | 2018-07-05 | 2018-07-06 | 2 | 2018-04-05 | 2018-04-06 | 2h | 125.78d | 0d | Fitter; Helper | 100h | 5,937.5 | 5,937.5 |  |
| 27 | 4.2 | CUTTING | 2h | 2018-07-06 | 2018-07-09 | 26SS+8h | 2018-04-06 | 2018-04-09 | 2h | 126.44d | 0d | Gas Cutter; Helper | 100h | 5,937.5 | 5,937.5 |  |
| 28 | 4.3 | GRINDING | 3h | 2018-07-09 | 2018-07-10 | 27SS+8h | 2018-04-09 | 2018-04-10 | 3h | 126.44d | 0d | Grinder [200%] | 150h | 8,437.5 | 8,437.5 |  |
| 29 | 4.4 | DRILLING | 1h | 2018-07-10 | 2018-07-11 | 28SS+8h | 2018-04-10 | 2018-04-11 | 1h | 126.44d |  | Driller | 25h | 1,718.75 | 1,718.75 |  |
| 30 | 5 | **LUG SUPPORT FAB** | 1.72d | 2018-07-06 | 2018-07-12 |  | 2018-04-06 | 2018-04-12 | 1.72d | 125.78d | 2.5d |  | 500h | 29,375 | 29,375 |  |
| 31 | 5.1 | PLATE MARKING | 3h | 2018-07-06 | 2018-07-09 | 26SS+8h | 2018-04-06 | 2018-04-09 | 3h | 125.78d | 0d | Fitter; Helper | 150h | 8,906.25 | 8,906.25 |  |
| 32 | 5.2 | CUTTING | 3h | 2018-07-09 | 2018-07-10 | 31SS+8h | 2018-04-09 | 2018-04-10 | 3h | 125.78d | 0d | Gas Cutter; Helper | 150h | 8,906.25 | 8,906.25 |  |
| 33 | 5.3 | GRINDING | 11.5h | 2018-07-10 | 2018-07-12 | 32SS+8h | 2018-04-10 | 2018-04-12 | 11.5h | 125.78d | 0d | Grinder [200%] | 175h | 9,843.75 | 9,843.75 |  |
| 34 | 5.4 | DRILLING | 1h | 2018-07-11 | 2018-07-12 | 33SS+8h | 2018-04-11 | 2018-04-12 | 1h | 125.94d |  | Driller | 25h | 1,718.75 | 1,718.75 |  |
| 35 | 6 | **DISH FORMING-1/2** | 13.5d | 2018-07-05 | 2018-08-13 |  | 2018-04-05 | 2018-05-14 | 13.5d | 114.5d | 0d |  | 1050h | 62,265.62 | 62,265.62 |  |
| 36 | 6.1 | MATERIAL MARKING | 1h | 2018-07-05 | 2018-07-06 | 2 | 2018-04-05 | 2018-04-06 | 1h | 114.5d | 0d | Fitter; Helper | 50h | 2,968.75 | 2,968.75 | 3.38 days |
| 37 | 6.2 | MATERIAL STAMPING | 0.5h | 2018-07-06 | 2018-07-09 | 36SS+8h | 2018-04-06 | 2018-04-09 | 0.5h | 114.5d | 0d | Fitter | 12.5h | 859.38 | 859.38 | 1.06 days |
| 38 | 6.3 | DISH PL CUTTING | 1h | 2018-07-09 | 2018-07-10 | 37SS+8h | 2018-04-09 | 2018-04-10 | 1h | 114.5d | 0d | Gas Cutter; Helper | 50h | 2,968.75 | 2,968.75 | 1.06 days |
| 39 | 6.4 | GRINDING/EP | 1.5h | 2018-07-10 | 2018-07-11 | 38SS+8h | 2018-04-10 | 2018-04-11 | 1.5h | 114.5d | 0d | Grinder | 37.5h | 2,109.38 | 2,109.38 | 3.38 days |
| 40 | 6.5 | DP CHECK | 0.5h | 2018-07-11 | 2018-07-12 | 39SS+8h | 2018-04-11 | 2018-04-12 | 0.5h | 114.5d | 0d | Fitter; Helper | 25h | 1,484.38 | 1,484.38 | 1.06 days |
| 41 | 6.6 | PL FITUP | 1h | 2018-07-12 | 2018-07-13 | 40SS+8h | 2018-04-12 | 2018-04-13 | 1h | 114.5d | 0d | Fitter; SMAW Welder; Helper | 75h | 4,687.5 | 4,687.5 | 1.06 days |
| 42 | 6.7 | ROOT WELDING | 1.5h | 2018-07-13 | 2018-07-16 | 41SS+8h | 2018-04-13 | 2018-04-16 | 1.5h | 114.5d | 0d | SMAW Welder; Helper | 75h | 4,453.12 | 4,453.12 | 1.06 days |
| 43 | 6.8 | DP CHECK | 0.5h | 2018-07-16 | 2018-07-17 | 42SS+8h | 2018-04-16 | 2018-04-17 | 0.5h | 114.5d | 0d | Fitter; Helper | 25h | 1,484.38 | 1,484.38 | 0.56 days |
| 44 | 6.9 | FINAL WELDING ONSIDE | 11h | 2018-07-17 | 2018-07-19 | 43SS+8h | 2018-04-17 | 2018-04-19 | 11h | 114.5d | 0d | SMAW Welder; Helper | 150h | 8,906.25 | 8,906.25 | 1.16 days |
| 45 | 6.10 | BACKCHIP GRINDING | 0.5h | 2018-07-18 | 2018-07-19 | 44SS+8h | 2018-04-18 | 2018-04-19 | 0.5h | 114.5d | 0d | Grinder | 12.5h | 703.12 | 703.12 | 2.31 days |
| 46 | 6.11 | FINAL WELDING ON BACKCHIP SIDE | 2.5h | 2018-07-19 | 2018-07-20 | 45SS+8h | 2018-04-19 | 2018-04-20 | 2.5h | 114.5d | 0d | SMAW Welder; Helper | 125h | 7,421.88 | 7,421.88 | 1.16 days |
| 47 | 6.12 | DP TEST | 0.5h | 2018-07-20 | 2018-07-23 | 46SS+8h | 2018-04-20 | 2018-04-23 | 0.5h | 114.5d | 0d | Fitter; Helper | 25h | 1,484.38 | 1,484.38 | 2.31 days |
| 48 | 6.13 | RT | 1d | 2018-07-24 | 2018-07-25 | 47SS+8h | 2018-04-24 | 2018-04-25 | 1d | 114.5d | 0d |  |  |  |  | 1.06 days |
| 49 | 6.14 | DISH FORMING | 7d | 2018-07-25 | 2018-08-13 | 48SS+8h | 2018-04-25 | 2018-05-14 | 7d | 114.5d | 0d |  |  |  |  | 13 days |
| 50 | 6.15 | ANNEALING | 3d | 2018-07-26 | 2018-08-02 | 49SS+8h | 2018-04-26 | 2018-05-03 | 3d | 118d | 0d |  |  |  |  | 6 days |
| 51 | 6.16 | INWARD INSPECTION | 1h | 2018-07-26 | 2018-07-27 | 50SS+8h | 2018-04-26 | 2018-04-27 | 1h | 118.44d | 0d | Fitter | 25h | 1,718.75 | 1,718.75 | 1 day |
| 52 | 6.17 | INSIDE POLISHING | 4h | 2018-07-27 | 2018-07-30 | 51SS+8h | 2018-04-27 | 2018-04-30 | 4h | 119.25d | 0d | Grinder | 100h | 5,625 | 5,625 | 3.47 days |
| 53 | 6.18 | OUTSIDE POLISHING | 4h | 2018-07-30 | 2018-07-31 | 52SS+8h | 2018-04-30 | 2018-05-01 | 4h | 119.25d |  | Grinder | 100h | 5,625 | 5,625 | 3.47 days |
| 54 | 6.19 | SF MARKING | 1h | 2018-07-27 | 2018-07-30 | 51SS+8h | 2018-04-27 | 2018-04-30 | 1h | 118.44d | 0d | Fitter; Helper | 50h | 2,968.75 | 2,968.75 | 0.5 days |
| 55 | 6.20 | CUTTING(HEIGHT) | 9h | 2018-07-30 | 2018-08-01 | 54SS+8h | 2018-04-30 | 2018-05-02 | 9h | 118.44d | 0d | Gas Cutter; Helper | 50h | 2,968.75 | 2,968.75 | 1 day |
| 56 | 6.21 | GRINDING | 1.5h | 2018-07-31 | 2018-08-01 | 55SS+8h | 2018-05-02 | 2018-05-02 | 1.5h | 118.44d | 0d | Grinder | 37.5h | 2,109.38 | 2,109.38 | 1 day |
| 57 | 6.22 | INSPECTION | 1h | 2018-08-01 | 2018-08-02 | 56SS+8h | 2018-05-02 | 2018-05-03 | 1h | 118.44d |  | Fitter | 25h | 1,718.75 | 1,718.75 | 1 day |

Notes:
- 25: 8NOS
- 30: 8NOS
- 35: ID1900*8T/6T
- 36: 2 PLATES/DISH
- 37: WELD LENGTH-2.3m
- 42: 0.14Kg/m
- 44: 0.46Kg/m

| ID | WBS | Task | Duration | Start | Finish | Predecessors | Baseline start | Baseline finish | Baseline duration | Total slack | Free slack | Resources | Work | Cost | Baseline cost | Text1 |
| --- | --- | --- | --- | --- | --- | --- | --- | --- | --- | --- | --- | --- | --- | --- | --- | --- |
| 58 | 7 | **DISH FORMING-2/2** | 13.5d | 2018-07-05 | 2018-08-13 |  | 2018-04-05 | 2018-05-14 | 13.5d | 114.5d |  |  | 1050h | 62,265.62 | 62,265.62 |  |
| 59 | 7.1 | MATERIAL MARKING | 1h | 2018-07-05 | 2018-07-06 | 2 | 2018-04-05 | 2018-04-06 | 1h | 114.5d | 0d | Fitter; Helper | 50h | 2,968.75 | 2,968.75 | 3.38 days |
| 60 | 7.2 | MATERIAL STAMPING | 0.5h | 2018-07-06 | 2018-07-09 | 59SS+8h | 2018-04-06 | 2018-04-09 | 0.5h | 114.5d | 0d | Fitter | 12.5h | 859.38 | 859.38 | 1.06 days |
| 61 | 7.3 | DISH PL CUTTING | 1h | 2018-07-09 | 2018-07-10 | 60SS+8h | 2018-04-09 | 2018-04-10 | 1h | 114.5d | 0d | Gas Cutter; Helper | 50h | 2,968.75 | 2,968.75 | 1.06 days |
| 62 | 7.4 | GRINDING/EP | 1.5h | 2018-07-10 | 2018-07-11 | 61SS+8h | 2018-04-10 | 2018-04-11 | 1.5h | 114.5d | 0d | Grinder | 37.5h | 2,109.38 | 2,109.38 | 3.38 days |
| 63 | 7.5 | DP CHECK | 0.5h | 2018-07-11 | 2018-07-12 | 62SS+8h | 2018-04-11 | 2018-04-12 | 0.5h | 114.5d | 0d | Fitter; Helper | 25h | 1,484.38 | 1,484.38 | 1.06 days |
| 64 | 7.6 | PL FITUP | 1h | 2018-07-12 | 2018-07-13 | 63SS+8h | 2018-04-12 | 2018-04-13 | 1h | 114.5d | 0d | Fitter; SMAW Welder; Helper | 75h | 4,687.5 | 4,687.5 | 1.06 days |
| 65 | 7.7 | ROOT WELDING | 1.5h | 2018-07-13 | 2018-07-16 | 64SS+8h | 2018-04-13 | 2018-04-16 | 1.5h | 114.5d | 0d | SMAW Welder; Helper | 75h | 4,453.12 | 4,453.12 | 1.06 days |
| 66 | 7.8 | DP CHECK | 0.5h | 2018-07-16 | 2018-07-17 | 65SS+8h | 2018-04-16 | 2018-04-17 | 0.5h | 114.5d | 0d | Fitter; Helper | 25h | 1,484.38 | 1,484.38 | 0.56 days |
| 67 | 7.9 | FINAL WELDING ONSIDE | 3h | 2018-07-17 | 2018-07-18 | 66SS+8h | 2018-04-17 | 2018-04-18 | 3h | 114.5d | 0d | SMAW Welder; Helper | 150h | 8,906.25 | 8,906.25 | 1.16 days |
| 68 | 7.10 | BACKCHIP GRINDING | 0.5h | 2018-07-18 | 2018-07-19 | 67SS+8h | 2018-04-18 | 2018-04-19 | 0.5h | 114.5d | 0d | Grinder | 12.5h | 703.12 | 703.12 | 2.31 days |
| 69 | 7.11 | FINAL WELDING ON BACKCHIP SIDE | 2.5h | 2018-07-19 | 2018-07-20 | 68SS+8h | 2018-04-19 | 2018-04-20 | 2.5h | 114.5d | 0d | SMAW Welder; Helper | 125h | 7,421.88 | 7,421.88 | 1.16 days |
| 70 | 7.12 | DP TEST | 0.5h | 2018-07-20 | 2018-07-23 | 69SS+8h | 2018-04-20 | 2018-04-23 | 0.5h | 114.5d | 0d | Fitter; Helper | 25h | 1,484.38 | 1,484.38 | 2.31 days |
| 71 | 7.13 | RT | 1d | 2018-07-24 | 2018-07-25 | 70SS+8h | 2018-04-24 | 2018-04-25 | 1d | 114.5d | 0d |  |  |  |  | 1.06 days |
| 72 | 7.14 | DISH FORMING | 7d | 2018-07-25 | 2018-08-13 | 71SS+8h | 2018-04-25 | 2018-05-14 | 7d | 114.5d | 0d |  |  |  |  | 13 days |
| 73 | 7.15 | ANNEALING | 3d | 2018-07-26 | 2018-08-02 | 72SS+8h | 2018-04-26 | 2018-05-03 | 3d | 118d | 0d |  |  |  |  | 6 days |
| 74 | 7.16 | INWARD INSPECTION | 1h | 2018-07-26 | 2018-07-27 | 73SS+8h | 2018-04-26 | 2018-04-27 | 1h | 118.44d | 0d | Fitter | 25h | 1,718.75 | 1,718.75 | 1 day |
| 75 | 7.17 | INSIDE POLISHING | 12h | 2018-07-27 | 2018-07-31 | 74SS+8h | 2018-04-27 | 2018-05-01 | 12h | 119.25d | 0d | Grinder | 100h | 5,625 | 5,625 | 3.47 days |
| 76 | 7.18 | OUTSIDE POLISHING | 4h | 2018-07-30 | 2018-07-31 | 75SS+8h | 2018-04-30 | 2018-05-01 | 4h | 119.25d |  | Grinder | 100h | 5,625 | 5,625 | 3.47 days |
| 77 | 7.19 | SF MARKING | 1h | 2018-07-27 | 2018-07-30 | 74SS+8h | 2018-04-27 | 2018-04-30 | 1h | 118.44d | 0d | Fitter; Helper | 50h | 2,968.75 | 2,968.75 | 0.5 days |
| 78 | 7.20 | CUTTING(HEIGHT) | 1h | 2018-07-30 | 2018-07-31 | 77SS+8h | 2018-04-30 | 2018-05-01 | 1h | 118.44d | 0d | Gas Cutter; Helper | 50h | 2,968.75 | 2,968.75 | 1 day |
| 79 | 7.21 | GRINDING | 5.5h | 2018-07-31 | 2018-08-01 | 78SS+8h | 2018-05-02 | 2018-05-02 | 5.5h | 118.44d | 0d | Grinder | 37.5h | 2,109.38 | 2,109.38 | 1 day |
| 80 | 7.22 | INSPECTION | 1h | 2018-08-01 | 2018-08-02 | 79SS+8h | 2018-05-02 | 2018-05-03 | 1h | 118.44d |  | Fitter | 25h | 1,718.75 | 1,718.75 | 1 day |
| 81 | 8 | **SHELL 1- FABRICATION** | 10.5d | 2018-07-02 | 2018-07-31 |  | 2018-04-02 | 2018-05-01 | 10.5d | 119d | 1.5d |  | 1000h | 59,375 | 59,375 |  |
| 82 | 8.1 | SH1-PLATE MARKING | 5h | 2018-07-02 | 2018-07-03 | 2SS+8h | 2018-04-02 | 2018-04-03 | 1h | 119d | 0d | Fitter; Helper | 50h | 2,968.75 | 2,968.75 |  |
| 83 | 8.2 | SH1- STAMPING | 1h | 2018-07-03 | 2018-07-04 | 82SS+8h | 2018-04-03 | 2018-04-04 | 1h | 119d | 0d | Fitter | 25h | 1,718.75 | 1,718.75 |  |
| 84 | 8.3 | SH1-PL CUTTING | 1.5h | 2018-07-04 | 2018-07-05 | 83SS+8h | 2018-04-04 | 2018-04-05 | 1.5h | 119d | 0d | Gas Cutter; Helper | 75h | 4,453.12 | 4,453.12 |  |
| 85 | 8.4 | SH1-EDGE PREPARATION/DP CHECK | 1h | 2018-07-05 | 2018-07-06 | 84SS+8h | 2018-04-05 | 2018-04-06 | 1h | 119d | 0d | Grinder | 25h | 1,406.25 | 1,406.25 |  |
| 86 | 8.5 | SH1-PRE BENDING | 1.5h | 2018-07-06 | 2018-07-09 | 85SS+8h | 2018-04-06 | 2018-04-09 | 1.5h | 119d | 0d | Fitter; Helper | 75h | 4,453.12 | 4,453.12 |  |
| 87 | 8.6 | SH1-PREBEND CUTOFF | 1h | 2018-07-09 | 2018-07-10 | 86SS+8h | 2018-04-09 | 2018-04-10 | 1h | 119d | 0d | Gas Cutter; Helper | 25h | 1,250 | 1,250 |  |
| 88 | 8.7 | SH1-EDGE PREPARTION | 1h | 2018-07-10 | 2018-07-11 | 87SS+8h | 2018-04-10 | 2018-04-11 | 1h | 119d | 0d | Grinder | 25h | 1,406.25 | 1,406.25 |  |
| 89 | 8.8 | SH1-ROLLING | 10h | 2018-07-11 | 2018-07-13 | 88SS+8h | 2018-04-11 | 2018-04-13 | 10h | 119d | 0d | Fitter; Helper [200%] | 150h | 8,437.5 | 8,437.5 |  |
| 90 | 8.9 | SH1-ACID CLEANING | 1h | 2018-07-12 | 2018-07-13 | 89SS+8h | 2018-04-12 | 2018-04-13 | 1h | 119d | 0d | Helper | 25h | 1,250 | 1,250 |  |
| 91 | 8.10 | SH1-FITUP | 1h | 2018-07-13 | 2018-07-16 | 90SS+8h | 2018-04-13 | 2018-04-16 | 1h | 119d | 0d | Fitter; Helper; SMAW Welder | 75h | 4,687.5 | 4,687.5 |  |
| 92 | 8.11 | SH1-SPIDERUP | 1.5h | 2018-07-16 | 2018-07-17 | 91SS+8h | 2018-04-16 | 2018-04-17 | 1.5h | 119d | 0d | Fitter [200%] | 75h | 5,156.25 | 5,156.25 |  |
| 93 | 8.12 | SH1-FITUP INSPECTION | 1h | 2018-07-17 | 2018-07-18 | 92SS+8h | 2018-04-17 | 2018-04-18 | 1h | 119d | 0d | Fitter | 25h | 1,718.75 | 1,718.75 |  |
| 94 | 8.13 | SH1-ROOT WELDING | 0.5h | 2018-07-18 | 2018-07-19 | 93SS+8h | 2018-04-18 | 2018-04-19 | 0.5h | 119d | 0d | SMAW Welder; Helper | 25h | 1,484.38 | 1,484.38 |  |
| 95 | 8.14 | SH1-ROOT WELD VISUAL INSP | 0.5h | 2018-07-19 | 2018-07-20 | 94SS+8h | 2018-04-19 | 2018-04-20 | 0.5h | 119d | 0d | SMAW Welder | 12.5h | 859.38 | 859.38 |  |
| 96 | 8.15 | SH1-DPCHECK | 0.5h | 2018-07-20 | 2018-07-23 | 95SS+8h | 2018-04-20 | 2018-04-23 | 0.5h | 119d | 0d | Fitter | 12.5h | 859.38 | 859.38 |  |
| 97 | 8.16 | SH1-WELDING | 2h | 2018-07-23 | 2018-07-24 | 96SS+8h | 2018-04-23 | 2018-04-24 | 2h | 119d | 0d | SMAW Welder; Helper | 100h | 5,937.5 | 5,937.5 |  |
| 98 | 8.17 | SH1- BACKCHIP GRIND | 1h | 2018-07-24 | 2018-07-25 | 97SS+8h | 2018-04-24 | 2018-04-25 | 1h | 119d | 0d | Grinder | 25h | 1,406.25 | 1,406.25 |  |
| 99 | 8.18 | SH1-REROLLING | 2h | 2018-07-25 | 2018-07-26 | 98SS+8h | 2018-04-25 | 2018-04-26 | 2h | 119d | 0d | Fitter; Helper [200%] | 150h | 8,437.5 | 8,437.5 |  |
| 100 | 8.19 | SH1-DPCHECK | 0.5h | 2018-07-26 | 2018-07-27 | 99SS+8h | 2018-04-26 | 2018-04-27 | 0.5h | 119d | 0d | Fitter; Helper | 25h | 1,484.38 | 1,484.38 |  |
| 101 | 8.20 | SH1-RADIOGRAPHY | 1d | 2018-07-30 | 2018-07-31 | 100SS+8h | 2018-04-30 | 2018-05-01 | 1d | 119d |  |  |  |  |  |  |

Notes:
- 58: ID1900*8T/6T
- 59: 2 PLATES/DISH
- 65: 0.14Kg/m
- 67: 0.46Kg/m
- 81: 1300*6000*6T
- 94: 0.2Kg/m
- 97: 0.46Kg/m
- 101: SC

| ID | WBS | Task | Duration | Start | Finish | Predecessors | Baseline start | Baseline finish | Baseline duration | Total slack | Free slack | Constraint | Resources | Work | Cost | Baseline cost |
| --- | --- | --- | --- | --- | --- | --- | --- | --- | --- | --- | --- | --- | --- | --- | --- | --- |
| 102 | 9 | **CS3 (DISH+SH)-FITUP & WELDING** | 6.5d | 2018-07-09 | 2018-07-25 |  | 2018-04-09 | 2018-04-25 | 6.5d | 121d | 0d |  |  | 950h | 56,796.88 | 56,796.88 |
| 103 | 9.1 | SHELL SH3+SH4 READY | 0.25d | 2018-07-09 | 2018-07-09 | 35SS+8h, 81SS+8h | 2018-04-09 | 2018-04-09 | 0.25d | 121d | 0d |  |  |  |  |  |
| 104 | 9.2 | SHELL EP CORRECTION | 1.5h | 2018-07-09 | 2018-07-10 | 103SS+8h | 2018-04-09 | 2018-04-10 | 1.5h | 121d | 0d |  | Grinder | 37.5h | 2,109.38 | 2,109.38 |
| 105 | 9.3 | CS2-FITUP | 2h | 2018-07-10 | 2018-07-11 | 104SS+8h | 2018-04-10 | 2018-04-11 | 2h | 121d | 0d |  | Fitter; Helper; SMAW Welder | 150h | 9,375 | 9,375 |
| 106 | 9.4 | CS2-FITUP INSPECTION | 1h | 2018-07-11 | 2018-07-12 | 105SS+8h | 2018-04-11 | 2018-04-12 | 1h | 121d | 0d |  | Fitter | 25h | 1,718.75 | 1,718.75 |
| 107 | 9.5 | CS2-ROOT WELDING | 1h | 2018-07-12 | 2018-07-13 | 106SS+8h | 2018-04-12 | 2018-04-13 | 1h | 121d | 0d |  | SMAW Welder; Helper | 50h | 2,968.75 | 2,968.75 |
| 108 | 9.6 | CS2-ROOT WELD VISUAL INSP | 0.5h | 2018-07-13 | 2018-07-16 | 107SS+8h | 2018-04-13 | 2018-04-16 | 0.5h | 121d | 0d |  | SMAW Welder | 12.5h | 859.38 | 859.38 |
| 109 | 9.7 | CS2-DPCHECK | 0.5h | 2018-07-16 | 2018-07-17 | 108SS+8h | 2018-04-16 | 2018-04-17 | 0.5h | 121d | 0d |  | Fitter; Helper | 25h | 1,484.38 | 1,484.38 |
| 110 | 9.8 | CS2-WELDING | 10h | 2018-07-17 | 2018-07-19 | 109SS+8h | 2018-04-17 | 2018-04-19 | 10h | 121d | 0d |  | SMAW Welder; Helper | 500h | 29,687.5 | 29,687.5 |
| 111 | 9.9 | CS2- BACKCHIP GRIND | 2h | 2018-07-18 | 2018-07-19 | 110SS+8h | 2018-04-18 | 2018-04-19 | 2h | 121d | 0d |  | Grinder | 50h | 2,812.5 | 2,812.5 |
| 112 | 9.10 | CS2-DPCHECK | 1h | 2018-07-19 | 2018-07-20 | 111SS+8h | 2018-04-19 | 2018-04-20 | 1h | 121d | 0d |  | Fitter; Helper | 50h | 2,968.75 | 2,968.75 |
| 113 | 9.11 | CS2-DRESSUP | 2h | 2018-07-20 | 2018-07-23 | 112SS+8h | 2018-04-20 | 2018-04-23 | 2h | 121d | 0d |  | Grinder | 50h | 2,812.5 | 2,812.5 |
| 114 | 9.12 | CS2-RT | 1d | 2018-07-24 | 2018-07-25 | 113SS+8h | 2018-04-24 | 2018-04-25 | 1d | 121d |  |  |  |  |  |  |
| 115 | 10 | **NOZZLE HBN WELDING ON DISH** | 127d | 2018-07-09 | 2019-06-28 |  | 2018-04-09 | 2018-05-14 | 12.12d | 0d |  |  |  | 1537.5h | 92,265.62 | 92,265.62 |
| 116 | 10.1 | LOCATION MARKING | 3h | 2018-07-09 | 2018-07-10 | 7SS+8h, 102SS+8h | 2018-04-09 | 2018-04-10 | 3h | 122.12d | 0d |  | Fitter; Helper | 150h | 8,906.25 | 8,906.25 |
| 117 | 10.2 | NOZ OPENING | 4h | 2018-07-10 | 2018-07-11 | 116SS+8h | 2018-04-10 | 2018-04-11 | 4h | 122.12d | 0d |  | Gas Cutter; Helper | 200h | 11,875 | 11,875 |
| 118 | 10.3 | GRINDING/EP | 11.5h | 2018-07-11 | 2018-07-13 | 117SS+8h | 2018-04-11 | 2018-04-13 | 11.5h | 122.12d | 0d |  | Grinder | 87.5h | 4,921.88 | 4,921.88 |
| 119 | 10.4 | HBN WITH DISH FIT UP | 5h | 2018-07-12 | 2018-07-13 | 118SS+8h | 2018-04-12 | 2018-04-13 | 5h | 122.12d |  |  | Fitter; Helper; SMAW Welder | 375h | 23,437.5 | 23,437.5 |
| 120 | 10.5 | FITUP INSPECTION | 8h | 2019-06-21 | 2019-06-24 | 119SS+8h | 2018-05-07 | 2018-05-07 | 2h | 0d |  | as late as possible | Fitter | 50h | 3,437.5 | 3,437.5 |
| 121 | 10.6 | WELDING | 6h | 2019-06-24 | 2019-06-24 | 120SS+8h | 2018-05-07 | 2018-05-08 | 6h | 0d |  |  | SMAW Welder; Helper | 300h | 17,812.5 | 17,812.5 |
| 122 | 10.7 | FLUSH GRIND | 9h | 2019-06-25 | 2019-06-26 | 121SS+8h | 2018-05-09 | 2018-05-09 | 3h | 0d |  | as late as possible | Grinder | 75h | 4,218.75 | 4,218.75 |
| 123 | 10.8 | INSIDE WELDING | 16h | 2019-06-26 | 2019-06-28 | 122SS+8h | 2018-05-09 | 2018-05-10 | 3h | 0d |  |  | SMAW Welder; Helper | 150h | 8,906.25 | 8,906.25 |
| 124 | 10.9 | FLUSH GRIND | 8h | 2019-06-27 | 2019-06-28 | 123SS+8h | 2018-05-10 | 2018-05-11 | 2h | 0d |  |  | Grinder | 50h | 2,812.5 | 2,812.5 |
| 125 | 10.10 | DP CHECK & CLEANING | 6h | 2019-06-28 | 2019-06-28 | 124SS+8h | 2018-05-11 | 2018-05-14 | 2h | 0d |  |  | Fitter; Helper | 100h | 5,937.5 | 5,937.5 |

Notes:
- 110: 0.46Kg/m
- 114: SC
- 115: 40NOS

| ID | WBS | Task | Duration | Start | Finish | Predecessors | Baseline start | Baseline finish | Baseline duration | Total slack | Free slack | Constraint | Resources | Work | Cost | Baseline cost |
| --- | --- | --- | --- | --- | --- | --- | --- | --- | --- | --- | --- | --- | --- | --- | --- | --- |
| 126 | 11 | **NOZZLE HBN/PIPE WELDING** | 126.5d | 2018-07-10 | 2019-06-28 |  | 2018-04-10 | 2018-05-14 | 11.97d | 0d |  |  |  | 712.5h | 43,359.38 | 43,359.38 |
| 127 | 11.1 | PIPE FITUP WITH HBN | 3h | 2018-07-10 | 2018-07-11 | 115SS+8h | 2018-04-10 | 2018-04-11 | 3h | 122.81d |  |  | SMAW Welder; Helper; Fitter | 225h | 14,062.5 | 14,062.5 |
| 128 | 11.2 | FITUP INSPECTION | 2h | 2019-06-20 | 2019-06-20 | 127SS+8h | 2018-05-08 | 2018-05-08 | 2h | 0d |  | as late as possible | Fitter | 50h | 3,437.5 | 3,437.5 |
| 129 | 11.3 | WELDING | 12h | 2019-06-21 | 2019-06-25 | 128SS+8h | 2018-05-08 | 2018-05-09 | 4h | 0d |  |  | SMAW Welder; Helper | 200h | 11,875 | 11,875 |
| 130 | 11.4 | FLUSH GRIND | 2.5h | 2019-06-24 | 2019-06-24 | 129SS+8h | 2018-05-09 | 2018-05-10 | 2.5h | 0d |  |  | Grinder | 37.5h | 2,109.38 | 2,109.38 |
| 131 | 11.5 | THERMOWEL END FITTING WELD | 25h | 2019-06-25 | 2019-06-27 | 130SS+8h | 2018-05-10 | 2018-05-14 | 25h | 0d |  |  | SMAW Welder; Helper | 50h | 2,968.75 | 2,968.75 |
| 132 | 11.6 | DP CHECK & CLEANING | 19h | 2019-06-26 | 2019-06-28 | 131SS+8h | 2018-05-11 | 2018-05-14 | 7.5h | 0d |  |  | Fitter; Helper | 150h | 8,906.25 | 8,906.25 |
| 133 | 12 | **SUPPORT PLATE/ANGLE FAB & WELDING** | 3.62d | 2018-07-11 | 2018-07-23 |  | 2018-04-11 | 2018-04-23 | 3.62d | 122d |  |  |  | 412.5h | 24,296.88 | 24,296.88 |
| 134 | 12.1 | MARKING | 25h | 2018-07-11 | 2018-07-13 | 126SS+8h | 2018-04-11 | 2018-04-13 | 25h | 122d | 0d |  | Fitter; Helper | 50h | 2,968.75 | 2,968.75 |
| 135 | 12.2 | CUTTING | 25h | 2018-07-12 | 2018-07-16 | 134SS+8h | 2018-04-12 | 2018-04-16 | 25h | 122d | 0d |  | Gas Cutter; Helper | 50h | 2,968.75 | 2,968.75 |
| 136 | 12.3 | GRINDING | 37.5h | 2018-07-13 | 2018-07-18 | 135SS+8h | 2018-04-13 | 2018-04-18 | 37.5h | 122d | 0d |  | Grinder | 37.5h | 2,109.38 | 2,109.38 |
| 137 | 12.4 | SUPPORT ANGLE FORMING | 25h | 2018-07-16 | 2018-07-18 | 136SS+8h | 2018-04-16 | 2018-04-18 | 25h | 122d | 0d |  | Fitter; Helper | 50h | 2,968.75 | 2,968.75 |
| 138 | 12.5 | WELDING WITH SHELL | 62.5h | 2018-07-17 | 2018-07-21 | 137SS+8h | 2018-04-17 | 2018-04-21 | 62.5h | 122d | 0d |  | SMAW Welder; Helper | 125h | 7,421.88 | 7,421.88 |
| 139 | 12.6 | FLUSH GRIND | 25h | 2018-07-18 | 2018-07-20 | 138SS+8h | 2018-04-18 | 2018-04-20 | 25h | 122d | 0d |  | Grinder | 25h | 1,406.25 | 1,406.25 |
| 140 | 12.7 | U-CLAMP WELDING | 12.5h | 2018-07-19 | 2018-07-20 | 139SS+8h | 2018-04-19 | 2018-04-20 | 12.5h | 122d | 0d |  | SMAW Welder; Helper | 25h | 1,484.38 | 1,484.38 |
| 141 | 12.8 | ASP WELD WITH RING | 25h | 2018-07-20 | 2018-07-23 | 140SS+8h | 2018-04-20 | 2018-04-23 | 25h | 122d |  |  | SMAW Welder; Helper | 50h | 2,968.75 | 2,968.75 |
| 142 | 13 | **SD & AL NOZZLE WELDING** | 1.51d | 2018-07-11 | 2018-07-17 |  | 2018-04-11 | 2018-04-17 | 1.51d | 124.49d | 0d |  |  | 62.5h | 3,847.66 | 3,847.66 |
| 143 | 13.1 | FOOT PIECE FITUP WITH PIPE | 375min | 2018-07-11 | 2018-07-12 | 126SS+8h | 2018-04-11 | 2018-04-12 | 375min | 124.49d | 0d |  | Fitter; SMAW Welder; Helper | 18.75h | 1,171.88 | 1,171.88 |
| 144 | 13.2 | WELDING | 375min | 2018-07-12 | 2018-07-13 | 143SS+8h | 2018-04-12 | 2018-04-13 | 375min | 124.49d | 0d |  | SMAW Welder; Helper | 12.5h | 742.19 | 742.19 |
| 145 | 13.3 | PIPE FITUP WITH FOOT PIECE | 500min | 2018-07-13 | 2018-07-16 | 144SS+8h | 2018-04-13 | 2018-04-16 | 500min | 124.49d | 0d |  | Fitter; SMAW Welder; Helper | 25h | 1,562.5 | 1,562.5 |
| 146 | 13.4 | WELDING | 12.5min | 2018-07-16 | 2018-07-17 | 145SS+8h | 2018-04-16 | 2018-04-17 | 12.5min | 124.49d |  |  | SMAW Welder; Helper | 6.25h | 371.09 | 371.09 |
| 147 | 14 | **LUG SUPPORT & L.L ASSY** | 4.5d | 2018-07-09 | 2018-07-21 |  | 2018-04-09 | 2018-04-21 | 4.5d | 122.5d |  |  |  | 712.5h | 43,359.38 | 43,359.38 |
| 148 | 14.1 | L.L PAD FITUP | 2.5h | 2018-07-09 | 2018-07-10 | 25SS+8h, 102SS+8h | 2018-04-09 | 2018-04-10 | 2.5h | 122.5d | 0d |  | SMAW Welder; Helper; Fitter | 187.5h | 11,718.75 | 11,718.75 |
| 149 | 14.2 | FITUP INSPECTION | 25h | 2018-07-10 | 2018-07-12 | 148SS+8h | 2018-04-10 | 2018-04-12 | 25h | 122.5d | 0d |  | Fitter | 25h | 1,718.75 | 1,718.75 |
| 150 | 14.3 | WELDING | 3h | 2018-07-11 | 2018-07-12 | 149SS+8h | 2018-04-11 | 2018-04-12 | 3h | 122.5d | 0d |  | SMAW Welder; Helper | 150h | 8,906.25 | 8,906.25 |
| 151 | 14.4 | LUG SUPPORT WELDING | 50h | 2018-07-12 | 2018-07-17 | 150SS+8h | 2018-04-12 | 2018-04-17 | 50h | 122.5d | 0d |  | SMAW Welder; Helper | 100h | 5,937.5 | 5,937.5 |
| 152 | 14.5 | FLUSH GRIND | 25h | 2018-07-13 | 2018-07-17 | 151SS+8h | 2018-04-13 | 2018-04-17 | 25h | 122.5d | 0d |  | Grinder | 25h | 1,406.25 | 1,406.25 |
| 153 | 14.6 | L.L PAD FITUP | 25h | 2018-07-16 | 2018-07-18 | 30SS+8h, 152SS+8h | 2018-04-16 | 2018-04-18 | 25h | 122.5d | 0d |  | SMAW Welder; Helper; Fitter | 75h | 4,687.5 | 4,687.5 |
| 154 | 14.7 | FITUP INSPECTION | 12.5h | 2018-07-17 | 2018-07-18 | 153SS+8h | 2018-04-17 | 2018-04-18 | 12.5h | 122.5d | 0d |  | Fitter | 12.5h | 859.38 | 859.38 |
| 155 | 14.8 | WELDING | 37.5h | 2018-07-18 | 2018-07-21 | 154SS+8h | 2018-04-18 | 2018-04-21 | 37.5h | 122.5d | 0d |  | SMAW Welder; Helper | 75h | 4,453.12 | 4,453.12 |
| 156 | 14.9 | LUG SUPPORT WELDING | 25h | 2018-07-19 | 2018-07-21 | 155SS+8h | 2018-04-19 | 2018-04-21 | 25h | 122.5d | 0d |  | SMAW Welder; Helper | 50h | 2,968.75 | 2,968.75 |
| 157 | 14.10 | FLUSH GRIND | 12.5h | 2018-07-20 | 2018-07-21 | 156SS+8h | 2018-04-20 | 2018-04-21 | 12.5h | 122.5d |  |  | Grinder | 12.5h | 703.12 | 703.12 |

Notes:
- 126: 20NOS
- 131: 2NOS
- 133: 5/4 NOS-ASP
- 145: 2NOS

| ID | WBS | Task | Duration | Start | Finish | Predecessors | Baseline start | Baseline finish | Baseline duration | Total slack | Free slack | Constraint | Resources | Work | Cost | Baseline cost |
| --- | --- | --- | --- | --- | --- | --- | --- | --- | --- | --- | --- | --- | --- | --- | --- | --- |
| 158 | 15 | **CS4 (DISH+SH)-FITUP & WELDING** | 6.5d | 2018-07-13 | 2018-07-31 |  | 2018-04-13 | 2018-05-01 | 6.5d | 119d | 0d |  |  | 950h | 56,796.88 | 56,796.88 |
| 159 | 15.1 | SHELL SH3+SH4 READY | 0.25d | 2018-07-13 | 2018-07-13 | 102SS+8h, 142SS+8h | 2018-04-13 | 2018-04-13 | 0.25d | 119d | 0d |  |  |  |  |  |
| 160 | 15.2 | SHELL EP CORRECTION | 1.96h | 2018-07-13 | 2018-07-16 | 159SS+8h | 2018-04-13 | 2018-04-16 | 1.96h | 119d | 0d |  | Grinder | 37.5h | 2,109.38 | 2,109.38 |
| 161 | 15.3 | CS2-FITUP | 2h | 2018-07-16 | 2018-07-17 | 160SS+8h | 2018-04-16 | 2018-04-17 | 2h | 119d | 0d |  | Fitter; Helper; SMAW Welder | 150h | 9,375 | 9,375 |
| 162 | 15.4 | CS2-FITUP INSPECTION | 1h | 2018-07-17 | 2018-07-18 | 161SS+8h | 2018-04-17 | 2018-04-18 | 1h | 119d | 0d |  | Fitter | 25h | 1,718.75 | 1,718.75 |
| 163 | 15.5 | CS2-ROOT WELDING | 1h | 2018-07-18 | 2018-07-19 | 162SS+8h | 2018-04-18 | 2018-04-19 | 1h | 119d | 0d |  | SMAW Welder; Helper | 50h | 2,968.75 | 2,968.75 |
| 164 | 15.6 | CS2-ROOT WELD VISUAL INSP | 0.5h | 2018-07-19 | 2018-07-20 | 163SS+8h | 2018-04-19 | 2018-04-20 | 0.5h | 119d | 0d |  | SMAW Welder | 12.5h | 859.38 | 859.38 |
| 165 | 15.7 | CS2-DPCHECK | 1.33h | 2018-07-20 | 2018-07-23 | 164SS+8h | 2018-04-20 | 2018-04-23 | 1.33h | 119d | 0d |  | Fitter; Helper | 25h | 1,484.38 | 1,484.38 |
| 166 | 15.8 | CS2-WELDING | 10h | 2018-07-23 | 2018-07-25 | 165SS+8h | 2018-04-23 | 2018-04-25 | 10h | 119d | 0d |  | SMAW Welder; Helper | 500h | 29,687.5 | 29,687.5 |
| 167 | 15.9 | CS2- BACKCHIP GRIND | 2h | 2018-07-24 | 2018-07-25 | 166SS+8h | 2018-04-24 | 2018-04-25 | 2h | 119d | 0d |  | Grinder | 50h | 2,812.5 | 2,812.5 |
| 168 | 15.10 | CS2-DPCHECK | 1h | 2018-07-25 | 2018-07-26 | 167SS+8h | 2018-04-25 | 2018-04-26 | 1h | 119d | 0d |  | Fitter; Helper | 50h | 2,968.75 | 2,968.75 |
| 169 | 15.11 | CS2-DRESSUP | 2h | 2018-07-26 | 2018-07-27 | 168SS+8h | 2018-04-26 | 2018-04-27 | 2h | 119d | 0d |  | Grinder | 50h | 2,812.5 | 2,812.5 |
| 170 | 15.12 | CS2-RT | 1d | 2018-07-30 | 2018-07-31 | 169SS+8h | 2018-04-30 | 2018-05-01 | 1d | 119d |  |  |  |  |  |  |
| 171 | 16 | **HYDRO TEST** | 125d | 2018-07-16 | 2019-06-28 |  | 2018-04-16 | 2018-05-14 | 10.5d | 0d |  |  |  | 950h | 55,564.41 | 55,564.41 |
| 172 | 16.1 | NDE CLEARANCE | 1d | 2018-07-16 | 2018-07-17 | 158SS+8h | 2018-04-16 | 2018-04-17 | 1d | 122.88d | 0d |  |  |  |  |  |
| 173 | 16.2 | PNUEMATIC TEST | 3h | 2018-07-16 | 2018-07-17 | 172SS+8h | 2018-04-16 | 2018-04-17 | 3h | 122.88d |  |  | Fitter; Helper [200%] | 225h | 12,656.25 | 12,656.25 |
| 174 | 16.3 | TPI WITNESS | 16h | 2019-06-26 | 2019-06-28 | 173SS+8h | 2018-05-10 | 2018-05-11 | 2h | 0d |  | as late as possible | Fitter | 50h | 3,437.5 | 3,437.5 |
| 175 | 16.4 | HYDRO TEST | 6h | 2019-06-27 | 2019-06-28 | 174SS+8h | 2018-05-11 | 2018-05-14 | 5h | 0d |  |  | Fitter [200%]; Helper [300%] | 625h | 36,033.16 | 36,033.16 |
| 176 | 16.5 | TPI WITNESS | 2h | 2019-06-28 | 2019-06-28 | 175SS+8h | 2018-05-14 | 2018-05-14 | 2h | 0d |  |  | Fitter | 50h | 3,437.5 | 3,437.5 |
| 177 | 17 | **ACID CLEANING AND PICKLING** | 124.5d | 2018-07-16 | 2019-06-29 |  | 2018-04-16 | 2018-05-01 | 5.5d | 0d |  |  |  | 354h | 13,437.5 | 13,437.5 |
| 178 | 17.1 | PREPARATION FOR ACID CLEANING | 4h | 2018-07-16 | 2018-07-17 | 171SS+8h | 2018-04-16 | 2018-04-17 | 4h | 0d |  |  | Helper [200%] | 200h | 10,000 | 10,000 |
| 179 | 17.2 | ACID CLEANING AND PICKLING | 3d | 2018-07-18 | 2018-07-25 | 178SS+8h | 2018-04-18 | 2018-04-25 | 3d | 0d |  |  |  |  |  |  |
| 180 | 17.3 | TPI WITNESS | 2h | 2018-07-18 | 2018-07-19 | 179SS+8h | 2018-04-18 | 2018-04-19 | 2h | 0d |  |  | Fitter | 50h | 3,437.5 | 3,437.5 |
| 181 | 17.4 | DESPATCH CLEARANCE | 4d | 2018-07-20 | 2018-07-31 | 180SS+8h | 2018-04-20 | 2018-05-01 | 4d | 0d |  |  |  | 8h |  |  |
| 182 | 17.5 | Despatch VC100 | 1d | 2018-08-28 | 2018-08-30 | 181FS+10d | 2018-04-20 | 2018-04-24 | 1d | 108d |  |  | Store | 16h |  |  |
| 183 | 17.6 | Despatch VC600 | 1d | 2018-10-29 | 2018-10-31 | 181FS+32d | 2018-04-20 | 2018-04-24 | 1d | 86d |  |  | Store | 16h |  |  |
| 184 | 17.7 | Despatch VC2000 | 1d | 2018-12-26 | 2018-12-28 | 181FS+53d | 2018-04-20 | 2018-04-24 | 1d | 65d |  |  | Store | 16h |  |  |
| 185 | 17.8 | Despatch VC4000 | 1d | 2019-03-28 | 2019-03-29 | 181FS+86d | 2018-04-24 | 2018-04-25 | 1d | 32.5d |  |  | Store | 16h |  |  |
| 186 | 17.9 | Despatch VC4000A | 1d | 2019-05-29 | 2019-05-30 | 181FS+108d | 2018-04-25 | 2018-04-26 | 1d | 10.5d |  |  | Store | 16h |  |  |
| 187 | 17.10 | Despatch VC4000J | 1d | 2019-06-28 | 2019-06-29 | 181FS+119d | 2018-04-26 | 2018-04-27 | 1d | 0d |  |  | Store | 16h |  |  |

Notes:
- 166: 0.69Kg/m
- 170: SC
- 172: SC
- 179: SC
