# 4197-Andhra Sugars

Schedule from MS Project, 2017-07-26 to 2018-02-03, costs in Rs., A marks actual dates.

## Calendars

- TEAM_2Shift_Calendar-1: Mon-Sat 06:00-22:00; Sun off. Exceptions (off unless hours are given): 2017-01-13 to 2023-02-11 (2nd Sat, recurring), 2017-01-26 to 2036-01-26 (Republic Day, recurring), 2017-01-27 to 2023-08-26 (4th Sat, recurring), 2017-05-01 to 2036-05-01 (May Day, recurring), 2017-08-15 to 2036-08-15 (Indepdence Day, recurring), 2017-08-25 (Ayudha Pooja'2017), 2017-10-02 to 2036-10-02 (Gandhi Jayanti, recurring), 2017-10-19 (Deepavali'2017), 2018-01-15 (Thiruvalluvar Day'2018).
- TEAM_Stand_Calendar: Mon-Sat 08:30-12:30, 13:30-17:30; Sun off. Exceptions (off unless hours are given): 2017-01-13 to 2023-08-12 (2nd Sat, recurring), 2017-01-26 to 2036-01-26 (Republic Day, recurring), 2017-01-27 to 2023-08-26 (4th Sat, recurring), 2017-05-01 to 2036-05-01 (May Day, recurring), 2017-08-15 to 2036-08-15 (Independence Day, recurring), 2017-08-25 (Vinakya Chaturthi'2017), 2017-09-29 (Ayudha Pooja'2017), 2017-10-02 to 2036-10-02 (Gandhi Jayanti, recurring), 2017-10-18 (Deepavali'2017), 2018-01-15 (Thiruvalluvar Day'2018).

## Resources

| Resource | Rate |
| --- | --- |
| Client |  |
| CNC Lathe |  |
| Crane |  |
| Cutting Machine |  |
| Design Eng |  |
| Draftman |  |
| Driller | 68.75 |
| Expanding Machine |  |
| Finance-New |  |
| Fitter | 68.75 |
| Foreman |  |
| Forming Machine |  |
| Gas Cutter | 68.75 |
| Grinder | 56.25 |
| Grinding Machine |  |
| Hari @Vedavit |  |
| Heat Treatment Furnace |  |
| Helper | 50 |
| HOD |  |
| Hydraulic Press |  |
| Lathe |  |
| Lathe Operator | 120 |
| Maintenance Engineer |  |
| Marketing |  |
| Milling Machine |  |
| Milling Operator | 120 |
| OAGM |  |
| Painter |  |
| Pedestal Grinder |  |
| Planner Machine |  |
| Plasma Cutting Machine |  |
| Plate Bending Machine |  |
| PM |  |
| PMO Head |  |
| PPC Engineer |  |
| Pressbreak Machine |  |
| Production Department |  |
| Purchase Eng |  |
| QC Engineer |  |
| Radial Drilling Machine |  |
| Riggers | 120 |
| Saravananadha M |  |
| SAW Machine |  |
| SAW Welder | 68.75 |
| SMAW Welder | 68.75 |
| SMAW Welding Machine |  |
| Store |  |
| SC (Work) |  |
| SC Nightwork |  |
| TIG Welder | 125 |
| TIG Welding Machine |  |
| Vehicle |  |

## Schedule

| ID | WBS | Task | Duration | Start | Finish | Predecessors | Complete | Baseline start | Baseline finish | Baseline duration | Resources | Work | Actual work |
| --- | --- | --- | --- | --- | --- | --- | --- | --- | --- | --- | --- | --- | --- |
| 1 | 1 | PO RECEIPT | 2d | 2017-07-26 A | 2017-07-27 A |  | 100% | 2017-07-26 | 2017-07-27 | 2d | Marketing | 16h | 16h |
| 2 | 2 | WORK ORDER | 2d | 2017-07-28 A | 2017-07-29 A | 1 | 100% | 2017-07-28 | 2017-07-29 | 2d | Marketing | 16h | 16h |
| 3 | 3 | CRM | 2d | 2017-07-31 A | 2017-08-01 A | 2 | 100% | 2017-07-31 | 2017-08-01 | 2d | Design Eng; Marketing; PPC Engineer; Production Department; Purchase Eng; QC Engineer | 96h | 96h |
| 4 | 4 | **PR ISSUE** | 2d | 2017-08-02 A | 2017-08-03 A |  | 100% | 2017-08-02 | 2017-08-03 | 2d |  | 31h | 31h |
| 5 | 4.1 | PLATES AND RODS-SB 265 GR.2 | 2d | 2017-08-02 A | 2017-08-03 A | 3 | 100% | 2017-08-02 | 2017-08-03 | 2d | PPC Engineer | 4h | 4h |
| 6 | 4.2 | PLATES AND RODS-SB 162 | 2d | 2017-08-02 A | 2017-08-03 A | 3 | 100% | 2017-08-02 | 2017-08-03 | 2d | PPC Engineer | 1h | 1h |
| 7 | 4.3 | PLATES AND RODS-SA 240 GR 304L | 2d | 2017-08-02 A | 2017-08-03 A | 3 | 100% | 2017-08-02 | 2017-08-03 | 2d | PPC Engineer | 1h | 1h |
| 8 | 4.4 | PLATES AND RODS-IS 2062 | 2d | 2017-08-02 A | 2017-08-03 A | 3 | 100% | 2017-08-02 | 2017-08-03 | 2d | PPC Engineer | 1h | 1h |
| 9 | 4.5 | MECHANICAL SEAL-TI | 2d | 2017-08-02 A | 2017-08-03 A | 3 | 100% | 2017-08-02 | 2017-08-03 | 2d | PPC Engineer | 1h | 1h |
| 10 | 4.6 | MECHANICAL SEAL-NICKEL | 2d | 2017-08-02 A | 2017-08-03 A | 3 | 100% | 2017-08-02 | 2017-08-03 | 2d | PPC Engineer | 16h | 16h |
| 11 | 4.7 | COUPLING-LOVE JOY | 2d | 2017-08-02 A | 2017-08-03 A | 3 | 100% | 2017-08-02 | 2017-08-03 | 2d | PPC Engineer | 1h | 1h |
| 12 | 4.8 | BEARING | 2d | 2017-08-02 A | 2017-08-03 A | 3 | 100% | 2017-08-02 | 2017-08-03 | 2d | PPC Engineer | 1h | 1h |
| 13 | 4.9 | FASTENERS | 2d | 2017-08-02 A | 2017-08-03 A | 3 | 100% | 2017-08-02 | 2017-08-03 | 2d | PPC Engineer | 1h | 1h |
| 14 | 4.10 | CONSUMABLES-SS,NI,TI | 2d | 2017-08-02 A | 2017-08-03 A | 3 | 100% | 2017-08-02 | 2017-08-03 | 2d | PPC Engineer | 4h | 4h |
| 15 | 5 | **MATERIAL ORDERING AND RECEIPT** | 97d | 2017-08-04 A | 2017-12-11 A |  | 100% | 2017-08-04 | 2017-12-11 | 97d |  | 111h | 111h |
| 16 | 5.1 | PLATES AND RODS-SB 265 GR.2 | 82d | 2017-08-24 A | 2017-12-11 A | 5FS+15d | 100% | 2017-08-24 | 2017-12-11 | 82d | Purchase Eng | 16h | 16h |
| 17 | 5.2 | PLATES AND RODS-SB 162 UNS NO 2201 | 60d | 2017-08-04 A | 2017-10-24 A | 6 | 100% | 2017-08-04 | 2017-10-24 | 60d | Purchase Eng | 20h | 20h |
| 18 | 5.3 | PLATES AND RODS-SA 240 GR 304L | 60d | 2017-08-04 A | 2017-10-24 A | 7 | 100% | 2017-08-04 | 2017-10-24 | 60d | Purchase Eng | 16h | 16h |
| 19 | 5.4 | PLATES AND RODS-IS 2062 | 60d | 2017-08-04 A | 2017-10-24 A | 8 | 100% | 2017-08-04 | 2017-10-24 | 60d | Purchase Eng | 5h | 5h |
| 20 | 5.5 | MECHANICAL SEAL-TI | 60d | 2017-08-04 A | 2017-10-24 A | 9 | 100% | 2017-08-04 | 2017-10-24 | 60d | Purchase Eng | 16h | 16h |
| 21 | 5.6 | MECHANICAL SEAL-NICKEL | 60d | 2017-08-04 A | 2017-10-24 A | 10 | 100% | 2017-08-04 | 2017-10-24 | 60d | Purchase Eng | 10h | 10h |
| 22 | 5.7 | COUPLING-LOVE JOY | 60d | 2017-08-04 A | 2017-10-24 A | 11 | 100% | 2017-08-04 | 2017-10-24 | 60d | Purchase Eng | 5h | 5h |
| 23 | 5.8 | BEARING | 82d | 2017-08-24 A | 2017-12-11 A | 12FS+15d | 100% | 2017-08-24 | 2017-12-11 | 82d | Purchase Eng | 5h | 5h |
| 24 | 5.9 | FASTENERS | 60d | 2017-08-04 A | 2017-10-24 A | 13 | 100% | 2017-08-04 | 2017-10-24 | 60d | Purchase Eng | 6h | 6h |
| 25 | 5.10 | CONSUMABLES-SS,NI,TI | 60d | 2017-08-04 A | 2017-10-24 A | 14 | 100% | 2017-08-04 | 2017-10-24 | 60d | Purchase Eng | 12h | 12h |

| ID | WBS | Task | Duration | Start | Finish | Predecessors | Complete | Baseline start | Baseline finish | Baseline duration | Calendar | Resources | Work | Actual work | Cost | Baseline cost | Actual cost |
| --- | --- | --- | --- | --- | --- | --- | --- | --- | --- | --- | --- | --- | --- | --- | --- | --- | --- |
| 26 | 6 | **FABRICATION** | 72d | 2017-12-11 A | 2018-01-25 A |  | 100% | 2017-12-11 | 2018-01-03 | 38d | TEAM_2Shift_Calendar-1 |  | 13208h | 13208h | 535,198.89 | 535,198.88 | 535,198.89 |
| 27 | 6.1 | FABRICATION PROCESS | 56.06d | 2017-12-11 A | 2018-01-16 A | 15 | 100% | 2017-12-11 | 2017-12-29 | 30d | TEAM_2Shift_Calendar-1 | CNC Lathe; Cutting Machine; Driller; Fitter; Foreman; Gas Cutter; Grinder; Helper; Lathe; Lathe Operator; Milling Machine; Milling Operator; Plasma Cutting Machine; Production Department; Radial Drilling Machine; TIG Welder; TIG Welding Machine | 13000h | 13000h | 533,821.59 | 533,821.58 | 533,821.59 |
| 28 | 6.2 | FINAL INSPECTION | 8.01d | 2018-01-16 A | 2018-01-20 A | 27 | 100% | 2017-12-29 | 2018-01-03 | 8d | TEAM_2Shift_Calendar-1 | Fitter [2500%]; Foreman [2500%]; Production Department [2500%]; QC Engineer [2500%] | 200h | 200h | 1,377.3 | 1,377.3 | 1,377.3 |
| 29 | 6.3 | Client review and dispatch clearance | 1d | 2018-01-25 A | 2018-01-25 A | 28FS+3d | 100% |  |  |  |  | Client | 8h | 8h |  |  |  |
| 30 | 7 | **PACKING AND DESPATCH** | 4.01d | 2018-02-01 A | 2018-02-03 A |  | 100% | 2018-01-03 | 2018-01-05 | 3d | TEAM_2Shift_Calendar-1 |  | 10.08h | 10.08h |  | -0 |  |
| 31 | 7.1 | PACKING | 2.01d | 2018-02-01 A | 2018-02-02 A | 26 | 100% | 2018-01-03 | 2018-01-04 | 1d | TEAM_2Shift_Calendar-1 | Store | 6.08h | 6.08h |  |  |  |
| 32 | 7.2 | DESPATCH | 2d | 2018-02-02 A | 2018-02-03 A | 31 | 100% | 2018-01-04 | 2018-01-05 | 2d | TEAM_2Shift_Calendar-1 | Store [25%] | 4h | 4h |  |  |  |
