# 4203-HC

Schedule from MS Project, 2018-06-11 to 2019-01-14, 16 hours a day, costs in ₹.

## Calendars

- Standard: Mon-Fri 08:00-12:00, 13:00-17:00; Sat-Sun off.

## Resources

| Resource | Rate |
| --- | --- |
| Fitter | 68.75 |
| Grinder | 56.25 |
| SMAW Welder | 68.75 |
| Helper | 50 |
| Gas Cutter | 68.75 |
| Milling Operator | 120 |
| Driller | 68.75 |
| Forging Non-Std (Cost) |  |
| Forging Std (Cost) |  |
| Pipe (Cost) |  |
| Plate (Cost) |  |
| Rod (Cost) |  |
| Tube (Cost) |  |
| Tube Sheet (Cost) |  |
| Store |  |
| Budget Cost Labour Expenses |  |
| Budget Cost Material Expenses |  |
| Budget Cost P&F/Transport |  |
| Budget Cost Subcontract |  |
| Budget Cost TPI Charges |  |
| Budget Hours Contract |  |
| Budget Hours TEAM |  |

## Schedule

| ID | WBS | Task | Duration | Start | Finish | Predecessors | Baseline start | Baseline finish | Baseline duration | Total slack | Free slack | Resources | Work | Cost | Baseline cost |
| --- | --- | --- | --- | --- | --- | --- | --- | --- | --- | --- | --- | --- | --- | --- | --- |
| 1 | 1 | **RECEIPT OF MATERIALS** | 2d | 2018-06-11 | 2018-06-14 |  | 2018-06-11 | 2018-06-14 | 2d | 64d |  |  |  |  |  |
| 2 | 1.1 | PLATE FOR DISH END+SH | 2d | 2018-06-11 | 2018-06-14 |  | 2018-06-11 | 2018-06-14 | 2d | 64d | 0d |  |  |  |  |
| 3 | 1.2 | NOZZLE ROD | 2d | 2018-06-11 | 2018-06-14 |  | 2018-06-11 | 2018-06-14 | 2d | 76d |  |  |  |  |  |
| 4 | 1.3 | NOZZLE PIPE | 2d | 2018-06-11 | 2018-06-14 |  | 2018-06-11 | 2018-06-14 | 2d | 70d | 0d |  |  |  |  |
| 5 | 1.4 | FILLER WIRE | 2d | 2018-06-11 | 2018-06-14 |  | 2018-06-11 | 2018-06-14 | 2d | 76d |  |  |  |  |  |
| 6 | 1.5 | SADDLE | 2d | 2018-06-11 | 2018-06-14 |  | 2018-06-11 | 2018-06-14 | 2d | 76d |  |  |  |  |  |
| 7 | 2 | **HC 1500 (No 2)** | 77.5d | 2018-06-11 | 2019-01-14 |  | 2018-06-11 | 2018-07-24 | 15.5d | 0d |  |  | 12076h | 745,055.59 | 745,055.59 |
| 8 | 2.1 | **NOZZLE HBN FABRICATION** | 5d | 2018-06-14 | 2018-06-28 |  | 2018-06-14 | 2018-06-28 | 5d | 70d | 0d |  | 1344h | 100,800 | 100,800 |
| 9 | 2.1.1 | PIPE MARKING | 2h | 2018-06-14 | 2018-06-15 | 4 | 2018-06-14 | 2018-06-15 | 2h | 70d | 0d | Fitter; Helper | 96h | 5,700 | 5,700 |
| 10 | 2.1.2 | STAMPING | 1h | 2018-06-15 | 2018-06-18 | 9SS+8h | 2018-06-15 | 2018-06-18 | 1h | 71d | 0d | Fitter | 24h | 1,650 | 1,650 |
| 11 | 2.1.3 | CUTTING | 2h | 2018-06-18 | 2018-06-19 | 10SS+8h | 2018-06-18 | 2018-06-19 | 2h | 71d | 0d | Gas Cutter; Helper | 96h | 5,700 | 5,700 |
| 12 | 2.1.4 | MACHINING | 16h | 2018-06-19 | 2018-06-21 | 11SS+8h | 2018-06-19 | 2018-06-21 | 16h | 71d | 0d | Milling Operator | 240h | 28,800 | 28,800 |
| 13 | 2.1.5 | NOZZLE CAP FIT UP | 3h | 2018-06-20 | 2018-06-21 | 12SS+8h | 2018-06-20 | 2018-06-21 | 3h | 71d | 0d | Fitter; SMAW Welder; Helper [200%] | 288h | 17,100 | 17,100 |
| 14 | 2.1.6 | WELDING | 4h | 2018-06-21 | 2018-06-22 | 13SS+8h | 2018-06-21 | 2018-06-22 | 4h | 71d | 0d | SMAW Welder; Helper [200%] | 288h | 16,200 | 16,200 |
| 15 | 2.1.7 | FLUSH GRIND | 2h | 2018-06-22 | 2018-06-25 | 14SS+8h | 2018-06-22 | 2018-06-25 | 2h | 71d | 0d | Grinder | 48h | 2,700 | 2,700 |
| 16 | 2.1.8 | DP CHECK | 3h | 2018-06-25 | 2018-06-26 | 15SS+8h | 2018-06-25 | 2018-06-26 | 3h | 71d | 0d | Fitter; Helper | 144h | 8,550 | 8,550 |
| 17 | 2.1.9 | RT | 1d | 2018-06-27 | 2018-06-28 | 16SS+8h | 2018-06-27 | 2018-06-28 | 1d | 71d | 0d |  |  |  |  |
| 18 | 2.1.10 | MACHINING-FILLET | 5h | 2018-06-27 | 2018-06-28 | 17SS+8h | 2018-06-27 | 2018-06-28 | 5h | 71.19d |  | Milling Operator | 120h | 14,400 | 14,400 |
| 19 | 2.2 | **PIPE & RING FORMING** | 5.5d | 2018-06-15 | 2018-07-02 |  | 2018-06-15 | 2018-07-02 | 5.5d | 70d |  |  | 624h | 44,220 | 44,220 |
| 20 | 2.2.1 | MARKING | 24h | 2018-06-15 | 2018-06-18 | 9SS+8h | 2018-06-15 | 2018-06-18 | 24h | 70d | 0d | Fitter; Helper | 48h | 2,850 | 2,850 |
| 21 | 2.2.2 | CUTTING | 24h | 2018-06-18 | 2018-06-20 | 20SS+8h | 2018-06-18 | 2018-06-20 | 24h | 70d | 0d | Gas Cutter; Helper | 48h | 2,850 | 2,850 |
| 22 | 2.2.3 | BENDING | 24h | 2018-06-19 | 2018-06-21 | 21SS+8h | 2018-06-19 | 2018-06-21 | 24h | 70.94d | 0d | Fitter; Helper | 48h | 2,850 | 2,850 |
| 23 | 2.2.4 | END M/C | 96h | 2018-06-20 | 2018-06-28 | 22SS+8h | 2018-06-20 | 2018-06-28 | 96h | 71d |  | Milling Operator | 96h | 11,520 | 11,520 |
| 24 | 2.2.5 | RING FORMING | 120h | 2018-06-19 | 2018-06-29 | 21SS+8h | 2018-06-19 | 2018-06-29 | 120h | 69.88d | 0d | Fitter; Helper | 240h | 14,250 | 14,250 |
| 25 | 2.2.6 | HOLE DRILLING | 144h | 2018-06-20 | 2018-07-02 | 24SS+8h | 2018-06-20 | 2018-07-02 | 144h | 70d |  | Driller | 144h | 9,900 | 9,900 |

Notes:
- 8: 40NOS
- 17: SC
- 19: 20NOS
- 22: 2NOS
- 24: SPACER RING

| ID | WBS | Task | Duration | Start | Finish | Predecessors | Baseline start | Baseline finish | Baseline duration | Total slack | Free slack | Resources | Work | Cost | Baseline cost | Text1 |
| --- | --- | --- | --- | --- | --- | --- | --- | --- | --- | --- | --- | --- | --- | --- | --- | --- |
| 26 | 2.3 | **LIFTING LUG FAB** | 1.56d | 2018-06-11 | 2018-06-15 |  | 2018-06-11 | 2018-06-15 | 1.56d | 75.22d | 0.5d |  | 360h | 21,150 | 21,150 |  |
| 27 | 2.3.1 | PLATE MARKING | 2h | 2018-06-11 | 2018-06-12 | 2SS+8h | 2018-06-11 | 2018-06-12 | 2h | 75.22d | 0d | Fitter; Helper | 96h | 5,700 | 5,700 |  |
| 28 | 2.3.2 | CUTTING | 2h | 2018-06-12 | 2018-06-13 | 27SS+8h | 2018-06-12 | 2018-06-13 | 2h | 75.94d | 0d | Gas Cutter; Helper | 96h | 5,700 | 5,700 |  |
| 29 | 2.3.3 | GRINDING | 3h | 2018-06-13 | 2018-06-14 | 28SS+8h | 2018-06-13 | 2018-06-14 | 3h | 75.94d | 0d | Grinder [200%] | 144h | 8,100 | 8,100 |  |
| 30 | 2.3.4 | DRILLING | 1h | 2018-06-14 | 2018-06-15 | 29SS+8h | 2018-06-14 | 2018-06-15 | 1h | 75.94d |  | Driller | 24h | 1,650 | 1,650 |  |
| 31 | 2.4 | **LUG SUPPORT FAB** | 1.56d | 2018-06-12 | 2018-06-18 |  | 2018-06-12 | 2018-06-18 | 1.56d | 75.22d | 2.5d |  | 480h | 28,200 | 28,200 |  |
| 32 | 2.4.1 | PLATE MARKING | 3h | 2018-06-12 | 2018-06-13 | 27SS+8h | 2018-06-12 | 2018-06-13 | 3h | 75.22d | 0d | Fitter; Helper | 144h | 8,550 | 8,550 |  |
| 33 | 2.4.2 | CUTTING | 3h | 2018-06-13 | 2018-06-14 | 32SS+8h | 2018-06-13 | 2018-06-14 | 3h | 75.22d | 0d | Gas Cutter; Helper | 144h | 8,550 | 8,550 |  |
| 34 | 2.4.3 | GRINDING | 8h | 2018-06-14 | 2018-06-16 | 33SS+8h | 2018-06-14 | 2018-06-16 | 8h | 75.22d | 0d | Grinder [200%] | 168h | 9,450 | 9,450 |  |
| 35 | 2.4.4 | DRILLING | 1h | 2018-06-15 | 2018-06-18 | 34SS+8h | 2018-06-15 | 2018-06-18 | 1h | 75.44d |  | Driller | 24h | 1,650 | 1,650 |  |
| 36 | 2.5 | **DISH FORMING-1/2** | 13.5d | 2018-06-11 | 2018-07-18 |  | 2018-06-11 | 2018-07-18 | 13.5d | 64d | 0d |  | 1008h | 59,775 | 59,775 |  |
| 37 | 2.5.1 | MATERIAL MARKING | 1h | 2018-06-11 | 2018-06-12 | 2SS+8h | 2018-06-11 | 2018-06-12 | 1h | 64d | 0d | Fitter; Helper | 48h | 2,850 | 2,850 | 3.38 days |
| 38 | 2.5.2 | MATERIAL STAMPING | 0.5h | 2018-06-12 | 2018-06-13 | 37SS+8h | 2018-06-12 | 2018-06-13 | 0.5h | 64d | 0d | Fitter | 12h | 825 | 825 | 1.06 days |
| 39 | 2.5.3 | DISH PL CUTTING | 1h | 2018-06-13 | 2018-06-14 | 38SS+8h | 2018-06-13 | 2018-06-14 | 1h | 64d | 0d | Gas Cutter; Helper | 48h | 2,850 | 2,850 | 1.06 days |
| 40 | 2.5.4 | GRINDING/EP | 1.5h | 2018-06-14 | 2018-06-15 | 39SS+8h | 2018-06-14 | 2018-06-15 | 1.5h | 64d | 0d | Grinder | 36h | 2,025 | 2,025 | 3.38 days |
| 41 | 2.5.5 | DP CHECK | 0.5h | 2018-06-15 | 2018-06-18 | 40SS+8h | 2018-06-15 | 2018-06-18 | 0.5h | 64d | 0d | Fitter; Helper | 24h | 1,425 | 1,425 | 1.06 days |
| 42 | 2.5.6 | PL FITUP | 1h | 2018-06-18 | 2018-06-19 | 41SS+8h | 2018-06-18 | 2018-06-19 | 1h | 64d | 0d | Fitter; SMAW Welder; Helper | 72h | 4,500 | 4,500 | 1.06 days |
| 43 | 2.5.7 | ROOT WELDING | 1.5h | 2018-06-19 | 2018-06-20 | 42SS+8h | 2018-06-19 | 2018-06-20 | 1.5h | 64d | 0d | SMAW Welder; Helper | 72h | 4,275 | 4,275 | 1.06 days |
| 44 | 2.5.8 | DP CHECK | 0.5h | 2018-06-20 | 2018-06-21 | 43SS+8h | 2018-06-20 | 2018-06-21 | 0.5h | 64d | 0d | Fitter; Helper | 24h | 1,425 | 1,425 | 0.56 days |
| 45 | 2.5.9 | FINAL WELDING ONSIDE | 11h | 2018-06-21 | 2018-06-25 | 44SS+8h | 2018-06-21 | 2018-06-25 | 11h | 64d | 0d | SMAW Welder; Helper | 144h | 8,550 | 8,550 | 1.16 days |
| 46 | 2.5.10 | BACKCHIP GRINDING | 0.5h | 2018-06-22 | 2018-06-25 | 45SS+8h | 2018-06-22 | 2018-06-25 | 0.5h | 64d | 0d | Grinder | 12h | 675 | 675 | 2.31 days |
| 47 | 2.5.11 | FINAL WELDING ON BACKCHIP SIDE | 2.5h | 2018-06-25 | 2018-06-26 | 46SS+8h | 2018-06-25 | 2018-06-26 | 2.5h | 64d | 0d | SMAW Welder; Helper | 120h | 7,125 | 7,125 | 1.16 days |
| 48 | 2.5.12 | DP TEST | 0.5h | 2018-06-26 | 2018-06-27 | 47SS+8h | 2018-06-26 | 2018-06-27 | 0.5h | 64d | 0d | Fitter; Helper | 24h | 1,425 | 1,425 | 2.31 days |
| 49 | 2.5.13 | RT | 1d | 2018-06-28 | 2018-06-29 | 48SS+8h | 2018-06-28 | 2018-06-29 | 1d | 64d | 0d |  |  |  |  | 1.06 days |
| 50 | 2.5.14 | DISH FORMING | 7d | 2018-06-29 | 2018-07-18 | 49SS+8h | 2018-06-29 | 2018-07-18 | 7d | 64d | 0d |  |  |  |  | 13 days |
| 51 | 2.5.15 | ANNEALING | 3d | 2018-07-02 | 2018-07-09 | 50SS+8h | 2018-07-02 | 2018-07-09 | 3d | 67.5d | 0d |  |  |  |  | 6 days |
| 52 | 2.5.16 | INWARD INSPECTION | 1h | 2018-07-02 | 2018-07-03 | 51SS+8h | 2018-07-02 | 2018-07-03 | 1h | 67.94d | 0d | Fitter | 24h | 1,650 | 1,650 | 1 day |
| 53 | 2.5.17 | INSIDE POLISHING | 4h | 2018-07-03 | 2018-07-04 | 52SS+8h | 2018-07-03 | 2018-07-04 | 4h | 68.75d | 0d | Grinder | 96h | 5,400 | 5,400 | 3.47 days |
| 54 | 2.5.18 | OUTSIDE POLISHING | 4h | 2018-07-04 | 2018-07-05 | 53SS+8h | 2018-07-04 | 2018-07-05 | 4h | 68.75d |  | Grinder | 96h | 5,400 | 5,400 | 3.47 days |
| 55 | 2.5.19 | SF MARKING | 1h | 2018-07-03 | 2018-07-04 | 52SS+8h | 2018-07-03 | 2018-07-04 | 1h | 67.94d | 0d | Fitter; Helper | 48h | 2,850 | 2,850 | 0.5 days |
| 56 | 2.5.20 | CUTTING(HEIGHT) | 1h | 2018-07-04 | 2018-07-05 | 55SS+8h | 2018-07-04 | 2018-07-05 | 1h | 67.94d | 0d | Gas Cutter; Helper | 48h | 2,850 | 2,850 | 1 day |
| 57 | 2.5.21 | GRINDING | 1.5h | 2018-07-05 | 2018-07-06 | 56SS+8h | 2018-07-05 | 2018-07-06 | 1.5h | 67.94d | 0d | Grinder | 36h | 2,025 | 2,025 | 1 day |
| 58 | 2.5.22 | INSPECTION | 1h | 2018-07-06 | 2018-07-09 | 57SS+8h | 2018-07-06 | 2018-07-09 | 1h | 67.94d |  | Fitter | 24h | 1,650 | 1,650 | 1 day |

Notes:
- 26: 8NOS
- 31: 8NOS
- 36: ID1900*8T/6T
- 37: 2 PLATES/DISH
- 38: WELD LENGTH-2.3m
- 43: 0.14Kg/m
- 45: 0.46Kg/m

| ID | WBS | Task | Duration | Start | Finish | Predecessors | Baseline start | Baseline finish | Baseline duration | Total slack | Free slack | Resources | Work | Cost | Baseline cost | Text1 |
| --- | --- | --- | --- | --- | --- | --- | --- | --- | --- | --- | --- | --- | --- | --- | --- | --- |
| 59 | 2.6 | **DISH FORMING-1/2** | 13.5d | 2018-06-15 | 2018-07-24 |  | 2018-06-15 | 2018-07-24 | 13.5d | 62d |  |  | 1008h | 59,775 | 59,775 |  |
| 60 | 2.6.1 | MATERIAL MARKING | 1h | 2018-06-15 | 2018-06-18 | 36SS+2d | 2018-06-15 | 2018-06-18 | 1h | 62d | 0d | Fitter; Helper | 48h | 2,850 | 2,850 | 3.38 days |
| 61 | 2.6.2 | MATERIAL STAMPING | 0.5h | 2018-06-18 | 2018-06-19 | 60SS+8h | 2018-06-18 | 2018-06-19 | 0.5h | 62d | 0d | Fitter | 12h | 825 | 825 | 1.06 days |
| 62 | 2.6.3 | DISH PL CUTTING | 1h | 2018-06-19 | 2018-06-20 | 61SS+8h | 2018-06-19 | 2018-06-20 | 1h | 62d | 0d | Gas Cutter; Helper | 48h | 2,850 | 2,850 | 1.06 days |
| 63 | 2.6.4 | GRINDING/EP | 1.5h | 2018-06-20 | 2018-06-21 | 62SS+8h | 2018-06-20 | 2018-06-21 | 1.5h | 62d | 0d | Grinder | 36h | 2,025 | 2,025 | 3.38 days |
| 64 | 2.6.5 | DP CHECK | 0.5h | 2018-06-21 | 2018-06-22 | 63SS+8h | 2018-06-21 | 2018-06-22 | 0.5h | 62d | 0d | Fitter; Helper | 24h | 1,425 | 1,425 | 1.06 days |
| 65 | 2.6.6 | PL FITUP | 1h | 2018-06-22 | 2018-06-25 | 64SS+8h | 2018-06-22 | 2018-06-25 | 1h | 62d | 0d | Fitter; SMAW Welder; Helper | 72h | 4,500 | 4,500 | 1.06 days |
| 66 | 2.6.7 | ROOT WELDING | 1.5h | 2018-06-25 | 2018-06-26 | 65SS+8h | 2018-06-25 | 2018-06-26 | 1.5h | 62d | 0d | SMAW Welder; Helper | 72h | 4,275 | 4,275 | 1.06 days |
| 67 | 2.6.8 | DP CHECK | 0.5h | 2018-06-26 | 2018-06-27 | 66SS+8h | 2018-06-26 | 2018-06-27 | 0.5h | 62d | 0d | Fitter; Helper | 24h | 1,425 | 1,425 | 0.56 days |
| 68 | 2.6.9 | FINAL WELDING ONSIDE | 3h | 2018-06-27 | 2018-06-28 | 67SS+8h | 2018-06-27 | 2018-06-28 | 3h | 62d | 0d | SMAW Welder; Helper | 144h | 8,550 | 8,550 | 1.16 days |
| 69 | 2.6.10 | BACKCHIP GRINDING | 0.5h | 2018-06-28 | 2018-06-29 | 68SS+8h | 2018-06-28 | 2018-06-29 | 0.5h | 62d | 0d | Grinder | 12h | 675 | 675 | 2.31 days |
| 70 | 2.6.11 | FINAL WELDING ON BACKCHIP SIDE | 2.5h | 2018-06-29 | 2018-07-02 | 69SS+8h | 2018-06-29 | 2018-07-02 | 2.5h | 62d | 0d | SMAW Welder; Helper | 120h | 7,125 | 7,125 | 1.16 days |
| 71 | 2.6.12 | DP TEST | 0.5h | 2018-07-02 | 2018-07-03 | 70SS+8h | 2018-07-02 | 2018-07-03 | 0.5h | 62d | 0d | Fitter; Helper | 24h | 1,425 | 1,425 | 2.31 days |
| 72 | 2.6.13 | RT | 1d | 2018-07-04 | 2018-07-05 | 71SS+8h | 2018-07-04 | 2018-07-05 | 1d | 62d | 0d |  |  |  |  | 1.06 days |
| 73 | 2.6.14 | DISH FORMING | 7d | 2018-07-05 | 2018-07-24 | 72SS+8h | 2018-07-05 | 2018-07-24 | 7d | 62d | 0d |  |  |  |  | 13 days |
| 74 | 2.6.15 | ANNEALING | 3d | 2018-07-06 | 2018-07-13 | 73SS+8h | 2018-07-06 | 2018-07-13 | 3d | 65.5d | 0d |  |  |  |  | 6 days |
| 75 | 2.6.16 | INWARD INSPECTION | 1h | 2018-07-06 | 2018-07-09 | 74SS+8h | 2018-07-06 | 2018-07-09 | 1h | 65.94d | 0d | Fitter | 24h | 1,650 | 1,650 | 1 day |
| 76 | 2.6.17 | INSIDE POLISHING | 12h | 2018-07-09 | 2018-07-11 | 75SS+8h | 2018-07-09 | 2018-07-11 | 12h | 66.75d | 0d | Grinder | 96h | 5,400 | 5,400 | 3.47 days |
| 77 | 2.6.18 | OUTSIDE POLISHING | 4h | 2018-07-10 | 2018-07-11 | 76SS+8h | 2018-07-10 | 2018-07-11 | 4h | 66.75d |  | Grinder | 96h | 5,400 | 5,400 | 3.47 days |
| 78 | 2.6.19 | SF MARKING | 1h | 2018-07-09 | 2018-07-10 | 75SS+8h | 2018-07-09 | 2018-07-10 | 1h | 65.94d | 0d | Fitter; Helper | 48h | 2,850 | 2,850 | 0.5 days |
| 79 | 2.6.20 | CUTTING(HEIGHT) | 1h | 2018-07-10 | 2018-07-11 | 78SS+8h | 2018-07-10 | 2018-07-11 | 1h | 65.94d | 0d | Gas Cutter; Helper | 48h | 2,850 | 2,850 | 1 day |
| 80 | 2.6.21 | GRINDING | 1.5h | 2018-07-11 | 2018-07-12 | 79SS+8h | 2018-07-11 | 2018-07-12 | 1.5h | 65.94d | 0d | Grinder | 36h | 2,025 | 2,025 | 1 day |
| 81 | 2.6.22 | INSPECTION | 1h | 2018-07-12 | 2018-07-13 | 80SS+8h | 2018-07-12 | 2018-07-13 | 1h | 65.94d |  | Fitter | 24h | 1,650 | 1,650 | 1 day |
| 82 | 2.7 | **SHELL 1- FABRICATION** | 10.5d | 2018-06-11 | 2018-07-10 |  | 2018-06-11 | 2018-07-10 | 10.5d | 67d | 0d |  | 960h | 57,000 | 57,000 |  |
| 83 | 2.7.1 | SH1-PLATE MARKING | 1h | 2018-06-11 | 2018-06-12 | 2SS+8h | 2018-06-11 | 2018-06-12 | 1h | 67d | 0d | Fitter; Helper | 48h | 2,850 | 2,850 |  |
| 84 | 2.7.2 | SH1- STAMPING | 1h | 2018-06-12 | 2018-06-13 | 83SS+8h | 2018-06-12 | 2018-06-13 | 1h | 67d | 0d | Fitter | 24h | 1,650 | 1,650 |  |
| 85 | 2.7.3 | SH1-PL CUTTING | 1.5h | 2018-06-13 | 2018-06-14 | 84SS+8h | 2018-06-13 | 2018-06-14 | 1.5h | 67d | 0d | Gas Cutter; Helper | 72h | 4,275 | 4,275 |  |
| 86 | 2.7.4 | SH1-EDGE PREPARATION/DP CHECK | 1h | 2018-06-14 | 2018-06-15 | 85SS+8h | 2018-06-14 | 2018-06-15 | 1h | 67d | 0d | Grinder | 24h | 1,350 | 1,350 |  |
| 87 | 2.7.5 | SH1-PRE BENDING | 1.5h | 2018-06-15 | 2018-06-18 | 86SS+8h | 2018-06-15 | 2018-06-18 | 1.5h | 67d | 0d | Fitter; Helper | 72h | 4,275 | 4,275 |  |
| 88 | 2.7.6 | SH1-PREBEND CUTOFF | 1h | 2018-06-18 | 2018-06-19 | 87SS+8h | 2018-06-18 | 2018-06-19 | 1h | 67d | 0d | Gas Cutter; Helper | 24h | 1,200 | 1,200 |  |
| 89 | 2.7.7 | SH1-EDGE PREPARTION | 1h | 2018-06-19 | 2018-06-20 | 88SS+8h | 2018-06-19 | 2018-06-20 | 1h | 67d | 0d | Grinder | 24h | 1,350 | 1,350 |  |
| 90 | 2.7.8 | SH1-ROLLING | 10h | 2018-06-20 | 2018-06-22 | 89SS+8h | 2018-06-20 | 2018-06-22 | 10h | 67d | 0d | Fitter; Helper [200%] | 144h | 8,100 | 8,100 |  |
| 91 | 2.7.9 | SH1-ACID CLEANING | 1h | 2018-06-21 | 2018-06-22 | 90SS+8h | 2018-06-21 | 2018-06-22 | 1h | 67d | 0d | Helper | 24h | 1,200 | 1,200 |  |
| 92 | 2.7.10 | SH1-FITUP | 1h | 2018-06-22 | 2018-06-25 | 91SS+8h | 2018-06-22 | 2018-06-25 | 1h | 67d | 0d | Fitter; Helper; SMAW Welder | 72h | 4,500 | 4,500 |  |
| 93 | 2.7.11 | SH1-SPIDERUP | 1.5h | 2018-06-25 | 2018-06-26 | 92SS+8h | 2018-06-25 | 2018-06-26 | 1.5h | 67d | 0d | Fitter [200%] | 72h | 4,950 | 4,950 |  |
| 94 | 2.7.12 | SH1-FITUP INSPECTION | 1h | 2018-06-26 | 2018-06-27 | 93SS+8h | 2018-06-26 | 2018-06-27 | 1h | 67d | 0d | Fitter | 24h | 1,650 | 1,650 |  |
| 95 | 2.7.13 | SH1-ROOT WELDING | 0.5h | 2018-06-27 | 2018-06-28 | 94SS+8h | 2018-06-27 | 2018-06-28 | 0.5h | 67d | 0d | SMAW Welder; Helper | 24h | 1,425 | 1,425 |  |
| 96 | 2.7.14 | SH1-ROOT WELD VISUAL INSP | 0.5h | 2018-06-28 | 2018-06-29 | 95SS+8h | 2018-06-28 | 2018-06-29 | 0.5h | 67d | 0d | SMAW Welder | 12h | 825 | 825 |  |
| 97 | 2.7.15 | SH1-DPCHECK | 0.5h | 2018-06-29 | 2018-07-02 | 96SS+8h | 2018-06-29 | 2018-07-02 | 0.5h | 67d | 0d | Fitter | 12h | 825 | 825 |  |
| 98 | 2.7.16 | SH1-WELDING | 2h | 2018-07-02 | 2018-07-03 | 97SS+8h | 2018-07-02 | 2018-07-03 | 2h | 67d | 0d | SMAW Welder; Helper | 96h | 5,700 | 5,700 |  |
| 99 | 2.7.17 | SH1- BACKCHIP GRIND | 1h | 2018-07-03 | 2018-07-04 | 98SS+8h | 2018-07-03 | 2018-07-04 | 1h | 67d | 0d | Grinder | 24h | 1,350 | 1,350 |  |
| 100 | 2.7.18 | SH1-REROLLING | 2h | 2018-07-04 | 2018-07-05 | 99SS+8h | 2018-07-04 | 2018-07-05 | 2h | 67d | 0d | Fitter; Helper [200%] | 144h | 8,100 | 8,100 |  |
| 101 | 2.7.19 | SH1-DPCHECK | 0.5h | 2018-07-05 | 2018-07-06 | 100SS+8h | 2018-07-05 | 2018-07-06 | 0.5h | 67d | 0d | Fitter; Helper | 24h | 1,425 | 1,425 |  |
| 102 | 2.7.20 | SH1-RADIOGRAPHY | 1d | 2018-07-09 | 2018-07-10 | 101SS+8h | 2018-07-09 | 2018-07-10 | 1d | 67d |  |  |  |  |  |  |

Notes:
- 59: ID1900*8T/6T
- 60: 2 PLATES/DISH
- 66: 0.14Kg/m
- 68: 0.46Kg/m
- 82: 1300*6000*6T
- 95: 0.2Kg/m
- 98: 0.46Kg/m
- 102: SC

| ID | WBS | Task | Duration | Start | Finish | Predecessors | Baseline start | Baseline finish | Baseline duration | Total slack | Free slack | Constraint | Resources | Work | Cost | Baseline cost |
| --- | --- | --- | --- | --- | --- | --- | --- | --- | --- | --- | --- | --- | --- | --- | --- | --- |
| 103 | 2.8 | **CS1 (DISH+SH)-FITUP & WELDING** | 6.5d | 2018-06-13 | 2018-06-29 |  | 2018-06-13 | 2018-06-29 | 6.5d | 70.5d | 0d |  |  | 912h | 54,525 | 54,525 |
| 104 | 2.8.1 | SHELL SH3+SH4 READY | 0.25d | 2018-06-13 | 2018-06-13 | 36SS+8h, 82SS+8h | 2018-06-13 | 2018-06-13 | 0.25d | 70.5d | 0d |  |  |  |  |  |
| 105 | 2.8.2 | SHELL EP CORRECTION | 1.5h | 2018-06-13 | 2018-06-14 | 104SS+8h | 2018-06-13 | 2018-06-14 | 1.5h | 70.5d | 0d |  | Grinder | 36h | 2,025 | 2,025 |
| 106 | 2.8.3 | CS1-FITUP | 2h | 2018-06-14 | 2018-06-15 | 105SS+8h | 2018-06-14 | 2018-06-15 | 2h | 70.5d | 0d |  | Fitter; Helper; SMAW Welder | 144h | 9,000 | 9,000 |
| 107 | 2.8.4 | CS1-FITUP INSPECTION | 1h | 2018-06-15 | 2018-06-18 | 106SS+8h | 2018-06-15 | 2018-06-18 | 1h | 70.5d | 0d |  | Fitter | 24h | 1,650 | 1,650 |
| 108 | 2.8.5 | CS1-ROOT WELDING | 1h | 2018-06-18 | 2018-06-19 | 107SS+8h | 2018-06-18 | 2018-06-19 | 1h | 70.5d | 0d |  | SMAW Welder; Helper | 48h | 2,850 | 2,850 |
| 109 | 2.8.6 | CS1-ROOT WELD VISUAL INSP | 0.5h | 2018-06-19 | 2018-06-20 | 108SS+8h | 2018-06-19 | 2018-06-20 | 0.5h | 70.5d | 0d |  | SMAW Welder | 12h | 825 | 825 |
| 110 | 2.8.7 | CS1-DPCHECK | 0.5h | 2018-06-20 | 2018-06-21 | 109SS+8h | 2018-06-20 | 2018-06-21 | 0.5h | 70.5d | 0d |  | Fitter; Helper | 24h | 1,425 | 1,425 |
| 111 | 2.8.8 | CS1-WELDING | 10h | 2018-06-21 | 2018-06-25 | 110SS+8h | 2018-06-21 | 2018-06-25 | 10h | 70.5d | 0d |  | SMAW Welder; Helper | 480h | 28,500 | 28,500 |
| 112 | 2.8.9 | CS1- BACKCHIP GRIND | 2h | 2018-06-22 | 2018-06-25 | 111SS+8h | 2018-06-22 | 2018-06-25 | 2h | 70.5d | 0d |  | Grinder | 48h | 2,700 | 2,700 |
| 113 | 2.8.10 | CS1-DPCHECK | 1h | 2018-06-25 | 2018-06-26 | 112SS+8h | 2018-06-25 | 2018-06-26 | 1h | 70.5d | 0d |  | Fitter; Helper | 48h | 2,850 | 2,850 |
| 114 | 2.8.11 | CS1-DRESSUP | 2h | 2018-06-26 | 2018-06-27 | 113SS+8h | 2018-06-26 | 2018-06-27 | 2h | 70.5d | 0d |  | Grinder | 48h | 2,700 | 2,700 |
| 115 | 2.8.12 | CS1-RT | 1d | 2018-06-28 | 2018-06-29 | 114SS+8h | 2018-06-28 | 2018-06-29 | 1d | 70.5d |  |  |  |  |  |  |
| 116 | 2.9 | **NOZZLE HBN WELDING ON DISH** | 75.5d | 2018-06-15 | 2019-01-14 |  | 2018-06-15 | 2018-07-24 | 13.12d | 0d |  |  |  | 1476h | 88,575 | 88,575 |
| 117 | 2.9.1 | LOCATION MARKING | 3h | 2018-06-15 | 2018-06-18 | 8SS+8h, 103SS+8h | 2018-06-15 | 2018-06-18 | 3h | 70.75d | 0d |  | Fitter; Helper | 144h | 8,550 | 8,550 |
| 118 | 2.9.2 | NOZ OPENING | 4h | 2018-06-18 | 2018-06-19 | 117SS+8h | 2018-06-18 | 2018-06-19 | 4h | 70.75d | 0d |  | Gas Cutter; Helper | 192h | 11,400 | 11,400 |
| 119 | 2.9.3 | GRINDING/EP | 11.5h | 2018-06-19 | 2018-06-21 | 118SS+8h | 2018-06-19 | 2018-06-21 | 11.5h | 70.75d | 0d |  | Grinder | 84h | 4,725 | 4,725 |
| 120 | 2.9.4 | HBN WITH DISH FIT UP | 5h | 2018-06-20 | 2018-06-21 | 119SS+8h | 2018-06-20 | 2018-06-21 | 5h | 70.75d |  |  | Fitter; Helper; SMAW Welder | 360h | 22,500 | 22,500 |
| 121 | 2.9.5 | FITUP INSPECTION | 2h | 2019-01-07 | 2019-01-07 | 120SS+8h | 2018-07-17 | 2018-07-17 | 2h | 0d |  | as late as possible | Fitter | 48h | 3,300 | 3,300 |
| 122 | 2.9.6 | WELDING | 6h | 2019-01-08 | 2019-01-09 | 121SS+8h | 2018-07-17 | 2018-07-18 | 6h | 0d |  |  | SMAW Welder; Helper | 288h | 17,100 | 17,100 |
| 123 | 2.9.7 | FLUSH GRIND | 3h | 2019-01-09 | 2019-01-09 | 122SS+8h | 2018-07-19 | 2018-07-19 | 3h | 0d |  | as late as possible | Grinder | 72h | 4,050 | 4,050 |
| 124 | 2.9.8 | INSIDE WELDING | 3h | 2019-01-10 | 2019-01-10 | 123SS+8h | 2018-07-19 | 2018-07-20 | 3h | 0d |  |  | SMAW Welder; Helper | 144h | 8,550 | 8,550 |
| 125 | 2.9.9 | FLUSH GRIND | 2h | 2019-01-11 | 2019-01-11 | 124SS+8h | 2018-07-20 | 2018-07-23 | 2h | 0d |  |  | Grinder | 48h | 2,700 | 2,700 |
| 126 | 2.9.10 | DP CHECK & CLEANING | 4h | 2019-01-14 | 2019-01-14 | 125SS+8h | 2018-07-23 | 2018-07-24 | 2h | 0d |  |  | Fitter; Helper | 96h | 5,700 | 5,700 |

Notes:
- 111: 0.46Kg/m
- 115: SC
- 116: 40NOS

| ID | WBS | Task | Duration | Start | Finish | Predecessors | Baseline start | Baseline finish | Baseline duration | Total slack | Free slack | Constraint | Resources | Work | Cost | Baseline cost |
| --- | --- | --- | --- | --- | --- | --- | --- | --- | --- | --- | --- | --- | --- | --- | --- | --- |
| 127 | 2.10 | **NOZZLE HBN/PIPE WELDING** | 75d | 2018-06-18 | 2019-01-14 |  | 2018-06-18 | 2018-07-24 | 12.81d | 0d |  |  |  | 684h | 41,625 | 41,625 |
| 128 | 2.10.1 | PIPE FITUP WITH HBN | 3h | 2018-06-18 | 2018-06-19 | 116SS+8h | 2018-06-18 | 2018-06-19 | 3h | 72.19d |  |  | SMAW Welder; Helper; Fitter | 216h | 13,500 | 13,500 |
| 129 | 2.10.2 | FITUP INSPECTION | 2h | 2019-01-08 | 2019-01-08 | 128SS+8h | 2018-07-18 | 2018-07-18 | 2h | 0d |  | as late as possible | Fitter | 48h | 3,300 | 3,300 |
| 130 | 2.10.3 | WELDING | 5h | 2019-01-09 | 2019-01-09 | 129SS+8h | 2018-07-18 | 2018-07-19 | 5h | 0d |  |  | SMAW Welder; Helper | 192h | 11,400 | 11,400 |
| 131 | 2.10.4 | FLUSH GRIND | 5.5h | 2019-01-10 | 2019-01-11 | 130SS+8h | 2018-07-19 | 2018-07-20 | 5.5h | 0d |  |  | Grinder | 36h | 2,025 | 2,025 |
| 132 | 2.10.5 | THERMOWEL END FITTING WELD | 24h | 2019-01-11 | 2019-01-14 | 131SS+8h | 2018-07-20 | 2018-07-23 | 24h | 0d |  |  | SMAW Welder; Helper | 48h | 2,850 | 2,850 |
| 133 | 2.10.6 | DP CHECK & CLEANING | 5h | 2019-01-14 | 2019-01-14 | 132SS+8h | 2018-07-23 | 2018-07-24 | 5h | 0d |  |  | Fitter; Helper | 144h | 8,550 | 8,550 |
| 134 | 2.11 | **SUPPORT PLATE/ANGLE FAB & WELDING** | 4d | 2018-06-19 | 2018-06-30 |  | 2018-06-19 | 2018-06-30 | 4d | 70.31d |  |  |  | 396h | 23,325 | 23,325 |
| 135 | 2.11.1 | MARKING | 24h | 2018-06-19 | 2018-06-21 | 127SS+8h | 2018-06-19 | 2018-06-21 | 24h | 70.31d | 0d |  | Fitter; Helper | 48h | 2,850 | 2,850 |
| 136 | 2.11.2 | CUTTING | 24h | 2018-06-20 | 2018-06-22 | 135SS+8h | 2018-06-20 | 2018-06-22 | 24h | 70.31d | 0d |  | Gas Cutter; Helper | 48h | 2,850 | 2,850 |
| 137 | 2.11.3 | GRINDING | 36h | 2018-06-21 | 2018-06-25 | 136SS+8h | 2018-06-21 | 2018-06-25 | 36h | 70d | 0d |  | Grinder | 36h | 2,025 | 2,025 |
| 138 | 2.11.4 | SUPPORT ANGLE FORMING | 24h | 2018-06-22 | 2018-06-26 | 137SS+8h | 2018-06-22 | 2018-06-26 | 24h | 70.31d | 0d |  | Fitter; Helper | 48h | 2,850 | 2,850 |
| 139 | 2.11.5 | WELDING WITH SHELL | 60h | 2018-06-25 | 2018-06-29 | 138SS+8h | 2018-06-25 | 2018-06-29 | 60h | 70.31d | 0d |  | SMAW Welder; Helper | 120h | 7,125 | 7,125 |
| 140 | 2.11.6 | FLUSH GRIND | 24h | 2018-06-26 | 2018-06-28 | 139SS+8h | 2018-06-26 | 2018-06-28 | 24h | 70.31d | 0d |  | Grinder | 24h | 1,350 | 1,350 |
| 141 | 2.11.7 | U-CLAMP WELDING | 12h | 2018-06-27 | 2018-06-28 | 140SS+8h | 2018-06-27 | 2018-06-28 | 12h | 70.31d | 0d |  | SMAW Welder; Helper | 24h | 1,425 | 1,425 |
| 142 | 2.11.8 | ASP WELD WITH RING | 24h | 2018-06-28 | 2018-06-30 | 141SS+8h | 2018-06-28 | 2018-06-30 | 24h | 70.31d |  |  | SMAW Welder; Helper | 48h | 2,850 | 2,850 |
| 143 | 2.12 | **SD & AL NOZZLE WELDING** | 1.51d | 2018-06-19 | 2018-06-25 |  | 2018-06-19 | 2018-06-25 | 1.51d | 72.99d | 0d |  |  | 60h | 3,693.75 | 3,693.75 |
| 144 | 2.12.1 | FOOT PIECE FITUP WITH PIPE | 360min | 2018-06-19 | 2018-06-20 | 127SS+8h | 2018-06-19 | 2018-06-20 | 360min | 72.99d | 0d |  | Fitter; SMAW Welder; Helper | 18h | 1,125 | 1,125 |
| 145 | 2.12.2 | WELDING | 360min | 2018-06-20 | 2018-06-21 | 144SS+8h | 2018-06-20 | 2018-06-21 | 360min | 72.99d | 0d |  | SMAW Welder; Helper | 12h | 712.5 | 712.5 |
| 146 | 2.12.3 | PIPE FITUP WITH FOOT PIECE | 480min | 2018-06-21 | 2018-06-22 | 145SS+8h | 2018-06-21 | 2018-06-22 | 480min | 72.99d | 0d |  | Fitter; SMAW Welder; Helper | 24h | 1,500 | 1,500 |
| 147 | 2.12.4 | WELDING | 12.5min | 2018-06-22 | 2018-06-25 | 146SS+8h | 2018-06-22 | 2018-06-25 | 12.5min | 72.99d |  |  | SMAW Welder; Helper | 6h | 356.25 | 356.25 |
| 148 | 2.13 | **LUG SUPPORT & L.L ASSY** | 4.75d | 2018-06-13 | 2018-06-27 |  | 2018-06-13 | 2018-06-27 | 4.75d | 71.62d |  |  |  | 684h | 41,625 | 41,625 |
| 149 | 2.13.1 | L.L PAD FITUP | 2.5h | 2018-06-13 | 2018-06-14 | 26SS+8h, 103SS+8h | 2018-06-13 | 2018-06-14 | 2.5h | 71.62d | 0d |  | SMAW Welder; Helper; Fitter | 180h | 11,250 | 11,250 |
| 150 | 2.13.2 | FITUP INSPECTION | 24h | 2018-06-14 | 2018-06-16 | 149SS+8h | 2018-06-14 | 2018-06-16 | 24h | 71.62d | 0d |  | Fitter | 24h | 1,650 | 1,650 |
| 151 | 2.13.3 | WELDING | 4h | 2018-06-15 | 2018-06-18 | 150SS+8h | 2018-06-15 | 2018-06-18 | 4h | 71.62d | 0d |  | SMAW Welder; Helper | 144h | 8,550 | 8,550 |
| 152 | 2.13.4 | LUG SUPPORT WELDING | 48h | 2018-06-18 | 2018-06-21 | 151SS+8h | 2018-06-18 | 2018-06-21 | 48h | 71.12d | 0d |  | SMAW Welder; Helper | 96h | 5,700 | 5,700 |
| 153 | 2.13.5 | FLUSH GRIND | 24h | 2018-06-19 | 2018-06-21 | 152SS+8h | 2018-06-19 | 2018-06-21 | 24h | 71.62d | 0d |  | Grinder | 24h | 1,350 | 1,350 |
| 154 | 2.13.6 | L.L PAD FITUP | 24h | 2018-06-20 | 2018-06-22 | 31SS+8h, 153SS+8h | 2018-06-20 | 2018-06-22 | 24h | 71.62d | 0d |  | SMAW Welder; Helper; Fitter | 72h | 4,500 | 4,500 |
| 155 | 2.13.7 | FITUP INSPECTION | 12h | 2018-06-21 | 2018-06-22 | 154SS+8h | 2018-06-21 | 2018-06-22 | 12h | 71.62d | 0d |  | Fitter | 12h | 825 | 825 |
| 156 | 2.13.8 | WELDING | 36h | 2018-06-22 | 2018-06-26 | 155SS+8h | 2018-06-22 | 2018-06-26 | 36h | 71.62d | 0d |  | SMAW Welder; Helper | 72h | 4,275 | 4,275 |
| 157 | 2.13.9 | LUG SUPPORT WELDING | 24h | 2018-06-25 | 2018-06-27 | 156SS+8h | 2018-06-25 | 2018-06-27 | 24h | 71.62d | 0d |  | SMAW Welder; Helper | 48h | 2,850 | 2,850 |
| 158 | 2.13.10 | FLUSH GRIND | 12h | 2018-06-26 | 2018-06-27 | 157SS+8h | 2018-06-26 | 2018-06-27 | 12h | 71.62d |  |  | Grinder | 12h | 675 | 675 |

Notes:
- 127: 20NOS
- 132: 2NOS
- 134: 5/4 NOS-ASP
- 146: 2NOS

| ID | WBS | Task | Duration | Start | Finish | Predecessors | Baseline start | Baseline finish | Baseline duration | Total slack | Free slack | Constraint | Resources | Work | Cost | Baseline cost |
| --- | --- | --- | --- | --- | --- | --- | --- | --- | --- | --- | --- | --- | --- | --- | --- | --- |
| 159 | 2.14 | **CS2 (DISH+SH)-FITUP & WELDING** | 6.5d | 2018-06-21 | 2018-07-09 |  | 2018-06-21 | 2018-07-09 | 6.5d | 67.5d | 0d |  |  | 912h | 54,525 | 54,525 |
| 160 | 2.14.1 | SHELL SH3+SH4 READY | 0.25d | 2018-06-21 | 2018-06-21 | 103SS+8h, 143SS+8h | 2018-06-21 | 2018-06-21 | 0.25d | 67.5d | 0d |  |  |  |  |  |
| 161 | 2.14.2 | SHELL EP CORRECTION | 1.96h | 2018-06-21 | 2018-06-22 | 160SS+8h | 2018-06-21 | 2018-06-22 | 1.96h | 67.5d | 0d |  | Grinder | 36h | 2,025 | 2,025 |
| 162 | 2.14.3 | CS2-FITUP | 2h | 2018-06-22 | 2018-06-25 | 161SS+8h | 2018-06-22 | 2018-06-25 | 2h | 67.5d | 0d |  | Fitter; Helper; SMAW Welder | 144h | 9,000 | 9,000 |
| 163 | 2.14.4 | CS2-FITUP INSPECTION | 1h | 2018-06-25 | 2018-06-26 | 162SS+8h | 2018-06-25 | 2018-06-26 | 1h | 67.5d | 0d |  | Fitter | 24h | 1,650 | 1,650 |
| 164 | 2.14.5 | CS2-ROOT WELDING | 1h | 2018-06-26 | 2018-06-27 | 163SS+8h | 2018-06-26 | 2018-06-27 | 1h | 67.5d | 0d |  | SMAW Welder; Helper | 48h | 2,850 | 2,850 |
| 165 | 2.14.6 | CS2-ROOT WELD VISUAL INSP | 0.5h | 2018-06-27 | 2018-06-28 | 164SS+8h | 2018-06-27 | 2018-06-28 | 0.5h | 67.5d | 0d |  | SMAW Welder | 12h | 825 | 825 |
| 166 | 2.14.7 | CS2-DPCHECK | 0.83h | 2018-06-28 | 2018-06-29 | 165SS+8h | 2018-06-28 | 2018-06-29 | 0.83h | 67.5d | 0d |  | Fitter; Helper | 24h | 1,425 | 1,425 |
| 167 | 2.14.8 | CS2-WELDING | 10h | 2018-06-29 | 2018-07-03 | 166SS+8h | 2018-06-29 | 2018-07-03 | 10h | 67.5d | 0d |  | SMAW Welder; Helper | 480h | 28,500 | 28,500 |
| 168 | 2.14.9 | CS2- BACKCHIP GRIND | 2h | 2018-07-02 | 2018-07-03 | 167SS+8h | 2018-07-02 | 2018-07-03 | 2h | 67.5d | 0d |  | Grinder | 48h | 2,700 | 2,700 |
| 169 | 2.14.10 | CS2-DPCHECK | 1h | 2018-07-03 | 2018-07-04 | 168SS+8h | 2018-07-03 | 2018-07-04 | 1h | 67.5d | 0d |  | Fitter; Helper | 48h | 2,850 | 2,850 |
| 170 | 2.14.11 | CS2-DRESSUP | 2h | 2018-07-04 | 2018-07-05 | 169SS+8h | 2018-07-04 | 2018-07-05 | 2h | 67.5d | 0d |  | Grinder | 48h | 2,700 | 2,700 |
| 171 | 2.14.12 | CS2-RT | 1d | 2018-07-06 | 2018-07-09 | 170SS+8h | 2018-07-06 | 2018-07-09 | 1d | 67.5d |  |  |  |  |  |  |
| 172 | 2.15 | **HYDRO TEST** | 73.5d | 2018-06-22 | 2019-01-14 |  | 2018-06-22 | 2018-07-24 | 11.5d | 0d |  |  |  | 912h | 53,341.84 | 53,341.84 |
| 173 | 2.15.1 | NDE CLEARANCE | 1d | 2018-06-22 | 2018-06-25 | 159SS+8h | 2018-06-22 | 2018-06-25 | 1d | 71.38d | 0d |  |  |  |  |  |
| 174 | 2.15.2 | PNUEMATIC TEST | 3h | 2018-06-22 | 2018-06-25 | 173SS+8h | 2018-06-22 | 2018-06-25 | 3h | 71.38d |  |  | Fitter; Helper [200%] | 216h | 12,150 | 12,150 |
| 175 | 2.15.3 | TPI WITNESS | 7.33h | 2019-01-10 | 2019-01-11 | 174SS+8h | 2018-07-20 | 2018-07-23 | 7.33h | 0d |  | as late as possible | Fitter | 48h | 3,300 | 3,300 |
| 176 | 2.15.4 | HYDRO TEST | 5h | 2019-01-11 | 2019-01-14 | 175SS+8h | 2018-07-23 | 2018-07-24 | 5h | 0d |  |  | Fitter [200%]; Helper [300%] | 600h | 34,591.84 | 34,591.84 |
| 177 | 2.15.5 | TPI WITNESS | 2h | 2019-01-14 | 2019-01-14 | 176SS+8h | 2018-07-24 | 2018-07-24 | 2h | 0d |  |  | Fitter | 48h | 3,300 | 3,300 |
| 178 | 2.16 | **ACID CLEANING AND PICKLING** | 3.5d | 2018-06-22 | 2018-07-03 |  | 2018-06-22 | 2018-07-03 | 3.5d | 69.5d |  |  |  | 240h | 12,900 | 12,900 |
| 179 | 2.16.1 | PREPARATION FOR ACID CLEANING | 4h | 2018-06-22 | 2018-06-25 | 172SS+8h | 2018-06-22 | 2018-06-25 | 4h | 69.5d | 0d |  | Helper [200%] | 192h | 9,600 | 9,600 |
| 180 | 2.16.2 | ACID CLEANING AND PICKLING | 3d | 2018-06-26 | 2018-07-03 | 179SS+8h | 2018-06-26 | 2018-07-03 | 3d | 69.5d | 0d |  |  |  |  |  |
| 181 | 2.16.3 | TPI WITNESS | 2h | 2018-06-26 | 2018-06-27 | 180SS+8h | 2018-06-26 | 2018-06-27 | 2h | 70d | 0d |  | Fitter | 48h | 3,300 | 3,300 |
| 182 | 2.16.4 | DESPATCH CLEARANCE | 0.5d | 2018-06-28 | 2018-06-28 | 181SS+8h | 2018-06-28 | 2018-06-28 | 0.5d | 70d | 0d |  |  |  |  |  |
| 183 | 2.17 | DESPATCH | 1d | 2018-06-28 | 2018-07-02 | 182SS+8h | 2018-06-28 | 2018-07-02 | 1d | 70d |  |  | Store | 16h |  |  |

Notes:
- 167: 0.69Kg/m
- 171: SC
- 173: SC
- 180: SC
