# 4209-Dangote

Schedule from MS Project, 2017-08-22 to 2018-05-31, A marks actual dates.

## Calendars

- TEAM_Stand_Calendar: Mon-Sat 08:30-12:30, 13:30-17:30; Sun off. Exceptions (off unless hours are given): 2017-01-13 to 2023-08-12 (2nd Sat, recurring), 2017-01-26 to 2036-01-26 (Republic Day, recurring), 2017-01-27 to 2023-08-26 (4th Sat, recurring), 2017-05-01 to 2036-05-01 (May Day, recurring), 2017-08-15 to 2036-08-15 (Independence Day, recurring), 2017-08-25 (Vinakya Chaturthi'2017), 2017-09-29 (Ayudha Pooja'2017), 2017-10-02 to 2036-10-02 (Gandhi Jayanti, recurring), 2017-10-18 (Deepavali'2017), 2018-01-15 (Thiruvalluvar Day'2018).

## Resources

| Resource |
| --- |
| Client |
| Draftman |
| HOD |
| Marketing |
| PPC Engineer |
| QC Engineer |
| Design Engineer |
| Purchase Engineer |
| Production Engineer |
| Finance |

## Schedule

| ID | WBS | Task | Duration | Start | Finish | Predecessors | Complete | Remaining | Baseline start | Baseline finish | Baseline duration | Total slack | Constraint | Resources | Work | Actual work |
| --- | --- | --- | --- | --- | --- | --- | --- | --- | --- | --- | --- | --- | --- | --- | --- | --- |
| 1 | 1 | **Project Initation** | 54d | 2017-08-22 A | 2017-11-02 A |  | 100% |  | 2017-08-22 | 2017-11-02 | 54d |  |  |  | 160h | 160h |
| 2 | 1.1 | PR-6455-Heat Exchanger-Dangote | 1d | 2017-08-22 A | 2017-08-22 A |  | 100% |  | 2017-08-22 | 2017-08-22 | 1d |  |  | Marketing | 8h | 8h |
| 3 | 1.2 | GPC Signed | 1d | 2017-08-22 A | 2017-08-22 A |  | 100% |  | 2017-08-22 | 2017-08-22 | 1d |  |  | Marketing | 8h | 8h |
| 4 | 1.3 | WO date | 1d | 2017-08-23 A | 2017-08-23 A | 3 | 100% |  | 2017-08-23 | 2017-08-23 | 1d |  |  | Marketing | 8h | 8h |
| 5 | 1.4 | CRM | 2d | 2017-08-22 A | 2017-08-23 A |  | 100% |  | 2017-08-22 | 2017-08-23 | 2d |  |  | Design Engineer; Finance; HOD; PPC Engineer; Production Engineer; Purchase Engineer; QC Engineer; Marketing | 128h | 128h |
| 6 | 1.5 | Client Approval for Shop | 1d | 2017-11-02 A | 2017-11-02 A | 3FS+52d | 100% |  | 2017-11-02 | 2017-11-02 | 1d |  |  | Client | 8h | 8h |
| 7 | 2 | **Design** | 141.94d | 2017-11-03 A | 2018-05-04 |  | 81% | 27.6d | 2017-11-03 | 2018-05-03 | 140.75d | 154.06d |  |  | 1551h | 1545h |
| 8 | 2.1 | Drawing Submission For Approval | 20d | 2017-11-03 A | 2017-11-28 A | 5, 6 | 100% |  | 2017-11-03 | 2017-11-28 | 20d |  | start no earlier than 2017-08-07 | Draftman [600%]; Design Engineer [300%] | 1440h | 1440h |
| 9 | 2.2 | Drawing Approval From Client | 90.75d | 2018-01-05 A | 2018-05-03 | 8FS+120d | 75% | 22.69d | 2018-01-05 | 2018-05-03 | 90.75d | 155.25d |  | Design Engineer | 24h | 18h |
| 10 | 2.3 | PBG Submission | 4.94d | 2018-04-27 A | 2018-05-04 A | 2FS+190d | 100% |  | 2018-04-27 | 2018-04-30 | 2d |  |  | Marketing; Finance | 79h | 79h |
| 11 | 2.4 | Advance License | 1d | 2018-04-04 A | 2018-04-04 A | 4FS+170d | 100% |  | 2018-04-04 | 2018-04-04 | 1d |  |  | Finance | 8h | 8h |
| 12 | 3 | **PR & Material Ordering** | 129d | 2017-12-16 A | 2018-05-31 |  | 97% | 3.47d | 2017-12-16 | 2018-05-07 | 110d | 133d |  |  | 631.5h | 615.5h |
| 13 | 3.1 | **PR Issue** | 7d | 2018-01-05 A | 2018-01-12 A |  | 100% |  | 2018-01-05 | 2018-01-12 | 7d |  |  |  | 336h | 336h |
| 14 | 3.1.1 | Plates | 3.94d | 2018-01-05 A | 2018-01-09 A | 8FS+30d | 100% |  | 2018-01-05 | 2018-01-09 | 3.94d |  |  | PPC Engineer [200%] | 32h | 32h |
| 15 | 3.1.2 | Plates | 2.94d | 2018-01-05 A | 2018-01-08 A | 8FS+30d | 100% |  | 2018-01-05 | 2018-01-08 | 2.94d |  |  | PPC Engineer [200%] | 32h | 32h |
| 16 | 3.1.3 | Non STD forgings | 7d | 2018-01-05 A | 2018-01-12 A | 8FS+30d | 100% |  | 2018-01-05 | 2018-01-12 | 7d |  |  | PPC Engineer [300%] | 32h | 32h |
| 17 | 3.1.4 | Nozzle Pipe | 2d | 2018-01-05 A | 2018-01-06 A | 8FS+30d | 100% |  | 2018-01-05 | 2018-01-06 | 2d |  |  | PPC Engineer [200%] | 32h | 32h |
| 18 | 3.1.5 | Nozzle Pipe | 2d | 2018-01-05 A | 2018-01-06 A | 8FS+30d | 100% |  | 2018-01-05 | 2018-01-06 | 2d |  |  | PPC Engineer [200%] | 32h | 32h |
| 19 | 3.1.6 | STD FLNG | 2d | 2018-01-05 A | 2018-01-06 A | 8FS+30d | 100% |  | 2018-01-05 | 2018-01-06 | 2d |  |  | PPC Engineer [200%] | 32h | 32h |
| 20 | 3.1.7 | Tie Rod | 3d | 2018-01-05 A | 2018-01-08 A | 8FS+30d | 100% |  | 2018-01-05 | 2018-01-08 | 3d |  |  | PPC Engineer [200%] | 48h | 48h |
| 21 | 3.1.8 | Tubes & Spacer Tubes | 4d | 2018-01-05 A | 2018-01-09 A | 8FS+30d | 100% |  | 2018-01-05 | 2018-01-09 | 4d |  |  | PPC Engineer [200%] | 64h | 64h |
| 22 | 3.1.9 | Spacer Pipes | 2d | 2018-01-05 A | 2018-01-06 A | 8FS+30d | 100% |  | 2018-01-05 | 2018-01-06 | 2d |  |  | PPC Engineer [200%] | 32h | 32h |
| 23 | 3.2 | **Material Ordering** | 129d | 2017-12-16 A | 2018-05-31 |  | 96% | 5.68d | 2017-12-16 | 2018-05-07 | 110d | 133d |  |  | 295.5h | 279.5h |
| 24 | 3.2.1 | Plates - CS | 1.94d | 2018-03-07 A | 2018-03-08 A | 14 | 100% |  | 2018-03-07 | 2018-03-08 | 1.94d |  |  | Purchase Engineer | 15.5h | 15.5h |
| 25 | 3.2.2 | Plates - LAS | 1.94d | 2018-03-26 A | 2018-03-27 A | 15FS+62d | 100% |  | 2018-03-26 | 2018-03-27 | 1.94d |  |  | Purchase Engineer |  |  |
| 26 | 3.2.3 | Non STD forgings | 1.94d | 2018-03-19 A | 2018-03-20 A | 16 | 100% |  | 2018-03-19 | 2018-03-20 | 1.94d |  |  | Purchase Engineer | 15.5h | 15.5h |
| 27 | 3.2.4 | Non STD forgings | 1.94d | 2018-03-19 A | 2018-03-20 A | 16 | 100% |  | 2018-03-19 | 2018-03-20 | 1.94d |  |  | Purchase Engineer | 15.5h | 15.5h |
| 28 | 3.2.5 | Non STD forgings | 1.94d | 2018-03-19 A | 2018-03-20 A | 16 | 100% |  | 2018-03-19 | 2018-03-20 | 1.94d |  |  | Purchase Engineer | 15.5h | 15.5h |
| 29 | 3.2.6 | Non STD forgings | 1.94d | 2018-03-19 A | 2018-03-20 A | 16 | 100% |  | 2018-03-19 | 2018-03-20 | 1.94d |  |  | Purchase Engineer | 15.5h | 15.5h |
| 30 | 3.2.7 | LWNRF | 1.94d | 2018-03-19 A | 2018-03-20 A | 16FS+60d | 100% |  | 2018-03-19 | 2018-03-20 | 1.94d |  |  | Purchase Engineer | 8h | 8h |
| 31 | 3.2.8 | LWNRF | 1.94d | 2018-03-19 A | 2018-03-20 A | 16FS+60d | 100% |  | 2018-03-19 | 2018-03-20 | 1.94d |  |  | Purchase Engineer | 8h | 8h |
| 32 | 3.2.9 | LWNRF | 1.94d | 2018-03-19 A | 2018-03-20 A | 16FS+60d | 100% |  | 2018-03-19 | 2018-03-20 | 1.94d |  |  | Purchase Engineer | 15.5h | 15.5h |
| 33 | 3.2.10 | Nozzle Pipe | 4.94d | 2018-04-27 A | 2018-05-04 A | 17FS+85d | 100% |  | 2018-04-27 | 2018-04-27 | 1d |  |  | Purchase Engineer | 39.5h | 39.5h |
| 34 | 3.2.11 | Nozzle Pipe | 4.94d | 2018-04-27 A | 2018-05-04 A | 18FS+85d | 100% |  | 2018-04-27 | 2018-04-27 | 1d |  |  | Purchase Engineer | 39.5h | 39.5h |
| 35 | 3.2.12 | SRN | 1.94d | 2018-03-19 A | 2018-03-20 A | 16 | 100% |  | 2018-03-19 | 2018-03-20 | 1.94d |  |  | Purchase Engineer | 15.5h | 15.5h |
| 36 | 3.2.13 | SRN | 1.94d | 2018-03-19 A | 2018-03-20 A | 20 | 100% |  | 2018-03-19 | 2018-03-20 | 1.94d |  |  | Purchase Engineer | 15.5h | 15.5h |
| 37 | 3.2.14 | STD FLNG | 0.94d | 2018-01-08 A | 2018-01-08 A | 21 | 100% |  | 2018-01-08 | 2018-01-08 | 0.94d |  |  | Purchase Engineer | 7.5h | 7.5h |
| 38 | 3.2.15 | STD FLNG | 0.94d | 2018-01-08 A | 2018-01-08 A | 19 | 100% |  | 2018-01-08 | 2018-01-08 | 0.94d |  |  | Purchase Engineer | 7.5h | 7.5h |
| 39 | 3.2.16 | STD FLNG | 0.94d | 2018-01-08 A | 2018-01-08 A | 19 | 100% |  | 2018-01-08 | 2018-01-08 | 0.94d |  |  | Purchase Engineer | 7.5h | 7.5h |
| 40 | 3.2.17 | STD FLNG | 1.94d | 2018-01-08 A | 2018-01-09 A | 19 | 100% |  | 2018-01-08 | 2018-01-09 | 1.94d |  |  | Purchase Engineer | 15.5h | 15.5h |
| 41 | 3.2.18 | Tie Rod | 1d | 2018-05-31 | 2018-05-31 | 20FS+109d |  |  | 2018-05-07 | 2018-05-07 | 1d | 133d |  | Purchase Engineer | 8h |  |
| 42 | 3.2.19 | Tie Rod | 0.94d | 2018-02-01 A | 2018-02-01 A | 20FS+90d | 100% |  | 2018-02-01 | 2018-02-01 | 0.94d |  |  | Purchase Engineer |  |  |
| 43 | 3.2.20 | Tie Rod | 0.94d | 2018-02-09 A | 2018-02-09 A | 20FS+90d | 100% |  | 2018-02-09 | 2018-02-09 | 0.94d |  |  | Purchase Engineer |  |  |
| 44 | 3.2.21 | Seal Rod | 0.94d | 2018-02-20 A | 2018-02-20 A | 20FS+90d | 100% |  | 2018-02-20 | 2018-02-20 | 0.94d |  |  | Purchase Engineer |  |  |
| 45 | 3.2.22 | Rod | 0.94d | 2018-01-29 A | 2018-01-29 A | 20FS+90d | 100% |  | 2018-01-29 | 2018-01-29 | 0.94d |  |  | Purchase Engineer |  |  |
| 46 | 3.2.23 | Tubes & Spacer Tubes | 0.94d | 2017-12-16 A | 2017-12-16 A | 21 | 100% |  | 2017-12-16 | 2017-12-16 | 0.94d |  |  | Purchase Engineer | 7.5h | 7.5h |
| 47 | 3.2.24 | Tubes & Spacer Tubes | 0.94d | 2017-12-16 A | 2017-12-16 A | 21 | 100% |  | 2017-12-16 | 2017-12-16 | 0.94d |  |  | Purchase Engineer | 7.5h | 7.5h |
| 48 | 3.2.25 | Tubes | 0.94d | 2017-12-16 A | 2017-12-16 A | 21 | 100% |  | 2017-12-16 | 2017-12-16 | 0.94d |  |  | Purchase Engineer | 7.5h | 7.5h |
| 49 | 3.2.26 | Spacer Pipes | 1d | 2018-05-30 | 2018-05-30 | 22FS+109d |  |  | 2018-05-05 | 2018-05-05 | 1d | 134d |  | Purchase Engineer | 8h |  |
| 50 | 3.2.27 | Spacer Tubes | 0.94d | 2017-12-16 A | 2017-12-16 A | 21FS+90d | 100% |  | 2017-12-16 | 2017-12-16 | 0.94d |  |  | Purchase Engineer |  |  |

Notes:
- 14: SA 516 GR 70
- 15: SA 387 Gr.11 CL.1
- 16: SA 266 CL.4 SA 266 GR.4 SA 336 F11 CL.2 SA 350 LF2 SA 105 SA 182 F11 CL.2 SA 336 F11 CL.2 SA 105 SA 182 F11 CL.1
- 17: SA 333 GR.6
- 18: SA 106 Gr.B
- 19: SA 182 F11 CL.2 SA 105 SA 182 F11 CL.1 SA 350 LF.2
- 20: 1.25Cr-0.5Mo SA 36 IS 2062 SA 36 SS 304
- 21: SA 213 T11 SA 179 SA 334 Gr.6
- 22: SA 53
- 24: SA 516 GR 70
- 25: SA 387 Gr.11 CL.1
- 26: SA 266 CL.4
- 27: SA 266 GR.4
- 28: SA 336 F11 CL.2
- 29: SA 350 LF2
- 30: SA 105
- 31: SA 182 F11 CL.2
- 32: SA 182 F11 CL.1
- 33: SA 333 GR.6
- 34: SA 106 Gr.B
- 35: SA 336 F11 CL.2
- 36: SA 105
- 37: SA 182 F11 CL.2
- 38: SA 105
- 39: SA 182 F11 CL.1
- 40: SA 350 LF.2
- 41: 1.25Cr-0.5Mo
- 42: SA 36
- 43: IS 2062
- 44: SA 36
- 45: SS 304
- 46: SA 213 T11
- 47: SA 179
- 48: SA 334 Gr.6
- 49: SA 53
- 50: IS 1239
