# 4209 E&J

Schedule from MS Project, 2018-04-09 to 2018-08-31, 16 hours a day, costs in ₹, A marks actual dates.

## Calendars

- TEAM_Stand_Calendar: Mon-Sat 08:30-12:30, 13:30-17:30; Sun off. Exceptions (off unless hours are given): 2017-01-13 to 2023-08-12 (2nd Sat, recurring), 2017-01-26 to 2036-01-26 (Republic Day, recurring), 2017-01-27 to 2023-08-26 (4th Sat, recurring), 2017-05-01 to 2036-05-01 (May Day, recurring), 2017-08-15 to 2036-08-15 (Independence Day, recurring), 2017-10-02 to 2036-10-02 (Gandhi Jayanti, recurring).
- TEAM_2Shift_Calendar-1: Mon-Sat 06:00-22:00; Sun off. Exceptions (off unless hours are given): 2017-01-13 to 2023-02-11 (2nd Sat, recurring), 2017-01-26 to 2036-01-26 (Republic Day, recurring), 2017-01-27 to 2023-08-26 (4th Sat, recurring), 2017-05-01 to 2036-05-01 (May Day, recurring), 2017-08-15 to 2036-08-15 (Indepdence Day, recurring), 2017-10-02 to 2036-10-02 (Gandhi Jayanti, recurring).

## Resources

| Resource | Rate |
| --- | --- |
| Fitter | 68.75 |
| Helper | 50 |
| Gas Cutter | 68.75 |
| SMAW Welder | 68.75 |
| Grinder | 56.25 |
| QC Engineer |  |
| Driller | 68.75 |
| Lathe Operator | 120 |
| TIG Welder | 125 |
| SC Radiography (Work) |  |
| Painter |  |
| Forging Non-Std (Cost) |  |
| Forging Std (Cost) |  |
| Pipe (Cost) |  |
| Plate (Cost) |  |
| Rod (Cost) |  |
| Tube (Cost) |  |
| Tube Sheet (Cost) |  |
| Finance |  |
| PMO Support |  |
| PM |  |
| SC (Work) |  |
| Store |  |

## Schedule

| ID | WBS | Task | Duration | Start | Finish | Predecessors | Complete | Remaining | Baseline start | Baseline finish | Baseline duration | Total slack | Free slack | Calendar | Resources | Work | Cost | Baseline cost |
| --- | --- | --- | --- | --- | --- | --- | --- | --- | --- | --- | --- | --- | --- | --- | --- | --- | --- | --- |
| 1 | 1 | **161-EE-0009** | 55d | 2018-04-09 06:00 A | 2018-08-29 07:25 |  | 1% | 54.63d | 2018-04-09 06:00 | 2018-08-14 18:48 | 50d | 1.5d |  |  |  | 2837.52h | 100,937.76 | 100,937.76 |
| 2 | 1.1 | Raw material receipt | 1d | 2018-04-09 06:00 A | 2018-04-09 22:00 A |  | 100% |  | 2018-04-09 06:00 | 2018-04-09 22:00 | 1d |  |  | TEAM_2Shift_Calendar-1 |  |  |  |  |
| 3 | 1.2 | **Dish Forming - Od 10T X 407** | 25.03d | 2018-06-07 06:00 | 2018-07-09 06:30 |  |  |  | 2018-05-14 06:00 | 2018-06-14 06:30 | 25.03d | 2.47d | 0d | TEAM_2Shift_Calendar-1 |  | 267h | 5,509.38 | 5,509.38 |
| 4 | 1.2.1 | Bar Dish Blank Issuence | 6.5h | 2018-06-07 06:00 | 2018-06-07 12:30 | 2FS+45d |  |  | 2018-05-14 06:00 | 2018-05-14 12:30 | 6.5h | 2.47d | 0d | TEAM_2Shift_Calendar-1 | Plate (Cost) [0.1%]; Store | 4h |  |  |
| 5 | 1.2.2 | Bar-Dish Blank Marking10TXOD 404 | 0.5h | 2018-06-07 12:30 | 2018-06-07 13:00 | 4 |  |  | 2018-05-14 12:30 | 2018-05-14 13:00 | 0.5h | 2.47d | 0d | TEAM_2Shift_Calendar-1 | Helper; Fitter | 1h | 59.38 | 59.38 |
| 6 | 1.2.3 | Bar-Dish Blank Marking Inspection | 4h | 2018-06-07 13:00 | 2018-06-07 17:00 | 5 |  |  | 2018-05-14 13:00 | 2018-05-14 17:00 | 4h | 2.47d | 0d | TEAM_2Shift_Calendar-1 | Helper; Fitter | 8h | 475 | 475 |
| 7 | 1.2.4 | Bar-Dish Blank Cutting | 5h | 2018-06-07 17:00 | 2018-06-07 22:00 | 6 |  |  | 2018-05-14 17:00 | 2018-05-14 22:00 | 5h | 2.47d | 0.16d | TEAM_2Shift_Calendar-1 | Helper; Gas Cutter | 10h | 593.75 | 593.75 |
| 8 | 1.2.5 | Bar-Dish Forming | 7d | 2018-06-08 08:30 | 2018-06-26 17:30 | 7 |  |  | 2018-05-15 08:30 | 2018-05-31 17:30 | 7d | 1.25d | 0d |  | SC (Work) | 112h |  |  |
| 9 | 1.2.6 | Profile Insp | 4h | 2018-06-26 17:30 | 2018-06-26 21:30 | 8 |  |  | 2018-05-31 17:30 | 2018-05-31 21:30 | 4h | 2.72d | 0d | TEAM_2Shift_Calendar-1 | Helper; Fitter | 8h | 475 | 475 |
| 10 | 1.2.7 | Heat Treatment Preparation | 1d | 2018-06-26 21:30 | 2018-06-27 21:30 | 9 |  |  | 2018-05-31 21:30 | 2018-06-01 21:30 | 1d | 2.72d | 0.19d | TEAM_2Shift_Calendar-1 | SMAW Welder; Fitter | 32h | 2,200 | 2,200 |
| 11 | 1.2.8 | Stress Releiving- Sub Cont | 4d | 2018-06-28 08:30 | 2018-07-06 17:30 | 10 |  |  | 2018-06-02 08:30 | 2018-06-12 17:30 | 4d | 1.47d | 0d |  | SC (Work) | 64h |  |  |
| 12 | 1.2.9 | Removal Of Spiders | 3h | 2018-07-06 17:30 | 2018-07-06 20:30 | 11 |  |  | 2018-06-12 17:30 | 2018-06-12 20:30 | 3h | 2.97d | 0d | TEAM_2Shift_Calendar-1 | Helper; Fitter | 6h | 356.25 | 356.25 |
| 13 | 1.2.10 | Surface Preparation | 4h | 2018-07-06 20:30 | 2018-07-07 08:30 | 12 |  |  | 2018-06-12 20:30 | 2018-06-13 08:30 | 4h | 2.97d | 0d | TEAM_2Shift_Calendar-1 | Grinder | 4h | 225 | 225 |
| 14 | 1.2.11 | Inspection | 3h | 2018-07-07 08:30 | 2018-07-07 11:30 | 13 |  |  | 2018-06-13 08:30 | 2018-06-13 11:30 | 3h | 2.97d | 0d | TEAM_2Shift_Calendar-1 | Fitter | 3h | 206.25 | 206.25 |
| 15 | 1.2.12 | TPI Inspection | 4h | 2018-07-07 11:30 | 2018-07-07 15:30 | 14 |  |  | 2018-06-13 11:30 | 2018-06-13 15:30 | 4h | 2.97d | 0d | TEAM_2Shift_Calendar-1 | Fitter | 4h | 275 | 275 |
| 16 | 1.2.13 | Sf Marking | 2h | 2018-07-07 15:30 | 2018-07-07 17:30 | 15 |  |  | 2018-06-13 15:30 | 2018-06-13 17:30 | 2h | 2.97d | 0d | TEAM_2Shift_Calendar-1 | Helper; Fitter | 4h | 237.5 | 237.5 |
| 17 | 1.2.14 | Sf Cutting | 2h | 2018-07-07 17:30 | 2018-07-07 19:30 | 16 |  |  | 2018-06-13 17:30 | 2018-06-13 19:30 | 2h | 2.97d | 0d | TEAM_2Shift_Calendar-1 | Helper; Gas Cutter | 4h | 237.5 | 237.5 |
| 18 | 1.2.15 | Sf Gridning & EP | 3h | 2018-07-07 19:30 | 2018-07-09 06:30 | 17 |  |  | 2018-06-13 19:30 | 2018-06-14 06:30 | 3h | 2.97d |  | TEAM_2Shift_Calendar-1 | Grinder | 3h | 168.75 | 168.75 |
| 19 | 1.3 | **Dish Forming - Od** | 26.03d | 2018-06-07 06:00 | 2018-07-10 06:30 |  |  |  | 2018-05-14 06:00 | 2018-06-15 06:30 | 26.03d | 40.22d |  | TEAM_2Shift_Calendar-1 |  | 251h | 3,309.38 | 3,309.38 |
| 20 | 1.3.1 | Bar Dish Blank Issuence | 6.5h | 2018-06-07 06:00 | 2018-06-07 12:30 | 2FS+45d |  |  | 2018-05-14 06:00 | 2018-05-14 12:30 | 6.5h | 40.22d | 0d | TEAM_2Shift_Calendar-1 | Plate (Cost) [0.1%]; Store | 4h |  |  |
| 21 | 1.3.2 | Bar-Dish Blank Marking10TXOD 404 | 0.5h | 2018-06-07 12:30 | 2018-06-07 13:00 | 20 |  |  | 2018-05-14 12:30 | 2018-05-14 13:00 | 0.5h | 40.22d | 0d | TEAM_2Shift_Calendar-1 | Helper; Fitter | 1h | 59.38 | 59.38 |
| 22 | 1.3.3 | Bar-Dish Blank Marking Inspection | 4h | 2018-06-07 13:00 | 2018-06-07 17:00 | 21 |  |  | 2018-05-14 13:00 | 2018-05-14 17:00 | 4h | 40.22d | 0d | TEAM_2Shift_Calendar-1 | Helper; Fitter | 8h | 475 | 475 |
| 23 | 1.3.4 | Bar-Dish Blank Cutting | 5h | 2018-06-07 17:00 | 2018-06-07 22:00 | 22 |  |  | 2018-05-14 17:00 | 2018-05-14 22:00 | 5h | 40.22d | 0.16d | TEAM_2Shift_Calendar-1 | Helper; Gas Cutter | 10h | 593.75 | 593.75 |
| 24 | 1.3.5 | Bar-Dish Forming | 7d | 2018-06-08 08:30 | 2018-06-26 17:30 | 23 |  |  | 2018-05-15 08:30 | 2018-05-31 17:30 | 7d | 20.06d | 0d |  | SC (Work) | 112h |  |  |
| 25 | 1.3.6 | Profile Insp | 4h | 2018-06-26 17:30 | 2018-06-26 21:30 | 24 |  |  | 2018-05-31 17:30 | 2018-05-31 21:30 | 4h | 40.5d | 0.19d | TEAM_2Shift_Calendar-1 | Helper; Fitter | 8h | 475 | 475 |
| 26 | 1.3.7 | Heat Treatment Preparation | 1d | 2018-06-27 08:30 | 2018-06-28 17:30 | 25 |  |  | 2018-06-01 08:30 | 2018-06-02 17:30 | 1d | 20.25d | 0d |  | SC (Work) | 16h |  |  |
| 27 | 1.3.8 | Stress Releiving- Sub Cont | 4d | 2018-06-29 08:30 | 2018-07-07 17:30 | 26 |  |  | 2018-06-04 08:30 | 2018-06-13 17:30 | 4d | 20.25d | 0d |  | SC (Work) | 64h |  |  |
| 28 | 1.3.9 | Removal Of Spiders | 3h | 2018-07-07 17:30 | 2018-07-07 20:30 | 27 |  |  | 2018-06-13 17:30 | 2018-06-13 20:30 | 3h | 40.69d | 0d | TEAM_2Shift_Calendar-1 | Helper; Fitter | 6h | 356.25 | 356.25 |
| 29 | 1.3.10 | Surface Preparation | 4h | 2018-07-07 20:30 | 2018-07-09 08:30 | 28 |  |  | 2018-06-13 20:30 | 2018-06-14 08:30 | 4h | 40.69d | 0d | TEAM_2Shift_Calendar-1 | Grinder | 4h | 225 | 225 |
| 30 | 1.3.11 | Inspection | 3h | 2018-07-09 08:30 | 2018-07-09 11:30 | 29 |  |  | 2018-06-14 08:30 | 2018-06-14 11:30 | 3h | 40.69d | 0d | TEAM_2Shift_Calendar-1 | Fitter | 3h | 206.25 | 206.25 |
| 31 | 1.3.12 | TPI Inspection | 4h | 2018-07-09 11:30 | 2018-07-09 15:30 | 30 |  |  | 2018-06-14 11:30 | 2018-06-14 15:30 | 4h | 40.69d | 0d | TEAM_2Shift_Calendar-1 | Fitter | 4h | 275 | 275 |
| 32 | 1.3.13 | Sf Marking | 2h | 2018-07-09 15:30 | 2018-07-09 17:30 | 31 |  |  | 2018-06-14 15:30 | 2018-06-14 17:30 | 2h | 40.69d | 0d | TEAM_2Shift_Calendar-1 | Helper; Fitter | 4h | 237.5 | 237.5 |
| 33 | 1.3.14 | Sf Cutting | 2h | 2018-07-09 17:30 | 2018-07-09 19:30 | 32 |  |  | 2018-06-14 17:30 | 2018-06-14 19:30 | 2h | 40.69d | 0d | TEAM_2Shift_Calendar-1 | Helper; Gas Cutter | 4h | 237.5 | 237.5 |
| 34 | 1.3.15 | Sf Gridning & EP | 3h | 2018-07-09 19:30 | 2018-07-10 06:30 | 33 |  |  | 2018-06-14 19:30 | 2018-06-15 06:30 | 3h | 40.69d |  | TEAM_2Shift_Calendar-1 | Grinder | 3h | 168.75 | 168.75 |

| ID | WBS | Task | Type | Duration | Start | Finish | Predecessors | Baseline start | Baseline finish | Baseline duration | Total slack | Free slack | Calendar | Resources | Work | Cost | Baseline cost |
| --- | --- | --- | --- | --- | --- | --- | --- | --- | --- | --- | --- | --- | --- | --- | --- | --- | --- |
| 35 | 1.4 | **Tube Sheet** |  | 25.94d | 2018-06-20 06:00 | 2018-07-21 21:00 |  | 2018-06-12 06:00 | 2018-07-09 21:00 | 22.94d | 2.92d | 0d | TEAM_2Shift_Calendar-1 |  | 274h | 1,500 | 1,500 |
| 36 | 1.4.1 | **Tube Sheet Machining1 off 2** |  | 15.69d | 2018-06-25 06:00 | 2018-07-12 17:00 |  | 2018-06-12 06:00 | 2018-06-30 17:00 | 15.69d | 2.92d | 0d | TEAM_2Shift_Calendar-1 |  | 132h |  |  |
| 37 | 1.4.1.1 | Inward Inspection |  | 15.38d | 2018-06-25 06:00 | 2018-07-12 12:00 | 2FS+58d | 2018-06-12 06:00 | 2018-06-30 12:00 | 15.38d | 2.92d | 0d | TEAM_2Shift_Calendar-1 | Store; Tube Sheet (Cost) [0.1%]; QC Engineer | 128h |  |  |
| 38 | 1.4.1.2 | Tube Sheet M/C1/2 |  | 4h | 2018-07-12 12:00 | 2018-07-12 17:00 | 37 | 2018-06-30 12:00 | 2018-06-30 17:00 | 4h | 1.42d |  |  | SC (Work) | 4h |  |  |
| 39 | 1.4.2 | **Tube Sheet Drilling1 off 2** |  | 7.25d | 2018-07-12 17:00 | 2018-07-21 21:00 |  | 2018-06-30 17:00 | 2018-07-09 21:00 | 7.25d | 2.92d |  | TEAM_2Shift_Calendar-1 |  | 64h | 475 | 475 |
| 40 | 1.4.2.1 | Tube Sheet Drilling1/2 |  | 8h | 2018-07-12 17:00 | 2018-07-13 17:00 | 36 | 2018-06-30 17:00 | 2018-07-02 17:00 | 8h | 1.42d | 0d |  | SC (Work) | 8h |  |  |
| 41 | 1.4.2.2 | Exp Groove+Welding Groove1/2 |  | 3d | 2018-07-13 17:00 | 2018-07-21 17:00 | 40 | 2018-07-02 17:00 | 2018-07-09 17:00 | 3d | 1.42d | 0d |  | SC (Work) | 48h |  |  |
| 42 | 1.4.2.3 | Pass Partition Groove M/C1/2 | milestone | 0d | 2018-07-21 17:00 | 2018-07-21 17:00 | 41 | 2018-07-09 17:00 | 2018-07-09 17:00 | 0d | 1.42d | 0d |  | SC (Work) |  |  |  |
| 43 | 1.4.2.4 | Cleaning ,Go/No Go Check1/2 |  | 2h | 2018-07-21 17:00 | 2018-07-21 19:00 | 42 | 2018-07-09 17:00 | 2018-07-09 19:00 | 2h | 2.92d | 0d | TEAM_2Shift_Calendar-1 | Helper; Fitter | 4h | 237.5 | 237.5 |
| 44 | 1.4.2.5 | Final Inspection1/2 |  | 2h | 2018-07-21 19:00 | 2018-07-21 21:00 | 43 | 2018-07-09 19:00 | 2018-07-09 21:00 | 2h | 2.92d |  | TEAM_2Shift_Calendar-1 | Helper; Fitter | 4h | 237.5 | 237.5 |
| 45 | 1.4.3 | **Tube Sheet Machining2 off 2** |  | 0.56d | 2018-06-20 06:00 | 2018-06-20 15:00 |  | 2018-06-12 06:00 | 2018-06-12 15:00 | 0.56d | 10.92d | 0d | TEAM_2Shift_Calendar-1 |  | 12h | 550 | 550 |
| 46 | 1.4.3.1 | Inward Inspection |  | 4h | 2018-06-20 06:00 | 2018-06-20 10:00 | 2FS+55d | 2018-06-12 06:00 | 2018-06-12 10:00 | 4h | 10.92d | 0d | TEAM_2Shift_Calendar-1 | Tube Sheet (Cost) [0.1%]; Fitter [200%] | 8h | 550 | 550 |
| 47 | 1.4.3.2 | Tube Sheet M/C2/2 |  | 4h | 2018-06-20 10:00 | 2018-06-20 15:00 | 46 | 2018-06-12 10:00 | 2018-06-12 15:00 | 4h | 5.42d |  |  | SC (Work) | 4h |  |  |
| 48 | 1.4.4 | **Tube Sheet Drilling2 off 2** |  | 17.38d | 2018-06-20 15:00 | 2018-07-11 21:00 |  | 2018-06-12 15:00 | 2018-07-03 21:00 | 17.38d | 10.92d |  | TEAM_2Shift_Calendar-1 |  | 66h | 475 | 475 |
| 49 | 1.4.4.1 | Tube Sheet Drilling2/2 |  | 8h | 2018-06-20 15:00 | 2018-06-21 15:00 | 45 | 2018-06-12 15:00 | 2018-06-13 15:00 | 8h | 5.42d | 0d |  | SC (Work) | 8h |  |  |
| 50 | 1.4.4.2 | Exp Groove+Welding Groove2/2 |  | 3d | 2018-06-21 15:00 | 2018-06-29 15:00 | 49 | 2018-06-13 15:00 | 2018-06-20 15:00 | 3d | 5.42d | 0d |  | SC (Work) | 48h |  |  |
| 51 | 1.4.4.3 | Tie Rod, Pulling, Lifting Hole2/2 |  | 2h | 2018-06-29 15:00 | 2018-06-29 17:00 | 50 | 2018-06-20 15:00 | 2018-06-20 17:00 | 2h | 5.42d | 0d |  | SC (Work) | 2h |  |  |
| 52 | 1.4.4.4 | Cleaning ,Go/No Go Check2/2 |  | 2h | 2018-06-29 17:00 | 2018-06-29 19:00 | 51 | 2018-06-20 17:00 | 2018-06-20 19:00 | 2h | 10.92d | 0d | TEAM_2Shift_Calendar-1 | Helper; Fitter | 4h | 237.5 | 237.5 |
| 53 | 1.4.4.5 | Final Inspection2/2 |  | 2h | 2018-06-29 19:00 | 2018-06-29 21:00 | 52 | 2018-06-20 19:00 | 2018-06-20 21:00 | 2h | 10.92d | 0d | TEAM_2Shift_Calendar-1 | Helper; Fitter | 4h | 237.5 | 237.5 |
| 54 | 1.4.4.6 | Dummy Activity |  | 10d | 2018-06-29 21:00 | 2018-07-11 21:00 | 53 | 2018-06-20 21:00 | 2018-07-03 21:00 | 10d | 10.92d |  | TEAM_2Shift_Calendar-1 |  |  |  |  |
| 55 | 1.5 | **Nozzle Fab** |  | 1.62d | 2018-06-20 06:00 | 2018-06-21 16:00 |  | 2018-05-14 06:00 | 2018-05-15 16:00 | 1.62d | 55.09d |  | TEAM_2Shift_Calendar-1 |  | 242h | 14,284.38 | 14,284.38 |
| 56 | 1.5.1 | **Sh Nozzel Pipe Marking** |  | 0.19d | 2018-06-20 06:00 | 2018-06-20 09:00 |  | 2018-05-14 06:00 | 2018-05-14 09:00 | 0.19d | 55.69d |  | TEAM_2Shift_Calendar-1 |  | 10h | 593.75 | 593.75 |
| 57 | 1.5.1.1 | 3" NB - 2 Nos |  | 2h | 2018-06-20 06:00 | 2018-06-20 08:00 | 2FS+55d | 2018-05-14 06:00 | 2018-05-14 08:00 | 2h | 55.69d | 0d | TEAM_2Shift_Calendar-1 | Helper; Fitter | 4h | 237.5 | 237.5 |
| 58 | 1.5.1.2 | 2" NB - 2 Nos |  | 2h | 2018-06-20 06:00 | 2018-06-20 08:00 | 2FS+55d | 2018-05-14 06:00 | 2018-05-14 08:00 | 2h | 55.75d | 0d | TEAM_2Shift_Calendar-1 | Helper; Fitter | 4h | 237.5 | 237.5 |
| 59 | 1.5.1.3 | Inspection |  | 1h | 2018-06-20 08:00 | 2018-06-20 09:00 | 57, 58 | 2018-05-14 08:00 | 2018-05-14 09:00 | 1h | 56.53d |  | TEAM_2Shift_Calendar-1 | Helper; Fitter | 2h | 118.75 | 118.75 |

| ID | WBS | Task | Duration | Start | Finish | Predecessors | Baseline start | Baseline finish | Baseline duration | Total slack | Free slack | Calendar | Resources | Work | Cost | Baseline cost |
| --- | --- | --- | --- | --- | --- | --- | --- | --- | --- | --- | --- | --- | --- | --- | --- | --- |
| 60 | 1.5.2 | **Sh Nozzel Pipe Cutting** | 0.19d | 2018-06-20 08:00 | 2018-06-20 11:00 |  | 2018-05-14 08:00 | 2018-05-14 11:00 | 0.19d | 55.69d |  | TEAM_2Shift_Calendar-1 |  | 10h | 593.75 | 593.75 |
| 61 | 1.5.2.1 | 3" NB Mp Con - 2 Nos | 2h | 2018-06-20 08:00 | 2018-06-20 10:00 | 57 | 2018-05-14 08:00 | 2018-05-14 10:00 | 2h | 55.69d | 0d | TEAM_2Shift_Calendar-1 | Helper; Gas Cutter | 4h | 237.5 | 237.5 |
| 62 | 1.5.2.2 | 2" NB - 2 Nos | 2h | 2018-06-20 08:00 | 2018-06-20 10:00 | 58 | 2018-05-14 08:00 | 2018-05-14 10:00 | 2h | 55.75d | 0d | TEAM_2Shift_Calendar-1 | Helper; Gas Cutter | 4h | 237.5 | 237.5 |
| 63 | 1.5.2.3 | Inspection | 1h | 2018-06-20 10:00 | 2018-06-20 11:00 | 61, 62 | 2018-05-14 10:00 | 2018-05-14 11:00 | 1h | 56.41d |  | TEAM_2Shift_Calendar-1 | Helper; Gas Cutter | 2h | 118.75 | 118.75 |
| 64 | 1.5.3 | **Sh Nozzel Pipe EP** | 0.16d | 2018-06-20 10:00 | 2018-06-20 12:30 |  | 2018-05-14 10:00 | 2018-05-14 12:30 | 0.16d | 55.69d |  | TEAM_2Shift_Calendar-1 |  | 9h | 534.38 | 534.38 |
| 65 | 1.5.3.1 | 3" NB Mp Con - 2 Nos | 2h | 2018-06-20 10:00 | 2018-06-20 12:00 | 61 | 2018-05-14 10:00 | 2018-05-14 12:00 | 2h | 55.69d | 0d | TEAM_2Shift_Calendar-1 | Helper; Gas Cutter | 4h | 237.5 | 237.5 |
| 66 | 1.5.3.2 | 2" NB - 2 Nos | 2h | 2018-06-20 10:00 | 2018-06-20 12:00 | 62 | 2018-05-14 10:00 | 2018-05-14 12:00 | 2h | 55.75d | 0d | TEAM_2Shift_Calendar-1 | Helper; Gas Cutter | 4h | 237.5 | 237.5 |
| 67 | 1.5.3.3 | Inspection | 0.5h | 2018-06-20 12:00 | 2018-06-20 12:30 | 65, 66 | 2018-05-14 12:00 | 2018-05-14 12:30 | 0.5h | 56.31d |  | TEAM_2Shift_Calendar-1 | Helper; Gas Cutter | 1h | 59.38 | 59.38 |
| 68 | 1.5.4 | **Sh Noz+Flg Fiitup** | 0.16d | 2018-06-20 12:00 | 2018-06-20 14:30 |  | 2018-05-14 12:00 | 2018-05-14 14:30 | 0.16d | 55.69d |  | TEAM_2Shift_Calendar-1 |  | 18h | 1,153.13 | 1,153.13 |
| 69 | 1.5.4.1 | 3" NB Mp Con - 2 Nos | 2h | 2018-06-20 12:00 | 2018-06-20 14:00 | 65 | 2018-05-14 12:00 | 2018-05-14 14:00 | 2h | 55.69d | 0d | TEAM_2Shift_Calendar-1 | SMAW Welder; Helper; Fitter [200%] | 8h | 512.5 | 512.5 |
| 70 | 1.5.4.2 | 2" NB - 2 Nos | 2h | 2018-06-20 12:00 | 2018-06-20 14:00 | 66 | 2018-05-14 12:00 | 2018-05-14 14:00 | 2h | 55.75d | 0d | TEAM_2Shift_Calendar-1 | SMAW Welder; Helper; Fitter [200%] | 8h | 512.5 | 512.5 |
| 71 | 1.5.4.3 | Inspection | 0.5h | 2018-06-20 14:00 | 2018-06-20 14:30 | 69, 70 | 2018-05-14 14:00 | 2018-05-14 14:30 | 0.5h | 56.19d |  | TEAM_2Shift_Calendar-1 | SMAW Welder; Helper; Fitter [200%] | 2h | 128.13 | 128.13 |
| 72 | 1.5.5 | **Sh Nozzel Pipe+Flg Welding** | 0.16d | 2018-06-20 14:00 | 2018-06-20 16:30 |  | 2018-05-14 14:00 | 2018-05-14 16:30 | 0.16d | 55.69d |  | TEAM_2Shift_Calendar-1 |  | 7h | 415.62 | 415.62 |
| 73 | 1.5.5.1 | 3" NB Mp Con - 2 Nos | 2h | 2018-06-20 14:00 | 2018-06-20 16:00 | 69 | 2018-05-14 14:00 | 2018-05-14 16:00 | 2h | 55.69d | 0d | TEAM_2Shift_Calendar-1 | Helper; SMAW Welder | 4h | 237.5 | 237.5 |
| 74 | 1.5.5.2 | 2" NB - 2 Nos | 1h | 2018-06-20 14:00 | 2018-06-20 15:00 | 70 | 2018-05-14 14:00 | 2018-05-14 15:00 | 1h | 55.75d | 0d | TEAM_2Shift_Calendar-1 | Helper; SMAW Welder | 2h | 118.75 | 118.75 |
| 75 | 1.5.5.3 | Inspection | 0.5h | 2018-06-20 16:00 | 2018-06-20 16:30 | 73, 74 | 2018-05-14 16:00 | 2018-05-14 16:30 | 0.5h | 56.06d |  | TEAM_2Shift_Calendar-1 | Helper; SMAW Welder | 1h | 59.38 | 59.38 |
| 76 | 1.5.6 | **Sh Nozzel Pipe Profile Marking** | 0.22d | 2018-06-20 15:00 | 2018-06-20 18:30 |  | 2018-05-14 15:00 | 2018-05-14 18:30 | 0.22d | 55.75d |  | TEAM_2Shift_Calendar-1 |  | 9h | 534.38 | 534.38 |
| 77 | 1.5.6.1 | 3" NB Mp Con - 2 Nos | 2h | 2018-06-20 16:00 | 2018-06-20 18:00 | 73 | 2018-05-14 16:00 | 2018-05-14 18:00 | 2h | 55.69d | 0d | TEAM_2Shift_Calendar-1 | Helper; Fitter | 4h | 237.5 | 237.5 |
| 78 | 1.5.6.2 | 2" NB - 2 Nos | 2h | 2018-06-20 15:00 | 2018-06-20 17:00 | 74 | 2018-05-14 15:00 | 2018-05-14 17:00 | 2h | 55.75d | 0d | TEAM_2Shift_Calendar-1 | Helper; Fitter | 4h | 237.5 | 237.5 |
| 79 | 1.5.6.3 | Inspection | 0.5h | 2018-06-20 18:00 | 2018-06-20 18:30 | 77, 78 | 2018-05-14 18:00 | 2018-05-14 18:30 | 0.5h | 55.94d |  | TEAM_2Shift_Calendar-1 | Helper; Fitter | 1h | 59.38 | 59.38 |
| 80 | 1.5.7 | **Sh Nozzle Pipe Profile Cutting** | 0.22d | 2018-06-20 17:00 | 2018-06-20 20:30 |  | 2018-05-14 17:00 | 2018-05-14 20:30 | 0.22d | 55.75d |  | TEAM_2Shift_Calendar-1 |  | 9h | 478.12 | 478.12 |
| 81 | 1.5.7.1 | 3" NB Mp Con - 2 Nos | 2h | 2018-06-20 18:00 | 2018-06-20 20:00 | 77 | 2018-05-14 18:00 | 2018-05-14 20:00 | 2h | 55.69d | 0d | TEAM_2Shift_Calendar-1 | Helper; Grinder | 4h | 212.5 | 212.5 |
| 82 | 1.5.7.2 | 2" NB - 2 Nos | 2h | 2018-06-20 17:00 | 2018-06-20 19:00 | 78 | 2018-05-14 17:00 | 2018-05-14 19:00 | 2h | 55.75d | 0d | TEAM_2Shift_Calendar-1 | Helper; Grinder | 4h | 212.5 | 212.5 |
| 83 | 1.5.7.3 | Inspection | 0.5h | 2018-06-20 20:00 | 2018-06-20 20:30 | 81, 82 | 2018-05-14 20:00 | 2018-05-14 20:30 | 0.5h | 55.81d |  | TEAM_2Shift_Calendar-1 | Helper; Grinder | 1h | 53.12 | 53.12 |

| ID | WBS | Task | Duration | Start | Finish | Predecessors | Baseline start | Baseline finish | Baseline duration | Total slack | Free slack | Calendar | Resources | Work | Cost | Baseline cost |
| --- | --- | --- | --- | --- | --- | --- | --- | --- | --- | --- | --- | --- | --- | --- | --- | --- |
| 84 | 1.5.8 | **Sh Nozzle Pipe Profile EP** | 0.22d | 2018-06-20 19:00 | 2018-06-21 06:30 |  | 2018-05-14 19:00 | 2018-05-15 06:30 | 0.22d | 55.69d |  | TEAM_2Shift_Calendar-1 |  | 9h | 478.12 | 478.12 |
| 85 | 1.5.8.1 | 3" NB Mp Con - 2 Nos | 2h | 2018-06-20 20:00 | 2018-06-20 22:00 | 81 | 2018-05-14 20:00 | 2018-05-14 22:00 | 2h | 55.69d | 0d | TEAM_2Shift_Calendar-1 | Helper; Grinder | 4h | 212.5 | 212.5 |
| 86 | 1.5.8.2 | 2" NB - 2 Nos | 2h | 2018-06-20 19:00 | 2018-06-20 21:00 | 82 | 2018-05-14 19:00 | 2018-05-14 21:00 | 2h | 55.75d | 0.06d | TEAM_2Shift_Calendar-1 | Helper; Grinder | 4h | 212.5 | 212.5 |
| 87 | 1.5.8.3 | Inspection | 0.5h | 2018-06-21 06:00 | 2018-06-21 06:30 | 85, 86 | 2018-05-15 06:00 | 2018-05-15 06:30 | 0.5h | 55.69d |  | TEAM_2Shift_Calendar-1 | Helper; Grinder | 1h | 53.12 | 53.12 |
| 88 | 1.5.9 | **Ch Nozzel Pipe Marking** | 0.25d | 2018-06-20 06:00 | 2018-06-20 10:00 |  | 2018-05-14 06:00 | 2018-05-14 10:00 | 0.25d | 55.09d |  | TEAM_2Shift_Calendar-1 |  | 18h | 1,068.75 | 1,068.75 |
| 89 | 1.5.9.1 | 3" Nozzle | 2h | 2018-06-20 06:00 | 2018-06-20 08:00 | 2FS+55d | 2018-05-14 06:00 | 2018-05-14 08:00 | 2h | 55.47d | 0d | TEAM_2Shift_Calendar-1 | Helper; Fitter | 4h | 237.5 | 237.5 |
| 90 | 1.5.9.2 | 1.5" NB Mp Con - 4 Nos | 3h | 2018-06-20 06:00 | 2018-06-20 09:00 | 2FS+55d | 2018-05-14 06:00 | 2018-05-14 09:00 | 3h | 55.09d | 0d | TEAM_2Shift_Calendar-1 | Helper; Fitter | 6h | 356.25 | 356.25 |
| 91 | 1.5.9.3 | 2" NB Mp Con - 4 Nos | 3h | 2018-06-20 06:00 | 2018-06-20 09:00 | 2FS+55d | 2018-05-14 06:00 | 2018-05-14 09:00 | 3h | 55.44d | 0d | TEAM_2Shift_Calendar-1 | Helper; Fitter | 6h | 356.25 | 356.25 |
| 92 | 1.5.9.4 | Inspection | 1h | 2018-06-20 09:00 | 2018-06-20 10:00 | 90, 91 | 2018-05-14 09:00 | 2018-05-14 10:00 | 1h | 56.47d |  | TEAM_2Shift_Calendar-1 | Helper; Fitter | 2h | 118.75 | 118.75 |
| 93 | 1.5.10 | **Ch Nozzel Pipe Cutting** | 0.31d | 2018-06-20 08:00 | 2018-06-20 13:00 |  | 2018-05-14 08:00 | 2018-05-14 13:00 | 0.31d | 55.16d |  | TEAM_2Shift_Calendar-1 |  | 13h | 771.88 | 771.88 |
| 94 | 1.5.10.1 | 3" Nozzle | 2h | 2018-06-20 08:00 | 2018-06-20 10:00 | 89 | 2018-05-14 08:00 | 2018-05-14 10:00 | 2h | 55.47d | 0d | TEAM_2Shift_Calendar-1 | Helper; Gas Cutter | 4h | 237.5 | 237.5 |
| 95 | 1.5.10.2 | 1.5" NB Mp Con - 4 Nos | 3h | 2018-06-20 09:00 | 2018-06-20 12:00 | 90 | 2018-05-14 09:00 | 2018-05-14 12:00 | 3h | 55.09d | 0d | TEAM_2Shift_Calendar-1 | Helper; Gas Cutter | 6h | 356.25 | 356.25 |
| 96 | 1.5.10.3 | 2" NB Mp Con - 4 Nos | 0.5h | 2018-06-20 09:00 | 2018-06-20 09:30 | 91 | 2018-05-14 09:00 | 2018-05-14 09:30 | 0.5h | 55.44d | 0d | TEAM_2Shift_Calendar-1 | Helper; Gas Cutter | 1h | 59.38 | 59.38 |
| 97 | 1.5.10.4 | Inspection | 1h | 2018-06-20 12:00 | 2018-06-20 13:00 | 94, 95, 96 | 2018-05-14 12:00 | 2018-05-14 13:00 | 1h | 56.28d |  | TEAM_2Shift_Calendar-1 | Helper; Gas Cutter | 2h | 118.75 | 118.75 |
| 98 | 1.5.11 | **Ch Nozzel Pipe EP** | 0.41d | 2018-06-20 09:30 | 2018-06-20 16:00 |  | 2018-05-14 09:30 | 2018-05-14 16:00 | 0.41d | 55.25d |  | TEAM_2Shift_Calendar-1 |  | 18h | 956.25 | 956.25 |
| 99 | 1.5.11.1 | 3" Nozzle | 2h | 2018-06-20 10:00 | 2018-06-20 12:00 | 94 | 2018-05-14 10:00 | 2018-05-14 12:00 | 2h | 55.47d | 0d | TEAM_2Shift_Calendar-1 | Helper; Grinder | 4h | 212.5 | 212.5 |
| 100 | 1.5.11.2 | 1.5" NB Mp Con - 4 Nos | 3h | 2018-06-20 12:00 | 2018-06-20 15:00 | 95 | 2018-05-14 12:00 | 2018-05-14 15:00 | 3h | 55.09d | 0d | TEAM_2Shift_Calendar-1 | Helper; Grinder | 6h | 318.75 | 318.75 |
| 101 | 1.5.11.3 | 2" NB Mp Con - 4 Nos | 3h | 2018-06-20 09:30 | 2018-06-20 12:30 | 96 | 2018-05-14 09:30 | 2018-05-14 12:30 | 3h | 55.44d | 0d | TEAM_2Shift_Calendar-1 | Helper; Grinder | 6h | 318.75 | 318.75 |
| 102 | 1.5.11.4 | Inspection | 1h | 2018-06-20 15:00 | 2018-06-20 16:00 | 99, 100, 101 | 2018-05-14 15:00 | 2018-05-14 16:00 | 1h | 56.09d |  | TEAM_2Shift_Calendar-1 | Helper; Grinder | 2h | 106.25 | 106.25 |
| 103 | 1.5.12 | **Ch Noz+Flg Fit Up** | 0.44d | 2018-06-20 12:00 | 2018-06-20 19:00 |  | 2018-05-14 12:00 | 2018-05-14 19:00 | 0.44d | 55.28d |  | TEAM_2Shift_Calendar-1 |  | 36h | 2,306.25 | 2,306.25 |
| 104 | 1.5.12.1 | 3" Nozzle | 2h | 2018-06-20 12:00 | 2018-06-20 14:00 | 99 | 2018-05-14 12:00 | 2018-05-14 14:00 | 2h | 55.47d | 0d | TEAM_2Shift_Calendar-1 | SMAW Welder; Helper; Fitter [200%] | 8h | 512.5 | 512.5 |
| 105 | 1.5.12.2 | 1.5" NB Mp Con - 4 Nos | 3h | 2018-06-20 15:00 | 2018-06-20 18:00 | 100 | 2018-05-14 15:00 | 2018-05-14 18:00 | 3h | 55.09d | 0d | TEAM_2Shift_Calendar-1 | SMAW Welder; Helper; Fitter [200%] | 12h | 768.75 | 768.75 |
| 106 | 1.5.12.3 | 2" NB Mp Con - 4 Nos | 3h | 2018-06-20 12:30 | 2018-06-20 15:30 | 101 | 2018-05-14 12:30 | 2018-05-14 15:30 | 3h | 55.44d | 0d | TEAM_2Shift_Calendar-1 | SMAW Welder; Helper; Fitter [200%] | 12h | 768.75 | 768.75 |
| 107 | 1.5.12.4 | Inspection | 1h | 2018-06-20 18:00 | 2018-06-20 19:00 | 104, 105, 106 | 2018-05-14 18:00 | 2018-05-14 19:00 | 1h | 55.91d |  | TEAM_2Shift_Calendar-1 | SMAW Welder; Helper; Fitter [200%] | 4h | 256.25 | 256.25 |

| ID | WBS | Task | Duration | Start | Finish | Predecessors | Baseline start | Baseline finish | Baseline duration | Total slack | Free slack | Calendar | Resources | Work | Cost | Baseline cost |
| --- | --- | --- | --- | --- | --- | --- | --- | --- | --- | --- | --- | --- | --- | --- | --- | --- |
| 108 | 1.5.13 | **Ch Nozzel Pipe+Flg Welding** | 0.69d | 2018-06-20 14:00 | 2018-06-21 09:00 |  | 2018-05-14 14:00 | 2018-05-15 09:00 | 0.69d | 55.34d |  | TEAM_2Shift_Calendar-1 |  | 32h | 1,900 | 1,900 |
| 109 | 1.5.13.1 | 3" Nozzle | 6h | 2018-06-20 14:00 | 2018-06-20 20:00 | 104 | 2018-05-14 14:00 | 2018-05-14 20:00 | 6h | 55.47d | 0d | TEAM_2Shift_Calendar-1 | Helper; SMAW Welder | 12h | 712.5 | 712.5 |
| 110 | 1.5.13.2 | 1.5" NB Mp Con - 4 Nos | 6h | 2018-06-20 18:00 | 2018-06-21 08:00 | 105 | 2018-05-14 18:00 | 2018-05-15 08:00 | 6h | 55.09d | 0d | TEAM_2Shift_Calendar-1 | Helper; SMAW Welder | 12h | 712.5 | 712.5 |
| 111 | 1.5.13.3 | 2" NB Mp Con - 4 Nos | 3h | 2018-06-20 15:30 | 2018-06-20 18:30 | 106 | 2018-05-14 15:30 | 2018-05-14 18:30 | 3h | 55.44d | 0d | TEAM_2Shift_Calendar-1 | Helper; SMAW Welder | 6h | 356.25 | 356.25 |
| 112 | 1.5.13.4 | Inspection | 1h | 2018-06-21 08:00 | 2018-06-21 09:00 | 109, 110, 111 | 2018-05-15 08:00 | 2018-05-15 09:00 | 1h | 55.53d |  | TEAM_2Shift_Calendar-1 | Helper; SMAW Welder | 2h | 118.75 | 118.75 |
| 113 | 1.5.14 | **Ch Nozzel Pipe Profile Marking** | 0.41d | 2018-06-20 18:30 | 2018-06-21 09:00 |  | 2018-05-14 18:30 | 2018-05-15 09:00 | 0.41d | 55.44d |  | TEAM_2Shift_Calendar-1 |  | 8h | 475 | 475 |
| 114 | 1.5.14.1 | 3" Nozzle | 1h | 2018-06-20 20:00 | 2018-06-20 21:00 | 109 | 2018-05-14 20:00 | 2018-05-14 21:00 | 1h | 55.47d | 0d | TEAM_2Shift_Calendar-1 | Helper; Fitter | 2h | 118.75 | 118.75 |
| 115 | 1.5.14.2 | 1.5" NB Mp Con - 4 Nos | 1h | 2018-06-21 08:00 | 2018-06-21 09:00 | 110 | 2018-05-15 08:00 | 2018-05-15 09:00 | 1h | 55.09d | 0d | TEAM_2Shift_Calendar-1 | Helper; Fitter | 2h | 118.75 | 118.75 |
| 116 | 1.5.14.3 | 2" NB Mp Con - 4 Nos | 1h | 2018-06-20 18:30 | 2018-06-20 19:30 | 111 | 2018-05-14 18:30 | 2018-05-14 19:30 | 1h | 55.44d | 0d | TEAM_2Shift_Calendar-1 | Helper; Fitter | 2h | 118.75 | 118.75 |
| 117 | 1.5.14.4 | Inspection | 1h | 2018-06-21 08:00 | 2018-06-21 09:00 | 109, 110, 111 | 2018-05-15 08:00 | 2018-05-15 09:00 | 1h | 55.53d |  | TEAM_2Shift_Calendar-1 | Helper; Fitter | 2h | 118.75 | 118.75 |
| 118 | 1.5.15 | **Ch Nozzle Pipe Profile Cutting** | 0.59d | 2018-06-20 19:30 | 2018-06-21 13:00 |  | 2018-05-14 19:30 | 2018-05-15 13:00 | 0.59d | 55.28d |  | TEAM_2Shift_Calendar-1 |  | 18h | 1,068.75 | 1,068.75 |
| 119 | 1.5.15.1 | 3" Nozzle | 2h | 2018-06-20 21:00 | 2018-06-21 07:00 | 114 | 2018-05-14 21:00 | 2018-05-15 07:00 | 2h | 55.47d | 0d | TEAM_2Shift_Calendar-1 | Helper; Fitter | 4h | 237.5 | 237.5 |
| 120 | 1.5.15.2 | 1.5" NB Mp Con - 4 Nos | 3h | 2018-06-21 09:00 | 2018-06-21 12:00 | 115 | 2018-05-15 09:00 | 2018-05-15 12:00 | 3h | 55.09d | 0d | TEAM_2Shift_Calendar-1 | Helper; Fitter | 6h | 356.25 | 356.25 |
| 121 | 1.5.15.3 | 2" NB Mp Con - 4 Nos | 3h | 2018-06-20 19:30 | 2018-06-21 06:30 | 116 | 2018-05-14 19:30 | 2018-05-15 06:30 | 3h | 55.44d | 0d | TEAM_2Shift_Calendar-1 | Helper; Fitter | 6h | 356.25 | 356.25 |
| 122 | 1.5.15.4 | Inspection | 1h | 2018-06-21 12:00 | 2018-06-21 13:00 | 119, 120, 121 | 2018-05-15 12:00 | 2018-05-15 13:00 | 1h | 55.28d |  | TEAM_2Shift_Calendar-1 | Helper; Fitter | 2h | 118.75 | 118.75 |
| 123 | 1.5.16 | **Ch Nozzle Pipe Profile EP** | 0.59d | 2018-06-21 06:30 | 2018-06-21 16:00 |  | 2018-05-15 06:30 | 2018-05-15 16:00 | 0.59d | 55.09d |  | TEAM_2Shift_Calendar-1 |  | 18h | 956.25 | 956.25 |
| 124 | 1.5.16.1 | 3" Nozzle | 2h | 2018-06-21 07:00 | 2018-06-21 09:00 | 119 | 2018-05-15 07:00 | 2018-05-15 09:00 | 2h | 55.47d | 0.38d | TEAM_2Shift_Calendar-1 | Helper; Grinder | 4h | 212.5 | 212.5 |
| 125 | 1.5.16.2 | 1.5" NB Mp Con - 4 Nos | 3h | 2018-06-21 12:00 | 2018-06-21 15:00 | 120 | 2018-05-15 12:00 | 2018-05-15 15:00 | 3h | 55.09d | 0d | TEAM_2Shift_Calendar-1 | Helper; Grinder | 6h | 318.75 | 318.75 |
| 126 | 1.5.16.3 | 2" NB Mp Con - 4 Nos | 3h | 2018-06-21 06:30 | 2018-06-21 09:30 | 121 | 2018-05-15 06:30 | 2018-05-15 09:30 | 3h | 55.44d | 0.34d | TEAM_2Shift_Calendar-1 | Helper; Grinder | 6h | 318.75 | 318.75 |
| 127 | 1.5.16.4 | Inspection | 1h | 2018-06-21 15:00 | 2018-06-21 16:00 | 124, 125, 126 | 2018-05-15 15:00 | 2018-05-15 16:00 | 1h | 55.09d |  | TEAM_2Shift_Calendar-1 | Helper; Grinder | 2h | 106.25 | 106.25 |
| 128 | 1.6 | **Saddle & Other** | 22.72d | 2018-06-01 06:00 | 2018-06-29 17:30 |  | 2018-05-07 06:00 | 2018-05-22 17:30 | 12.72d | 41.2d |  | TEAM_2Shift_Calendar-1 |  | 131.5h | 3,739.06 | 3,739.06 |
| 129 | 1.6.1 | **Bottom Saddle Fabrication** | 0.66d | 2018-06-01 06:00 | 2018-06-01 16:30 |  | 2018-05-07 06:00 | 2018-05-07 16:30 | 0.66d | 41.2d |  | TEAM_2Shift_Calendar-1 |  | 9h | 296.88 | 296.88 |
| 130 | 1.6.1.1 | Plate Issuence | 8h | 2018-06-01 06:00 | 2018-06-01 14:00 | 2FS+40d | 2018-05-07 06:00 | 2018-05-07 14:00 | 8h | 41.2d | 0d | TEAM_2Shift_Calendar-1 | Store; QC Engineer | 4h |  |  |
| 131 | 1.6.1.2 | Base Marking | 1h | 2018-06-01 14:00 | 2018-06-01 15:00 | 130 | 2018-05-07 14:00 | 2018-05-07 15:00 | 1h | 41.2d | 0d | TEAM_2Shift_Calendar-1 | Helper; Fitter | 2h | 118.75 | 118.75 |
| 132 | 1.6.1.3 | Web Pl Marking | 0.5h | 2018-06-01 15:00 | 2018-06-01 15:30 | 131 | 2018-05-07 15:00 | 2018-05-07 15:30 | 0.5h | 71.06d | 0d | TEAM_2Shift_Calendar-1 | Helper; Fitter | 1h | 59.38 | 59.38 |
| 133 | 1.6.1.4 | RF Pad Marking | 0.5h | 2018-06-01 15:30 | 2018-06-01 16:00 | 132 | 2018-05-07 15:30 | 2018-05-07 16:00 | 0.5h | 71.06d | 0d | TEAM_2Shift_Calendar-1 | Helper; Fitter | 1h | 59.38 | 59.38 |
| 134 | 1.6.1.5 | Ribs Marking | 0.5h | 2018-06-01 16:00 | 2018-06-01 16:30 | 133 | 2018-05-07 16:00 | 2018-05-07 16:30 | 0.5h | 71.06d |  | TEAM_2Shift_Calendar-1 | Helper; Fitter | 1h | 59.38 | 59.38 |

| ID | WBS | Task | Duration | Start | Finish | Predecessors | Baseline start | Baseline finish | Baseline duration | Total slack | Free slack | Calendar | Resources | Work | Cost | Baseline cost |
| --- | --- | --- | --- | --- | --- | --- | --- | --- | --- | --- | --- | --- | --- | --- | --- | --- |
| 135 | 1.6.2 | **Bottom Saddle Plate Cutting** | 0.42d | 2018-06-01 15:00 | 2018-06-01 21:45 |  | 2018-05-07 15:00 | 2018-05-07 21:45 | 0.42d | 41.2d |  | TEAM_2Shift_Calendar-1 |  | 13.5h | 785.94 | 785.94 |
| 136 | 1.6.2.1 | Base Cutting | 1h | 2018-06-01 15:00 | 2018-06-01 16:00 | 131 | 2018-05-07 15:00 | 2018-05-07 16:00 | 1h | 41.2d | 0d | TEAM_2Shift_Calendar-1 | Helper; Gas Cutter | 2h | 118.75 | 118.75 |
| 137 | 1.6.2.2 | Web Pl Cutting | 1h | 2018-06-01 16:00 | 2018-06-01 17:00 | 136 | 2018-05-07 16:00 | 2018-05-07 17:00 | 1h | 70.73d | 0d | TEAM_2Shift_Calendar-1 | Helper; Gas Cutter | 2h | 118.75 | 118.75 |
| 138 | 1.6.2.3 | RF Pad Cutting | 1.25h | 2018-06-01 17:00 | 2018-06-01 18:15 | 137 | 2018-05-07 17:00 | 2018-05-07 18:15 | 1.25h | 70.73d | 0d | TEAM_2Shift_Calendar-1 | Helper; Gas Cutter | 2.5h | 148.44 | 148.44 |
| 139 | 1.6.2.4 | Ribs Cutting | 1h | 2018-06-01 18:15 | 2018-06-01 19:15 | 138 | 2018-05-07 18:15 | 2018-05-07 19:15 | 1h | 70.73d | 0d | TEAM_2Shift_Calendar-1 | Helper; Gas Cutter | 2h | 118.75 | 118.75 |
| 140 | 1.6.2.5 | Grinding Of Above | 2.5h | 2018-06-01 19:15 | 2018-06-01 21:45 | 139 | 2018-05-07 19:15 | 2018-05-07 21:45 | 2.5h | 70.73d |  | TEAM_2Shift_Calendar-1 | Grinder [200%] | 5h | 281.25 | 281.25 |
| 141 | 1.6.3 | **Saddle Fit Up & Welding** | 0.66d | 2018-06-01 16:00 | 2018-06-02 10:30 |  | 2018-05-07 16:00 | 2018-05-08 10:30 | 0.66d | 41.2d | 22.46d | TEAM_2Shift_Calendar-1 |  | 35h | 2,078.12 | 2,078.12 |
| 142 | 1.6.3.1 | Base + Web Fit Up | 2h | 2018-06-01 16:00 | 2018-06-01 18:00 | 131, 136 | 2018-05-07 16:00 | 2018-05-07 18:00 | 2h | 41.2d | 0d | TEAM_2Shift_Calendar-1 | Helper [200%]; SMAW Welder; Fitter | 8h | 475 | 475 |
| 143 | 1.6.3.2 | Base + Web Welding | 3.5h | 2018-06-01 18:00 | 2018-06-01 21:30 | 142 | 2018-05-07 18:00 | 2018-05-07 21:30 | 3.5h | 41.2d | 0d | TEAM_2Shift_Calendar-1 | Helper; SMAW Welder | 7h | 415.62 | 415.62 |
| 144 | 1.6.3.3 | Ribs+Web Fit Up | 2h | 2018-06-01 21:30 | 2018-06-02 07:30 | 143 | 2018-05-07 21:30 | 2018-05-08 07:30 | 2h | 41.2d | 0d | TEAM_2Shift_Calendar-1 | Helper [200%]; SMAW Welder; Fitter | 8h | 475 | 475 |
| 145 | 1.6.3.4 | Ribs+Web Welding | 3h | 2018-06-02 07:30 | 2018-06-02 10:30 | 144 | 2018-05-08 07:30 | 2018-05-08 10:30 | 3h | 41.2d |  | TEAM_2Shift_Calendar-1 | Helper [200%]; SMAW Welder [200%] | 12h | 712.5 | 712.5 |
| 146 | 1.6.4 | **Lifting Lug Pad & RF Pad** | 7.55d | 2018-06-20 06:00 | 2018-06-29 14:48 |  | 2018-05-14 06:00 | 2018-05-22 14:48 | 7.55d | 49d | 0d | TEAM_2Shift_Calendar-1 |  | 68.6h | 270 | 270 |
| 147 | 1.6.4.1 | Plate Issuence | 7.38d | 2018-06-20 06:00 | 2018-06-29 12:00 | 2FS+55d | 2018-05-14 06:00 | 2018-05-22 12:00 | 7.38d | 49d | 0d | TEAM_2Shift_Calendar-1 | Store; QC Engineer | 64h |  |  |
| 148 | 1.6.4.2 | Pad Marking | 0.3h | 2018-06-29 12:00 | 2018-06-29 12:18 | 147 | 2018-05-22 12:00 | 2018-05-22 12:18 | 0.3h | 49d | 0d | TEAM_2Shift_Calendar-1 | Helper; Fitter | 0.6h | 35.62 | 35.62 |
| 149 | 1.6.4.3 | Pad Cutting | 0.5h | 2018-06-29 12:18 | 2018-06-29 12:48 | 148 | 2018-05-22 12:18 | 2018-05-22 12:48 | 0.5h | 49d | 0d | TEAM_2Shift_Calendar-1 | Helper; Gas Cutter | 1h | 59.38 | 59.38 |
| 150 | 1.6.4.4 | Pad Grinding | 1h | 2018-06-29 12:48 | 2018-06-29 13:48 | 149 | 2018-05-22 12:48 | 2018-05-22 13:48 | 1h | 49d | 0d | TEAM_2Shift_Calendar-1 | Helper; Grinder | 2h | 106.25 | 106.25 |
| 151 | 1.6.4.5 | Pad Drilling | 1h | 2018-06-29 13:48 | 2018-06-29 14:48 | 150 | 2018-05-22 13:48 | 2018-05-22 14:48 | 1h | 49d |  | TEAM_2Shift_Calendar-1 | Driller | 1h | 68.75 | 68.75 |
| 152 | 1.6.5 | **Lifting Lug Preparation** | 0.17d | 2018-06-29 14:48 | 2018-06-29 17:30 |  | 2018-05-22 14:48 | 2018-05-22 17:30 | 0.17d | 49d |  | TEAM_2Shift_Calendar-1 |  | 5.4h | 308.12 | 308.12 |
| 153 | 1.6.5.1 | Lifting Lugs Marking | 0.2h | 2018-06-29 14:48 | 2018-06-29 15:00 | 146 | 2018-05-22 14:48 | 2018-05-22 15:00 | 0.2h | 49d | 0d | TEAM_2Shift_Calendar-1 | Helper; Fitter | 0.4h | 23.75 | 23.75 |
| 154 | 1.6.5.2 | Lifting Lugs Cutting | 0.5h | 2018-06-29 15:00 | 2018-06-29 15:30 | 153 | 2018-05-22 15:00 | 2018-05-22 15:30 | 0.5h | 49d | 0d | TEAM_2Shift_Calendar-1 | Helper; Gas Cutter | 1h | 59.38 | 59.38 |
| 155 | 1.6.5.3 | Lifting Lugs Grinding | 1h | 2018-06-29 15:30 | 2018-06-29 16:30 | 154 | 2018-05-22 15:30 | 2018-05-22 16:30 | 1h | 49d | 0d | TEAM_2Shift_Calendar-1 | Helper; Grinder | 2h | 106.25 | 106.25 |
| 156 | 1.6.5.4 | Lifting Lug Drilling | 1h | 2018-06-29 16:30 | 2018-06-29 17:30 | 155 | 2018-05-22 16:30 | 2018-05-22 17:30 | 1h | 49d |  | TEAM_2Shift_Calendar-1 | Helper; Fitter | 2h | 118.75 | 118.75 |
| 157 | 1.7 | **Baffle & Tb Items Fab** | 16.75d | 2018-06-07 06:00 | 2018-06-28 18:00 |  | 2018-05-14 06:00 | 2018-06-07 16:30 | 20.66d | 49.97d |  | TEAM_2Shift_Calendar-1 |  | 193.5h | 4,133.75 | 4,133.75 |
| 158 | 1.7.1 | **Baffle Preparation** | 0.95d | 2018-06-07 06:00 | 2018-06-07 21:15 |  | 2018-05-14 06:00 | 2018-05-14 21:15 | 0.95d | 49.97d | 0d | TEAM_2Shift_Calendar-1 |  | 18.5h | 623.44 | 623.44 |
| 159 | 1.7.1.1 | Baffle Plate Transfer | 10h | 2018-06-07 06:00 | 2018-06-07 16:00 | 2FS+45d | 2018-05-14 06:00 | 2018-05-14 16:00 | 10h | 49.97d | 0d | TEAM_2Shift_Calendar-1 | Store; Plate (Cost) [0.1%]; QC Engineer | 8h |  |  |
| 160 | 1.7.1.2 | Baffle Marking | 2h | 2018-06-07 16:00 | 2018-06-07 18:00 | 159 | 2018-05-14 16:00 | 2018-05-14 18:00 | 2h | 49.97d | 0d | TEAM_2Shift_Calendar-1 | Helper; Fitter | 4h | 237.5 | 237.5 |
| 161 | 1.7.1.3 | Baffle Profile Cutting | 3.25h | 2018-06-07 18:00 | 2018-06-07 21:15 | 160 | 2018-05-14 18:00 | 2018-05-14 21:15 | 3.25h | 49.97d |  | TEAM_2Shift_Calendar-1 | Helper; Gas Cutter | 6.5h | 385.94 | 385.94 |

| ID | WBS | Task | Duration | Start | Finish | Predecessors | Baseline start | Baseline finish | Baseline duration | Total slack | Free slack | Calendar | Resources | Work | Cost | Baseline cost |
| --- | --- | --- | --- | --- | --- | --- | --- | --- | --- | --- | --- | --- | --- | --- | --- | --- |
| 162 | 1.7.2 | **Baffle Bend Removal & Stacking** | 0.39d | 2018-06-07 21:15 | 2018-06-08 11:30 |  | 2018-05-14 21:15 | 2018-05-15 11:30 | 0.39d | 49.97d | 0d | TEAM_2Shift_Calendar-1 |  | 18.5h | 1,042.19 | 1,042.19 |
| 163 | 1.7.2.1 | Baffle Pl Bend Removal | 6h | 2018-06-07 21:15 | 2018-06-08 11:15 | 158 | 2018-05-14 21:15 | 2018-05-15 11:15 | 6h | 49.97d | 0d | TEAM_2Shift_Calendar-1 | Helper [200%]; Fitter | 18h | 1,012.5 | 1,012.5 |
| 164 | 1.7.2.2 | Baffle Pl StackingPer 100mm | 0.25h | 2018-06-08 11:15 | 2018-06-08 11:30 | 163 | 2018-05-15 11:15 | 2018-05-15 11:30 | 0.25h | 49.97d |  | TEAM_2Shift_Calendar-1 | Helper; Fitter | 0.5h | 29.69 | 29.69 |
| 165 | 1.7.3 | **Baffle Drilling** | 8d | 2018-06-08 11:30 | 2018-06-19 11:30 |  | 2018-05-15 11:30 | 2018-05-24 11:30 | 8d | 49.97d | 0d | TEAM_2Shift_Calendar-1 |  | 64h |  |  |
| 166 | 1.7.3.1 | Baffle Drilling | 4d | 2018-06-08 11:30 | 2018-06-19 11:30 | 162 | 2018-05-15 11:30 | 2018-05-24 11:30 | 4d | 24.97d |  |  | SC (Work) | 64h |  |  |
| 167 | 1.7.4 | **Baffle De Stacking & Chamfering** | 0.14d | 2018-06-19 11:30 | 2018-06-19 13:45 |  | 2018-05-24 11:30 | 2018-05-24 13:45 | 0.14d | 49.97d | 0d | TEAM_2Shift_Calendar-1 |  | 2.5h | 167.19 | 167.19 |
| 168 | 1.7.4.1 | Baffle De Stacking | 0.25h | 2018-06-19 11:30 | 2018-06-19 11:45 | 165 | 2018-05-24 11:30 | 2018-05-24 11:45 | 0.25h | 49.97d | 0d | TEAM_2Shift_Calendar-1 | Helper; Fitter | 0.5h | 29.69 | 29.69 |
| 169 | 1.7.4.2 | Baffle Chamfering (70% of TS Holes*No of Baffles) | 2h | 2018-06-19 11:45 | 2018-06-19 13:45 | 168 | 2018-05-24 11:45 | 2018-05-24 13:45 | 2h | 49.97d |  | TEAM_2Shift_Calendar-1 | Fitter | 2h | 137.5 | 137.5 |
| 170 | 1.7.5 | **Baffle Stacking & Thro Hole Check** | 7.27d | 2018-06-19 13:45 | 2018-06-28 18:00 |  | 2018-05-24 13:45 | 2018-06-02 18:00 | 7.27d | 49.97d |  | TEAM_2Shift_Calendar-1 |  | 68.5h | 717.19 | 717.19 |
| 171 | 1.7.5.1 | Stacking | 2h | 2018-06-19 13:45 | 2018-06-19 15:45 | 167 | 2018-05-24 13:45 | 2018-05-24 15:45 | 2h | 49.97d | 0d | TEAM_2Shift_Calendar-1 | Helper; Fitter | 4h | 237.5 | 237.5 |
| 172 | 1.7.5.2 | Baffle Hole Alingment | 0.25h | 2018-06-19 15:45 | 2018-06-19 16:00 | 171 | 2018-05-24 15:45 | 2018-05-24 16:00 | 0.25h | 49.97d | 0d | TEAM_2Shift_Calendar-1 | Helper; Fitter | 0.5h | 29.69 | 29.69 |
| 173 | 1.7.5.3 | Baffle Hole Re Drill (Use 40% of Holes in Qty) | 7h | 2018-06-19 16:00 | 2018-06-20 15:00 | 172 | 2018-05-24 16:00 | 2018-05-25 15:00 | 7h | 24.97d | 0d |  | SC (Work) | 7h |  |  |
| 174 | 1.7.5.4 | Baffle Od Machining | 3d | 2018-06-20 15:00 | 2018-06-28 15:00 | 173 | 2018-05-25 15:00 | 2018-06-02 15:00 | 3d | 24.97d | 0d |  | SC (Work) | 48h |  |  |
| 175 | 1.7.5.5 | Baffle Cleaning(100mm L * 700Ø = 3hrs) | 3h | 2018-06-28 15:00 | 2018-06-28 18:00 | 174 | 2018-06-02 15:00 | 2018-06-02 18:00 | 3h | 49.97d |  | TEAM_2Shift_Calendar-1 | Helper [300%] | 9h | 450 | 450 |
| 176 | 1.7.6 | **Tie Rod Preparation** | 0.56d | 2018-06-20 06:00 | 2018-06-20 15:00 |  | 2018-05-14 06:00 | 2018-05-14 15:00 | 0.56d | 56.16d |  | TEAM_2Shift_Calendar-1 |  | 8.5h | 717.5 | 717.5 |
| 177 | 1.7.6.1 | Tie Rod Matl Transfere | 3h | 2018-06-20 06:00 | 2018-06-20 09:00 | 2FS+55d | 2018-05-14 06:00 | 2018-05-14 09:00 | 3h | 56.16d | 0d | TEAM_2Shift_Calendar-1 | Store | 0.5h |  |  |
| 178 | 1.7.6.2 | Rod Cutting | 2h | 2018-06-20 09:00 | 2018-06-20 11:00 | 177 | 2018-05-14 09:00 | 2018-05-14 11:00 | 2h | 56.16d | 0d | TEAM_2Shift_Calendar-1 | Helper; Fitter | 4h | 237.5 | 237.5 |
| 179 | 1.7.6.3 | Thread Machining. | 4h | 2018-06-20 11:00 | 2018-06-20 15:00 | 178 | 2018-05-14 11:00 | 2018-05-14 15:00 | 4h | 56.16d |  | TEAM_2Shift_Calendar-1 | Lathe Operator | 4h | 480 | 480 |
| 180 | 1.7.7 | **Spacer Tube Preparation** | 0.66d | 2018-06-20 06:00 | 2018-06-20 16:30 |  | 2018-06-07 06:00 | 2018-06-07 16:30 | 0.66d | 56.06d |  | TEAM_2Shift_Calendar-1 |  | 13h | 866.25 | 866.25 |
| 181 | 1.7.7.1 | Spacer Tube Transfere | 3.5h | 2018-06-20 06:00 | 2018-06-20 09:30 | 2FS+55d | 2018-06-07 06:00 | 2018-06-07 09:30 | 3.5h | 56.06d | 0d | TEAM_2Shift_Calendar-1 | Tube (Cost) [0.1%]; Store | 1h |  |  |
| 182 | 1.7.7.2 | Length Cutting34 Nos | 3h | 2018-06-20 09:30 | 2018-06-20 12:30 | 181 | 2018-06-07 09:30 | 2018-06-07 12:30 | 3h | 56.06d | 0d | TEAM_2Shift_Calendar-1 | Helper; Fitter | 6h | 356.25 | 356.25 |
| 183 | 1.7.7.3 | Length Machining | 3h | 2018-06-20 12:30 | 2018-06-20 15:30 | 182 | 2018-06-07 12:30 | 2018-06-07 15:30 | 3h | 56.06d | 0d | TEAM_2Shift_Calendar-1 | Lathe Operator | 3h | 360 | 360 |
| 184 | 1.7.7.4 | Cleaning | 1h | 2018-06-20 15:30 | 2018-06-20 16:30 | 183 | 2018-06-07 15:30 | 2018-06-07 16:30 | 1h | 56.06d |  | TEAM_2Shift_Calendar-1 | Helper [300%] | 3h | 150 | 150 |
| 185 | 1.8 | **Shell Fabrication** | 20.62d | 2018-06-07 06:00 | 2018-07-03 15:55 |  | 2018-05-14 06:00 | 2018-06-07 15:55 | 20.62d | 18.74d |  | TEAM_2Shift_Calendar-1 |  | 336.34h | 12,585.81 | 12,585.81 |
| 186 | 1.8.1 | **Shell Marking & Cutting** | 15.47d | 2018-06-07 06:00 | 2018-06-27 13:30 |  | 2018-05-14 06:00 | 2018-06-01 13:30 | 15.47d | 18.74d | 0d | TEAM_2Shift_Calendar-1 |  | 132.5h | 253.12 | 253.12 |
| 187 | 1.8.1.1 | Sh Plate Trnasfer | 15.38d | 2018-06-07 06:00 | 2018-06-27 12:00 | 2FS+45d | 2018-05-14 06:00 | 2018-06-01 12:00 | 15.38d | 18.74d | 0d | TEAM_2Shift_Calendar-1 | Store; Plate (Cost) [0.1%]; QC Engineer | 128h |  |  |
| 188 | 1.8.1.2 | Sh-Marking | 1.5h | 2018-06-27 12:00 | 2018-06-27 13:30 | 187 | 2018-06-01 12:00 | 2018-06-01 13:30 | 1.5h | 18.74d |  | TEAM_2Shift_Calendar-1 | Helper [200%]; Fitter | 4.5h | 253.12 | 253.12 |

| ID | WBS | Task | Duration | Start | Finish | Predecessors | Baseline start | Baseline finish | Baseline duration | Total slack | Free slack | Calendar | Resources | Work | Cost | Baseline cost |
| --- | --- | --- | --- | --- | --- | --- | --- | --- | --- | --- | --- | --- | --- | --- | --- | --- |
| 189 | 1.8.2 | **Shell Plate Cutting** | 0.38d | 2018-06-27 13:30 | 2018-06-27 19:30 |  | 2018-06-01 13:30 | 2018-06-01 19:30 | 0.38d | 18.74d | 0d | TEAM_2Shift_Calendar-1 |  | 14h | 812.5 | 812.5 |
| 190 | 1.8.2.1 | Sh-Cutting | 2h | 2018-06-27 13:30 | 2018-06-27 15:30 | 186 | 2018-06-01 13:30 | 2018-06-01 15:30 | 2h | 18.74d | 0d | TEAM_2Shift_Calendar-1 | Helper [200%]; Gas Cutter | 6h | 337.5 | 337.5 |
| 191 | 1.8.2.2 | Sh Cir EP Correction | 4h | 2018-06-27 15:30 | 2018-06-27 19:30 | 190 | 2018-06-01 15:30 | 2018-06-01 19:30 | 4h | 18.74d |  | TEAM_2Shift_Calendar-1 | Helper; Fitter | 8h | 475 | 475 |
| 192 | 1.8.3 | **Sh Final Length Correction** | 0.64d | 2018-06-27 19:30 | 2018-06-28 13:40 |  | 2018-06-01 19:30 | 2018-06-02 13:40 | 0.64d | 18.74d | 0d | TEAM_2Shift_Calendar-1 |  | 20.34h | 1,270.19 | 1,270.19 |
| 193 | 1.8.3.1 | Sh Length Marking | 6h | 2018-06-27 19:30 | 2018-06-28 09:30 | 189 | 2018-06-01 19:30 | 2018-06-02 09:30 | 6h | 18.74d | 0d | TEAM_2Shift_Calendar-1 | Fitter [200%] | 12h | 825 | 825 |
| 194 | 1.8.3.2 | Length Cutting | 0.17h | 2018-06-28 09:30 | 2018-06-28 09:40 | 193 | 2018-06-02 09:30 | 2018-06-02 09:40 | 0.17h | 18.74d | 0d | TEAM_2Shift_Calendar-1 | Helper; Gas Cutter | 0.34h | 20.19 | 20.19 |
| 195 | 1.8.3.3 | Grinding & EP | 4h | 2018-06-28 09:40 | 2018-06-28 13:40 | 194 | 2018-06-02 09:40 | 2018-06-02 13:40 | 4h | 18.74d |  | TEAM_2Shift_Calendar-1 | Helper; Grinder | 8h | 425 | 425 |
| 196 | 1.8.4 | **Nozzle Orientation Marking** | 0.48d | 2018-06-28 13:40 | 2018-06-28 21:25 |  | 2018-06-02 13:40 | 2018-06-02 21:25 | 0.48d | 18.74d |  | TEAM_2Shift_Calendar-1 |  | 15.5h | 1,065.62 | 1,065.62 |
| 197 | 1.8.4.1 | Sh Nozzel Orientaion Marking | 4h | 2018-06-28 13:40 | 2018-06-28 17:40 | 192 | 2018-06-02 13:40 | 2018-06-02 17:40 | 4h | 18.74d | 0d | TEAM_2Shift_Calendar-1 | Fitter [200%] | 8h | 550 | 550 |
| 198 | 1.8.4.2 | Sh Nozzel Marking | 1.75h | 2018-06-28 17:40 | 2018-06-28 19:25 | 197 | 2018-06-02 17:40 | 2018-06-02 19:25 | 1.75h | 18.74d | 0d | TEAM_2Shift_Calendar-1 | Fitter [200%] | 3.5h | 240.62 | 240.62 |
| 199 | 1.8.4.3 | Sh Nozzel Marking2" NB - 2 Nos | 2h | 2018-06-28 19:25 | 2018-06-28 21:25 | 198 | 2018-06-02 19:25 | 2018-06-02 21:25 | 2h | 18.74d | 0d | TEAM_2Shift_Calendar-1 | Fitter [200%] | 4h | 275 | 275 |
| 200 | 1.8.5 | **Sh Nozzle Openning** | 0.31d | 2018-06-28 19:25 | 2018-06-29 08:25 |  | 2018-06-02 19:25 | 2018-06-04 08:25 | 0.31d | 18.86d |  | TEAM_2Shift_Calendar-1 |  | 10h | 593.75 | 593.75 |
| 201 | 1.8.5.1 | 3" Nozzle - 2 Nos | 2h | 2018-06-28 19:25 | 2018-06-28 21:25 | 198 | 2018-06-02 19:25 | 2018-06-02 21:25 | 2h | 18.89d | 0d | TEAM_2Shift_Calendar-1 | Helper; Gas Cutter | 4h | 237.5 | 237.5 |
| 202 | 1.8.5.2 | 2" NB - 2 Nos | 2h | 2018-06-28 21:25 | 2018-06-29 07:25 | 199 | 2018-06-02 21:25 | 2018-06-04 07:25 | 2h | 18.74d | 0d | TEAM_2Shift_Calendar-1 | Helper; Gas Cutter | 4h | 237.5 | 237.5 |
| 203 | 1.8.5.3 | Inspection | 1h | 2018-06-29 07:25 | 2018-06-29 08:25 | 201, 202 | 2018-06-04 07:25 | 2018-06-04 08:25 | 1h | 49.57d |  | TEAM_2Shift_Calendar-1 | Helper; Fitter | 2h | 118.75 | 118.75 |
| 204 | 1.8.6 | **Sh Nozzle EP** | 0.31d | 2018-06-28 21:25 | 2018-06-29 10:25 |  | 2018-06-02 21:25 | 2018-06-04 10:25 | 0.31d | 18.86d |  | TEAM_2Shift_Calendar-1 |  | 6h | 343.75 | 343.75 |
| 205 | 1.8.6.1 | 3" Nozzle - 2 Nos | 2h | 2018-06-28 21:25 | 2018-06-29 07:25 | 201 | 2018-06-02 21:25 | 2018-06-04 07:25 | 2h | 18.89d | 0d | TEAM_2Shift_Calendar-1 | Grinder | 2h | 112.5 | 112.5 |
| 206 | 1.8.6.2 | 2" NB - 2 Nos | 2h | 2018-06-29 07:25 | 2018-06-29 09:25 | 202 | 2018-06-04 07:25 | 2018-06-04 09:25 | 2h | 18.74d | 0d | TEAM_2Shift_Calendar-1 | Grinder | 2h | 112.5 | 112.5 |
| 207 | 1.8.6.3 | Inspection | 1h | 2018-06-29 09:25 | 2018-06-29 10:25 | 205, 206 | 2018-06-04 09:25 | 2018-06-04 10:25 | 1h | 49.44d |  | TEAM_2Shift_Calendar-1 | Helper; Fitter | 2h | 118.75 | 118.75 |
| 208 | 1.8.7 | **Sh Nozzzle Fit Up** | 0.25d | 2018-06-29 07:25 | 2018-06-29 11:25 |  | 2018-06-04 07:25 | 2018-06-04 11:25 | 0.25d | 18.86d |  | TEAM_2Shift_Calendar-1 |  | 10h | 631.25 | 631.25 |
| 209 | 1.8.7.1 | 3" Nozzle - 2 Nos | 1h | 2018-06-29 07:25 | 2018-06-29 08:25 | 205 | 2018-06-04 07:25 | 2018-06-04 08:25 | 1h | 18.89d | 0d | TEAM_2Shift_Calendar-1 | Helper; SMAW Welder; Fitter [200%] | 4h | 256.25 | 256.25 |
| 210 | 1.8.7.2 | 2" NB - 2 Nos | 1h | 2018-06-29 09:25 | 2018-06-29 10:25 | 206 | 2018-06-04 09:25 | 2018-06-04 10:25 | 1h | 18.74d | 0d | TEAM_2Shift_Calendar-1 | Helper; SMAW Welder; Fitter [200%] | 4h | 256.25 | 256.25 |
| 211 | 1.8.7.3 | DP Check | 1h | 2018-06-29 10:25 | 2018-06-29 11:25 | 209, 210 | 2018-06-04 10:25 | 2018-06-04 11:25 | 1h | 49.38d |  | TEAM_2Shift_Calendar-1 | Helper; Fitter | 2h | 118.75 | 118.75 |
| 212 | 1.8.8 | **Sh Nozzle Fit Up Inspection** | 0.22d | 2018-06-29 08:25 | 2018-06-29 11:55 |  | 2018-06-04 08:25 | 2018-06-04 11:55 | 0.22d | 18.74d | 0d | TEAM_2Shift_Calendar-1 |  | 5h | 296.88 | 296.88 |
| 213 | 1.8.8.1 | 3" Nozzle - 2 Nos | 1h | 2018-06-29 08:25 | 2018-06-29 09:25 | 209 | 2018-06-04 08:25 | 2018-06-04 09:25 | 1h | 18.89d |  | TEAM_2Shift_Calendar-1 | Helper; Fitter | 2h | 118.75 | 118.75 |
| 214 | 1.8.8.2 | 2" NB - 2 Nos | 1h | 2018-06-29 10:25 | 2018-06-29 11:25 | 210 | 2018-06-04 10:25 | 2018-06-04 11:25 | 1h | 18.74d | 0d | TEAM_2Shift_Calendar-1 | Helper; Fitter | 2h | 118.75 | 118.75 |
| 215 | 1.8.8.3 | DP Check | 0.5h | 2018-06-29 11:25 | 2018-06-29 11:55 | 214 | 2018-06-04 11:25 | 2018-06-04 11:55 | 0.5h | 18.74d |  | TEAM_2Shift_Calendar-1 | Helper; Fitter | 1h | 59.38 | 59.38 |

| ID | WBS | Task | Duration | Start | Finish | Predecessors | Baseline start | Baseline finish | Baseline duration | Total slack | Free slack | Calendar | Resources | Work | Cost | Baseline cost |
| --- | --- | --- | --- | --- | --- | --- | --- | --- | --- | --- | --- | --- | --- | --- | --- | --- |
| 216 | 1.8.9 | **Sh Nozzle Welding** | 1.38d | 2018-06-29 11:55 | 2018-06-30 17:55 |  | 2018-06-04 11:55 | 2018-06-05 17:55 | 1.38d | 18.74d | 0d | TEAM_2Shift_Calendar-1 |  | 28h | 1,543.75 | 1,543.75 |
| 217 | 1.8.9.1 | Sh Nozzel Welding Arrangement | 9h | 2018-06-29 11:55 | 2018-06-29 20:55 | 212 | 2018-06-04 11:55 | 2018-06-04 20:55 | 9h | 18.74d | 0d | TEAM_2Shift_Calendar-1 | Store | 2h |  |  |
| 218 | 1.8.9.2 | Sh Nozzel WeldingB1,B2 | 5.5h | 2018-06-29 20:55 | 2018-06-30 10:25 | 217 | 2018-06-04 20:55 | 2018-06-05 10:25 | 5.5h | 18.74d | 0d | TEAM_2Shift_Calendar-1 | Helper; SMAW Welder | 11h | 653.12 | 653.12 |
| 219 | 1.8.9.3 | Sh Nozzel WeldingV1,D1 | 4.5h | 2018-06-30 10:25 | 2018-06-30 14:55 | 218 | 2018-06-05 10:25 | 2018-06-05 14:55 | 4.5h | 18.74d | 0d | TEAM_2Shift_Calendar-1 | Helper; SMAW Welder | 9h | 534.38 | 534.38 |
| 220 | 1.8.9.4 | Sh Nozzel Root DP Check | 1h | 2018-06-30 14:55 | 2018-06-30 15:55 | 219 | 2018-06-05 14:55 | 2018-06-05 15:55 | 1h | 18.74d | 0d | TEAM_2Shift_Calendar-1 | Helper; Fitter | 2h | 118.75 | 118.75 |
| 221 | 1.8.9.5 | Sh Nozzel Inner Weld | 1h | 2018-06-30 15:55 | 2018-06-30 16:55 | 220 | 2018-06-05 15:55 | 2018-06-05 16:55 | 1h | 18.74d | 0d | TEAM_2Shift_Calendar-1 | SMAW Welder; Helper | 2h | 118.75 | 118.75 |
| 222 | 1.8.9.6 | Sh Nozzel Inner Weld | 1h | 2018-06-30 16:55 | 2018-06-30 17:55 | 221 | 2018-06-05 16:55 | 2018-06-05 17:55 | 1h | 18.74d |  | TEAM_2Shift_Calendar-1 | SMAW Welder; Helper | 2h | 118.75 | 118.75 |
| 223 | 1.8.10 | **Sh Saddle Welding** | 1.38d | 2018-06-30 17:55 | 2018-07-03 07:55 |  | 2018-06-05 17:55 | 2018-06-07 07:55 | 1.38d | 18.74d | 0d | TEAM_2Shift_Calendar-1 |  | 79h | 4,825 | 4,825 |
| 224 | 1.8.10.1 | Sh-Saddle Pad Fit Up | 3h | 2018-06-30 17:55 | 2018-06-30 20:55 | 141, 216 | 2018-06-05 17:55 | 2018-06-05 20:55 | 3h | 18.74d | 0d | TEAM_2Shift_Calendar-1 | SMAW Welder; Helper; Fitter | 9h | 562.5 | 562.5 |
| 225 | 1.8.10.2 | Sh-Saddle Pad Welding | 4h | 2018-06-30 20:55 | 2018-07-02 08:55 | 224 | 2018-06-05 20:55 | 2018-06-06 08:55 | 4h | 18.74d | 0d | TEAM_2Shift_Calendar-1 | Helper [200%]; SMAW Welder [200%] | 16h | 950 | 950 |
| 226 | 1.8.10.3 | Sh-Saddle Matching | 4h | 2018-07-02 08:55 | 2018-07-02 12:55 | 225 | 2018-06-06 08:55 | 2018-06-06 12:55 | 4h | 18.74d | 0d | TEAM_2Shift_Calendar-1 | Grinder [200%]; Fitter [200%] | 16h | 1,000 | 1,000 |
| 227 | 1.8.10.4 | Sh-Saddle Fit Up | 4h | 2018-07-02 12:55 | 2018-07-02 16:55 | 226 | 2018-06-06 12:55 | 2018-06-06 16:55 | 4h | 18.74d | 0d | TEAM_2Shift_Calendar-1 | Fitter [200%]; Helper; SMAW Welder | 16h | 1,025 | 1,025 |
| 228 | 1.8.10.5 | Sh-Saddle Welding | 4h | 2018-07-02 16:55 | 2018-07-02 20:55 | 227 | 2018-06-06 16:55 | 2018-06-06 20:55 | 4h | 18.74d | 0d | TEAM_2Shift_Calendar-1 | Helper [200%]; SMAW Welder [200%] | 16h | 950 | 950 |
| 229 | 1.8.10.6 | Sh-Saddle Dress Up | 3h | 2018-07-02 20:55 | 2018-07-03 07:55 | 228 | 2018-06-06 20:55 | 2018-06-07 07:55 | 3h | 18.74d |  | TEAM_2Shift_Calendar-1 | Grinder [200%] | 6h | 337.5 | 337.5 |
| 230 | 1.8.11 | **Sh Nde Clearence** | 0.5d | 2018-07-03 07:55 | 2018-07-03 15:55 |  | 2018-06-07 07:55 | 2018-06-07 15:55 | 0.5d | 46.1d |  | TEAM_2Shift_Calendar-1 |  | 16h | 950 | 950 |
| 231 | 1.8.11.1 | Sh-Sh Nde Clearence | 4h | 2018-07-03 07:55 | 2018-07-03 11:55 | 223 | 2018-06-07 07:55 | 2018-06-07 11:55 | 4h | 46.1d | 0d | TEAM_2Shift_Calendar-1 | Helper; Fitter | 8h | 475 | 475 |
| 232 | 1.8.11.2 | TPI Inspection | 4h | 2018-07-03 11:55 | 2018-07-03 15:55 | 231 | 2018-06-07 11:55 | 2018-06-07 15:55 | 4h | 46.1d |  | TEAM_2Shift_Calendar-1 | Helper; Fitter | 8h | 475 | 475 |
| 233 | 1.9 | **Tube Bundle Fabrication** | 18.49d | 2018-07-21 21:00 | 2018-08-16 12:48 |  | 2018-07-09 21:00 | 2018-08-02 12:48 | 18.49d | 2.92d |  | TEAM_2Shift_Calendar-1 |  | 503.5h | 29,057.5 | 29,057.5 |
| 234 | 1.9.1 | **Tube Bundle Assy** | 1.25d | 2018-07-21 21:00 | 2018-07-24 09:00 |  | 2018-07-09 21:00 | 2018-07-11 09:00 | 1.25d | 2.92d | 0d | TEAM_2Shift_Calendar-1 |  | 76h | 4,775 | 4,775 |
| 235 | 1.9.1.1 | Frame Set Up & Tube Sht Set Up | 12h | 2018-07-21 21:00 | 2018-07-23 17:00 | 35, 223 | 2018-07-09 21:00 | 2018-07-10 17:00 | 12h | 2.92d | 0d | TEAM_2Shift_Calendar-1 | SMAW Welder; Tube Sheet (Cost) [0.1%]; Fitter [200%] | 36h | 2,475 | 2,475 |
| 236 | 1.9.1.2 | Skeleton Assy30Baffles | 8h | 2018-07-23 17:00 | 2018-07-24 09:00 | 235 | 2018-07-10 17:00 | 2018-07-11 09:00 | 8h | 2.92d |  | TEAM_2Shift_Calendar-1 | Helper [300%]; Fitter [200%] | 40h | 2,300 | 2,300 |
| 237 | 1.9.2 | **Tube Insert** | 0.69d | 2018-07-24 09:00 | 2018-07-24 20:00 |  | 2018-07-11 09:00 | 2018-07-11 20:00 | 0.69d | 2.92d | 0d | TEAM_2Shift_Calendar-1 |  | 55h | 2,956.25 | 2,956.25 |
| 238 | 1.9.2.1 | Tube Insert 50% | 5.5h | 2018-07-24 09:00 | 2018-07-24 14:30 | 234 | 2018-07-11 09:00 | 2018-07-11 14:30 | 5.5h | 2.92d | 0d | TEAM_2Shift_Calendar-1 | Helper [400%]; Fitter | 27.5h | 1,478.12 | 1,478.12 |
| 239 | 1.9.2.2 | Tube Insert 50% | 5.5h | 2018-07-24 14:30 | 2018-07-24 20:00 | 238 | 2018-07-11 14:30 | 2018-07-11 20:00 | 5.5h | 2.92d |  | TEAM_2Shift_Calendar-1 | Helper [400%]; Fitter | 27.5h | 1,478.12 | 1,478.12 |

| ID | WBS | Task | Duration | Start | Finish | Predecessors | Baseline start | Baseline finish | Baseline duration | Total slack | Free slack | Calendar | Resources | Work | Cost | Baseline cost |
| --- | --- | --- | --- | --- | --- | --- | --- | --- | --- | --- | --- | --- | --- | --- | --- | --- |
| 240 | 1.9.3 | **Sealing Strip Fit Up Welding** | 0.62d | 2018-07-24 20:00 | 2018-07-25 14:00 |  | 2018-07-11 20:00 | 2018-07-12 14:00 | 0.62d | 2.92d | 0d | TEAM_2Shift_Calendar-1 |  | 19h | 1,125 | 1,125 |
| 241 | 1.9.3.1 | Sealing Strip Fit Up | 8h | 2018-07-24 20:00 | 2018-07-25 12:00 | 237 | 2018-07-11 20:00 | 2018-07-12 12:00 | 8h | 2.92d | 0d | TEAM_2Shift_Calendar-1 | Helper; Fitter | 16h | 950 | 950 |
| 242 | 1.9.3.2 | Sliding Strip Welding | 1h | 2018-07-25 12:00 | 2018-07-25 13:00 | 241 | 2018-07-12 12:00 | 2018-07-12 13:00 | 1h | 2.92d | 0d | TEAM_2Shift_Calendar-1 | Helper; SMAW Welder | 2h | 118.75 | 118.75 |
| 243 | 1.9.3.3 | Seal/Slid Trip Weld Grind | 1h | 2018-07-25 13:00 | 2018-07-25 14:00 | 242 | 2018-07-12 13:00 | 2018-07-12 14:00 | 1h | 2.92d |  | TEAM_2Shift_Calendar-1 | Grinder | 1h | 56.25 | 56.25 |
| 244 | 1.9.4 | **Tube Bundle Insert** | 15.93d | 2018-07-25 14:00 | 2018-08-16 12:48 |  | 2018-07-12 14:00 | 2018-08-02 12:48 | 15.93d | 2.92d | 0.29d | TEAM_2Shift_Calendar-1 |  | 353.5h | 20,201.25 | 20,201.25 |
| 245 | 1.9.4.1 | Tube Bundle Insert In Shell | 16h | 2018-07-25 14:00 | 2018-07-26 14:00 | 240 | 2018-07-12 14:00 | 2018-07-13 14:00 | 16h | 2.92d | 0d | TEAM_2Shift_Calendar-1 | Helper [800%]; Fitter [300%] | 176h | 9,700 | 9,700 |
| 246 | 1.9.4.2 | Tubesheet 1 fitup | 4h | 2018-07-26 14:00 | 2018-07-26 18:00 | 245 | 2018-07-13 14:00 | 2018-07-13 18:00 | 4h | 2.92d | 0d | TEAM_2Shift_Calendar-1 | Helper [400%]; Fitter [200%] | 24h | 1,350 | 1,350 |
| 247 | 1.9.4.3 | DP CheckFlg CS1 | 0.1h | 2018-07-26 18:00 | 2018-07-26 18:06 | 246 | 2018-07-13 18:00 | 2018-07-13 18:06 | 0.1h | 2.92d | 0d | TEAM_2Shift_Calendar-1 | Helper; Fitter | 0.2h | 11.88 | 11.88 |
| 248 | 1.9.4.4 | Tubesheet 2 fixing with tubes | 4h | 2018-07-26 18:06 | 2018-07-27 06:06 | 247 | 2018-07-13 18:06 | 2018-07-16 06:06 | 4h | 2.92d | 0d | TEAM_2Shift_Calendar-1 | Helper [600%]; Fitter [300%] | 36h | 2,025 | 2,025 |
| 249 | 1.9.4.5 | Tubesheet 2 fitup | 4h | 2018-07-27 06:06 | 2018-07-27 10:06 | 248 | 2018-07-16 06:06 | 2018-07-16 10:06 | 4h | 2.92d | 0d | TEAM_2Shift_Calendar-1 | SMAW Welder; Helper [200%]; Fitter | 16h | 950 | 950 |
| 250 | 1.9.4.6 | DP CheckFlg CS1 | 0.1h | 2018-07-27 10:06 | 2018-07-27 10:12 | 249 | 2018-07-16 10:06 | 2018-07-16 10:12 | 0.1h | 2.92d | 0d | TEAM_2Shift_Calendar-1 | Helper; Fitter | 0.2h | 11.88 | 11.88 |
| 251 | 1.9.4.7 | Tubesheet 1 Welding | 6h | 2018-07-27 10:12 | 2018-07-27 16:12 | 250 | 2018-07-16 10:12 | 2018-07-16 16:12 | 6h | 2.92d | 0d | TEAM_2Shift_Calendar-1 | Helper [200%]; SMAW Welder | 18h | 1,012.5 | 1,012.5 |
| 252 | 1.9.4.8 | Tubesheet 2 Welding | 6h | 2018-07-27 16:12 | 2018-07-30 06:12 | 251 | 2018-07-16 16:12 | 2018-07-17 06:12 | 6h | 2.92d | 0d | TEAM_2Shift_Calendar-1 | Helper [200%]; SMAW Welder | 18h | 1,012.5 | 1,012.5 |
| 253 | 1.9.4.9 | Sh CS Welding Back ChipFlg1 | 0.1h | 2018-07-30 06:12 | 2018-07-30 06:18 | 252 | 2018-07-17 06:12 | 2018-07-17 06:18 | 0.1h | 2.92d | 0d | TEAM_2Shift_Calendar-1 | Grinder | 0.1h | 5.62 | 5.62 |
| 254 | 1.9.4.10 | Tubesheet 2 tube trimming | 6h | 2018-07-30 06:18 | 2018-07-30 12:18 | 253 | 2018-07-17 06:18 | 2018-07-17 12:18 | 6h | 2.92d | 0d | TEAM_2Shift_Calendar-1 | Grinder | 6h | 337.5 | 337.5 |
| 255 | 1.9.4.11 | Tubesheet 2 tube welding | 6h | 2018-07-30 12:18 | 2018-07-30 18:18 | 254 | 2018-07-17 12:18 | 2018-07-17 18:18 | 6h | 2.92d | 0d | TEAM_2Shift_Calendar-1 | Helper [200%]; TIG Welder | 18h | 1,350 | 1,350 |
| 256 | 1.9.4.12 | DP Check | 0.5h | 2018-07-30 18:18 | 2018-07-30 18:48 | 255 | 2018-07-17 18:18 | 2018-07-17 18:48 | 0.5h | 2.92d | 0d | TEAM_2Shift_Calendar-1 | Helper; Fitter | 1h | 59.38 | 59.38 |
| 257 | 1.9.4.13 | Tube expansion on both sides- Stage 1 | 5h | 2018-07-30 18:48 | 2018-07-31 07:48 | 256 | 2018-07-17 18:48 | 2018-07-18 07:48 | 5h | 2.92d | 0d | TEAM_2Shift_Calendar-1 | Helper [200%]; Fitter [200%] | 20h | 1,187.5 | 1,187.5 |
| 258 | 1.9.4.14 | Tube expansion on both sides- Stage 2 | 5h | 2018-07-31 07:48 | 2018-07-31 12:48 | 257 | 2018-07-18 07:48 | 2018-07-18 12:48 | 5h | 2.92d | 0d | TEAM_2Shift_Calendar-1 | Helper [200%]; Fitter [200%] | 20h | 1,187.5 | 1,187.5 |
| 259 | 1.9.4.15 | Dummy Activity | 12d | 2018-07-31 12:48 | 2018-08-16 12:48 | 258 | 2018-07-18 12:48 | 2018-08-02 12:48 | 12d | 2.92d |  | TEAM_2Shift_Calendar-1 |  |  |  |  |
| 260 | 1.10 | **Channel Fabrication** | 54.71d | 2018-06-07 06:00 | 2018-08-16 17:25 |  | 2018-05-14 06:00 | 2018-07-20 17:25 | 54.71d | 2.63d | 0d | TEAM_2Shift_Calendar-1 |  | 244.68h | 12,593.5 | 12,593.5 |
| 261 | 1.10.1 | **Channel Shell LS Welding - RHS** | 0.22d | 2018-06-07 06:00 | 2018-06-07 09:30 |  | 2018-05-14 06:00 | 2018-05-14 09:30 | 0.22d | 47.04d | 0d | TEAM_2Shift_Calendar-1 |  | 1h |  |  |
| 262 | 1.10.1.1 | Ch Plate Trasnfer | 3.5h | 2018-06-07 06:00 | 2018-06-07 09:30 | 2FS+45d | 2018-05-14 06:00 | 2018-05-14 09:30 | 3.5h | 47.04d |  | TEAM_2Shift_Calendar-1 | Plate (Cost) [0.1%]; Store | 1h |  |  |
| 263 | 1.10.2 | **Ch CS Fit UpFlg1** | 0.28d | 2018-06-07 09:30 | 2018-06-07 14:00 |  | 2018-05-14 09:30 | 2018-05-14 14:00 | 0.28d | 47.04d | 0d | TEAM_2Shift_Calendar-1 |  | 13h | 837.5 | 837.5 |
| 264 | 1.10.2.1 | Ch Cir EP Correction | 1.5h | 2018-06-07 09:30 | 2018-06-07 11:00 | 261 | 2018-05-14 09:30 | 2018-05-14 11:00 | 1.5h | 47.04d | 0d | TEAM_2Shift_Calendar-1 | Fitter [200%] | 3h | 206.25 | 206.25 |
| 265 | 1.10.2.2 | Ch CS Fit UpFlg1 | 2h | 2018-06-07 11:00 | 2018-06-07 13:00 | 264 | 2018-05-14 11:00 | 2018-05-14 13:00 | 2h | 47.04d | 0d | TEAM_2Shift_Calendar-1 | SMAW Welder; Helper; Fitter [200%] | 8h | 512.5 | 512.5 |
| 266 | 1.10.2.3 | Ch CS Tack DP Check Flg1 | 1h | 2018-06-07 13:00 | 2018-06-07 14:00 | 265 | 2018-05-14 13:00 | 2018-05-14 14:00 | 1h | 47.04d |  | TEAM_2Shift_Calendar-1 | Helper; Fitter | 2h | 118.75 | 118.75 |

| ID | WBS | Task | Duration | Start | Finish | Predecessors | Baseline start | Baseline finish | Baseline duration | Total slack | Free slack | Calendar | Resources | Work | Cost | Baseline cost |
| --- | --- | --- | --- | --- | --- | --- | --- | --- | --- | --- | --- | --- | --- | --- | --- | --- |
| 267 | 1.10.3 | **Ch Dish CS WeldingFlg1** | 0.36d | 2018-06-07 14:00 | 2018-06-07 19:45 |  | 2018-05-14 14:00 | 2018-05-14 19:45 | 0.36d | 47.04d | 0d | TEAM_2Shift_Calendar-1 |  | 12h | 689.06 | 689.06 |
| 268 | 1.10.3.1 | Ch CS Welding Transfere | 2h | 2018-06-07 14:00 | 2018-06-07 16:00 | 263 | 2018-05-14 14:00 | 2018-05-14 16:00 | 2h | 47.04d | 0d | TEAM_2Shift_Calendar-1 | Helper [200%]; Fitter | 6h | 337.5 | 337.5 |
| 269 | 1.10.3.2 | Ch CS Welding OuterFlg1 | 2.25h | 2018-06-07 16:00 | 2018-06-07 18:15 | 268 | 2018-05-14 16:00 | 2018-05-14 18:15 | 2.25h | 47.04d | 0d | TEAM_2Shift_Calendar-1 | Helper; SMAW Welder | 4.5h | 267.19 | 267.19 |
| 270 | 1.10.3.3 | Ch CS Welding Back ChipFlg1 | 0.25h | 2018-06-07 18:15 | 2018-06-07 18:30 | 269 | 2018-05-14 18:15 | 2018-05-14 18:30 | 0.25h | 47.04d | 0d | TEAM_2Shift_Calendar-1 | Grinder | 0.25h | 14.06 | 14.06 |
| 271 | 1.10.3.4 | Ch CS Flush GrindingFlg1 | 1.25h | 2018-06-07 18:30 | 2018-06-07 19:45 | 270 | 2018-05-14 18:30 | 2018-05-14 19:45 | 1.25h | 47.04d |  | TEAM_2Shift_Calendar-1 | Grinder | 1.25h | 70.31 | 70.31 |
| 272 | 1.10.4 | **Ch CS Fit UpFlg2** | 44.24d | 2018-06-07 19:45 | 2018-08-03 07:36 |  | 2018-05-14 19:45 | 2018-07-09 07:36 | 44.24d | 2.97d | 0d | TEAM_2Shift_Calendar-1 |  | 7.44h | 461.44 | 461.44 |
| 273 | 1.10.4.1 | Ch Length Cutting | 0.17h | 2018-06-07 19:45 | 2018-06-07 19:55 | 267 | 2018-05-14 19:45 | 2018-05-14 19:55 | 0.17h | 47.04d | 0d | TEAM_2Shift_Calendar-1 | Helper; Gas Cutter | 0.34h | 20.19 | 20.19 |
| 274 | 1.10.4.2 | Ch Cir EP Correction | 1.5h | 2018-06-07 19:55 | 2018-06-07 21:25 | 273 | 2018-05-14 19:55 | 2018-05-14 21:25 | 1.5h | 47.04d | 44.07d | TEAM_2Shift_Calendar-1 | Helper; Fitter | 3h | 178.12 | 178.12 |
| 275 | 1.10.4.3 | Ch CS Fit UpFlg2 | 1h | 2018-08-03 06:30 | 2018-08-03 07:30 | 3FS+20d, 274 | 2018-07-09 06:30 | 2018-07-09 07:30 | 1h | 2.97d | 0d | TEAM_2Shift_Calendar-1 | SMAW Welder; Helper; Fitter [200%] | 4h | 256.25 | 256.25 |
| 276 | 1.10.4.4 | Ch CS Tack DP CheckFlg2 | 0.1h | 2018-08-03 07:30 | 2018-08-03 07:36 | 275 | 2018-07-09 07:30 | 2018-07-09 07:36 | 0.1h | 2.97d |  | TEAM_2Shift_Calendar-1 | Fitter | 0.1h | 6.88 | 6.88 |
| 277 | 1.10.5 | **Ch CS Flg Welding** | 0.3d | 2018-08-03 07:36 | 2018-08-03 12:21 |  | 2018-07-09 07:36 | 2018-07-09 12:21 | 0.3d | 2.97d | 0d | TEAM_2Shift_Calendar-1 |  | 11h | 632.81 | 632.81 |
| 278 | 1.10.5.1 | Ch CS Welding TransfereFlg2 | 2h | 2018-08-03 07:36 | 2018-08-03 09:36 | 272 | 2018-07-09 07:36 | 2018-07-09 09:36 | 2h | 2.97d | 0d | TEAM_2Shift_Calendar-1 | Helper [200%]; Fitter | 6h | 337.5 | 337.5 |
| 279 | 1.10.5.2 | Ch CS Welding OuterFlg2 | 2.25h | 2018-08-03 09:36 | 2018-08-03 11:51 | 278 | 2018-07-09 09:36 | 2018-07-09 11:51 | 2.25h | 2.97d | 0d | TEAM_2Shift_Calendar-1 | Helper; SMAW Welder | 4.5h | 267.19 | 267.19 |
| 280 | 1.10.5.3 | Ch CS Welding Back ChipFlg2 | 0.25h | 2018-08-03 11:51 | 2018-08-03 12:06 | 279 | 2018-07-09 11:51 | 2018-07-09 12:06 | 0.25h | 2.97d | 0d | TEAM_2Shift_Calendar-1 | Grinder | 0.25h | 14.06 | 14.06 |
| 281 | 1.10.5.4 | Ch CS Flush GrindingFlg2 | 0.25h | 2018-08-03 12:06 | 2018-08-03 12:21 | 280 | 2018-07-09 12:06 | 2018-07-09 12:21 | 0.25h | 2.97d |  | TEAM_2Shift_Calendar-1 | Grinder | 0.25h | 14.06 | 14.06 |
| 282 | 1.10.6 | **Ch CS Welding RtFlg1 & 2** | 2d | 2018-08-03 12:21 | 2018-08-06 12:21 |  | 2018-07-09 12:21 | 2018-07-11 12:21 | 2d | 2.97d | 0d | TEAM_2Shift_Calendar-1 |  | 16h |  |  |
| 283 | 1.10.6.1 | Ch CS Welding Rt | 1d | 2018-08-03 12:21 | 2018-08-06 12:21 | 277 | 2018-07-09 12:21 | 2018-07-11 12:21 | 1d | 1.47d |  |  | SC Radiography (Work) | 16h |  |  |
| 284 | 1.10.7 | **Channel Nozzel Marking** | 0.19d | 2018-08-06 12:21 | 2018-08-06 15:21 |  | 2018-07-11 12:21 | 2018-07-11 15:21 | 0.19d | 2.97d | 0d | TEAM_2Shift_Calendar-1 |  | 6h | 356.25 | 356.25 |
| 285 | 1.10.7.1 | Ch Nozzel Marking3"Nb- 1 No & 2" - 3 Nos | 3h | 2018-08-06 12:21 | 2018-08-06 15:21 | 282 | 2018-07-11 12:21 | 2018-07-11 15:21 | 3h | 2.97d |  | TEAM_2Shift_Calendar-1 | Helper; Fitter | 6h | 356.25 | 356.25 |
| 286 | 1.10.8 | **Ch Nozzel Opening** | 0.25d | 2018-08-06 15:21 | 2018-08-06 19:21 |  | 2018-07-11 15:21 | 2018-07-11 19:21 | 0.25d | 2.97d | 0d | TEAM_2Shift_Calendar-1 |  | 8h | 475 | 475 |
| 287 | 1.10.8.1 | Ch Nozzel Openning-TopA2,V2, N10 | 2.5h | 2018-08-06 15:21 | 2018-08-06 17:51 | 284 | 2018-07-11 15:21 | 2018-07-11 17:51 | 2.5h | 2.97d | 0d | TEAM_2Shift_Calendar-1 | Helper; Gas Cutter | 5h | 296.88 | 296.88 |
| 288 | 1.10.8.2 | Ch Nozzel Openning-BottomN6 | 1.5h | 2018-08-06 17:51 | 2018-08-06 19:21 | 287 | 2018-07-11 17:51 | 2018-07-11 19:21 | 1.5h | 2.97d |  | TEAM_2Shift_Calendar-1 | Helper; Gas Cutter | 3h | 178.12 | 178.12 |
| 289 | 1.10.9 | **Ch Nozzel Open EP** | 0.25d | 2018-08-06 19:21 | 2018-08-07 07:21 |  | 2018-07-11 19:21 | 2018-07-12 07:21 | 0.25d | 2.97d | 0d | TEAM_2Shift_Calendar-1 |  | 8h | 425 | 425 |
| 290 | 1.10.9.1 | Ch Nozzel EPA2,V2, N10 | 2.5h | 2018-08-06 19:21 | 2018-08-06 21:51 | 286 | 2018-07-11 19:21 | 2018-07-11 21:51 | 2.5h | 2.97d | 0d | TEAM_2Shift_Calendar-1 | Helper; Grinder | 5h | 265.62 | 265.62 |
| 291 | 1.10.9.2 | Ch Nozzel EPN6 | 1.5h | 2018-08-06 21:51 | 2018-08-07 07:21 | 290 | 2018-07-11 21:51 | 2018-07-12 07:21 | 1.5h | 2.97d |  | TEAM_2Shift_Calendar-1 | Helper; Grinder | 3h | 159.38 | 159.38 |

| ID | WBS | Task | Duration | Start | Finish | Predecessors | Baseline start | Baseline finish | Baseline duration | Total slack | Free slack | Calendar | Resources | Work | Cost | Baseline cost |
| --- | --- | --- | --- | --- | --- | --- | --- | --- | --- | --- | --- | --- | --- | --- | --- | --- |
| 292 | 1.10.10 | **Ch Nozzel Fit Up** | 0.25d | 2018-08-07 07:21 | 2018-08-07 11:21 |  | 2018-07-12 07:21 | 2018-07-12 11:21 | 0.25d | 2.97d | 0d | TEAM_2Shift_Calendar-1 |  | 16h | 1,025 | 1,025 |
| 293 | 1.10.10.1 | Ch Nozzel Fit UpA2,V2, N10 | 3h | 2018-08-07 07:21 | 2018-08-07 10:21 | 289 | 2018-07-12 07:21 | 2018-07-12 10:21 | 3h | 2.97d | 0d | TEAM_2Shift_Calendar-1 | SMAW Welder; Helper; Fitter [200%] | 12h | 768.75 | 768.75 |
| 294 | 1.10.10.2 | Ch Nozzel Fit UpN6 | 1h | 2018-08-07 10:21 | 2018-08-07 11:21 | 293 | 2018-07-12 10:21 | 2018-07-12 11:21 | 1h | 2.97d |  | TEAM_2Shift_Calendar-1 | SMAW Welder; Helper; Fitter [200%] | 4h | 256.25 | 256.25 |
| 295 | 1.10.11 | **Ch Nozzel Fit Up Inspection** | 0.12d | 2018-08-07 11:21 | 2018-08-07 13:21 |  | 2018-07-12 11:21 | 2018-07-12 13:21 | 0.12d | 2.97d | 0d | TEAM_2Shift_Calendar-1 |  | 4h | 237.5 | 237.5 |
| 296 | 1.10.11.1 | Ch Nozzel InspectionA2,V2, N10 | 1h | 2018-08-07 11:21 | 2018-08-07 12:21 | 292 | 2018-07-12 11:21 | 2018-07-12 12:21 | 1h | 2.97d | 0d | TEAM_2Shift_Calendar-1 | Helper; Fitter | 2h | 118.75 | 118.75 |
| 297 | 1.10.11.2 | Ch Nozzel InspectionN6 | 1h | 2018-08-07 12:21 | 2018-08-07 13:21 | 296 | 2018-07-12 12:21 | 2018-07-12 13:21 | 1h | 2.97d |  | TEAM_2Shift_Calendar-1 | Helper; Fitter | 2h | 118.75 | 118.75 |
| 298 | 1.10.12 | **Ch Nozzel Welding** | 1.02d | 2018-08-07 13:21 | 2018-08-08 13:39 |  | 2018-07-12 13:21 | 2018-07-13 13:39 | 1.02d | 2.97d | 0d | TEAM_2Shift_Calendar-1 |  | 30.6h | 1,773.12 | 1,773.12 |
| 299 | 1.10.12.1 | Ch Nozzel Welding Arrangement | 1h | 2018-08-07 13:21 | 2018-08-07 14:21 | 295 | 2018-07-12 13:21 | 2018-07-12 14:21 | 1h | 2.97d | 0d | TEAM_2Shift_Calendar-1 | Helper; Fitter | 2h | 118.75 | 118.75 |
| 300 | 1.10.12.2 | Ch Nozzel WeldingA2,V2, N10 | 4h | 2018-08-07 14:21 | 2018-08-07 18:21 | 299 | 2018-07-12 14:21 | 2018-07-12 18:21 | 4h | 2.97d | 0d | TEAM_2Shift_Calendar-1 | Helper; SMAW Welder | 8h | 475 | 475 |
| 301 | 1.10.12.3 | Ch Nozzel WeldingN6 | 2h | 2018-08-07 18:21 | 2018-08-07 20:21 | 300 | 2018-07-12 18:21 | 2018-07-12 20:21 | 2h | 2.97d | 0d | TEAM_2Shift_Calendar-1 | Helper; SMAW Welder | 4h | 237.5 | 237.5 |
| 302 | 1.10.12.4 | Ch Nozzel Root DP Check | 0.3h | 2018-08-07 20:21 | 2018-08-07 20:39 | 301 | 2018-07-12 20:21 | 2018-07-12 20:39 | 0.3h | 2.97d | 0d | TEAM_2Shift_Calendar-1 | Helper; SMAW Welder | 0.6h | 35.62 | 35.62 |
| 303 | 1.10.12.5 | Ch Nozzel Inner WeldB1 | 1h | 2018-08-07 20:39 | 2018-08-07 21:39 | 302 | 2018-07-12 20:39 | 2018-07-12 21:39 | 1h | 2.97d | 0d | TEAM_2Shift_Calendar-1 | Helper; SMAW Welder | 2h | 118.75 | 118.75 |
| 304 | 1.10.12.6 | Ch Nozzel Inner WeldD1 | 1h | 2018-08-07 21:39 | 2018-08-08 06:39 | 303 | 2018-07-12 21:39 | 2018-07-13 06:39 | 1h | 2.97d | 0d | TEAM_2Shift_Calendar-1 | Helper; SMAW Welder | 2h | 118.75 | 118.75 |
| 305 | 1.10.12.7 | Rf Pad Fit Up & Nozzle Fit UpA2,V2, N10,N6 | 2h | 2018-08-08 06:39 | 2018-08-08 08:39 | 304 | 2018-07-13 06:39 | 2018-07-13 08:39 | 2h | 2.97d | 0d | TEAM_2Shift_Calendar-1 | Helper; SMAW Welder | 4h | 237.5 | 237.5 |
| 306 | 1.10.12.8 | Rf Pad Fit Up Welding | 3h | 2018-08-08 08:39 | 2018-08-08 11:39 | 305 | 2018-07-13 08:39 | 2018-07-13 11:39 | 3h | 2.97d | 0d | TEAM_2Shift_Calendar-1 | Helper; Grinder | 6h | 318.75 | 318.75 |
| 307 | 1.10.12.9 | Nozzel Welding Flush Grind | 2h | 2018-08-08 11:39 | 2018-08-08 13:39 | 306 | 2018-07-13 11:39 | 2018-07-13 13:39 | 2h | 2.97d |  | TEAM_2Shift_Calendar-1 | Grinder | 2h | 112.5 | 112.5 |
| 308 | 1.10.13 | **Channel Nde & Pwht** | 0.12d | 2018-08-08 13:39 | 2018-08-08 15:39 |  | 2018-07-13 13:39 | 2018-07-13 15:39 | 0.12d | 2.97d | 0d | TEAM_2Shift_Calendar-1 |  | 2h | 137.5 | 137.5 |
| 309 | 1.10.13.1 | Ch Ch Nde Clearence | 2h | 2018-08-08 13:39 | 2018-08-08 15:39 | 298 | 2018-07-13 13:39 | 2018-07-13 15:39 | 2h | 2.97d |  | TEAM_2Shift_Calendar-1 | Fitter | 2h | 137.5 | 137.5 |
| 310 | 1.10.14 | **Channel Shell LS Welding - LHS** | 0.57d | 2018-08-08 15:39 | 2018-08-09 08:45 |  | 2018-07-13 15:39 | 2018-07-16 08:45 | 0.57d | 2.97d | 0d | TEAM_2Shift_Calendar-1 |  | 2.3h | 16.88 | 16.88 |
| 311 | 1.10.14.1 | Ch Plate Trasnfer | 9h | 2018-08-08 15:39 | 2018-08-09 08:39 | 308 | 2018-07-13 15:39 | 2018-07-16 08:39 | 9h | 2.97d | 0d | TEAM_2Shift_Calendar-1 | Store | 2h |  |  |
| 312 | 1.10.14.2 | Ch Marking | 0.1h | 2018-08-09 08:39 | 2018-08-09 08:45 | 311 | 2018-07-16 08:39 | 2018-07-16 08:45 | 0.1h | 2.97d |  | TEAM_2Shift_Calendar-1 | Helper [200%]; Fitter | 0.3h | 16.88 | 16.88 |
| 313 | 1.10.15 | **Ch CS Fit UpFlg1** | 0.19d | 2018-08-09 08:45 | 2018-08-09 11:45 |  | 2018-07-16 08:45 | 2018-07-16 11:45 | 0.19d | 2.97d | 0d | TEAM_2Shift_Calendar-1 |  | 10h | 640.62 | 640.62 |
| 314 | 1.10.15.1 | Ch Cir EP Correction | 0.5h | 2018-08-09 08:45 | 2018-08-09 09:15 | 310 | 2018-07-16 08:45 | 2018-07-16 09:15 | 0.5h | 2.97d | 0d | TEAM_2Shift_Calendar-1 | Fitter [200%] | 1h | 68.75 | 68.75 |
| 315 | 1.10.15.2 | Ch CS Fit UpFlg1 | 2h | 2018-08-09 09:15 | 2018-08-09 11:15 | 314 | 2018-07-16 09:15 | 2018-07-16 11:15 | 2h | 2.97d | 0d | TEAM_2Shift_Calendar-1 | SMAW Welder; Helper; Fitter [200%] | 8h | 512.5 | 512.5 |
| 316 | 1.10.15.3 | Ch CS Tack DP Check Flg1 | 0.5h | 2018-08-09 11:15 | 2018-08-09 11:45 | 315 | 2018-07-16 11:15 | 2018-07-16 11:45 | 0.5h | 2.97d |  | TEAM_2Shift_Calendar-1 | Helper; Fitter | 1h | 59.38 | 59.38 |

| ID | WBS | Task | Duration | Start | Finish | Predecessors | Baseline start | Baseline finish | Baseline duration | Total slack | Free slack | Calendar | Resources | Work | Cost | Baseline cost |
| --- | --- | --- | --- | --- | --- | --- | --- | --- | --- | --- | --- | --- | --- | --- | --- | --- |
| 317 | 1.10.16 | **Ch Dish CS WeldingFlg1** | 0.36d | 2018-08-09 11:45 | 2018-08-09 17:30 |  | 2018-07-16 11:45 | 2018-07-16 17:30 | 0.36d | 2.97d | 0d | TEAM_2Shift_Calendar-1 |  | 12h | 689.06 | 689.06 |
| 318 | 1.10.16.1 | Ch CS Welding Transfere | 2h | 2018-08-09 11:45 | 2018-08-09 13:45 | 313 | 2018-07-16 11:45 | 2018-07-16 13:45 | 2h | 2.97d | 0d | TEAM_2Shift_Calendar-1 | Helper [200%]; Fitter | 6h | 337.5 | 337.5 |
| 319 | 1.10.16.2 | Ch CS Welding OuterFlg1 | 2.25h | 2018-08-09 13:45 | 2018-08-09 16:00 | 318 | 2018-07-16 13:45 | 2018-07-16 16:00 | 2.25h | 2.97d | 0d | TEAM_2Shift_Calendar-1 | Helper; SMAW Welder | 4.5h | 267.19 | 267.19 |
| 320 | 1.10.16.3 | Ch CS Welding Back ChipFlg1 | 0.25h | 2018-08-09 16:00 | 2018-08-09 16:15 | 319 | 2018-07-16 16:00 | 2018-07-16 16:15 | 0.25h | 2.97d | 0d | TEAM_2Shift_Calendar-1 | Grinder | 0.25h | 14.06 | 14.06 |
| 321 | 1.10.16.4 | Ch CS Flush GrindingFlg1 | 1.25h | 2018-08-09 16:15 | 2018-08-09 17:30 | 320 | 2018-07-16 16:15 | 2018-07-16 17:30 | 1.25h | 2.97d |  | TEAM_2Shift_Calendar-1 | Grinder | 1.25h | 70.31 | 70.31 |
| 322 | 1.10.17 | **Ch CS Fit UpFlg2** | 0.23d | 2018-08-09 17:30 | 2018-08-09 21:10 |  | 2018-07-16 17:30 | 2018-07-16 21:10 | 0.23d | 2.97d | 0d | TEAM_2Shift_Calendar-1 |  | 8.34h | 523.31 | 523.31 |
| 323 | 1.10.17.1 | Ch Length Cutting | 0.17h | 2018-08-09 17:30 | 2018-08-09 17:40 | 317 | 2018-07-16 17:30 | 2018-07-16 17:40 | 0.17h | 2.97d | 0d | TEAM_2Shift_Calendar-1 | Helper; Gas Cutter | 0.34h | 20.19 | 20.19 |
| 324 | 1.10.17.2 | Ch Cir EP Correction | 1.5h | 2018-08-09 17:40 | 2018-08-09 19:10 | 323 | 2018-07-16 17:40 | 2018-07-16 19:10 | 1.5h | 2.97d | 0d | TEAM_2Shift_Calendar-1 | Helper; Fitter | 3h | 178.12 | 178.12 |
| 325 | 1.10.17.3 | Ch CS Fit UpFlg2 | 1h | 2018-08-09 19:10 | 2018-08-09 20:10 | 3FS+20d, 324 | 2018-07-16 19:10 | 2018-07-16 20:10 | 1h | 2.97d | 0d | TEAM_2Shift_Calendar-1 | SMAW Welder; Helper; Fitter [200%] | 4h | 256.25 | 256.25 |
| 326 | 1.10.17.4 | Ch CS Tack DP CheckFlg2 | 1h | 2018-08-09 20:10 | 2018-08-09 21:10 | 325 | 2018-07-16 20:10 | 2018-07-16 21:10 | 1h | 2.97d |  | TEAM_2Shift_Calendar-1 | Fitter | 1h | 68.75 | 68.75 |
| 327 | 1.10.18 | **Ch CS Flg Welding** | 0.23d | 2018-08-09 21:10 | 2018-08-10 08:55 |  | 2018-07-16 21:10 | 2018-07-17 08:55 | 0.23d | 2.97d | 0d | TEAM_2Shift_Calendar-1 |  | 8h | 464.06 | 464.06 |
| 328 | 1.10.18.1 | Ch CS Welding TransfereFlg2 | 1h | 2018-08-09 21:10 | 2018-08-10 06:10 | 322 | 2018-07-16 21:10 | 2018-07-17 06:10 | 1h | 2.97d | 0d | TEAM_2Shift_Calendar-1 | Helper [200%]; Fitter | 3h | 168.75 | 168.75 |
| 329 | 1.10.18.2 | Ch CS Welding OuterFlg2 | 2.25h | 2018-08-10 06:10 | 2018-08-10 08:25 | 328 | 2018-07-17 06:10 | 2018-07-17 08:25 | 2.25h | 2.97d | 0d | TEAM_2Shift_Calendar-1 | Helper; SMAW Welder | 4.5h | 267.19 | 267.19 |
| 330 | 1.10.18.3 | Ch CS Welding Back ChipFlg2 | 0.25h | 2018-08-10 08:25 | 2018-08-10 08:40 | 329 | 2018-07-17 08:25 | 2018-07-17 08:40 | 0.25h | 2.97d | 0d | TEAM_2Shift_Calendar-1 | Grinder | 0.25h | 14.06 | 14.06 |
| 331 | 1.10.18.4 | Ch CS Flush GrindingFlg2 | 0.25h | 2018-08-10 08:40 | 2018-08-10 08:55 | 330 | 2018-07-17 08:40 | 2018-07-17 08:55 | 0.25h | 2.97d |  | TEAM_2Shift_Calendar-1 | Grinder | 0.25h | 14.06 | 14.06 |
| 332 | 1.10.19 | **Ch CS Welding RtFlg1 & 2** | 2d | 2018-08-10 08:55 | 2018-08-14 08:55 |  | 2018-07-17 08:55 | 2018-07-19 08:55 | 2d | 2.54d | 0d | TEAM_2Shift_Calendar-1 |  | 16h |  |  |
| 333 | 1.10.19.1 | Ch CS Welding Rt | 1d | 2018-08-10 08:55 | 2018-08-14 08:55 | 327 | 2018-07-17 08:55 | 2018-07-19 08:55 | 1d | 1.47d |  |  | SC Radiography (Work) | 16h |  |  |
| 334 | 1.10.20 | **Channel Nozzel Marking** | 0.31d | 2018-08-14 08:55 | 2018-08-14 13:55 |  | 2018-07-19 08:55 | 2018-07-19 13:55 | 0.31d | 2.63d | 0d | TEAM_2Shift_Calendar-1 |  | 10h | 593.75 | 593.75 |
| 335 | 1.10.20.1 | Ch Nozzel orientation | 3h | 2018-08-14 08:55 | 2018-08-14 11:55 | 332 | 2018-07-19 08:55 | 2018-07-19 11:55 | 3h | 2.63d | 0d | TEAM_2Shift_Calendar-1 | Fitter; Helper | 6h | 356.25 | 356.25 |
| 336 | 1.10.20.2 | Ch Nozzel Marking2", 3",1.5" - 4 Nos | 2h | 2018-08-14 11:55 | 2018-08-14 13:55 | 335 | 2018-07-19 11:55 | 2018-07-19 13:55 | 2h | 2.63d |  | TEAM_2Shift_Calendar-1 | Helper; Fitter | 4h | 237.5 | 237.5 |
| 337 | 1.10.21 | **Ch Nozzel Opening** | 0.12d | 2018-08-14 13:55 | 2018-08-14 15:55 |  | 2018-07-19 13:55 | 2018-07-19 15:55 | 0.12d | 2.63d | 0d | TEAM_2Shift_Calendar-1 |  | 4h | 237.5 | 237.5 |
| 338 | 1.10.21.1 | Ch Nozzel Openning-TopN5 | 0.5h | 2018-08-14 13:55 | 2018-08-14 14:25 | 334 | 2018-07-19 13:55 | 2018-07-19 14:25 | 0.5h | 2.63d | 0d | TEAM_2Shift_Calendar-1 | Helper; Gas Cutter | 1h | 59.38 | 59.38 |
| 339 | 1.10.21.2 | Ch Nozzel Openning-BottomD2,N9,A1 | 1.5h | 2018-08-14 14:25 | 2018-08-14 15:55 | 338 | 2018-07-19 14:25 | 2018-07-19 15:55 | 1.5h | 2.63d |  | TEAM_2Shift_Calendar-1 | Helper; Gas Cutter | 3h | 178.12 | 178.12 |
| 340 | 1.10.22 | **Ch Nozzel Open EP** | 0.12d | 2018-08-14 15:55 | 2018-08-14 17:55 |  | 2018-07-19 15:55 | 2018-07-19 17:55 | 0.12d | 2.63d | 0d | TEAM_2Shift_Calendar-1 |  | 4h | 212.5 | 212.5 |
| 341 | 1.10.22.1 | Ch Nozzel EPN5 | 0.5h | 2018-08-14 15:55 | 2018-08-14 16:25 | 337 | 2018-07-19 15:55 | 2018-07-19 16:25 | 0.5h | 2.63d | 0d | TEAM_2Shift_Calendar-1 | Helper; Grinder | 1h | 53.12 | 53.12 |
| 342 | 1.10.22.2 | Ch Nozzel EPD2,N9,A1 | 1.5h | 2018-08-14 16:25 | 2018-08-14 17:55 | 341 | 2018-07-19 16:25 | 2018-07-19 17:55 | 1.5h | 2.63d |  | TEAM_2Shift_Calendar-1 | Helper; Grinder | 3h | 159.38 | 159.38 |

| ID | WBS | Task | Duration | Start | Finish | Predecessors | Baseline start | Baseline finish | Baseline duration | Total slack | Free slack | Calendar | Resources | Work | Cost | Baseline cost |
| --- | --- | --- | --- | --- | --- | --- | --- | --- | --- | --- | --- | --- | --- | --- | --- | --- |
| 343 | 1.10.23 | **Ch Nozzel Fit Up** | 0.25d | 2018-08-14 17:55 | 2018-08-14 21:55 |  | 2018-07-19 17:55 | 2018-07-19 21:55 | 0.25d | 2.63d | 0d | TEAM_2Shift_Calendar-1 |  | 16h | 1,025 | 1,025 |
| 344 | 1.10.23.1 | Ch Nozzel Fit UpN4 | 1h | 2018-08-14 17:55 | 2018-08-14 18:55 | 340 | 2018-07-19 17:55 | 2018-07-19 18:55 | 1h | 2.63d | 0d | TEAM_2Shift_Calendar-1 | SMAW Welder; Helper; Fitter [200%] | 4h | 256.25 | 256.25 |
| 345 | 1.10.23.2 | Ch Nozzel Fit UpN3 | 3h | 2018-08-14 18:55 | 2018-08-14 21:55 | 344 | 2018-07-19 18:55 | 2018-07-19 21:55 | 3h | 2.63d |  | TEAM_2Shift_Calendar-1 | SMAW Welder; Helper; Fitter [200%] | 12h | 768.75 | 768.75 |
| 346 | 1.10.24 | **Ch Nozzel Fit Up Inspection** | 0.12d | 2018-08-14 21:55 | 2018-08-16 07:55 |  | 2018-07-19 21:55 | 2018-07-20 07:55 | 0.12d | 2.63d | 0d | TEAM_2Shift_Calendar-1 |  | 4h | 237.5 | 237.5 |
| 347 | 1.10.24.1 | Ch Nozzel InspectionN4 | 1h | 2018-08-14 21:55 | 2018-08-16 06:55 | 343 | 2018-07-19 21:55 | 2018-07-20 06:55 | 1h | 2.63d | 0d | TEAM_2Shift_Calendar-1 | Helper; Fitter | 2h | 118.75 | 118.75 |
| 348 | 1.10.24.2 | Ch Nozzel InspectionN3 | 1h | 2018-08-16 06:55 | 2018-08-16 07:55 | 347 | 2018-07-20 06:55 | 2018-07-20 07:55 | 1h | 2.63d |  | TEAM_2Shift_Calendar-1 | Helper; Fitter | 2h | 118.75 | 118.75 |
| 349 | 1.10.25 | **Ch Nozzel Welding** | 0.47d | 2018-08-16 07:55 | 2018-08-16 15:25 |  | 2018-07-20 07:55 | 2018-07-20 15:25 | 0.47d | 2.63d | 0d | TEAM_2Shift_Calendar-1 |  | 13h | 765.62 | 765.62 |
| 350 | 1.10.25.1 | Ch Nozzel Welding Arrangement | 1h | 2018-08-16 07:55 | 2018-08-16 08:55 | 346 | 2018-07-20 07:55 | 2018-07-20 08:55 | 1h | 2.63d | 0d | TEAM_2Shift_Calendar-1 | Helper; Fitter | 2h | 118.75 | 118.75 |
| 351 | 1.10.25.2 | Ch Nozzel WeldingN4 | 1h | 2018-08-16 08:55 | 2018-08-16 09:55 | 350 | 2018-07-20 08:55 | 2018-07-20 09:55 | 1h | 2.63d | 0d | TEAM_2Shift_Calendar-1 | Helper; SMAW Welder | 2h | 118.75 | 118.75 |
| 352 | 1.10.25.3 | Ch Nozzel WeldingN3 | 1h | 2018-08-16 09:55 | 2018-08-16 10:55 | 351 | 2018-07-20 09:55 | 2018-07-20 10:55 | 1h | 2.63d | 0d | TEAM_2Shift_Calendar-1 | Helper; SMAW Welder | 2h | 118.75 | 118.75 |
| 353 | 1.10.25.4 | Ch Nozzel Root DP Check | 0.5h | 2018-08-16 10:55 | 2018-08-16 11:25 | 352 | 2018-07-20 10:55 | 2018-07-20 11:25 | 0.5h | 2.63d | 0d | TEAM_2Shift_Calendar-1 | Helper; SMAW Welder | 1h | 59.38 | 59.38 |
| 354 | 1.10.25.5 | Ch Nozzel Inner WeldN4 | 1h | 2018-08-16 11:25 | 2018-08-16 12:25 | 353 | 2018-07-20 11:25 | 2018-07-20 12:25 | 1h | 2.63d | 0d | TEAM_2Shift_Calendar-1 | Helper; SMAW Welder | 2h | 118.75 | 118.75 |
| 355 | 1.10.25.6 | Ch Nozzel Inner WeldN5 | 1h | 2018-08-16 12:25 | 2018-08-16 13:25 | 354 | 2018-07-20 12:25 | 2018-07-20 13:25 | 1h | 2.63d | 0d | TEAM_2Shift_Calendar-1 | Helper; SMAW Welder | 2h | 118.75 | 118.75 |
| 356 | 1.10.25.7 | Nozzel Welding Flush GrindN5,D2,N9,A1 | 2h | 2018-08-16 13:25 | 2018-08-16 15:25 | 355 | 2018-07-20 13:25 | 2018-07-20 15:25 | 2h | 2.63d |  | TEAM_2Shift_Calendar-1 | Grinder | 2h | 112.5 | 112.5 |
| 357 | 1.10.26 | **Channel Nde & Pwht** | 0.12d | 2018-08-16 15:25 | 2018-08-16 17:25 |  | 2018-07-20 15:25 | 2018-07-20 17:25 | 0.12d | 2.63d | 0d | TEAM_2Shift_Calendar-1 |  | 2h | 137.5 | 137.5 |
| 358 | 1.10.26.1 | Ch Ch Nde Clearence | 2h | 2018-08-16 15:25 | 2018-08-16 17:25 | 349 | 2018-07-20 15:25 | 2018-07-20 17:25 | 2h | 2.63d |  | TEAM_2Shift_Calendar-1 | Fitter | 2h | 137.5 | 137.5 |
| 359 | 1.11 | **Final Testing** | 9.38d | 2018-08-16 17:25 | 2018-08-29 07:25 |  | 2018-08-02 12:48 | 2018-08-14 18:48 | 9.38d | 2.63d |  | TEAM_2Shift_Calendar-1 |  | 394h | 14,225 | 14,225 |
| 360 | 1.11.1 | **Shell Side Hydro** | 1.19d | 2018-08-16 17:25 | 2018-08-17 20:25 |  | 2018-08-02 12:48 | 2018-08-03 15:48 | 1.19d | 2.63d | 0d | TEAM_2Shift_Calendar-1 |  | 74h | 4,412.5 | 4,412.5 |
| 361 | 1.11.1.1 | Shell Side Hydro | 1d | 2018-08-16 17:25 | 2018-08-17 17:25 | 244, 260, 357 | 2018-08-02 12:48 | 2018-08-03 12:48 | 1d | 2.63d | 0d | TEAM_2Shift_Calendar-1 | Helper [200%]; Fitter [200%] | 64h | 3,800 | 3,800 |
| 362 | 1.11.1.2 | Shell Side TPI Witness | 2h | 2018-08-17 17:25 | 2018-08-17 19:25 | 361 | 2018-08-03 12:48 | 2018-08-03 14:48 | 2h | 2.63d | 0d | TEAM_2Shift_Calendar-1 | Fitter [200%] | 4h | 275 | 275 |
| 363 | 1.11.1.3 | De Watering & Dismantle Of Gland | 1h | 2018-08-17 19:25 | 2018-08-17 20:25 | 362 | 2018-08-03 14:48 | 2018-08-03 15:48 | 1h | 2.63d |  | TEAM_2Shift_Calendar-1 | Helper [400%]; Fitter [200%] | 6h | 337.5 | 337.5 |
| 364 | 1.11.2 | **Channel Side Hydro** | 1.19d | 2018-08-17 20:25 | 2018-08-20 07:25 |  | 2018-08-03 15:48 | 2018-08-04 18:48 | 1.19d | 2.63d | 0d | TEAM_2Shift_Calendar-1 |  | 74h | 4,412.5 | 4,412.5 |
| 365 | 1.11.2.1 | Shell Side Hydro | 1d | 2018-08-17 20:25 | 2018-08-18 20:25 | 360 | 2018-08-03 15:48 | 2018-08-04 15:48 | 1d | 2.63d | 0d | TEAM_2Shift_Calendar-1 | Helper [200%]; Fitter [200%] | 64h | 3,800 | 3,800 |
| 366 | 1.11.2.2 | Shell Side TPI Witness | 2h | 2018-08-18 20:25 | 2018-08-20 06:25 | 365 | 2018-08-04 15:48 | 2018-08-04 17:48 | 2h | 2.63d | 0d | TEAM_2Shift_Calendar-1 | Fitter [200%] | 4h | 275 | 275 |
| 367 | 1.11.2.3 | De Watering & Dismantle Of Gland | 1h | 2018-08-20 06:25 | 2018-08-20 07:25 | 366 | 2018-08-04 17:48 | 2018-08-04 18:48 | 1h | 2.63d |  | TEAM_2Shift_Calendar-1 | Helper [400%]; Fitter [200%] | 6h | 337.5 | 337.5 |

| ID | WBS | Task | Type | Duration | Start | Finish | Predecessors | Baseline start | Baseline finish | Baseline duration | Total slack | Free slack | Calendar | Resources | Work | Cost | Baseline cost |
| --- | --- | --- | --- | --- | --- | --- | --- | --- | --- | --- | --- | --- | --- | --- | --- | --- | --- |
| 368 | 1.11.3 | **Nitrogen Purging** |  | 1d | 2018-08-20 07:25 | 2018-08-21 07:25 |  | 2018-08-04 18:48 | 2018-08-06 18:48 | 1d | 2.63d | 0d | TEAM_2Shift_Calendar-1 |  | 96h | 5,400 | 5,400 |
| 369 | 1.11.3.1 | Blind & Nitrogen Purging |  | 1d | 2018-08-20 07:25 | 2018-08-21 07:25 | 364 | 2018-08-04 18:48 | 2018-08-06 18:48 | 1d | 2.63d |  | TEAM_2Shift_Calendar-1 | Helper [400%]; Fitter [200%] | 96h | 5,400 | 5,400 |
| 370 | 1.11.4 | **Painting & Transportation** |  | 6d | 2018-08-21 07:25 | 2018-08-29 07:25 |  | 2018-08-06 18:48 | 2018-08-14 18:48 | 6d | 2.63d |  | TEAM_2Shift_Calendar-1 |  | 150h |  |  |
| 371 | 1.11.4.1 | Primer |  | 1d | 2018-08-21 07:25 | 2018-08-22 07:25 | 368 | 2018-08-06 18:48 | 2018-08-07 18:48 | 1d | 2.63d | 0d | TEAM_2Shift_Calendar-1 | Painter [300%] | 48h |  |  |
| 372 | 1.11.4.2 | Top Coat1 |  | 1d | 2018-08-22 07:25 | 2018-08-23 07:25 | 371 | 2018-08-07 18:48 | 2018-08-08 18:48 | 1d | 2.63d | 0d | TEAM_2Shift_Calendar-1 | Painter [300%] | 48h |  |  |
| 373 | 1.11.4.3 | Dummy Activity | milestone | 0d | 2018-08-23 07:25 | 2018-08-23 07:25 | 372 | 2018-08-08 18:48 | 2018-08-08 18:48 | 0d | 6.63d |  | TEAM_2Shift_Calendar-1 |  |  |  |  |
| 374 | 1.11.4.4 | Top Coat2 |  | 1d | 2018-08-23 07:25 | 2018-08-24 07:25 | 372 | 2018-08-08 18:48 | 2018-08-09 18:48 | 1d | 2.63d | 0d | TEAM_2Shift_Calendar-1 | Painter [300%] | 48h |  |  |
| 375 | 1.11.4.5 | Tranportation |  | 3d | 2018-08-24 07:25 | 2018-08-29 07:25 | 374 | 2018-08-09 18:48 | 2018-08-14 18:48 | 3d | 2.63d |  | TEAM_2Shift_Calendar-1 | Store | 6h |  |  |
| 376 | 2 | **162-EE-0009** |  | 71.72d | 2018-06-01 06:00 | 2018-08-31 17:30 |  | 2018-04-23 06:00 | 2018-09-17 17:30 | 113.72d | 0d |  | TEAM_2Shift_Calendar-1 |  | 2717.71h | 100,937.76 | 100,937.76 |
| 377 | 2.1 | **Dish Forming - Od 10T X 407** |  | 25.03d | 2018-06-07 06:00 | 2018-07-09 06:30 |  | 2018-05-14 06:00 | 2018-06-14 06:30 | 25.03d | 0.07d | 0d | TEAM_2Shift_Calendar-1 |  | 267h | 5,509.38 | 5,509.38 |
| 378 | 2.1.1 | Bar Dish Blank Issuence |  | 6.5h | 2018-06-07 06:00 | 2018-06-07 12:30 | 2FS+45d | 2018-05-14 06:00 | 2018-05-14 12:30 | 6.5h | 0.16d | 0d | TEAM_2Shift_Calendar-1 | Plate (Cost) [0.1%]; Store | 4h |  |  |
| 379 | 2.1.2 | Bar-Dish Blank Marking10TXOD 404 |  | 0.5h | 2018-06-07 12:30 | 2018-06-07 13:00 | 378 | 2018-05-14 12:30 | 2018-05-14 13:00 | 0.5h | 0.16d | 0d | TEAM_2Shift_Calendar-1 | Helper; Fitter | 1h | 59.38 | 59.38 |
| 380 | 2.1.3 | Bar-Dish Blank Marking Inspection |  | 4h | 2018-06-07 13:00 | 2018-06-07 17:00 | 379 | 2018-05-14 13:00 | 2018-05-14 17:00 | 4h | 0.16d | 0d | TEAM_2Shift_Calendar-1 | Helper; Fitter | 8h | 475 | 475 |
| 381 | 2.1.4 | Bar-Dish Blank Cutting |  | 5h | 2018-06-07 17:00 | 2018-06-07 22:00 | 380 | 2018-05-14 17:00 | 2018-05-14 22:00 | 5h | 0.16d |  | TEAM_2Shift_Calendar-1 | Helper; Gas Cutter | 10h | 593.75 | 593.75 |
| 382 | 2.1.5 | Bar-Dish Forming |  | 7d | 2018-06-08 08:30 | 2018-06-26 17:30 | 381 | 2018-05-15 08:30 | 2018-05-31 17:30 | 7d | 0d |  |  | SC (Work) | 112h |  |  |
| 383 | 2.1.6 | Profile Insp |  | 4h | 2018-06-26 17:30 | 2018-06-26 21:30 | 382 | 2018-05-31 17:30 | 2018-05-31 21:30 | 4h | 0.19d | 0d | TEAM_2Shift_Calendar-1 | Helper; Fitter | 8h | 475 | 475 |
| 384 | 2.1.7 | Heat Treatment Preparation |  | 1d | 2018-06-26 21:30 | 2018-06-27 21:30 | 383 | 2018-05-31 21:30 | 2018-06-01 21:30 | 1d | 0.19d |  | TEAM_2Shift_Calendar-1 | SMAW Welder; Fitter | 32h | 2,200 | 2,200 |
| 385 | 2.1.8 | Stress Releiving- Sub Cont |  | 4d | 2018-06-28 08:30 | 2018-07-06 17:30 | 384 | 2018-06-02 08:30 | 2018-06-12 17:30 | 4d | 0d |  |  | SC (Work) | 64h |  |  |
| 386 | 2.1.9 | Removal Of Spiders |  | 3h | 2018-07-06 17:30 | 2018-07-06 20:30 | 385 | 2018-06-12 17:30 | 2018-06-12 20:30 | 3h | 0.07d | 0d | TEAM_2Shift_Calendar-1 | Helper; Fitter | 6h | 356.25 | 356.25 |
| 387 | 2.1.10 | Surface Preparation |  | 4h | 2018-07-06 20:30 | 2018-07-07 08:30 | 386 | 2018-06-12 20:30 | 2018-06-13 08:30 | 4h | 0.07d | 0d | TEAM_2Shift_Calendar-1 | Grinder | 4h | 225 | 225 |
| 388 | 2.1.11 | Inspection |  | 3h | 2018-07-07 08:30 | 2018-07-07 11:30 | 387 | 2018-06-13 08:30 | 2018-06-13 11:30 | 3h | 0.07d | 0d | TEAM_2Shift_Calendar-1 | Fitter | 3h | 206.25 | 206.25 |
| 389 | 2.1.12 | TPI Inspection |  | 4h | 2018-07-07 11:30 | 2018-07-07 15:30 | 388 | 2018-06-13 11:30 | 2018-06-13 15:30 | 4h | 0.07d | 0d | TEAM_2Shift_Calendar-1 | Fitter | 4h | 275 | 275 |
| 390 | 2.1.13 | Sf Marking |  | 2h | 2018-07-07 15:30 | 2018-07-07 17:30 | 389 | 2018-06-13 15:30 | 2018-06-13 17:30 | 2h | 0.07d | 0d | TEAM_2Shift_Calendar-1 | Helper; Fitter | 4h | 237.5 | 237.5 |
| 391 | 2.1.14 | Sf Cutting |  | 2h | 2018-07-07 17:30 | 2018-07-07 19:30 | 390 | 2018-06-13 17:30 | 2018-06-13 19:30 | 2h | 0.07d | 0d | TEAM_2Shift_Calendar-1 | Helper; Gas Cutter | 4h | 237.5 | 237.5 |
| 392 | 2.1.15 | Sf Gridning & EP |  | 3h | 2018-07-07 19:30 | 2018-07-09 06:30 | 391 | 2018-06-13 19:30 | 2018-06-14 06:30 | 3h | 0.07d |  | TEAM_2Shift_Calendar-1 | Grinder | 3h | 168.75 | 168.75 |

| ID | WBS | Task | Type | Duration | Start | Finish | Predecessors | Baseline start | Baseline finish | Baseline duration | Total slack | Free slack | Calendar | Resources | Work | Cost | Baseline cost |
| --- | --- | --- | --- | --- | --- | --- | --- | --- | --- | --- | --- | --- | --- | --- | --- | --- | --- |
| 393 | 2.2 | **Dish Forming - Od** |  | 26.03d | 2018-06-07 06:00 | 2018-07-10 06:30 |  | 2018-05-14 06:00 | 2018-06-15 06:30 | 26.03d | 40.22d |  | TEAM_2Shift_Calendar-1 |  | 251h | 3,309.38 | 3,309.38 |
| 394 | 2.2.1 | Bar Dish Blank Issuence |  | 6.5h | 2018-06-07 06:00 | 2018-06-07 12:30 | 2FS+45d | 2018-05-14 06:00 | 2018-05-14 12:30 | 6.5h | 40.22d | 0d | TEAM_2Shift_Calendar-1 | Plate (Cost) [0.1%]; Store | 4h |  |  |
| 395 | 2.2.2 | Bar-Dish Blank Marking10TXOD 404 |  | 0.5h | 2018-06-07 12:30 | 2018-06-07 13:00 | 394 | 2018-05-14 12:30 | 2018-05-14 13:00 | 0.5h | 40.22d | 0d | TEAM_2Shift_Calendar-1 | Helper; Fitter | 1h | 59.38 | 59.38 |
| 396 | 2.2.3 | Bar-Dish Blank Marking Inspection |  | 4h | 2018-06-07 13:00 | 2018-06-07 17:00 | 395 | 2018-05-14 13:00 | 2018-05-14 17:00 | 4h | 40.22d | 0d | TEAM_2Shift_Calendar-1 | Helper; Fitter | 8h | 475 | 475 |
| 397 | 2.2.4 | Bar-Dish Blank Cutting |  | 5h | 2018-06-07 17:00 | 2018-06-07 22:00 | 396 | 2018-05-14 17:00 | 2018-05-14 22:00 | 5h | 40.22d | 0.16d | TEAM_2Shift_Calendar-1 | Helper; Gas Cutter | 10h | 593.75 | 593.75 |
| 398 | 2.2.5 | Bar-Dish Forming |  | 7d | 2018-06-08 08:30 | 2018-06-26 17:30 | 397 | 2018-05-15 08:30 | 2018-05-31 17:30 | 7d | 20.06d | 0d |  | SC (Work) | 112h |  |  |
| 399 | 2.2.6 | Profile Insp |  | 4h | 2018-06-26 17:30 | 2018-06-26 21:30 | 398 | 2018-05-31 17:30 | 2018-05-31 21:30 | 4h | 40.5d | 0.19d | TEAM_2Shift_Calendar-1 | Helper; Fitter | 8h | 475 | 475 |
| 400 | 2.2.7 | Heat Treatment Preparation |  | 1d | 2018-06-27 08:30 | 2018-06-28 17:30 | 399 | 2018-06-01 08:30 | 2018-06-02 17:30 | 1d | 20.25d | 0d |  | SC (Work) | 16h |  |  |
| 401 | 2.2.8 | Stress Releiving- Sub Cont |  | 4d | 2018-06-29 08:30 | 2018-07-07 17:30 | 400 | 2018-06-04 08:30 | 2018-06-13 17:30 | 4d | 20.25d | 0d |  | SC (Work) | 64h |  |  |
| 402 | 2.2.9 | Removal Of Spiders |  | 3h | 2018-07-07 17:30 | 2018-07-07 20:30 | 401 | 2018-06-13 17:30 | 2018-06-13 20:30 | 3h | 40.69d | 0d | TEAM_2Shift_Calendar-1 | Helper; Fitter | 6h | 356.25 | 356.25 |
| 403 | 2.2.10 | Surface Preparation |  | 4h | 2018-07-07 20:30 | 2018-07-09 08:30 | 402 | 2018-06-13 20:30 | 2018-06-14 08:30 | 4h | 40.69d | 0d | TEAM_2Shift_Calendar-1 | Grinder | 4h | 225 | 225 |
| 404 | 2.2.11 | Inspection |  | 3h | 2018-07-09 08:30 | 2018-07-09 11:30 | 403 | 2018-06-14 08:30 | 2018-06-14 11:30 | 3h | 40.69d | 0d | TEAM_2Shift_Calendar-1 | Fitter | 3h | 206.25 | 206.25 |
| 405 | 2.2.12 | TPI Inspection |  | 4h | 2018-07-09 11:30 | 2018-07-09 15:30 | 404 | 2018-06-14 11:30 | 2018-06-14 15:30 | 4h | 40.69d | 0d | TEAM_2Shift_Calendar-1 | Fitter | 4h | 275 | 275 |
| 406 | 2.2.13 | Sf Marking |  | 2h | 2018-07-09 15:30 | 2018-07-09 17:30 | 405 | 2018-06-14 15:30 | 2018-06-14 17:30 | 2h | 40.69d | 0d | TEAM_2Shift_Calendar-1 | Helper; Fitter | 4h | 237.5 | 237.5 |
| 407 | 2.2.14 | Sf Cutting |  | 2h | 2018-07-09 17:30 | 2018-07-09 19:30 | 406 | 2018-06-14 17:30 | 2018-06-14 19:30 | 2h | 40.69d | 0d | TEAM_2Shift_Calendar-1 | Helper; Gas Cutter | 4h | 237.5 | 237.5 |
| 408 | 2.2.15 | Sf Gridning & EP |  | 3h | 2018-07-09 19:30 | 2018-07-10 06:30 | 407 | 2018-06-14 19:30 | 2018-06-15 06:30 | 3h | 40.69d |  | TEAM_2Shift_Calendar-1 | Grinder | 3h | 168.75 | 168.75 |
| 409 | 2.3 | **Tube Sheet** |  | 22.94d | 2018-06-22 06:00 | 2018-07-20 21:00 |  | 2018-05-07 06:00 | 2018-07-09 21:00 | 50.94d | 1.09d | 0d | TEAM_2Shift_Calendar-1 |  | 274h | 1,500 | 1,500 |
| 410 | 2.3.1 | **Tube Sheet Machining1 off 2** |  | 15.69d | 2018-06-22 06:00 | 2018-07-11 17:00 |  | 2018-06-12 06:00 | 2018-06-30 17:00 | 15.69d | 1.03d | 0d | TEAM_2Shift_Calendar-1 |  | 132h |  |  |
| 411 | 2.3.1.1 | Inward Inspection |  | 15.38d | 2018-06-22 06:00 | 2018-07-11 12:00 | 2FS+57d | 2018-06-12 06:00 | 2018-06-30 12:00 | 15.38d | 1.09d | 0d | TEAM_2Shift_Calendar-1 | Store; Tube Sheet (Cost) [0.1%]; QC Engineer | 128h |  |  |
| 412 | 2.3.1.2 | Tube Sheet M/C1/2 |  | 4h | 2018-07-11 12:00 | 2018-07-11 17:00 | 411 | 2018-06-30 12:00 | 2018-06-30 17:00 | 4h | 0.53d |  |  | SC (Work) | 4h |  |  |
| 413 | 2.3.2 | **Tube Sheet Drilling1 off 2** |  | 7.25d | 2018-07-11 17:00 | 2018-07-20 21:00 |  | 2018-06-30 17:00 | 2018-07-09 21:00 | 7.25d | 1.36d |  | TEAM_2Shift_Calendar-1 |  | 64h | 475 | 475 |
| 414 | 2.3.2.1 | Tube Sheet Drilling1/2 |  | 8h | 2018-07-11 17:00 | 2018-07-12 17:00 | 410 | 2018-06-30 17:00 | 2018-07-02 17:00 | 8h | 0.53d | 0d |  | SC (Work) | 8h |  |  |
| 415 | 2.3.2.2 | Exp Groove+Welding Groove1/2 |  | 3d | 2018-07-12 17:00 | 2018-07-20 17:00 | 414 | 2018-07-02 17:00 | 2018-07-09 17:00 | 3d | 0.53d | 0d |  | SC (Work) | 48h |  |  |
| 416 | 2.3.2.3 | Pass Partition Groove M/C1/2 | milestone | 0d | 2018-07-20 17:00 | 2018-07-20 17:00 | 415 | 2018-07-09 17:00 | 2018-07-09 17:00 | 0d | 0.53d | 0d |  | SC (Work) |  |  |  |
| 417 | 2.3.2.4 | Cleaning ,Go/No Go Check1/2 |  | 2h | 2018-07-20 17:00 | 2018-07-20 19:00 | 416 | 2018-07-09 17:00 | 2018-07-09 19:00 | 2h | 1.36d | 0d | TEAM_2Shift_Calendar-1 | Helper; Fitter | 4h | 237.5 | 237.5 |
| 418 | 2.3.2.5 | Final Inspection1/2 |  | 2h | 2018-07-20 19:00 | 2018-07-20 21:00 | 417 | 2018-07-09 19:00 | 2018-07-09 21:00 | 2h | 1.36d |  | TEAM_2Shift_Calendar-1 | Helper; Fitter | 4h | 237.5 | 237.5 |

| ID | WBS | Task | Duration | Start | Finish | Predecessors | Baseline start | Baseline finish | Baseline duration | Total slack | Free slack | Calendar | Resources | Work | Cost | Baseline cost |
| --- | --- | --- | --- | --- | --- | --- | --- | --- | --- | --- | --- | --- | --- | --- | --- | --- |
| 419 | 2.3.3 | **Tube Sheet Machining2 off 2** | 0.56d | 2018-06-22 06:00 | 2018-06-22 15:00 |  | 2018-05-07 06:00 | 2018-05-07 15:00 | 0.56d | 6.03d | 0d | TEAM_2Shift_Calendar-1 |  | 12h | 550 | 550 |
| 420 | 2.3.3.1 | Inward Inspection | 4h | 2018-06-22 06:00 | 2018-06-22 10:00 | 2FS+57d | 2018-05-07 06:00 | 2018-05-07 10:00 | 4h | 6.03d | 0d | TEAM_2Shift_Calendar-1 | Tube Sheet (Cost) [0.1%]; Fitter [200%] | 8h | 550 | 550 |
| 421 | 2.3.3.2 | Tube Sheet M/C2/2 | 4h | 2018-06-22 10:00 | 2018-06-22 15:00 | 420 | 2018-05-07 10:00 | 2018-05-07 15:00 | 4h | 3.03d |  |  | SC (Work) | 4h |  |  |
| 422 | 2.3.4 | **Tube Sheet Drilling2 off 2** | 17.38d | 2018-06-22 15:00 | 2018-07-13 21:00 |  | 2018-05-07 15:00 | 2018-05-29 21:00 | 17.38d | 6.03d |  | TEAM_2Shift_Calendar-1 |  | 66h | 475 | 475 |
| 423 | 2.3.4.1 | Tube Sheet Drilling2/2 | 8h | 2018-06-22 15:00 | 2018-06-25 15:00 | 419 | 2018-05-07 15:00 | 2018-05-08 15:00 | 8h | 3.03d | 0d |  | SC (Work) | 8h |  |  |
| 424 | 2.3.4.2 | Exp Groove+Welding Groove2/2 | 3d | 2018-06-25 15:00 | 2018-07-02 15:00 | 423 | 2018-05-08 15:00 | 2018-05-16 15:00 | 3d | 3.03d | 0d |  | SC (Work) | 48h |  |  |
| 425 | 2.3.4.3 | Tie Rod, Pulling, Lifting Hole2/2 | 2h | 2018-07-02 15:00 | 2018-07-02 17:00 | 424 | 2018-05-16 15:00 | 2018-05-16 17:00 | 2h | 3.03d | 0d |  | SC (Work) | 2h |  |  |
| 426 | 2.3.4.4 | Cleaning ,Go/No Go Check2/2 | 2h | 2018-07-02 17:00 | 2018-07-02 19:00 | 425 | 2018-05-16 17:00 | 2018-05-16 19:00 | 2h | 6.36d | 0d | TEAM_2Shift_Calendar-1 | Helper; Fitter | 4h | 237.5 | 237.5 |
| 427 | 2.3.4.5 | Final Inspection2/2 | 2h | 2018-07-02 19:00 | 2018-07-02 21:00 | 426 | 2018-05-16 19:00 | 2018-05-16 21:00 | 2h | 6.36d | 0d | TEAM_2Shift_Calendar-1 | Helper; Fitter | 4h | 237.5 | 237.5 |
| 428 | 2.3.4.6 | Dummy Activity | 10d | 2018-07-02 21:00 | 2018-07-13 21:00 | 427 | 2018-05-16 21:00 | 2018-05-29 21:00 | 10d | 6.36d |  | TEAM_2Shift_Calendar-1 |  |  |  |  |
| 429 | 2.4 | **Nozzle Fab** | 1.62d | 2018-06-07 06:00 | 2018-06-08 16:00 |  | 2018-05-14 06:00 | 2018-05-15 16:00 | 1.62d | 65.09d |  | TEAM_2Shift_Calendar-1 |  | 242h | 14,284.38 | 14,284.38 |
| 430 | 2.4.1 | **Sh Nozzel Pipe Marking** | 0.19d | 2018-06-07 06:00 | 2018-06-07 09:00 |  | 2018-05-14 06:00 | 2018-05-14 09:00 | 0.19d | 65.69d |  | TEAM_2Shift_Calendar-1 |  | 10h | 593.75 | 593.75 |
| 431 | 2.4.1.1 | 3" NB - 2 Nos | 2h | 2018-06-07 06:00 | 2018-06-07 08:00 | 2FS+45d | 2018-05-14 06:00 | 2018-05-14 08:00 | 2h | 65.69d | 0d | TEAM_2Shift_Calendar-1 | Helper; Fitter | 4h | 237.5 | 237.5 |
| 432 | 2.4.1.2 | 2" NB - 2 Nos | 2h | 2018-06-07 06:00 | 2018-06-07 08:00 | 2FS+45d | 2018-05-14 06:00 | 2018-05-14 08:00 | 2h | 65.75d | 0d | TEAM_2Shift_Calendar-1 | Helper; Fitter | 4h | 237.5 | 237.5 |
| 433 | 2.4.1.3 | Inspection | 1h | 2018-06-07 08:00 | 2018-06-07 09:00 | 431, 432 | 2018-05-14 08:00 | 2018-05-14 09:00 | 1h | 66.53d |  | TEAM_2Shift_Calendar-1 | Helper; Fitter | 2h | 118.75 | 118.75 |
| 434 | 2.4.2 | **Sh Nozzel Pipe Cutting** | 0.19d | 2018-06-07 08:00 | 2018-06-07 11:00 |  | 2018-05-14 08:00 | 2018-05-14 11:00 | 0.19d | 65.69d |  | TEAM_2Shift_Calendar-1 |  | 10h | 593.75 | 593.75 |
| 435 | 2.4.2.1 | 3" NB Mp Con - 2 Nos | 2h | 2018-06-07 08:00 | 2018-06-07 10:00 | 431 | 2018-05-14 08:00 | 2018-05-14 10:00 | 2h | 65.69d | 0d | TEAM_2Shift_Calendar-1 | Helper; Gas Cutter | 4h | 237.5 | 237.5 |
| 436 | 2.4.2.2 | 2" NB - 2 Nos | 2h | 2018-06-07 08:00 | 2018-06-07 10:00 | 432 | 2018-05-14 08:00 | 2018-05-14 10:00 | 2h | 65.75d | 0d | TEAM_2Shift_Calendar-1 | Helper; Gas Cutter | 4h | 237.5 | 237.5 |
| 437 | 2.4.2.3 | Inspection | 1h | 2018-06-07 10:00 | 2018-06-07 11:00 | 435, 436 | 2018-05-14 10:00 | 2018-05-14 11:00 | 1h | 66.41d |  | TEAM_2Shift_Calendar-1 | Helper; Gas Cutter | 2h | 118.75 | 118.75 |
| 438 | 2.4.3 | **Sh Nozzel Pipe EP** | 0.16d | 2018-06-07 10:00 | 2018-06-07 12:30 |  | 2018-05-14 10:00 | 2018-05-14 12:30 | 0.16d | 65.69d |  | TEAM_2Shift_Calendar-1 |  | 9h | 534.38 | 534.38 |
| 439 | 2.4.3.1 | 3" NB Mp Con - 2 Nos | 2h | 2018-06-07 10:00 | 2018-06-07 12:00 | 435 | 2018-05-14 10:00 | 2018-05-14 12:00 | 2h | 65.69d | 0d | TEAM_2Shift_Calendar-1 | Helper; Gas Cutter | 4h | 237.5 | 237.5 |
| 440 | 2.4.3.2 | 2" NB - 2 Nos | 2h | 2018-06-07 10:00 | 2018-06-07 12:00 | 436 | 2018-05-14 10:00 | 2018-05-14 12:00 | 2h | 65.75d | 0d | TEAM_2Shift_Calendar-1 | Helper; Gas Cutter | 4h | 237.5 | 237.5 |
| 441 | 2.4.3.3 | Inspection | 0.5h | 2018-06-07 12:00 | 2018-06-07 12:30 | 439, 440 | 2018-05-14 12:00 | 2018-05-14 12:30 | 0.5h | 66.31d |  | TEAM_2Shift_Calendar-1 | Helper; Gas Cutter | 1h | 59.38 | 59.38 |
| 442 | 2.4.4 | **Sh Noz+Flg Fiitup** | 0.16d | 2018-06-07 12:00 | 2018-06-07 14:30 |  | 2018-05-14 12:00 | 2018-05-14 14:30 | 0.16d | 65.69d |  | TEAM_2Shift_Calendar-1 |  | 18h | 1,153.13 | 1,153.13 |
| 443 | 2.4.4.1 | 3" NB Mp Con - 2 Nos | 2h | 2018-06-07 12:00 | 2018-06-07 14:00 | 439 | 2018-05-14 12:00 | 2018-05-14 14:00 | 2h | 65.69d | 0d | TEAM_2Shift_Calendar-1 | SMAW Welder; Helper; Fitter [200%] | 8h | 512.5 | 512.5 |
| 444 | 2.4.4.2 | 2" NB - 2 Nos | 2h | 2018-06-07 12:00 | 2018-06-07 14:00 | 440 | 2018-05-14 12:00 | 2018-05-14 14:00 | 2h | 65.75d | 0d | TEAM_2Shift_Calendar-1 | SMAW Welder; Helper; Fitter [200%] | 8h | 512.5 | 512.5 |
| 445 | 2.4.4.3 | Inspection | 0.5h | 2018-06-07 14:00 | 2018-06-07 14:30 | 443, 444 | 2018-05-14 14:00 | 2018-05-14 14:30 | 0.5h | 66.19d |  | TEAM_2Shift_Calendar-1 | SMAW Welder; Helper; Fitter [200%] | 2h | 128.13 | 128.13 |

| ID | WBS | Task | Duration | Start | Finish | Predecessors | Baseline start | Baseline finish | Baseline duration | Total slack | Free slack | Calendar | Resources | Work | Cost | Baseline cost |
| --- | --- | --- | --- | --- | --- | --- | --- | --- | --- | --- | --- | --- | --- | --- | --- | --- |
| 446 | 2.4.5 | **Sh Nozzel Pipe+Flg Welding** | 0.16d | 2018-06-07 14:00 | 2018-06-07 16:30 |  | 2018-05-14 14:00 | 2018-05-14 16:30 | 0.16d | 65.69d |  | TEAM_2Shift_Calendar-1 |  | 7h | 415.62 | 415.62 |
| 447 | 2.4.5.1 | 3" NB Mp Con - 2 Nos | 2h | 2018-06-07 14:00 | 2018-06-07 16:00 | 443 | 2018-05-14 14:00 | 2018-05-14 16:00 | 2h | 65.69d | 0d | TEAM_2Shift_Calendar-1 | Helper; SMAW Welder | 4h | 237.5 | 237.5 |
| 448 | 2.4.5.2 | 2" NB - 2 Nos | 1h | 2018-06-07 14:00 | 2018-06-07 15:00 | 444 | 2018-05-14 14:00 | 2018-05-14 15:00 | 1h | 65.75d | 0d | TEAM_2Shift_Calendar-1 | Helper; SMAW Welder | 2h | 118.75 | 118.75 |
| 449 | 2.4.5.3 | Inspection | 0.5h | 2018-06-07 16:00 | 2018-06-07 16:30 | 447, 448 | 2018-05-14 16:00 | 2018-05-14 16:30 | 0.5h | 66.06d |  | TEAM_2Shift_Calendar-1 | Helper; SMAW Welder | 1h | 59.38 | 59.38 |
| 450 | 2.4.6 | **Sh Nozzel Pipe Profile Marking** | 0.22d | 2018-06-07 15:00 | 2018-06-07 18:30 |  | 2018-05-14 15:00 | 2018-05-14 18:30 | 0.22d | 65.75d |  | TEAM_2Shift_Calendar-1 |  | 9h | 534.38 | 534.38 |
| 451 | 2.4.6.1 | 3" NB Mp Con - 2 Nos | 2h | 2018-06-07 16:00 | 2018-06-07 18:00 | 447 | 2018-05-14 16:00 | 2018-05-14 18:00 | 2h | 65.69d | 0d | TEAM_2Shift_Calendar-1 | Helper; Fitter | 4h | 237.5 | 237.5 |
| 452 | 2.4.6.2 | 2" NB - 2 Nos | 2h | 2018-06-07 15:00 | 2018-06-07 17:00 | 448 | 2018-05-14 15:00 | 2018-05-14 17:00 | 2h | 65.75d | 0d | TEAM_2Shift_Calendar-1 | Helper; Fitter | 4h | 237.5 | 237.5 |
| 453 | 2.4.6.3 | Inspection | 0.5h | 2018-06-07 18:00 | 2018-06-07 18:30 | 451, 452 | 2018-05-14 18:00 | 2018-05-14 18:30 | 0.5h | 65.94d |  | TEAM_2Shift_Calendar-1 | Helper; Fitter | 1h | 59.38 | 59.38 |
| 454 | 2.4.7 | **Sh Nozzle Pipe Profile Cutting** | 0.22d | 2018-06-07 17:00 | 2018-06-07 20:30 |  | 2018-05-14 17:00 | 2018-05-14 20:30 | 0.22d | 65.75d |  | TEAM_2Shift_Calendar-1 |  | 9h | 478.12 | 478.12 |
| 455 | 2.4.7.1 | 3" NB Mp Con - 2 Nos | 2h | 2018-06-07 18:00 | 2018-06-07 20:00 | 451 | 2018-05-14 18:00 | 2018-05-14 20:00 | 2h | 65.69d | 0d | TEAM_2Shift_Calendar-1 | Helper; Grinder | 4h | 212.5 | 212.5 |
| 456 | 2.4.7.2 | 2" NB - 2 Nos | 2h | 2018-06-07 17:00 | 2018-06-07 19:00 | 452 | 2018-05-14 17:00 | 2018-05-14 19:00 | 2h | 65.75d | 0d | TEAM_2Shift_Calendar-1 | Helper; Grinder | 4h | 212.5 | 212.5 |
| 457 | 2.4.7.3 | Inspection | 0.5h | 2018-06-07 20:00 | 2018-06-07 20:30 | 455, 456 | 2018-05-14 20:00 | 2018-05-14 20:30 | 0.5h | 65.81d |  | TEAM_2Shift_Calendar-1 | Helper; Grinder | 1h | 53.12 | 53.12 |
| 458 | 2.4.8 | **Sh Nozzle Pipe Profile EP** | 0.22d | 2018-06-07 19:00 | 2018-06-08 06:30 |  | 2018-05-14 19:00 | 2018-05-15 06:30 | 0.22d | 65.69d |  | TEAM_2Shift_Calendar-1 |  | 9h | 478.12 | 478.12 |
| 459 | 2.4.8.1 | 3" NB Mp Con - 2 Nos | 2h | 2018-06-07 20:00 | 2018-06-07 22:00 | 455 | 2018-05-14 20:00 | 2018-05-14 22:00 | 2h | 65.69d | 0d | TEAM_2Shift_Calendar-1 | Helper; Grinder | 4h | 212.5 | 212.5 |
| 460 | 2.4.8.2 | 2" NB - 2 Nos | 2h | 2018-06-07 19:00 | 2018-06-07 21:00 | 456 | 2018-05-14 19:00 | 2018-05-14 21:00 | 2h | 65.75d | 0.06d | TEAM_2Shift_Calendar-1 | Helper; Grinder | 4h | 212.5 | 212.5 |
| 461 | 2.4.8.3 | Inspection | 0.5h | 2018-06-08 06:00 | 2018-06-08 06:30 | 459, 460 | 2018-05-15 06:00 | 2018-05-15 06:30 | 0.5h | 65.69d |  | TEAM_2Shift_Calendar-1 | Helper; Grinder | 1h | 53.12 | 53.12 |
| 462 | 2.4.9 | **Ch Nozzel Pipe Marking** | 0.25d | 2018-06-07 06:00 | 2018-06-07 10:00 |  | 2018-05-14 06:00 | 2018-05-14 10:00 | 0.25d | 65.09d |  | TEAM_2Shift_Calendar-1 |  | 18h | 1,068.75 | 1,068.75 |
| 463 | 2.4.9.1 | 3" Nozzle | 2h | 2018-06-07 06:00 | 2018-06-07 08:00 | 2FS+45d | 2018-05-14 06:00 | 2018-05-14 08:00 | 2h | 65.47d | 0d | TEAM_2Shift_Calendar-1 | Helper; Fitter | 4h | 237.5 | 237.5 |
| 464 | 2.4.9.2 | 1.5" NB Mp Con - 4 Nos | 3h | 2018-06-07 06:00 | 2018-06-07 09:00 | 2FS+45d | 2018-05-14 06:00 | 2018-05-14 09:00 | 3h | 65.09d | 0d | TEAM_2Shift_Calendar-1 | Helper; Fitter | 6h | 356.25 | 356.25 |
| 465 | 2.4.9.3 | 2" NB Mp Con - 4 Nos | 3h | 2018-06-07 06:00 | 2018-06-07 09:00 | 2FS+45d | 2018-05-14 06:00 | 2018-05-14 09:00 | 3h | 65.44d | 0d | TEAM_2Shift_Calendar-1 | Helper; Fitter | 6h | 356.25 | 356.25 |
| 466 | 2.4.9.4 | Inspection | 1h | 2018-06-07 09:00 | 2018-06-07 10:00 | 464, 465 | 2018-05-14 09:00 | 2018-05-14 10:00 | 1h | 66.47d |  | TEAM_2Shift_Calendar-1 | Helper; Fitter | 2h | 118.75 | 118.75 |
| 467 | 2.4.10 | **Ch Nozzel Pipe Cutting** | 0.31d | 2018-06-07 08:00 | 2018-06-07 13:00 |  | 2018-05-14 08:00 | 2018-05-14 13:00 | 0.31d | 65.16d |  | TEAM_2Shift_Calendar-1 |  | 13h | 771.88 | 771.88 |
| 468 | 2.4.10.1 | 3" Nozzle | 2h | 2018-06-07 08:00 | 2018-06-07 10:00 | 463 | 2018-05-14 08:00 | 2018-05-14 10:00 | 2h | 65.47d | 0d | TEAM_2Shift_Calendar-1 | Helper; Gas Cutter | 4h | 237.5 | 237.5 |
| 469 | 2.4.10.2 | 1.5" NB Mp Con - 4 Nos | 3h | 2018-06-07 09:00 | 2018-06-07 12:00 | 464 | 2018-05-14 09:00 | 2018-05-14 12:00 | 3h | 65.09d | 0d | TEAM_2Shift_Calendar-1 | Helper; Gas Cutter | 6h | 356.25 | 356.25 |
| 470 | 2.4.10.3 | 2" NB Mp Con - 4 Nos | 0.5h | 2018-06-07 09:00 | 2018-06-07 09:30 | 465 | 2018-05-14 09:00 | 2018-05-14 09:30 | 0.5h | 65.44d | 0d | TEAM_2Shift_Calendar-1 | Helper; Gas Cutter | 1h | 59.38 | 59.38 |
| 471 | 2.4.10.4 | Inspection | 1h | 2018-06-07 12:00 | 2018-06-07 13:00 | 468, 469, 470 | 2018-05-14 12:00 | 2018-05-14 13:00 | 1h | 66.28d |  | TEAM_2Shift_Calendar-1 | Helper; Gas Cutter | 2h | 118.75 | 118.75 |

| ID | WBS | Task | Duration | Start | Finish | Predecessors | Baseline start | Baseline finish | Baseline duration | Total slack | Free slack | Calendar | Resources | Work | Cost | Baseline cost |
| --- | --- | --- | --- | --- | --- | --- | --- | --- | --- | --- | --- | --- | --- | --- | --- | --- |
| 472 | 2.4.11 | **Ch Nozzel Pipe EP** | 0.41d | 2018-06-07 09:30 | 2018-06-07 16:00 |  | 2018-05-14 09:30 | 2018-05-14 16:00 | 0.41d | 65.25d |  | TEAM_2Shift_Calendar-1 |  | 18h | 956.25 | 956.25 |
| 473 | 2.4.11.1 | 3" Nozzle | 2h | 2018-06-07 10:00 | 2018-06-07 12:00 | 468 | 2018-05-14 10:00 | 2018-05-14 12:00 | 2h | 65.47d | 0d | TEAM_2Shift_Calendar-1 | Helper; Grinder | 4h | 212.5 | 212.5 |
| 474 | 2.4.11.2 | 1.5" NB Mp Con - 4 Nos | 3h | 2018-06-07 12:00 | 2018-06-07 15:00 | 469 | 2018-05-14 12:00 | 2018-05-14 15:00 | 3h | 65.09d | 0d | TEAM_2Shift_Calendar-1 | Helper; Grinder | 6h | 318.75 | 318.75 |
| 475 | 2.4.11.3 | 2" NB Mp Con - 4 Nos | 3h | 2018-06-07 09:30 | 2018-06-07 12:30 | 470 | 2018-05-14 09:30 | 2018-05-14 12:30 | 3h | 65.44d | 0d | TEAM_2Shift_Calendar-1 | Helper; Grinder | 6h | 318.75 | 318.75 |
| 476 | 2.4.11.4 | Inspection | 1h | 2018-06-07 15:00 | 2018-06-07 16:00 | 473, 474, 475 | 2018-05-14 15:00 | 2018-05-14 16:00 | 1h | 66.09d |  | TEAM_2Shift_Calendar-1 | Helper; Grinder | 2h | 106.25 | 106.25 |
| 477 | 2.4.12 | **Ch Noz+Flg Fit Up** | 0.44d | 2018-06-07 12:00 | 2018-06-07 19:00 |  | 2018-05-14 12:00 | 2018-05-14 19:00 | 0.44d | 65.28d |  | TEAM_2Shift_Calendar-1 |  | 36h | 2,306.25 | 2,306.25 |
| 478 | 2.4.12.1 | 3" Nozzle | 2h | 2018-06-07 12:00 | 2018-06-07 14:00 | 473 | 2018-05-14 12:00 | 2018-05-14 14:00 | 2h | 65.47d | 0d | TEAM_2Shift_Calendar-1 | SMAW Welder; Helper; Fitter [200%] | 8h | 512.5 | 512.5 |
| 479 | 2.4.12.2 | 1.5" NB Mp Con - 4 Nos | 3h | 2018-06-07 15:00 | 2018-06-07 18:00 | 474 | 2018-05-14 15:00 | 2018-05-14 18:00 | 3h | 65.09d | 0d | TEAM_2Shift_Calendar-1 | SMAW Welder; Helper; Fitter [200%] | 12h | 768.75 | 768.75 |
| 480 | 2.4.12.3 | 2" NB Mp Con - 4 Nos | 3h | 2018-06-07 12:30 | 2018-06-07 15:30 | 475 | 2018-05-14 12:30 | 2018-05-14 15:30 | 3h | 65.44d | 0d | TEAM_2Shift_Calendar-1 | SMAW Welder; Helper; Fitter [200%] | 12h | 768.75 | 768.75 |
| 481 | 2.4.12.4 | Inspection | 1h | 2018-06-07 18:00 | 2018-06-07 19:00 | 478, 479, 480 | 2018-05-14 18:00 | 2018-05-14 19:00 | 1h | 65.91d |  | TEAM_2Shift_Calendar-1 | SMAW Welder; Helper; Fitter [200%] | 4h | 256.25 | 256.25 |
| 482 | 2.4.13 | **Ch Nozzel Pipe+Flg Welding** | 0.69d | 2018-06-07 14:00 | 2018-06-08 09:00 |  | 2018-05-14 14:00 | 2018-05-15 09:00 | 0.69d | 65.34d |  | TEAM_2Shift_Calendar-1 |  | 32h | 1,900 | 1,900 |
| 483 | 2.4.13.1 | 3" Nozzle | 6h | 2018-06-07 14:00 | 2018-06-07 20:00 | 478 | 2018-05-14 14:00 | 2018-05-14 20:00 | 6h | 65.47d | 0d | TEAM_2Shift_Calendar-1 | Helper; SMAW Welder | 12h | 712.5 | 712.5 |
| 484 | 2.4.13.2 | 1.5" NB Mp Con - 4 Nos | 6h | 2018-06-07 18:00 | 2018-06-08 08:00 | 479 | 2018-05-14 18:00 | 2018-05-15 08:00 | 6h | 65.09d | 0d | TEAM_2Shift_Calendar-1 | Helper; SMAW Welder | 12h | 712.5 | 712.5 |
| 485 | 2.4.13.3 | 2" NB Mp Con - 4 Nos | 3h | 2018-06-07 15:30 | 2018-06-07 18:30 | 480 | 2018-05-14 15:30 | 2018-05-14 18:30 | 3h | 65.44d | 0d | TEAM_2Shift_Calendar-1 | Helper; SMAW Welder | 6h | 356.25 | 356.25 |
| 486 | 2.4.13.4 | Inspection | 1h | 2018-06-08 08:00 | 2018-06-08 09:00 | 483, 484, 485 | 2018-05-15 08:00 | 2018-05-15 09:00 | 1h | 65.53d |  | TEAM_2Shift_Calendar-1 | Helper; SMAW Welder | 2h | 118.75 | 118.75 |
| 487 | 2.4.14 | **Ch Nozzel Pipe Profile Marking** | 0.41d | 2018-06-07 18:30 | 2018-06-08 09:00 |  | 2018-05-14 18:30 | 2018-05-15 09:00 | 0.41d | 65.44d |  | TEAM_2Shift_Calendar-1 |  | 8h | 475 | 475 |
| 488 | 2.4.14.1 | 3" Nozzle | 1h | 2018-06-07 20:00 | 2018-06-07 21:00 | 483 | 2018-05-14 20:00 | 2018-05-14 21:00 | 1h | 65.47d | 0d | TEAM_2Shift_Calendar-1 | Helper; Fitter | 2h | 118.75 | 118.75 |
| 489 | 2.4.14.2 | 1.5" NB Mp Con - 4 Nos | 1h | 2018-06-08 08:00 | 2018-06-08 09:00 | 484 | 2018-05-15 08:00 | 2018-05-15 09:00 | 1h | 65.09d | 0d | TEAM_2Shift_Calendar-1 | Helper; Fitter | 2h | 118.75 | 118.75 |
| 490 | 2.4.14.3 | 2" NB Mp Con - 4 Nos | 1h | 2018-06-07 18:30 | 2018-06-07 19:30 | 485 | 2018-05-14 18:30 | 2018-05-14 19:30 | 1h | 65.44d | 0d | TEAM_2Shift_Calendar-1 | Helper; Fitter | 2h | 118.75 | 118.75 |
| 491 | 2.4.14.4 | Inspection | 1h | 2018-06-08 08:00 | 2018-06-08 09:00 | 483, 484, 485 | 2018-05-15 08:00 | 2018-05-15 09:00 | 1h | 65.53d |  | TEAM_2Shift_Calendar-1 | Helper; Fitter | 2h | 118.75 | 118.75 |
| 492 | 2.4.15 | **Ch Nozzle Pipe Profile Cutting** | 0.59d | 2018-06-07 19:30 | 2018-06-08 13:00 |  | 2018-05-14 19:30 | 2018-05-15 13:00 | 0.59d | 65.28d |  | TEAM_2Shift_Calendar-1 |  | 18h | 1,068.75 | 1,068.75 |
| 493 | 2.4.15.1 | 3" Nozzle | 2h | 2018-06-07 21:00 | 2018-06-08 07:00 | 488 | 2018-05-14 21:00 | 2018-05-15 07:00 | 2h | 65.47d | 0d | TEAM_2Shift_Calendar-1 | Helper; Fitter | 4h | 237.5 | 237.5 |
| 494 | 2.4.15.2 | 1.5" NB Mp Con - 4 Nos | 3h | 2018-06-08 09:00 | 2018-06-08 12:00 | 489 | 2018-05-15 09:00 | 2018-05-15 12:00 | 3h | 65.09d | 0d | TEAM_2Shift_Calendar-1 | Helper; Fitter | 6h | 356.25 | 356.25 |
| 495 | 2.4.15.3 | 2" NB Mp Con - 4 Nos | 3h | 2018-06-07 19:30 | 2018-06-08 06:30 | 490 | 2018-05-14 19:30 | 2018-05-15 06:30 | 3h | 65.44d | 0d | TEAM_2Shift_Calendar-1 | Helper; Fitter | 6h | 356.25 | 356.25 |
| 496 | 2.4.15.4 | Inspection | 1h | 2018-06-08 12:00 | 2018-06-08 13:00 | 493, 494, 495 | 2018-05-15 12:00 | 2018-05-15 13:00 | 1h | 65.28d |  | TEAM_2Shift_Calendar-1 | Helper; Fitter | 2h | 118.75 | 118.75 |

| ID | WBS | Task | Duration | Start | Finish | Predecessors | Baseline start | Baseline finish | Baseline duration | Total slack | Free slack | Calendar | Resources | Work | Cost | Baseline cost |
| --- | --- | --- | --- | --- | --- | --- | --- | --- | --- | --- | --- | --- | --- | --- | --- | --- |
| 497 | 2.4.16 | **Ch Nozzle Pipe Profile EP** | 0.59d | 2018-06-08 06:30 | 2018-06-08 16:00 |  | 2018-05-15 06:30 | 2018-05-15 16:00 | 0.59d | 65.09d |  | TEAM_2Shift_Calendar-1 |  | 18h | 956.25 | 956.25 |
| 498 | 2.4.16.1 | 3" Nozzle | 2h | 2018-06-08 07:00 | 2018-06-08 09:00 | 493 | 2018-05-15 07:00 | 2018-05-15 09:00 | 2h | 65.47d | 0.38d | TEAM_2Shift_Calendar-1 | Helper; Grinder | 4h | 212.5 | 212.5 |
| 499 | 2.4.16.2 | 1.5" NB Mp Con - 4 Nos | 3h | 2018-06-08 12:00 | 2018-06-08 15:00 | 494 | 2018-05-15 12:00 | 2018-05-15 15:00 | 3h | 65.09d | 0d | TEAM_2Shift_Calendar-1 | Helper; Grinder | 6h | 318.75 | 318.75 |
| 500 | 2.4.16.3 | 2" NB Mp Con - 4 Nos | 3h | 2018-06-08 06:30 | 2018-06-08 09:30 | 495 | 2018-05-15 06:30 | 2018-05-15 09:30 | 3h | 65.44d | 0.34d | TEAM_2Shift_Calendar-1 | Helper; Grinder | 6h | 318.75 | 318.75 |
| 501 | 2.4.16.4 | Inspection | 1h | 2018-06-08 15:00 | 2018-06-08 16:00 | 498, 499, 500 | 2018-05-15 15:00 | 2018-05-15 16:00 | 1h | 65.09d |  | TEAM_2Shift_Calendar-1 | Helper; Grinder | 2h | 106.25 | 106.25 |
| 502 | 2.5 | **Saddle & Other** | 7.72d | 2018-06-07 06:00 | 2018-06-16 17:30 |  | 2018-05-14 06:00 | 2018-05-22 17:30 | 7.72d | 33.59d |  | TEAM_2Shift_Calendar-1 |  | 131.5h | 3,739.06 | 3,739.06 |
| 503 | 2.5.1 | **Bottom Saddle Fabrication** | 0.66d | 2018-06-07 06:00 | 2018-06-07 16:30 |  | 2018-05-14 06:00 | 2018-05-14 16:30 | 0.66d | 33.59d |  | TEAM_2Shift_Calendar-1 |  | 9h | 296.88 | 296.88 |
| 504 | 2.5.1.1 | Plate Issuence | 8h | 2018-06-07 06:00 | 2018-06-07 14:00 | 2FS+45d | 2018-05-14 06:00 | 2018-05-14 14:00 | 8h | 33.59d | 0d | TEAM_2Shift_Calendar-1 | Store; Plate (Cost) [0.1%]; QC Engineer | 4h |  |  |
| 505 | 2.5.1.2 | Base Marking | 1h | 2018-06-07 14:00 | 2018-06-07 15:00 | 504 | 2018-05-14 14:00 | 2018-05-14 15:00 | 1h | 33.64d | 0d | TEAM_2Shift_Calendar-1 | Helper; Fitter | 2h | 118.75 | 118.75 |
| 506 | 2.5.1.3 | Web Pl Marking | 0.5h | 2018-06-07 15:00 | 2018-06-07 15:30 | 505 | 2018-05-14 15:00 | 2018-05-14 15:30 | 0.5h | 66.06d | 0d | TEAM_2Shift_Calendar-1 | Helper; Fitter | 1h | 59.38 | 59.38 |
| 507 | 2.5.1.4 | RF Pad Marking | 0.5h | 2018-06-07 15:30 | 2018-06-07 16:00 | 506 | 2018-05-14 15:30 | 2018-05-14 16:00 | 0.5h | 66.06d | 0d | TEAM_2Shift_Calendar-1 | Helper; Fitter | 1h | 59.38 | 59.38 |
| 508 | 2.5.1.5 | Ribs Marking | 0.5h | 2018-06-07 16:00 | 2018-06-07 16:30 | 507 | 2018-05-14 16:00 | 2018-05-14 16:30 | 0.5h | 66.06d |  | TEAM_2Shift_Calendar-1 | Helper; Fitter | 1h | 59.38 | 59.38 |
| 509 | 2.5.2 | **Bottom Saddle Plate Cutting** | 0.42d | 2018-06-07 15:00 | 2018-06-07 21:45 |  | 2018-05-14 15:00 | 2018-05-14 21:45 | 0.42d | 33.64d |  | TEAM_2Shift_Calendar-1 |  | 13.5h | 785.94 | 785.94 |
| 510 | 2.5.2.1 | Base Cutting | 1h | 2018-06-07 15:00 | 2018-06-07 16:00 | 505 | 2018-05-14 15:00 | 2018-05-14 16:00 | 1h | 33.64d | 0d | TEAM_2Shift_Calendar-1 | Helper; Gas Cutter | 2h | 118.75 | 118.75 |
| 511 | 2.5.2.2 | Web Pl Cutting | 1h | 2018-06-07 16:00 | 2018-06-07 17:00 | 510 | 2018-05-14 16:00 | 2018-05-14 17:00 | 1h | 65.73d | 0d | TEAM_2Shift_Calendar-1 | Helper; Gas Cutter | 2h | 118.75 | 118.75 |
| 512 | 2.5.2.3 | RF Pad Cutting | 1.25h | 2018-06-07 17:00 | 2018-06-07 18:15 | 511 | 2018-05-14 17:00 | 2018-05-14 18:15 | 1.25h | 65.73d | 0d | TEAM_2Shift_Calendar-1 | Helper; Gas Cutter | 2.5h | 148.44 | 148.44 |
| 513 | 2.5.2.4 | Ribs Cutting | 1h | 2018-06-07 18:15 | 2018-06-07 19:15 | 512 | 2018-05-14 18:15 | 2018-05-14 19:15 | 1h | 65.73d | 0d | TEAM_2Shift_Calendar-1 | Helper; Gas Cutter | 2h | 118.75 | 118.75 |
| 514 | 2.5.2.5 | Grinding Of Above | 2.5h | 2018-06-07 19:15 | 2018-06-07 21:45 | 513 | 2018-05-14 19:15 | 2018-05-14 21:45 | 2.5h | 65.73d |  | TEAM_2Shift_Calendar-1 | Grinder [200%] | 5h | 281.25 | 281.25 |
| 515 | 2.5.3 | **Saddle Fit Up & Welding** | 0.66d | 2018-06-07 16:00 | 2018-06-08 10:30 |  | 2018-05-14 16:00 | 2018-05-15 10:30 | 0.66d | 33.64d | 1.09d | TEAM_2Shift_Calendar-1 |  | 35h | 2,078.12 | 2,078.12 |
| 516 | 2.5.3.1 | Base + Web Fit Up | 2h | 2018-06-07 16:00 | 2018-06-07 18:00 | 505, 510 | 2018-05-14 16:00 | 2018-05-14 18:00 | 2h | 33.64d | 0d | TEAM_2Shift_Calendar-1 | Helper [200%]; SMAW Welder; Fitter | 8h | 475 | 475 |
| 517 | 2.5.3.2 | Base + Web Welding | 3.5h | 2018-06-07 18:00 | 2018-06-07 21:30 | 516 | 2018-05-14 18:00 | 2018-05-14 21:30 | 3.5h | 33.64d | 0d | TEAM_2Shift_Calendar-1 | Helper; SMAW Welder | 7h | 415.62 | 415.62 |
| 518 | 2.5.3.3 | Ribs+Web Fit Up | 2h | 2018-06-07 21:30 | 2018-06-08 07:30 | 517 | 2018-05-14 21:30 | 2018-05-15 07:30 | 2h | 33.64d | 0d | TEAM_2Shift_Calendar-1 | Helper [200%]; SMAW Welder; Fitter | 8h | 475 | 475 |
| 519 | 2.5.3.4 | Ribs+Web Welding | 3h | 2018-06-08 07:30 | 2018-06-08 10:30 | 518 | 2018-05-15 07:30 | 2018-05-15 10:30 | 3h | 33.64d |  | TEAM_2Shift_Calendar-1 | Helper [200%]; SMAW Welder [200%] | 12h | 712.5 | 712.5 |
| 520 | 2.5.4 | **Lifting Lug Pad & RF Pad** | 7.55d | 2018-06-07 06:00 | 2018-06-16 14:48 |  | 2018-05-14 06:00 | 2018-05-22 14:48 | 7.55d | 59d | 0d | TEAM_2Shift_Calendar-1 |  | 68.6h | 270 | 270 |
| 521 | 2.5.4.1 | Plate Issuence | 7.38d | 2018-06-07 06:00 | 2018-06-16 12:00 | 2FS+45d | 2018-05-14 06:00 | 2018-05-22 12:00 | 7.38d | 59d | 0d | TEAM_2Shift_Calendar-1 | Store; QC Engineer | 64h |  |  |
| 522 | 2.5.4.2 | Pad Marking | 0.3h | 2018-06-16 12:00 | 2018-06-16 12:18 | 521 | 2018-05-22 12:00 | 2018-05-22 12:18 | 0.3h | 59d | 0d | TEAM_2Shift_Calendar-1 | Helper; Fitter | 0.6h | 35.62 | 35.62 |
| 523 | 2.5.4.3 | Pad Cutting | 0.5h | 2018-06-16 12:18 | 2018-06-16 12:48 | 522 | 2018-05-22 12:18 | 2018-05-22 12:48 | 0.5h | 59d | 0d | TEAM_2Shift_Calendar-1 | Helper; Gas Cutter | 1h | 59.38 | 59.38 |
| 524 | 2.5.4.4 | Pad Grinding | 1h | 2018-06-16 12:48 | 2018-06-16 13:48 | 523 | 2018-05-22 12:48 | 2018-05-22 13:48 | 1h | 59d | 0d | TEAM_2Shift_Calendar-1 | Helper; Grinder | 2h | 106.25 | 106.25 |
| 525 | 2.5.4.5 | Pad Drilling | 1h | 2018-06-16 13:48 | 2018-06-16 14:48 | 524 | 2018-05-22 13:48 | 2018-05-22 14:48 | 1h | 59d |  | TEAM_2Shift_Calendar-1 | Driller | 1h | 68.75 | 68.75 |

| ID | WBS | Task | Duration | Start | Finish | Predecessors | Baseline start | Baseline finish | Baseline duration | Total slack | Free slack | Calendar | Resources | Work | Cost | Baseline cost |
| --- | --- | --- | --- | --- | --- | --- | --- | --- | --- | --- | --- | --- | --- | --- | --- | --- |
| 526 | 2.5.5 | **Lifting Lug Preparation** | 0.17d | 2018-06-16 14:48 | 2018-06-16 17:30 |  | 2018-05-22 14:48 | 2018-05-22 17:30 | 0.17d | 59d |  | TEAM_2Shift_Calendar-1 |  | 5.4h | 308.12 | 308.12 |
| 527 | 2.5.5.1 | Lifting Lugs Marking | 0.2h | 2018-06-16 14:48 | 2018-06-16 15:00 | 520 | 2018-05-22 14:48 | 2018-05-22 15:00 | 0.2h | 59d | 0d | TEAM_2Shift_Calendar-1 | Helper; Fitter | 0.4h | 23.75 | 23.75 |
| 528 | 2.5.5.2 | Lifting Lugs Cutting | 0.5h | 2018-06-16 15:00 | 2018-06-16 15:30 | 527 | 2018-05-22 15:00 | 2018-05-22 15:30 | 0.5h | 59d | 0d | TEAM_2Shift_Calendar-1 | Helper; Gas Cutter | 1h | 59.38 | 59.38 |
| 529 | 2.5.5.3 | Lifting Lugs Grinding | 1h | 2018-06-16 15:30 | 2018-06-16 16:30 | 528 | 2018-05-22 15:30 | 2018-05-22 16:30 | 1h | 59d | 0d | TEAM_2Shift_Calendar-1 | Helper; Grinder | 2h | 106.25 | 106.25 |
| 530 | 2.5.5.4 | Lifting Lug Drilling | 1h | 2018-06-16 16:30 | 2018-06-16 17:30 | 529 | 2018-05-22 16:30 | 2018-05-22 17:30 | 1h | 59d |  | TEAM_2Shift_Calendar-1 | Helper; Fitter | 2h | 118.75 | 118.75 |
| 531 | 2.6 | **Baffle & Tb Items Fab** | 16.75d | 2018-06-07 06:00 | 2018-06-28 18:00 |  | 2018-05-14 06:00 | 2018-06-07 16:30 | 20.66d | 49.97d |  | TEAM_2Shift_Calendar-1 |  | 193.5h | 4,133.75 | 4,133.75 |
| 532 | 2.6.1 | **Baffle Preparation** | 0.95d | 2018-06-07 06:00 | 2018-06-07 21:15 |  | 2018-05-14 06:00 | 2018-05-14 21:15 | 0.95d | 49.97d | 0d | TEAM_2Shift_Calendar-1 |  | 18.5h | 623.44 | 623.44 |
| 533 | 2.6.1.1 | Baffle Plate Transfer | 10h | 2018-06-07 06:00 | 2018-06-07 16:00 | 2FS+45d | 2018-05-14 06:00 | 2018-05-14 16:00 | 10h | 49.97d | 0d | TEAM_2Shift_Calendar-1 | Store; Plate (Cost) [0.1%]; QC Engineer | 8h |  |  |
| 534 | 2.6.1.2 | Baffle Marking | 2h | 2018-06-07 16:00 | 2018-06-07 18:00 | 533 | 2018-05-14 16:00 | 2018-05-14 18:00 | 2h | 49.97d | 0d | TEAM_2Shift_Calendar-1 | Helper; Fitter | 4h | 237.5 | 237.5 |
| 535 | 2.6.1.3 | Baffle Profile Cutting | 3.25h | 2018-06-07 18:00 | 2018-06-07 21:15 | 534 | 2018-05-14 18:00 | 2018-05-14 21:15 | 3.25h | 49.97d |  | TEAM_2Shift_Calendar-1 | Helper; Gas Cutter | 6.5h | 385.94 | 385.94 |
| 536 | 2.6.2 | **Baffle Bend Removal & Stacking** | 0.39d | 2018-06-07 21:15 | 2018-06-08 11:30 |  | 2018-05-14 21:15 | 2018-05-15 11:30 | 0.39d | 49.97d | 0d | TEAM_2Shift_Calendar-1 |  | 18.5h | 1,042.19 | 1,042.19 |
| 537 | 2.6.2.1 | Baffle Pl Bend Removal | 6h | 2018-06-07 21:15 | 2018-06-08 11:15 | 532 | 2018-05-14 21:15 | 2018-05-15 11:15 | 6h | 49.97d | 0d | TEAM_2Shift_Calendar-1 | Helper [200%]; Fitter | 18h | 1,012.5 | 1,012.5 |
| 538 | 2.6.2.2 | Baffle Pl StackingPer 100mm | 0.25h | 2018-06-08 11:15 | 2018-06-08 11:30 | 537 | 2018-05-15 11:15 | 2018-05-15 11:30 | 0.25h | 49.97d |  | TEAM_2Shift_Calendar-1 | Helper; Fitter | 0.5h | 29.69 | 29.69 |
| 539 | 2.6.3 | **Baffle Drilling** | 8d | 2018-06-08 11:30 | 2018-06-19 11:30 |  | 2018-05-15 11:30 | 2018-05-24 11:30 | 8d | 49.97d | 0d | TEAM_2Shift_Calendar-1 |  | 64h |  |  |
| 540 | 2.6.3.1 | Baffle Drilling | 4d | 2018-06-08 11:30 | 2018-06-19 11:30 | 536 | 2018-05-15 11:30 | 2018-05-24 11:30 | 4d | 24.97d |  |  | SC (Work) | 64h |  |  |
| 541 | 2.6.4 | **Baffle De Stacking & Chamfering** | 0.14d | 2018-06-19 11:30 | 2018-06-19 13:45 |  | 2018-05-24 11:30 | 2018-05-24 13:45 | 0.14d | 49.97d | 0d | TEAM_2Shift_Calendar-1 |  | 2.5h | 167.19 | 167.19 |
| 542 | 2.6.4.1 | Baffle De Stacking | 0.25h | 2018-06-19 11:30 | 2018-06-19 11:45 | 539 | 2018-05-24 11:30 | 2018-05-24 11:45 | 0.25h | 49.97d | 0d | TEAM_2Shift_Calendar-1 | Helper; Fitter | 0.5h | 29.69 | 29.69 |
| 543 | 2.6.4.2 | Baffle Chamfering (70% of TS Holes*No of Baffles) | 2h | 2018-06-19 11:45 | 2018-06-19 13:45 | 542 | 2018-05-24 11:45 | 2018-05-24 13:45 | 2h | 49.97d |  | TEAM_2Shift_Calendar-1 | Fitter | 2h | 137.5 | 137.5 |
| 544 | 2.6.5 | **Baffle Stacking & Thro Hole Check** | 7.27d | 2018-06-19 13:45 | 2018-06-28 18:00 |  | 2018-05-24 13:45 | 2018-06-02 18:00 | 7.27d | 49.97d |  | TEAM_2Shift_Calendar-1 |  | 68.5h | 717.19 | 717.19 |
| 545 | 2.6.5.1 | Stacking | 2h | 2018-06-19 13:45 | 2018-06-19 15:45 | 541 | 2018-05-24 13:45 | 2018-05-24 15:45 | 2h | 49.97d | 0d | TEAM_2Shift_Calendar-1 | Helper; Fitter | 4h | 237.5 | 237.5 |
| 546 | 2.6.5.2 | Baffle Hole Alingment | 0.25h | 2018-06-19 15:45 | 2018-06-19 16:00 | 545 | 2018-05-24 15:45 | 2018-05-24 16:00 | 0.25h | 49.97d | 0d | TEAM_2Shift_Calendar-1 | Helper; Fitter | 0.5h | 29.69 | 29.69 |
| 547 | 2.6.5.3 | Baffle Hole Re Drill (Use 40% of Holes in Qty) | 7h | 2018-06-19 16:00 | 2018-06-20 15:00 | 546 | 2018-05-24 16:00 | 2018-05-25 15:00 | 7h | 24.97d | 0d |  | SC (Work) | 7h |  |  |
| 548 | 2.6.5.4 | Baffle Od Machining | 3d | 2018-06-20 15:00 | 2018-06-28 15:00 | 547 | 2018-05-25 15:00 | 2018-06-02 15:00 | 3d | 24.97d | 0d |  | SC (Work) | 48h |  |  |
| 549 | 2.6.5.5 | Baffle Cleaning(100mm L * 700Ø = 3hrs) | 3h | 2018-06-28 15:00 | 2018-06-28 18:00 | 548 | 2018-06-02 15:00 | 2018-06-02 18:00 | 3h | 49.97d |  | TEAM_2Shift_Calendar-1 | Helper [300%] | 9h | 450 | 450 |

| ID | WBS | Task | Duration | Start | Finish | Predecessors | Baseline start | Baseline finish | Baseline duration | Total slack | Free slack | Calendar | Resources | Work | Cost | Baseline cost |
| --- | --- | --- | --- | --- | --- | --- | --- | --- | --- | --- | --- | --- | --- | --- | --- | --- |
| 550 | 2.6.6 | **Tie Rod Preparation** | 0.56d | 2018-06-20 06:00 | 2018-06-20 15:00 |  | 2018-05-14 06:00 | 2018-05-14 15:00 | 0.56d | 56.16d |  | TEAM_2Shift_Calendar-1 |  | 8.5h | 717.5 | 717.5 |
| 551 | 2.6.6.1 | Tie Rod Matl Transfere | 3h | 2018-06-20 06:00 | 2018-06-20 09:00 | 2FS+55d | 2018-05-14 06:00 | 2018-05-14 09:00 | 3h | 56.16d | 0d | TEAM_2Shift_Calendar-1 | Rod (Cost) [0.1%]; Store | 0.5h |  |  |
| 552 | 2.6.6.2 | Rod Cutting | 2h | 2018-06-20 09:00 | 2018-06-20 11:00 | 551 | 2018-05-14 09:00 | 2018-05-14 11:00 | 2h | 56.16d | 0d | TEAM_2Shift_Calendar-1 | Helper; Fitter | 4h | 237.5 | 237.5 |
| 553 | 2.6.6.3 | Thread Machining. | 4h | 2018-06-20 11:00 | 2018-06-20 15:00 | 552 | 2018-05-14 11:00 | 2018-05-14 15:00 | 4h | 56.16d |  | TEAM_2Shift_Calendar-1 | Lathe Operator | 4h | 480 | 480 |
| 554 | 2.6.7 | **Spacer Tube Preparation** | 0.66d | 2018-06-20 06:00 | 2018-06-20 16:30 |  | 2018-06-07 06:00 | 2018-06-07 16:30 | 0.66d | 56.06d |  | TEAM_2Shift_Calendar-1 |  | 13h | 866.25 | 866.25 |
| 555 | 2.6.7.1 | Spacer Tube Transfere | 3.5h | 2018-06-20 06:00 | 2018-06-20 09:30 | 2FS+55d | 2018-06-07 06:00 | 2018-06-07 09:30 | 3.5h | 56.06d | 0d | TEAM_2Shift_Calendar-1 | Store | 1h |  |  |
| 556 | 2.6.7.2 | Length Cutting34 Nos | 3h | 2018-06-20 09:30 | 2018-06-20 12:30 | 555 | 2018-06-07 09:30 | 2018-06-07 12:30 | 3h | 56.06d | 0d | TEAM_2Shift_Calendar-1 | Helper; Fitter | 6h | 356.25 | 356.25 |
| 557 | 2.6.7.3 | Length Machining | 3h | 2018-06-20 12:30 | 2018-06-20 15:30 | 556 | 2018-06-07 12:30 | 2018-06-07 15:30 | 3h | 56.06d | 0d | TEAM_2Shift_Calendar-1 | Lathe Operator | 3h | 360 | 360 |
| 558 | 2.6.7.4 | Cleaning | 1h | 2018-06-20 15:30 | 2018-06-20 16:30 | 557 | 2018-06-07 15:30 | 2018-06-07 16:30 | 1h | 56.06d |  | TEAM_2Shift_Calendar-1 | Helper [300%] | 3h | 150 | 150 |
| 559 | 2.7 | **Shell Fabrication** | 9.24d | 2018-06-01 06:00 | 2018-06-13 09:55 |  | 2018-04-23 06:00 | 2018-05-19 15:55 | 20.62d | 32.55d |  | TEAM_2Shift_Calendar-1 |  | 216.53h | 12,585.81 | 12,585.81 |
| 560 | 2.7.1 | **Shell Marking & Cutting** | 4.09d | 2018-06-01 06:00 | 2018-06-06 07:30 |  | 2018-04-23 06:00 | 2018-05-14 13:30 | 15.47d | 32.55d | 0d | TEAM_2Shift_Calendar-1 |  | 12.69h | 253.12 | 253.12 |
| 561 | 2.7.1.1 | Sh Plate Trnasfer | 4d | 2018-06-01 06:00 | 2018-06-05 22:00 | 2FS+40d | 2018-04-23 06:00 | 2018-05-14 12:00 | 15.38d | 32.55d | 0d | TEAM_2Shift_Calendar-1 | Store; Plate (Cost) [0.1%]; QC Engineer | 8.19h |  |  |
| 562 | 2.7.1.2 | Sh-Marking | 1.5h | 2018-06-06 06:00 | 2018-06-06 07:30 | 561 | 2018-05-14 12:00 | 2018-05-14 13:30 | 1.5h | 32.55d |  | TEAM_2Shift_Calendar-1 | Helper [200%]; Fitter | 4.5h | 253.12 | 253.12 |
| 563 | 2.7.2 | **Shell Plate Cutting** | 0.38d | 2018-06-06 07:30 | 2018-06-06 13:30 |  | 2018-05-14 13:30 | 2018-05-14 19:30 | 0.38d | 32.55d | 0d | TEAM_2Shift_Calendar-1 |  | 14h | 812.5 | 812.5 |
| 564 | 2.7.2.1 | Sh-Cutting | 2h | 2018-06-06 07:30 | 2018-06-06 09:30 | 560 | 2018-05-14 13:30 | 2018-05-14 15:30 | 2h | 32.55d | 0d | TEAM_2Shift_Calendar-1 | Helper [200%]; Gas Cutter | 6h | 337.5 | 337.5 |
| 565 | 2.7.2.2 | Sh Cir EP Correction | 4h | 2018-06-06 09:30 | 2018-06-06 13:30 | 564 | 2018-05-14 15:30 | 2018-05-14 19:30 | 4h | 32.55d |  | TEAM_2Shift_Calendar-1 | Helper; Fitter | 8h | 475 | 475 |
| 566 | 2.7.3 | **Sh Final Length Correction** | 0.64d | 2018-06-06 13:30 | 2018-06-07 07:40 |  | 2018-05-14 19:30 | 2018-05-15 13:40 | 0.64d | 32.55d | 0d | TEAM_2Shift_Calendar-1 |  | 20.34h | 1,270.19 | 1,270.19 |
| 567 | 2.7.3.1 | Sh Length Marking | 6h | 2018-06-06 13:30 | 2018-06-06 19:30 | 563 | 2018-05-14 19:30 | 2018-05-15 09:30 | 6h | 32.55d | 0d | TEAM_2Shift_Calendar-1 | Fitter [200%] | 12h | 825 | 825 |
| 568 | 2.7.3.2 | Length Cutting | 0.17h | 2018-06-06 19:30 | 2018-06-06 19:40 | 567 | 2018-05-15 09:30 | 2018-05-15 09:40 | 0.17h | 32.55d | 0d | TEAM_2Shift_Calendar-1 | Helper; Gas Cutter | 0.34h | 20.19 | 20.19 |
| 569 | 2.7.3.3 | Grinding & EP | 4h | 2018-06-06 19:40 | 2018-06-07 07:40 | 568 | 2018-05-15 09:40 | 2018-05-15 13:40 | 4h | 32.55d |  | TEAM_2Shift_Calendar-1 | Helper; Grinder | 8h | 425 | 425 |
| 570 | 2.7.4 | **Nozzle Orientation Marking** | 0.48d | 2018-06-07 07:40 | 2018-06-07 15:25 |  | 2018-05-15 13:40 | 2018-05-15 21:25 | 0.48d | 32.55d |  | TEAM_2Shift_Calendar-1 |  | 15.5h | 1,065.62 | 1,065.62 |
| 571 | 2.7.4.1 | Sh Nozzel Orientaion Marking | 4h | 2018-06-07 07:40 | 2018-06-07 11:40 | 566 | 2018-05-15 13:40 | 2018-05-15 17:40 | 4h | 32.55d | 0d | TEAM_2Shift_Calendar-1 | Fitter [200%] | 8h | 550 | 550 |
| 572 | 2.7.4.2 | Sh Nozzel Marking | 1.75h | 2018-06-07 11:40 | 2018-06-07 13:25 | 571 | 2018-05-15 17:40 | 2018-05-15 19:25 | 1.75h | 32.55d | 0d | TEAM_2Shift_Calendar-1 | Fitter [200%] | 3.5h | 240.62 | 240.62 |
| 573 | 2.7.4.3 | Sh Nozzel Marking2" NB - 2 Nos | 2h | 2018-06-07 13:25 | 2018-06-07 15:25 | 572 | 2018-05-15 19:25 | 2018-05-15 21:25 | 2h | 32.55d | 0d | TEAM_2Shift_Calendar-1 | Fitter [200%] | 4h | 275 | 275 |

| ID | WBS | Task | Duration | Start | Finish | Predecessors | Baseline start | Baseline finish | Baseline duration | Total slack | Free slack | Calendar | Resources | Work | Cost | Baseline cost |
| --- | --- | --- | --- | --- | --- | --- | --- | --- | --- | --- | --- | --- | --- | --- | --- | --- |
| 574 | 2.7.5 | **Sh Nozzle Openning** | 0.31d | 2018-06-07 13:25 | 2018-06-07 18:25 |  | 2018-05-15 19:25 | 2018-05-16 08:25 | 0.31d | 32.67d |  | TEAM_2Shift_Calendar-1 |  | 10h | 593.75 | 593.75 |
| 575 | 2.7.5.1 | 3" Nozzle - 2 Nos | 2h | 2018-06-07 13:25 | 2018-06-07 15:25 | 572 | 2018-05-15 19:25 | 2018-05-15 21:25 | 2h | 32.7d | 0d | TEAM_2Shift_Calendar-1 | Helper; Gas Cutter | 4h | 237.5 | 237.5 |
| 576 | 2.7.5.2 | 2" NB - 2 Nos | 2h | 2018-06-07 15:25 | 2018-06-07 17:25 | 573 | 2018-05-15 21:25 | 2018-05-16 07:25 | 2h | 32.55d | 0d | TEAM_2Shift_Calendar-1 | Helper; Gas Cutter | 4h | 237.5 | 237.5 |
| 577 | 2.7.5.3 | Inspection | 1h | 2018-06-07 17:25 | 2018-06-07 18:25 | 575, 576 | 2018-05-16 07:25 | 2018-05-16 08:25 | 1h | 65.94d |  | TEAM_2Shift_Calendar-1 | Helper; Fitter | 2h | 118.75 | 118.75 |
| 578 | 2.7.6 | **Sh Nozzle EP** | 0.31d | 2018-06-07 15:25 | 2018-06-07 20:25 |  | 2018-05-15 21:25 | 2018-05-16 10:25 | 0.31d | 32.67d |  | TEAM_2Shift_Calendar-1 |  | 6h | 343.75 | 343.75 |
| 579 | 2.7.6.1 | 3" Nozzle - 2 Nos | 2h | 2018-06-07 15:25 | 2018-06-07 17:25 | 575 | 2018-05-15 21:25 | 2018-05-16 07:25 | 2h | 32.7d | 0d | TEAM_2Shift_Calendar-1 | Grinder | 2h | 112.5 | 112.5 |
| 580 | 2.7.6.2 | 2" NB - 2 Nos | 2h | 2018-06-07 17:25 | 2018-06-07 19:25 | 576 | 2018-05-16 07:25 | 2018-05-16 09:25 | 2h | 32.55d | 0d | TEAM_2Shift_Calendar-1 | Grinder | 2h | 112.5 | 112.5 |
| 581 | 2.7.6.3 | Inspection | 1h | 2018-06-07 19:25 | 2018-06-07 20:25 | 579, 580 | 2018-05-16 09:25 | 2018-05-16 10:25 | 1h | 65.82d |  | TEAM_2Shift_Calendar-1 | Helper; Fitter | 2h | 118.75 | 118.75 |
| 582 | 2.7.7 | **Sh Nozzzle Fit Up** | 0.25d | 2018-06-07 17:25 | 2018-06-07 21:25 |  | 2018-05-16 07:25 | 2018-05-16 11:25 | 0.25d | 32.67d |  | TEAM_2Shift_Calendar-1 |  | 10h | 631.25 | 631.25 |
| 583 | 2.7.7.1 | 3" Nozzle - 2 Nos | 1h | 2018-06-07 17:25 | 2018-06-07 18:25 | 579 | 2018-05-16 07:25 | 2018-05-16 08:25 | 1h | 32.7d | 0d | TEAM_2Shift_Calendar-1 | Helper; SMAW Welder; Fitter [200%] | 4h | 256.25 | 256.25 |
| 584 | 2.7.7.2 | 2" NB - 2 Nos | 1h | 2018-06-07 19:25 | 2018-06-07 20:25 | 580 | 2018-05-16 09:25 | 2018-05-16 10:25 | 1h | 32.55d | 0d | TEAM_2Shift_Calendar-1 | Helper; SMAW Welder; Fitter [200%] | 4h | 256.25 | 256.25 |
| 585 | 2.7.7.3 | DP Check | 1h | 2018-06-07 20:25 | 2018-06-07 21:25 | 583, 584 | 2018-05-16 10:25 | 2018-05-16 11:25 | 1h | 65.75d |  | TEAM_2Shift_Calendar-1 | Helper; Fitter | 2h | 118.75 | 118.75 |
| 586 | 2.7.8 | **Sh Nozzle Fit Up Inspection** | 0.22d | 2018-06-07 18:25 | 2018-06-07 21:55 |  | 2018-05-16 08:25 | 2018-05-16 11:55 | 0.22d | 32.55d | 0d | TEAM_2Shift_Calendar-1 |  | 5h | 296.88 | 296.88 |
| 587 | 2.7.8.1 | 3" Nozzle - 2 Nos | 1h | 2018-06-07 18:25 | 2018-06-07 19:25 | 583 | 2018-05-16 08:25 | 2018-05-16 09:25 | 1h | 32.7d |  | TEAM_2Shift_Calendar-1 | Helper; Fitter | 2h | 118.75 | 118.75 |
| 588 | 2.7.8.2 | 2" NB - 2 Nos | 1h | 2018-06-07 20:25 | 2018-06-07 21:25 | 584 | 2018-05-16 10:25 | 2018-05-16 11:25 | 1h | 32.55d | 0d | TEAM_2Shift_Calendar-1 | Helper; Fitter | 2h | 118.75 | 118.75 |
| 589 | 2.7.8.3 | DP Check | 0.5h | 2018-06-07 21:25 | 2018-06-07 21:55 | 588 | 2018-05-16 11:25 | 2018-05-16 11:55 | 0.5h | 32.55d |  | TEAM_2Shift_Calendar-1 | Helper; Fitter | 1h | 59.38 | 59.38 |
| 590 | 2.7.9 | **Sh Nozzle Welding** | 1.38d | 2018-06-07 21:55 | 2018-06-11 11:55 |  | 2018-05-16 11:55 | 2018-05-17 17:55 | 1.38d | 32.55d | 0d | TEAM_2Shift_Calendar-1 |  | 28h | 1,543.75 | 1,543.75 |
| 591 | 2.7.9.1 | Sh Nozzel Welding Arrangement | 9h | 2018-06-07 21:55 | 2018-06-08 14:55 | 586 | 2018-05-16 11:55 | 2018-05-16 20:55 | 9h | 32.55d | 0d | TEAM_2Shift_Calendar-1 | Store | 2h |  |  |
| 592 | 2.7.9.2 | Sh Nozzel WeldingB1,B2 | 5.5h | 2018-06-08 14:55 | 2018-06-08 20:25 | 591 | 2018-05-16 20:55 | 2018-05-17 10:25 | 5.5h | 32.55d | 0d | TEAM_2Shift_Calendar-1 | Helper; SMAW Welder | 11h | 653.12 | 653.12 |
| 593 | 2.7.9.3 | Sh Nozzel WeldingV1,D1 | 4.5h | 2018-06-08 20:25 | 2018-06-11 08:55 | 592 | 2018-05-17 10:25 | 2018-05-17 14:55 | 4.5h | 32.55d | 0d | TEAM_2Shift_Calendar-1 | Helper; SMAW Welder | 9h | 534.38 | 534.38 |
| 594 | 2.7.9.4 | Sh Nozzel Root DP Check | 1h | 2018-06-11 08:55 | 2018-06-11 09:55 | 593 | 2018-05-17 14:55 | 2018-05-17 15:55 | 1h | 32.55d | 0d | TEAM_2Shift_Calendar-1 | Helper; Fitter | 2h | 118.75 | 118.75 |
| 595 | 2.7.9.5 | Sh Nozzel Inner Weld | 1h | 2018-06-11 09:55 | 2018-06-11 10:55 | 594 | 2018-05-17 15:55 | 2018-05-17 16:55 | 1h | 32.55d | 0d | TEAM_2Shift_Calendar-1 | SMAW Welder; Helper | 2h | 118.75 | 118.75 |
| 596 | 2.7.9.6 | Sh Nozzel Inner Weld | 1h | 2018-06-11 10:55 | 2018-06-11 11:55 | 595 | 2018-05-17 16:55 | 2018-05-17 17:55 | 1h | 32.55d |  | TEAM_2Shift_Calendar-1 | SMAW Welder; Helper | 2h | 118.75 | 118.75 |
| 597 | 2.7.10 | **Sh Saddle Welding** | 1.38d | 2018-06-11 11:55 | 2018-06-12 17:55 |  | 2018-05-17 17:55 | 2018-05-19 07:55 | 1.38d | 32.55d | 0d | TEAM_2Shift_Calendar-1 |  | 79h | 4,825 | 4,825 |
| 598 | 2.7.10.1 | Sh-Saddle Pad Fit Up | 3h | 2018-06-11 11:55 | 2018-06-11 14:55 | 515, 590 | 2018-05-17 17:55 | 2018-05-17 20:55 | 3h | 32.55d | 0d | TEAM_2Shift_Calendar-1 | SMAW Welder; Helper; Fitter | 9h | 562.5 | 562.5 |
| 599 | 2.7.10.2 | Sh-Saddle Pad Welding | 4h | 2018-06-11 14:55 | 2018-06-11 18:55 | 598 | 2018-05-17 20:55 | 2018-05-18 08:55 | 4h | 32.55d | 0d | TEAM_2Shift_Calendar-1 | Helper [200%]; SMAW Welder [200%] | 16h | 950 | 950 |
| 600 | 2.7.10.3 | Sh-Saddle Matching | 4h | 2018-06-11 18:55 | 2018-06-12 06:55 | 599 | 2018-05-18 08:55 | 2018-05-18 12:55 | 4h | 32.55d | 0d | TEAM_2Shift_Calendar-1 | Grinder [200%]; Fitter [200%] | 16h | 1,000 | 1,000 |
| 601 | 2.7.10.4 | Sh-Saddle Fit Up | 4h | 2018-06-12 06:55 | 2018-06-12 10:55 | 600 | 2018-05-18 12:55 | 2018-05-18 16:55 | 4h | 32.55d | 0d | TEAM_2Shift_Calendar-1 | Fitter [200%]; Helper; SMAW Welder | 16h | 1,025 | 1,025 |
| 602 | 2.7.10.5 | Sh-Saddle Welding | 4h | 2018-06-12 10:55 | 2018-06-12 14:55 | 601 | 2018-05-18 16:55 | 2018-05-18 20:55 | 4h | 32.55d | 0d | TEAM_2Shift_Calendar-1 | Helper [200%]; SMAW Welder [200%] | 16h | 950 | 950 |
| 603 | 2.7.10.6 | Sh-Saddle Dress Up | 3h | 2018-06-12 14:55 | 2018-06-12 17:55 | 602 | 2018-05-18 20:55 | 2018-05-19 07:55 | 3h | 32.55d |  | TEAM_2Shift_Calendar-1 | Grinder [200%] | 6h | 337.5 | 337.5 |

| ID | WBS | Task | Duration | Start | Finish | Predecessors | Baseline start | Baseline finish | Baseline duration | Total slack | Free slack | Calendar | Resources | Work | Cost | Baseline cost |
| --- | --- | --- | --- | --- | --- | --- | --- | --- | --- | --- | --- | --- | --- | --- | --- | --- |
| 604 | 2.7.11 | **Sh Nde Clearence** | 0.5d | 2018-06-12 17:55 | 2018-06-13 09:55 |  | 2018-05-19 07:55 | 2018-05-19 15:55 | 0.5d | 62.47d |  | TEAM_2Shift_Calendar-1 |  | 16h | 950 | 950 |
| 605 | 2.7.11.1 | Sh-Sh Nde Clearence | 4h | 2018-06-12 17:55 | 2018-06-12 21:55 | 597 | 2018-05-19 07:55 | 2018-05-19 11:55 | 4h | 62.47d | 0d | TEAM_2Shift_Calendar-1 | Helper; Fitter | 8h | 475 | 475 |
| 606 | 2.7.11.2 | TPI Inspection | 4h | 2018-06-12 21:55 | 2018-06-13 09:55 | 605 | 2018-05-19 11:55 | 2018-05-19 15:55 | 4h | 62.47d |  | TEAM_2Shift_Calendar-1 | Helper; Fitter | 8h | 475 | 475 |
| 607 | 2.8 | **Tube Bundle Fabrication** | 18.49d | 2018-07-20 21:00 | 2018-08-14 12:48 |  | 2018-07-09 21:00 | 2018-08-02 12:48 | 18.49d | 1.36d |  | TEAM_2Shift_Calendar-1 |  | 503.5h | 29,057.5 | 29,057.5 |
| 608 | 2.8.1 | **Tube Bundle Assy** | 1.25d | 2018-07-20 21:00 | 2018-07-23 09:00 |  | 2018-07-09 21:00 | 2018-07-11 09:00 | 1.25d | 1.36d | 0d | TEAM_2Shift_Calendar-1 |  | 76h | 4,775 | 4,775 |
| 609 | 2.8.1.1 | Frame Set Up & Tube Sht Set Up | 12h | 2018-07-20 21:00 | 2018-07-21 17:00 | 409, 597 | 2018-07-09 21:00 | 2018-07-10 17:00 | 12h | 1.36d | 0d | TEAM_2Shift_Calendar-1 | SMAW Welder; Tube (Cost) [0.1%]; Fitter [200%] | 36h | 2,475 | 2,475 |
| 610 | 2.8.1.2 | Skeleton Assy30Baffles | 8h | 2018-07-21 17:00 | 2018-07-23 09:00 | 609 | 2018-07-10 17:00 | 2018-07-11 09:00 | 8h | 1.36d |  | TEAM_2Shift_Calendar-1 | Helper [300%]; Fitter [200%] | 40h | 2,300 | 2,300 |
| 611 | 2.8.2 | **Tube Insert** | 0.69d | 2018-07-23 09:00 | 2018-07-23 20:00 |  | 2018-07-11 09:00 | 2018-07-11 20:00 | 0.69d | 1.36d | 0d | TEAM_2Shift_Calendar-1 |  | 55h | 2,956.25 | 2,956.25 |
| 612 | 2.8.2.1 | Tube Insert 50% | 5.5h | 2018-07-23 09:00 | 2018-07-23 14:30 | 608 | 2018-07-11 09:00 | 2018-07-11 14:30 | 5.5h | 1.36d | 0d | TEAM_2Shift_Calendar-1 | Helper [400%]; Fitter | 27.5h | 1,478.12 | 1,478.12 |
| 613 | 2.8.2.2 | Tube Insert 50% | 5.5h | 2018-07-23 14:30 | 2018-07-23 20:00 | 612 | 2018-07-11 14:30 | 2018-07-11 20:00 | 5.5h | 1.36d |  | TEAM_2Shift_Calendar-1 | Helper [400%]; Fitter | 27.5h | 1,478.12 | 1,478.12 |
| 614 | 2.8.3 | **Sealing Strip Fit Up Welding** | 0.62d | 2018-07-23 20:00 | 2018-07-24 14:00 |  | 2018-07-11 20:00 | 2018-07-12 14:00 | 0.62d | 1.36d | 0d | TEAM_2Shift_Calendar-1 |  | 19h | 1,125 | 1,125 |
| 615 | 2.8.3.1 | Sealing Strip Fit Up | 8h | 2018-07-23 20:00 | 2018-07-24 12:00 | 611 | 2018-07-11 20:00 | 2018-07-12 12:00 | 8h | 1.36d | 0d | TEAM_2Shift_Calendar-1 | Helper; Fitter | 16h | 950 | 950 |
| 616 | 2.8.3.2 | Sliding Strip Welding | 1h | 2018-07-24 12:00 | 2018-07-24 13:00 | 615 | 2018-07-12 12:00 | 2018-07-12 13:00 | 1h | 1.36d | 0d | TEAM_2Shift_Calendar-1 | Helper; SMAW Welder | 2h | 118.75 | 118.75 |
| 617 | 2.8.3.3 | Seal/Slid Trip Weld Grind | 1h | 2018-07-24 13:00 | 2018-07-24 14:00 | 616 | 2018-07-12 13:00 | 2018-07-12 14:00 | 1h | 1.36d |  | TEAM_2Shift_Calendar-1 | Grinder | 1h | 56.25 | 56.25 |
| 618 | 2.8.4 | **Tube Bundle Insert** | 15.93d | 2018-07-24 14:00 | 2018-08-14 12:48 |  | 2018-07-12 14:00 | 2018-08-02 12:48 | 15.93d | 1.36d | 1.29d | TEAM_2Shift_Calendar-1 |  | 353.5h | 20,201.25 | 20,201.25 |
| 619 | 2.8.4.1 | Tube Bundle Insert In Shell | 16h | 2018-07-24 14:00 | 2018-07-25 14:00 | 614 | 2018-07-12 14:00 | 2018-07-13 14:00 | 16h | 1.36d | 0d | TEAM_2Shift_Calendar-1 | Helper [800%]; Fitter [300%] | 176h | 9,700 | 9,700 |
| 620 | 2.8.4.2 | Tubesheet 1 fitup | 4h | 2018-07-25 14:00 | 2018-07-25 18:00 | 619 | 2018-07-13 14:00 | 2018-07-13 18:00 | 4h | 1.36d | 0d | TEAM_2Shift_Calendar-1 | Helper [400%]; Fitter [200%] | 24h | 1,350 | 1,350 |
| 621 | 2.8.4.3 | DP CheckFlg CS1 | 0.1h | 2018-07-25 18:00 | 2018-07-25 18:06 | 620 | 2018-07-13 18:00 | 2018-07-13 18:06 | 0.1h | 1.36d | 0d | TEAM_2Shift_Calendar-1 | Helper; Fitter | 0.2h | 11.88 | 11.88 |
| 622 | 2.8.4.4 | Tubesheet 2 fixing with tubes | 4h | 2018-07-25 18:06 | 2018-07-26 06:06 | 621 | 2018-07-13 18:06 | 2018-07-16 06:06 | 4h | 1.36d | 0d | TEAM_2Shift_Calendar-1 | Helper [600%]; Fitter [300%] | 36h | 2,025 | 2,025 |
| 623 | 2.8.4.5 | Tubesheet 2 fitup | 4h | 2018-07-26 06:06 | 2018-07-26 10:06 | 622 | 2018-07-16 06:06 | 2018-07-16 10:06 | 4h | 1.36d | 0d | TEAM_2Shift_Calendar-1 | SMAW Welder; Helper [200%]; Fitter | 16h | 950 | 950 |
| 624 | 2.8.4.6 | DP CheckFlg CS1 | 0.1h | 2018-07-26 10:06 | 2018-07-26 10:12 | 623 | 2018-07-16 10:06 | 2018-07-16 10:12 | 0.1h | 1.36d | 0d | TEAM_2Shift_Calendar-1 | Helper; Fitter | 0.2h | 11.88 | 11.88 |
| 625 | 2.8.4.7 | Tubesheet 1 Welding | 6h | 2018-07-26 10:12 | 2018-07-26 16:12 | 624 | 2018-07-16 10:12 | 2018-07-16 16:12 | 6h | 1.36d | 0d | TEAM_2Shift_Calendar-1 | Helper [200%]; SMAW Welder | 18h | 1,012.5 | 1,012.5 |
| 626 | 2.8.4.8 | Tubesheet 2 Welding | 6h | 2018-07-26 16:12 | 2018-07-27 06:12 | 625 | 2018-07-16 16:12 | 2018-07-17 06:12 | 6h | 1.36d | 0d | TEAM_2Shift_Calendar-1 | Helper [200%]; SMAW Welder | 18h | 1,012.5 | 1,012.5 |
| 627 | 2.8.4.9 | Sh CS Welding Back ChipFlg1 | 0.1h | 2018-07-27 06:12 | 2018-07-27 06:18 | 626 | 2018-07-17 06:12 | 2018-07-17 06:18 | 0.1h | 1.36d | 0d | TEAM_2Shift_Calendar-1 | Grinder | 0.1h | 5.62 | 5.62 |
| 628 | 2.8.4.10 | Tubesheet 2 tube trimming | 6h | 2018-07-27 06:18 | 2018-07-27 12:18 | 627 | 2018-07-17 06:18 | 2018-07-17 12:18 | 6h | 1.36d | 0d | TEAM_2Shift_Calendar-1 | Grinder | 6h | 337.5 | 337.5 |
| 629 | 2.8.4.11 | Tubesheet 2 tube welding | 6h | 2018-07-27 12:18 | 2018-07-27 18:18 | 628 | 2018-07-17 12:18 | 2018-07-17 18:18 | 6h | 1.36d | 0d | TEAM_2Shift_Calendar-1 | Helper [200%]; TIG Welder | 18h | 1,350 | 1,350 |
| 630 | 2.8.4.12 | DP Check | 0.5h | 2018-07-27 18:18 | 2018-07-27 18:48 | 629 | 2018-07-17 18:18 | 2018-07-17 18:48 | 0.5h | 1.36d | 0d | TEAM_2Shift_Calendar-1 | Helper; Fitter | 1h | 59.38 | 59.38 |
| 631 | 2.8.4.13 | Tube expansion on both sides- Stage 1 | 5h | 2018-07-27 18:48 | 2018-07-30 07:48 | 630 | 2018-07-17 18:48 | 2018-07-18 07:48 | 5h | 1.36d | 0d | TEAM_2Shift_Calendar-1 | Helper [200%]; Fitter [200%] | 20h | 1,187.5 | 1,187.5 |
| 632 | 2.8.4.14 | Tube expansion on both sides- Stage 2 | 5h | 2018-07-30 07:48 | 2018-07-30 12:48 | 631 | 2018-07-18 07:48 | 2018-07-18 12:48 | 5h | 1.36d | 0d | TEAM_2Shift_Calendar-1 | Helper [200%]; Fitter [200%] | 20h | 1,187.5 | 1,187.5 |
| 633 | 2.8.4.15 | Dummy Activity | 12d | 2018-07-30 12:48 | 2018-08-14 12:48 | 632 | 2018-07-18 12:48 | 2018-08-02 12:48 | 12d | 1.36d |  | TEAM_2Shift_Calendar-1 |  |  |  |  |

| ID | WBS | Task | Duration | Start | Finish | Predecessors | Baseline start | Baseline finish | Baseline duration | Total slack | Free slack | Calendar | Resources | Work | Cost | Baseline cost |
| --- | --- | --- | --- | --- | --- | --- | --- | --- | --- | --- | --- | --- | --- | --- | --- | --- |
| 634 | 2.9 | **Channel Fabrication** | 59.71d | 2018-06-01 06:00 | 2018-08-16 17:25 |  | 2018-05-19 06:00 | 2018-07-20 17:25 | 49.71d | 0.07d | 0d | TEAM_2Shift_Calendar-1 |  | 244.68h | 12,593.5 | 12,593.5 |
| 635 | 2.9.1 | **Channel Shell LS Welding - RHS** | 0.22d | 2018-06-01 06:00 | 2018-06-01 09:30 |  | 2018-05-19 06:00 | 2018-05-19 09:30 | 0.22d | 49.14d | 0d | TEAM_2Shift_Calendar-1 |  | 1h |  |  |
| 636 | 2.9.1.1 | Ch Plate Trasnfer | 3.5h | 2018-06-01 06:00 | 2018-06-01 09:30 | 2FS+40d | 2018-05-19 06:00 | 2018-05-19 09:30 | 3.5h | 49.14d |  | TEAM_2Shift_Calendar-1 | Plate (Cost) [0.1%]; Store | 1h |  |  |
| 637 | 2.9.2 | **Ch CS Fit UpFlg1** | 0.28d | 2018-06-01 09:30 | 2018-06-01 14:00 |  | 2018-05-19 09:30 | 2018-05-19 14:00 | 0.28d | 49.14d | 0d | TEAM_2Shift_Calendar-1 |  | 13h | 837.5 | 837.5 |
| 638 | 2.9.2.1 | Ch Cir EP Correction | 1.5h | 2018-06-01 09:30 | 2018-06-01 11:00 | 635 | 2018-05-19 09:30 | 2018-05-19 11:00 | 1.5h | 49.14d | 0d | TEAM_2Shift_Calendar-1 | Fitter [200%] | 3h | 206.25 | 206.25 |
| 639 | 2.9.2.2 | Ch CS Fit UpFlg1 | 2h | 2018-06-01 11:00 | 2018-06-01 13:00 | 638 | 2018-05-19 11:00 | 2018-05-19 13:00 | 2h | 49.14d | 0d | TEAM_2Shift_Calendar-1 | SMAW Welder; Helper; Fitter [200%] | 8h | 512.5 | 512.5 |
| 640 | 2.9.2.3 | Ch CS Tack DP Check Flg1 | 1h | 2018-06-01 13:00 | 2018-06-01 14:00 | 639 | 2018-05-19 13:00 | 2018-05-19 14:00 | 1h | 49.14d |  | TEAM_2Shift_Calendar-1 | Helper; Fitter | 2h | 118.75 | 118.75 |
| 641 | 2.9.3 | **Ch Dish CS WeldingFlg1** | 0.36d | 2018-06-01 14:00 | 2018-06-01 19:45 |  | 2018-05-19 14:00 | 2018-05-19 19:45 | 0.36d | 49.14d | 0d | TEAM_2Shift_Calendar-1 |  | 12h | 689.06 | 689.06 |
| 642 | 2.9.3.1 | Ch CS Welding Transfere | 2h | 2018-06-01 14:00 | 2018-06-01 16:00 | 637 | 2018-05-19 14:00 | 2018-05-19 16:00 | 2h | 49.14d | 0d | TEAM_2Shift_Calendar-1 | Helper [200%]; Fitter | 6h | 337.5 | 337.5 |
| 643 | 2.9.3.2 | Ch CS Welding OuterFlg1 | 2.25h | 2018-06-01 16:00 | 2018-06-01 18:15 | 642 | 2018-05-19 16:00 | 2018-05-19 18:15 | 2.25h | 49.14d | 0d | TEAM_2Shift_Calendar-1 | Helper; SMAW Welder | 4.5h | 267.19 | 267.19 |
| 644 | 2.9.3.3 | Ch CS Welding Back ChipFlg1 | 0.25h | 2018-06-01 18:15 | 2018-06-01 18:30 | 643 | 2018-05-19 18:15 | 2018-05-19 18:30 | 0.25h | 49.14d | 0d | TEAM_2Shift_Calendar-1 | Grinder | 0.25h | 14.06 | 14.06 |
| 645 | 2.9.3.4 | Ch CS Flush GrindingFlg1 | 1.25h | 2018-06-01 18:30 | 2018-06-01 19:45 | 644 | 2018-05-19 18:30 | 2018-05-19 19:45 | 1.25h | 49.14d |  | TEAM_2Shift_Calendar-1 | Grinder | 1.25h | 70.31 | 70.31 |
| 646 | 2.9.4 | **Ch CS Fit UpFlg2** | 49.24d | 2018-06-01 19:45 | 2018-08-03 07:36 |  | 2018-05-19 19:45 | 2018-07-09 07:36 | 39.24d | 0.07d | 0d | TEAM_2Shift_Calendar-1 |  | 7.44h | 461.44 | 461.44 |
| 647 | 2.9.4.1 | Ch Length Cutting | 0.17h | 2018-06-01 19:45 | 2018-06-01 19:55 | 641 | 2018-05-19 19:45 | 2018-05-19 19:55 | 0.17h | 49.14d | 0d | TEAM_2Shift_Calendar-1 | Helper; Gas Cutter | 0.34h | 20.19 | 20.19 |
| 648 | 2.9.4.2 | Ch Cir EP Correction | 1.5h | 2018-06-01 19:55 | 2018-06-01 21:25 | 647 | 2018-05-19 19:55 | 2018-05-19 21:25 | 1.5h | 49.14d | 49.07d | TEAM_2Shift_Calendar-1 | Helper; Fitter | 3h | 178.12 | 178.12 |
| 649 | 2.9.4.3 | Ch CS Fit UpFlg2 | 1h | 2018-08-03 06:30 | 2018-08-03 07:30 | 377FS+20d, 648 | 2018-07-09 06:30 | 2018-07-09 07:30 | 1h | 0.07d | 0d | TEAM_2Shift_Calendar-1 | SMAW Welder; Helper; Fitter [200%] | 4h | 256.25 | 256.25 |
| 650 | 2.9.4.4 | Ch CS Tack DP CheckFlg2 | 0.1h | 2018-08-03 07:30 | 2018-08-03 07:36 | 649 | 2018-07-09 07:30 | 2018-07-09 07:36 | 0.1h | 0.07d |  | TEAM_2Shift_Calendar-1 | Fitter | 0.1h | 6.88 | 6.88 |
| 651 | 2.9.5 | **Ch CS Flg Welding** | 0.3d | 2018-08-03 07:36 | 2018-08-03 12:21 |  | 2018-07-09 07:36 | 2018-07-09 12:21 | 0.3d | 0.07d | 0d | TEAM_2Shift_Calendar-1 |  | 11h | 632.81 | 632.81 |
| 652 | 2.9.5.1 | Ch CS Welding TransfereFlg2 | 2h | 2018-08-03 07:36 | 2018-08-03 09:36 | 646 | 2018-07-09 07:36 | 2018-07-09 09:36 | 2h | 0.07d | 0d | TEAM_2Shift_Calendar-1 | Helper [200%]; Fitter | 6h | 337.5 | 337.5 |
| 653 | 2.9.5.2 | Ch CS Welding OuterFlg2 | 2.25h | 2018-08-03 09:36 | 2018-08-03 11:51 | 652 | 2018-07-09 09:36 | 2018-07-09 11:51 | 2.25h | 0.07d | 0d | TEAM_2Shift_Calendar-1 | Helper; SMAW Welder | 4.5h | 267.19 | 267.19 |
| 654 | 2.9.5.3 | Ch CS Welding Back ChipFlg2 | 0.25h | 2018-08-03 11:51 | 2018-08-03 12:06 | 653 | 2018-07-09 11:51 | 2018-07-09 12:06 | 0.25h | 0.07d | 0d | TEAM_2Shift_Calendar-1 | Grinder | 0.25h | 14.06 | 14.06 |
| 655 | 2.9.5.4 | Ch CS Flush GrindingFlg2 | 0.25h | 2018-08-03 12:06 | 2018-08-03 12:21 | 654 | 2018-07-09 12:06 | 2018-07-09 12:21 | 0.25h | 0.07d |  | TEAM_2Shift_Calendar-1 | Grinder | 0.25h | 14.06 | 14.06 |
| 656 | 2.9.6 | **Ch CS Welding RtFlg1 & 2** | 2d | 2018-08-03 12:21 | 2018-08-06 12:21 |  | 2018-07-09 12:21 | 2018-07-11 12:21 | 2d | 0.01d | 0d | TEAM_2Shift_Calendar-1 |  | 16h |  |  |
| 657 | 2.9.6.1 | Ch CS Welding Rt | 1d | 2018-08-03 12:21 | 2018-08-06 12:21 | 651 | 2018-07-09 12:21 | 2018-07-11 12:21 | 1d | 0.01d |  |  | SC Radiography (Work) | 16h |  |  |

| ID | WBS | Task | Duration | Start | Finish | Predecessors | Baseline start | Baseline finish | Baseline duration | Total slack | Free slack | Calendar | Resources | Work | Cost | Baseline cost |
| --- | --- | --- | --- | --- | --- | --- | --- | --- | --- | --- | --- | --- | --- | --- | --- | --- |
| 658 | 2.9.7 | **Channel Nozzel Marking** | 0.19d | 2018-08-06 12:21 | 2018-08-06 15:21 |  | 2018-07-11 12:21 | 2018-07-11 15:21 | 0.19d | 0.07d | 0d | TEAM_2Shift_Calendar-1 |  | 6h | 356.25 | 356.25 |
| 659 | 2.9.7.1 | Ch Nozzel Marking3"Nb- 1 No & 2" - 3 Nos | 3h | 2018-08-06 12:21 | 2018-08-06 15:21 | 656 | 2018-07-11 12:21 | 2018-07-11 15:21 | 3h | 0.07d |  | TEAM_2Shift_Calendar-1 | Helper; Fitter | 6h | 356.25 | 356.25 |
| 660 | 2.9.8 | **Ch Nozzel Opening** | 0.25d | 2018-08-06 15:21 | 2018-08-06 19:21 |  | 2018-07-11 15:21 | 2018-07-11 19:21 | 0.25d | 0.07d | 0d | TEAM_2Shift_Calendar-1 |  | 8h | 475 | 475 |
| 661 | 2.9.8.1 | Ch Nozzel Openning-TopA2,V2, N10 | 2.5h | 2018-08-06 15:21 | 2018-08-06 17:51 | 658 | 2018-07-11 15:21 | 2018-07-11 17:51 | 2.5h | 0.07d | 0d | TEAM_2Shift_Calendar-1 | Helper; Gas Cutter | 5h | 296.88 | 296.88 |
| 662 | 2.9.8.2 | Ch Nozzel Openning-BottomN6 | 1.5h | 2018-08-06 17:51 | 2018-08-06 19:21 | 661 | 2018-07-11 17:51 | 2018-07-11 19:21 | 1.5h | 0.07d |  | TEAM_2Shift_Calendar-1 | Helper; Gas Cutter | 3h | 178.12 | 178.12 |
| 663 | 2.9.9 | **Ch Nozzel Open EP** | 0.25d | 2018-08-06 19:21 | 2018-08-07 07:21 |  | 2018-07-11 19:21 | 2018-07-12 07:21 | 0.25d | 0.07d | 0d | TEAM_2Shift_Calendar-1 |  | 8h | 425 | 425 |
| 664 | 2.9.9.1 | Ch Nozzel EPA2,V2, N10 | 2.5h | 2018-08-06 19:21 | 2018-08-06 21:51 | 660 | 2018-07-11 19:21 | 2018-07-11 21:51 | 2.5h | 0.07d | 0d | TEAM_2Shift_Calendar-1 | Helper; Grinder | 5h | 265.62 | 265.62 |
| 665 | 2.9.9.2 | Ch Nozzel EPN6 | 1.5h | 2018-08-06 21:51 | 2018-08-07 07:21 | 664 | 2018-07-11 21:51 | 2018-07-12 07:21 | 1.5h | 0.07d |  | TEAM_2Shift_Calendar-1 | Helper; Grinder | 3h | 159.38 | 159.38 |
| 666 | 2.9.10 | **Ch Nozzel Fit Up** | 0.25d | 2018-08-07 07:21 | 2018-08-07 11:21 |  | 2018-07-12 07:21 | 2018-07-12 11:21 | 0.25d | 0.07d | 0d | TEAM_2Shift_Calendar-1 |  | 16h | 1,025 | 1,025 |
| 667 | 2.9.10.1 | Ch Nozzel Fit UpA2,V2, N10 | 3h | 2018-08-07 07:21 | 2018-08-07 10:21 | 663 | 2018-07-12 07:21 | 2018-07-12 10:21 | 3h | 0.07d | 0d | TEAM_2Shift_Calendar-1 | SMAW Welder; Helper; Fitter [200%] | 12h | 768.75 | 768.75 |
| 668 | 2.9.10.2 | Ch Nozzel Fit UpN6 | 1h | 2018-08-07 10:21 | 2018-08-07 11:21 | 667 | 2018-07-12 10:21 | 2018-07-12 11:21 | 1h | 0.07d |  | TEAM_2Shift_Calendar-1 | SMAW Welder; Helper; Fitter [200%] | 4h | 256.25 | 256.25 |
| 669 | 2.9.11 | **Ch Nozzel Fit Up Inspection** | 0.12d | 2018-08-07 11:21 | 2018-08-07 13:21 |  | 2018-07-12 11:21 | 2018-07-12 13:21 | 0.12d | 0.07d | 0d | TEAM_2Shift_Calendar-1 |  | 4h | 237.5 | 237.5 |
| 670 | 2.9.11.1 | Ch Nozzel InspectionA2,V2, N10 | 1h | 2018-08-07 11:21 | 2018-08-07 12:21 | 666 | 2018-07-12 11:21 | 2018-07-12 12:21 | 1h | 0.07d | 0d | TEAM_2Shift_Calendar-1 | Helper; Fitter | 2h | 118.75 | 118.75 |
| 671 | 2.9.11.2 | Ch Nozzel InspectionN6 | 1h | 2018-08-07 12:21 | 2018-08-07 13:21 | 670 | 2018-07-12 12:21 | 2018-07-12 13:21 | 1h | 0.07d |  | TEAM_2Shift_Calendar-1 | Helper; Fitter | 2h | 118.75 | 118.75 |
| 672 | 2.9.12 | **Ch Nozzel Welding** | 1.02d | 2018-08-07 13:21 | 2018-08-08 13:39 |  | 2018-07-12 13:21 | 2018-07-13 13:39 | 1.02d | 0.07d | 0d | TEAM_2Shift_Calendar-1 |  | 30.6h | 1,773.12 | 1,773.12 |
| 673 | 2.9.12.1 | Ch Nozzel Welding Arrangement | 1h | 2018-08-07 13:21 | 2018-08-07 14:21 | 669 | 2018-07-12 13:21 | 2018-07-12 14:21 | 1h | 0.07d | 0d | TEAM_2Shift_Calendar-1 | Helper; Fitter | 2h | 118.75 | 118.75 |
| 674 | 2.9.12.2 | Ch Nozzel WeldingA2,V2, N10 | 4h | 2018-08-07 14:21 | 2018-08-07 18:21 | 673 | 2018-07-12 14:21 | 2018-07-12 18:21 | 4h | 0.07d | 0d | TEAM_2Shift_Calendar-1 | Helper; SMAW Welder | 8h | 475 | 475 |
| 675 | 2.9.12.3 | Ch Nozzel WeldingN6 | 2h | 2018-08-07 18:21 | 2018-08-07 20:21 | 674 | 2018-07-12 18:21 | 2018-07-12 20:21 | 2h | 0.07d | 0d | TEAM_2Shift_Calendar-1 | Helper; SMAW Welder | 4h | 237.5 | 237.5 |
| 676 | 2.9.12.4 | Ch Nozzel Root DP Check | 0.3h | 2018-08-07 20:21 | 2018-08-07 20:39 | 675 | 2018-07-12 20:21 | 2018-07-12 20:39 | 0.3h | 0.07d | 0d | TEAM_2Shift_Calendar-1 | Helper; SMAW Welder | 0.6h | 35.62 | 35.62 |
| 677 | 2.9.12.5 | Ch Nozzel Inner WeldB1 | 1h | 2018-08-07 20:39 | 2018-08-07 21:39 | 676 | 2018-07-12 20:39 | 2018-07-12 21:39 | 1h | 0.07d | 0d | TEAM_2Shift_Calendar-1 | Helper; SMAW Welder | 2h | 118.75 | 118.75 |
| 678 | 2.9.12.6 | Ch Nozzel Inner WeldD1 | 1h | 2018-08-07 21:39 | 2018-08-08 06:39 | 677 | 2018-07-12 21:39 | 2018-07-13 06:39 | 1h | 0.07d | 0d | TEAM_2Shift_Calendar-1 | Helper; SMAW Welder | 2h | 118.75 | 118.75 |
| 679 | 2.9.12.7 | Rf Pad Fit Up & Nozzle Fit UpA2,V2, N10,N6 | 2h | 2018-08-08 06:39 | 2018-08-08 08:39 | 678 | 2018-07-13 06:39 | 2018-07-13 08:39 | 2h | 0.07d | 0d | TEAM_2Shift_Calendar-1 | Helper; SMAW Welder | 4h | 237.5 | 237.5 |
| 680 | 2.9.12.8 | Rf Pad Fit Up Welding | 3h | 2018-08-08 08:39 | 2018-08-08 11:39 | 679 | 2018-07-13 08:39 | 2018-07-13 11:39 | 3h | 0.07d | 0d | TEAM_2Shift_Calendar-1 | Helper; Grinder | 6h | 318.75 | 318.75 |
| 681 | 2.9.12.9 | Nozzel Welding Flush Grind | 2h | 2018-08-08 11:39 | 2018-08-08 13:39 | 680 | 2018-07-13 11:39 | 2018-07-13 13:39 | 2h | 0.07d |  | TEAM_2Shift_Calendar-1 | Grinder | 2h | 112.5 | 112.5 |

| ID | WBS | Task | Duration | Start | Finish | Predecessors | Baseline start | Baseline finish | Baseline duration | Total slack | Free slack | Calendar | Resources | Work | Cost | Baseline cost |
| --- | --- | --- | --- | --- | --- | --- | --- | --- | --- | --- | --- | --- | --- | --- | --- | --- |
| 682 | 2.9.13 | **Channel Nde & Pwht** | 0.12d | 2018-08-08 13:39 | 2018-08-08 15:39 |  | 2018-07-13 13:39 | 2018-07-13 15:39 | 0.12d | 0.07d | 0d | TEAM_2Shift_Calendar-1 |  | 2h | 137.5 | 137.5 |
| 683 | 2.9.13.1 | Ch Ch Nde Clearence | 2h | 2018-08-08 13:39 | 2018-08-08 15:39 | 672 | 2018-07-13 13:39 | 2018-07-13 15:39 | 2h | 0.07d |  | TEAM_2Shift_Calendar-1 | Fitter | 2h | 137.5 | 137.5 |
| 684 | 2.9.14 | **Channel Shell LS Welding - LHS** | 0.57d | 2018-08-08 15:39 | 2018-08-09 08:45 |  | 2018-07-13 15:39 | 2018-07-16 08:45 | 0.57d | 0.07d | 0d | TEAM_2Shift_Calendar-1 |  | 2.3h | 16.88 | 16.88 |
| 685 | 2.9.14.1 | Ch Plate Trasnfer | 9h | 2018-08-08 15:39 | 2018-08-09 08:39 | 682 | 2018-07-13 15:39 | 2018-07-16 08:39 | 9h | 0.07d | 0d | TEAM_2Shift_Calendar-1 | Store | 2h |  |  |
| 686 | 2.9.14.2 | Ch Marking | 0.1h | 2018-08-09 08:39 | 2018-08-09 08:45 | 685 | 2018-07-16 08:39 | 2018-07-16 08:45 | 0.1h | 0.07d |  | TEAM_2Shift_Calendar-1 | Helper [200%]; Fitter | 0.3h | 16.88 | 16.88 |
| 687 | 2.9.15 | **Ch CS Fit UpFlg1** | 0.19d | 2018-08-09 08:45 | 2018-08-09 11:45 |  | 2018-07-16 08:45 | 2018-07-16 11:45 | 0.19d | 0.07d | 0d | TEAM_2Shift_Calendar-1 |  | 10h | 640.62 | 640.62 |
| 688 | 2.9.15.1 | Ch Cir EP Correction | 0.5h | 2018-08-09 08:45 | 2018-08-09 09:15 | 684 | 2018-07-16 08:45 | 2018-07-16 09:15 | 0.5h | 0.07d | 0d | TEAM_2Shift_Calendar-1 | Fitter [200%] | 1h | 68.75 | 68.75 |
| 689 | 2.9.15.2 | Ch CS Fit UpFlg1 | 2h | 2018-08-09 09:15 | 2018-08-09 11:15 | 688 | 2018-07-16 09:15 | 2018-07-16 11:15 | 2h | 0.07d | 0d | TEAM_2Shift_Calendar-1 | SMAW Welder; Helper; Fitter [200%] | 8h | 512.5 | 512.5 |
| 690 | 2.9.15.3 | Ch CS Tack DP Check Flg1 | 0.5h | 2018-08-09 11:15 | 2018-08-09 11:45 | 689 | 2018-07-16 11:15 | 2018-07-16 11:45 | 0.5h | 0.07d |  | TEAM_2Shift_Calendar-1 | Helper; Fitter | 1h | 59.38 | 59.38 |
| 691 | 2.9.16 | **Ch Dish CS WeldingFlg1** | 0.36d | 2018-08-09 11:45 | 2018-08-09 17:30 |  | 2018-07-16 11:45 | 2018-07-16 17:30 | 0.36d | 0.07d | 0d | TEAM_2Shift_Calendar-1 |  | 12h | 689.06 | 689.06 |
| 692 | 2.9.16.1 | Ch CS Welding Transfere | 2h | 2018-08-09 11:45 | 2018-08-09 13:45 | 687 | 2018-07-16 11:45 | 2018-07-16 13:45 | 2h | 0.07d | 0d | TEAM_2Shift_Calendar-1 | Helper [200%]; Fitter | 6h | 337.5 | 337.5 |
| 693 | 2.9.16.2 | Ch CS Welding OuterFlg1 | 2.25h | 2018-08-09 13:45 | 2018-08-09 16:00 | 692 | 2018-07-16 13:45 | 2018-07-16 16:00 | 2.25h | 0.07d | 0d | TEAM_2Shift_Calendar-1 | Helper; SMAW Welder | 4.5h | 267.19 | 267.19 |
| 694 | 2.9.16.3 | Ch CS Welding Back ChipFlg1 | 0.25h | 2018-08-09 16:00 | 2018-08-09 16:15 | 693 | 2018-07-16 16:00 | 2018-07-16 16:15 | 0.25h | 0.07d | 0d | TEAM_2Shift_Calendar-1 | Grinder | 0.25h | 14.06 | 14.06 |
| 695 | 2.9.16.4 | Ch CS Flush GrindingFlg1 | 1.25h | 2018-08-09 16:15 | 2018-08-09 17:30 | 694 | 2018-07-16 16:15 | 2018-07-16 17:30 | 1.25h | 0.07d |  | TEAM_2Shift_Calendar-1 | Grinder | 1.25h | 70.31 | 70.31 |
| 696 | 2.9.17 | **Ch CS Fit UpFlg2** | 0.23d | 2018-08-09 17:30 | 2018-08-09 21:10 |  | 2018-07-16 17:30 | 2018-07-16 21:10 | 0.23d | 0.07d | 0d | TEAM_2Shift_Calendar-1 |  | 8.34h | 523.31 | 523.31 |
| 697 | 2.9.17.1 | Ch Length Cutting | 0.17h | 2018-08-09 17:30 | 2018-08-09 17:40 | 691 | 2018-07-16 17:30 | 2018-07-16 17:40 | 0.17h | 0.07d | 0d | TEAM_2Shift_Calendar-1 | Helper; Gas Cutter | 0.34h | 20.19 | 20.19 |
| 698 | 2.9.17.2 | Ch Cir EP Correction | 1.5h | 2018-08-09 17:40 | 2018-08-09 19:10 | 697 | 2018-07-16 17:40 | 2018-07-16 19:10 | 1.5h | 0.07d | 0d | TEAM_2Shift_Calendar-1 | Helper; Fitter | 3h | 178.12 | 178.12 |
| 699 | 2.9.17.3 | Ch CS Fit UpFlg2 | 1h | 2018-08-09 19:10 | 2018-08-09 20:10 | 377FS+20d, 698 | 2018-07-16 19:10 | 2018-07-16 20:10 | 1h | 0.07d | 0d | TEAM_2Shift_Calendar-1 | SMAW Welder; Helper; Fitter [200%] | 4h | 256.25 | 256.25 |
| 700 | 2.9.17.4 | Ch CS Tack DP CheckFlg2 | 1h | 2018-08-09 20:10 | 2018-08-09 21:10 | 699 | 2018-07-16 20:10 | 2018-07-16 21:10 | 1h | 0.07d |  | TEAM_2Shift_Calendar-1 | Fitter | 1h | 68.75 | 68.75 |
| 701 | 2.9.18 | **Ch CS Flg Welding** | 0.23d | 2018-08-09 21:10 | 2018-08-10 08:55 |  | 2018-07-16 21:10 | 2018-07-17 08:55 | 0.23d | 0.07d | 0d | TEAM_2Shift_Calendar-1 |  | 8h | 464.06 | 464.06 |
| 702 | 2.9.18.1 | Ch CS Welding TransfereFlg2 | 1h | 2018-08-09 21:10 | 2018-08-10 06:10 | 696 | 2018-07-16 21:10 | 2018-07-17 06:10 | 1h | 0.07d | 0d | TEAM_2Shift_Calendar-1 | Helper [200%]; Fitter | 3h | 168.75 | 168.75 |
| 703 | 2.9.18.2 | Ch CS Welding OuterFlg2 | 2.25h | 2018-08-10 06:10 | 2018-08-10 08:25 | 702 | 2018-07-17 06:10 | 2018-07-17 08:25 | 2.25h | 0.07d | 0d | TEAM_2Shift_Calendar-1 | Helper; SMAW Welder | 4.5h | 267.19 | 267.19 |
| 704 | 2.9.18.3 | Ch CS Welding Back ChipFlg2 | 0.25h | 2018-08-10 08:25 | 2018-08-10 08:40 | 703 | 2018-07-17 08:25 | 2018-07-17 08:40 | 0.25h | 0.07d | 0d | TEAM_2Shift_Calendar-1 | Grinder | 0.25h | 14.06 | 14.06 |
| 705 | 2.9.18.4 | Ch CS Flush GrindingFlg2 | 0.25h | 2018-08-10 08:40 | 2018-08-10 08:55 | 704 | 2018-07-17 08:40 | 2018-07-17 08:55 | 0.25h | 0.07d |  | TEAM_2Shift_Calendar-1 | Grinder | 0.25h | 14.06 | 14.06 |

| ID | WBS | Task | Duration | Start | Finish | Predecessors | Baseline start | Baseline finish | Baseline duration | Total slack | Free slack | Calendar | Resources | Work | Cost | Baseline cost |
| --- | --- | --- | --- | --- | --- | --- | --- | --- | --- | --- | --- | --- | --- | --- | --- | --- |
| 706 | 2.9.19 | **Ch CS Welding RtFlg1 & 2** | 2d | 2018-08-10 08:55 | 2018-08-14 08:55 |  | 2018-07-17 08:55 | 2018-07-19 08:55 | 2d | 0.07d | 0d | TEAM_2Shift_Calendar-1 |  | 16h |  |  |
| 707 | 2.9.19.1 | Ch CS Welding Rt | 1d | 2018-08-10 08:55 | 2018-08-14 08:55 | 701 | 2018-07-17 08:55 | 2018-07-19 08:55 | 1d | 0.07d |  |  | SC Radiography (Work) | 16h |  |  |
| 708 | 2.9.20 | **Channel Nozzel Marking** | 0.31d | 2018-08-14 08:55 | 2018-08-14 13:55 |  | 2018-07-19 08:55 | 2018-07-19 13:55 | 0.31d | 0.07d | 0d | TEAM_2Shift_Calendar-1 |  | 10h | 593.75 | 593.75 |
| 709 | 2.9.20.1 | Ch Nozzel orientation | 3h | 2018-08-14 08:55 | 2018-08-14 11:55 | 706 | 2018-07-19 08:55 | 2018-07-19 11:55 | 3h | 0.07d | 0d | TEAM_2Shift_Calendar-1 | Fitter; Helper | 6h | 356.25 | 356.25 |
| 710 | 2.9.20.2 | Ch Nozzel Marking2", 3",1.5" - 4 Nos | 2h | 2018-08-14 11:55 | 2018-08-14 13:55 | 709 | 2018-07-19 11:55 | 2018-07-19 13:55 | 2h | 0.07d |  | TEAM_2Shift_Calendar-1 | Helper; Fitter | 4h | 237.5 | 237.5 |
| 711 | 2.9.21 | **Ch Nozzel Opening** | 0.12d | 2018-08-14 13:55 | 2018-08-14 15:55 |  | 2018-07-19 13:55 | 2018-07-19 15:55 | 0.12d | 0.07d | 0d | TEAM_2Shift_Calendar-1 |  | 4h | 237.5 | 237.5 |
| 712 | 2.9.21.1 | Ch Nozzel Openning-TopN5 | 0.5h | 2018-08-14 13:55 | 2018-08-14 14:25 | 708 | 2018-07-19 13:55 | 2018-07-19 14:25 | 0.5h | 0.07d | 0d | TEAM_2Shift_Calendar-1 | Helper; Gas Cutter | 1h | 59.38 | 59.38 |
| 713 | 2.9.21.2 | Ch Nozzel Openning-BottomD2,N9,A1 | 1.5h | 2018-08-14 14:25 | 2018-08-14 15:55 | 712 | 2018-07-19 14:25 | 2018-07-19 15:55 | 1.5h | 0.07d |  | TEAM_2Shift_Calendar-1 | Helper; Gas Cutter | 3h | 178.12 | 178.12 |
| 714 | 2.9.22 | **Ch Nozzel Open EP** | 0.12d | 2018-08-14 15:55 | 2018-08-14 17:55 |  | 2018-07-19 15:55 | 2018-07-19 17:55 | 0.12d | 0.07d | 0d | TEAM_2Shift_Calendar-1 |  | 4h | 212.5 | 212.5 |
| 715 | 2.9.22.1 | Ch Nozzel EPN5 | 0.5h | 2018-08-14 15:55 | 2018-08-14 16:25 | 711 | 2018-07-19 15:55 | 2018-07-19 16:25 | 0.5h | 0.07d | 0d | TEAM_2Shift_Calendar-1 | Helper; Grinder | 1h | 53.12 | 53.12 |
| 716 | 2.9.22.2 | Ch Nozzel EPD2,N9,A1 | 1.5h | 2018-08-14 16:25 | 2018-08-14 17:55 | 715 | 2018-07-19 16:25 | 2018-07-19 17:55 | 1.5h | 0.07d |  | TEAM_2Shift_Calendar-1 | Helper; Grinder | 3h | 159.38 | 159.38 |
| 717 | 2.9.23 | **Ch Nozzel Fit Up** | 0.25d | 2018-08-14 17:55 | 2018-08-14 21:55 |  | 2018-07-19 17:55 | 2018-07-19 21:55 | 0.25d | 0.07d | 0d | TEAM_2Shift_Calendar-1 |  | 16h | 1,025 | 1,025 |
| 718 | 2.9.23.1 | Ch Nozzel Fit UpN4 | 1h | 2018-08-14 17:55 | 2018-08-14 18:55 | 714 | 2018-07-19 17:55 | 2018-07-19 18:55 | 1h | 0.07d | 0d | TEAM_2Shift_Calendar-1 | SMAW Welder; Helper; Fitter [200%] | 4h | 256.25 | 256.25 |
| 719 | 2.9.23.2 | Ch Nozzel Fit UpN3 | 3h | 2018-08-14 18:55 | 2018-08-14 21:55 | 718 | 2018-07-19 18:55 | 2018-07-19 21:55 | 3h | 0.07d |  | TEAM_2Shift_Calendar-1 | SMAW Welder; Helper; Fitter [200%] | 12h | 768.75 | 768.75 |
| 720 | 2.9.24 | **Ch Nozzel Fit Up Inspection** | 0.12d | 2018-08-14 21:55 | 2018-08-16 07:55 |  | 2018-07-19 21:55 | 2018-07-20 07:55 | 0.12d | 0.07d | 0d | TEAM_2Shift_Calendar-1 |  | 4h | 237.5 | 237.5 |
| 721 | 2.9.24.1 | Ch Nozzel InspectionN4 | 1h | 2018-08-14 21:55 | 2018-08-16 06:55 | 717 | 2018-07-19 21:55 | 2018-07-20 06:55 | 1h | 0.07d | 0d | TEAM_2Shift_Calendar-1 | Helper; Fitter | 2h | 118.75 | 118.75 |
| 722 | 2.9.24.2 | Ch Nozzel InspectionN3 | 1h | 2018-08-16 06:55 | 2018-08-16 07:55 | 721 | 2018-07-20 06:55 | 2018-07-20 07:55 | 1h | 0.07d |  | TEAM_2Shift_Calendar-1 | Helper; Fitter | 2h | 118.75 | 118.75 |
| 723 | 2.9.25 | **Ch Nozzel Welding** | 0.47d | 2018-08-16 07:55 | 2018-08-16 15:25 |  | 2018-07-20 07:55 | 2018-07-20 15:25 | 0.47d | 0.07d | 0d | TEAM_2Shift_Calendar-1 |  | 13h | 765.62 | 765.62 |
| 724 | 2.9.25.1 | Ch Nozzel Welding Arrangement | 1h | 2018-08-16 07:55 | 2018-08-16 08:55 | 720 | 2018-07-20 07:55 | 2018-07-20 08:55 | 1h | 0.07d | 0d | TEAM_2Shift_Calendar-1 | Helper; Fitter | 2h | 118.75 | 118.75 |
| 725 | 2.9.25.2 | Ch Nozzel WeldingN4 | 1h | 2018-08-16 08:55 | 2018-08-16 09:55 | 724 | 2018-07-20 08:55 | 2018-07-20 09:55 | 1h | 0.07d | 0d | TEAM_2Shift_Calendar-1 | Helper; SMAW Welder | 2h | 118.75 | 118.75 |
| 726 | 2.9.25.3 | Ch Nozzel WeldingN3 | 1h | 2018-08-16 09:55 | 2018-08-16 10:55 | 725 | 2018-07-20 09:55 | 2018-07-20 10:55 | 1h | 0.07d | 0d | TEAM_2Shift_Calendar-1 | Helper; SMAW Welder | 2h | 118.75 | 118.75 |
| 727 | 2.9.25.4 | Ch Nozzel Root DP Check | 0.5h | 2018-08-16 10:55 | 2018-08-16 11:25 | 726 | 2018-07-20 10:55 | 2018-07-20 11:25 | 0.5h | 0.07d | 0d | TEAM_2Shift_Calendar-1 | Helper; SMAW Welder | 1h | 59.38 | 59.38 |
| 728 | 2.9.25.5 | Ch Nozzel Inner WeldN4 | 1h | 2018-08-16 11:25 | 2018-08-16 12:25 | 727 | 2018-07-20 11:25 | 2018-07-20 12:25 | 1h | 0.07d | 0d | TEAM_2Shift_Calendar-1 | Helper; SMAW Welder | 2h | 118.75 | 118.75 |
| 729 | 2.9.25.6 | Ch Nozzel Inner WeldN5 | 1h | 2018-08-16 12:25 | 2018-08-16 13:25 | 728 | 2018-07-20 12:25 | 2018-07-20 13:25 | 1h | 0.07d | 0d | TEAM_2Shift_Calendar-1 | Helper; SMAW Welder | 2h | 118.75 | 118.75 |
| 730 | 2.9.25.7 | Nozzel Welding Flush GrindN5,D2,N9,A1 | 2h | 2018-08-16 13:25 | 2018-08-16 15:25 | 729 | 2018-07-20 13:25 | 2018-07-20 15:25 | 2h | 0.07d |  | TEAM_2Shift_Calendar-1 | Grinder | 2h | 112.5 | 112.5 |

| ID | WBS | Task | Type | Duration | Start | Finish | Predecessors | Baseline start | Baseline finish | Baseline duration | Total slack | Free slack | Calendar | Resources | Work | Cost | Baseline cost |
| --- | --- | --- | --- | --- | --- | --- | --- | --- | --- | --- | --- | --- | --- | --- | --- | --- | --- |
| 731 | 2.9.26 | **Channel Nde & Pwht** |  | 0.12d | 2018-08-16 15:25 | 2018-08-16 17:25 |  | 2018-07-20 15:25 | 2018-07-20 17:25 | 0.12d | 0.07d | 0d | TEAM_2Shift_Calendar-1 |  | 2h | 137.5 | 137.5 |
| 732 | 2.9.26.1 | Ch Ch Nde Clearence |  | 2h | 2018-08-16 15:25 | 2018-08-16 17:25 | 723 | 2018-07-20 15:25 | 2018-07-20 17:25 | 2h | 0.07d |  | TEAM_2Shift_Calendar-1 | Fitter | 2h | 137.5 | 137.5 |
| 733 | 2.10 | **Final Testing** |  | 3.38d | 2018-08-16 17:25 | 2018-08-21 07:25 |  | 2018-08-02 12:48 | 2018-08-06 18:48 | 3.38d | 0.07d |  | TEAM_2Shift_Calendar-1 |  | 244h | 14,225 | 14,225 |
| 734 | 2.10.1 | **Shell Side Hydro** |  | 1.19d | 2018-08-16 17:25 | 2018-08-17 20:25 |  | 2018-08-02 12:48 | 2018-08-03 15:48 | 1.19d | 0.07d | 0d | TEAM_2Shift_Calendar-1 |  | 74h | 4,412.5 | 4,412.5 |
| 735 | 2.10.1.1 | Shell Side Hydro |  | 1d | 2018-08-16 17:25 | 2018-08-17 17:25 | 618, 634, 731 | 2018-08-02 12:48 | 2018-08-03 12:48 | 1d | 0.07d | 0d | TEAM_2Shift_Calendar-1 | Helper [200%]; Fitter [200%] | 64h | 3,800 | 3,800 |
| 736 | 2.10.1.2 | Shell Side TPI Witness |  | 2h | 2018-08-17 17:25 | 2018-08-17 19:25 | 735 | 2018-08-03 12:48 | 2018-08-03 14:48 | 2h | 0.07d | 0d | TEAM_2Shift_Calendar-1 | Fitter [200%] | 4h | 275 | 275 |
| 737 | 2.10.1.3 | De Watering & Dismantle Of Gland |  | 1h | 2018-08-17 19:25 | 2018-08-17 20:25 | 736 | 2018-08-03 14:48 | 2018-08-03 15:48 | 1h | 0.07d |  | TEAM_2Shift_Calendar-1 | Helper [400%]; Fitter [200%] | 6h | 337.5 | 337.5 |
| 738 | 2.10.2 | **Channel Side Hydro** |  | 1.19d | 2018-08-17 20:25 | 2018-08-20 07:25 |  | 2018-08-03 15:48 | 2018-08-04 18:48 | 1.19d | 0.07d | 0d | TEAM_2Shift_Calendar-1 |  | 74h | 4,412.5 | 4,412.5 |
| 739 | 2.10.2.1 | Shell Side Hydro |  | 1d | 2018-08-17 20:25 | 2018-08-18 20:25 | 734 | 2018-08-03 15:48 | 2018-08-04 15:48 | 1d | 0.07d | 0d | TEAM_2Shift_Calendar-1 | Helper [200%]; Fitter [200%] | 64h | 3,800 | 3,800 |
| 740 | 2.10.2.2 | Shell Side TPI Witness |  | 2h | 2018-08-18 20:25 | 2018-08-20 06:25 | 739 | 2018-08-04 15:48 | 2018-08-04 17:48 | 2h | 0.07d | 0d | TEAM_2Shift_Calendar-1 | Fitter [200%] | 4h | 275 | 275 |
| 741 | 2.10.2.3 | De Watering & Dismantle Of Gland |  | 1h | 2018-08-20 06:25 | 2018-08-20 07:25 | 740 | 2018-08-04 17:48 | 2018-08-04 18:48 | 1h | 0.07d |  | TEAM_2Shift_Calendar-1 | Helper [400%]; Fitter [200%] | 6h | 337.5 | 337.5 |
| 742 | 2.10.3 | **Nitrogen Purging** |  | 1d | 2018-08-20 07:25 | 2018-08-21 07:25 |  | 2018-08-04 18:48 | 2018-08-06 18:48 | 1d | 0.07d | 0d | TEAM_2Shift_Calendar-1 |  | 96h | 5,400 | 5,400 |
| 743 | 2.10.3.1 | Blind & Nitrogen Purging |  | 1d | 2018-08-20 07:25 | 2018-08-21 07:25 | 738 | 2018-08-04 18:48 | 2018-08-06 18:48 | 1d | 0.07d |  | TEAM_2Shift_Calendar-1 | Helper [400%]; Fitter [200%] | 96h | 5,400 | 5,400 |
| 744 | 2.11 | **Painting & Tranportation** |  | 8.63d | 2018-08-21 07:25 | 2018-08-31 17:30 |  | 2018-08-06 18:48 | 2018-09-17 17:30 | 30.92d | 0d |  | TEAM_2Shift_Calendar-1 |  | 150h |  |  |
| 745 | 2.11.1 | Primer |  | 1d | 2018-08-21 07:25 | 2018-08-22 07:25 | 742 | 2018-08-06 18:48 | 2018-08-07 18:48 | 1d | 0.07d | 0d | TEAM_2Shift_Calendar-1 | Painter [300%] | 48h |  |  |
| 746 | 2.11.2 | Top Coat1 |  | 1d | 2018-08-22 07:25 | 2018-08-23 07:25 | 745 | 2018-08-07 18:48 | 2018-08-08 18:48 | 1d | 0.07d | 0d | TEAM_2Shift_Calendar-1 | Painter [300%] | 48h |  |  |
| 747 | 2.11.3 | Dummy Activity | milestone | 0d | 2018-08-23 07:25 | 2018-08-23 07:25 | 746 | 2018-08-08 18:48 | 2018-08-08 18:48 | 0d | 6.63d |  | TEAM_2Shift_Calendar-1 |  |  |  |  |
| 748 | 2.11.4 | Top Coat2 |  | 1d | 2018-08-23 07:25 | 2018-08-24 07:25 | 746 | 2018-08-08 18:48 | 2018-08-09 18:48 | 1d | 0.07d |  | TEAM_2Shift_Calendar-1 | Painter [300%] | 48h |  |  |
| 749 | 2.11.5 | Tranportation |  | 3d | 2018-08-24 08:30 | 2018-08-31 17:30 | 748 | 2018-08-10 08:30 | 2018-08-18 17:30 | 3d | 0d |  |  | Store | 6h |  |  |
