# 4209 N

Schedule from MS Project, 2018-04-16 to 2018-09-06, 16 hours a day, costs in ₹, A marks actual dates.

## Calendars

- TEAM_Stand_Calendar: Mon-Sat 08:30-12:30, 13:30-17:30; Sun off. Exceptions (off unless hours are given): 2017-01-13 to 2023-08-12 (2nd Sat, recurring), 2017-01-26 to 2036-01-26 (Republic Day, recurring), 2017-01-27 to 2023-08-26 (4th Sat, recurring), 2017-05-01 to 2036-05-01 (May Day, recurring), 2017-08-15 to 2036-08-15 (Independence Day, recurring), 2017-10-02 to 2036-10-02 (Gandhi Jayanti, recurring).
- TEAM_2Shift_Calendar-1: Mon-Sat 06:00-22:00; Sun off. Exceptions (off unless hours are given): 2017-01-13 to 2023-02-11 (2nd Sat, recurring), 2017-01-26 to 2036-01-26 (Republic Day, recurring), 2017-01-27 to 2023-08-26 (4th Sat, recurring), 2017-05-01 to 2036-05-01 (May Day, recurring), 2017-08-15 to 2036-08-15 (Indepdence Day, recurring), 2017-10-02 to 2036-10-02 (Gandhi Jayanti, recurring).

## Resources

| Resource | Rate |
| --- | --- |
| Store |  |
| Fitter | 68.75 |
| Helper | 50 |
| Gas Cutter | 68.75 |
| Grinder | 56.25 |
| QC Engineer |  |
| SMAW Welder | 68.75 |
| Driller | 68.75 |
| Lathe Operator | 120 |
| Painter |  |
| SC (Work) |  |
| SC Radiography (Work) |  |
| Production Department |  |
| Forging Non-Std (Cost) |  |
| Forging Std (Cost) |  |
| Pipe (Cost) |  |
| Tube (Cost) |  |
| Tube Sheet (Cost) |  |
| Plate (Cost) |  |
| Finance |  |
| PMO Support |  |
| PM |  |

## Schedule

| ID | WBS | Task | Duration | Start | Finish | Predecessors | Complete | Remaining | Baseline start | Baseline finish | Baseline duration | Total slack | Free slack | Calendar | Resources | Work | Cost | Baseline cost |
| --- | --- | --- | --- | --- | --- | --- | --- | --- | --- | --- | --- | --- | --- | --- | --- | --- | --- | --- |
| 1 | 1 | **160-EE-0012** | 56.5d | 2018-04-16 08:30 A | 2018-09-06 18:06 |  | 1% | 56.07d | 2018-04-16 08:30 | 2018-09-28 17:30 | 64.5d | 0d |  |  |  | 2966.95h | 128,518.13 | 128,518.13 |
| 2 | 1.1 | Material ordering | 1d | 2018-04-16 08:30 A | 2018-04-17 17:30 A |  | 100% |  | 2018-04-16 08:30 | 2018-04-17 17:30 | 1d |  |  |  |  |  |  |  |
| 3 | 1.2 | **Dish Forming - Od** | 26.19d | 2018-06-05 17:30 | 2018-07-07 20:30 |  |  |  | 2018-05-14 17:30 | 2018-06-15 20:30 | 26.19d | 4.33d | 0d | TEAM_2Shift_Calendar-1 |  | 249h | 3,184.38 | 3,184.38 |
| 4 | 1.2.1 | Bar Dish Blank Issuence | 4h | 2018-06-05 17:30 | 2018-06-05 21:30 | 2FS+38d |  |  | 2018-05-14 17:30 | 2018-05-14 21:30 | 4h | 4.59d | 0d | TEAM_2Shift_Calendar-1 | Plate (Cost) [0.1%]; Store | 4h |  |  |
| 5 | 1.2.2 | Bar-Dish Blank Marking10TXOD 404 | 0.5h | 2018-06-05 21:30 | 2018-06-05 22:00 | 4 |  |  | 2018-05-14 21:30 | 2018-05-14 22:00 | 0.5h | 4.59d | 0d | TEAM_2Shift_Calendar-1 | Helper; Fitter | 1h | 59.38 | 59.38 |
| 6 | 1.2.3 | Bar-Dish Blank Marking Inspection | 4h | 2018-06-06 06:00 | 2018-06-06 10:00 | 5 |  |  | 2018-05-15 06:00 | 2018-05-15 10:00 | 4h | 4.59d | 0d | TEAM_2Shift_Calendar-1 | Helper; Fitter | 8h | 475 | 475 |
| 7 | 1.2.4 | Bar-Dish Blank Cutting | 5h | 2018-06-06 10:00 | 2018-06-06 15:00 | 6 |  |  | 2018-05-15 10:00 | 2018-05-15 15:00 | 5h | 4.59d | 0d | TEAM_2Shift_Calendar-1 | Helper; Gas Cutter | 10h | 593.75 | 593.75 |
| 8 | 1.2.5 | Bar-Dish Forming | 7d | 2018-06-06 15:00 | 2018-06-25 15:00 | 7 |  |  | 2018-05-15 15:00 | 2018-06-01 15:00 | 7d | 2.16d | 0d |  | SC (Work) | 112h |  |  |
| 9 | 1.2.6 | Profile Insp | 4h | 2018-06-25 15:00 | 2018-06-25 19:00 | 8 |  |  | 2018-06-01 15:00 | 2018-06-01 19:00 | 4h | 4.34d | 0.34d | TEAM_2Shift_Calendar-1 | Helper; Fitter | 8h | 475 | 475 |
| 10 | 1.2.7 | Heat Treatment Preparation | 1d | 2018-06-26 08:30 | 2018-06-27 17:30 | 9 |  |  | 2018-06-02 08:30 | 2018-06-04 17:30 | 1d | 2d | 0d |  | SC (Work) | 16h |  |  |
| 11 | 1.2.8 | Stress Releiving- Sub Cont | 4d | 2018-06-28 08:30 | 2018-07-06 17:30 | 10 |  |  | 2018-06-05 08:30 | 2018-06-14 17:30 | 4d | 2d | 0d |  | SC (Work) | 64h |  |  |
| 12 | 1.2.9 | Removal Of Spiders | 3h | 2018-07-06 17:30 | 2018-07-06 20:30 | 11 |  |  | 2018-06-14 17:30 | 2018-06-14 20:30 | 3h | 4.33d | 0d | TEAM_2Shift_Calendar-1 | Helper; Fitter | 6h | 356.25 | 356.25 |
| 13 | 1.2.10 | Surface Preparation | 4h | 2018-07-06 20:30 | 2018-07-07 08:30 | 12 |  |  | 2018-06-14 20:30 | 2018-06-15 08:30 | 4h | 4.33d | 0d | TEAM_2Shift_Calendar-1 | Grinder | 4h | 225 | 225 |
| 14 | 1.2.11 | Inspection | 2h | 2018-07-07 08:30 | 2018-07-07 10:30 | 13 |  |  | 2018-06-15 08:30 | 2018-06-15 10:30 | 2h | 4.33d | 0d | TEAM_2Shift_Calendar-1 | Fitter | 2h | 137.5 | 137.5 |
| 15 | 1.2.12 | TPI Inspection | 4h | 2018-07-07 10:30 | 2018-07-07 14:30 | 14 |  |  | 2018-06-15 10:30 | 2018-06-15 14:30 | 4h | 4.33d | 0d | TEAM_2Shift_Calendar-1 | Fitter | 4h | 275 | 275 |
| 16 | 1.2.13 | Sf Marking | 2h | 2018-07-07 14:30 | 2018-07-07 16:30 | 15 |  |  | 2018-06-15 14:30 | 2018-06-15 16:30 | 2h | 4.33d | 0d | TEAM_2Shift_Calendar-1 | Helper; Fitter | 4h | 237.5 | 237.5 |
| 17 | 1.2.14 | Sf Cutting | 2h | 2018-07-07 16:30 | 2018-07-07 18:30 | 16 |  |  | 2018-06-15 16:30 | 2018-06-15 18:30 | 2h | 4.33d | 0d | TEAM_2Shift_Calendar-1 | Helper; Gas Cutter | 4h | 237.5 | 237.5 |
| 18 | 1.2.15 | Sf Gridning & EP | 2h | 2018-07-07 18:30 | 2018-07-07 20:30 | 17 |  |  | 2018-06-15 18:30 | 2018-06-15 20:30 | 2h | 4.33d |  | TEAM_2Shift_Calendar-1 | Grinder | 2h | 112.5 | 112.5 |
| 19 | 1.3 | **Dish Forming - Od** | 13d | 2018-06-05 17:30 | 2018-07-09 06:30 |  |  |  | 2018-05-14 17:30 | 2018-06-16 06:30 | 13d | 23.22d |  |  |  | 251h | 3,309.38 | 3,309.38 |
| 20 | 1.3.1 | Bar Dish Blank Issuence | 4h | 2018-06-05 17:30 | 2018-06-05 21:30 | 2FS+38d |  |  | 2018-05-14 17:30 | 2018-05-14 21:30 | 4h | 46.66d | 0d | TEAM_2Shift_Calendar-1 | Plate (Cost) [0.1%]; Store | 4h |  |  |
| 21 | 1.3.2 | Bar-Dish Blank Marking10TXOD 404 | 0.5h | 2018-06-05 21:30 | 2018-06-05 22:00 | 20 |  |  | 2018-05-14 21:30 | 2018-05-14 22:00 | 0.5h | 46.66d | 0d | TEAM_2Shift_Calendar-1 | Helper; Fitter | 1h | 59.38 | 59.38 |
| 22 | 1.3.3 | Bar-Dish Blank Marking Inspection | 4h | 2018-06-06 06:00 | 2018-06-06 10:00 | 21 |  |  | 2018-05-15 06:00 | 2018-05-15 10:00 | 4h | 46.66d | 0d | TEAM_2Shift_Calendar-1 | Helper; Fitter | 8h | 475 | 475 |
| 23 | 1.3.4 | Bar-Dish Blank Cutting | 5h | 2018-06-06 10:00 | 2018-06-06 15:00 | 22 |  |  | 2018-05-15 10:00 | 2018-05-15 15:00 | 5h | 46.66d | 0d | TEAM_2Shift_Calendar-1 | Helper; Gas Cutter | 10h | 593.75 | 593.75 |
| 24 | 1.3.5 | Bar-Dish Forming | 7d | 2018-06-06 15:00 | 2018-06-25 15:00 | 23 |  |  | 2018-05-15 15:00 | 2018-06-01 15:00 | 7d | 23.22d | 0d |  | SC (Work) | 112h |  |  |
| 25 | 1.3.6 | Profile Insp | 4h | 2018-06-25 15:00 | 2018-06-25 19:00 | 24 |  |  | 2018-06-01 15:00 | 2018-06-01 19:00 | 4h | 46.66d | 0.34d | TEAM_2Shift_Calendar-1 | Helper; Fitter | 8h | 475 | 475 |
| 26 | 1.3.7 | Heat Treatment Preparation | 1d | 2018-06-26 08:30 | 2018-06-27 17:30 | 25 |  |  | 2018-06-02 08:30 | 2018-06-04 17:30 | 1d | 23.25d | 0d |  | SC (Work) | 16h |  |  |
| 27 | 1.3.8 | Stress Releiving- Sub Cont | 4d | 2018-06-28 08:30 | 2018-07-06 17:30 | 26 |  |  | 2018-06-05 08:30 | 2018-06-14 17:30 | 4d | 23.25d | 0d |  | SC (Work) | 64h |  |  |
| 28 | 1.3.9 | Removal Of Spiders | 3h | 2018-07-06 17:30 | 2018-07-06 20:30 | 27 |  |  | 2018-06-14 17:30 | 2018-06-14 20:30 | 3h | 46.73d | 0d | TEAM_2Shift_Calendar-1 | Helper; Fitter | 6h | 356.25 | 356.25 |
| 29 | 1.3.10 | Surface Preparation | 4h | 2018-07-06 20:30 | 2018-07-07 08:30 | 28 |  |  | 2018-06-14 20:30 | 2018-06-15 08:30 | 4h | 46.73d | 0d | TEAM_2Shift_Calendar-1 | Grinder | 4h | 225 | 225 |
| 30 | 1.3.11 | Inspection | 3h | 2018-07-07 08:30 | 2018-07-07 11:30 | 29 |  |  | 2018-06-15 08:30 | 2018-06-15 11:30 | 3h | 46.73d | 0d | TEAM_2Shift_Calendar-1 | Fitter | 3h | 206.25 | 206.25 |
| 31 | 1.3.12 | TPI Inspection | 4h | 2018-07-07 11:30 | 2018-07-07 15:30 | 30 |  |  | 2018-06-15 11:30 | 2018-06-15 15:30 | 4h | 46.73d | 0d | TEAM_2Shift_Calendar-1 | Fitter | 4h | 275 | 275 |
| 32 | 1.3.13 | Sf Marking | 2h | 2018-07-07 15:30 | 2018-07-07 17:30 | 31 |  |  | 2018-06-15 15:30 | 2018-06-15 17:30 | 2h | 46.73d | 0d | TEAM_2Shift_Calendar-1 | Helper; Fitter | 4h | 237.5 | 237.5 |
| 33 | 1.3.14 | Sf Cutting | 2h | 2018-07-07 17:30 | 2018-07-07 19:30 | 32 |  |  | 2018-06-15 17:30 | 2018-06-15 19:30 | 2h | 46.73d | 0d | TEAM_2Shift_Calendar-1 | Helper; Gas Cutter | 4h | 237.5 | 237.5 |
| 34 | 1.3.15 | Sf Gridning & EP | 3h | 2018-07-07 19:30 | 2018-07-09 06:30 | 33 |  |  | 2018-06-15 19:30 | 2018-06-16 06:30 | 3h | 46.73d |  | TEAM_2Shift_Calendar-1 | Grinder | 3h | 168.75 | 168.75 |

| ID | WBS | Task | Type | Duration | Start | Finish | Predecessors | Baseline start | Baseline finish | Baseline duration | Total slack | Free slack | Calendar | Resources | Work | Cost | Baseline cost |
| --- | --- | --- | --- | --- | --- | --- | --- | --- | --- | --- | --- | --- | --- | --- | --- | --- | --- |
| 35 | 1.4 | **Tube Sheet** |  | 9.81d | 2018-06-22 17:30 | 2018-07-18 14:30 |  | 2018-07-03 17:30 | 2018-07-18 14:30 | 5.81d | 0d |  |  |  | 105h | 1,500 | 1,500 |
| 36 | 1.4.1 | **Tube Sheet Machining1 off 2** |  | 0.66d | 2018-06-22 17:30 | 2018-06-26 11:00 |  | 2018-07-03 17:30 | 2018-07-05 11:00 | 0.66d | 7.09d | 0d |  |  | 17h |  |  |
| 37 | 1.4.1.1 | Inward Inspection |  | 14.5h | 2018-06-22 17:30 | 2018-06-25 16:00 | 2FS+52d | 2018-07-03 17:30 | 2018-07-04 16:00 | 14.5h | 14.53d | 0d | TEAM_2Shift_Calendar-1 | Store; Tube Sheet (Cost) [0.1%]; QC Engineer | 13h |  |  |
| 38 | 1.4.1.2 | Tube Sheet M/C1/2 |  | 4h | 2018-06-25 16:00 | 2018-06-26 11:00 | 37 | 2018-07-04 16:00 | 2018-07-05 11:00 | 4h | 7.09d |  |  | SC (Work) | 4h |  |  |
| 39 | 1.4.2 | **Tube Sheet Drilling1 off 2** |  | 2.09d | 2018-06-26 11:00 | 2018-06-30 13:00 |  | 2018-07-05 11:00 | 2018-07-10 13:00 | 2.09d | 7.06d |  |  |  | 38h | 475 | 475 |
| 40 | 1.4.2.1 | Tube Sheet Drilling1/2 |  | 20h | 2018-06-26 11:00 | 2018-06-28 16:00 | 36 | 2018-07-05 11:00 | 2018-07-07 16:00 | 20h | 7.09d | 0d |  | SC (Work) | 20h |  |  |
| 41 | 1.4.2.2 | Tie Rod, Pulling, Lifting Hole1/2 |  | 4h | 2018-06-28 16:00 | 2018-06-29 11:00 | 40 | 2018-07-07 16:00 | 2018-07-09 11:00 | 4h | 7.09d | 0d |  | SC (Work) | 4h |  |  |
| 42 | 1.4.2.3 | Pass Partition Groove M/C1/2 |  | 6h | 2018-06-29 11:00 | 2018-06-30 09:00 | 41 | 2018-07-09 11:00 | 2018-07-10 09:00 | 6h | 7.09d | 0d |  | SC (Work) | 6h |  |  |
| 43 | 1.4.2.4 | Cleaning ,Go/No Go Check1/2 |  | 2h | 2018-06-30 09:00 | 2018-06-30 11:00 | 42 | 2018-07-10 09:00 | 2018-07-10 11:00 | 2h | 14.09d | 0d | TEAM_2Shift_Calendar-1 | Helper; Fitter | 4h | 237.5 | 237.5 |
| 44 | 1.4.2.5 | Final Inspection1/2 |  | 2h | 2018-06-30 11:00 | 2018-06-30 13:00 | 43 | 2018-07-10 11:00 | 2018-07-10 13:00 | 2h | 14.09d |  | TEAM_2Shift_Calendar-1 | Helper; Fitter | 4h | 237.5 | 237.5 |
| 45 | 1.4.3 | **Tube Sheet Machining2 off 2** |  | 0.25d | 2018-07-03 17:30 | 2018-07-04 12:30 |  | 2018-07-03 17:30 | 2018-07-04 12:30 | 0.25d | 0d |  |  |  | 12h | 550 | 550 |
| 46 | 1.4.3.1 | Inward Inspection |  | 4h | 2018-07-03 17:30 | 2018-07-03 21:30 | 2FS+60d | 2018-07-03 17:30 | 2018-07-03 21:30 | 4h | 0.19d |  | TEAM_2Shift_Calendar-1 | Tube Sheet (Cost) [0.1%]; Fitter [200%] | 8h | 550 | 550 |
| 47 | 1.4.3.2 | Tube Sheet M/C2/2 |  | 4h | 2018-07-04 08:30 | 2018-07-04 12:30 | 46 | 2018-07-04 08:30 | 2018-07-04 12:30 | 4h | 0d |  |  | SC (Work) | 4h |  |  |
| 48 | 1.4.4 | **Tube Sheet Drilling2 off 2** |  | 5.56d | 2018-07-04 13:30 | 2018-07-18 14:30 |  | 2018-07-04 13:30 | 2018-07-18 14:30 | 5.56d | 0d |  |  |  | 38h | 475 | 475 |
| 49 | 1.4.4.1 | Tube Sheet Drilling2/2 |  | 20h | 2018-07-04 13:30 | 2018-07-06 17:30 | 45 | 2018-07-04 13:30 | 2018-07-06 17:30 | 20h | 0d |  |  | SC (Work) | 20h |  |  |
| 50 | 1.4.4.2 | Exp Groove+Welding Groove2/2 | milestone | 0h | 2018-07-06 17:30 | 2018-07-06 17:30 | 49 | 2018-07-06 17:30 | 2018-07-06 17:30 | 0h | 0d |  |  | SC (Work) |  |  |  |
| 51 | 1.4.4.3 | Tie Rod, Pulling, Lifting Hole2/2 |  | 4h | 2018-07-07 08:30 | 2018-07-07 12:30 | 50 | 2018-07-07 08:30 | 2018-07-07 12:30 | 4h | 0d |  |  | SC (Work) | 4h |  |  |
| 52 | 1.4.4.4 | Pass Partition Groove M/C2/2 |  | 6h | 2018-07-07 13:30 | 2018-07-09 10:30 | 51 | 2018-07-07 13:30 | 2018-07-09 10:30 | 6h | 0d |  |  | SC (Work) | 6h |  |  |
| 53 | 1.4.4.5 | Cleaning ,Go/No Go Check2/2 |  | 2h | 2018-07-09 10:30 | 2018-07-09 12:30 | 52 | 2018-07-09 10:30 | 2018-07-09 12:30 | 2h | 0d |  | TEAM_2Shift_Calendar-1 | Helper; Fitter | 4h | 237.5 | 237.5 |
| 54 | 1.4.4.6 | Final Inspection2/2 |  | 2h | 2018-07-09 12:30 | 2018-07-09 14:30 | 53 | 2018-07-09 12:30 | 2018-07-09 14:30 | 2h | 0d |  | TEAM_2Shift_Calendar-1 | Helper; Fitter | 4h | 237.5 | 237.5 |
| 55 | 1.4.4.7 | Dummy Activity |  | 7d | 2018-07-09 14:30 | 2018-07-18 14:30 | 54 | 2018-07-09 14:30 | 2018-07-18 14:30 | 7d | 0d |  | TEAM_2Shift_Calendar-1 |  |  |  |  |
| 56 | 1.5 | **Nozzle Fab** |  | 5.67d | 2018-06-28 17:30 | 2018-07-05 12:15 |  | 2018-06-28 17:30 | 2018-07-05 12:15 | 5.67d | 49.37d |  | TEAM_2Shift_Calendar-1 |  | 202.5h | 12,007.82 | 12,007.82 |
| 57 | 1.5.1 | **Sh Nozzel Pipe Marking** |  | 0.41d | 2018-06-28 17:30 | 2018-06-29 08:00 |  | 2018-06-28 17:30 | 2018-06-29 08:00 | 0.41d | 49.37d | 0d | TEAM_2Shift_Calendar-1 |  | 13h | 771.88 | 771.88 |
| 58 | 1.5.1.1 | 16"NB- 2 Nos |  | 4h | 2018-06-28 17:30 | 2018-06-28 21:30 | 2FS+56d | 2018-06-28 17:30 | 2018-06-28 21:30 | 4h | 49.37d | 0d | TEAM_2Shift_Calendar-1 | Helper; Forging Std (Cost) [0.1%]; Pipe (Cost) [0.1%]; Fitter | 8h | 475 | 475 |
| 59 | 1.5.1.2 | 2" NB Mp Con - 2 Nos |  | 1h | 2018-06-28 21:30 | 2018-06-29 06:30 | 58 | 2018-06-28 21:30 | 2018-06-29 06:30 | 1h | 49.37d | 0d | TEAM_2Shift_Calendar-1 | Helper; Forging Std (Cost) [0.1%]; Pipe (Cost) [0.1%]; Fitter | 2h | 118.75 | 118.75 |
| 60 | 1.5.1.3 | 1.5" NB Mp Con - 2 Nos |  | 1h | 2018-06-29 06:30 | 2018-06-29 07:30 | 59 | 2018-06-29 06:30 | 2018-06-29 07:30 | 1h | 49.37d | 0d | TEAM_2Shift_Calendar-1 | Helper; Fitter | 2h | 118.75 | 118.75 |
| 61 | 1.5.1.4 | Inspection |  | 0.5h | 2018-06-29 07:30 | 2018-06-29 08:00 | 60 | 2018-06-29 07:30 | 2018-06-29 08:00 | 0.5h | 49.37d |  | TEAM_2Shift_Calendar-1 | Helper; Fitter | 1h | 59.38 | 59.38 |

| ID | WBS | Task | Duration | Start | Finish | Predecessors | Baseline start | Baseline finish | Baseline duration | Total slack | Free slack | Calendar | Resources | Work | Cost | Baseline cost |
| --- | --- | --- | --- | --- | --- | --- | --- | --- | --- | --- | --- | --- | --- | --- | --- | --- |
| 62 | 1.5.2 | **Sh Nozzel Pipe Cutting** | 0.28d | 2018-06-29 08:00 | 2018-06-29 12:30 |  | 2018-06-29 08:00 | 2018-06-29 12:30 | 0.28d | 49.37d | 0d | TEAM_2Shift_Calendar-1 |  | 9h | 534.38 | 534.38 |
| 63 | 1.5.2.1 | 16"NB- 2 Nos | 2h | 2018-06-29 08:00 | 2018-06-29 10:00 | 57 | 2018-06-29 08:00 | 2018-06-29 10:00 | 2h | 49.37d | 0d | TEAM_2Shift_Calendar-1 | Helper; Gas Cutter | 4h | 237.5 | 237.5 |
| 64 | 1.5.2.2 | 2" NB Mp Con - 2 Nos | 1h | 2018-06-29 10:00 | 2018-06-29 11:00 | 63 | 2018-06-29 10:00 | 2018-06-29 11:00 | 1h | 49.37d | 0d | TEAM_2Shift_Calendar-1 | Helper; Gas Cutter | 2h | 118.75 | 118.75 |
| 65 | 1.5.2.3 | 1.5" NB Mp Con - 2 Nos | 1h | 2018-06-29 11:00 | 2018-06-29 12:00 | 64 | 2018-06-29 11:00 | 2018-06-29 12:00 | 1h | 49.37d | 0d | TEAM_2Shift_Calendar-1 | Helper; Gas Cutter | 2h | 118.75 | 118.75 |
| 66 | 1.5.2.4 | Inspection | 0.5h | 2018-06-29 12:00 | 2018-06-29 12:30 | 65 | 2018-06-29 12:00 | 2018-06-29 12:30 | 0.5h | 49.37d |  | TEAM_2Shift_Calendar-1 | Helper; Gas Cutter | 1h | 59.38 | 59.38 |
| 67 | 1.5.3 | **Sh Nozzel Pipe EP** | 0.47d | 2018-06-29 12:30 | 2018-06-29 20:00 |  | 2018-06-29 12:30 | 2018-06-29 20:00 | 0.47d | 49.37d | 0d | TEAM_2Shift_Calendar-1 |  | 15h | 890.62 | 890.62 |
| 68 | 1.5.3.1 | 16"NB- 2 Nos | 5h | 2018-06-29 12:30 | 2018-06-29 17:30 | 62 | 2018-06-29 12:30 | 2018-06-29 17:30 | 5h | 49.37d | 0d | TEAM_2Shift_Calendar-1 | Helper; Gas Cutter | 10h | 593.75 | 593.75 |
| 69 | 1.5.3.2 | 2" NB Mp Con - 2 Nos | 1h | 2018-06-29 17:30 | 2018-06-29 18:30 | 68 | 2018-06-29 17:30 | 2018-06-29 18:30 | 1h | 49.37d | 0d | TEAM_2Shift_Calendar-1 | Helper; Gas Cutter | 2h | 118.75 | 118.75 |
| 70 | 1.5.3.3 | 1.5" NB Mp Con - 2 Nos | 1h | 2018-06-29 18:30 | 2018-06-29 19:30 | 69 | 2018-06-29 18:30 | 2018-06-29 19:30 | 1h | 49.37d | 0d | TEAM_2Shift_Calendar-1 | Helper; Gas Cutter | 2h | 118.75 | 118.75 |
| 71 | 1.5.3.4 | Inspection | 0.5h | 2018-06-29 19:30 | 2018-06-29 20:00 | 70 | 2018-06-29 19:30 | 2018-06-29 20:00 | 0.5h | 49.37d |  | TEAM_2Shift_Calendar-1 | Helper; Gas Cutter | 1h | 59.38 | 59.38 |
| 72 | 1.5.4 | **Sh Noz+Flg Fiitup** | 0.41d | 2018-06-29 20:00 | 2018-06-30 10:30 |  | 2018-06-29 20:00 | 2018-06-30 10:30 | 0.41d | 49.37d | 0d | TEAM_2Shift_Calendar-1 |  | 26h | 1,665.63 | 1,665.63 |
| 73 | 1.5.4.1 | 16"NB- 2 Nos | 4h | 2018-06-29 20:00 | 2018-06-30 08:00 | 67 | 2018-06-29 20:00 | 2018-06-30 08:00 | 4h | 49.37d | 0d | TEAM_2Shift_Calendar-1 | SMAW Welder; Helper; Fitter [200%] | 16h | 1,025 | 1,025 |
| 74 | 1.5.4.2 | 2" NB Mp Con - 2 Nos | 1h | 2018-06-30 08:00 | 2018-06-30 09:00 | 73 | 2018-06-30 08:00 | 2018-06-30 09:00 | 1h | 49.37d | 0d | TEAM_2Shift_Calendar-1 | SMAW Welder; Helper; Fitter [200%] | 4h | 256.25 | 256.25 |
| 75 | 1.5.4.3 | 1.5" NB Mp Con - 2 Nos | 1h | 2018-06-30 09:00 | 2018-06-30 10:00 | 74 | 2018-06-30 09:00 | 2018-06-30 10:00 | 1h | 49.37d | 0d | TEAM_2Shift_Calendar-1 | SMAW Welder; Helper; Fitter [200%] | 4h | 256.25 | 256.25 |
| 76 | 1.5.4.4 | Inspection | 0.5h | 2018-06-30 10:00 | 2018-06-30 10:30 | 75 | 2018-06-30 10:00 | 2018-06-30 10:30 | 0.5h | 49.37d |  | TEAM_2Shift_Calendar-1 | SMAW Welder; Helper; Fitter [200%] | 2h | 128.13 | 128.13 |
| 77 | 1.5.5 | **Sh Nozzel Pipe+Flg Welding** | 0.41d | 2018-06-30 10:30 | 2018-06-30 17:00 |  | 2018-06-30 10:30 | 2018-06-30 17:00 | 0.41d | 49.37d | 0d | TEAM_2Shift_Calendar-1 |  | 13h | 771.88 | 771.88 |
| 78 | 1.5.5.1 | 16"NB- 2 Nos | 4h | 2018-06-30 10:30 | 2018-06-30 14:30 | 72 | 2018-06-30 10:30 | 2018-06-30 14:30 | 4h | 49.37d | 0d | TEAM_2Shift_Calendar-1 | Helper; SMAW Welder | 8h | 475 | 475 |
| 79 | 1.5.5.2 | 2" NB Mp Con - 2 Nos | 1h | 2018-06-30 14:30 | 2018-06-30 15:30 | 78 | 2018-06-30 14:30 | 2018-06-30 15:30 | 1h | 49.37d | 0d | TEAM_2Shift_Calendar-1 | Helper; SMAW Welder | 2h | 118.75 | 118.75 |
| 80 | 1.5.5.3 | 1.5" NB Mp Con - 2 Nos | 1h | 2018-06-30 15:30 | 2018-06-30 16:30 | 79 | 2018-06-30 15:30 | 2018-06-30 16:30 | 1h | 49.37d | 0d | TEAM_2Shift_Calendar-1 | Helper; SMAW Welder | 2h | 118.75 | 118.75 |
| 81 | 1.5.5.4 | Inspection | 0.5h | 2018-06-30 16:30 | 2018-06-30 17:00 | 80 | 2018-06-30 16:30 | 2018-06-30 17:00 | 0.5h | 49.37d |  | TEAM_2Shift_Calendar-1 | Helper; SMAW Welder | 1h | 59.38 | 59.38 |
| 82 | 1.5.6 | **Sh Nozzel Pipe Profile Marking** | 0.28d | 2018-06-30 17:00 | 2018-06-30 21:30 |  | 2018-06-30 17:00 | 2018-06-30 21:30 | 0.28d | 49.37d | 0d | TEAM_2Shift_Calendar-1 |  | 9h | 534.38 | 534.38 |
| 83 | 1.5.6.1 | 16"NB- 2 Nos | 2h | 2018-06-30 17:00 | 2018-06-30 19:00 | 77 | 2018-06-30 17:00 | 2018-06-30 19:00 | 2h | 49.37d | 0d | TEAM_2Shift_Calendar-1 | Helper; Fitter | 4h | 237.5 | 237.5 |
| 84 | 1.5.6.2 | 2" NB Mp Con - 2 Nos | 1h | 2018-06-30 19:00 | 2018-06-30 20:00 | 83 | 2018-06-30 19:00 | 2018-06-30 20:00 | 1h | 49.37d | 0d | TEAM_2Shift_Calendar-1 | Helper; Fitter | 2h | 118.75 | 118.75 |
| 85 | 1.5.6.3 | 1.5" NB Mp Con - 2 Nos | 1h | 2018-06-30 20:00 | 2018-06-30 21:00 | 84 | 2018-06-30 20:00 | 2018-06-30 21:00 | 1h | 49.37d | 0d | TEAM_2Shift_Calendar-1 | Helper; Fitter | 2h | 118.75 | 118.75 |
| 86 | 1.5.6.4 | Inspection | 0.5h | 2018-06-30 21:00 | 2018-06-30 21:30 | 85 | 2018-06-30 21:00 | 2018-06-30 21:30 | 0.5h | 49.37d |  | TEAM_2Shift_Calendar-1 | Helper; Fitter | 1h | 59.38 | 59.38 |

| ID | WBS | Task | Duration | Start | Finish | Predecessors | Baseline start | Baseline finish | Baseline duration | Total slack | Free slack | Calendar | Resources | Work | Cost | Baseline cost |
| --- | --- | --- | --- | --- | --- | --- | --- | --- | --- | --- | --- | --- | --- | --- | --- | --- |
| 87 | 1.5.7 | **Sh Nozzle Pipe Profile Cutting** | 0.28d | 2018-06-30 21:30 | 2018-07-02 10:00 |  | 2018-06-30 21:30 | 2018-07-02 10:00 | 0.28d | 49.37d | 0d | TEAM_2Shift_Calendar-1 |  | 9h | 478.12 | 478.12 |
| 88 | 1.5.7.1 | 16"NB- 2 Nos | 2h | 2018-06-30 21:30 | 2018-07-02 07:30 | 82 | 2018-06-30 21:30 | 2018-07-02 07:30 | 2h | 49.37d | 0d | TEAM_2Shift_Calendar-1 | Helper; Grinder | 4h | 212.5 | 212.5 |
| 89 | 1.5.7.2 | 2" NB Mp Con - 2 Nos | 1h | 2018-07-02 07:30 | 2018-07-02 08:30 | 88 | 2018-07-02 07:30 | 2018-07-02 08:30 | 1h | 49.37d | 0d | TEAM_2Shift_Calendar-1 | Helper; Grinder | 2h | 106.25 | 106.25 |
| 90 | 1.5.7.3 | 1.5" NB Mp Con - 2 Nos | 1h | 2018-07-02 08:30 | 2018-07-02 09:30 | 89 | 2018-07-02 08:30 | 2018-07-02 09:30 | 1h | 49.37d | 0d | TEAM_2Shift_Calendar-1 | Helper; Grinder | 2h | 106.25 | 106.25 |
| 91 | 1.5.7.4 | Inspection | 0.5h | 2018-07-02 09:30 | 2018-07-02 10:00 | 90 | 2018-07-02 09:30 | 2018-07-02 10:00 | 0.5h | 49.37d |  | TEAM_2Shift_Calendar-1 | Helper; Grinder | 1h | 53.12 | 53.12 |
| 92 | 1.5.8 | **Sh Nozzle Pipe Profile EP** | 0.28d | 2018-07-02 10:00 | 2018-07-02 14:30 |  | 2018-07-02 10:00 | 2018-07-02 14:30 | 0.28d | 49.37d | 0d | TEAM_2Shift_Calendar-1 |  | 9h | 478.12 | 478.12 |
| 93 | 1.5.8.1 | 16"NB- 2 Nos | 2h | 2018-07-02 10:00 | 2018-07-02 12:00 | 87 | 2018-07-02 10:00 | 2018-07-02 12:00 | 2h | 49.37d | 0d | TEAM_2Shift_Calendar-1 | Helper; Grinder | 4h | 212.5 | 212.5 |
| 94 | 1.5.8.2 | 2" NB Mp Con - 2 Nos | 1h | 2018-07-02 12:00 | 2018-07-02 13:00 | 93 | 2018-07-02 12:00 | 2018-07-02 13:00 | 1h | 49.37d | 0d | TEAM_2Shift_Calendar-1 | Helper; Grinder | 2h | 106.25 | 106.25 |
| 95 | 1.5.8.3 | 1.5" NB Mp Con - 2 Nos | 1h | 2018-07-02 13:00 | 2018-07-02 14:00 | 94 | 2018-07-02 13:00 | 2018-07-02 14:00 | 1h | 49.37d | 0d | TEAM_2Shift_Calendar-1 | Helper; Grinder | 2h | 106.25 | 106.25 |
| 96 | 1.5.8.4 | Inspection | 0.5h | 2018-07-02 14:00 | 2018-07-02 14:30 | 95 | 2018-07-02 14:00 | 2018-07-02 14:30 | 0.5h | 49.37d |  | TEAM_2Shift_Calendar-1 | Helper; Grinder | 1h | 53.12 | 53.12 |
| 97 | 1.5.9 | **Ch Nozzel Pipe Marking** | 0.19d | 2018-07-02 14:30 | 2018-07-02 17:30 |  | 2018-07-02 14:30 | 2018-07-02 17:30 | 0.19d | 49.37d | 0d | TEAM_2Shift_Calendar-1 |  | 6h | 356.25 | 356.25 |
| 98 | 1.5.9.1 | 6"Nb- 2 Nos | 1h | 2018-07-02 14:30 | 2018-07-02 15:30 | 92 | 2018-07-02 14:30 | 2018-07-02 15:30 | 1h | 49.37d | 0d | TEAM_2Shift_Calendar-1 | Helper; Forging Std (Cost) [0.1%]; Pipe (Cost) [0.1%]; Fitter | 2h | 118.75 | 118.75 |
| 99 | 1.5.9.2 | 1.5" Mp Con - 2 Nos | 0.5h | 2018-07-02 15:30 | 2018-07-02 16:00 | 98 | 2018-07-02 15:30 | 2018-07-02 16:00 | 0.5h | 49.37d | 0d | TEAM_2Shift_Calendar-1 | Helper; Forging Std (Cost) [0.1%]; Pipe (Cost) [0.1%]; Fitter | 1h | 59.38 | 59.38 |
| 100 | 1.5.9.3 | 2" Mp Con - 4 Nos | 0.5h | 2018-07-02 16:00 | 2018-07-02 16:30 | 99 | 2018-07-02 16:00 | 2018-07-02 16:30 | 0.5h | 49.37d | 0d | TEAM_2Shift_Calendar-1 | Helper; Fitter | 1h | 59.38 | 59.38 |
| 101 | 1.5.9.4 | Inspection | 1h | 2018-07-02 16:30 | 2018-07-02 17:30 | 100 | 2018-07-02 16:30 | 2018-07-02 17:30 | 1h | 49.37d |  | TEAM_2Shift_Calendar-1 | Helper; Fitter | 2h | 118.75 | 118.75 |
| 102 | 1.5.10 | **Ch Nozzel Pipe Cutting** | 0.75d | 2018-07-02 17:30 | 2018-07-03 13:30 |  | 2018-07-02 17:30 | 2018-07-03 13:30 | 0.75d | 49.37d | 0d | TEAM_2Shift_Calendar-1 |  | 24h | 1,425 | 1,425 |
| 103 | 1.5.10.1 | 6"Nb- 2 Nos | 10h | 2018-07-02 17:30 | 2018-07-03 11:30 | 97 | 2018-07-02 17:30 | 2018-07-03 11:30 | 10h | 49.37d | 0d | TEAM_2Shift_Calendar-1 | Helper; Gas Cutter | 20h | 1,187.5 | 1,187.5 |
| 104 | 1.5.10.2 | 1.5" Mp Con - 2 Nos | 0.5h | 2018-07-03 11:30 | 2018-07-03 12:00 | 103 | 2018-07-03 11:30 | 2018-07-03 12:00 | 0.5h | 49.37d | 0d | TEAM_2Shift_Calendar-1 | Helper; Gas Cutter | 1h | 59.38 | 59.38 |
| 105 | 1.5.10.3 | 2" Mp Con - 4 Nos | 0.5h | 2018-07-03 12:00 | 2018-07-03 12:30 | 104 | 2018-07-03 12:00 | 2018-07-03 12:30 | 0.5h | 49.37d | 0d | TEAM_2Shift_Calendar-1 | Helper; Fitter | 1h | 59.38 | 59.38 |
| 106 | 1.5.10.4 | Inspection | 1h | 2018-07-03 12:30 | 2018-07-03 13:30 | 105 | 2018-07-03 12:30 | 2018-07-03 13:30 | 1h | 49.37d |  | TEAM_2Shift_Calendar-1 | Helper; Gas Cutter | 2h | 118.75 | 118.75 |
| 107 | 1.5.11 | **Ch Nozzel Pipe EP** | 0.28d | 2018-07-03 13:30 | 2018-07-03 18:00 |  | 2018-07-03 13:30 | 2018-07-03 18:00 | 0.28d | 49.37d | 0d | TEAM_2Shift_Calendar-1 |  | 9h | 484.38 | 484.38 |
| 108 | 1.5.11.1 | 6"Nb- 2 Nos | 2h | 2018-07-03 13:30 | 2018-07-03 15:30 | 102 | 2018-07-03 13:30 | 2018-07-03 15:30 | 2h | 49.37d | 0d | TEAM_2Shift_Calendar-1 | Helper; Grinder | 4h | 212.5 | 212.5 |
| 109 | 1.5.11.2 | 1.5" Mp Con - 2 Nos | 1h | 2018-07-03 15:30 | 2018-07-03 16:30 | 108 | 2018-07-03 15:30 | 2018-07-03 16:30 | 1h | 49.37d | 0d | TEAM_2Shift_Calendar-1 | Helper; Grinder | 2h | 106.25 | 106.25 |
| 110 | 1.5.11.3 | 2" Mp Con - 4 Nos | 0.5h | 2018-07-03 16:30 | 2018-07-03 17:00 | 109 | 2018-07-03 16:30 | 2018-07-03 17:00 | 0.5h | 49.37d | 0d | TEAM_2Shift_Calendar-1 | Helper; Fitter | 1h | 59.38 | 59.38 |
| 111 | 1.5.11.4 | Inspection | 1h | 2018-07-03 17:00 | 2018-07-03 18:00 | 110 | 2018-07-03 17:00 | 2018-07-03 18:00 | 1h | 49.37d |  | TEAM_2Shift_Calendar-1 | Helper; Grinder | 2h | 106.25 | 106.25 |

| ID | WBS | Task | Duration | Start | Finish | Predecessors | Baseline start | Baseline finish | Baseline duration | Total slack | Free slack | Calendar | Resources | Work | Cost | Baseline cost |
| --- | --- | --- | --- | --- | --- | --- | --- | --- | --- | --- | --- | --- | --- | --- | --- | --- |
| 112 | 1.5.12 | **Ch Noz+Flg Fit Up** | 0.28d | 2018-07-03 18:00 | 2018-07-04 06:30 |  | 2018-07-03 18:00 | 2018-07-04 06:30 | 0.28d | 49.37d | 0d | TEAM_2Shift_Calendar-1 |  | 17h | 1,084.38 | 1,084.38 |
| 113 | 1.5.12.1 | 6"Nb- 2 Nos | 2h | 2018-07-03 18:00 | 2018-07-03 20:00 | 107 | 2018-07-03 18:00 | 2018-07-03 20:00 | 2h | 49.37d | 0d | TEAM_2Shift_Calendar-1 | SMAW Welder; Helper; Fitter [200%] | 8h | 512.5 | 512.5 |
| 114 | 1.5.12.2 | 1.5" Mp Con - 2 Nos | 1h | 2018-07-03 20:00 | 2018-07-03 21:00 | 113 | 2018-07-03 20:00 | 2018-07-03 21:00 | 1h | 49.37d | 0d | TEAM_2Shift_Calendar-1 | SMAW Welder; Helper; Fitter [200%] | 4h | 256.25 | 256.25 |
| 115 | 1.5.12.3 | 2" Mp Con - 4 Nos | 0.5h | 2018-07-03 21:00 | 2018-07-03 21:30 | 114 | 2018-07-03 21:00 | 2018-07-03 21:30 | 0.5h | 49.37d | 0d | TEAM_2Shift_Calendar-1 | Helper; Fitter | 1h | 59.38 | 59.38 |
| 116 | 1.5.12.4 | Inspection | 1h | 2018-07-03 21:30 | 2018-07-04 06:30 | 115 | 2018-07-03 21:30 | 2018-07-04 06:30 | 1h | 49.37d |  | TEAM_2Shift_Calendar-1 | SMAW Welder; Helper; Fitter [200%] | 4h | 256.25 | 256.25 |
| 117 | 1.5.13 | **Ch Nozzel Pipe+Flg Welding** | 0.52d | 2018-07-04 06:30 | 2018-07-04 14:45 |  | 2018-07-04 06:30 | 2018-07-04 14:45 | 0.52d | 49.37d | 0d | TEAM_2Shift_Calendar-1 |  | 16.5h | 979.69 | 979.69 |
| 118 | 1.5.13.1 | 6"Nb- 2 Nos | 6h | 2018-07-04 06:30 | 2018-07-04 12:30 | 112 | 2018-07-04 06:30 | 2018-07-04 12:30 | 6h | 49.37d | 0d | TEAM_2Shift_Calendar-1 | Helper; SMAW Welder | 12h | 712.5 | 712.5 |
| 119 | 1.5.13.2 | 1.5" Mp Con - 2 Nos | 0.75h | 2018-07-04 12:30 | 2018-07-04 13:15 | 118 | 2018-07-04 12:30 | 2018-07-04 13:15 | 0.75h | 49.37d | 0d | TEAM_2Shift_Calendar-1 | Helper; SMAW Welder | 1.5h | 89.06 | 89.06 |
| 120 | 1.5.13.3 | 2" Mp Con - 4 Nos | 0.5h | 2018-07-04 13:15 | 2018-07-04 13:45 | 119 | 2018-07-04 13:15 | 2018-07-04 13:45 | 0.5h | 49.37d | 0d | TEAM_2Shift_Calendar-1 | Helper; Fitter | 1h | 59.38 | 59.38 |
| 121 | 1.5.13.4 | Inspection | 1h | 2018-07-04 13:45 | 2018-07-04 14:45 | 120 | 2018-07-04 13:45 | 2018-07-04 14:45 | 1h | 49.37d |  | TEAM_2Shift_Calendar-1 | Helper; SMAW Welder | 2h | 118.75 | 118.75 |
| 122 | 1.5.14 | **Ch Nozzel Pipe Profile Marking** | 0.28d | 2018-07-04 14:45 | 2018-07-04 19:15 |  | 2018-07-04 14:45 | 2018-07-04 19:15 | 0.28d | 49.37d | 0d | TEAM_2Shift_Calendar-1 |  | 9h | 534.38 | 534.38 |
| 123 | 1.5.14.1 | 6"Nb- 2 Nos | 2h | 2018-07-04 14:45 | 2018-07-04 16:45 | 117 | 2018-07-04 14:45 | 2018-07-04 16:45 | 2h | 49.37d | 0d | TEAM_2Shift_Calendar-1 | Helper; Fitter | 4h | 237.5 | 237.5 |
| 124 | 1.5.14.2 | 1.5" Mp Con - 2 Nos | 1h | 2018-07-04 16:45 | 2018-07-04 17:45 | 123 | 2018-07-04 16:45 | 2018-07-04 17:45 | 1h | 49.37d | 0d | TEAM_2Shift_Calendar-1 | Helper; Fitter | 2h | 118.75 | 118.75 |
| 125 | 1.5.14.3 | 2" Mp Con - 4 Nos | 0.5h | 2018-07-04 17:45 | 2018-07-04 18:15 | 124 | 2018-07-04 17:45 | 2018-07-04 18:15 | 0.5h | 49.37d | 0d | TEAM_2Shift_Calendar-1 | Helper; Fitter | 1h | 59.38 | 59.38 |
| 126 | 1.5.14.4 | Inspection | 1h | 2018-07-04 18:15 | 2018-07-04 19:15 | 125 | 2018-07-04 18:15 | 2018-07-04 19:15 | 1h | 49.37d |  | TEAM_2Shift_Calendar-1 | Helper; Fitter | 2h | 118.75 | 118.75 |
| 127 | 1.5.15 | **Ch Nozzle Pipe Profile Cutting** | 0.28d | 2018-07-04 19:15 | 2018-07-05 07:45 |  | 2018-07-04 19:15 | 2018-07-05 07:45 | 0.28d | 49.37d | 0d | TEAM_2Shift_Calendar-1 |  | 9h | 534.38 | 534.38 |
| 128 | 1.5.15.1 | 6"Nb- 2 Nos | 2h | 2018-07-04 19:15 | 2018-07-04 21:15 | 122 | 2018-07-04 19:15 | 2018-07-04 21:15 | 2h | 49.37d | 0d | TEAM_2Shift_Calendar-1 | Helper; Fitter | 4h | 237.5 | 237.5 |
| 129 | 1.5.15.2 | 1.5" Mp Con - 2 Nos | 1h | 2018-07-04 21:15 | 2018-07-05 06:15 | 128 | 2018-07-04 21:15 | 2018-07-05 06:15 | 1h | 49.37d | 0d | TEAM_2Shift_Calendar-1 | Helper; Fitter | 2h | 118.75 | 118.75 |
| 130 | 1.5.15.3 | 2" Mp Con - 4 Nos | 0.5h | 2018-07-05 06:15 | 2018-07-05 06:45 | 129 | 2018-07-05 06:15 | 2018-07-05 06:45 | 0.5h | 49.37d | 0d | TEAM_2Shift_Calendar-1 | Helper; Fitter | 1h | 59.38 | 59.38 |
| 131 | 1.5.15.4 | Inspection | 1h | 2018-07-05 06:45 | 2018-07-05 07:45 | 130 | 2018-07-05 06:45 | 2018-07-05 07:45 | 1h | 49.37d |  | TEAM_2Shift_Calendar-1 | Helper; Fitter | 2h | 118.75 | 118.75 |
| 132 | 1.5.16 | **Ch Nozzle Pipe Profile EP** | 0.28d | 2018-07-05 07:45 | 2018-07-05 12:15 |  | 2018-07-05 07:45 | 2018-07-05 12:15 | 0.28d | 49.37d |  | TEAM_2Shift_Calendar-1 |  | 9h | 484.38 | 484.38 |
| 133 | 1.5.16.1 | 6"Nb- 2 Nos | 2h | 2018-07-05 07:45 | 2018-07-05 09:45 | 127 | 2018-07-05 07:45 | 2018-07-05 09:45 | 2h | 49.37d | 0d | TEAM_2Shift_Calendar-1 | Helper; Grinder | 4h | 212.5 | 212.5 |
| 134 | 1.5.16.2 | 1.5" Mp Con - 2 Nos | 1h | 2018-07-05 09:45 | 2018-07-05 10:45 | 133 | 2018-07-05 09:45 | 2018-07-05 10:45 | 1h | 49.37d | 0d | TEAM_2Shift_Calendar-1 | Helper; Grinder | 2h | 106.25 | 106.25 |
| 135 | 1.5.16.3 | 2" Mp Con - 4 Nos | 0.5h | 2018-07-05 10:45 | 2018-07-05 11:15 | 134 | 2018-07-05 10:45 | 2018-07-05 11:15 | 0.5h | 49.37d | 0d | TEAM_2Shift_Calendar-1 | Helper; Fitter | 1h | 59.38 | 59.38 |
| 136 | 1.5.16.4 | Inspection | 1h | 2018-07-05 11:15 | 2018-07-05 12:15 | 135 | 2018-07-05 11:15 | 2018-07-05 12:15 | 1h | 49.37d |  | TEAM_2Shift_Calendar-1 | Helper; Grinder | 2h | 106.25 | 106.25 |

| ID | WBS | Task | Duration | Start | Finish | Predecessors | Baseline start | Baseline finish | Baseline duration | Total slack | Free slack | Calendar | Resources | Work | Cost | Baseline cost |
| --- | --- | --- | --- | --- | --- | --- | --- | --- | --- | --- | --- | --- | --- | --- | --- | --- |
| 137 | 1.6 | **Saddle & Other** | 3.3d | 2018-06-20 17:30 | 2018-06-26 06:15 |  | 2018-06-20 17:30 | 2018-06-26 06:15 | 3.3d | 57.74d |  | TEAM_2Shift_Calendar-1 |  | 118.5h | 6,931.25 | 6,931.25 |
| 138 | 1.6.1 | **Bottom Saddle Fabrrication** | 0.2d | 2018-06-20 17:30 | 2018-06-20 20:45 |  | 2018-06-20 17:30 | 2018-06-20 20:45 | 0.2d | 57.74d | 0d | TEAM_2Shift_Calendar-1 |  | 4.5h | 148.44 | 148.44 |
| 139 | 1.6.1.1 | Plate Issuence | 2h | 2018-06-20 17:30 | 2018-06-20 19:30 | 2FS+50d | 2018-06-20 17:30 | 2018-06-20 19:30 | 2h | 57.74d | 0d | TEAM_2Shift_Calendar-1 | Plate (Cost) [0.1%]; Store | 2h |  |  |
| 140 | 1.6.1.2 | Base Marking | 0.25h | 2018-06-20 19:30 | 2018-06-20 19:45 | 139 | 2018-06-20 19:30 | 2018-06-20 19:45 | 0.25h | 57.74d | 0d | TEAM_2Shift_Calendar-1 | Helper; Fitter | 0.5h | 29.69 | 29.69 |
| 141 | 1.6.1.3 | Web Pl Marking | 0.5h | 2018-06-20 19:45 | 2018-06-20 20:15 | 140 | 2018-06-20 19:45 | 2018-06-20 20:15 | 0.5h | 57.74d | 0d | TEAM_2Shift_Calendar-1 | Helper; Fitter | 1h | 59.38 | 59.38 |
| 142 | 1.6.1.4 | Ribs Marking | 0.5h | 2018-06-20 20:15 | 2018-06-20 20:45 | 141 | 2018-06-20 20:15 | 2018-06-20 20:45 | 0.5h | 57.74d |  | TEAM_2Shift_Calendar-1 | Helper; Fitter | 1h | 59.38 | 59.38 |
| 143 | 1.6.2 | **Bottom Sadlle Plate Cutting** | 0.22d | 2018-06-20 20:45 | 2018-06-21 08:15 |  | 2018-06-20 20:45 | 2018-06-21 08:15 | 0.22d | 57.74d | 0d | TEAM_2Shift_Calendar-1 |  | 7h | 401.56 | 401.56 |
| 144 | 1.6.2.1 | Base Cutting | 0.5h | 2018-06-20 20:45 | 2018-06-20 21:15 | 138 | 2018-06-20 20:45 | 2018-06-20 21:15 | 0.5h | 57.74d | 0d | TEAM_2Shift_Calendar-1 | Helper; Gas Cutter | 1h | 59.38 | 59.38 |
| 145 | 1.6.2.2 | Web Pl Cutting | 0.5h | 2018-06-20 21:15 | 2018-06-20 21:45 | 144 | 2018-06-20 21:15 | 2018-06-20 21:45 | 0.5h | 57.74d | 0d | TEAM_2Shift_Calendar-1 | Helper; Gas Cutter | 1h | 59.38 | 59.38 |
| 146 | 1.6.2.3 | Ribs Cutting | 0.25h | 2018-06-20 21:45 | 2018-06-20 22:00 | 145 | 2018-06-20 21:45 | 2018-06-20 22:00 | 0.25h | 57.74d | 0d | TEAM_2Shift_Calendar-1 | Helper; Gas Cutter | 0.5h | 29.69 | 29.69 |
| 147 | 1.6.2.4 | Grinding Of Above | 2.25h | 2018-06-21 06:00 | 2018-06-21 08:15 | 146 | 2018-06-21 06:00 | 2018-06-21 08:15 | 2.25h | 57.74d |  | TEAM_2Shift_Calendar-1 | Grinder [200%] | 4.5h | 253.12 | 253.12 |
| 148 | 1.6.3 | **Saddle Fit Up & Welding** | 1.59d | 2018-06-21 08:15 | 2018-06-22 17:45 |  | 2018-06-21 08:15 | 2018-06-22 17:45 | 1.59d | 57.74d | 0d | TEAM_2Shift_Calendar-1 |  | 70h | 4,334.38 | 4,334.38 |
| 149 | 1.6.3.1 | Base + Web Fit Up | 3h | 2018-06-21 08:15 | 2018-06-21 11:15 | 143 | 2018-06-21 08:15 | 2018-06-21 11:15 | 3h | 57.74d | 0d | TEAM_2Shift_Calendar-1 | Helper [200%]; SMAW Welder; Fitter | 9h | 562.5 | 562.5 |
| 150 | 1.6.3.2 | Base + Web Welding | 6.5h | 2018-06-21 11:15 | 2018-06-21 17:45 | 149 | 2018-06-21 11:15 | 2018-06-21 17:45 | 6.5h | 57.74d | 0d | TEAM_2Shift_Calendar-1 | Helper; SMAW Welder | 13h | 771.88 | 771.88 |
| 151 | 1.6.3.3 | Ribs+Web Fit Up | 4h | 2018-06-21 17:45 | 2018-06-21 21:45 | 150 | 2018-06-21 17:45 | 2018-06-21 21:45 | 4h | 57.74d | 0d | TEAM_2Shift_Calendar-1 | Helper [200%]; SMAW Welder; Fitter | 12h | 750 | 750 |
| 152 | 1.6.3.4 | Ribs+Web Welding | 12h | 2018-06-21 21:45 | 2018-06-22 17:45 | 151 | 2018-06-21 21:45 | 2018-06-22 17:45 | 12h | 57.74d |  | TEAM_2Shift_Calendar-1 | Helper [200%]; SMAW Welder [200%] | 36h | 2,250 | 2,250 |
| 153 | 1.6.4 | **Lifting Lug Pad & RF Pad** | 0.81d | 2018-06-22 17:45 | 2018-06-25 14:45 |  | 2018-06-22 17:45 | 2018-06-25 14:45 | 0.81d | 57.74d | 0d | TEAM_2Shift_Calendar-1 |  | 22h | 1,168.75 | 1,168.75 |
| 154 | 1.6.4.1 | Plate Issuence | 2h | 2018-06-22 17:45 | 2018-06-22 19:45 | 148 | 2018-06-22 17:45 | 2018-06-22 19:45 | 2h | 57.74d | 0d | TEAM_2Shift_Calendar-1 | Store | 2h |  |  |
| 155 | 1.6.4.2 | Pad Marking | 2h | 2018-06-22 19:45 | 2018-06-22 21:45 | 154 | 2018-06-22 19:45 | 2018-06-22 21:45 | 2h | 57.74d | 0d | TEAM_2Shift_Calendar-1 | Helper; Fitter | 4h | 237.5 | 237.5 |
| 156 | 1.6.4.3 | Pad Cutting | 4h | 2018-06-22 21:45 | 2018-06-25 09:45 | 155 | 2018-06-22 21:45 | 2018-06-25 09:45 | 4h | 57.74d | 0d | TEAM_2Shift_Calendar-1 | Helper; Gas Cutter | 8h | 475 | 475 |
| 157 | 1.6.4.4 | Pad Grinding | 3h | 2018-06-25 09:45 | 2018-06-25 12:45 | 156 | 2018-06-25 09:45 | 2018-06-25 12:45 | 3h | 57.74d | 0d | TEAM_2Shift_Calendar-1 | Helper; Grinder | 6h | 318.75 | 318.75 |
| 158 | 1.6.4.5 | Pad Drilling | 2h | 2018-06-25 12:45 | 2018-06-25 14:45 | 157 | 2018-06-25 12:45 | 2018-06-25 14:45 | 2h | 57.74d |  | TEAM_2Shift_Calendar-1 | Driller | 2h | 137.5 | 137.5 |
| 159 | 1.6.5 | **Lifting Lug Preparation** | 0.22d | 2018-06-25 14:45 | 2018-06-25 18:15 |  | 2018-06-25 14:45 | 2018-06-25 18:15 | 0.22d | 57.74d | 0d | TEAM_2Shift_Calendar-1 |  | 7h | 403.12 | 403.12 |
| 160 | 1.6.5.1 | Lifting Lugs Marking | 0.5h | 2018-06-25 14:45 | 2018-06-25 15:15 | 153 | 2018-06-25 14:45 | 2018-06-25 15:15 | 0.5h | 57.74d | 0d | TEAM_2Shift_Calendar-1 | Helper; Fitter | 1h | 59.38 | 59.38 |
| 161 | 1.6.5.2 | Lifting Lugs Cutting | 1h | 2018-06-25 15:15 | 2018-06-25 16:15 | 160 | 2018-06-25 15:15 | 2018-06-25 16:15 | 1h | 57.74d | 0d | TEAM_2Shift_Calendar-1 | Helper; Gas Cutter | 2h | 118.75 | 118.75 |
| 162 | 1.6.5.3 | Lifting Lugs Grinding | 1h | 2018-06-25 16:15 | 2018-06-25 17:15 | 161 | 2018-06-25 16:15 | 2018-06-25 17:15 | 1h | 57.74d | 0d | TEAM_2Shift_Calendar-1 | Helper; Grinder | 2h | 106.25 | 106.25 |
| 163 | 1.6.5.4 | Lifting Lug Drilling | 1h | 2018-06-25 17:15 | 2018-06-25 18:15 | 162 | 2018-06-25 17:15 | 2018-06-25 18:15 | 1h | 57.74d |  | TEAM_2Shift_Calendar-1 | Helper; Fitter | 2h | 118.75 | 118.75 |

| ID | WBS | Task | Duration | Start | Finish | Predecessors | Baseline start | Baseline finish | Baseline duration | Total slack | Free slack | Calendar | Resources | Work | Cost | Baseline cost |
| --- | --- | --- | --- | --- | --- | --- | --- | --- | --- | --- | --- | --- | --- | --- | --- | --- |
| 164 | 1.6.6 | **Insulation Ring Prparation** | 0.25d | 2018-06-25 18:15 | 2018-06-26 06:15 |  | 2018-06-25 18:15 | 2018-06-26 06:15 | 0.25d | 57.74d |  | TEAM_2Shift_Calendar-1 |  | 8h | 475 | 475 |
| 165 | 1.6.6.1 | Insulaion Ring Marking | 1h | 2018-06-25 18:15 | 2018-06-25 19:15 | 159 | 2018-06-25 18:15 | 2018-06-25 19:15 | 1h | 57.74d | 0d | TEAM_2Shift_Calendar-1 | Helper; Fitter | 2h | 118.75 | 118.75 |
| 166 | 1.6.6.2 | Insulaion Ring Cutting | 1.5h | 2018-06-25 19:15 | 2018-06-25 20:45 | 165 | 2018-06-25 19:15 | 2018-06-25 20:45 | 1.5h | 57.74d | 0d | TEAM_2Shift_Calendar-1 | Helper; Gas Cutter | 3h | 178.12 | 178.12 |
| 167 | 1.6.6.3 | Insulaion Ring Hole Marking | 0.5h | 2018-06-25 20:45 | 2018-06-25 21:15 | 166 | 2018-06-25 20:45 | 2018-06-25 21:15 | 0.5h | 57.74d | 0d | TEAM_2Shift_Calendar-1 | Helper; Fitter | 1h | 59.38 | 59.38 |
| 168 | 1.6.6.4 | Insulaion Ring Hole Drilling | 1h | 2018-06-25 21:15 | 2018-06-26 06:15 | 167 | 2018-06-25 21:15 | 2018-06-26 06:15 | 1h | 57.74d |  | TEAM_2Shift_Calendar-1 | Helper; Fitter | 2h | 118.75 | 118.75 |
| 169 | 1.7 | **Baffle & Tb Items Fab** | 8.5d | 2018-06-05 17:30 | 2018-06-27 19:30 |  | 2018-05-14 17:30 | 2018-06-04 19:30 | 8.5d | 27.85d |  |  |  | 221h | 7,042.5 | 7,042.5 |
| 170 | 1.7.1 | **Baffle Preparation** | 0.75d | 2018-06-05 17:30 | 2018-06-06 13:30 |  | 2018-05-14 17:30 | 2018-05-15 13:30 | 0.75d | 55.85d | 0d | TEAM_2Shift_Calendar-1 |  | 20h | 950 | 950 |
| 171 | 1.7.1.1 | Baffle Plate Transfer | 4h | 2018-06-05 17:30 | 2018-06-05 21:30 | 2FS+38d | 2018-05-14 17:30 | 2018-05-14 21:30 | 4h | 55.85d | 0d | TEAM_2Shift_Calendar-1 | Plate (Cost) [0.1%]; Store | 4h |  |  |
| 172 | 1.7.1.2 | Baffle Marking | 4h | 2018-06-05 21:30 | 2018-06-06 09:30 | 171 | 2018-05-14 21:30 | 2018-05-15 09:30 | 4h | 55.85d | 0d | TEAM_2Shift_Calendar-1 | Helper; Fitter | 8h | 475 | 475 |
| 173 | 1.7.1.3 | Baffle Profile Cutting | 4h | 2018-06-06 09:30 | 2018-06-06 13:30 | 172 | 2018-05-15 09:30 | 2018-05-15 13:30 | 4h | 55.85d |  | TEAM_2Shift_Calendar-1 | Helper; Gas Cutter | 8h | 475 | 475 |
| 174 | 1.7.2 | **Baffle Bend Removal & Stacking** | 0.31d | 2018-06-06 13:30 | 2018-06-06 18:30 |  | 2018-05-15 13:30 | 2018-05-15 18:30 | 0.31d | 55.85d | 0.38d | TEAM_2Shift_Calendar-1 |  | 10h | 593.75 | 593.75 |
| 175 | 1.7.2.1 | Baffle Pl Bend Removal | 4h | 2018-06-06 13:30 | 2018-06-06 17:30 | 170 | 2018-05-15 13:30 | 2018-05-15 17:30 | 4h | 55.85d | 0d | TEAM_2Shift_Calendar-1 | Helper [200%]; Fitter | 8h | 475 | 475 |
| 176 | 1.7.2.2 | Baffle Pl StackingPer 100mm | 1h | 2018-06-06 17:30 | 2018-06-06 18:30 | 175 | 2018-05-15 17:30 | 2018-05-15 18:30 | 1h | 55.85d |  | TEAM_2Shift_Calendar-1 | Helper; Fitter | 2h | 118.75 | 118.75 |
| 177 | 1.7.3 | **Baffle Drilling** | 6d | 2018-06-07 08:30 | 2018-06-21 17:30 |  | 2018-05-16 08:30 | 2018-05-30 17:30 | 6d | 27.91d | 0d |  |  | 96h |  |  |
| 178 | 1.7.3.1 | Baffle Drilling | 6d | 2018-06-07 08:30 | 2018-06-21 17:30 | 174 | 2018-05-16 08:30 | 2018-05-30 17:30 | 6d | 27.91d |  |  | SC (Work) | 96h |  |  |
| 179 | 1.7.4 | **Baffle De Stacking & Chamfering** | 0.38d | 2018-06-21 17:30 | 2018-06-22 07:30 |  | 2018-05-30 17:30 | 2018-05-31 07:30 | 0.38d | 55.91d | 0d | TEAM_2Shift_Calendar-1 |  | 7h | 462.5 | 462.5 |
| 180 | 1.7.4.1 | Baffle De Stacking | 1h | 2018-06-21 17:30 | 2018-06-21 18:30 | 177 | 2018-05-30 17:30 | 2018-05-30 18:30 | 1h | 55.91d | 0d | TEAM_2Shift_Calendar-1 | Helper; Fitter | 2h | 118.75 | 118.75 |
| 181 | 1.7.4.2 | Baffle Chamfering (70% of TS Holes*No of Baffles) | 5h | 2018-06-21 18:30 | 2018-06-22 07:30 | 180 | 2018-05-30 18:30 | 2018-05-31 07:30 | 5h | 55.91d |  | TEAM_2Shift_Calendar-1 | Fitter | 5h | 343.75 | 343.75 |
| 182 | 1.7.5 | **Baffle Stacking & Thro Hole Check** | 0.81d | 2018-06-22 07:30 | 2018-06-25 14:30 |  | 2018-05-31 07:30 | 2018-06-01 14:30 | 0.81d | 27.94d | 0d |  |  | 25h | 925 | 925 |
| 183 | 1.7.5.1 | Stacking | 1h | 2018-06-22 07:30 | 2018-06-22 08:30 | 179 | 2018-05-31 07:30 | 2018-05-31 08:30 | 1h | 55.91d | 0d | TEAM_2Shift_Calendar-1 | Helper; Fitter | 2h | 118.75 | 118.75 |
| 184 | 1.7.5.2 | Baffle Hole Alingment | 3h | 2018-06-22 08:30 | 2018-06-22 11:30 | 183 | 2018-05-31 08:30 | 2018-05-31 11:30 | 3h | 55.91d | 0d | TEAM_2Shift_Calendar-1 | Helper; Fitter | 6h | 356.25 | 356.25 |
| 185 | 1.7.5.3 | Baffle Hole Re Drill (Use 40% of Holes in Qty) | 2h | 2018-06-22 11:30 | 2018-06-22 14:30 | 184 | 2018-05-31 11:30 | 2018-05-31 14:30 | 2h | 27.91d | 0d |  | SC (Work) | 2h |  |  |
| 186 | 1.7.5.4 | Baffle Od Machining (100mm L * 700Ø = 3hrs) | 6h | 2018-06-22 14:30 | 2018-06-25 11:30 | 185 | 2018-05-31 14:30 | 2018-06-01 11:30 | 6h | 27.91d | 0d |  | SC (Work) | 6h |  |  |
| 187 | 1.7.5.5 | Baffle Cleaning(100mm L * 700Ø = 3hrs) | 3h | 2018-06-25 11:30 | 2018-06-25 14:30 | 186 | 2018-06-01 11:30 | 2018-06-01 14:30 | 3h | 55.91d |  | TEAM_2Shift_Calendar-1 | Helper [300%] | 9h | 450 | 450 |

| ID | WBS | Task | Duration | Start | Finish | Predecessors | Baseline start | Baseline finish | Baseline duration | Total slack | Free slack | Calendar | Resources | Work | Cost | Baseline cost |
| --- | --- | --- | --- | --- | --- | --- | --- | --- | --- | --- | --- | --- | --- | --- | --- | --- |
| 188 | 1.7.6 | **Tie Rod Preparation** | 0.62d | 2018-06-25 14:30 | 2018-06-26 08:30 |  | 2018-06-01 14:30 | 2018-06-02 08:30 | 0.62d | 55.91d | 0d | TEAM_2Shift_Calendar-1 |  | 15h | 1,213.75 | 1,213.75 |
| 189 | 1.7.6.1 | Tie Rod Matl Transfere | 1h | 2018-06-25 14:30 | 2018-06-25 15:30 | 182 | 2018-06-01 14:30 | 2018-06-01 15:30 | 1h | 55.91d | 0d | TEAM_2Shift_Calendar-1 | Store | 1h |  |  |
| 190 | 1.7.6.2 | Rod Cutting | 1h | 2018-06-25 15:30 | 2018-06-25 16:30 | 189 | 2018-06-01 15:30 | 2018-06-01 16:30 | 1h | 55.91d | 0d | TEAM_2Shift_Calendar-1 | Helper; Fitter | 2h | 118.75 | 118.75 |
| 191 | 1.7.6.3 | Thread Machining. | 6h | 2018-06-25 16:30 | 2018-06-26 06:30 | 190 | 2018-06-01 16:30 | 2018-06-02 06:30 | 6h | 55.91d | 0d | TEAM_2Shift_Calendar-1 | Lathe Operator | 6h | 720 | 720 |
| 192 | 1.7.6.4 | Joining | 2h | 2018-06-26 06:30 | 2018-06-26 08:30 | 191 | 2018-06-02 06:30 | 2018-06-02 08:30 | 2h | 55.91d |  | TEAM_2Shift_Calendar-1 | Fitter; Helper; SMAW Welder | 6h | 375 | 375 |
| 193 | 1.7.7 | **Spacer Tube Preparation** | 0.5d | 2018-06-26 08:30 | 2018-06-26 16:30 |  | 2018-06-02 08:30 | 2018-06-02 16:30 | 0.5d | 55.91d | 0d | TEAM_2Shift_Calendar-1 |  | 13h | 866.25 | 866.25 |
| 194 | 1.7.7.1 | Spacer Tube Transfere | 1h | 2018-06-26 08:30 | 2018-06-26 09:30 | 188 | 2018-06-02 08:30 | 2018-06-02 09:30 | 1h | 55.91d | 0d | TEAM_2Shift_Calendar-1 | Store | 1h |  |  |
| 195 | 1.7.7.2 | Length Cutting63 Nos | 3h | 2018-06-26 09:30 | 2018-06-26 12:30 | 194 | 2018-06-02 09:30 | 2018-06-02 12:30 | 3h | 55.91d | 0d | TEAM_2Shift_Calendar-1 | Helper; Fitter | 6h | 356.25 | 356.25 |
| 196 | 1.7.7.3 | Length Machining | 3h | 2018-06-26 12:30 | 2018-06-26 15:30 | 195 | 2018-06-02 12:30 | 2018-06-02 15:30 | 3h | 55.91d | 0d | TEAM_2Shift_Calendar-1 | Lathe Operator | 3h | 360 | 360 |
| 197 | 1.7.7.4 | Cleaninng | 1h | 2018-06-26 15:30 | 2018-06-26 16:30 | 196 | 2018-06-02 15:30 | 2018-06-02 16:30 | 1h | 55.91d |  | TEAM_2Shift_Calendar-1 | Helper [300%] | 3h | 150 | 150 |
| 198 | 1.7.8 | **Sealing Strip Preparation** | 0.81d | 2018-06-26 16:30 | 2018-06-27 13:30 |  | 2018-06-02 16:30 | 2018-06-04 13:30 | 0.81d | 55.91d | 0d | TEAM_2Shift_Calendar-1 |  | 24h | 1,437.5 | 1,437.5 |
| 199 | 1.7.8.1 | Sealing Strip Marking | 1h | 2018-06-26 16:30 | 2018-06-26 17:30 | 193 | 2018-06-02 16:30 | 2018-06-02 17:30 | 1h | 55.91d | 0d | TEAM_2Shift_Calendar-1 | Helper; Fitter | 2h | 118.75 | 118.75 |
| 200 | 1.7.8.2 | Sealing Strip Cutting | 3h | 2018-06-26 17:30 | 2018-06-26 20:30 | 199 | 2018-06-02 17:30 | 2018-06-02 20:30 | 3h | 55.91d | 0d | TEAM_2Shift_Calendar-1 | Helper; Gas Cutter | 6h | 356.25 | 356.25 |
| 201 | 1.7.8.3 | Sealing Strip Bend Removal | 1h | 2018-06-26 20:30 | 2018-06-26 21:30 | 200 | 2018-06-02 20:30 | 2018-06-02 21:30 | 1h | 55.91d | 0d | TEAM_2Shift_Calendar-1 | Helper [200%]; Fitter | 2h | 118.75 | 118.75 |
| 202 | 1.7.8.4 | Sealing Strip Grinding | 4h | 2018-06-26 21:30 | 2018-06-27 09:30 | 201 | 2018-06-02 21:30 | 2018-06-04 09:30 | 4h | 55.91d | 0d | TEAM_2Shift_Calendar-1 | Grinder | 4h | 225 | 225 |
| 203 | 1.7.8.5 | Sealing Strip Joining | 3h | 2018-06-27 09:30 | 2018-06-27 12:30 | 202 | 2018-06-04 09:30 | 2018-06-04 12:30 | 3h | 55.91d | 0d | TEAM_2Shift_Calendar-1 | Fitter; Helper; SMAW Welder | 9h | 562.5 | 562.5 |
| 204 | 1.7.8.6 | Sealing Strip Dress Up | 1h | 2018-06-27 12:30 | 2018-06-27 13:30 | 203 | 2018-06-04 12:30 | 2018-06-04 13:30 | 1h | 55.91d |  | TEAM_2Shift_Calendar-1 | Grinder | 1h | 56.25 | 56.25 |
| 205 | 1.7.9 | **Seal Rod Preparation** | 0.38d | 2018-06-27 13:30 | 2018-06-27 19:30 |  | 2018-06-04 13:30 | 2018-06-04 19:30 | 0.38d | 55.91d |  | TEAM_2Shift_Calendar-1 |  | 11h | 593.75 | 593.75 |
| 206 | 1.7.9.1 | Seal Rod Issuenece | 1h | 2018-06-27 13:30 | 2018-06-27 14:30 | 198 | 2018-06-04 13:30 | 2018-06-04 14:30 | 1h | 55.91d | 0d | TEAM_2Shift_Calendar-1 | Store | 1h |  |  |
| 207 | 1.7.9.2 | Seal Rod Marking | 1h | 2018-06-27 14:30 | 2018-06-27 15:30 | 206 | 2018-06-04 14:30 | 2018-06-04 15:30 | 1h | 55.91d | 0d | TEAM_2Shift_Calendar-1 | Helper; Fitter | 2h | 118.75 | 118.75 |
| 208 | 1.7.9.3 | Seal Rod Cutting | 2h | 2018-06-27 15:30 | 2018-06-27 17:30 | 207 | 2018-06-04 15:30 | 2018-06-04 17:30 | 2h | 55.91d | 0d | TEAM_2Shift_Calendar-1 | Helper; Fitter | 4h | 237.5 | 237.5 |
| 209 | 1.7.9.4 | Seal Rod Bend Removal | 2h | 2018-06-27 17:30 | 2018-06-27 19:30 | 208 | 2018-06-04 17:30 | 2018-06-04 19:30 | 2h | 55.91d |  | TEAM_2Shift_Calendar-1 | Helper [200%]; Fitter | 4h | 237.5 | 237.5 |
| 210 | 1.8 | **Shell Fabrication** | 11.58d | 2018-06-05 17:30 | 2018-06-20 10:48 |  | 2018-05-14 17:30 | 2018-05-29 10:48 | 11.58d | 22.23d |  | TEAM_2Shift_Calendar-1 |  | 369.85h | 18,748.12 | 18,748.12 |
| 211 | 1.8.1 | **Shell Marking & Cutting** | 2.08d | 2018-06-05 17:30 | 2018-06-07 18:45 |  | 2018-05-14 17:30 | 2018-05-16 18:45 | 2.08d | 22.23d | 0d | TEAM_2Shift_Calendar-1 |  | 34.5h | 148.44 | 148.44 |
| 212 | 1.8.1.1 | Sh Plate Trnasfer | 2d | 2018-06-05 17:30 | 2018-06-07 17:30 | 2FS+38d | 2018-05-14 17:30 | 2018-05-16 17:30 | 2d | 22.23d | 0d | TEAM_2Shift_Calendar-1 | Plate (Cost) [0.1%]; Store | 32h |  |  |
| 213 | 1.8.1.2 | Sh-Marking | 1.25h | 2018-06-07 17:30 | 2018-06-07 18:45 | 212 | 2018-05-16 17:30 | 2018-05-16 18:45 | 1.25h | 22.23d |  | TEAM_2Shift_Calendar-1 | Helper [200%]; Fitter | 2.5h | 148.44 | 148.44 |

| ID | WBS | Task | Duration | Start | Finish | Predecessors | Baseline start | Baseline finish | Baseline duration | Total slack | Free slack | Calendar | Resources | Work | Cost | Baseline cost |
| --- | --- | --- | --- | --- | --- | --- | --- | --- | --- | --- | --- | --- | --- | --- | --- | --- |
| 214 | 1.8.2 | **Shell Plate Cutting** | 0.12d | 2018-06-07 18:45 | 2018-06-07 20:45 |  | 2018-05-16 18:45 | 2018-05-16 20:45 | 0.12d | 22.23d | 0d | TEAM_2Shift_Calendar-1 |  | 4h | 237.5 | 237.5 |
| 215 | 1.8.2.1 | Sh-Cutting | 2h | 2018-06-07 18:45 | 2018-06-07 20:45 | 211 | 2018-05-16 18:45 | 2018-05-16 20:45 | 2h | 22.23d |  | TEAM_2Shift_Calendar-1 | Helper [200%]; Gas Cutter | 4h | 237.5 | 237.5 |
| 216 | 1.8.3 | **Sh Pl Side Grinding** | 0.19d | 2018-06-07 20:45 | 2018-06-08 07:45 |  | 2018-05-16 20:45 | 2018-05-17 07:45 | 0.19d | 22.23d | 0d | TEAM_2Shift_Calendar-1 |  | 6h | 356.25 | 356.25 |
| 217 | 1.8.3.1 | Sh Pl Side Bevel Cutting | 1.5h | 2018-06-07 20:45 | 2018-06-08 06:15 | 214 | 2018-05-16 20:45 | 2018-05-17 06:15 | 1.5h | 22.23d | 0d | TEAM_2Shift_Calendar-1 | Helper [300%]; Fitter | 3h | 178.12 | 178.12 |
| 218 | 1.8.3.2 | Sh Pl Side Bevel Cutting | 1.5h | 2018-06-08 06:15 | 2018-06-08 07:45 | 217 | 2018-05-17 06:15 | 2018-05-17 07:45 | 1.5h | 22.23d |  | TEAM_2Shift_Calendar-1 | Helper [300%]; Fitter | 3h | 178.12 | 178.12 |
| 219 | 1.8.4 | **Shell Plate Edge Preparation** | 0.38d | 2018-06-08 07:45 | 2018-06-08 13:45 |  | 2018-05-17 07:45 | 2018-05-17 13:45 | 0.38d | 22.23d | 0d | TEAM_2Shift_Calendar-1 |  | 12h | 637.5 | 637.5 |
| 220 | 1.8.4.1 | Sh-Bevel Grinding | 3h | 2018-06-08 07:45 | 2018-06-08 10:45 | 216 | 2018-05-17 07:45 | 2018-05-17 10:45 | 3h | 22.23d | 0d | TEAM_2Shift_Calendar-1 | Helper; Grinder | 6h | 318.75 | 318.75 |
| 221 | 1.8.4.2 | Sh-Bevel Grinding | 3h | 2018-06-08 10:45 | 2018-06-08 13:45 | 220 | 2018-05-17 10:45 | 2018-05-17 13:45 | 3h | 22.23d |  | TEAM_2Shift_Calendar-1 | Helper; Grinder | 6h | 318.75 | 318.75 |
| 222 | 1.8.5 | **Shell Pre Bending** | 0.25d | 2018-06-08 13:45 | 2018-06-08 17:45 |  | 2018-05-17 13:45 | 2018-05-17 17:45 | 0.25d | 22.23d | 0d | TEAM_2Shift_Calendar-1 |  | 12h | 750 | 750 |
| 223 | 1.8.5.1 | Sh-Pre Bend | 2h | 2018-06-08 13:45 | 2018-06-08 15:45 | 219 | 2018-05-17 13:45 | 2018-05-17 15:45 | 2h | 22.23d | 0d | TEAM_2Shift_Calendar-1 | Helper; Fitter [200%] | 6h | 375 | 375 |
| 224 | 1.8.5.2 | Sh-Pre Bend | 2h | 2018-06-08 15:45 | 2018-06-08 17:45 | 223 | 2018-05-17 15:45 | 2018-05-17 17:45 | 2h | 22.23d |  | TEAM_2Shift_Calendar-1 | Helper; Fitter [200%] | 6h | 375 | 375 |
| 225 | 1.8.6 | **Shell Pl Pre Bend Cut Off** | 0.12d | 2018-06-08 17:45 | 2018-06-08 19:45 |  | 2018-05-17 17:45 | 2018-05-17 19:45 | 0.12d | 22.23d | 0d | TEAM_2Shift_Calendar-1 |  | 8h | 512.5 | 512.5 |
| 226 | 1.8.6.1 | Sh-Pre Bend Cut Off | 1h | 2018-06-08 17:45 | 2018-06-08 18:45 | 222 | 2018-05-17 17:45 | 2018-05-17 18:45 | 1h | 22.23d | 0d | TEAM_2Shift_Calendar-1 | Helper; Gas Cutter; Fitter [200%] | 4h | 256.25 | 256.25 |
| 227 | 1.8.6.2 | Sh-Pre Bend Cut Off | 1h | 2018-06-08 18:45 | 2018-06-08 19:45 | 226 | 2018-05-17 18:45 | 2018-05-17 19:45 | 1h | 22.23d |  | TEAM_2Shift_Calendar-1 | Helper; Gas Cutter; Fitter [200%] | 4h | 256.25 | 256.25 |
| 228 | 1.8.7 | **Shell Plate LS EP** | 0.12d | 2018-06-08 19:45 | 2018-06-08 21:45 |  | 2018-05-17 19:45 | 2018-05-17 21:45 | 0.12d | 22.23d | 0d | TEAM_2Shift_Calendar-1 |  | 4h | 237.5 | 237.5 |
| 229 | 1.8.7.1 | Sh-Pre Bend LS EP | 1h | 2018-06-08 19:45 | 2018-06-08 20:45 | 225 | 2018-05-17 19:45 | 2018-05-17 20:45 | 1h | 22.23d | 0d | TEAM_2Shift_Calendar-1 | Helper; Fitter | 2h | 118.75 | 118.75 |
| 230 | 1.8.7.2 | Sh-Pre Bend LS EP | 1h | 2018-06-08 20:45 | 2018-06-08 21:45 | 229 | 2018-05-17 20:45 | 2018-05-17 21:45 | 1h | 22.23d |  | TEAM_2Shift_Calendar-1 | Helper; Fitter | 2h | 118.75 | 118.75 |
| 231 | 1.8.8 | **Shell Rolling** | 0.38d | 2018-06-08 21:45 | 2018-06-11 11:45 |  | 2018-05-17 21:45 | 2018-05-18 11:45 | 0.38d | 22.23d | 0d | TEAM_2Shift_Calendar-1 |  | 18h | 1,125 | 1,125 |
| 232 | 1.8.8.1 | Sh-Rolling1/4 | 3h | 2018-06-08 21:45 | 2018-06-11 08:45 | 228 | 2018-05-17 21:45 | 2018-05-18 08:45 | 3h | 22.23d | 0d | TEAM_2Shift_Calendar-1 | Helper; Fitter [200%] | 9h | 562.5 | 562.5 |
| 233 | 1.8.8.2 | Sh-Rolling | 3h | 2018-06-11 08:45 | 2018-06-11 11:45 | 232 | 2018-05-18 08:45 | 2018-05-18 11:45 | 3h | 22.23d |  | TEAM_2Shift_Calendar-1 | Helper; Fitter [200%] | 9h | 562.5 | 562.5 |
| 234 | 1.8.9 | **Shell Cir Length & EP Correction** | 0.06d | 2018-06-11 11:45 | 2018-06-11 12:45 |  | 2018-05-18 11:45 | 2018-05-18 12:45 | 0.06d | 22.23d | 0d | TEAM_2Shift_Calendar-1 |  | 2h | 118.75 | 118.75 |
| 235 | 1.8.9.1 | Sh-LS Correction | 0.5h | 2018-06-11 11:45 | 2018-06-11 12:15 | 231 | 2018-05-18 11:45 | 2018-05-18 12:15 | 0.5h | 22.23d | 0d | TEAM_2Shift_Calendar-1 | Helper [200%]; Fitter | 1h | 59.38 | 59.38 |
| 236 | 1.8.9.2 | Sh-LS Correction | 0.5h | 2018-06-11 12:15 | 2018-06-11 12:45 | 235 | 2018-05-18 12:15 | 2018-05-18 12:45 | 0.5h | 22.23d |  | TEAM_2Shift_Calendar-1 | Helper [200%]; Fitter | 1h | 59.38 | 59.38 |
| 237 | 1.8.10 | **Shell LS Seams Fit Up** | 0.12d | 2018-06-11 12:45 | 2018-06-11 14:45 |  | 2018-05-18 12:45 | 2018-05-18 14:45 | 0.12d | 22.23d | 0d | TEAM_2Shift_Calendar-1 |  | 7h | 443.75 | 443.75 |
| 238 | 1.8.10.1 | Sh-LS Fit Up | 1h | 2018-06-11 12:45 | 2018-06-11 13:45 | 234 | 2018-05-18 12:45 | 2018-05-18 13:45 | 1h | 22.23d | 0d | TEAM_2Shift_Calendar-1 | SMAW Welder; Helper [200%]; Fitter | 3h | 187.5 | 187.5 |
| 239 | 1.8.10.2 | Sh-LS Fit Up | 1h | 2018-06-11 13:45 | 2018-06-11 14:45 | 238 | 2018-05-18 13:45 | 2018-05-18 14:45 | 1h | 22.23d |  | TEAM_2Shift_Calendar-1 | Helper; SMAW Welder; Fitter [200%] | 4h | 256.25 | 256.25 |

| ID | WBS | Task | Duration | Start | Finish | Predecessors | Baseline start | Baseline finish | Baseline duration | Total slack | Free slack | Calendar | Resources | Work | Cost | Baseline cost |
| --- | --- | --- | --- | --- | --- | --- | --- | --- | --- | --- | --- | --- | --- | --- | --- | --- |
| 240 | 1.8.11 | **Sh LS Welding Arrangement** | 0.06d | 2018-06-11 14:45 | 2018-06-11 15:45 |  | 2018-05-18 14:45 | 2018-05-18 15:45 | 0.06d | 22.23d | 0d | TEAM_2Shift_Calendar-1 |  | 2h | 118.75 | 118.75 |
| 241 | 1.8.11.1 | Sh-LS Weld Arrangement | 0.5h | 2018-06-11 14:45 | 2018-06-11 15:15 | 237 | 2018-05-18 14:45 | 2018-05-18 15:15 | 0.5h | 22.23d | 0d | TEAM_2Shift_Calendar-1 | Helper; Fitter | 1h | 59.38 | 59.38 |
| 242 | 1.8.11.2 | Sh-LS Weld Arrangement | 0.5h | 2018-06-11 15:15 | 2018-06-11 15:45 | 241 | 2018-05-18 15:15 | 2018-05-18 15:45 | 0.5h | 22.23d |  | TEAM_2Shift_Calendar-1 | Helper; Fitter | 1h | 59.38 | 59.38 |
| 243 | 1.8.12 | **Shell Long Seam Outer Welding** | 0.31d | 2018-06-11 15:45 | 2018-06-11 20:45 |  | 2018-05-18 15:45 | 2018-05-18 20:45 | 0.31d | 22.23d | 0d | TEAM_2Shift_Calendar-1 |  | 10h | 593.75 | 593.75 |
| 244 | 1.8.12.1 | Sh-LS Welding- Top Side | 2.5h | 2018-06-11 15:45 | 2018-06-11 18:15 | 240 | 2018-05-18 15:45 | 2018-05-18 18:15 | 2.5h | 22.23d | 0d | TEAM_2Shift_Calendar-1 | Helper; SMAW Welder | 5h | 296.88 | 296.88 |
| 245 | 1.8.12.2 | Sh-LS Welding- Top Side | 2.5h | 2018-06-11 18:15 | 2018-06-11 20:45 | 244 | 2018-05-18 18:15 | 2018-05-18 20:45 | 2.5h | 22.23d |  | TEAM_2Shift_Calendar-1 | Helper; SMAW Welder | 5h | 296.88 | 296.88 |
| 246 | 1.8.13 | **Sh LS Back Chip** | 0.06d | 2018-06-11 20:45 | 2018-06-11 21:45 |  | 2018-05-18 20:45 | 2018-05-18 21:45 | 0.06d | 22.23d | 0d | TEAM_2Shift_Calendar-1 |  | 1h | 56.25 | 56.25 |
| 247 | 1.8.13.1 | Sh-LS Welding- Back Chip | 0.5h | 2018-06-11 20:45 | 2018-06-11 21:15 | 243 | 2018-05-18 20:45 | 2018-05-18 21:15 | 0.5h | 22.23d | 0d | TEAM_2Shift_Calendar-1 | Grinder | 0.5h | 28.12 | 28.12 |
| 248 | 1.8.13.2 | Sh-LS Welding- Back Chip | 0.5h | 2018-06-11 21:15 | 2018-06-11 21:45 | 247 | 2018-05-18 21:15 | 2018-05-18 21:45 | 0.5h | 22.23d |  | TEAM_2Shift_Calendar-1 | Grinder | 0.5h | 28.12 | 28.12 |
| 249 | 1.8.14 | **Sh LS Radiography** | 2d | 2018-06-11 21:45 | 2018-06-13 21:45 |  | 2018-05-18 21:45 | 2018-05-21 21:45 | 2d | 22.23d | 0d | TEAM_2Shift_Calendar-1 |  | 32h |  |  |
| 250 | 1.8.14.1 | Sh LS Welding Rt | 1d | 2018-06-11 21:45 | 2018-06-12 21:45 | 246 | 2018-05-18 21:45 | 2018-05-19 21:45 | 1d | 22.23d | 0d | TEAM_2Shift_Calendar-1 | SC Radiography (Work) | 16h |  |  |
| 251 | 1.8.14.2 | Sh LS Welding Rt | 1d | 2018-06-12 21:45 | 2018-06-13 21:45 | 250 | 2018-05-19 21:45 | 2018-05-21 21:45 | 1d | 22.23d |  | TEAM_2Shift_Calendar-1 | SC Radiography (Work) | 16h |  |  |
| 252 | 1.8.15 | **Shell Re-Rolling** | 0.38d | 2018-06-13 21:45 | 2018-06-14 11:45 |  | 2018-05-21 21:45 | 2018-05-22 11:45 | 0.38d | 22.23d | 0d | TEAM_2Shift_Calendar-1 |  | 18h | 1,125 | 1,125 |
| 253 | 1.8.15.1 | Sh Re-Rolling | 3h | 2018-06-13 21:45 | 2018-06-14 08:45 | 249 | 2018-05-21 21:45 | 2018-05-22 08:45 | 3h | 22.23d | 0d | TEAM_2Shift_Calendar-1 | Helper; Fitter [200%] | 9h | 562.5 | 562.5 |
| 254 | 1.8.15.2 | Sh Re-Rolling | 3h | 2018-06-14 08:45 | 2018-06-14 11:45 | 253 | 2018-05-22 08:45 | 2018-05-22 11:45 | 3h | 22.23d |  | TEAM_2Shift_Calendar-1 | Helper; Fitter [200%] | 9h | 562.5 | 562.5 |
| 255 | 1.8.16 | **Sh Plate CS EP Correction** | 0.06d | 2018-06-14 11:45 | 2018-06-14 12:45 |  | 2018-05-22 11:45 | 2018-05-22 12:45 | 0.06d | 22.23d | 0d | TEAM_2Shift_Calendar-1 |  | 2h | 118.75 | 118.75 |
| 256 | 1.8.16.1 | Sh Cir EP Correction | 0.5h | 2018-06-14 11:45 | 2018-06-14 12:15 | 252 | 2018-05-22 11:45 | 2018-05-22 12:15 | 0.5h | 22.23d | 0d | TEAM_2Shift_Calendar-1 | Helper; Fitter | 1h | 59.38 | 59.38 |
| 257 | 1.8.16.2 | Sh Cir EP Correction | 0.5h | 2018-06-14 12:15 | 2018-06-14 12:45 | 256 | 2018-05-22 12:15 | 2018-05-22 12:45 | 0.5h | 22.23d |  | TEAM_2Shift_Calendar-1 | Helper; Fitter | 1h | 59.38 | 59.38 |
| 258 | 1.8.17 | **Sh Cir Seam First Fit Up** | 0.08d | 2018-06-14 12:45 | 2018-06-14 14:03 |  | 2018-05-22 12:45 | 2018-05-22 14:03 | 0.08d | 22.23d | 0d | TEAM_2Shift_Calendar-1 |  | 4.6h | 291.88 | 291.88 |
| 259 | 1.8.17.1 | Sh CS Fit Up[LS1+LS2] | 1h | 2018-06-14 12:45 | 2018-06-14 13:45 | 255 | 2018-05-22 12:45 | 2018-05-22 13:45 | 1h | 22.23d | 0d | TEAM_2Shift_Calendar-1 | Helper; SMAW Welder; Fitter [200%] | 4h | 256.25 | 256.25 |
| 260 | 1.8.17.2 | Sh CS Tack DP Check[LS1+LS2] | 0.3h | 2018-06-14 13:45 | 2018-06-14 14:03 | 259 | 2018-05-22 13:45 | 2018-05-22 14:03 | 0.3h | 22.23d |  | TEAM_2Shift_Calendar-1 | Helper; Fitter | 0.6h | 35.62 | 35.62 |
| 261 | 1.8.18 | **Sh Cir Seam First Welding** | 0.3d | 2018-06-14 14:03 | 2018-06-14 18:48 |  | 2018-05-22 14:03 | 2018-05-22 18:48 | 0.3d | 22.23d | 0d | TEAM_2Shift_Calendar-1 |  | 8.25h | 485.94 | 485.94 |
| 262 | 1.8.18.1 | Sh CS Welding Transfere | 1h | 2018-06-14 14:03 | 2018-06-14 15:03 | 258 | 2018-05-22 14:03 | 2018-05-22 15:03 | 1h | 22.23d | 0d | TEAM_2Shift_Calendar-1 | Helper; Fitter | 2h | 118.75 | 118.75 |
| 263 | 1.8.18.2 | Sh CS Welding Outer[LS1+LS2] | 2.5h | 2018-06-14 15:03 | 2018-06-14 17:33 | 262 | 2018-05-22 15:03 | 2018-05-22 17:33 | 2.5h | 22.23d | 0d | TEAM_2Shift_Calendar-1 | Helper; SMAW Welder | 5h | 296.88 | 296.88 |
| 264 | 1.8.18.3 | Sh CS Welding Back Chip[LS1+LS2] | 0.5h | 2018-06-14 17:33 | 2018-06-14 18:03 | 263 | 2018-05-22 17:33 | 2018-05-22 18:03 | 0.5h | 22.23d | 0d | TEAM_2Shift_Calendar-1 | Grinder | 0.5h | 28.12 | 28.12 |
| 265 | 1.8.18.4 | Sh CS Flush Grinding[LS1+LS2] | 0.75h | 2018-06-14 18:03 | 2018-06-14 18:48 | 264 | 2018-05-22 18:03 | 2018-05-22 18:48 | 0.75h | 22.23d |  | TEAM_2Shift_Calendar-1 | Grinder | 0.75h | 42.19 | 42.19 |

| ID | WBS | Task | Type | Duration | Start | Finish | Predecessors | Baseline start | Baseline finish | Baseline duration | Total slack | Free slack | Calendar | Resources | Work | Cost | Baseline cost |
| --- | --- | --- | --- | --- | --- | --- | --- | --- | --- | --- | --- | --- | --- | --- | --- | --- | --- |
| 266 | 1.8.19 | **Sh Final Length Correction** |  | 0.28d | 2018-06-14 18:48 | 2018-06-15 07:18 |  | 2018-05-22 18:48 | 2018-05-23 07:18 | 0.28d | 22.23d | 0d | TEAM_2Shift_Calendar-1 |  | 9h | 528.12 | 528.12 |
| 267 | 1.8.19.1 | Sh Length Marking |  | 1h | 2018-06-14 18:48 | 2018-06-14 19:48 | 261 | 2018-05-22 18:48 | 2018-05-22 19:48 | 1h | 22.23d | 0d | TEAM_2Shift_Calendar-1 | Fitter [200%] | 2h | 137.5 | 137.5 |
| 268 | 1.8.19.2 | Length Cutting |  | 1.5h | 2018-06-14 19:48 | 2018-06-14 21:18 | 267 | 2018-05-22 19:48 | 2018-05-22 21:18 | 1.5h | 22.23d | 0d | TEAM_2Shift_Calendar-1 | Helper; Gas Cutter | 3h | 178.12 | 178.12 |
| 269 | 1.8.19.3 | Grinding & EP |  | 2h | 2018-06-14 21:18 | 2018-06-15 07:18 | 268 | 2018-05-22 21:18 | 2018-05-23 07:18 | 2h | 22.23d |  | TEAM_2Shift_Calendar-1 | Helper; Grinder | 4h | 212.5 | 212.5 |
| 270 | 1.8.20 | **Nozzle Orientation Marking** |  | 0.25d | 2018-06-15 07:18 | 2018-06-15 11:18 |  | 2018-05-23 07:18 | 2018-05-23 11:18 | 0.25d | 22.23d | 0d | TEAM_2Shift_Calendar-1 |  | 8h | 550 | 550 |
| 271 | 1.8.20.1 | Sh Nozzel Orientaion Marking | milestone | 0d | 2018-06-15 07:18 | 2018-06-15 07:18 | 266 | 2018-05-23 07:18 | 2018-05-23 07:18 | 0d | 22.23d | 0d | TEAM_2Shift_Calendar-1 |  |  |  |  |
| 272 | 1.8.20.2 | Sh Nozzel Marking16"NB- 2 Nos |  | 4h | 2018-06-15 07:18 | 2018-06-15 11:18 | 271 | 2018-05-23 07:18 | 2018-05-23 11:18 | 4h | 22.23d |  | TEAM_2Shift_Calendar-1 | Fitter [200%] | 8h | 550 | 550 |
| 273 | 1.8.21 | **Sh Nozzle Openning** |  | 0.31d | 2018-06-15 11:18 | 2018-06-15 16:18 |  | 2018-05-23 11:18 | 2018-05-23 16:18 | 0.31d | 22.23d | 0d | TEAM_2Shift_Calendar-1 |  | 10h | 593.75 | 593.75 |
| 274 | 1.8.21.1 | 16"NB- 2 Nos |  | 4h | 2018-06-15 11:18 | 2018-06-15 15:18 | 270 | 2018-05-23 11:18 | 2018-05-23 15:18 | 4h | 22.23d | 0d | TEAM_2Shift_Calendar-1 | Helper; Gas Cutter | 8h | 475 | 475 |
| 275 | 1.8.21.2 | Inspection |  | 1h | 2018-06-15 15:18 | 2018-06-15 16:18 | 274 | 2018-05-23 15:18 | 2018-05-23 16:18 | 1h | 22.23d |  | TEAM_2Shift_Calendar-1 | Helper; Gas Cutter | 2h | 118.75 | 118.75 |
| 276 | 1.8.22 | **Sh Nozzle EP** |  | 0.19d | 2018-06-15 16:18 | 2018-06-15 19:18 |  | 2018-05-23 16:18 | 2018-05-23 19:18 | 0.19d | 22.23d | 0d | TEAM_2Shift_Calendar-1 |  | 4h | 250 | 250 |
| 277 | 1.8.22.1 | 16"NB- 2 Nos |  | 2h | 2018-06-15 16:18 | 2018-06-15 18:18 | 273 | 2018-05-23 16:18 | 2018-05-23 18:18 | 2h | 22.23d | 0d | TEAM_2Shift_Calendar-1 | Grinder | 2h | 112.5 | 112.5 |
| 278 | 1.8.22.2 | Inspection |  | 1h | 2018-06-15 18:18 | 2018-06-15 19:18 | 277 | 2018-05-23 18:18 | 2018-05-23 19:18 | 1h | 22.23d |  | TEAM_2Shift_Calendar-1 | Fitter [200%] | 2h | 137.5 | 137.5 |
| 279 | 1.8.23 | **Sh Nozzzle Fit Up** |  | 0.16d | 2018-06-15 19:18 | 2018-06-15 21:48 |  | 2018-05-23 19:18 | 2018-05-23 21:48 | 0.16d | 22.23d | 0d | TEAM_2Shift_Calendar-1 |  | 9h | 571.88 | 571.88 |
| 280 | 1.8.23.1 | 16"NB- 2 Nos |  | 2h | 2018-06-15 19:18 | 2018-06-15 21:18 | 276 | 2018-05-23 19:18 | 2018-05-23 21:18 | 2h | 22.23d | 0d | TEAM_2Shift_Calendar-1 | Helper; SMAW Welder; Fitter [200%] | 8h | 512.5 | 512.5 |
| 281 | 1.8.23.2 | DP Check |  | 0.5h | 2018-06-15 21:18 | 2018-06-15 21:48 | 280 | 2018-05-23 21:18 | 2018-05-23 21:48 | 0.5h | 22.23d |  | TEAM_2Shift_Calendar-1 | Helper; Fitter | 1h | 59.38 | 59.38 |
| 282 | 1.8.24 | **Sh Nozzle Fit Up Inspection** |  | 0.09d | 2018-06-15 21:48 | 2018-06-16 07:18 |  | 2018-05-23 21:48 | 2018-05-24 07:18 | 0.09d | 22.23d | 0d | TEAM_2Shift_Calendar-1 |  | 3h | 178.12 | 178.12 |
| 283 | 1.8.24.1 | 16"NB- 2 Nos |  | 1h | 2018-06-15 21:48 | 2018-06-16 06:48 | 279 | 2018-05-23 21:48 | 2018-05-24 06:48 | 1h | 22.23d | 0d | TEAM_2Shift_Calendar-1 | Helper; Fitter | 2h | 118.75 | 118.75 |
| 284 | 1.8.24.2 | DP Check |  | 0.5h | 2018-06-16 06:48 | 2018-06-16 07:18 | 283 | 2018-05-24 06:48 | 2018-05-24 07:18 | 0.5h | 22.23d |  | TEAM_2Shift_Calendar-1 | Helper; Fitter | 1h | 59.38 | 59.38 |
| 285 | 1.8.25 | **Sh Nozzle Welding** |  | 0.38d | 2018-06-16 07:18 | 2018-06-16 13:18 |  | 2018-05-24 07:18 | 2018-05-24 13:18 | 0.38d | 22.23d | 0d | TEAM_2Shift_Calendar-1 |  | 11h | 593.75 | 593.75 |
| 286 | 1.8.25.1 | Sh Nozzel Welding Arrangement |  | 1h | 2018-06-16 07:18 | 2018-06-16 08:18 | 282 | 2018-05-24 07:18 | 2018-05-24 08:18 | 1h | 22.23d | 0d | TEAM_2Shift_Calendar-1 | Store | 1h |  |  |
| 287 | 1.8.25.2 | Sh Nozzel WeldingS1 |  | 2h | 2018-06-16 08:18 | 2018-06-16 10:18 | 286 | 2018-05-24 08:18 | 2018-05-24 10:18 | 2h | 22.23d | 0d | TEAM_2Shift_Calendar-1 | Helper; SMAW Welder | 4h | 237.5 | 237.5 |
| 288 | 1.8.25.3 | Sh Nozzel WeldingS2 |  | 2h | 2018-06-16 10:18 | 2018-06-16 12:18 | 287 | 2018-05-24 10:18 | 2018-05-24 12:18 | 2h | 22.23d | 0d | TEAM_2Shift_Calendar-1 | Helper; SMAW Welder | 4h | 237.5 | 237.5 |
| 289 | 1.8.25.4 | Sh Nozzel Root DP Check |  | 1h | 2018-06-16 12:18 | 2018-06-16 13:18 | 288 | 2018-05-24 12:18 | 2018-05-24 13:18 | 1h | 22.23d |  | TEAM_2Shift_Calendar-1 | Helper; Fitter | 2h | 118.75 | 118.75 |

| ID | WBS | Task | Duration | Start | Finish | Predecessors | Baseline start | Baseline finish | Baseline duration | Total slack | Free slack | Calendar | Resources | Work | Cost | Baseline cost |
| --- | --- | --- | --- | --- | --- | --- | --- | --- | --- | --- | --- | --- | --- | --- | --- | --- |
| 290 | 1.8.26 | **Sh Saddle Welding** | 2.34d | 2018-06-16 13:18 | 2018-06-19 18:48 |  | 2018-05-24 13:18 | 2018-05-28 18:48 | 2.34d | 22.23d | 0d | TEAM_2Shift_Calendar-1 |  | 114.5h | 7,175 | 7,175 |
| 291 | 1.8.26.1 | Sh-Saddle Pad Fit Up | 5h | 2018-06-16 13:18 | 2018-06-16 18:18 | 285 | 2018-05-24 13:18 | 2018-05-24 18:18 | 5h | 22.23d | 0d | TEAM_2Shift_Calendar-1 | SMAW Welder; Helper; Fitter [200%] | 20h | 1,281.25 | 1,281.25 |
| 292 | 1.8.26.2 | Sh-Saddle Pad Welding | 12h | 2018-06-16 18:18 | 2018-06-18 14:18 | 291 | 2018-05-24 18:18 | 2018-05-25 14:18 | 12h | 22.23d | 0d | TEAM_2Shift_Calendar-1 | Helper [200%]; SMAW Welder [200%] | 36h | 2,250 | 2,250 |
| 293 | 1.8.26.3 | Sh-Saddle Matching | 4h | 2018-06-18 14:18 | 2018-06-18 18:18 | 292 | 2018-05-25 14:18 | 2018-05-25 18:18 | 4h | 22.23d | 0d | TEAM_2Shift_Calendar-1 | Grinder [200%]; Fitter [200%] | 12h | 775 | 775 |
| 294 | 1.8.26.4 | Sh-Saddle Fit Up | 4h | 2018-06-18 18:18 | 2018-06-19 06:18 | 293 | 2018-05-25 18:18 | 2018-05-28 06:18 | 4h | 22.23d | 0d | TEAM_2Shift_Calendar-1 | Fitter [200%]; Helper; SMAW Welder | 12h | 750 | 750 |
| 295 | 1.8.26.5 | Sh-Saddle Welding | 9.5h | 2018-06-19 06:18 | 2018-06-19 15:48 | 294 | 2018-05-28 06:18 | 2018-05-28 15:48 | 9.5h | 22.23d | 0d | TEAM_2Shift_Calendar-1 | Helper [200%]; SMAW Welder [200%] | 28.5h | 1,781.25 | 1,781.25 |
| 296 | 1.8.26.6 | Sh-Saddle Dress Up | 3h | 2018-06-19 15:48 | 2018-06-19 18:48 | 295 | 2018-05-28 15:48 | 2018-05-28 18:48 | 3h | 22.23d |  | TEAM_2Shift_Calendar-1 | Grinder [200%] | 6h | 337.5 | 337.5 |
| 297 | 1.8.27 | **Sh Nde Clearence** | 0.5d | 2018-06-19 18:48 | 2018-06-20 10:48 |  | 2018-05-28 18:48 | 2018-05-29 10:48 | 0.5d | 22.23d |  | TEAM_2Shift_Calendar-1 |  | 16h | 950 | 950 |
| 298 | 1.8.27.1 | Sh-Sh Nde Clearence | 4h | 2018-06-19 18:48 | 2018-06-20 06:48 | 290 | 2018-05-28 18:48 | 2018-05-29 06:48 | 4h | 22.23d | 0d | TEAM_2Shift_Calendar-1 | Helper; Fitter | 8h | 475 | 475 |
| 299 | 1.8.27.2 | TPI Inspection | 4h | 2018-06-20 06:48 | 2018-06-20 10:48 | 298 | 2018-05-29 06:48 | 2018-05-29 10:48 | 4h | 22.23d |  | TEAM_2Shift_Calendar-1 | Helper; Fitter | 8h | 475 | 475 |
| 300 | 1.9 | **Tube Bundle Fabrication** | 30.1d | 2018-07-18 14:30 | 2018-08-27 16:06 |  | 2018-07-18 14:30 | 2018-08-27 16:06 | 30.1d | 0d |  | TEAM_2Shift_Calendar-1 |  | 579.1h | 35,383.75 | 35,383.75 |
| 301 | 1.9.1 | **Tube Bundle Assy** | 1.25d | 2018-07-18 14:30 | 2018-07-19 18:30 |  | 2018-07-18 14:30 | 2018-07-19 18:30 | 1.25d | 0d |  | TEAM_2Shift_Calendar-1 |  | 60h | 3,975 | 3,975 |
| 302 | 1.9.1.1 | Frame Set Up & Tube Sht Set Up | 12h | 2018-07-18 14:30 | 2018-07-19 10:30 | 297, 35 | 2018-07-18 14:30 | 2018-07-19 10:30 | 12h | 0d |  | TEAM_2Shift_Calendar-1 | SMAW Welder; Tube (Cost) [0.1%]; Fitter [200%] | 36h | 2,475 | 2,475 |
| 303 | 1.9.1.2 | Skeleton Assy | 8h | 2018-07-19 10:30 | 2018-07-19 18:30 | 302 | 2018-07-19 10:30 | 2018-07-19 18:30 | 8h | 0d |  | TEAM_2Shift_Calendar-1 | Helper [300%]; Fitter [200%] | 24h | 1,500 | 1,500 |
| 304 | 1.9.2 | **Tube Insert** | 2.53d | 2018-07-19 18:30 | 2018-07-23 11:00 |  | 2018-07-19 18:30 | 2018-07-23 11:00 | 2.53d | 0d |  | TEAM_2Shift_Calendar-1 |  | 83h | 4,946.88 | 4,946.88 |
| 305 | 1.9.2.1 | Tube Insert 50% | 19.75h | 2018-07-19 18:30 | 2018-07-21 06:15 | 301 | 2018-07-19 18:30 | 2018-07-21 06:15 | 19.75h | 0d |  | TEAM_2Shift_Calendar-1 | Helper [400%]; Fitter | 39.5h | 2,345.31 | 2,345.31 |
| 306 | 1.9.2.2 | Seal Rod Insert & Weld | 1h | 2018-07-21 06:15 | 2018-07-21 07:15 | 305 | 2018-07-21 06:15 | 2018-07-21 07:15 | 1h | 0d |  | TEAM_2Shift_Calendar-1 | SMAW Welder; Helper [200%]; Fitter [200%] | 4h | 256.25 | 256.25 |
| 307 | 1.9.2.3 | Tube Insert 50% | 19.75h | 2018-07-21 07:15 | 2018-07-23 11:00 | 306 | 2018-07-21 07:15 | 2018-07-23 11:00 | 19.75h | 0d |  | TEAM_2Shift_Calendar-1 | Helper [400%]; Fitter | 39.5h | 2,345.31 | 2,345.31 |
| 308 | 1.9.3 | **Sealing Strip Fit Up Welding** | 10.5d | 2018-07-23 11:00 | 2018-08-04 19:00 |  | 2018-07-23 11:00 | 2018-08-04 19:00 | 10.5d | 0d |  | TEAM_2Shift_Calendar-1 |  | 13h | 762.5 | 762.5 |
| 309 | 1.9.3.1 | Sealing Strip Fit Up | 5h | 2018-07-23 11:00 | 2018-07-23 16:00 | 304 | 2018-07-23 11:00 | 2018-07-23 16:00 | 5h | 0d |  | TEAM_2Shift_Calendar-1 | Helper; Fitter | 10h | 593.75 | 593.75 |
| 310 | 1.9.3.2 | Seal/Slid Trip Weld Grind | 3h | 2018-07-23 16:00 | 2018-07-23 19:00 | 309 | 2018-07-23 16:00 | 2018-07-23 19:00 | 3h | 0d |  | TEAM_2Shift_Calendar-1 | Grinder | 3h | 168.75 | 168.75 |
| 311 | 1.9.3.3 | Dummy Activity | 10d | 2018-07-23 19:00 | 2018-08-04 19:00 | 310 | 2018-07-23 19:00 | 2018-08-04 19:00 | 10d | 0d |  | TEAM_2Shift_Calendar-1 |  |  |  |  |
| 312 | 1.9.4 | **Tube Bundle Insert** | 15.82d | 2018-08-04 19:00 | 2018-08-27 16:06 |  | 2018-08-04 19:00 | 2018-08-27 16:06 | 15.82d | 0d |  | TEAM_2Shift_Calendar-1 |  | 423.1h | 25,699.38 | 25,699.38 |
| 313 | 1.9.4.1 | Tube Bundle Insert In Shell | 16h | 2018-08-04 19:00 | 2018-08-06 19:00 | 308 | 2018-08-04 19:00 | 2018-08-06 19:00 | 16h | 0d |  | TEAM_2Shift_Calendar-1 | Helper [800%]; Fitter [300%] | 64h | 4,100 | 4,100 |
| 314 | 1.9.4.2 | Tubesheet 1 fitup | 4h | 2018-08-06 19:00 | 2018-08-07 07:00 | 313 | 2018-08-06 19:00 | 2018-08-07 07:00 | 4h | 0d |  | TEAM_2Shift_Calendar-1 | Helper [400%]; Fitter [200%] | 12h | 750 | 750 |
| 315 | 1.9.4.3 | DP CheckFlg CS1 | 1h | 2018-08-07 07:00 | 2018-08-07 08:00 | 314 | 2018-08-07 07:00 | 2018-08-07 08:00 | 1h | 0d |  | TEAM_2Shift_Calendar-1 | Helper; Fitter | 2h | 118.75 | 118.75 |
| 316 | 1.9.4.4 | Tubesheet 2 fixing with tubes | 4h | 2018-08-07 08:00 | 2018-08-07 12:00 | 315 | 2018-08-07 08:00 | 2018-08-07 12:00 | 4h | 0d |  | TEAM_2Shift_Calendar-1 | Helper [600%]; Fitter [300%] | 16h | 1,025 | 1,025 |
| 317 | 1.9.4.5 | Tubesheet 2 fitup | 4h | 2018-08-07 12:00 | 2018-08-07 16:00 | 316 | 2018-08-07 12:00 | 2018-08-07 16:00 | 4h | 0d |  | TEAM_2Shift_Calendar-1 | SMAW Welder; Helper [200%]; Fitter | 12h | 750 | 750 |
| 318 | 1.9.4.6 | DP CheckFlg CS1 | 1h | 2018-08-07 16:00 | 2018-08-07 17:00 | 317 | 2018-08-07 16:00 | 2018-08-07 17:00 | 1h | 0d |  | TEAM_2Shift_Calendar-1 | Helper; Fitter | 2h | 118.75 | 118.75 |
| 319 | 1.9.4.7 | Tubesheet 1 Welding | 7h | 2018-08-07 17:00 | 2018-08-08 08:00 | 318 | 2018-08-07 17:00 | 2018-08-08 08:00 | 7h | 0d |  | TEAM_2Shift_Calendar-1 | Helper [200%]; SMAW Welder | 14h | 831.25 | 831.25 |
| 320 | 1.9.4.8 | Tubesheet 2 Welding | 7h | 2018-08-08 08:00 | 2018-08-08 15:00 | 319 | 2018-08-08 08:00 | 2018-08-08 15:00 | 7h | 0d |  | TEAM_2Shift_Calendar-1 | Helper [200%]; SMAW Welder | 14h | 831.25 | 831.25 |
| 321 | 1.9.4.9 | Sh CS Welding Back ChipFlg1 | 2h | 2018-08-08 15:00 | 2018-08-08 17:00 | 320 | 2018-08-08 15:00 | 2018-08-08 17:00 | 2h | 0d |  | TEAM_2Shift_Calendar-1 | Grinder | 2h | 112.5 | 112.5 |
| 322 | 1.9.4.10 | Tubesheet 1 Tube Welding | 40h | 2018-08-08 17:00 | 2018-08-13 09:00 | 321 | 2018-08-08 17:00 | 2018-08-13 09:00 | 40h | 0d |  | TEAM_2Shift_Calendar-1 | Helper [200%]; SMAW Welder | 80h | 4,750 | 4,750 |
| 323 | 1.9.4.11 | DP CheckFlg1 | 0.1h | 2018-08-13 09:00 | 2018-08-13 09:06 | 322 | 2018-08-13 09:00 | 2018-08-13 09:06 | 0.1h | 0d |  | TEAM_2Shift_Calendar-1 | Grinder | 0.1h | 5.62 | 5.62 |
| 324 | 1.9.4.12 | Tubesheet 1 tube trimming | 23h | 2018-08-13 09:06 | 2018-08-14 16:06 | 323 | 2018-08-13 09:06 | 2018-08-14 16:06 | 23h | 0d |  | TEAM_2Shift_Calendar-1 | Grinder | 23h | 1,293.75 | 1,293.75 |
| 325 | 1.9.4.13 | Tubesheet 2 tube Welding | 40h | 2018-08-14 16:06 | 2018-08-18 08:06 | 324 | 2018-08-14 16:06 | 2018-08-18 08:06 | 40h | 0d |  | TEAM_2Shift_Calendar-1 | Helper [200%]; SMAW Welder | 80h | 4,750 | 4,750 |
| 326 | 1.9.4.14 | DP Check | 2h | 2018-08-18 08:06 | 2018-08-18 10:06 | 325 | 2018-08-18 08:06 | 2018-08-18 10:06 | 2h | 0d |  | TEAM_2Shift_Calendar-1 | Helper; Fitter | 4h | 237.5 | 237.5 |
| 327 | 1.9.4.15 | Tube expansion on both sides- Stage 1 | 11h | 2018-08-18 10:06 | 2018-08-18 21:06 | 326 | 2018-08-18 10:06 | 2018-08-18 21:06 | 11h | 0d |  | TEAM_2Shift_Calendar-1 | Helper [200%]; Fitter [200%] | 33h | 2,062.5 | 2,062.5 |
| 328 | 1.9.4.16 | Tube expansion on both sides- Stage 2 | 11h | 2018-08-18 21:06 | 2018-08-20 16:06 | 327 | 2018-08-18 21:06 | 2018-08-20 16:06 | 11h | 0d |  | TEAM_2Shift_Calendar-1 | Helper [200%]; Fitter [200%] | 33h | 2,062.5 | 2,062.5 |
| 329 | 1.9.4.17 | Tube Exp- Pnuematic Test | 1d | 2018-08-20 16:06 | 2018-08-21 16:06 | 328 | 2018-08-20 16:06 | 2018-08-21 16:06 | 1d | 0d |  | TEAM_2Shift_Calendar-1 | Helper [200%]; Fitter | 32h | 1,900 | 1,900 |
| 330 | 1.9.4.18 | Dummy Activity | 4d | 2018-08-21 16:06 | 2018-08-27 16:06 | 329 | 2018-08-21 16:06 | 2018-08-27 16:06 | 4d | 0d |  | TEAM_2Shift_Calendar-1 |  |  |  |  |

| ID | WBS | Task | Duration | Start | Finish | Predecessors | Baseline start | Baseline finish | Baseline duration | Total slack | Free slack | Calendar | Resources | Work | Cost | Baseline cost |
| --- | --- | --- | --- | --- | --- | --- | --- | --- | --- | --- | --- | --- | --- | --- | --- | --- |
| 331 | 1.10 | **Channel fabrication** | 77.58d | 2018-05-14 17:30 | 2018-08-21 10:45 |  | 2018-05-14 17:30 | 2018-07-27 10:45 | 59.58d | 4.33d |  | TEAM_2Shift_Calendar-1 |  | 557h | 29,660.94 | 29,660.94 |
| 332 | 1.10.1 | **Channel Shell LS Welding** | 0.59d | 2018-05-14 17:30 | 2018-05-15 11:00 |  | 2018-05-14 17:30 | 2018-05-15 11:00 | 0.59d | 64.08d | 0d | TEAM_2Shift_Calendar-1 |  | 15h | 765.62 | 765.62 |
| 333 | 1.10.1.1 | Ch Plate Trasnfer | 2h | 2018-05-14 17:30 | 2018-05-14 19:30 | 2FS+20d | 2018-05-14 17:30 | 2018-05-14 19:30 | 2h | 64.08d | 0d | TEAM_2Shift_Calendar-1 | Forging Non-Std (Cost) [0.1%]; Plate (Cost) [0.1%]; Store | 2h |  |  |
| 334 | 1.10.1.2 | Ch Marking | 1.5h | 2018-05-14 19:30 | 2018-05-14 21:00 | 333 | 2018-05-14 19:30 | 2018-05-14 21:00 | 1.5h | 64.08d | 0d | TEAM_2Shift_Calendar-1 | Helper [200%]; Fitter | 3h | 178.12 | 178.12 |
| 335 | 1.10.1.3 | Ch Cutting | 3h | 2018-05-14 21:00 | 2018-05-15 08:00 | 334 | 2018-05-14 21:00 | 2018-05-15 08:00 | 3h | 64.08d | 0d | TEAM_2Shift_Calendar-1 | Helper; Gas Cutter | 6h | 356.25 | 356.25 |
| 336 | 1.10.1.4 | Ch Pl Side Grinding | 1h | 2018-05-15 08:00 | 2018-05-15 09:00 | 335 | 2018-05-15 08:00 | 2018-05-15 09:00 | 1h | 64.08d | 0d | TEAM_2Shift_Calendar-1 | Grinder | 1h | 56.25 | 56.25 |
| 337 | 1.10.1.5 | Ch Bevelling Cir Side | 1h | 2018-05-15 09:00 | 2018-05-15 10:00 | 336 | 2018-05-15 09:00 | 2018-05-15 10:00 | 1h | 64.08d | 0d | TEAM_2Shift_Calendar-1 | Helper [300%]; Fitter | 2h | 118.75 | 118.75 |
| 338 | 1.10.1.6 | Ch EP Grinding | 1h | 2018-05-15 10:00 | 2018-05-15 11:00 | 337 | 2018-05-15 10:00 | 2018-05-15 11:00 | 1h | 64.08d |  | TEAM_2Shift_Calendar-1 | Grinder | 1h | 56.25 | 56.25 |
| 339 | 1.10.2 | **Channel Sh Rolling** | 0.75d | 2018-05-15 11:00 | 2018-05-16 07:00 |  | 2018-05-15 11:00 | 2018-05-16 07:00 | 0.75d | 64.08d | 0d | TEAM_2Shift_Calendar-1 |  | 35h | 2,218.75 | 2,218.75 |
| 340 | 1.10.2.1 | Ch Pre Bend | 4h | 2018-05-15 11:00 | 2018-05-15 15:00 | 332 | 2018-05-15 11:00 | 2018-05-15 15:00 | 4h | 64.08d | 0d | TEAM_2Shift_Calendar-1 | Helper; Fitter [200%] | 12h | 750 | 750 |
| 341 | 1.10.2.2 | Ch Pre Bend Cut Off | 1h | 2018-05-15 15:00 | 2018-05-15 16:00 | 340 | 2018-05-15 15:00 | 2018-05-15 16:00 | 1h | 64.08d | 0d | TEAM_2Shift_Calendar-1 | Gas Cutter; Fitter [200%] | 3h | 206.25 | 206.25 |
| 342 | 1.10.2.3 | Ch LS Beveling | 1h | 2018-05-15 16:00 | 2018-05-15 17:00 | 341 | 2018-05-15 16:00 | 2018-05-15 17:00 | 1h | 64.08d | 0d | TEAM_2Shift_Calendar-1 | Fitter [200%] | 2h | 137.5 | 137.5 |
| 343 | 1.10.2.4 | Ch Rolling | 6h | 2018-05-15 17:00 | 2018-05-16 07:00 | 342 | 2018-05-15 17:00 | 2018-05-16 07:00 | 6h | 64.08d |  | TEAM_2Shift_Calendar-1 | Helper; Fitter [200%] | 18h | 1,125 | 1,125 |
| 344 | 1.10.3 | **Ch Shell LS Fit Up** | 0.19d | 2018-05-16 07:00 | 2018-05-16 10:00 |  | 2018-05-16 07:00 | 2018-05-16 10:00 | 0.19d | 64.08d | 0d | TEAM_2Shift_Calendar-1 |  | 10h | 650 | 650 |
| 345 | 1.10.3.1 | Ch LS Correction | 1h | 2018-05-16 07:00 | 2018-05-16 08:00 | 339 | 2018-05-16 07:00 | 2018-05-16 08:00 | 1h | 64.08d | 0d | TEAM_2Shift_Calendar-1 | Fitter [200%] | 2h | 137.5 | 137.5 |
| 346 | 1.10.3.2 | Ch LS Fit Up | 2h | 2018-05-16 08:00 | 2018-05-16 10:00 | 345 | 2018-05-16 08:00 | 2018-05-16 10:00 | 2h | 64.08d |  | TEAM_2Shift_Calendar-1 | SMAW Welder; Helper; Fitter [200%] | 8h | 512.5 | 512.5 |
| 347 | 1.10.4 | **Ch Shell LS Welding** | 0.84d | 2018-05-16 10:00 | 2018-05-17 07:30 |  | 2018-05-16 10:00 | 2018-05-17 07:30 | 0.84d | 64.08d | 0d | TEAM_2Shift_Calendar-1 |  | 32.5h | 1,971.88 | 1,971.88 |
| 348 | 1.10.4.1 | Ch LS Weld Arrangement | 1h | 2018-05-16 10:00 | 2018-05-16 11:00 | 344 | 2018-05-16 10:00 | 2018-05-16 11:00 | 1h | 64.08d | 0d | TEAM_2Shift_Calendar-1 | Helper [200%]; Fitter | 2h | 118.75 | 118.75 |
| 349 | 1.10.4.2 | Ch LS Welding- Top Side | 5h | 2018-05-16 11:00 | 2018-05-16 16:00 | 348 | 2018-05-16 11:00 | 2018-05-16 16:00 | 5h | 64.08d | 0d | TEAM_2Shift_Calendar-1 | Helper; SMAW Welder | 10h | 593.75 | 593.75 |
| 350 | 1.10.4.3 | Ch LS Welding- Back Chip | 1h | 2018-05-16 16:00 | 2018-05-16 17:00 | 349 | 2018-05-16 16:00 | 2018-05-16 17:00 | 1h | 64.08d | 0d | TEAM_2Shift_Calendar-1 | Helper; Grinder | 2h | 106.25 | 106.25 |
| 351 | 1.10.4.4 | Ch LS Innner Flush Grind | 0.5h | 2018-05-16 17:00 | 2018-05-16 17:30 | 350 | 2018-05-16 17:00 | 2018-05-16 17:30 | 0.5h | 64.08d | 0d | TEAM_2Shift_Calendar-1 | Grinder | 0.5h | 28.12 | 28.12 |
| 352 | 1.10.4.5 | Ch Re-Rolling | 6h | 2018-05-16 17:30 | 2018-05-17 07:30 | 351 | 2018-05-16 17:30 | 2018-05-17 07:30 | 6h | 64.08d |  | TEAM_2Shift_Calendar-1 | Helper; Fitter [200%] | 18h | 1,125 | 1,125 |
| 353 | 1.10.5 | **Ch LS Welding Radiography** | 2d | 2018-05-17 07:30 | 2018-05-19 07:30 |  | 2018-05-17 07:30 | 2018-05-19 07:30 | 2d | 64.08d | 0d | TEAM_2Shift_Calendar-1 |  | 32h |  |  |
| 354 | 1.10.5.1 | Ch LS Welding Rt | 2d | 2018-05-17 07:30 | 2018-05-19 07:30 | 347 | 2018-05-17 07:30 | 2018-05-19 07:30 | 2d | 64.08d |  | TEAM_2Shift_Calendar-1 | SC Radiography (Work) | 32h |  |  |

| ID | WBS | Task | Type | Duration | Start | Finish | Predecessors | Baseline start | Baseline finish | Baseline duration | Total slack | Free slack | Calendar | Resources | Work | Cost | Baseline cost |
| --- | --- | --- | --- | --- | --- | --- | --- | --- | --- | --- | --- | --- | --- | --- | --- | --- | --- |
| 355 | 1.10.6 | **Ch CS Fit UpFlg1** |  | 60d | 2018-05-19 07:30 | 2018-08-03 07:30 |  | 2018-05-19 07:30 | 2018-07-11 07:30 | 42d | 4.33d | 0d | TEAM_2Shift_Calendar-1 |  | 12h | 768.75 | 768.75 |
| 356 | 1.10.6.1 | Ch Cir EP Correction |  | 1h | 2018-05-19 07:30 | 2018-05-19 08:30 | 353 | 2018-05-19 07:30 | 2018-05-19 08:30 | 1h | 64.08d | 59.75d | TEAM_2Shift_Calendar-1 | Fitter [200%] | 2h | 137.5 | 137.5 |
| 357 | 1.10.6.2 | Ch CS Fit UpFlg1 |  | 2h | 2018-08-02 20:30 | 2018-08-03 06:30 | 356, 3FS+20d | 2018-07-10 20:30 | 2018-07-11 06:30 | 2h | 4.33d | 0d | TEAM_2Shift_Calendar-1 | SMAW Welder; Helper; Fitter [200%] | 8h | 512.5 | 512.5 |
| 358 | 1.10.6.3 | Ch CS Tack DP Check Flg1 |  | 1h | 2018-08-03 06:30 | 2018-08-03 07:30 | 357 | 2018-07-11 06:30 | 2018-07-11 07:30 | 1h | 4.33d |  | TEAM_2Shift_Calendar-1 | Helper; Fitter | 2h | 118.75 | 118.75 |
| 359 | 1.10.7 | **Ch Dish CS WeldingFlg1** |  | 0.5d | 2018-08-03 07:30 | 2018-08-03 15:30 |  | 2018-07-11 07:30 | 2018-07-11 15:30 | 0.5d | 4.33d | 0d | TEAM_2Shift_Calendar-1 |  | 15h | 887.5 | 887.5 |
| 360 | 1.10.7.1 | Ch CS Welding Transfere |  | 2h | 2018-08-03 07:30 | 2018-08-03 09:30 | 355 | 2018-07-11 07:30 | 2018-07-11 09:30 | 2h | 4.33d | 0d | TEAM_2Shift_Calendar-1 | Helper [200%]; Fitter | 4h | 237.5 | 237.5 |
| 361 | 1.10.7.2 | Ch CS Welding OuterFlg1 |  | 5h | 2018-08-03 09:30 | 2018-08-03 14:30 | 360 | 2018-07-11 09:30 | 2018-07-11 14:30 | 5h | 4.33d | 0d | TEAM_2Shift_Calendar-1 | Helper; SMAW Welder | 10h | 593.75 | 593.75 |
| 362 | 1.10.7.3 | Ch CS Welding Back ChipFlg1 |  | 0.5h | 2018-08-03 14:30 | 2018-08-03 15:00 | 361 | 2018-07-11 14:30 | 2018-07-11 15:00 | 0.5h | 4.33d | 0d | TEAM_2Shift_Calendar-1 | Grinder | 0.5h | 28.12 | 28.12 |
| 363 | 1.10.7.4 | Ch CS Flush GrindingFlg1 |  | 0.5h | 2018-08-03 15:00 | 2018-08-03 15:30 | 362 | 2018-07-11 15:00 | 2018-07-11 15:30 | 0.5h | 4.33d |  | TEAM_2Shift_Calendar-1 | Grinder | 0.5h | 28.12 | 28.12 |
| 364 | 1.10.8 | **Ch CS Fit UpFlg2** |  | 0.38d | 2018-08-03 15:30 | 2018-08-03 21:30 |  | 2018-07-11 15:30 | 2018-07-11 21:30 | 0.38d | 4.33d | 0d | TEAM_2Shift_Calendar-1 |  | 15h | 937.5 | 937.5 |
| 365 | 1.10.8.1 | Ch Length Cutting |  | 2h | 2018-08-03 15:30 | 2018-08-03 17:30 | 359 | 2018-07-11 15:30 | 2018-07-11 17:30 | 2h | 4.33d | 0d | TEAM_2Shift_Calendar-1 | Helper; Gas Cutter | 4h | 237.5 | 237.5 |
| 366 | 1.10.8.2 | Ch Cir EP Correction |  | 1h | 2018-08-03 17:30 | 2018-08-03 18:30 | 365 | 2018-07-11 17:30 | 2018-07-11 18:30 | 1h | 4.33d | 0d | TEAM_2Shift_Calendar-1 | Helper; Fitter | 2h | 118.75 | 118.75 |
| 367 | 1.10.8.3 | Ch CS Fit UpFlg2 |  | 2h | 2018-08-03 18:30 | 2018-08-03 20:30 | 366 | 2018-07-11 18:30 | 2018-07-11 20:30 | 2h | 4.33d | 0d | TEAM_2Shift_Calendar-1 | SMAW Welder; Helper; Fitter [200%] | 8h | 512.5 | 512.5 |
| 368 | 1.10.8.4 | Ch CS Tack DP CheckFlg2 |  | 1h | 2018-08-03 20:30 | 2018-08-03 21:30 | 367 | 2018-07-11 20:30 | 2018-07-11 21:30 | 1h | 4.33d |  | TEAM_2Shift_Calendar-1 | Fitter | 1h | 68.75 | 68.75 |
| 369 | 1.10.9 | **Ch CS Flg Welding** |  | 0.5d | 2018-08-03 21:30 | 2018-08-04 13:30 |  | 2018-07-11 21:30 | 2018-07-12 13:30 | 0.5d | 4.33d | 0d | TEAM_2Shift_Calendar-1 |  | 15h | 887.5 | 887.5 |
| 370 | 1.10.9.1 | Ch CS Welding TransfereFlg2 |  | 2h | 2018-08-03 21:30 | 2018-08-04 07:30 | 364 | 2018-07-11 21:30 | 2018-07-12 07:30 | 2h | 4.33d | 0d | TEAM_2Shift_Calendar-1 | Helper [200%]; Fitter | 4h | 237.5 | 237.5 |
| 371 | 1.10.9.2 | Ch CS Welding OuterFlg2 |  | 5h | 2018-08-04 07:30 | 2018-08-04 12:30 | 370, 3FS+20d | 2018-07-12 07:30 | 2018-07-12 12:30 | 5h | 4.33d | 0d | TEAM_2Shift_Calendar-1 | Helper; SMAW Welder | 10h | 593.75 | 593.75 |
| 372 | 1.10.9.3 | Ch CS Welding Back ChipFlg2 |  | 0.5h | 2018-08-04 12:30 | 2018-08-04 13:00 | 371 | 2018-07-12 12:30 | 2018-07-12 13:00 | 0.5h | 4.33d | 0d | TEAM_2Shift_Calendar-1 | Grinder | 0.5h | 28.12 | 28.12 |
| 373 | 1.10.9.4 | Ch CS Flush GrindingFlg2 |  | 0.5h | 2018-08-04 13:00 | 2018-08-04 13:30 | 372 | 2018-07-12 13:00 | 2018-07-12 13:30 | 0.5h | 4.33d |  | TEAM_2Shift_Calendar-1 | Grinder | 0.5h | 28.12 | 28.12 |
| 374 | 1.10.10 | **Ch CS Welding RtFlg1 & 2** |  | 2d | 2018-08-04 13:30 | 2018-08-07 13:30 |  | 2018-07-12 13:30 | 2018-07-16 13:30 | 2d | 4.33d | 0d | TEAM_2Shift_Calendar-1 |  | 32h |  |  |
| 375 | 1.10.10.1 | Ch CS Welding Rt |  | 2d | 2018-08-04 13:30 | 2018-08-07 13:30 | 369 | 2018-07-12 13:30 | 2018-07-16 13:30 | 2d | 4.33d |  | TEAM_2Shift_Calendar-1 | SC Radiography (Work) | 32h |  |  |
| 376 | 1.10.11 | **Channel Nozzel Marking** |  | 0.05d | 2018-08-07 13:30 | 2018-08-07 14:15 |  | 2018-07-16 13:30 | 2018-07-16 14:15 | 0.05d | 4.33d | 0d | TEAM_2Shift_Calendar-1 |  | 1.5h | 89.06 | 89.06 |
| 377 | 1.10.11.1 | Ch Nozzel orientation | milestone | 0d | 2018-08-07 13:30 | 2018-08-07 13:30 | 374 | 2018-07-16 13:30 | 2018-07-16 13:30 | 0d | 4.33d | 0d | TEAM_2Shift_Calendar-1 |  |  |  |  |
| 378 | 1.10.11.2 | Ch Nozzel Marking6"Nb- 2 Nos |  | 0.75h | 2018-08-07 13:30 | 2018-08-07 14:15 | 377 | 2018-07-16 13:30 | 2018-07-16 14:15 | 0.75h | 4.33d |  | TEAM_2Shift_Calendar-1 | Helper; Fitter | 1.5h | 89.06 | 89.06 |

| ID | WBS | Task | Duration | Start | Finish | Predecessors | Baseline start | Baseline finish | Baseline duration | Total slack | Free slack | Calendar | Resources | Work | Cost | Baseline cost |
| --- | --- | --- | --- | --- | --- | --- | --- | --- | --- | --- | --- | --- | --- | --- | --- | --- |
| 379 | 1.10.12 | **Ch Nozzel Opening** | 0.12d | 2018-08-07 14:15 | 2018-08-07 16:15 |  | 2018-07-16 14:15 | 2018-07-16 16:15 | 0.12d | 4.33d | 0d | TEAM_2Shift_Calendar-1 |  | 4h | 237.5 | 237.5 |
| 380 | 1.10.12.1 | Ch Nozzel Openning-TopN4 | 1h | 2018-08-07 14:15 | 2018-08-07 15:15 | 376 | 2018-07-16 14:15 | 2018-07-16 15:15 | 1h | 4.33d | 0d | TEAM_2Shift_Calendar-1 | Helper; Gas Cutter | 2h | 118.75 | 118.75 |
| 381 | 1.10.12.2 | Ch Nozzel Openning-BottomN3 | 1h | 2018-08-07 15:15 | 2018-08-07 16:15 | 380 | 2018-07-16 15:15 | 2018-07-16 16:15 | 1h | 4.33d |  | TEAM_2Shift_Calendar-1 | Helper; Gas Cutter | 2h | 118.75 | 118.75 |
| 382 | 1.10.13 | **Ch Nozzel Open EP** | 0.12d | 2018-08-07 16:15 | 2018-08-07 18:15 |  | 2018-07-16 16:15 | 2018-07-16 18:15 | 0.12d | 4.33d | 0d | TEAM_2Shift_Calendar-1 |  | 4h | 212.5 | 212.5 |
| 383 | 1.10.13.1 | Ch Nozzel EPN4 | 1h | 2018-08-07 16:15 | 2018-08-07 17:15 | 379 | 2018-07-16 16:15 | 2018-07-16 17:15 | 1h | 4.33d | 0d | TEAM_2Shift_Calendar-1 | Helper; Grinder | 2h | 106.25 | 106.25 |
| 384 | 1.10.13.2 | Ch Nozzel EPN3 | 1h | 2018-08-07 17:15 | 2018-08-07 18:15 | 383 | 2018-07-16 17:15 | 2018-07-16 18:15 | 1h | 4.33d |  | TEAM_2Shift_Calendar-1 | Helper; Grinder | 2h | 106.25 | 106.25 |
| 385 | 1.10.14 | **Ch Nozzel Fit Up** | 0.25d | 2018-08-07 18:15 | 2018-08-08 06:15 |  | 2018-07-16 18:15 | 2018-07-17 06:15 | 0.25d | 4.33d | 0d | TEAM_2Shift_Calendar-1 |  | 16h | 1,025 | 1,025 |
| 386 | 1.10.14.1 | Ch Nozzel Fit UpN4 | 2h | 2018-08-07 18:15 | 2018-08-07 20:15 | 382 | 2018-07-16 18:15 | 2018-07-16 20:15 | 2h | 4.33d | 0d | TEAM_2Shift_Calendar-1 | SMAW Welder; Helper; Fitter [200%] | 8h | 512.5 | 512.5 |
| 387 | 1.10.14.2 | Ch Nozzel Fit UpN3 | 2h | 2018-08-07 20:15 | 2018-08-08 06:15 | 386 | 2018-07-16 20:15 | 2018-07-17 06:15 | 2h | 4.33d |  | TEAM_2Shift_Calendar-1 | SMAW Welder; Helper; Fitter [200%] | 8h | 512.5 | 512.5 |
| 388 | 1.10.15 | **Ch Nozzel Fit Up Inspection** | 0.12d | 2018-08-08 06:15 | 2018-08-08 08:15 |  | 2018-07-17 06:15 | 2018-07-17 08:15 | 0.12d | 4.33d | 0d | TEAM_2Shift_Calendar-1 |  | 4h | 237.5 | 237.5 |
| 389 | 1.10.15.1 | Ch Nozzel InspectionN4 | 1h | 2018-08-08 06:15 | 2018-08-08 07:15 | 385 | 2018-07-17 06:15 | 2018-07-17 07:15 | 1h | 4.33d | 0d | TEAM_2Shift_Calendar-1 | Helper; Fitter | 2h | 118.75 | 118.75 |
| 390 | 1.10.15.2 | Ch Nozzel InspectionN3 | 1h | 2018-08-08 07:15 | 2018-08-08 08:15 | 389 | 2018-07-17 07:15 | 2018-07-17 08:15 | 1h | 4.33d |  | TEAM_2Shift_Calendar-1 | Helper; Fitter | 2h | 118.75 | 118.75 |
| 391 | 1.10.16 | **Ch Nozzel Welding** | 0.91d | 2018-08-08 08:15 | 2018-08-09 06:45 |  | 2018-07-17 08:15 | 2018-07-18 06:45 | 0.91d | 4.33d | 0d | TEAM_2Shift_Calendar-1 |  | 28h | 1,609.38 | 1,609.38 |
| 392 | 1.10.16.1 | Ch Nozzel Welding Arrangement | 2h | 2018-08-08 08:15 | 2018-08-08 10:15 | 388 | 2018-07-17 08:15 | 2018-07-17 10:15 | 2h | 4.33d | 0d | TEAM_2Shift_Calendar-1 | Helper [200%]; Fitter | 4h | 237.5 | 237.5 |
| 393 | 1.10.16.2 | Ch Nozzel WeldingN4 | 1.5h | 2018-08-08 10:15 | 2018-08-08 11:45 | 392 | 2018-07-17 10:15 | 2018-07-17 11:45 | 1.5h | 4.33d | 0d | TEAM_2Shift_Calendar-1 | Helper; SMAW Welder | 3h | 178.12 | 178.12 |
| 394 | 1.10.16.3 | Ch Nozzel WeldingN3 | 1.5h | 2018-08-08 11:45 | 2018-08-08 13:15 | 393 | 2018-07-17 11:45 | 2018-07-17 13:15 | 1.5h | 4.33d | 0d | TEAM_2Shift_Calendar-1 | Helper; SMAW Welder | 3h | 178.12 | 178.12 |
| 395 | 1.10.16.4 | Ch Nozzel Root DP Check | 0.5h | 2018-08-08 13:15 | 2018-08-08 13:45 | 394 | 2018-07-17 13:15 | 2018-07-17 13:45 | 0.5h | 4.33d | 0d | TEAM_2Shift_Calendar-1 | Helper; SMAW Welder | 1h | 59.38 | 59.38 |
| 396 | 1.10.16.5 | Rf Pad Fit Up & Nozzle Fit Up | 4h | 2018-08-08 13:45 | 2018-08-08 17:45 | 395 | 2018-07-17 13:45 | 2018-07-17 17:45 | 4h | 4.33d | 0d | TEAM_2Shift_Calendar-1 | Helper; SMAW Welder | 8h | 475 | 475 |
| 397 | 1.10.16.6 | Rf Pad Fit Up Welding | 4h | 2018-08-08 17:45 | 2018-08-08 21:45 | 396 | 2018-07-17 17:45 | 2018-07-17 21:45 | 4h | 4.33d | 0d | TEAM_2Shift_Calendar-1 | Helper; Grinder | 8h | 425 | 425 |
| 398 | 1.10.16.7 | Nozzel Welding Flush Grind12''NB | 1h | 2018-08-08 21:45 | 2018-08-09 06:45 | 397 | 2018-07-17 21:45 | 2018-07-18 06:45 | 1h | 4.33d |  | TEAM_2Shift_Calendar-1 | Grinder | 1h | 56.25 | 56.25 |
| 399 | 1.10.17 | **Channel Pp Plate Fit Up** | 0.88d | 2018-08-09 06:45 | 2018-08-09 20:45 |  | 2018-07-18 06:45 | 2018-07-18 20:45 | 0.88d | 4.33d | 0d | TEAM_2Shift_Calendar-1 |  | 52h | 3,312.5 | 3,312.5 |
| 400 | 1.10.17.1 | Ch Pp Plate Fit Up | 12h | 2018-08-09 06:45 | 2018-08-09 18:45 | 391 | 2018-07-18 06:45 | 2018-07-18 18:45 | 12h | 4.33d | 0d | TEAM_2Shift_Calendar-1 | Helper; SMAW Welder; Fitter [200%] | 48h | 3,075 | 3,075 |
| 401 | 1.10.17.2 | Ch Pp Plate Fit Up Inspection | 2h | 2018-08-09 18:45 | 2018-08-09 20:45 | 400 | 2018-07-18 18:45 | 2018-07-18 20:45 | 2h | 4.33d |  | TEAM_2Shift_Calendar-1 | Helper; Fitter | 4h | 237.5 | 237.5 |
| 402 | 1.10.18 | **Ch Pp Plate Welding** | 7.12d | 2018-08-09 20:45 | 2018-08-21 06:45 |  | 2018-07-18 20:45 | 2018-07-27 06:45 | 7.12d | 4.33d | 0d | TEAM_2Shift_Calendar-1 |  | 228h | 13,487.5 | 13,487.5 |
| 403 | 1.10.18.1 | Ch Pp Plate Welding | 110h | 2018-08-09 20:45 | 2018-08-20 18:45 | 399 | 2018-07-18 20:45 | 2018-07-26 18:45 | 110h | 4.33d | 0d | TEAM_2Shift_Calendar-1 | Helper; SMAW Welder | 220h | 13,062.5 | 13,062.5 |
| 404 | 1.10.18.2 | Ch Pp Plate Face Grinding | 4h | 2018-08-20 18:45 | 2018-08-21 06:45 | 403 | 2018-07-26 18:45 | 2018-07-27 06:45 | 4h | 4.33d |  | TEAM_2Shift_Calendar-1 | Helper; Grinder | 8h | 425 | 425 |

| ID | WBS | Task | Type | Duration | Start | Finish | Predecessors | Baseline start | Baseline finish | Baseline duration | Total slack | Free slack | Calendar | Resources | Work | Cost | Baseline cost |
| --- | --- | --- | --- | --- | --- | --- | --- | --- | --- | --- | --- | --- | --- | --- | --- | --- | --- |
| 405 | 1.10.19 | **Channel Nde & Pwht** |  | 0.25d | 2018-08-21 06:45 | 2018-08-21 10:45 |  | 2018-07-27 06:45 | 2018-07-27 10:45 | 0.25d | 4.33d |  | TEAM_2Shift_Calendar-1 |  | 6h | 362.5 | 362.5 |
| 406 | 1.10.19.1 | Ch All Welding Dressup & DP Check |  | 2h | 2018-08-21 06:45 | 2018-08-21 08:45 | 402 | 2018-07-27 06:45 | 2018-07-27 08:45 | 2h | 4.33d | 0d | TEAM_2Shift_Calendar-1 | Grinder [200%] | 4h | 225 | 225 |
| 407 | 1.10.19.2 | Ch Ch Nde Clearence |  | 2h | 2018-08-21 08:45 | 2018-08-21 10:45 | 406 | 2018-07-27 08:45 | 2018-07-27 10:45 | 2h | 4.33d | 0d | TEAM_2Shift_Calendar-1 | Fitter | 2h | 137.5 | 137.5 |
| 408 | 1.10.19.3 | Channel Nde & Pwht | milestone | 0d | 2018-08-21 10:45 | 2018-08-21 10:45 | 407 | 2018-07-27 10:45 | 2018-07-27 10:45 | 0d | 4.33d |  | TEAM_2Shift_Calendar-1 |  |  |  |  |
| 409 | 1.11 | **Final Testing** |  | 3.12d | 2018-08-27 16:06 | 2018-08-30 18:06 |  | 2018-08-27 16:06 | 2018-08-30 18:06 | 3.12d | 0d |  | TEAM_2Shift_Calendar-1 |  | 170h | 10,750 | 10,750 |
| 410 | 1.11.1 | **Shell Side Hydro** |  | 3.12d | 2018-08-27 16:06 | 2018-08-30 18:06 |  | 2018-08-27 16:06 | 2018-08-30 18:06 | 3.12d | 0d |  | TEAM_2Shift_Calendar-1 |  | 170h | 10,750 | 10,750 |
| 411 | 1.11.1.1 | Shell Side Hydro |  | 12h | 2018-08-27 16:06 | 2018-08-28 12:06 | 297, 312, 331 | 2018-08-27 16:06 | 2018-08-28 12:06 | 12h | 0d |  | TEAM_2Shift_Calendar-1 | Helper [200%]; Fitter [200%] | 36h | 2,250 | 2,250 |
| 412 | 1.11.1.2 | Shell Side TPI Witness |  | 5h | 2018-08-28 12:06 | 2018-08-28 17:06 | 411 | 2018-08-28 12:06 | 2018-08-28 17:06 | 5h | 7.75d | 0d | TEAM_2Shift_Calendar-1 | Fitter [200%] | 10h | 687.5 | 687.5 |
| 413 | 1.11.1.3 | De Watering & Dismantle Of Gland |  | 5h | 2018-08-28 17:06 | 2018-08-29 06:06 | 412 | 2018-08-28 17:06 | 2018-08-29 06:06 | 5h | 7.75d |  | TEAM_2Shift_Calendar-1 | Helper [400%]; Fitter [200%] | 15h | 937.5 | 937.5 |
| 414 | 1.11.1.4 | **Channel Side Hydro** |  | 1.38d | 2018-08-28 12:06 | 2018-08-29 18:06 |  | 2018-08-28 12:06 | 2018-08-29 18:06 | 1.38d | 0d |  | TEAM_2Shift_Calendar-1 |  | 61h | 3,875 | 3,875 |
| 415 | 1.11.1.4.1 | Shell Side Hydro |  | 12h | 2018-08-28 12:06 | 2018-08-29 08:06 | 411 | 2018-08-28 12:06 | 2018-08-29 08:06 | 12h | 0d |  | TEAM_2Shift_Calendar-1 | Helper [200%]; Fitter [200%] | 36h | 2,250 | 2,250 |
| 416 | 1.11.1.4.2 | Shell Side TPI Witness |  | 5h | 2018-08-29 08:06 | 2018-08-29 13:06 | 415 | 2018-08-29 08:06 | 2018-08-29 13:06 | 5h | 0d |  | TEAM_2Shift_Calendar-1 | Fitter [200%] | 10h | 687.5 | 687.5 |
| 417 | 1.11.1.4.3 | De Watering & Dismantle Of Gland |  | 5h | 2018-08-29 13:06 | 2018-08-29 18:06 | 416 | 2018-08-29 13:06 | 2018-08-29 18:06 | 5h | 0d |  | TEAM_2Shift_Calendar-1 | Helper [400%]; Fitter [200%] | 15h | 937.5 | 937.5 |
| 418 | 1.11.1.5 | **Nitrogen Purging** |  | 1d | 2018-08-29 18:06 | 2018-08-30 18:06 |  | 2018-08-29 18:06 | 2018-08-30 18:06 | 1d | 0d |  | TEAM_2Shift_Calendar-1 |  | 48h | 3,000 | 3,000 |
| 419 | 1.11.1.5.1 | Blind & Nitrogen Purging |  | 1d | 2018-08-29 18:06 | 2018-08-30 18:06 | 414 | 2018-08-29 18:06 | 2018-08-30 18:06 | 1d | 0d |  | TEAM_2Shift_Calendar-1 | Helper [400%]; Fitter [200%] | 48h | 3,000 | 3,000 |
| 420 | 1.12 | **Painting & tranportation** |  | 6d | 2018-08-30 18:06 | 2018-09-06 18:06 |  | 2018-08-30 18:06 | 2018-09-28 17:30 | 21.96d | 0d |  | TEAM_2Shift_Calendar-1 |  | 144h |  |  |
| 421 | 1.12.1 | Primer |  | 1d | 2018-08-30 18:06 | 2018-08-31 18:06 | 418 | 2018-08-30 18:06 | 2018-08-31 18:06 | 1d | 0d |  | TEAM_2Shift_Calendar-1 | Painter [300%] | 48h |  |  |
| 422 | 1.12.2 | Top Coat1 |  | 1d | 2018-08-31 18:06 | 2018-09-01 18:06 | 421 | 2018-08-31 18:06 | 2018-09-01 18:06 | 1d | 0d |  | TEAM_2Shift_Calendar-1 | Painter [300%] | 48h |  |  |
| 423 | 1.12.3 | Top Coat2 |  | 1d | 2018-09-05 18:06 | 2018-09-06 18:06 | 424 | 2018-09-05 18:06 | 2018-09-06 18:06 | 1d | 0d |  | TEAM_2Shift_Calendar-1 | Painter [300%] | 48h |  |  |
| 424 | 1.12.4 | Trasnportation |  | 3d | 2018-09-01 18:06 | 2018-09-05 18:06 | 422 | 2018-09-01 18:06 | 2018-09-05 18:06 | 3d | 0d |  | TEAM_2Shift_Calendar-1 |  |  |  |  |
