# 4209 P

Schedule from MS Project, 2018-04-02 to 2018-09-12, 16 hours a day, costs in ₹, A marks actual dates.

## Calendars

- TEAM_Stand_Calendar: Mon-Sat 08:30-12:30, 13:30-17:30; Sun off. Exceptions (off unless hours are given): 2017-01-13 to 2023-08-12 (2nd Sat, recurring), 2017-01-26 to 2036-01-26 (Republic Day, recurring), 2017-01-27 to 2023-08-26 (4th Sat, recurring), 2017-05-01 to 2036-05-01 (May Day, recurring), 2017-08-15 to 2036-08-15 (Independence Day, recurring), 2017-10-02 to 2036-10-02 (Gandhi Jayanti, recurring).
- TEAM_2Shift_Calendar-1: Mon-Sat 06:00-22:00; Sun off. Exceptions (off unless hours are given): 2017-01-13 to 2023-02-11 (2nd Sat, recurring), 2017-01-26 to 2036-01-26 (Republic Day, recurring), 2017-01-27 to 2023-08-26 (4th Sat, recurring), 2017-05-01 to 2036-05-01 (May Day, recurring), 2017-08-15 to 2036-08-15 (Indepdence Day, recurring), 2017-10-02 to 2036-10-02 (Gandhi Jayanti, recurring).

## Resources

| Resource | Rate |
| --- | --- |
| SC (Work) |  |
| SC Radiography (Work) |  |
| Store |  |
| Fitter | 68.75 |
| Helper | 50 |
| Gas Cutter | 68.75 |
| Grinder | 56.25 |
| QC Engineer |  |
| SMAW Welder | 68.75 |
| Driller | 68.75 |
| Lathe Operator | 120 |
| Painter |  |
| Forging Non-Std (Cost) |  |
| Forging Std (Cost) |  |
| Pipe (Cost) |  |
| Plate (Cost) |  |
| Tube (Cost) |  |
| Tube Sheet (Cost) |  |
| Finance |  |
| PMO Support |  |
| PM |  |

## Schedule

| ID | WBS | Task | Duration | Start | Finish | Predecessors | Complete | Remaining | Baseline start | Baseline finish | Baseline duration | Total slack | Free slack | Calendar | Resources | Work | Cost | Baseline cost |
| --- | --- | --- | --- | --- | --- | --- | --- | --- | --- | --- | --- | --- | --- | --- | --- | --- | --- | --- |
| 1 | 1 | **160-EE-0015A** | 61.75d | 2018-04-02 06:00 A | 2018-09-06 12:51 |  | 1% | 61.25d | 2018-04-02 06:00 | 2018-09-06 12:51 | 61.75d | 0d |  |  |  | 3086.93h | 126,493.09 | 126,493.09 |
| 2 | 1.1 | Project start date | 1d | 2018-04-02 06:00 A | 2018-04-02 22:00 A |  | 100% |  | 2018-04-02 06:00 | 2018-04-02 22:00 | 1d |  |  | TEAM_2Shift_Calendar-1 |  |  |  |  |
| 3 | 1.2 | **Dish Forming - Od** | 13d | 2018-06-04 06:00 | 2018-07-06 06:30 |  |  |  | 2018-05-09 06:00 | 2018-06-12 06:30 | 13d | 7.14d | 0d |  |  | 251h | 3,309.38 | 3,309.38 |
| 4 | 1.2.1 | Bar Dish Blank Issuence | 4h | 2018-06-04 06:00 | 2018-06-04 10:00 | 2FS+48d |  |  | 2018-05-09 06:00 | 2018-05-09 10:00 | 4h | 14.31d | 0d | TEAM_2Shift_Calendar-1 | Plate (Cost) [0.1%]; Store | 4h |  |  |
| 5 | 1.2.2 | Bar-Dish Blank Marking10TXOD 695 | 0.5h | 2018-06-04 10:00 | 2018-06-04 10:30 | 4 |  |  | 2018-05-09 10:00 | 2018-05-09 10:30 | 0.5h | 14.31d | 0d | TEAM_2Shift_Calendar-1 | Helper; Fitter | 1h | 59.38 | 59.38 |
| 6 | 1.2.3 | Bar-Dish Blank Marking Inspection | 4h | 2018-06-04 10:30 | 2018-06-04 14:30 | 5 |  |  | 2018-05-09 10:30 | 2018-05-09 14:30 | 4h | 14.31d | 0d | TEAM_2Shift_Calendar-1 | Helper; Fitter | 8h | 475 | 475 |
| 7 | 1.2.4 | Bar-Dish Blank Cutting | 5h | 2018-06-04 14:30 | 2018-06-04 19:30 | 6 |  |  | 2018-05-09 14:30 | 2018-05-09 19:30 | 5h | 14.31d | 0.31d | TEAM_2Shift_Calendar-1 | Helper; Gas Cutter | 10h | 593.75 | 593.75 |
| 8 | 1.2.5 | Bar-Dish Forming | 7d | 2018-06-05 08:30 | 2018-06-21 17:30 | 7 |  |  | 2018-05-10 08:30 | 2018-05-28 17:30 | 7d | 7d | 0d |  | SC (Work) | 112h |  |  |
| 9 | 1.2.6 | Profile Insp | 4h | 2018-06-21 17:30 | 2018-06-21 21:30 | 8 |  |  | 2018-05-28 17:30 | 2018-05-28 21:30 | 4h | 14.19d | 0.19d | TEAM_2Shift_Calendar-1 | Helper; Fitter | 8h | 475 | 475 |
| 10 | 1.2.7 | Heat Treatment Preparation | 1d | 2018-06-22 08:30 | 2018-06-25 17:30 | 9 |  |  | 2018-05-29 08:30 | 2018-05-30 17:30 | 1d | 7d | 0d |  | SC (Work) | 16h |  |  |
| 11 | 1.2.8 | Stress Releiving- Sub Cont | 4d | 2018-06-26 08:30 | 2018-07-04 17:30 | 10 |  |  | 2018-05-31 08:30 | 2018-06-08 17:30 | 4d | 7d | 0d |  | SC (Work) | 64h |  |  |
| 12 | 1.2.9 | Removal Of Spiders | 3h | 2018-07-04 17:30 | 2018-07-04 20:30 | 11 |  |  | 2018-06-08 17:30 | 2018-06-08 20:30 | 3h | 14.26d | 0d | TEAM_2Shift_Calendar-1 | Helper; Fitter | 6h | 356.25 | 356.25 |
| 13 | 1.2.10 | Surface Preparation | 4h | 2018-07-04 20:30 | 2018-07-05 08:30 | 12 |  |  | 2018-06-08 20:30 | 2018-06-11 08:30 | 4h | 14.26d | 0d | TEAM_2Shift_Calendar-1 | Grinder | 4h | 225 | 225 |
| 14 | 1.2.11 | Inspection | 3h | 2018-07-05 08:30 | 2018-07-05 11:30 | 13 |  |  | 2018-06-11 08:30 | 2018-06-11 11:30 | 3h | 14.26d | 0d | TEAM_2Shift_Calendar-1 | Fitter | 3h | 206.25 | 206.25 |
| 15 | 1.2.12 | TPI Inspection | 4h | 2018-07-05 11:30 | 2018-07-05 15:30 | 14 |  |  | 2018-06-11 11:30 | 2018-06-11 15:30 | 4h | 14.26d | 0d | TEAM_2Shift_Calendar-1 | Fitter | 4h | 275 | 275 |
| 16 | 1.2.13 | Sf Marking | 2h | 2018-07-05 15:30 | 2018-07-05 17:30 | 15 |  |  | 2018-06-11 15:30 | 2018-06-11 17:30 | 2h | 14.26d | 0d | TEAM_2Shift_Calendar-1 | Helper; Fitter | 4h | 237.5 | 237.5 |
| 17 | 1.2.14 | Sf Cutting | 2h | 2018-07-05 17:30 | 2018-07-05 19:30 | 16 |  |  | 2018-06-11 17:30 | 2018-06-11 19:30 | 2h | 14.26d | 0d | TEAM_2Shift_Calendar-1 | Helper; Gas Cutter | 4h | 237.5 | 237.5 |
| 18 | 1.2.15 | Sf Gridning & EP | 3h | 2018-07-05 19:30 | 2018-07-06 06:30 | 17 |  |  | 2018-06-11 19:30 | 2018-06-12 06:30 | 3h | 14.26d |  | TEAM_2Shift_Calendar-1 | Grinder | 3h | 168.75 | 168.75 |
| 19 | 1.3 | **Dish Forming - Od** | 13d | 2018-06-04 06:00 | 2018-07-06 06:30 |  |  |  | 2018-05-09 06:00 | 2018-06-12 06:30 | 13d | 24.16d |  |  |  | 251h | 3,309.38 | 3,309.38 |
| 20 | 1.3.1 | Bar Dish Blank Issuence | 4h | 2018-06-04 06:00 | 2018-06-04 10:00 | 2FS+48d |  |  | 2018-05-09 06:00 | 2018-05-09 10:00 | 4h | 48.31d | 0d | TEAM_2Shift_Calendar-1 | Plate (Cost) [0.1%]; Store | 4h |  |  |
| 21 | 1.3.2 | Bar-Dish Blank Marking10TXOD 695 | 0.5h | 2018-06-04 10:00 | 2018-06-04 10:30 | 20 |  |  | 2018-05-09 10:00 | 2018-05-09 10:30 | 0.5h | 48.31d | 0d | TEAM_2Shift_Calendar-1 | Helper; Fitter | 1h | 59.38 | 59.38 |
| 22 | 1.3.3 | Bar-Dish Blank Marking Inspection | 4h | 2018-06-04 10:30 | 2018-06-04 14:30 | 21 |  |  | 2018-05-09 10:30 | 2018-05-09 14:30 | 4h | 48.31d | 0d | TEAM_2Shift_Calendar-1 | Helper; Fitter | 8h | 475 | 475 |
| 23 | 1.3.4 | Bar-Dish Blank Cutting | 5h | 2018-06-04 14:30 | 2018-06-04 19:30 | 22 |  |  | 2018-05-09 14:30 | 2018-05-09 19:30 | 5h | 48.31d | 0.31d | TEAM_2Shift_Calendar-1 | Helper; Gas Cutter | 10h | 593.75 | 593.75 |
| 24 | 1.3.5 | Bar-Dish Forming | 7d | 2018-06-05 08:30 | 2018-06-21 17:30 | 23 |  |  | 2018-05-10 08:30 | 2018-05-28 17:30 | 7d | 24d | 0d |  | SC (Work) | 112h |  |  |
| 25 | 1.3.6 | Profile Insp | 4h | 2018-06-21 17:30 | 2018-06-21 21:30 | 24 |  |  | 2018-05-28 17:30 | 2018-05-28 21:30 | 4h | 48.19d | 0.19d | TEAM_2Shift_Calendar-1 | Helper; Fitter | 8h | 475 | 475 |
| 26 | 1.3.7 | Heat Treatment Preparation | 1d | 2018-06-22 08:30 | 2018-06-25 17:30 | 25 |  |  | 2018-05-29 08:30 | 2018-05-30 17:30 | 1d | 24d | 0d |  | SC (Work) | 16h |  |  |
| 27 | 1.3.8 | Stress Releiving- Sub Cont | 4d | 2018-06-26 08:30 | 2018-07-04 17:30 | 26 |  |  | 2018-05-31 08:30 | 2018-06-08 17:30 | 4d | 24d | 0d |  | SC (Work) | 64h |  |  |
| 28 | 1.3.9 | Removal Of Spiders | 3h | 2018-07-04 17:30 | 2018-07-04 20:30 | 27 |  |  | 2018-06-08 17:30 | 2018-06-08 20:30 | 3h | 48.44d | 0d | TEAM_2Shift_Calendar-1 | Helper; Fitter | 6h | 356.25 | 356.25 |
| 29 | 1.3.10 | Surface Preparation | 4h | 2018-07-04 20:30 | 2018-07-05 08:30 | 28 |  |  | 2018-06-08 20:30 | 2018-06-11 08:30 | 4h | 48.44d | 0d | TEAM_2Shift_Calendar-1 | Grinder | 4h | 225 | 225 |
| 30 | 1.3.11 | Inspection | 3h | 2018-07-05 08:30 | 2018-07-05 11:30 | 29 |  |  | 2018-06-11 08:30 | 2018-06-11 11:30 | 3h | 48.44d | 0d | TEAM_2Shift_Calendar-1 | Fitter | 3h | 206.25 | 206.25 |
| 31 | 1.3.12 | TPI Inspection | 4h | 2018-07-05 11:30 | 2018-07-05 15:30 | 30 |  |  | 2018-06-11 11:30 | 2018-06-11 15:30 | 4h | 48.44d | 0d | TEAM_2Shift_Calendar-1 | Fitter | 4h | 275 | 275 |
| 32 | 1.3.13 | Sf Marking | 2h | 2018-07-05 15:30 | 2018-07-05 17:30 | 31 |  |  | 2018-06-11 15:30 | 2018-06-11 17:30 | 2h | 48.44d | 0d | TEAM_2Shift_Calendar-1 | Helper; Fitter | 4h | 237.5 | 237.5 |
| 33 | 1.3.14 | Sf Cutting | 2h | 2018-07-05 17:30 | 2018-07-05 19:30 | 32 |  |  | 2018-06-11 17:30 | 2018-06-11 19:30 | 2h | 48.44d | 0d | TEAM_2Shift_Calendar-1 | Helper; Gas Cutter | 4h | 237.5 | 237.5 |
| 34 | 1.3.15 | Sf Gridning & EP | 3h | 2018-07-05 19:30 | 2018-07-06 06:30 | 33 |  |  | 2018-06-11 19:30 | 2018-06-12 06:30 | 3h | 48.44d |  | TEAM_2Shift_Calendar-1 | Grinder | 3h | 168.75 | 168.75 |

| ID | WBS | Task | Duration | Start | Finish | Predecessors | Baseline start | Baseline finish | Baseline duration | Total slack | Free slack | Calendar | Resources | Work | Cost | Baseline cost |
| --- | --- | --- | --- | --- | --- | --- | --- | --- | --- | --- | --- | --- | --- | --- | --- | --- |
| 35 | 1.4 | **Tube Sheet** | 13.41d | 2018-06-29 06:00 | 2018-08-01 16:00 |  | 2018-06-29 06:00 | 2018-08-01 16:00 | 13.41d | 0d |  |  |  | 288h | 1,500 | 1,500 |
| 36 | 1.4.1 | **Tube Sheet Machining1 off 2** | 0.5d | 2018-06-29 06:00 | 2018-06-29 17:30 |  | 2018-06-29 06:00 | 2018-06-29 17:30 | 0.5d | 12.95d |  |  |  | 8h |  |  |
| 37 | 1.4.1.1 | Inward Inspection | 6.5h | 2018-06-29 06:00 | 2018-06-29 12:30 | 2FS+68d | 2018-06-29 06:00 | 2018-06-29 12:30 | 6.5h | 25.67d | 0.06d | TEAM_2Shift_Calendar-1 | Tube Sheet (Cost) [0.1%]; QC Engineer | 4h |  |  |
| 38 | 1.4.1.2 | Tube Sheet M/C1/2 | 4h | 2018-06-29 13:30 | 2018-06-29 17:30 | 37 | 2018-06-29 13:30 | 2018-06-29 17:30 | 4h | 12.95d |  |  | SC (Work) | 4h |  |  |
| 39 | 1.4.2 | **Tube Sheet Drilling1 off 2** | 8.06d | 2018-06-29 15:00 | 2018-07-19 16:00 |  | 2018-06-29 15:00 | 2018-07-19 16:00 | 8.06d | 5.03d |  |  |  | 134h | 475 | 475 |
| 40 | 1.4.2.1 | Tube Sheet Drilling1/2 | 7d | 2018-06-29 15:00 | 2018-07-17 15:00 | 46 | 2018-06-29 15:00 | 2018-07-17 15:00 | 7d | 5.03d | 0d |  | SC (Work) | 112h |  |  |
| 41 | 1.4.2.2 | Exp Groove+Welding Groove1/2 | 4h | 2018-07-17 15:00 | 2018-07-18 10:00 | 40 | 2018-07-17 15:00 | 2018-07-18 10:00 | 4h | 5.03d | 0d |  | SC (Work) | 4h |  |  |
| 42 | 1.4.2.3 | Tie Rod, Pulling, Lifting Hole 1/2 | 4h | 2018-07-18 10:00 | 2018-07-18 15:00 | 41 | 2018-07-18 10:00 | 2018-07-18 15:00 | 4h | 5.03d | 0d |  | SC (Work) | 4h |  |  |
| 43 | 1.4.2.4 | Pass Partition Groove M/C1/2 | 6h | 2018-07-18 15:00 | 2018-07-19 12:00 | 42 | 2018-07-18 15:00 | 2018-07-19 12:00 | 6h | 5.03d | 0d |  | SC (Work) | 6h |  |  |
| 44 | 1.4.2.5 | Cleaning ,Go/No Go Check1/2 | 2h | 2018-07-19 12:00 | 2018-07-19 14:00 | 43 | 2018-07-19 12:00 | 2018-07-19 14:00 | 2h | 10.04d | 0d | TEAM_2Shift_Calendar-1 | Helper; Fitter | 4h | 237.5 | 237.5 |
| 45 | 1.4.2.6 | Final Inspection1/2 | 2h | 2018-07-19 14:00 | 2018-07-19 16:00 | 44 | 2018-07-19 14:00 | 2018-07-19 16:00 | 2h | 10.04d |  | TEAM_2Shift_Calendar-1 | Helper; Fitter | 4h | 237.5 | 237.5 |
| 46 | 1.4.3 | **Tube Sheet Machining2 off 2** | 0.34d | 2018-06-29 06:00 | 2018-06-29 15:00 |  | 2018-06-29 06:00 | 2018-06-29 15:00 | 0.34d | 0d |  |  |  | 12h | 550 | 550 |
| 47 | 1.4.3.1 | Inward Inspection | 4h | 2018-06-29 06:00 | 2018-06-29 10:00 | 2FS+68d | 2018-06-29 06:00 | 2018-06-29 10:00 | 4h | 0.03d | 0d | TEAM_2Shift_Calendar-1 | Tube Sheet (Cost) [0.1%]; Fitter [200%] | 8h | 550 | 550 |
| 48 | 1.4.3.2 | Tube Sheet M/C2/2 | 4h | 2018-06-29 10:00 | 2018-06-29 15:00 | 47 | 2018-06-29 10:00 | 2018-06-29 15:00 | 4h | 0.03d |  |  | SC (Work) | 4h |  |  |
| 49 | 1.4.4 | **Tube Sheet Drilling2 off 2** | 13.06d | 2018-06-29 15:00 | 2018-08-01 16:00 |  | 2018-06-29 15:00 | 2018-08-01 16:00 | 13.06d | 0.03d |  |  |  | 134h | 475 | 475 |
| 50 | 1.4.4.1 | Tube Sheet Drilling2/2 | 7d | 2018-06-29 15:00 | 2018-07-17 15:00 | 46 | 2018-06-29 15:00 | 2018-07-17 15:00 | 7d | 0.03d | 0d |  | SC (Work) | 112h |  |  |
| 51 | 1.4.4.2 | Exp Groove+Welding Groove2/2 | 4h | 2018-07-17 15:00 | 2018-07-18 10:00 | 50 | 2018-07-17 15:00 | 2018-07-18 10:00 | 4h | 0.03d | 0d |  | SC (Work) | 4h |  |  |
| 52 | 1.4.4.3 | Tie Rod, Pulling, Lifting Hole2/2 | 4h | 2018-07-18 10:00 | 2018-07-18 15:00 | 51 | 2018-07-18 10:00 | 2018-07-18 15:00 | 4h | 0.03d | 0d |  | SC (Work) | 4h |  |  |
| 53 | 1.4.4.4 | Pass Partition Groove M/C2/2 | 6h | 2018-07-18 15:00 | 2018-07-19 12:00 | 52 | 2018-07-18 15:00 | 2018-07-19 12:00 | 6h | 0.03d | 0d |  | SC (Work) | 6h |  |  |
| 54 | 1.4.4.5 | Cleaning ,Go/No Go Check2/2 | 2h | 2018-07-19 12:00 | 2018-07-19 14:00 | 53 | 2018-07-19 12:00 | 2018-07-19 14:00 | 2h | 0.04d | 0d | TEAM_2Shift_Calendar-1 | Helper; Fitter | 4h | 237.5 | 237.5 |
| 55 | 1.4.4.6 | Final Inspection2/2 | 2h | 2018-07-19 14:00 | 2018-07-19 16:00 | 54 | 2018-07-19 14:00 | 2018-07-19 16:00 | 2h | 0.04d | 0d | TEAM_2Shift_Calendar-1 | Helper; Fitter | 4h | 237.5 | 237.5 |
| 56 | 1.4.4.7 | Dummy Activity | 10d | 2018-07-19 16:00 | 2018-08-01 16:00 | 55 | 2018-07-19 16:00 | 2018-08-01 16:00 | 10d | 0.04d |  | TEAM_2Shift_Calendar-1 |  |  |  |  |
| 57 | 1.5 | **Nozzle Fab** | 3.83d | 2018-06-29 06:00 | 2018-07-03 19:15 |  | 2018-06-29 06:00 | 2018-07-03 19:15 | 3.83d | 50.64d |  | TEAM_2Shift_Calendar-1 |  | 253.5h | 15,020.31 | 15,020.31 |
| 58 | 1.5.1 | **Sh Nozzel Pipe Marking** | 0.44d | 2018-06-29 06:00 | 2018-06-29 13:00 |  | 2018-06-29 06:00 | 2018-06-29 13:00 | 0.44d | 51.19d | 0d | TEAM_2Shift_Calendar-1 |  | 14h | 831.25 | 831.25 |
| 59 | 1.5.1.1 | 16"NB- 2 Nos | 4h | 2018-06-29 06:00 | 2018-06-29 10:00 | 2FS+68d | 2018-06-29 06:00 | 2018-06-29 10:00 | 4h | 51.19d | 0d | TEAM_2Shift_Calendar-1 | Helper; Forging Std (Cost) [0.1%]; Pipe (Cost) [0.1%]; Fitter | 8h | 475 | 475 |
| 60 | 1.5.1.2 | 2" NB Mp Con - 2 Nos | 1h | 2018-06-29 10:00 | 2018-06-29 11:00 | 59 | 2018-06-29 10:00 | 2018-06-29 11:00 | 1h | 51.19d | 0d | TEAM_2Shift_Calendar-1 | Helper; Forging Std (Cost) [0.1%]; Pipe (Cost) [0.1%]; Fitter | 2h | 118.75 | 118.75 |
| 61 | 1.5.1.3 | 1.5" NB Mp Con - 2 Nos | 1h | 2018-06-29 11:00 | 2018-06-29 12:00 | 60 | 2018-06-29 11:00 | 2018-06-29 12:00 | 1h | 51.19d | 0d | TEAM_2Shift_Calendar-1 | Helper; Forging Std (Cost) [0.1%]; Pipe (Cost) [0.1%]; Fitter | 2h | 118.75 | 118.75 |
| 62 | 1.5.1.4 | Inspection | 1h | 2018-06-29 12:00 | 2018-06-29 13:00 | 61 | 2018-06-29 12:00 | 2018-06-29 13:00 | 1h | 51.19d |  | TEAM_2Shift_Calendar-1 | Helper; Fitter | 2h | 118.75 | 118.75 |

| ID | WBS | Task | Duration | Start | Finish | Predecessors | Baseline start | Baseline finish | Baseline duration | Total slack | Free slack | Calendar | Resources | Work | Cost | Baseline cost |
| --- | --- | --- | --- | --- | --- | --- | --- | --- | --- | --- | --- | --- | --- | --- | --- | --- |
| 63 | 1.5.2 | **Sh Nozzel Pipe Cutting** | 0.44d | 2018-06-29 13:00 | 2018-06-29 20:00 |  | 2018-06-29 13:00 | 2018-06-29 20:00 | 0.44d | 51.19d | 0d | TEAM_2Shift_Calendar-1 |  | 14h | 831.25 | 831.25 |
| 64 | 1.5.2.1 | 16"NB- 2 Nos | 4h | 2018-06-29 13:00 | 2018-06-29 17:00 | 58 | 2018-06-29 13:00 | 2018-06-29 17:00 | 4h | 51.19d | 0d | TEAM_2Shift_Calendar-1 | Helper; Gas Cutter | 8h | 475 | 475 |
| 65 | 1.5.2.2 | 2" NB Mp Con - 2 Nos | 1h | 2018-06-29 17:00 | 2018-06-29 18:00 | 64 | 2018-06-29 17:00 | 2018-06-29 18:00 | 1h | 51.19d | 0d | TEAM_2Shift_Calendar-1 | Helper; Gas Cutter | 2h | 118.75 | 118.75 |
| 66 | 1.5.2.3 | 1.5" NB Mp Con - 2 Nos | 1h | 2018-06-29 18:00 | 2018-06-29 19:00 | 65 | 2018-06-29 18:00 | 2018-06-29 19:00 | 1h | 51.19d | 0d | TEAM_2Shift_Calendar-1 | Helper; Gas Cutter | 2h | 118.75 | 118.75 |
| 67 | 1.5.2.4 | Inspection | 1h | 2018-06-29 19:00 | 2018-06-29 20:00 | 66 | 2018-06-29 19:00 | 2018-06-29 20:00 | 1h | 51.19d |  | TEAM_2Shift_Calendar-1 | Helper; Gas Cutter | 2h | 118.75 | 118.75 |
| 68 | 1.5.3 | **Sh Nozzel Pipe EP** | 0.5d | 2018-06-29 20:00 | 2018-06-30 12:00 |  | 2018-06-29 20:00 | 2018-06-30 12:00 | 0.5d | 51.19d | 0d | TEAM_2Shift_Calendar-1 |  | 16h | 950 | 950 |
| 69 | 1.5.3.1 | 16"NB- 2 Nos | 5h | 2018-06-29 20:00 | 2018-06-30 09:00 | 63 | 2018-06-29 20:00 | 2018-06-30 09:00 | 5h | 51.19d | 0d | TEAM_2Shift_Calendar-1 | Helper; Gas Cutter | 10h | 593.75 | 593.75 |
| 70 | 1.5.3.2 | 2" NB Mp Con - 2 Nos | 1h | 2018-06-30 09:00 | 2018-06-30 10:00 | 69 | 2018-06-30 09:00 | 2018-06-30 10:00 | 1h | 51.19d | 0d | TEAM_2Shift_Calendar-1 | Helper; Gas Cutter | 2h | 118.75 | 118.75 |
| 71 | 1.5.3.3 | 1.5" NB Mp Con - 2 Nos | 1h | 2018-06-30 10:00 | 2018-06-30 11:00 | 70 | 2018-06-30 10:00 | 2018-06-30 11:00 | 1h | 51.19d | 0d | TEAM_2Shift_Calendar-1 | Helper; Gas Cutter | 2h | 118.75 | 118.75 |
| 72 | 1.5.3.4 | Inspection | 1h | 2018-06-30 11:00 | 2018-06-30 12:00 | 71 | 2018-06-30 11:00 | 2018-06-30 12:00 | 1h | 51.19d |  | TEAM_2Shift_Calendar-1 | Helper; Gas Cutter | 2h | 118.75 | 118.75 |
| 73 | 1.5.4 | **Sh Noz+Flg Fiitup** | 0.44d | 2018-06-30 12:00 | 2018-06-30 19:00 |  | 2018-06-30 12:00 | 2018-06-30 19:00 | 0.44d | 51.19d | 0d | TEAM_2Shift_Calendar-1 |  | 28h | 1,793.75 | 1,793.75 |
| 74 | 1.5.4.1 | 16"NB- 2 Nos | 4h | 2018-06-30 12:00 | 2018-06-30 16:00 | 68 | 2018-06-30 12:00 | 2018-06-30 16:00 | 4h | 51.19d | 0d | TEAM_2Shift_Calendar-1 | SMAW Welder; Helper; Fitter [200%] | 16h | 1,025 | 1,025 |
| 75 | 1.5.4.2 | 2" NB Mp Con - 2 Nos | 1h | 2018-06-30 16:00 | 2018-06-30 17:00 | 74 | 2018-06-30 16:00 | 2018-06-30 17:00 | 1h | 51.19d | 0d | TEAM_2Shift_Calendar-1 | SMAW Welder; Helper; Fitter [200%] | 4h | 256.25 | 256.25 |
| 76 | 1.5.4.3 | 1.5" NB Mp Con - 2 Nos | 1h | 2018-06-30 17:00 | 2018-06-30 18:00 | 75 | 2018-06-30 17:00 | 2018-06-30 18:00 | 1h | 51.19d | 0d | TEAM_2Shift_Calendar-1 | SMAW Welder; Helper; Fitter [200%] | 4h | 256.25 | 256.25 |
| 77 | 1.5.4.4 | Inspection | 1h | 2018-06-30 18:00 | 2018-06-30 19:00 | 76 | 2018-06-30 18:00 | 2018-06-30 19:00 | 1h | 51.19d |  | TEAM_2Shift_Calendar-1 | SMAW Welder; Helper; Fitter [200%] | 4h | 256.25 | 256.25 |
| 78 | 1.5.5 | **Sh Nozzel Pipe+Flg Welding** | 0.53d | 2018-06-30 19:00 | 2018-07-02 11:30 |  | 2018-06-30 19:00 | 2018-07-02 11:30 | 0.53d | 51.19d | 0d | TEAM_2Shift_Calendar-1 |  | 17h | 1,009.38 | 1,009.38 |
| 79 | 1.5.5.1 | 16"NB- 2 Nos | 4.5h | 2018-06-30 19:00 | 2018-07-02 07:30 | 73 | 2018-06-30 19:00 | 2018-07-02 07:30 | 4.5h | 51.19d | 0d | TEAM_2Shift_Calendar-1 | Helper; SMAW Welder | 9h | 534.38 | 534.38 |
| 80 | 1.5.5.2 | 2" NB Mp Con - 2 Nos | 2h | 2018-07-02 07:30 | 2018-07-02 09:30 | 79 | 2018-07-02 07:30 | 2018-07-02 09:30 | 2h | 51.19d | 0d | TEAM_2Shift_Calendar-1 | Helper; SMAW Welder | 4h | 237.5 | 237.5 |
| 81 | 1.5.5.3 | 1.5" NB Mp Con - 2 Nos | 1h | 2018-07-02 09:30 | 2018-07-02 10:30 | 80 | 2018-07-02 09:30 | 2018-07-02 10:30 | 1h | 51.19d | 0d | TEAM_2Shift_Calendar-1 | Helper; SMAW Welder | 2h | 118.75 | 118.75 |
| 82 | 1.5.5.4 | Inspection | 1h | 2018-07-02 10:30 | 2018-07-02 11:30 | 81 | 2018-07-02 10:30 | 2018-07-02 11:30 | 1h | 51.19d |  | TEAM_2Shift_Calendar-1 | Helper; SMAW Welder | 2h | 118.75 | 118.75 |
| 83 | 1.5.6 | **Sh Nozzel Pipe Profile Marking** | 0.31d | 2018-07-02 11:30 | 2018-07-02 16:30 |  | 2018-07-02 11:30 | 2018-07-02 16:30 | 0.31d | 51.19d | 0d | TEAM_2Shift_Calendar-1 |  | 10h | 593.75 | 593.75 |
| 84 | 1.5.6.1 | 16"NB- 2 Nos | 2h | 2018-07-02 11:30 | 2018-07-02 13:30 | 78 | 2018-07-02 11:30 | 2018-07-02 13:30 | 2h | 51.19d | 0d | TEAM_2Shift_Calendar-1 | Helper; Fitter | 4h | 237.5 | 237.5 |
| 85 | 1.5.6.2 | 2" NB Mp Con - 2 Nos | 1h | 2018-07-02 13:30 | 2018-07-02 14:30 | 84 | 2018-07-02 13:30 | 2018-07-02 14:30 | 1h | 51.19d | 0d | TEAM_2Shift_Calendar-1 | Helper; Fitter | 2h | 118.75 | 118.75 |
| 86 | 1.5.6.3 | 1.5" NB Mp Con - 2 Nos | 1h | 2018-07-02 14:30 | 2018-07-02 15:30 | 85 | 2018-07-02 14:30 | 2018-07-02 15:30 | 1h | 51.19d | 0d | TEAM_2Shift_Calendar-1 | Helper; Fitter | 2h | 118.75 | 118.75 |
| 87 | 1.5.6.4 | Inspection | 1h | 2018-07-02 15:30 | 2018-07-02 16:30 | 86 | 2018-07-02 15:30 | 2018-07-02 16:30 | 1h | 51.19d |  | TEAM_2Shift_Calendar-1 | Helper; Fitter | 2h | 118.75 | 118.75 |

| ID | WBS | Task | Duration | Start | Finish | Predecessors | Baseline start | Baseline finish | Baseline duration | Total slack | Free slack | Calendar | Resources | Work | Cost | Baseline cost |
| --- | --- | --- | --- | --- | --- | --- | --- | --- | --- | --- | --- | --- | --- | --- | --- | --- |
| 88 | 1.5.7 | **Sh Nozzle Pipe Profile Cutting** | 0.31d | 2018-07-02 16:30 | 2018-07-02 21:30 |  | 2018-07-02 16:30 | 2018-07-02 21:30 | 0.31d | 51.19d | 0d | TEAM_2Shift_Calendar-1 |  | 10h | 531.25 | 531.25 |
| 89 | 1.5.7.1 | 16"NB- 2 Nos | 2h | 2018-07-02 16:30 | 2018-07-02 18:30 | 83 | 2018-07-02 16:30 | 2018-07-02 18:30 | 2h | 51.19d | 0d | TEAM_2Shift_Calendar-1 | Helper; Grinder | 4h | 212.5 | 212.5 |
| 90 | 1.5.7.2 | 2" NB Mp Con - 2 Nos | 1h | 2018-07-02 18:30 | 2018-07-02 19:30 | 89 | 2018-07-02 18:30 | 2018-07-02 19:30 | 1h | 51.19d | 0d | TEAM_2Shift_Calendar-1 | Helper; Grinder | 2h | 106.25 | 106.25 |
| 91 | 1.5.7.3 | 1.5" NB Mp Con - 2 Nos | 1h | 2018-07-02 19:30 | 2018-07-02 20:30 | 90 | 2018-07-02 19:30 | 2018-07-02 20:30 | 1h | 51.19d | 0d | TEAM_2Shift_Calendar-1 | Helper; Grinder | 2h | 106.25 | 106.25 |
| 92 | 1.5.7.4 | Inspection | 1h | 2018-07-02 20:30 | 2018-07-02 21:30 | 91 | 2018-07-02 20:30 | 2018-07-02 21:30 | 1h | 51.19d |  | TEAM_2Shift_Calendar-1 | Helper; Grinder | 2h | 106.25 | 106.25 |
| 93 | 1.5.8 | **Sh Nozzle Pipe Profile EP** | 0.31d | 2018-07-02 21:30 | 2018-07-03 10:30 |  | 2018-07-02 21:30 | 2018-07-03 10:30 | 0.31d | 51.19d |  | TEAM_2Shift_Calendar-1 |  | 10h | 531.25 | 531.25 |
| 94 | 1.5.8.1 | 16"NB- 2 Nos | 2h | 2018-07-02 21:30 | 2018-07-03 07:30 | 88 | 2018-07-02 21:30 | 2018-07-03 07:30 | 2h | 51.19d | 0d | TEAM_2Shift_Calendar-1 | Helper; Grinder | 4h | 212.5 | 212.5 |
| 95 | 1.5.8.2 | 2" NB Mp Con - 2 Nos | 1h | 2018-07-03 07:30 | 2018-07-03 08:30 | 94 | 2018-07-03 07:30 | 2018-07-03 08:30 | 1h | 51.19d | 0d | TEAM_2Shift_Calendar-1 | Helper; Grinder | 2h | 106.25 | 106.25 |
| 96 | 1.5.8.3 | 1.5" NB Mp Con - 2 Nos | 1h | 2018-07-03 08:30 | 2018-07-03 09:30 | 95 | 2018-07-03 08:30 | 2018-07-03 09:30 | 1h | 51.19d | 0d | TEAM_2Shift_Calendar-1 | Helper; Grinder | 2h | 106.25 | 106.25 |
| 97 | 1.5.8.4 | Inspection | 1h | 2018-07-03 09:30 | 2018-07-03 10:30 | 96 | 2018-07-03 09:30 | 2018-07-03 10:30 | 1h | 51.19d |  | TEAM_2Shift_Calendar-1 | Helper; Grinder | 2h | 106.25 | 106.25 |
| 98 | 1.5.9 | **Ch Nozzel Pipe Marking** | 0.19d | 2018-06-29 06:00 | 2018-06-29 09:00 |  | 2018-06-29 06:00 | 2018-06-29 09:00 | 0.19d | 50.64d | 0d | TEAM_2Shift_Calendar-1 |  | 6h | 356.25 | 356.25 |
| 99 | 1.5.9.1 | 6"Nb- 2 Nos | 1h | 2018-06-29 06:00 | 2018-06-29 07:00 | 2FS+68d | 2018-06-29 06:00 | 2018-06-29 07:00 | 1h | 50.64d | 0d | TEAM_2Shift_Calendar-1 | Helper; Fitter | 2h | 118.75 | 118.75 |
| 100 | 1.5.9.2 | 2" Mp Con - 4 Nos | 0.5h | 2018-06-29 07:00 | 2018-06-29 07:30 | 99 | 2018-06-29 07:00 | 2018-06-29 07:30 | 0.5h | 50.64d | 0d | TEAM_2Shift_Calendar-1 | Helper; Fitter | 1h | 59.38 | 59.38 |
| 101 | 1.5.9.3 | 1.5" Mp Con - 2 Nos | 0.5h | 2018-06-29 07:30 | 2018-06-29 08:00 | 100 | 2018-06-29 07:30 | 2018-06-29 08:00 | 0.5h | 50.64d | 0d | TEAM_2Shift_Calendar-1 | Helper; Fitter | 1h | 59.38 | 59.38 |
| 102 | 1.5.9.4 | Inspection | 1h | 2018-06-29 08:00 | 2018-06-29 09:00 | 101 | 2018-06-29 08:00 | 2018-06-29 09:00 | 1h | 50.64d |  | TEAM_2Shift_Calendar-1 | Helper; Fitter | 2h | 118.75 | 118.75 |
| 103 | 1.5.10 | **Ch Nozzel Pipe Cutting** | 0.84d | 2018-06-29 09:00 | 2018-06-30 06:30 |  | 2018-06-29 09:00 | 2018-06-30 06:30 | 0.84d | 50.64d | 0d | TEAM_2Shift_Calendar-1 |  | 27h | 1,603.12 | 1,603.12 |
| 104 | 1.5.10.1 | 6"Nb- 2 Nos | 10h | 2018-06-29 09:00 | 2018-06-29 19:00 | 98 | 2018-06-29 09:00 | 2018-06-29 19:00 | 10h | 50.64d | 0d | TEAM_2Shift_Calendar-1 | Helper; Gas Cutter | 20h | 1,187.5 | 1,187.5 |
| 105 | 1.5.10.2 | 2" Mp Con - 4 Nos | 2h | 2018-06-29 19:00 | 2018-06-29 21:00 | 104 | 2018-06-29 19:00 | 2018-06-29 21:00 | 2h | 50.64d | 0d | TEAM_2Shift_Calendar-1 | Helper; Gas Cutter | 4h | 237.5 | 237.5 |
| 106 | 1.5.10.3 | 1.5" Mp Con - 2 Nos | 0.5h | 2018-06-29 21:00 | 2018-06-29 21:30 | 105 | 2018-06-29 21:00 | 2018-06-29 21:30 | 0.5h | 50.64d | 0d | TEAM_2Shift_Calendar-1 | Helper; Gas Cutter | 1h | 59.38 | 59.38 |
| 107 | 1.5.10.4 | Inspection | 1h | 2018-06-29 21:30 | 2018-06-30 06:30 | 106 | 2018-06-29 21:30 | 2018-06-30 06:30 | 1h | 50.64d |  | TEAM_2Shift_Calendar-1 | Helper; Gas Cutter | 2h | 118.75 | 118.75 |
| 108 | 1.5.11 | **Ch Nozzel Pipe EP** | 0.38d | 2018-06-30 06:30 | 2018-06-30 12:30 |  | 2018-06-30 06:30 | 2018-06-30 12:30 | 0.38d | 50.64d | 0d | TEAM_2Shift_Calendar-1 |  | 12h | 637.5 | 637.5 |
| 109 | 1.5.11.1 | 6"Nb- 2 Nos | 2h | 2018-06-30 06:30 | 2018-06-30 08:30 | 103 | 2018-06-30 06:30 | 2018-06-30 08:30 | 2h | 50.64d | 0d | TEAM_2Shift_Calendar-1 | Helper; Grinder | 4h | 212.5 | 212.5 |
| 110 | 1.5.11.2 | 2" Mp Con - 4 Nos | 2h | 2018-06-30 08:30 | 2018-06-30 10:30 | 109 | 2018-06-30 08:30 | 2018-06-30 10:30 | 2h | 50.64d | 0d | TEAM_2Shift_Calendar-1 | Helper; Grinder | 4h | 212.5 | 212.5 |
| 111 | 1.5.11.3 | 1.5" Mp Con - 2 Nos | 1h | 2018-06-30 10:30 | 2018-06-30 11:30 | 110 | 2018-06-30 10:30 | 2018-06-30 11:30 | 1h | 50.64d | 0d | TEAM_2Shift_Calendar-1 | Helper; Grinder | 2h | 106.25 | 106.25 |
| 112 | 1.5.11.4 | Inspection | 1h | 2018-06-30 11:30 | 2018-06-30 12:30 | 111 | 2018-06-30 11:30 | 2018-06-30 12:30 | 1h | 50.64d |  | TEAM_2Shift_Calendar-1 | Helper; Grinder | 2h | 106.25 | 106.25 |

| ID | WBS | Task | Duration | Start | Finish | Predecessors | Baseline start | Baseline finish | Baseline duration | Total slack | Free slack | Calendar | Resources | Work | Cost | Baseline cost |
| --- | --- | --- | --- | --- | --- | --- | --- | --- | --- | --- | --- | --- | --- | --- | --- | --- |
| 113 | 1.5.12 | **Ch Noz+Flg Fit Up** | 0.38d | 2018-06-30 12:30 | 2018-06-30 18:30 |  | 2018-06-30 12:30 | 2018-06-30 18:30 | 0.38d | 50.64d | 0d | TEAM_2Shift_Calendar-1 |  | 24h | 1,537.5 | 1,537.5 |
| 114 | 1.5.12.1 | 6"Nb- 2 Nos | 2h | 2018-06-30 12:30 | 2018-06-30 14:30 | 108 | 2018-06-30 12:30 | 2018-06-30 14:30 | 2h | 50.64d | 0d | TEAM_2Shift_Calendar-1 | SMAW Welder; Helper; Fitter [200%] | 8h | 512.5 | 512.5 |
| 115 | 1.5.12.2 | 2" Mp Con - 4 Nos | 2h | 2018-06-30 14:30 | 2018-06-30 16:30 | 114 | 2018-06-30 14:30 | 2018-06-30 16:30 | 2h | 50.64d | 0d | TEAM_2Shift_Calendar-1 | SMAW Welder; Helper; Fitter [200%] | 8h | 512.5 | 512.5 |
| 116 | 1.5.12.3 | 1.5" Mp Con - 2 Nos | 1h | 2018-06-30 16:30 | 2018-06-30 17:30 | 115 | 2018-06-30 16:30 | 2018-06-30 17:30 | 1h | 50.64d | 0d | TEAM_2Shift_Calendar-1 | SMAW Welder; Helper; Fitter [200%] | 4h | 256.25 | 256.25 |
| 117 | 1.5.12.4 | Inspection | 1h | 2018-06-30 17:30 | 2018-06-30 18:30 | 116 | 2018-06-30 17:30 | 2018-06-30 18:30 | 1h | 50.64d |  | TEAM_2Shift_Calendar-1 | SMAW Welder; Helper; Fitter [200%] | 4h | 256.25 | 256.25 |
| 118 | 1.5.13 | **Ch Nozzel Pipe+Flg Welding** | 0.86d | 2018-06-30 18:30 | 2018-07-02 16:15 |  | 2018-06-30 18:30 | 2018-07-02 16:15 | 0.86d | 50.64d | 0d | TEAM_2Shift_Calendar-1 |  | 27.5h | 1,632.81 | 1,632.81 |
| 119 | 1.5.13.1 | 6"Nb- 2 Nos | 6h | 2018-06-30 18:30 | 2018-07-02 08:30 | 113 | 2018-06-30 18:30 | 2018-07-02 08:30 | 6h | 50.64d | 0d | TEAM_2Shift_Calendar-1 | Helper; SMAW Welder | 12h | 712.5 | 712.5 |
| 120 | 1.5.13.2 | 2" Mp Con - 4 Nos | 6h | 2018-07-02 08:30 | 2018-07-02 14:30 | 119 | 2018-07-02 08:30 | 2018-07-02 14:30 | 6h | 50.64d | 0d | TEAM_2Shift_Calendar-1 | Helper; SMAW Welder | 12h | 712.5 | 712.5 |
| 121 | 1.5.13.3 | 1.5" Mp Con - 2 Nos | 0.75h | 2018-07-02 14:30 | 2018-07-02 15:15 | 120 | 2018-07-02 14:30 | 2018-07-02 15:15 | 0.75h | 50.64d | 0d | TEAM_2Shift_Calendar-1 | Helper; SMAW Welder | 1.5h | 89.06 | 89.06 |
| 122 | 1.5.13.4 | Inspection | 1h | 2018-07-02 15:15 | 2018-07-02 16:15 | 121 | 2018-07-02 15:15 | 2018-07-02 16:15 | 1h | 50.64d |  | TEAM_2Shift_Calendar-1 | Helper; SMAW Welder | 2h | 118.75 | 118.75 |
| 123 | 1.5.14 | **Ch Nozzel Pipe Profile Marking** | 0.44d | 2018-07-02 16:15 | 2018-07-03 07:15 |  | 2018-07-02 16:15 | 2018-07-03 07:15 | 0.44d | 50.64d | 0d | TEAM_2Shift_Calendar-1 |  | 14h | 831.25 | 831.25 |
| 124 | 1.5.14.1 | 6"Nb- 2 Nos | 2h | 2018-07-02 16:15 | 2018-07-02 18:15 | 118 | 2018-07-02 16:15 | 2018-07-02 18:15 | 2h | 50.64d | 0d | TEAM_2Shift_Calendar-1 | Helper; Fitter | 4h | 237.5 | 237.5 |
| 125 | 1.5.14.2 | 2" Mp Con - 4 Nos | 2h | 2018-07-02 18:15 | 2018-07-02 20:15 | 124 | 2018-07-02 18:15 | 2018-07-02 20:15 | 2h | 50.64d | 0d | TEAM_2Shift_Calendar-1 | Helper; Fitter | 4h | 237.5 | 237.5 |
| 126 | 1.5.14.3 | 1.5" Mp Con - 2 Nos | 2h | 2018-07-02 20:15 | 2018-07-03 06:15 | 125 | 2018-07-02 20:15 | 2018-07-03 06:15 | 2h | 50.64d | 0d | TEAM_2Shift_Calendar-1 | Helper; Fitter | 4h | 237.5 | 237.5 |
| 127 | 1.5.14.4 | Inspection | 1h | 2018-07-03 06:15 | 2018-07-03 07:15 | 126 | 2018-07-03 06:15 | 2018-07-03 07:15 | 1h | 50.64d |  | TEAM_2Shift_Calendar-1 | Helper; Fitter | 2h | 118.75 | 118.75 |
| 128 | 1.5.15 | **Ch Nozzle Pipe Profile Cutting** | 0.38d | 2018-07-03 07:15 | 2018-07-03 13:15 |  | 2018-07-03 07:15 | 2018-07-03 13:15 | 0.38d | 50.64d | 0d | TEAM_2Shift_Calendar-1 |  | 12h | 712.5 | 712.5 |
| 129 | 1.5.15.1 | 6"Nb- 2 Nos | 2h | 2018-07-03 07:15 | 2018-07-03 09:15 | 123 | 2018-07-03 07:15 | 2018-07-03 09:15 | 2h | 50.64d | 0d | TEAM_2Shift_Calendar-1 | Helper; Fitter | 4h | 237.5 | 237.5 |
| 130 | 1.5.15.2 | 2" Mp Con - 4 Nos | 2h | 2018-07-03 09:15 | 2018-07-03 11:15 | 129 | 2018-07-03 09:15 | 2018-07-03 11:15 | 2h | 50.64d | 0d | TEAM_2Shift_Calendar-1 | Helper; Fitter | 4h | 237.5 | 237.5 |
| 131 | 1.5.15.3 | 1.5" Mp Con - 2 Nos | 1h | 2018-07-03 11:15 | 2018-07-03 12:15 | 130 | 2018-07-03 11:15 | 2018-07-03 12:15 | 1h | 50.64d | 0d | TEAM_2Shift_Calendar-1 | Helper; Fitter | 2h | 118.75 | 118.75 |
| 132 | 1.5.15.4 | Inspection | 1h | 2018-07-03 12:15 | 2018-07-03 13:15 | 131 | 2018-07-03 12:15 | 2018-07-03 13:15 | 1h | 50.64d |  | TEAM_2Shift_Calendar-1 | Helper; Fitter | 2h | 118.75 | 118.75 |
| 133 | 1.5.16 | **Ch Nozzle Pipe Profile EP** | 0.38d | 2018-07-03 13:15 | 2018-07-03 19:15 |  | 2018-07-03 13:15 | 2018-07-03 19:15 | 0.38d | 50.64d |  | TEAM_2Shift_Calendar-1 |  | 12h | 637.5 | 637.5 |
| 134 | 1.5.16.1 | 6"Nb- 2 Nos | 2h | 2018-07-03 13:15 | 2018-07-03 15:15 | 128 | 2018-07-03 13:15 | 2018-07-03 15:15 | 2h | 50.64d | 0d | TEAM_2Shift_Calendar-1 | Helper; Grinder | 4h | 212.5 | 212.5 |
| 135 | 1.5.16.2 | 2" Mp Con - 4 Nos | 2h | 2018-07-03 15:15 | 2018-07-03 17:15 | 134 | 2018-07-03 15:15 | 2018-07-03 17:15 | 2h | 50.64d | 0d | TEAM_2Shift_Calendar-1 | Helper; Grinder | 4h | 212.5 | 212.5 |
| 136 | 1.5.16.3 | 1.5" Mp Con - 2 Nos | 1h | 2018-07-03 17:15 | 2018-07-03 18:15 | 135 | 2018-07-03 17:15 | 2018-07-03 18:15 | 1h | 50.64d | 0d | TEAM_2Shift_Calendar-1 | Helper; Grinder | 2h | 106.25 | 106.25 |
| 137 | 1.5.16.4 | Inspection | 1h | 2018-07-03 18:15 | 2018-07-03 19:15 | 136 | 2018-07-03 18:15 | 2018-07-03 19:15 | 1h | 50.64d |  | TEAM_2Shift_Calendar-1 | Helper; Grinder | 2h | 106.25 | 106.25 |

| ID | WBS | Task | Duration | Start | Finish | Predecessors | Baseline start | Baseline finish | Baseline duration | Total slack | Free slack | Calendar | Resources | Work | Cost | Baseline cost |
| --- | --- | --- | --- | --- | --- | --- | --- | --- | --- | --- | --- | --- | --- | --- | --- | --- |
| 138 | 1.6 | **Saddle & Other** | 2.26d | 2018-06-29 06:00 | 2018-07-02 10:06 |  | 2018-06-29 06:00 | 2018-07-02 10:06 | 2.26d | 51.81d | 0d | TEAM_2Shift_Calendar-1 |  | 84.53h | 4,903.54 | 4,903.54 |
| 139 | 1.6.1 | **Bottom Saddle Fabrrication** | 0.14d | 2018-06-29 06:00 | 2018-06-29 08:15 |  | 2018-06-29 06:00 | 2018-06-29 08:15 | 0.14d | 51.81d | 0d | TEAM_2Shift_Calendar-1 |  | 3.5h | 148.44 | 148.44 |
| 140 | 1.6.1.1 | Plate Issuence | 1h | 2018-06-29 06:00 | 2018-06-29 07:00 | 2FS+68d | 2018-06-29 06:00 | 2018-06-29 07:00 | 1h | 51.81d | 0d | TEAM_2Shift_Calendar-1 | Plate (Cost) [0.1%]; Store | 1h |  |  |
| 141 | 1.6.1.2 | Base Marking | 0.25h | 2018-06-29 07:00 | 2018-06-29 07:15 | 140 | 2018-06-29 07:00 | 2018-06-29 07:15 | 0.25h | 51.81d | 0d | TEAM_2Shift_Calendar-1 | Helper; Fitter | 0.5h | 29.69 | 29.69 |
| 142 | 1.6.1.3 | Web Pl Marking | 0.5h | 2018-06-29 07:15 | 2018-06-29 07:45 | 141 | 2018-06-29 07:15 | 2018-06-29 07:45 | 0.5h | 51.81d | 0d | TEAM_2Shift_Calendar-1 | Helper; Fitter | 1h | 59.38 | 59.38 |
| 143 | 1.6.1.4 | Ribs Marking | 0.5h | 2018-06-29 07:45 | 2018-06-29 08:15 | 142 | 2018-06-29 07:45 | 2018-06-29 08:15 | 0.5h | 51.81d |  | TEAM_2Shift_Calendar-1 | Helper; Fitter | 1h | 59.38 | 59.38 |
| 144 | 1.6.2 | **Bottom Sadlle Plate Cutting** | 0.2d | 2018-06-29 08:15 | 2018-06-29 11:30 |  | 2018-06-29 08:15 | 2018-06-29 11:30 | 0.2d | 51.81d | 0d | TEAM_2Shift_Calendar-1 |  | 6.5h | 379.69 | 379.69 |
| 145 | 1.6.2.1 | Base Cutting | 0.5h | 2018-06-29 08:15 | 2018-06-29 08:45 | 139 | 2018-06-29 08:15 | 2018-06-29 08:45 | 0.5h | 51.81d | 0d | TEAM_2Shift_Calendar-1 | Helper; Gas Cutter | 1h | 59.38 | 59.38 |
| 146 | 1.6.2.2 | Web Pl Cutting | 0.75h | 2018-06-29 08:45 | 2018-06-29 09:30 | 145 | 2018-06-29 08:45 | 2018-06-29 09:30 | 0.75h | 51.81d | 0d | TEAM_2Shift_Calendar-1 | Helper; Gas Cutter | 1.5h | 89.06 | 89.06 |
| 147 | 1.6.2.3 | Ribs Cutting | 1h | 2018-06-29 09:30 | 2018-06-29 10:30 | 146 | 2018-06-29 09:30 | 2018-06-29 10:30 | 1h | 51.81d | 0d | TEAM_2Shift_Calendar-1 | Helper; Gas Cutter | 2h | 118.75 | 118.75 |
| 148 | 1.6.2.4 | Grinding Of Above | 1h | 2018-06-29 10:30 | 2018-06-29 11:30 | 147 | 2018-06-29 10:30 | 2018-06-29 11:30 | 1h | 51.81d |  | TEAM_2Shift_Calendar-1 | Grinder [200%] | 2h | 112.5 | 112.5 |
| 149 | 1.6.3 | **Saddle Fit Up & Welding** | 1.15d | 2018-06-29 11:30 | 2018-06-30 13:54 |  | 2018-06-29 11:30 | 2018-06-30 13:54 | 1.15d | 51.81d | 0d | TEAM_2Shift_Calendar-1 |  | 54.13h | 3,295.42 | 3,295.42 |
| 150 | 1.6.3.1 | Base + Web Fit Up | 4h | 2018-06-29 11:30 | 2018-06-29 15:30 | 144 | 2018-06-29 11:30 | 2018-06-29 15:30 | 4h | 51.81d | 0d | TEAM_2Shift_Calendar-1 | Helper [200%]; SMAW Welder; Fitter | 13.33h | 816.67 | 816.67 |
| 151 | 1.6.3.2 | Base + Web Welding | 5.4h | 2018-06-29 15:30 | 2018-06-29 20:54 | 150 | 2018-06-29 15:30 | 2018-06-29 20:54 | 5.4h | 51.81d | 0d | TEAM_2Shift_Calendar-1 | Helper; SMAW Welder | 10.8h | 641.25 | 641.25 |
| 152 | 1.6.3.3 | Ribs+Web Fit Up | 4h | 2018-06-29 20:54 | 2018-06-30 08:54 | 151 | 2018-06-29 20:54 | 2018-06-30 08:54 | 4h | 51.81d | 0d | TEAM_2Shift_Calendar-1 | Helper [200%]; SMAW Welder; Fitter | 13.33h | 816.67 | 816.67 |
| 153 | 1.6.3.4 | Ribs+Web Welding | 5h | 2018-06-30 08:54 | 2018-06-30 13:54 | 152 | 2018-06-30 08:54 | 2018-06-30 13:54 | 5h | 51.81d |  | TEAM_2Shift_Calendar-1 | Helper [200%]; SMAW Welder [200%] | 16.67h | 1,020.83 | 1,020.83 |
| 154 | 1.6.4 | **Lifting Lug Pad & RF Pad** | 0.59d | 2018-06-30 13:54 | 2018-07-02 07:24 |  | 2018-06-30 13:54 | 2018-07-02 07:24 | 0.59d | 51.81d | 0d | TEAM_2Shift_Calendar-1 |  | 15h | 771.88 | 771.88 |
| 155 | 1.6.4.1 | Plate Issuence | 2h | 2018-06-30 13:54 | 2018-06-30 15:54 | 149 | 2018-06-30 13:54 | 2018-06-30 15:54 | 2h | 51.81d | 0d | TEAM_2Shift_Calendar-1 | Store | 2h |  |  |
| 156 | 1.6.4.2 | Pad Marking | 2h | 2018-06-30 15:54 | 2018-06-30 17:54 | 155 | 2018-06-30 15:54 | 2018-06-30 17:54 | 2h | 51.81d | 0d | TEAM_2Shift_Calendar-1 | Helper; Fitter | 4h | 237.5 | 237.5 |
| 157 | 1.6.4.3 | Pad Cutting | 2h | 2018-06-30 17:54 | 2018-06-30 19:54 | 156 | 2018-06-30 17:54 | 2018-06-30 19:54 | 2h | 51.81d | 0d | TEAM_2Shift_Calendar-1 | Helper; Gas Cutter | 4h | 237.5 | 237.5 |
| 158 | 1.6.4.4 | Pad Grinding | 1.5h | 2018-06-30 19:54 | 2018-06-30 21:24 | 157 | 2018-06-30 19:54 | 2018-06-30 21:24 | 1.5h | 51.81d | 0d | TEAM_2Shift_Calendar-1 | Helper; Grinder | 3h | 159.38 | 159.38 |
| 159 | 1.6.4.5 | Pad Drilling | 2h | 2018-06-30 21:24 | 2018-07-02 07:24 | 158 | 2018-06-30 21:24 | 2018-07-02 07:24 | 2h | 51.81d |  | TEAM_2Shift_Calendar-1 | Driller | 2h | 137.5 | 137.5 |
| 160 | 1.6.5 | **Lifting Lug Preparation** | 0.17d | 2018-07-02 07:24 | 2018-07-02 10:06 |  | 2018-07-02 07:24 | 2018-07-02 10:06 | 0.17d | 51.81d |  | TEAM_2Shift_Calendar-1 |  | 5.4h | 308.12 | 308.12 |
| 161 | 1.6.5.1 | Lifting Lugs Marking | 0.2h | 2018-07-02 07:24 | 2018-07-02 07:36 | 154 | 2018-07-02 07:24 | 2018-07-02 07:36 | 0.2h | 51.81d | 0d | TEAM_2Shift_Calendar-1 | Helper; Fitter | 0.4h | 23.75 | 23.75 |
| 162 | 1.6.5.2 | Lifting Lugs Cutting | 0.5h | 2018-07-02 07:36 | 2018-07-02 08:06 | 161 | 2018-07-02 07:36 | 2018-07-02 08:06 | 0.5h | 51.81d | 0d | TEAM_2Shift_Calendar-1 | Helper; Gas Cutter | 1h | 59.38 | 59.38 |
| 163 | 1.6.5.3 | Lifting Lugs Grinding | 1h | 2018-07-02 08:06 | 2018-07-02 09:06 | 162 | 2018-07-02 08:06 | 2018-07-02 09:06 | 1h | 51.81d | 0d | TEAM_2Shift_Calendar-1 | Helper; Grinder | 2h | 106.25 | 106.25 |
| 164 | 1.6.5.4 | Lifting Lug Drilling | 1h | 2018-07-02 09:06 | 2018-07-02 10:06 | 163 | 2018-07-02 09:06 | 2018-07-02 10:06 | 1h | 51.81d |  | TEAM_2Shift_Calendar-1 | Helper; Fitter | 2h | 118.75 | 118.75 |

| ID | WBS | Task | Duration | Start | Finish | Predecessors | Baseline start | Baseline finish | Baseline duration | Total slack | Free slack | Calendar | Resources | Work | Cost | Baseline cost |
| --- | --- | --- | --- | --- | --- | --- | --- | --- | --- | --- | --- | --- | --- | --- | --- | --- |
| 165 | 1.7 | **Channel Cover Handle Prepataion** | 0.41d | 2018-07-02 10:06 | 2018-07-02 16:36 |  | 2018-07-02 10:06 | 2018-07-02 16:36 | 0.41d | 51.81d |  | TEAM_2Shift_Calendar-1 |  | 13h | 771.88 | 771.88 |
| 166 | 1.7.1 | **Insulation Ring Prparation** | 0.41d | 2018-07-02 10:06 | 2018-07-02 16:36 |  | 2018-07-02 10:06 | 2018-07-02 16:36 | 0.41d | 51.81d |  | TEAM_2Shift_Calendar-1 |  | 13h | 771.88 | 771.88 |
| 167 | 1.7.1.1 | Insulaion Ring Marking | 2h | 2018-07-02 10:06 | 2018-07-02 12:06 | 138 | 2018-07-02 10:06 | 2018-07-02 12:06 | 2h | 51.81d | 0d | TEAM_2Shift_Calendar-1 | Helper; Forging Std (Cost) [0.1%]; Plate (Cost) [0.1%]; Fitter | 4h | 237.5 | 237.5 |
| 168 | 1.7.1.2 | Insulaion Ring Cutting | 1h | 2018-07-02 12:06 | 2018-07-02 13:06 | 167 | 2018-07-02 12:06 | 2018-07-02 13:06 | 1h | 51.81d | 0d | TEAM_2Shift_Calendar-1 | Helper; Gas Cutter | 2h | 118.75 | 118.75 |
| 169 | 1.7.1.3 | Insulaion Ring Hole Marking | 1.5h | 2018-07-02 13:06 | 2018-07-02 14:36 | 168 | 2018-07-02 13:06 | 2018-07-02 14:36 | 1.5h | 51.81d | 0d | TEAM_2Shift_Calendar-1 | Helper; Fitter | 3h | 178.12 | 178.12 |
| 170 | 1.7.1.4 | Insulaion Ring Hole Drilling | 2h | 2018-07-02 14:36 | 2018-07-02 16:36 | 169 | 2018-07-02 14:36 | 2018-07-02 16:36 | 2h | 51.81d |  | TEAM_2Shift_Calendar-1 | Helper; Fitter | 4h | 237.5 | 237.5 |
| 171 | 1.8 | **Baffle & Tb Items Fab** | 9d | 2018-06-04 06:00 | 2018-06-26 21:30 |  | 2018-05-17 06:00 | 2018-06-07 21:30 | 9d | 14.09d |  |  |  | 199h | 4,972.5 | 4,972.5 |
| 172 | 1.8.1 | **Baffle Preparation** | 0.58d | 2018-06-04 06:00 | 2018-06-04 15:15 |  | 2018-05-17 06:00 | 2018-05-17 15:15 | 0.58d | 28.25d | 0d | TEAM_2Shift_Calendar-1 |  | 14.5h | 623.44 | 623.44 |
| 173 | 1.8.1.1 | Baffle Plate Transfer | 4h | 2018-06-04 06:00 | 2018-06-04 10:00 | 2FS+48d | 2018-05-17 06:00 | 2018-05-17 10:00 | 4h | 28.25d | 0d | TEAM_2Shift_Calendar-1 | Plate (Cost) [0.1%]; Store | 4h |  |  |
| 174 | 1.8.1.2 | Baffle Marking | 2h | 2018-06-04 10:00 | 2018-06-04 12:00 | 173 | 2018-05-17 10:00 | 2018-05-17 12:00 | 2h | 28.25d | 0d | TEAM_2Shift_Calendar-1 | Helper; Fitter | 4h | 237.5 | 237.5 |
| 175 | 1.8.1.3 | Baffle Profile Cutting | 3.25h | 2018-06-04 12:00 | 2018-06-04 15:15 | 174 | 2018-05-17 12:00 | 2018-05-17 15:15 | 3.25h | 28.25d |  | TEAM_2Shift_Calendar-1 | Helper; Gas Cutter | 6.5h | 385.94 | 385.94 |
| 176 | 1.8.2 | **Baffle Bend Removal & Stacking** | 0.33d | 2018-06-04 15:15 | 2018-06-04 20:30 |  | 2018-05-17 15:15 | 2018-05-17 20:30 | 0.33d | 28.25d | 0.25d | TEAM_2Shift_Calendar-1 |  | 13h | 748.44 | 748.44 |
| 177 | 1.8.2.1 | Baffle Pl Bend Removal | 5h | 2018-06-04 15:15 | 2018-06-04 20:15 | 172 | 2018-05-17 15:15 | 2018-05-17 20:15 | 5h | 28.25d | 0d | TEAM_2Shift_Calendar-1 | Helper [200%]; Fitter | 12.5h | 718.75 | 718.75 |
| 178 | 1.8.2.2 | Baffle Pl StackingPer 100mm | 0.25h | 2018-06-04 20:15 | 2018-06-04 20:30 | 177 | 2018-05-17 20:15 | 2018-05-17 20:30 | 0.25h | 28.25d |  | TEAM_2Shift_Calendar-1 | Helper; Fitter | 0.5h | 29.69 | 29.69 |
| 179 | 1.8.3 | **Baffle Drilling** | 7d | 2018-06-05 08:30 | 2018-06-21 17:30 |  | 2018-05-18 08:30 | 2018-06-04 17:30 | 7d | 14d | 0d |  |  | 112h |  |  |
| 180 | 1.8.3.1 | Baffle Drilling | 7d | 2018-06-05 08:30 | 2018-06-21 17:30 | 176 | 2018-05-18 08:30 | 2018-06-04 17:30 | 7d | 14d |  |  | SC (Work) | 112h |  |  |
| 181 | 1.8.4 | **Baffle De Stacking & Chamfering** | 0.45d | 2018-06-21 17:30 | 2018-06-22 08:45 |  | 2018-06-04 17:30 | 2018-06-05 08:45 | 0.45d | 28.32d | 0d | TEAM_2Shift_Calendar-1 |  | 7.5h | 510.94 | 510.94 |
| 182 | 1.8.4.1 | Baffle De Stacking | 0.25h | 2018-06-21 17:30 | 2018-06-21 17:45 | 179 | 2018-06-04 17:30 | 2018-06-04 17:45 | 0.25h | 28.32d | 0d | TEAM_2Shift_Calendar-1 | Helper; Fitter | 0.5h | 29.69 | 29.69 |
| 183 | 1.8.4.2 | Baffle Chamfering (70% of TS Holes*No of Baffles) | 7h | 2018-06-21 17:45 | 2018-06-22 08:45 | 182 | 2018-06-04 17:45 | 2018-06-05 08:45 | 7h | 28.32d |  | TEAM_2Shift_Calendar-1 | Fitter | 7h | 481.25 | 481.25 |
| 184 | 1.8.5 | **Baffle Stacking & Thro Hole Check** | 0.95d | 2018-06-22 08:45 | 2018-06-25 17:00 |  | 2018-06-05 08:45 | 2018-06-06 17:00 | 0.95d | 14.26d | 0d |  |  | 23.5h | 717.19 | 717.19 |
| 185 | 1.8.5.1 | Stacking | 2h | 2018-06-22 08:45 | 2018-06-22 10:45 | 181 | 2018-06-05 08:45 | 2018-06-05 10:45 | 2h | 28.32d | 0d | TEAM_2Shift_Calendar-1 | Helper; Fitter | 4h | 237.5 | 237.5 |
| 186 | 1.8.5.2 | Baffle Hole Alingment | 0.25h | 2018-06-22 10:45 | 2018-06-22 11:00 | 185 | 2018-06-05 10:45 | 2018-06-05 11:00 | 0.25h | 28.32d | 0d | TEAM_2Shift_Calendar-1 | Helper; Fitter | 0.5h | 29.69 | 29.69 |
| 187 | 1.8.5.3 | Baffle Hole Re Drill (Use 40% of Holes in Qty) | 7h | 2018-06-22 11:00 | 2018-06-25 10:00 | 186 | 2018-06-05 11:00 | 2018-06-06 10:00 | 7h | 14.26d | 0d |  | SC (Work) | 7h |  |  |
| 188 | 1.8.5.4 | Baffle Od Machining (100mm L * 700Ø = 3hrs) | 3h | 2018-06-25 10:00 | 2018-06-25 14:00 | 187 | 2018-06-06 10:00 | 2018-06-06 14:00 | 3h | 14.26d | 0d |  | SC (Work) | 3h |  |  |
| 189 | 1.8.5.5 | Baffle Cleaning(100mm L * 700Ø = 3hrs) | 3h | 2018-06-25 14:00 | 2018-06-25 17:00 | 188 | 2018-06-06 14:00 | 2018-06-06 17:00 | 3h | 28.7d |  | TEAM_2Shift_Calendar-1 | Helper [300%] | 9h | 450 | 450 |

| ID | WBS | Task | Duration | Start | Finish | Predecessors | Baseline start | Baseline finish | Baseline duration | Total slack | Free slack | Calendar | Resources | Work | Cost | Baseline cost |
| --- | --- | --- | --- | --- | --- | --- | --- | --- | --- | --- | --- | --- | --- | --- | --- | --- |
| 190 | 1.8.6 | **Tie Rod Preparation** | 0.94d | 2018-06-25 17:00 | 2018-06-26 16:00 |  | 2018-06-06 17:00 | 2018-06-07 16:00 | 0.94d | 28.7d | 0d | TEAM_2Shift_Calendar-1 |  | 19h | 1,745 | 1,745 |
| 191 | 1.8.6.1 | Tie Rod Matl Transfere | 1h | 2018-06-25 17:00 | 2018-06-25 18:00 | 184 | 2018-06-06 17:00 | 2018-06-06 18:00 | 1h | 28.7d | 0d | TEAM_2Shift_Calendar-1 | Store | 1h |  |  |
| 192 | 1.8.6.2 | Rod Cutting | 2h | 2018-06-25 18:00 | 2018-06-25 20:00 | 191 | 2018-06-06 18:00 | 2018-06-06 20:00 | 2h | 28.7d | 0d | TEAM_2Shift_Calendar-1 | Helper; Fitter | 4h | 237.5 | 237.5 |
| 193 | 1.8.6.3 | Thread Machining. | 11h | 2018-06-25 20:00 | 2018-06-26 15:00 | 192 | 2018-06-06 20:00 | 2018-06-07 15:00 | 11h | 28.7d | 0d | TEAM_2Shift_Calendar-1 | Lathe Operator | 11h | 1,320 | 1,320 |
| 194 | 1.8.6.4 | Joining | 1h | 2018-06-26 15:00 | 2018-06-26 16:00 | 193 | 2018-06-07 15:00 | 2018-06-07 16:00 | 1h | 28.7d |  | TEAM_2Shift_Calendar-1 | Fitter; Helper; SMAW Welder | 3h | 187.5 | 187.5 |
| 195 | 1.8.7 | **Spacer Tube Preparation** | 0.34d | 2018-06-26 16:00 | 2018-06-26 21:30 |  | 2018-06-07 16:00 | 2018-06-07 21:30 | 0.34d | 28.7d |  | TEAM_2Shift_Calendar-1 |  | 9.5h | 627.5 | 627.5 |
| 196 | 1.8.7.1 | Spacer Tube Transfere | 0.5h | 2018-06-26 16:00 | 2018-06-26 16:30 | 190 | 2018-06-07 16:00 | 2018-06-07 16:30 | 0.5h | 28.7d | 0d | TEAM_2Shift_Calendar-1 | Store | 0.5h |  |  |
| 197 | 1.8.7.2 | Length Cutting42 Nos | 2h | 2018-06-26 16:30 | 2018-06-26 18:30 | 196 | 2018-06-07 16:30 | 2018-06-07 18:30 | 2h | 28.7d | 0d | TEAM_2Shift_Calendar-1 | Helper; Fitter | 4h | 237.5 | 237.5 |
| 198 | 1.8.7.3 | Length Machining | 2h | 2018-06-26 18:30 | 2018-06-26 20:30 | 197 | 2018-06-07 18:30 | 2018-06-07 20:30 | 2h | 28.7d | 0d | TEAM_2Shift_Calendar-1 | Lathe Operator | 2h | 240 | 240 |
| 199 | 1.8.7.4 | Cleaninng | 1h | 2018-06-26 20:30 | 2018-06-26 21:30 | 198 | 2018-06-07 20:30 | 2018-06-07 21:30 | 1h | 28.7d |  | TEAM_2Shift_Calendar-1 | Helper [300%] | 3h | 150 | 150 |
| 200 | 1.9 | **Shell Fabrication** | 5.79d | 2018-06-04 06:00 | 2018-06-11 18:41 |  | 2018-05-15 06:00 | 2018-05-21 18:41 | 5.79d | 43.59d | 43.55d | TEAM_2Shift_Calendar-1 |  | 208.75h | 11,710.52 | 11,710.52 |
| 201 | 1.9.1 | **Shell Marking & Cutting** | 0.17d | 2018-06-04 06:00 | 2018-06-04 08:45 |  | 2018-05-15 06:00 | 2018-05-15 08:45 | 0.17d | 43.59d | 0d | TEAM_2Shift_Calendar-1 |  | 3.88h | 107.81 | 107.81 |
| 202 | 1.9.1.1 | Sh Plate Trnasfer | 2h | 2018-06-04 06:00 | 2018-06-04 08:00 | 2FS+48d | 2018-05-15 06:00 | 2018-05-15 08:00 | 2h | 43.59d | 0d | TEAM_2Shift_Calendar-1 | Plate (Cost) [0.1%]; Store | 2h |  |  |
| 203 | 1.9.1.2 | Sh-Marking | 0.75h | 2018-06-04 08:00 | 2018-06-04 08:45 | 202 | 2018-05-15 08:00 | 2018-05-15 08:45 | 0.75h | 43.59d |  | TEAM_2Shift_Calendar-1 | Helper [200%]; Fitter | 1.88h | 107.81 | 107.81 |
| 204 | 1.9.2 | **Shell Plate Cutting** | 0.09d | 2018-06-04 08:45 | 2018-06-04 10:15 |  | 2018-05-15 08:45 | 2018-05-15 10:15 | 0.09d | 43.59d | 0d | TEAM_2Shift_Calendar-1 |  | 3.75h | 215.62 | 215.62 |
| 205 | 1.9.2.1 | Sh-Cutting | 1.5h | 2018-06-04 08:45 | 2018-06-04 10:15 | 201 | 2018-05-15 08:45 | 2018-05-15 10:15 | 1.5h | 43.59d |  | TEAM_2Shift_Calendar-1 | Helper [200%]; Gas Cutter | 3.75h | 215.62 | 215.62 |
| 206 | 1.9.3 | **Sh Pl Side Grinding** | 0.06d | 2018-06-04 10:15 | 2018-06-04 11:15 |  | 2018-05-15 10:15 | 2018-05-15 11:15 | 0.06d | 43.59d | 0d | TEAM_2Shift_Calendar-1 |  | 3h | 168.75 | 168.75 |
| 207 | 1.9.3.1 | Sh Pl Side Bevel Cutting | 1h | 2018-06-04 10:15 | 2018-06-04 11:15 | 204 | 2018-05-15 10:15 | 2018-05-15 11:15 | 1h | 43.59d |  | TEAM_2Shift_Calendar-1 | Helper [300%]; Fitter | 3h | 168.75 | 168.75 |
| 208 | 1.9.4 | **Shell Plate Edge Preparation** | 0.03d | 2018-06-04 11:15 | 2018-06-04 11:45 |  | 2018-05-15 11:15 | 2018-05-15 11:45 | 0.03d | 43.59d | 0d | TEAM_2Shift_Calendar-1 |  | 1h | 53.12 | 53.12 |
| 209 | 1.9.4.1 | Sh-Bevel Grinding | 0.5h | 2018-06-04 11:15 | 2018-06-04 11:45 | 206 | 2018-05-15 11:15 | 2018-05-15 11:45 | 0.5h | 43.59d |  | TEAM_2Shift_Calendar-1 | Helper; Grinder | 1h | 53.12 | 53.12 |
| 210 | 1.9.5 | **Shell Pre Bending** | 0.12d | 2018-06-04 11:45 | 2018-06-04 13:45 |  | 2018-05-15 11:45 | 2018-05-15 13:45 | 0.12d | 43.59d | 0d | TEAM_2Shift_Calendar-1 |  | 6h | 375 | 375 |
| 211 | 1.9.5.1 | Sh-Pre Bend | 2h | 2018-06-04 11:45 | 2018-06-04 13:45 | 208 | 2018-05-15 11:45 | 2018-05-15 13:45 | 2h | 43.59d |  | TEAM_2Shift_Calendar-1 | Helper; Fitter [200%] | 6h | 375 | 375 |
| 212 | 1.9.6 | **Shell Pl Pre Bend Cut Off** | 0.01d | 2018-06-04 13:45 | 2018-06-04 13:55 |  | 2018-05-15 13:45 | 2018-05-15 13:55 | 0.01d | 43.59d | 0d | TEAM_2Shift_Calendar-1 |  | 0.68h | 43.56 | 43.56 |
| 213 | 1.9.6.1 | Sh-Pre Bend Cut Off | 0.17h | 2018-06-04 13:45 | 2018-06-04 13:55 | 210 | 2018-05-15 13:45 | 2018-05-15 13:55 | 0.17h | 43.59d |  | TEAM_2Shift_Calendar-1 | Helper; Gas Cutter; Fitter [200%] | 0.68h | 43.56 | 43.56 |

| ID | WBS | Task | Duration | Start | Finish | Predecessors | Baseline start | Baseline finish | Baseline duration | Total slack | Free slack | Calendar | Resources | Work | Cost | Baseline cost |
| --- | --- | --- | --- | --- | --- | --- | --- | --- | --- | --- | --- | --- | --- | --- | --- | --- |
| 214 | 1.9.7 | **Shell Plate LS EP** | 0.06d | 2018-06-04 13:55 | 2018-06-04 14:55 |  | 2018-05-15 13:55 | 2018-05-15 14:55 | 0.06d | 43.59d | 0d | TEAM_2Shift_Calendar-1 |  | 2h | 118.75 | 118.75 |
| 215 | 1.9.7.1 | Sh-Pre Bend LS EP | 1h | 2018-06-04 13:55 | 2018-06-04 14:55 | 212 | 2018-05-15 13:55 | 2018-05-15 14:55 | 1h | 43.59d |  | TEAM_2Shift_Calendar-1 | Helper; Fitter | 2h | 118.75 | 118.75 |
| 216 | 1.9.8 | **Shell Rolling** | 0.12d | 2018-06-04 14:55 | 2018-06-04 16:55 |  | 2018-05-15 14:55 | 2018-05-15 16:55 | 0.12d | 43.59d | 0d | TEAM_2Shift_Calendar-1 |  | 6h | 375 | 375 |
| 217 | 1.9.8.1 | Sh-Rolling1/4 | 2h | 2018-06-04 14:55 | 2018-06-04 16:55 | 214 | 2018-05-15 14:55 | 2018-05-15 16:55 | 2h | 43.59d |  | TEAM_2Shift_Calendar-1 | Helper; Fitter [200%] | 6h | 375 | 375 |
| 218 | 1.9.9 | **Shell Cir Length & EP Correction** | 0.03d | 2018-06-04 16:55 | 2018-06-04 17:25 |  | 2018-05-15 16:55 | 2018-05-15 17:25 | 0.03d | 43.59d | 0d | TEAM_2Shift_Calendar-1 |  | 1.25h | 71.88 | 71.88 |
| 219 | 1.9.9.1 | Sh-LS Correction | 0.5h | 2018-06-04 16:55 | 2018-06-04 17:25 | 216 | 2018-05-15 16:55 | 2018-05-15 17:25 | 0.5h | 43.59d |  | TEAM_2Shift_Calendar-1 | Helper [200%]; Fitter | 1.25h | 71.88 | 71.88 |
| 220 | 1.9.10 | **Shell LS Seams Fit Up** | 0.06d | 2018-06-04 17:25 | 2018-06-04 18:25 |  | 2018-05-15 17:25 | 2018-05-15 18:25 | 0.06d | 43.59d | 0d | TEAM_2Shift_Calendar-1 |  | 3.33h | 204.17 | 204.17 |
| 221 | 1.9.10.1 | Sh-LS Fit Up | 1h | 2018-06-04 17:25 | 2018-06-04 18:25 | 218 | 2018-05-15 17:25 | 2018-05-15 18:25 | 1h | 43.59d |  | TEAM_2Shift_Calendar-1 | SMAW Welder; Helper [200%]; Fitter | 3.33h | 204.17 | 204.17 |
| 222 | 1.9.11 | **Sh LS Welding Arrangement** | 0.03d | 2018-06-04 18:25 | 2018-06-04 18:55 |  | 2018-05-15 18:25 | 2018-05-15 18:55 | 0.03d | 43.59d | 0d | TEAM_2Shift_Calendar-1 |  | 1h | 59.38 | 59.38 |
| 223 | 1.9.11.1 | Sh-LS Weld Arrangement | 0.5h | 2018-06-04 18:25 | 2018-06-04 18:55 | 220 | 2018-05-15 18:25 | 2018-05-15 18:55 | 0.5h | 43.59d |  | TEAM_2Shift_Calendar-1 | Helper; Fitter | 1h | 59.38 | 59.38 |
| 224 | 1.9.12 | **Shell Long Seam Outer Welding** | 0.11d | 2018-06-04 18:55 | 2018-06-04 20:40 |  | 2018-05-15 18:55 | 2018-05-15 20:40 | 0.11d | 43.59d | 0d | TEAM_2Shift_Calendar-1 |  | 3.5h | 207.81 | 207.81 |
| 225 | 1.9.12.1 | Sh-LS Welding- Top Side | 1.75h | 2018-06-04 18:55 | 2018-06-04 20:40 | 222 | 2018-05-15 18:55 | 2018-05-15 20:40 | 1.75h | 43.59d |  | TEAM_2Shift_Calendar-1 | Helper; SMAW Welder | 3.5h | 207.81 | 207.81 |
| 226 | 1.9.13 | **Sh LS Back Chip** | 0.01d | 2018-06-04 20:40 | 2018-06-04 20:46 |  | 2018-05-15 20:40 | 2018-05-15 20:46 | 0.01d | 43.59d | 0d | TEAM_2Shift_Calendar-1 |  | 0.1h | 5.62 | 5.62 |
| 227 | 1.9.13.1 | Sh-LS Welding- Back Chip | 0.1h | 2018-06-04 20:40 | 2018-06-04 20:46 | 224 | 2018-05-15 20:40 | 2018-05-15 20:46 | 0.1h | 43.59d |  | TEAM_2Shift_Calendar-1 | Grinder | 0.1h | 5.62 | 5.62 |
| 228 | 1.9.14 | **Sh LS Inner Welding** | 4.87d | 2018-06-04 20:46 | 2018-06-11 18:41 |  | 2018-05-15 20:46 | 2018-05-21 18:41 | 4.87d | 43.59d |  | TEAM_2Shift_Calendar-1 |  | 173.26h | 9,704.04 | 9,704.04 |
| 229 | 1.9.14.1 | **Sh Inner LS Flush Grinding** | 0.02d | 2018-06-04 20:46 | 2018-06-04 21:01 |  | 2018-05-15 20:46 | 2018-05-15 21:01 | 0.02d | 43.59d |  | TEAM_2Shift_Calendar-1 |  | 0.25h | 14.06 | 14.06 |
| 230 | 1.9.14.1.1 | Sh Inner Flush Grinding | 0.25h | 2018-06-04 20:46 | 2018-06-04 21:01 | 226 | 2018-05-15 20:46 | 2018-05-15 21:01 | 0.25h | 43.59d | 0d | TEAM_2Shift_Calendar-1 | Grinder | 0.25h | 14.06 | 14.06 |
| 231 | 1.9.14.2 | **Sh LS Radiography** | 1d | 2018-06-04 21:01 | 2018-06-05 21:01 |  | 2018-05-15 21:01 | 2018-05-16 21:01 | 1d | 43.59d |  | TEAM_2Shift_Calendar-1 |  | 16h |  |  |
| 232 | 1.9.14.2.1 | Sh LS Welding Rt | 1d | 2018-06-04 21:01 | 2018-06-05 21:01 | 230 | 2018-05-15 21:01 | 2018-05-16 21:01 | 1d | 43.59d | 0d | TEAM_2Shift_Calendar-1 | SC Radiography (Work) | 16h |  |  |
| 233 | 1.9.14.3 | **Shell Re-Rolling** | 0.12d | 2018-06-05 21:01 | 2018-06-06 07:01 |  | 2018-05-16 21:01 | 2018-05-17 07:01 | 0.12d | 43.59d |  | TEAM_2Shift_Calendar-1 |  | 6h | 375 | 375 |
| 234 | 1.9.14.3.1 | Sh Re-Rolling | 2h | 2018-06-05 21:01 | 2018-06-06 07:01 | 232 | 2018-05-16 21:01 | 2018-05-17 07:01 | 2h | 43.59d | 0d | TEAM_2Shift_Calendar-1 | Helper; Fitter [200%] | 6h | 375 | 375 |
| 235 | 1.9.14.4 | **Sh Final Length Correction** | 0.17d | 2018-06-06 07:01 | 2018-06-06 09:41 |  | 2018-05-17 07:01 | 2018-05-17 09:41 | 0.17d | 43.59d |  | TEAM_2Shift_Calendar-1 |  | 5.34h | 348.31 | 348.31 |
| 236 | 1.9.14.4.1 | Sh Length Marking | 2h | 2018-06-06 07:01 | 2018-06-06 09:01 | 234 | 2018-05-17 07:01 | 2018-05-17 09:01 | 2h | 43.59d | 0d | TEAM_2Shift_Calendar-1 | Fitter [200%] | 4h | 275 | 275 |
| 237 | 1.9.14.4.2 | Length Cutting | 0.17h | 2018-06-06 09:01 | 2018-06-06 09:11 | 236 | 2018-05-17 09:01 | 2018-05-17 09:11 | 0.17h | 43.59d | 0d | TEAM_2Shift_Calendar-1 | Helper; Gas Cutter | 0.34h | 20.19 | 20.19 |
| 238 | 1.9.14.4.3 | Grinding & EP | 0.5h | 2018-06-06 09:11 | 2018-06-06 09:41 | 237 | 2018-05-17 09:11 | 2018-05-17 09:41 | 0.5h | 43.59d | 0d | TEAM_2Shift_Calendar-1 | Helper; Grinder | 1h | 53.12 | 53.12 |

| ID | WBS | Task | Duration | Start | Finish | Predecessors | Baseline start | Baseline finish | Baseline duration | Total slack | Free slack | Calendar | Resources | Work | Cost | Baseline cost |
| --- | --- | --- | --- | --- | --- | --- | --- | --- | --- | --- | --- | --- | --- | --- | --- | --- |
| 239 | 1.9.14.5 | **Nozzle Orientation Marking** | 0.31d | 2018-06-06 09:41 | 2018-06-06 14:41 |  | 2018-05-17 09:41 | 2018-05-17 14:41 | 0.31d | 43.59d | 0d | TEAM_2Shift_Calendar-1 |  | 10h | 687.5 | 687.5 |
| 240 | 1.9.14.5.1 | Sh Nozzel Orientaion Marking | 1h | 2018-06-06 09:41 | 2018-06-06 10:41 | 238 | 2018-05-17 09:41 | 2018-05-17 10:41 | 1h | 43.59d | 0d | TEAM_2Shift_Calendar-1 | Fitter [200%] | 2h | 137.5 | 137.5 |
| 241 | 1.9.14.5.2 | Sh Nozzel Marking16"Nb- 2 Nos | 4h | 2018-06-06 10:41 | 2018-06-06 14:41 | 240 | 2018-05-17 10:41 | 2018-05-17 14:41 | 4h | 43.59d |  | TEAM_2Shift_Calendar-1 | Fitter [200%] | 8h | 550 | 550 |
| 242 | 1.9.14.6 | **Sh Nozzle Openning** | 0.31d | 2018-06-06 14:41 | 2018-06-06 19:41 |  | 2018-05-17 14:41 | 2018-05-17 19:41 | 0.31d | 43.59d | 0d | TEAM_2Shift_Calendar-1 |  | 10h | 593.75 | 593.75 |
| 243 | 1.9.14.6.1 | 16"Nb- 2 Nos | 4h | 2018-06-06 14:41 | 2018-06-06 18:41 | 239 | 2018-05-17 14:41 | 2018-05-17 18:41 | 4h | 43.59d | 0d | TEAM_2Shift_Calendar-1 | Helper; Gas Cutter | 8h | 475 | 475 |
| 244 | 1.9.14.6.2 | Inspection | 1h | 2018-06-06 18:41 | 2018-06-06 19:41 | 243 | 2018-05-17 18:41 | 2018-05-17 19:41 | 1h | 43.59d |  | TEAM_2Shift_Calendar-1 | Helper; Gas Cutter | 2h | 118.75 | 118.75 |
| 245 | 1.9.14.7 | **Sh Nozzle EP** | 0.19d | 2018-06-06 19:41 | 2018-06-07 06:41 |  | 2018-05-17 19:41 | 2018-05-18 06:41 | 0.19d | 43.59d | 0d | TEAM_2Shift_Calendar-1 |  | 4h | 250 | 250 |
| 246 | 1.9.14.7.1 | 16"Nb- 2 Nos | 2h | 2018-06-06 19:41 | 2018-06-06 21:41 | 242 | 2018-05-17 19:41 | 2018-05-17 21:41 | 2h | 43.59d | 0d | TEAM_2Shift_Calendar-1 | Grinder | 2h | 112.5 | 112.5 |
| 247 | 1.9.14.7.2 | Inspection | 1h | 2018-06-06 21:41 | 2018-06-07 06:41 | 246 | 2018-05-17 21:41 | 2018-05-18 06:41 | 1h | 43.59d |  | TEAM_2Shift_Calendar-1 | Fitter [200%] | 2h | 137.5 | 137.5 |
| 248 | 1.9.14.8 | **Sh Nozzzle Fit Up** | 0.19d | 2018-06-07 06:41 | 2018-06-07 09:41 |  | 2018-05-18 06:41 | 2018-05-18 09:41 | 0.19d | 43.59d | 0d | TEAM_2Shift_Calendar-1 |  | 10h | 631.25 | 631.25 |
| 249 | 1.9.14.8.1 | 16"Nb- 2 Nos | 2h | 2018-06-07 06:41 | 2018-06-07 08:41 | 245 | 2018-05-18 06:41 | 2018-05-18 08:41 | 2h | 43.59d | 0d | TEAM_2Shift_Calendar-1 | Helper; SMAW Welder; Fitter [200%] | 8h | 512.5 | 512.5 |
| 250 | 1.9.14.8.2 | DP Check | 1h | 2018-06-07 08:41 | 2018-06-07 09:41 | 249 | 2018-05-18 08:41 | 2018-05-18 09:41 | 1h | 43.59d |  | TEAM_2Shift_Calendar-1 | Helper; Fitter | 2h | 118.75 | 118.75 |
| 251 | 1.9.14.9 | **Sh Nozzle Fit Up Inspection** | 0.12d | 2018-06-07 09:41 | 2018-06-07 11:41 |  | 2018-05-18 09:41 | 2018-05-18 11:41 | 0.12d | 43.59d | 0d | TEAM_2Shift_Calendar-1 |  | 4h | 237.5 | 237.5 |
| 252 | 1.9.14.9.1 | 16"Nb- 2 Nos | 1h | 2018-06-07 09:41 | 2018-06-07 10:41 | 248 | 2018-05-18 09:41 | 2018-05-18 10:41 | 1h | 43.59d | 0d | TEAM_2Shift_Calendar-1 | Helper; Fitter | 2h | 118.75 | 118.75 |
| 253 | 1.9.14.9.2 | DP Check | 1h | 2018-06-07 10:41 | 2018-06-07 11:41 | 252 | 2018-05-18 10:41 | 2018-05-18 11:41 | 1h | 43.59d |  | TEAM_2Shift_Calendar-1 | Helper; Fitter | 2h | 118.75 | 118.75 |
| 254 | 1.9.14.10 | **Sh Nozzle Welding** | 0.5d | 2018-06-07 11:41 | 2018-06-07 19:41 |  | 2018-05-18 11:41 | 2018-05-18 19:41 | 0.5d | 43.59d | 0d | TEAM_2Shift_Calendar-1 |  | 15h | 831.25 | 831.25 |
| 255 | 1.9.14.10.1 | Sh Nozzel Welding Arrangement | 1h | 2018-06-07 11:41 | 2018-06-07 12:41 | 251 | 2018-05-18 11:41 | 2018-05-18 12:41 | 1h | 43.59d | 0d | TEAM_2Shift_Calendar-1 | Store | 1h |  |  |
| 256 | 1.9.14.10.2 | Sh Nozzel WeldingA1 | 3h | 2018-06-07 12:41 | 2018-06-07 15:41 | 255 | 2018-05-18 12:41 | 2018-05-18 15:41 | 3h | 43.59d | 0d | TEAM_2Shift_Calendar-1 | Helper; SMAW Welder | 6h | 356.25 | 356.25 |
| 257 | 1.9.14.10.3 | Sh Nozzel WeldingA2 | 3h | 2018-06-07 15:41 | 2018-06-07 18:41 | 256 | 2018-05-18 15:41 | 2018-05-18 18:41 | 3h | 43.59d | 0d | TEAM_2Shift_Calendar-1 | Helper; SMAW Welder | 6h | 356.25 | 356.25 |
| 258 | 1.9.14.10.4 | Sh Nozzel Root DP Check | 1h | 2018-06-07 18:41 | 2018-06-07 19:41 | 257 | 2018-05-18 18:41 | 2018-05-18 19:41 | 1h | 43.59d |  | TEAM_2Shift_Calendar-1 | Helper; Fitter | 2h | 118.75 | 118.75 |
| 259 | 1.9.14.11 | **Sh Saddle Welding** | 1.44d | 2018-06-07 19:41 | 2018-06-11 10:41 |  | 2018-05-18 19:41 | 2018-05-21 10:41 | 1.44d | 43.59d | 0d | TEAM_2Shift_Calendar-1 |  | 76.67h | 4,785.42 | 4,785.42 |
| 260 | 1.9.14.11.1 | Sh-Saddle Pad Fit Up | 4h | 2018-06-07 19:41 | 2018-06-08 07:41 | 254 | 2018-05-18 19:41 | 2018-05-19 07:41 | 4h | 43.59d | 0d | TEAM_2Shift_Calendar-1 | SMAW Welder; Helper; Fitter [200%] | 16h | 1,025 | 1,025 |
| 261 | 1.9.14.11.2 | Sh-Saddle Pad Welding | 4h | 2018-06-08 07:41 | 2018-06-08 11:41 | 260 | 2018-05-19 07:41 | 2018-05-19 11:41 | 4h | 43.59d | 0d | TEAM_2Shift_Calendar-1 | Helper [200%]; SMAW Welder [200%] | 13.33h | 816.67 | 816.67 |
| 262 | 1.9.14.11.3 | Sh-Saddle Matching | 4h | 2018-06-08 11:41 | 2018-06-08 15:41 | 261 | 2018-05-19 11:41 | 2018-05-19 15:41 | 4h | 43.59d | 0d | TEAM_2Shift_Calendar-1 | Grinder [200%]; Fitter [200%] | 13.33h | 850 | 850 |
| 263 | 1.9.14.11.4 | Sh-Saddle Fit Up | 5h | 2018-06-08 15:41 | 2018-06-08 20:41 | 262 | 2018-05-19 15:41 | 2018-05-19 20:41 | 5h | 43.59d | 0d | TEAM_2Shift_Calendar-1 | Fitter [200%]; Helper; SMAW Welder | 16.67h | 1,052.08 | 1,052.08 |
| 264 | 1.9.14.11.5 | Sh-Saddle Welding | 4h | 2018-06-08 20:41 | 2018-06-11 08:41 | 263 | 2018-05-19 20:41 | 2018-05-21 08:41 | 4h | 43.59d | 0d | TEAM_2Shift_Calendar-1 | Helper [200%]; SMAW Welder [200%] | 13.33h | 816.67 | 816.67 |
| 265 | 1.9.14.11.6 | Sh-Saddle Dress Up | 2h | 2018-06-11 08:41 | 2018-06-11 10:41 | 264 | 2018-05-21 08:41 | 2018-05-21 10:41 | 2h | 43.59d |  | TEAM_2Shift_Calendar-1 | Grinder [200%] | 4h | 225 | 225 |

| ID | WBS | Task | Duration | Start | Finish | Predecessors | Baseline start | Baseline finish | Baseline duration | Total slack | Free slack | Calendar | Resources | Work | Cost | Baseline cost |
| --- | --- | --- | --- | --- | --- | --- | --- | --- | --- | --- | --- | --- | --- | --- | --- | --- |
| 266 | 1.9.14.12 | **Sh Nde Clearence** | 0.5d | 2018-06-11 10:41 | 2018-06-11 18:41 |  | 2018-05-21 10:41 | 2018-05-21 18:41 | 0.5d | 43.59d |  | TEAM_2Shift_Calendar-1 |  | 16h | 950 | 950 |
| 267 | 1.9.14.12.1 | Sh-Sh Nde Clearence | 4h | 2018-06-11 10:41 | 2018-06-11 14:41 | 259 | 2018-05-21 10:41 | 2018-05-21 14:41 | 4h | 43.59d | 0d | TEAM_2Shift_Calendar-1 | Helper; Fitter | 8h | 475 | 475 |
| 268 | 1.9.14.12.2 | TPI Inspection | 4h | 2018-06-11 14:41 | 2018-06-11 18:41 | 267 | 2018-05-21 14:41 | 2018-05-21 18:41 | 4h | 43.59d |  | TEAM_2Shift_Calendar-1 | Helper; Fitter | 8h | 475 | 475 |
| 269 | 1.10 | **Tube Bundle Assy** | 21.18d | 2018-08-01 16:00 | 2018-08-29 18:51 |  | 2018-08-01 16:00 | 2018-08-29 18:51 | 21.18d | 0.04d | 0d | TEAM_2Shift_Calendar-1 |  | 765.93h | 45,764.48 | 45,764.48 |
| 270 | 1.10.1 | Frame Set Up & Tube Sht Set Up | 12h | 2018-08-01 16:00 | 2018-08-02 12:00 | 35, 171 | 2018-08-01 16:00 | 2018-08-02 12:00 | 12h | 0.04d | 0d | TEAM_2Shift_Calendar-1 | SMAW Welder; Tube (Cost) [0.1%]; Fitter [200%] | 36h | 2,475 | 2,475 |
| 271 | 1.10.2 | Skeleton Assy | 4h | 2018-08-02 12:00 | 2018-08-02 16:00 | 270 | 2018-08-02 12:00 | 2018-08-02 16:00 | 4h | 0.04d | 0d | TEAM_2Shift_Calendar-1 | Helper [300%]; Fitter [200%] | 14.67h | 883.33 | 883.33 |
| 272 | 1.10.3 | **Tube Insert** | 1.72d | 2018-08-02 16:00 | 2018-08-04 11:30 |  | 2018-08-02 16:00 | 2018-08-04 11:30 | 1.72d | 0.04d | 0d | TEAM_2Shift_Calendar-1 |  | 96.25h | 5,328.12 | 5,328.12 |
| 273 | 1.10.3.1 | Tube Insert 50% | 13.75h | 2018-08-02 16:00 | 2018-08-03 13:45 | 271 | 2018-08-02 16:00 | 2018-08-03 13:45 | 13.75h | 0.04d | 0d | TEAM_2Shift_Calendar-1 | Helper [400%]; Fitter | 48.12h | 2,664.06 | 2,664.06 |
| 274 | 1.10.3.2 | Tube Insert 50% | 13.75h | 2018-08-03 13:45 | 2018-08-04 11:30 | 273 | 2018-08-03 13:45 | 2018-08-04 11:30 | 13.75h | 0.04d |  | TEAM_2Shift_Calendar-1 | Helper [400%]; Fitter | 48.12h | 2,664.06 | 2,664.06 |
| 275 | 1.10.4 | **Tube Bundle Insert** | 18.46d | 2018-08-04 11:30 | 2018-08-29 18:51 |  | 2018-08-04 11:30 | 2018-08-29 18:51 | 18.46d | 0.04d |  | TEAM_2Shift_Calendar-1 |  | 619.02h | 37,078.02 | 37,078.02 |
| 276 | 1.10.4.1 | Tube Bundle Insert In Shell | 16h | 2018-08-04 11:30 | 2018-08-06 11:30 | 200, 272 | 2018-08-04 11:30 | 2018-08-06 11:30 | 16h | 0.04d | 0d | TEAM_2Shift_Calendar-1 | Helper [800%]; Fitter [300%] | 92h | 5,500 | 5,500 |
| 277 | 1.10.4.2 | Tubesheet 1 fitup | 4h | 2018-08-06 11:30 | 2018-08-06 15:30 | 276 | 2018-08-06 11:30 | 2018-08-06 15:30 | 4h | 0.04d | 0d | TEAM_2Shift_Calendar-1 | Helper [400%]; Fitter [200%] | 16h | 950 | 950 |
| 278 | 1.10.4.3 | DP CheckFlg CS1 | 1h | 2018-08-06 15:30 | 2018-08-06 16:30 | 277 | 2018-08-06 15:30 | 2018-08-06 16:30 | 1h | 0.04d | 0d | TEAM_2Shift_Calendar-1 | Helper; Fitter | 2h | 118.75 | 118.75 |
| 279 | 1.10.4.4 | Tubesheet 2 fixing with tubes | 4h | 2018-08-06 16:30 | 2018-08-06 20:30 | 278 | 2018-08-06 16:30 | 2018-08-06 20:30 | 4h | 0.04d | 0d | TEAM_2Shift_Calendar-1 | Helper [600%]; Fitter [300%] | 21h | 1,275 | 1,275 |
| 280 | 1.10.4.5 | Tubesheet 2 fitup | 4d | 2018-08-06 20:30 | 2018-08-10 20:30 | 279 | 2018-08-06 20:30 | 2018-08-10 20:30 | 4d | 0.04d | 0d | TEAM_2Shift_Calendar-1 | SMAW Welder; Helper [200%]; Fitter | 213.33h | 13,066.67 | 13,066.67 |
| 281 | 1.10.4.6 | DP CheckFlg CS1 | 1h | 2018-08-10 20:30 | 2018-08-10 21:30 | 280 | 2018-08-10 20:30 | 2018-08-10 21:30 | 1h | 0.04d | 0d | TEAM_2Shift_Calendar-1 | Helper; Fitter | 2h | 118.75 | 118.75 |
| 282 | 1.10.4.7 | Tubesheet 1 Welding | 3h | 2018-08-10 21:30 | 2018-08-13 08:30 | 281 | 2018-08-10 21:30 | 2018-08-13 08:30 | 3h | 0.04d | 0d | TEAM_2Shift_Calendar-1 | Helper [200%]; SMAW Welder | 7.5h | 431.25 | 431.25 |
| 283 | 1.10.4.8 | Tubesheet 2 Welding | 3h | 2018-08-13 08:30 | 2018-08-13 11:30 | 282 | 2018-08-13 08:30 | 2018-08-13 11:30 | 3h | 0.04d | 0d | TEAM_2Shift_Calendar-1 | Helper [200%]; SMAW Welder | 7.5h | 431.25 | 431.25 |
| 284 | 1.10.4.9 | Sh CS Welding Back ChipFlg1 | 0.1h | 2018-08-13 11:30 | 2018-08-13 11:36 | 283 | 2018-08-13 11:30 | 2018-08-13 11:36 | 0.1h | 0.04d | 0d | TEAM_2Shift_Calendar-1 | Grinder | 0.1h | 5.62 | 5.62 |
| 285 | 1.10.4.10 | Tubesheet 1 Tube welding | 27h | 2018-08-13 11:36 | 2018-08-16 06:36 | 284 | 2018-08-13 11:36 | 2018-08-16 06:36 | 27h | 0.04d | 0d | TEAM_2Shift_Calendar-1 | Helper [200%]; SMAW Welder | 67.5h | 3,881.25 | 3,881.25 |
| 286 | 1.10.4.11 | DP CheckFlg1 | 0.25h | 2018-08-16 06:36 | 2018-08-16 06:51 | 285 | 2018-08-16 06:36 | 2018-08-16 06:51 | 0.25h | 0.04d | 0d | TEAM_2Shift_Calendar-1 | Grinder | 0.25h | 14.06 | 14.06 |
| 287 | 1.10.4.12 | Tubesheet 2 tube trimming | 17h | 2018-08-16 06:51 | 2018-08-17 07:51 | 286 | 2018-08-16 06:51 | 2018-08-17 07:51 | 17h | 0.04d | 0d | TEAM_2Shift_Calendar-1 | Grinder | 17h | 956.25 | 956.25 |
| 288 | 1.10.4.13 | Tubesheet 2 tube welding | 27h | 2018-08-17 07:51 | 2018-08-18 18:51 | 287 | 2018-08-17 07:51 | 2018-08-18 18:51 | 27h | 0.04d | 0d | TEAM_2Shift_Calendar-1 | Helper [200%]; SMAW Welder | 67.5h | 3,881.25 | 3,881.25 |
| 289 | 1.10.4.14 | DP Check | 1h | 2018-08-18 18:51 | 2018-08-18 19:51 | 288 | 2018-08-18 18:51 | 2018-08-18 19:51 | 1h | 0.04d | 0d | TEAM_2Shift_Calendar-1 | Helper; Fitter | 2h | 118.75 | 118.75 |
| 290 | 1.10.4.15 | Tube expansion on both sides- Stage 1 | 13h | 2018-08-18 19:51 | 2018-08-20 16:51 | 289 | 2018-08-18 19:51 | 2018-08-20 16:51 | 13h | 0.04d | 0d | TEAM_2Shift_Calendar-1 | Helper [200%]; Fitter [200%] | 43.33h | 2,654.17 | 2,654.17 |
| 291 | 1.10.4.16 | Tube expansion on both sides- Stage 2 | 13h | 2018-08-20 16:51 | 2018-08-21 13:51 | 290 | 2018-08-20 16:51 | 2018-08-21 13:51 | 13h | 0.04d | 0d | TEAM_2Shift_Calendar-1 | Helper [200%]; Fitter [200%] | 43.33h | 2,654.17 | 2,654.17 |
| 292 | 1.10.4.17 | Tube Exp- Pnuematic Test | 5h | 2018-08-21 13:51 | 2018-08-21 18:51 | 291 | 2018-08-21 13:51 | 2018-08-21 18:51 | 5h | 0.04d | 0d | TEAM_2Shift_Calendar-1 | Helper [200%]; Fitter [200%] | 16.67h | 1,020.83 | 1,020.83 |
| 293 | 1.10.4.18 | Dummy Activity | 6d | 2018-08-21 18:51 | 2018-08-29 18:51 | 292 | 2018-08-21 18:51 | 2018-08-29 18:51 | 6d | 0.04d |  | TEAM_2Shift_Calendar-1 |  |  |  |  |

| ID | WBS | Task | Type | Duration | Start | Finish | Predecessors | Baseline start | Baseline finish | Baseline duration | Total slack | Free slack | Calendar | Resources | Work | Cost | Baseline cost |
| --- | --- | --- | --- | --- | --- | --- | --- | --- | --- | --- | --- | --- | --- | --- | --- | --- | --- |
| 294 | 1.11 | **Channel fabrication** |  | 53.58d | 2018-06-04 06:00 | 2018-08-09 15:19 |  | 2018-05-22 06:00 | 2018-07-16 15:19 | 43.58d | 14.26d | 14.22d | TEAM_2Shift_Calendar-1 |  | 290.88h | 14,614.44 | 14,614.44 |
| 295 | 1.11.1 | **Channel Shell marking&cutting** |  | 0.16d | 2018-06-04 06:00 | 2018-06-04 08:31 |  | 2018-05-22 06:00 | 2018-05-22 08:31 | 0.16d | 58.34d | 0d | TEAM_2Shift_Calendar-1 |  | 3.84h | 161.12 | 161.12 |
| 296 | 1.11.1.1 | Ch Plate Trasnfer |  | 1h | 2018-06-04 06:00 | 2018-06-04 07:00 | 2FS+48d | 2018-05-22 06:00 | 2018-05-22 07:00 | 1h | 58.34d | 0d | TEAM_2Shift_Calendar-1 | Forging Non-Std (Cost) [0.1%]; Plate (Cost) [0.1%]; Store | 1h |  |  |
| 297 | 1.11.1.2 | Ch Marking |  | 0.1h | 2018-06-04 07:00 | 2018-06-04 07:06 | 296 | 2018-05-22 07:00 | 2018-05-22 07:06 | 0.1h | 58.34d | 0d | TEAM_2Shift_Calendar-1 | Helper [200%]; Fitter | 0.25h | 14.38 | 14.38 |
| 298 | 1.11.1.3 | Ch Cutting |  | 0.17h | 2018-06-04 07:06 | 2018-06-04 07:16 | 297 | 2018-05-22 07:06 | 2018-05-22 07:16 | 0.17h | 58.34d | 0d | TEAM_2Shift_Calendar-1 | Helper; Gas Cutter | 0.34h | 20.19 | 20.19 |
| 299 | 1.11.1.4 | Ch Pl Side Grinding |  | 0.25h | 2018-06-04 07:16 | 2018-06-04 07:31 | 298 | 2018-05-22 07:16 | 2018-05-22 07:31 | 0.25h | 58.34d | 0d | TEAM_2Shift_Calendar-1 | Grinder | 0.25h | 14.06 | 14.06 |
| 300 | 1.11.1.5 | Ch Bevelling Cir Side |  | 0.5h | 2018-06-04 07:31 | 2018-06-04 08:01 | 299 | 2018-05-22 07:31 | 2018-05-22 08:01 | 0.5h | 58.34d | 0d | TEAM_2Shift_Calendar-1 | Helper [300%]; Fitter | 1.5h | 84.38 | 84.38 |
| 301 | 1.11.1.6 | Ch EP Grinding |  | 0.5h | 2018-06-04 08:01 | 2018-06-04 08:31 | 300 | 2018-05-22 08:01 | 2018-05-22 08:31 | 0.5h | 58.34d |  | TEAM_2Shift_Calendar-1 | Grinder | 0.5h | 28.12 | 28.12 |
| 302 | 1.11.2 | **Channel Sh Rolling** |  | 0.28d | 2018-06-04 08:31 | 2018-06-04 13:01 |  | 2018-05-22 08:31 | 2018-05-22 13:01 | 0.28d | 58.34d | 0d | TEAM_2Shift_Calendar-1 |  | 13h | 818.75 | 818.75 |
| 303 | 1.11.2.1 | Ch Pre Bend |  | 2h | 2018-06-04 08:31 | 2018-06-04 10:31 | 295 | 2018-05-22 08:31 | 2018-05-22 10:31 | 2h | 58.34d | 0d | TEAM_2Shift_Calendar-1 | Helper; Fitter [200%] | 6h | 375 | 375 |
| 304 | 1.11.2.2 | Ch Pre Bend Cut Off | milestone | 0h | 2018-06-04 10:31 | 2018-06-04 10:31 | 303 | 2018-05-22 10:31 | 2018-05-22 10:31 | 0h | 58.34d | 0d | TEAM_2Shift_Calendar-1 | Gas Cutter; Fitter [200%] |  |  |  |
| 305 | 1.11.2.3 | Ch LS Beveling |  | 0.5h | 2018-06-04 10:31 | 2018-06-04 11:01 | 304 | 2018-05-22 10:31 | 2018-05-22 11:01 | 0.5h | 58.34d | 0d | TEAM_2Shift_Calendar-1 | Fitter [200%] | 1h | 68.75 | 68.75 |
| 306 | 1.11.2.4 | Ch Rolling |  | 2h | 2018-06-04 11:01 | 2018-06-04 13:01 | 305 | 2018-05-22 11:01 | 2018-05-22 13:01 | 2h | 58.34d |  | TEAM_2Shift_Calendar-1 | Helper; Fitter [200%] | 6h | 375 | 375 |
| 307 | 1.11.3 | **Ch Shell LS Fit Up** |  | 0.09d | 2018-06-04 13:01 | 2018-06-04 14:31 |  | 2018-05-22 13:01 | 2018-05-22 14:31 | 0.09d | 58.34d | 0d | TEAM_2Shift_Calendar-1 |  | 5h | 325 | 325 |
| 308 | 1.11.3.1 | Ch LS Correction |  | 0.5h | 2018-06-04 13:01 | 2018-06-04 13:31 | 302 | 2018-05-22 13:01 | 2018-05-22 13:31 | 0.5h | 58.34d | 0d | TEAM_2Shift_Calendar-1 | Fitter [200%] | 1h | 68.75 | 68.75 |
| 309 | 1.11.3.2 | Ch LS Fit Up |  | 1h | 2018-06-04 13:31 | 2018-06-04 14:31 | 308 | 2018-05-22 13:31 | 2018-05-22 14:31 | 1h | 58.34d |  | TEAM_2Shift_Calendar-1 | SMAW Welder; Helper; Fitter [200%] | 4h | 256.25 | 256.25 |
| 310 | 1.11.4 | **Ch Shell LS Welding** |  | 0.39d | 2018-06-04 14:31 | 2018-06-04 20:46 |  | 2018-05-22 14:31 | 2018-05-22 20:46 | 0.39d | 58.34d | 0d | TEAM_2Shift_Calendar-1 |  | 14.5h | 876.56 | 876.56 |
| 311 | 1.11.4.1 | Ch LS Weld Arrangement |  | 0.5h | 2018-06-04 14:31 | 2018-06-04 15:01 | 307 | 2018-05-22 14:31 | 2018-05-22 15:01 | 0.5h | 58.34d | 0d | TEAM_2Shift_Calendar-1 | Helper [200%]; Fitter | 1.25h | 71.88 | 71.88 |
| 312 | 1.11.4.2 | Ch LS Welding- Top Side |  | 1.75h | 2018-06-04 15:01 | 2018-06-04 16:46 | 311 | 2018-05-22 15:01 | 2018-05-22 16:46 | 1.75h | 58.34d | 0d | TEAM_2Shift_Calendar-1 | Helper; SMAW Welder | 3.5h | 207.81 | 207.81 |
| 313 | 1.11.4.3 | Ch LS Welding- Back Chip | milestone | 0h | 2018-06-04 16:46 | 2018-06-04 16:46 | 312 | 2018-05-22 16:46 | 2018-05-22 16:46 | 0h | 58.34d | 0d | TEAM_2Shift_Calendar-1 | Helper; Grinder |  |  |  |
| 314 | 1.11.4.4 | Ch LS Inner Welding |  | 1.75h | 2018-06-04 16:46 | 2018-06-04 18:31 | 313 | 2018-05-22 16:46 | 2018-05-22 18:31 | 1.75h | 58.34d | 0d | TEAM_2Shift_Calendar-1 | Helper; SMAW Welder | 3.5h | 207.81 | 207.81 |
| 315 | 1.11.4.5 | Ch LS Innner Flush Grind |  | 0.25h | 2018-06-04 18:31 | 2018-06-04 18:46 | 314 | 2018-05-22 18:31 | 2018-05-22 18:46 | 0.25h | 58.34d | 0d | TEAM_2Shift_Calendar-1 | Grinder | 0.25h | 14.06 | 14.06 |
| 316 | 1.11.4.6 | Ch Re-Rolling |  | 2h | 2018-06-04 18:46 | 2018-06-04 20:46 | 315 | 2018-05-22 18:46 | 2018-05-22 20:46 | 2h | 58.34d |  | TEAM_2Shift_Calendar-1 | Helper; Fitter [200%] | 6h | 375 | 375 |
| 317 | 1.11.5 | **Ch LS Welding Radiography** |  | 1d | 2018-06-04 20:46 | 2018-06-05 20:46 |  | 2018-05-22 20:46 | 2018-05-23 20:46 | 1d | 58.34d | 0d | TEAM_2Shift_Calendar-1 |  | 16h |  |  |
| 318 | 1.11.5.1 | Ch LS Welding Rt |  | 1d | 2018-06-04 20:46 | 2018-06-05 20:46 | 310 | 2018-05-22 20:46 | 2018-05-23 20:46 | 1d | 58.34d |  | TEAM_2Shift_Calendar-1 | SC Radiography (Work) | 16h |  |  |

| ID | WBS | Task | Type | Duration | Start | Finish | Predecessors | Baseline start | Baseline finish | Baseline duration | Total slack | Free slack | Calendar | Resources | Work | Cost | Baseline cost |
| --- | --- | --- | --- | --- | --- | --- | --- | --- | --- | --- | --- | --- | --- | --- | --- | --- | --- |
| 319 | 1.11.6 | **Ch CS Fit UpFlg1** |  | 44.17d | 2018-06-05 20:46 | 2018-08-01 07:30 |  | 2018-05-23 20:46 | 2018-07-06 07:30 | 34.17d | 14.26d | 0d | TEAM_2Shift_Calendar-1 |  | 5h | 325 | 325 |
| 320 | 1.11.6.1 | Ch Cir EP Correction |  | 0.5h | 2018-06-05 20:46 | 2018-06-05 21:16 | 317 | 2018-05-23 20:46 | 2018-05-23 21:16 | 0.5h | 58.34d | 44.08d | TEAM_2Shift_Calendar-1 | Fitter [200%] | 1h | 68.75 | 68.75 |
| 321 | 1.11.6.2 | Ch CS Fit UpFlg1 |  | 1h | 2018-08-01 06:30 | 2018-08-01 07:30 | 3FS+20d, 320 | 2018-07-06 06:30 | 2018-07-06 07:30 | 1h | 14.26d | 0d | TEAM_2Shift_Calendar-1 | SMAW Welder; Helper; Fitter [200%] | 4h | 256.25 | 256.25 |
| 322 | 1.11.6.3 | Ch CS Tack DP Check Flg1 | milestone | 0h | 2018-08-01 07:30 | 2018-08-01 07:30 | 321 | 2018-07-06 07:30 | 2018-07-06 07:30 | 0h | 14.26d |  | TEAM_2Shift_Calendar-1 | Helper; Fitter |  |  |  |
| 323 | 1.11.7 | **Ch Dish CS WeldingFlg1** |  | 0.66d | 2018-08-01 07:30 | 2018-08-01 18:00 |  | 2018-07-06 07:30 | 2018-07-06 18:00 | 0.66d | 14.26d | 0d | TEAM_2Shift_Calendar-1 |  | 21h | 1,234.38 | 1,234.38 |
| 324 | 1.11.7.1 | Ch CS Welding Transfere |  | 2h | 2018-08-01 07:30 | 2018-08-01 09:30 | 319 | 2018-07-06 07:30 | 2018-07-06 09:30 | 2h | 14.26d | 0d | TEAM_2Shift_Calendar-1 | Helper [200%]; Fitter | 5h | 287.5 | 287.5 |
| 325 | 1.11.7.2 | Ch CS Welding OuterFlg1 |  | 3.75h | 2018-08-01 09:30 | 2018-08-01 13:15 | 324 | 2018-07-06 09:30 | 2018-07-06 13:15 | 3.75h | 14.26d | 0d | TEAM_2Shift_Calendar-1 | Helper; SMAW Welder | 7.5h | 445.31 | 445.31 |
| 326 | 1.11.7.3 | Ch CS Welding Back ChipFlg1 |  | 0.5h | 2018-08-01 13:15 | 2018-08-01 13:45 | 325 | 2018-07-06 13:15 | 2018-07-06 13:45 | 0.5h | 14.26d | 0d | TEAM_2Shift_Calendar-1 | Grinder | 0.5h | 28.12 | 28.12 |
| 327 | 1.11.7.4 | Ch CS Inner WeldingFlg1 |  | 3.75h | 2018-08-01 13:45 | 2018-08-01 17:30 | 326 | 2018-07-06 13:45 | 2018-07-06 17:30 | 3.75h | 14.26d | 0d | TEAM_2Shift_Calendar-1 | Helper; SMAW Welder | 7.5h | 445.31 | 445.31 |
| 328 | 1.11.7.5 | Ch CS Flush GrindingFlg1 |  | 0.5h | 2018-08-01 17:30 | 2018-08-01 18:00 | 327 | 2018-07-06 17:30 | 2018-07-06 18:00 | 0.5h | 14.26d |  | TEAM_2Shift_Calendar-1 | Grinder | 0.5h | 28.12 | 28.12 |
| 329 | 1.11.8 | **Ch CS Fit UpFlg2** |  | 0.2d | 2018-08-01 18:00 | 2018-08-01 21:16 |  | 2018-07-06 18:00 | 2018-07-06 21:16 | 0.2d | 14.26d | 0d | TEAM_2Shift_Calendar-1 |  | 10.44h | 658.31 | 658.31 |
| 330 | 1.11.8.1 | Ch Length Cutting |  | 0.17h | 2018-08-01 18:00 | 2018-08-01 18:10 | 323 | 2018-07-06 18:00 | 2018-07-06 18:10 | 0.17h | 14.26d | 0d | TEAM_2Shift_Calendar-1 | Helper; Gas Cutter | 0.34h | 20.19 | 20.19 |
| 331 | 1.11.8.2 | Ch Cir EP Correction |  | 1h | 2018-08-01 18:10 | 2018-08-01 19:10 | 330 | 2018-07-06 18:10 | 2018-07-06 19:10 | 1h | 14.26d | 0d | TEAM_2Shift_Calendar-1 | Helper; Fitter | 2h | 118.75 | 118.75 |
| 332 | 1.11.8.3 | Ch CS Fit UpFlg2 |  | 2h | 2018-08-01 19:10 | 2018-08-01 21:10 | 3FS+20d, 331 | 2018-07-06 19:10 | 2018-07-06 21:10 | 2h | 14.26d | 0d | TEAM_2Shift_Calendar-1 | SMAW Welder; Helper; Fitter [200%] | 8h | 512.5 | 512.5 |
| 333 | 1.11.8.4 | Ch CS Tack DP CheckFlg2 |  | 0.1h | 2018-08-01 21:10 | 2018-08-01 21:16 | 332 | 2018-07-06 21:10 | 2018-07-06 21:16 | 0.1h | 14.26d |  | TEAM_2Shift_Calendar-1 | Fitter | 0.1h | 6.88 | 6.88 |
| 334 | 1.11.9 | **Ch CS Flg Welding** |  | 0.66d | 2018-08-01 21:16 | 2018-08-02 15:46 |  | 2018-07-06 21:16 | 2018-07-07 15:46 | 0.66d | 14.26d | 0d | TEAM_2Shift_Calendar-1 |  | 21h | 1,234.38 | 1,234.38 |
| 335 | 1.11.9.1 | Ch CS Welding TransfereFlg2 |  | 2h | 2018-08-01 21:16 | 2018-08-02 07:16 | 329 | 2018-07-06 21:16 | 2018-07-07 07:16 | 2h | 14.26d | 0d | TEAM_2Shift_Calendar-1 | Helper [200%]; Fitter | 5h | 287.5 | 287.5 |
| 336 | 1.11.9.2 | Ch CS Welding OuterFlg2 |  | 3.75h | 2018-08-02 07:16 | 2018-08-02 11:01 | 335 | 2018-07-07 07:16 | 2018-07-07 11:01 | 3.75h | 14.26d | 0d | TEAM_2Shift_Calendar-1 | Helper; SMAW Welder | 7.5h | 445.31 | 445.31 |
| 337 | 1.11.9.3 | Ch CS Welding Back ChipFlg2 |  | 0.5h | 2018-08-02 11:01 | 2018-08-02 11:31 | 336 | 2018-07-07 11:01 | 2018-07-07 11:31 | 0.5h | 14.26d | 0d | TEAM_2Shift_Calendar-1 | Grinder | 0.5h | 28.12 | 28.12 |
| 338 | 1.11.9.4 | Ch CS Inner WeldingFlg2 |  | 3.75h | 2018-08-02 11:31 | 2018-08-02 15:16 | 337 | 2018-07-07 11:31 | 2018-07-07 15:16 | 3.75h | 14.26d | 0d | TEAM_2Shift_Calendar-1 | Helper; SMAW Welder | 7.5h | 445.31 | 445.31 |
| 339 | 1.11.9.5 | Ch CS Flush GrindingFlg2 |  | 0.5h | 2018-08-02 15:16 | 2018-08-02 15:46 | 338 | 2018-07-07 15:16 | 2018-07-07 15:46 | 0.5h | 14.26d |  | TEAM_2Shift_Calendar-1 | Grinder | 0.5h | 28.12 | 28.12 |
| 340 | 1.11.10 | **Ch CS Welding RtFlg1 & 2** |  | 2d | 2018-08-02 15:46 | 2018-08-04 15:46 |  | 2018-07-07 15:46 | 2018-07-10 15:46 | 2d | 14.26d | 0d | TEAM_2Shift_Calendar-1 |  | 32h |  |  |
| 341 | 1.11.10.1 | Ch CS Welding Rt |  | 2d | 2018-08-02 15:46 | 2018-08-04 15:46 | 334 | 2018-07-07 15:46 | 2018-07-10 15:46 | 2d | 14.26d |  | TEAM_2Shift_Calendar-1 | SC Radiography (Work) | 32h |  |  |
| 342 | 1.11.11 | **Channel Nozzel Marking** |  | 0.12d | 2018-08-04 15:46 | 2018-08-04 17:46 |  | 2018-07-10 15:46 | 2018-07-10 17:46 | 0.12d | 14.26d | 0d | TEAM_2Shift_Calendar-1 |  | 4h | 237.5 | 237.5 |
| 343 | 1.11.11.1 | Ch Nozzel orientation |  | 1h | 2018-08-04 15:46 | 2018-08-04 16:46 | 340 | 2018-07-10 15:46 | 2018-07-10 16:46 | 1h | 14.26d | 0d | TEAM_2Shift_Calendar-1 | Helper; Fitter | 2h | 118.75 | 118.75 |
| 344 | 1.11.11.2 | Ch Nozzel Marking6"Nb- 2 Nos |  | 1h | 2018-08-04 16:46 | 2018-08-04 17:46 | 343 | 2018-07-10 16:46 | 2018-07-10 17:46 | 1h | 14.26d |  | TEAM_2Shift_Calendar-1 | Helper; Fitter | 2h | 118.75 | 118.75 |

| ID | WBS | Task | Type | Duration | Start | Finish | Predecessors | Baseline start | Baseline finish | Baseline duration | Total slack | Free slack | Calendar | Resources | Work | Cost | Baseline cost |
| --- | --- | --- | --- | --- | --- | --- | --- | --- | --- | --- | --- | --- | --- | --- | --- | --- | --- |
| 345 | 1.11.12 | **Ch Nozzel Opening** |  | 0.19d | 2018-08-04 17:46 | 2018-08-04 20:46 |  | 2018-07-10 17:46 | 2018-07-10 20:46 | 0.19d | 14.26d | 0d | TEAM_2Shift_Calendar-1 |  | 6h | 356.25 | 356.25 |
| 346 | 1.11.12.1 | Ch Nozzel Openning-Top |  | 2h | 2018-08-04 17:46 | 2018-08-04 19:46 | 342 | 2018-07-10 17:46 | 2018-07-10 19:46 | 2h | 14.26d | 0d | TEAM_2Shift_Calendar-1 | Helper; Gas Cutter | 4h | 237.5 | 237.5 |
| 347 | 1.11.12.2 | Ch Nozzel Openning-Bottom |  | 1h | 2018-08-04 19:46 | 2018-08-04 20:46 | 346 | 2018-07-10 19:46 | 2018-07-10 20:46 | 1h | 14.26d |  | TEAM_2Shift_Calendar-1 | Helper; Gas Cutter | 2h | 118.75 | 118.75 |
| 348 | 1.11.13 | **Ch Nozzel Open EP** |  | 0.19d | 2018-08-04 20:46 | 2018-08-06 07:46 |  | 2018-07-10 20:46 | 2018-07-11 07:46 | 0.19d | 14.26d | 0d | TEAM_2Shift_Calendar-1 |  | 6h | 318.75 | 318.75 |
| 349 | 1.11.13.1 | Ch Nozzel EP |  | 2h | 2018-08-04 20:46 | 2018-08-06 06:46 | 345 | 2018-07-10 20:46 | 2018-07-11 06:46 | 2h | 14.26d | 0d | TEAM_2Shift_Calendar-1 | Helper; Grinder | 4h | 212.5 | 212.5 |
| 350 | 1.11.13.2 | Ch Nozzel EP |  | 1h | 2018-08-06 06:46 | 2018-08-06 07:46 | 349 | 2018-07-11 06:46 | 2018-07-11 07:46 | 1h | 14.26d |  | TEAM_2Shift_Calendar-1 | Helper; Grinder | 2h | 106.25 | 106.25 |
| 351 | 1.11.14 | **Ch Nozzel Fit Up** |  | 0.38d | 2018-08-06 07:46 | 2018-08-06 13:46 |  | 2018-07-11 07:46 | 2018-07-11 13:46 | 0.38d | 14.26d | 0d | TEAM_2Shift_Calendar-1 |  | 24h | 1,537.5 | 1,537.5 |
| 352 | 1.11.14.1 | Ch Nozzel Fit Up |  | 4h | 2018-08-06 07:46 | 2018-08-06 11:46 | 348 | 2018-07-11 07:46 | 2018-07-11 11:46 | 4h | 14.26d | 0d | TEAM_2Shift_Calendar-1 | SMAW Welder; Helper; Fitter [200%] | 16h | 1,025 | 1,025 |
| 353 | 1.11.14.2 | Ch Nozzel Fit Up |  | 2h | 2018-08-06 11:46 | 2018-08-06 13:46 | 352 | 2018-07-11 11:46 | 2018-07-11 13:46 | 2h | 14.26d |  | TEAM_2Shift_Calendar-1 | SMAW Welder; Helper; Fitter [200%] | 8h | 512.5 | 512.5 |
| 354 | 1.11.15 | **Ch Nozzel Fit Up Inspection** |  | 0.12d | 2018-08-06 13:46 | 2018-08-06 15:46 |  | 2018-07-11 13:46 | 2018-07-11 15:46 | 0.12d | 14.26d | 0d | TEAM_2Shift_Calendar-1 |  | 4h | 237.5 | 237.5 |
| 355 | 1.11.15.1 | Ch Nozzel Inspection |  | 1h | 2018-08-06 13:46 | 2018-08-06 14:46 | 351 | 2018-07-11 13:46 | 2018-07-11 14:46 | 1h | 14.26d | 0d | TEAM_2Shift_Calendar-1 | Helper; Fitter | 2h | 118.75 | 118.75 |
| 356 | 1.11.15.2 | Ch Nozzel Inspection |  | 1h | 2018-08-06 14:46 | 2018-08-06 15:46 | 355 | 2018-07-11 14:46 | 2018-07-11 15:46 | 1h | 14.26d |  | TEAM_2Shift_Calendar-1 | Helper; Fitter | 2h | 118.75 | 118.75 |
| 357 | 1.11.16 | **Ch Nozzel Welding** |  | 1.39d | 2018-08-06 15:46 | 2018-08-08 06:04 |  | 2018-07-11 15:46 | 2018-07-13 06:04 | 1.39d | 14.26d | 0d | TEAM_2Shift_Calendar-1 |  | 42.6h | 2,473.12 | 2,473.12 |
| 358 | 1.11.16.1 | Ch Nozzel Welding Arrangement | milestone | 0d | 2018-08-06 15:46 | 2018-08-06 15:46 | 354 | 2018-07-11 15:46 | 2018-07-11 15:46 | 0d | 14.26d | 0d | TEAM_2Shift_Calendar-1 |  |  |  |  |
| 359 | 1.11.16.2 | Ch Nozzel Welding |  | 3h | 2018-08-06 15:46 | 2018-08-06 18:46 | 358 | 2018-07-11 15:46 | 2018-07-11 18:46 | 3h | 14.26d | 0d | TEAM_2Shift_Calendar-1 | Helper; SMAW Welder | 6h | 356.25 | 356.25 |
| 360 | 1.11.16.3 | Ch Nozzel Welding |  | 3h | 2018-08-06 18:46 | 2018-08-06 21:46 | 359 | 2018-07-11 18:46 | 2018-07-11 21:46 | 3h | 14.26d | 0d | TEAM_2Shift_Calendar-1 | Helper; SMAW Welder | 6h | 356.25 | 356.25 |
| 361 | 1.11.16.4 | Ch Nozzel Root DP Check |  | 0.3h | 2018-08-06 21:46 | 2018-08-07 06:04 | 360 | 2018-07-11 21:46 | 2018-07-12 06:04 | 0.3h | 14.26d | 0d | TEAM_2Shift_Calendar-1 | Helper; SMAW Welder | 0.6h | 35.62 | 35.62 |
| 362 | 1.11.16.5 | Ch Nozzel Inner Weld |  | 3h | 2018-08-07 06:04 | 2018-08-07 09:04 | 361 | 2018-07-12 06:04 | 2018-07-12 09:04 | 3h | 14.26d | 0d | TEAM_2Shift_Calendar-1 | Helper; SMAW Welder | 6h | 356.25 | 356.25 |
| 363 | 1.11.16.6 | Ch Nozzel Inner Weld |  | 3h | 2018-08-07 09:04 | 2018-08-07 12:04 | 362 | 2018-07-12 09:04 | 2018-07-12 12:04 | 3h | 14.26d | 0d | TEAM_2Shift_Calendar-1 | Helper; SMAW Welder | 6h | 356.25 | 356.25 |
| 364 | 1.11.16.7 | Rf Pad Fit Up & Nozzle Fit Up |  | 4h | 2018-08-07 12:04 | 2018-08-07 16:04 | 363 | 2018-07-12 12:04 | 2018-07-12 16:04 | 4h | 14.26d | 0d | TEAM_2Shift_Calendar-1 | Helper; SMAW Welder | 8h | 475 | 475 |
| 365 | 1.11.16.8 | Rf Pad Fit Up Welding |  | 4h | 2018-08-07 16:04 | 2018-08-07 20:04 | 364 | 2018-07-12 16:04 | 2018-07-12 20:04 | 4h | 14.26d | 0d | TEAM_2Shift_Calendar-1 | Helper; Grinder | 8h | 425 | 425 |
| 366 | 1.11.16.9 | Nozzel Welding Flush Grind |  | 2h | 2018-08-07 20:04 | 2018-08-08 06:04 | 365 | 2018-07-12 20:04 | 2018-07-13 06:04 | 2h | 14.26d |  | TEAM_2Shift_Calendar-1 | Grinder | 2h | 112.5 | 112.5 |
| 367 | 1.11.17 | **Channel Pp Plate Fit Up** |  | 0.44d | 2018-08-08 06:04 | 2018-08-08 13:04 |  | 2018-07-13 06:04 | 2018-07-13 13:04 | 0.44d | 14.26d | 0d | TEAM_2Shift_Calendar-1 |  | 26h | 1,656.25 | 1,656.25 |
| 368 | 1.11.17.1 | Ch Pp Plate Fit Up |  | 6h | 2018-08-08 06:04 | 2018-08-08 12:04 | 357 | 2018-07-13 06:04 | 2018-07-13 12:04 | 6h | 14.26d | 0d | TEAM_2Shift_Calendar-1 | Helper; SMAW Welder; Fitter [200%] | 24h | 1,537.5 | 1,537.5 |
| 369 | 1.11.17.2 | Ch Pp Plate Fit Up Inspection |  | 1h | 2018-08-08 12:04 | 2018-08-08 13:04 | 368 | 2018-07-13 12:04 | 2018-07-13 13:04 | 1h | 14.26d |  | TEAM_2Shift_Calendar-1 | Helper; Fitter | 2h | 118.75 | 118.75 |

| ID | WBS | Task | Duration | Start | Finish | Predecessors | Baseline start | Baseline finish | Baseline duration | Total slack | Free slack | Calendar | Resources | Work | Cost | Baseline cost |
| --- | --- | --- | --- | --- | --- | --- | --- | --- | --- | --- | --- | --- | --- | --- | --- | --- |
| 370 | 1.11.18 | **Ch Pp Plate Welding** | 1.14d | 2018-08-08 13:04 | 2018-08-09 15:19 |  | 2018-07-13 13:04 | 2018-07-16 15:19 | 1.14d | 14.26d |  | TEAM_2Shift_Calendar-1 |  | 36.5h | 2,164.06 | 2,164.06 |
| 371 | 1.11.18.1 | Ch Pp Plate Welding | 18h | 2018-08-08 13:04 | 2018-08-09 15:04 | 367 | 2018-07-13 13:04 | 2018-07-16 15:04 | 18h | 14.26d | 0d | TEAM_2Shift_Calendar-1 | Helper; SMAW Welder | 36h | 2,137.5 | 2,137.5 |
| 372 | 1.11.18.2 | Ch Pp Plate Face Grinding | 0.25h | 2018-08-09 15:04 | 2018-08-09 15:19 | 371 | 2018-07-16 15:04 | 2018-07-16 15:19 | 0.25h | 14.26d |  | TEAM_2Shift_Calendar-1 | Helper; Grinder | 0.5h | 26.56 | 26.56 |
| 373 | 1.12 | **Shell Side Hydro** | 2.62d | 2018-08-29 18:51 | 2018-09-01 12:51 |  | 2018-08-29 18:51 | 2018-09-01 12:51 | 2.62d | 0.04d | 0d | TEAM_2Shift_Calendar-1 |  | 136.67h | 8,408.33 | 8,408.33 |
| 374 | 1.12.1 | Shell Side Hydro | 2d | 2018-08-29 18:51 | 2018-08-31 18:51 | 200, 269 | 2018-08-29 18:51 | 2018-08-31 18:51 | 2d | 0.04d | 0d | TEAM_2Shift_Calendar-1 | Helper [200%]; Forging Non-Std (Cost) [0.1%]; Plate (Cost) [0.1%]; Fitter [200%] | 106.67h | 6,533.33 | 6,533.33 |
| 375 | 1.12.2 | Shell Side TPI Witness | 5h | 2018-08-31 18:51 | 2018-09-01 07:51 | 374 | 2018-08-31 18:51 | 2018-09-01 07:51 | 5h | 0.04d | 0d | TEAM_2Shift_Calendar-1 | Fitter [200%] | 10h | 687.5 | 687.5 |
| 376 | 1.12.3 | De Watering & Dismantle Of Gland | 5h | 2018-09-01 07:51 | 2018-09-01 12:51 | 375 | 2018-09-01 07:51 | 2018-09-01 12:51 | 5h | 0.04d |  | TEAM_2Shift_Calendar-1 | Helper [400%]; Fitter [200%] | 20h | 1,187.5 | 1,187.5 |
| 377 | 1.13 | **Channel Side Hydro** | 2.62d | 2018-08-29 18:51 | 2018-09-01 12:51 |  | 2018-08-29 18:51 | 2018-09-01 12:51 | 2.62d | 0.04d | 0d | TEAM_2Shift_Calendar-1 |  | 136.67h | 8,408.33 | 8,408.33 |
| 378 | 1.13.1 | Shell Side Hydro | 2d | 2018-08-29 18:51 | 2018-08-31 18:51 | 269, 294 | 2018-08-29 18:51 | 2018-08-31 18:51 | 2d | 0.04d | 0d | TEAM_2Shift_Calendar-1 | Helper [200%]; Fitter [200%] | 106.67h | 6,533.33 | 6,533.33 |
| 379 | 1.13.2 | Shell Side TPI Witness | 5h | 2018-08-31 18:51 | 2018-09-01 07:51 | 378 | 2018-08-31 18:51 | 2018-09-01 07:51 | 5h | 0.04d | 0d | TEAM_2Shift_Calendar-1 | Fitter [200%] | 10h | 687.5 | 687.5 |
| 380 | 1.13.3 | De Watering & Dismantle Of Gland | 5h | 2018-09-01 07:51 | 2018-09-01 12:51 | 379 | 2018-09-01 07:51 | 2018-09-01 12:51 | 5h | 0.04d |  | TEAM_2Shift_Calendar-1 | Helper [400%]; Fitter [200%] | 20h | 1,187.5 | 1,187.5 |
| 381 | 1.14 | **Nitrogen Purging** | 1d | 2018-09-01 12:51 | 2018-09-03 12:51 |  | 2018-09-01 12:51 | 2018-09-03 12:51 | 1d | 0.04d | 0d | TEAM_2Shift_Calendar-1 |  | 64h | 3,800 | 3,800 |
| 382 | 1.14.1 | Blind & Nitrogen Purging | 1d | 2018-09-01 12:51 | 2018-09-03 12:51 | 373, 377 | 2018-09-01 12:51 | 2018-09-03 12:51 | 1d | 0.04d |  | TEAM_2Shift_Calendar-1 | Helper [400%]; Fitter [200%] | 64h | 3,800 | 3,800 |
| 383 | 1.15 | **Painting** | 3d | 2018-09-03 12:51 | 2018-09-06 12:51 |  | 2018-09-03 12:51 | 2018-09-06 12:51 | 3d | 0.04d |  | TEAM_2Shift_Calendar-1 |  | 144h |  |  |
| 384 | 1.15.1 | Primer | 1d | 2018-09-03 12:51 | 2018-09-04 12:51 | 381 | 2018-09-03 12:51 | 2018-09-04 12:51 | 1d | 0.04d | 0d | TEAM_2Shift_Calendar-1 | Painter [300%] | 48h |  |  |
| 385 | 1.15.2 | Top Coat1 | 1d | 2018-09-04 12:51 | 2018-09-05 12:51 | 384 | 2018-09-04 12:51 | 2018-09-05 12:51 | 1d | 0.04d | 0d | TEAM_2Shift_Calendar-1 | Painter [300%] | 48h |  |  |
| 386 | 1.15.3 | Top Coat2 | 1d | 2018-09-05 12:51 | 2018-09-06 12:51 | 385 | 2018-09-05 12:51 | 2018-09-06 12:51 | 1d | 0.04d |  | TEAM_2Shift_Calendar-1 | Painter [300%] | 48h |  |  |
| 387 | 2 | **160-EE-0015B** | 39.25d | 2018-06-02 22:00 | 2018-09-12 12:30 |  | 2018-05-10 22:00 | 2018-10-09 12:30 | 58.25d | 0d |  |  |  | 3488.85h | 145,068.5 | 145,068.5 |
| 388 | 2.1 | **Dish Forming - Od** | 13d | 2018-06-02 22:00 | 2018-07-06 06:30 |  | 2018-05-10 22:00 | 2018-06-14 06:30 | 13d | 7.14d | 0d |  |  | 251h | 3,309.38 | 3,309.38 |
| 389 | 2.1.1 | Bar Dish Blank Issuence | 4h | 2018-06-02 22:00 | 2018-06-04 10:00 | 2FS+48d | 2018-05-10 22:00 | 2018-05-11 10:00 | 4h | 14.31d | 0d | TEAM_2Shift_Calendar-1 | Plate (Cost); Store | 4h |  |  |
| 390 | 2.1.2 | Bar-Dish Blank Marking10TXOD 695 | 0.5h | 2018-06-04 10:00 | 2018-06-04 10:30 | 389 | 2018-05-11 10:00 | 2018-05-11 10:30 | 0.5h | 14.31d | 0d | TEAM_2Shift_Calendar-1 | Helper; Fitter | 1h | 59.38 | 59.38 |
| 391 | 2.1.3 | Bar-Dish Blank Marking Inspection | 4h | 2018-06-04 10:30 | 2018-06-04 14:30 | 390 | 2018-05-11 10:30 | 2018-05-11 14:30 | 4h | 14.31d | 0d | TEAM_2Shift_Calendar-1 | Helper; Fitter | 8h | 475 | 475 |
| 392 | 2.1.4 | Bar-Dish Blank Cutting | 5h | 2018-06-04 14:30 | 2018-06-04 19:30 | 391 | 2018-05-11 14:30 | 2018-05-11 19:30 | 5h | 14.31d | 0.31d | TEAM_2Shift_Calendar-1 | Helper; Gas Cutter | 10h | 593.75 | 593.75 |
| 393 | 2.1.5 | Bar-Dish Forming | 7d | 2018-06-05 08:30 | 2018-06-21 17:30 | 392 | 2018-05-14 08:30 | 2018-05-30 17:30 | 7d | 7d | 0d |  | SC (Work) | 112h |  |  |
| 394 | 2.1.6 | Profile Insp | 4h | 2018-06-21 17:30 | 2018-06-21 21:30 | 393 | 2018-05-30 17:30 | 2018-05-30 21:30 | 4h | 14.19d | 0.19d | TEAM_2Shift_Calendar-1 | Helper; Fitter | 8h | 475 | 475 |
| 395 | 2.1.7 | Heat Treatment Preparation | 1d | 2018-06-22 08:30 | 2018-06-25 17:30 | 394 | 2018-05-31 08:30 | 2018-06-01 17:30 | 1d | 7d | 0d |  | SC (Work) | 16h |  |  |
| 396 | 2.1.8 | Stress Releiving- Sub Cont | 4d | 2018-06-26 08:30 | 2018-07-04 17:30 | 395 | 2018-06-02 08:30 | 2018-06-12 17:30 | 4d | 7d | 0d |  | SC (Work) | 64h |  |  |
| 397 | 2.1.9 | Removal Of Spiders | 3h | 2018-07-04 17:30 | 2018-07-04 20:30 | 396 | 2018-06-12 17:30 | 2018-06-12 20:30 | 3h | 14.26d | 0d | TEAM_2Shift_Calendar-1 | Helper; Fitter | 6h | 356.25 | 356.25 |
| 398 | 2.1.10 | Surface Preparation | 4h | 2018-07-04 20:30 | 2018-07-05 08:30 | 397 | 2018-06-12 20:30 | 2018-06-13 08:30 | 4h | 14.26d | 0d | TEAM_2Shift_Calendar-1 | Grinder | 4h | 225 | 225 |
| 399 | 2.1.11 | Inspection | 3h | 2018-07-05 08:30 | 2018-07-05 11:30 | 398 | 2018-06-13 08:30 | 2018-06-13 11:30 | 3h | 14.26d | 0d | TEAM_2Shift_Calendar-1 | Fitter | 3h | 206.25 | 206.25 |
| 400 | 2.1.12 | TPI Inspection | 4h | 2018-07-05 11:30 | 2018-07-05 15:30 | 399 | 2018-06-13 11:30 | 2018-06-13 15:30 | 4h | 14.26d | 0d | TEAM_2Shift_Calendar-1 | Fitter | 4h | 275 | 275 |
| 401 | 2.1.13 | Sf Marking | 2h | 2018-07-05 15:30 | 2018-07-05 17:30 | 400 | 2018-06-13 15:30 | 2018-06-13 17:30 | 2h | 14.26d | 0d | TEAM_2Shift_Calendar-1 | Helper; Fitter | 4h | 237.5 | 237.5 |
| 402 | 2.1.14 | Sf Cutting | 2h | 2018-07-05 17:30 | 2018-07-05 19:30 | 401 | 2018-06-13 17:30 | 2018-06-13 19:30 | 2h | 14.26d | 0d | TEAM_2Shift_Calendar-1 | Helper; Gas Cutter | 4h | 237.5 | 237.5 |
| 403 | 2.1.15 | Sf Gridning & EP | 3h | 2018-07-05 19:30 | 2018-07-06 06:30 | 402 | 2018-06-13 19:30 | 2018-06-14 06:30 | 3h | 14.26d |  | TEAM_2Shift_Calendar-1 | Grinder | 3h | 168.75 | 168.75 |

| ID | WBS | Task | Duration | Start | Finish | Predecessors | Baseline start | Baseline finish | Baseline duration | Total slack | Free slack | Calendar | Resources | Work | Cost | Baseline cost |
| --- | --- | --- | --- | --- | --- | --- | --- | --- | --- | --- | --- | --- | --- | --- | --- | --- |
| 404 | 2.2 | **Dish Forming - Od** | 13d | 2018-06-02 22:00 | 2018-07-06 06:30 |  | 2018-05-10 22:00 | 2018-06-14 06:30 | 13d | 26.16d |  |  |  | 251h | 3,309.38 | 3,309.38 |
| 405 | 2.2.1 | Bar Dish Blank Issuence | 4h | 2018-06-02 22:00 | 2018-06-04 10:00 | 2FS+48d | 2018-05-10 22:00 | 2018-05-11 10:00 | 4h | 52.31d | 0d | TEAM_2Shift_Calendar-1 | Plate (Cost); Store | 4h |  |  |
| 406 | 2.2.2 | Bar-Dish Blank Marking10TXOD 695 | 0.5h | 2018-06-04 10:00 | 2018-06-04 10:30 | 405 | 2018-05-11 10:00 | 2018-05-11 10:30 | 0.5h | 52.31d | 0d | TEAM_2Shift_Calendar-1 | Helper; Fitter | 1h | 59.38 | 59.38 |
| 407 | 2.2.3 | Bar-Dish Blank Marking Inspection | 4h | 2018-06-04 10:30 | 2018-06-04 14:30 | 406 | 2018-05-11 10:30 | 2018-05-11 14:30 | 4h | 52.31d | 0d | TEAM_2Shift_Calendar-1 | Helper; Fitter | 8h | 475 | 475 |
| 408 | 2.2.4 | Bar-Dish Blank Cutting | 5h | 2018-06-04 14:30 | 2018-06-04 19:30 | 407 | 2018-05-11 14:30 | 2018-05-11 19:30 | 5h | 52.31d | 0.31d | TEAM_2Shift_Calendar-1 | Helper; Gas Cutter | 10h | 593.75 | 593.75 |
| 409 | 2.2.5 | Bar-Dish Forming | 7d | 2018-06-05 08:30 | 2018-06-21 17:30 | 408 | 2018-05-14 08:30 | 2018-05-30 17:30 | 7d | 26d | 0d |  | SC (Work) | 112h |  |  |
| 410 | 2.2.6 | Profile Insp | 4h | 2018-06-21 17:30 | 2018-06-21 21:30 | 409 | 2018-05-30 17:30 | 2018-05-30 21:30 | 4h | 52.19d | 0.19d | TEAM_2Shift_Calendar-1 | Helper; Fitter | 8h | 475 | 475 |
| 411 | 2.2.7 | Heat Treatment Preparation | 1d | 2018-06-22 08:30 | 2018-06-25 17:30 | 410 | 2018-05-31 08:30 | 2018-06-01 17:30 | 1d | 26d | 0d |  | SC (Work) | 16h |  |  |
| 412 | 2.2.8 | Stress Releiving- Sub Cont | 4d | 2018-06-26 08:30 | 2018-07-04 17:30 | 411 | 2018-06-02 08:30 | 2018-06-12 17:30 | 4d | 26d | 0d |  | SC (Work) | 64h |  |  |
| 413 | 2.2.9 | Removal Of Spiders | 3h | 2018-07-04 17:30 | 2018-07-04 20:30 | 412 | 2018-06-12 17:30 | 2018-06-12 20:30 | 3h | 52.38d | 0d | TEAM_2Shift_Calendar-1 | Helper; Fitter | 6h | 356.25 | 356.25 |
| 414 | 2.2.10 | Surface Preparation | 4h | 2018-07-04 20:30 | 2018-07-05 08:30 | 413 | 2018-06-12 20:30 | 2018-06-13 08:30 | 4h | 52.38d | 0d | TEAM_2Shift_Calendar-1 | Grinder | 4h | 225 | 225 |
| 415 | 2.2.11 | Inspection | 3h | 2018-07-05 08:30 | 2018-07-05 11:30 | 414 | 2018-06-13 08:30 | 2018-06-13 11:30 | 3h | 52.38d | 0d | TEAM_2Shift_Calendar-1 | Fitter | 3h | 206.25 | 206.25 |
| 416 | 2.2.12 | TPI Inspection | 4h | 2018-07-05 11:30 | 2018-07-05 15:30 | 415 | 2018-06-13 11:30 | 2018-06-13 15:30 | 4h | 52.38d | 0d | TEAM_2Shift_Calendar-1 | Fitter | 4h | 275 | 275 |
| 417 | 2.2.13 | Sf Marking | 2h | 2018-07-05 15:30 | 2018-07-05 17:30 | 416 | 2018-06-13 15:30 | 2018-06-13 17:30 | 2h | 52.38d | 0d | TEAM_2Shift_Calendar-1 | Helper; Fitter | 4h | 237.5 | 237.5 |
| 418 | 2.2.14 | Sf Cutting | 2h | 2018-07-05 17:30 | 2018-07-05 19:30 | 417 | 2018-06-13 17:30 | 2018-06-13 19:30 | 2h | 52.38d | 0d | TEAM_2Shift_Calendar-1 | Helper; Gas Cutter | 4h | 237.5 | 237.5 |
| 419 | 2.2.15 | Sf Gridning & EP | 3h | 2018-07-05 19:30 | 2018-07-06 06:30 | 418 | 2018-06-13 19:30 | 2018-06-14 06:30 | 3h | 52.38d |  | TEAM_2Shift_Calendar-1 | Grinder | 3h | 168.75 | 168.75 |
| 420 | 2.3 | **Tube Sheet** | 11.91d | 2018-06-28 22:00 | 2018-07-27 16:00 |  | 2018-06-28 22:00 | 2018-07-27 16:00 | 11.91d | 0.5d | 0d |  |  | 288h | 1,500 | 1,500 |
| 421 | 2.3.1 | **Tube Sheet Machining1 off 2** | 0.5d | 2018-06-29 06:00 | 2018-06-29 17:30 |  | 2018-06-29 06:00 | 2018-06-29 17:30 | 0.5d | 11.95d |  |  |  | 8h |  |  |
| 422 | 2.3.1.1 | Inward Inspection | 6.5h | 2018-06-29 06:00 | 2018-06-29 12:30 | 2FS+68d | 2018-06-29 06:00 | 2018-06-29 12:30 | 6.5h | 23.67d | 0.06d | TEAM_2Shift_Calendar-1 | Tube Sheet (Cost) [0.1%]; QC Engineer | 4h |  |  |
| 423 | 2.3.1.2 | Tube Sheet M/C1/2 | 4h | 2018-06-29 13:30 | 2018-06-29 17:30 | 422 | 2018-06-29 13:30 | 2018-06-29 17:30 | 4h | 11.95d |  |  | SC (Work) | 4h |  |  |
| 424 | 2.3.2 | **Tube Sheet Drilling1 off 2** | 8.06d | 2018-06-29 15:00 | 2018-07-19 16:00 |  | 2018-06-29 15:00 | 2018-07-19 16:00 | 8.06d | 4.03d |  |  |  | 134h | 475 | 475 |
| 425 | 2.3.2.1 | Tube Sheet Drilling1/2 | 7d | 2018-06-29 15:00 | 2018-07-17 15:00 | 431 | 2018-06-29 15:00 | 2018-07-17 15:00 | 7d | 4.03d | 0d |  | SC (Work) | 112h |  |  |
| 426 | 2.3.2.2 | Exp Groove+Welding Groove1/2 | 4h | 2018-07-17 15:00 | 2018-07-18 10:00 | 425 | 2018-07-17 15:00 | 2018-07-18 10:00 | 4h | 4.03d | 0d |  | SC (Work) | 4h |  |  |
| 427 | 2.3.2.3 | Tie Rod, Pulling, Lifting Hole 1/2 | 4h | 2018-07-18 10:00 | 2018-07-18 15:00 | 426 | 2018-07-18 10:00 | 2018-07-18 15:00 | 4h | 4.03d | 0d |  | SC (Work) | 4h |  |  |
| 428 | 2.3.2.4 | Pass Partition Groove M/C1/2 | 6h | 2018-07-18 15:00 | 2018-07-19 12:00 | 427 | 2018-07-18 15:00 | 2018-07-19 12:00 | 6h | 4.03d | 0d |  | SC (Work) | 6h |  |  |
| 429 | 2.3.2.5 | Cleaning ,Go/No Go Check1/2 | 2h | 2018-07-19 12:00 | 2018-07-19 14:00 | 428 | 2018-07-19 12:00 | 2018-07-19 14:00 | 2h | 8.04d | 0d | TEAM_2Shift_Calendar-1 | Helper; Fitter | 4h | 237.5 | 237.5 |
| 430 | 2.3.2.6 | Final Inspection1/2 | 2h | 2018-07-19 14:00 | 2018-07-19 16:00 | 429 | 2018-07-19 14:00 | 2018-07-19 16:00 | 2h | 8.04d |  | TEAM_2Shift_Calendar-1 | Helper; Fitter | 4h | 237.5 | 237.5 |

| ID | WBS | Task | Duration | Start | Finish | Predecessors | Baseline start | Baseline finish | Baseline duration | Total slack | Free slack | Calendar | Resources | Work | Cost | Baseline cost |
| --- | --- | --- | --- | --- | --- | --- | --- | --- | --- | --- | --- | --- | --- | --- | --- | --- |
| 431 | 2.3.3 | **Tube Sheet Machining2 off 2** | 0.34d | 2018-06-28 22:00 | 2018-06-29 15:00 |  | 2018-06-28 22:00 | 2018-06-29 15:00 | 0.34d | 0.5d | 0d |  |  | 12h | 550 | 550 |
| 432 | 2.3.3.1 | Inward Inspection | 4h | 2018-06-28 22:00 | 2018-06-29 10:00 | 2FS+68d | 2018-06-28 22:00 | 2018-06-29 10:00 | 4h | 1.03d | 0d | TEAM_2Shift_Calendar-1 | Tube Sheet (Cost); Fitter [200%] | 8h | 550 | 550 |
| 433 | 2.3.3.2 | Tube Sheet M/C2/2 | 4h | 2018-06-29 10:00 | 2018-06-29 15:00 | 432 | 2018-06-29 10:00 | 2018-06-29 15:00 | 4h | 0.53d |  |  | SC (Work) | 4h |  |  |
| 434 | 2.3.4 | **Tube Sheet Drilling2 off 2** | 11.56d | 2018-06-29 15:00 | 2018-07-27 16:00 |  | 2018-06-29 15:00 | 2018-07-27 16:00 | 11.56d | 0.53d |  |  |  | 134h | 475 | 475 |
| 435 | 2.3.4.1 | Tube Sheet Drilling2/2 | 7d | 2018-06-29 15:00 | 2018-07-17 15:00 | 431 | 2018-06-29 15:00 | 2018-07-17 15:00 | 7d | 0.53d | 0d |  | SC (Work) | 112h |  |  |
| 436 | 2.3.4.2 | Exp Groove+Welding Groove2/2 | 4h | 2018-07-17 15:00 | 2018-07-18 10:00 | 435 | 2018-07-17 15:00 | 2018-07-18 10:00 | 4h | 0.53d | 0d |  | SC (Work) | 4h |  |  |
| 437 | 2.3.4.3 | Tie Rod, Pulling, Lifting Hole2/2 | 4h | 2018-07-18 10:00 | 2018-07-18 15:00 | 436 | 2018-07-18 10:00 | 2018-07-18 15:00 | 4h | 0.53d | 0d |  | SC (Work) | 4h |  |  |
| 438 | 2.3.4.4 | Pass Partition Groove M/C2/2 | 6h | 2018-07-18 15:00 | 2018-07-19 12:00 | 437 | 2018-07-18 15:00 | 2018-07-19 12:00 | 6h | 0.53d | 0d |  | SC (Work) | 6h |  |  |
| 439 | 2.3.4.5 | Cleaning ,Go/No Go Check2/2 | 2h | 2018-07-19 12:00 | 2018-07-19 14:00 | 438 | 2018-07-19 12:00 | 2018-07-19 14:00 | 2h | 1.04d | 0d | TEAM_2Shift_Calendar-1 | Helper; Fitter | 4h | 237.5 | 237.5 |
| 440 | 2.3.4.6 | Final Inspection2/2 | 2h | 2018-07-19 14:00 | 2018-07-19 16:00 | 439 | 2018-07-19 14:00 | 2018-07-19 16:00 | 2h | 1.04d | 0d | TEAM_2Shift_Calendar-1 | Helper; Fitter | 4h | 237.5 | 237.5 |
| 441 | 2.3.4.7 | Dummy Activity | 7d | 2018-07-19 16:00 | 2018-07-27 16:00 | 440 | 2018-07-19 16:00 | 2018-07-27 16:00 | 7d | 1.04d |  | TEAM_2Shift_Calendar-1 |  |  |  |  |
| 442 | 2.4 | **Nozzle Fab** | 3.83d | 2018-06-04 06:00 | 2018-06-07 19:15 |  | 2018-05-11 06:00 | 2018-05-16 19:15 | 3.83d | 74.58d |  | TEAM_2Shift_Calendar-1 |  | 253.5h | 15,020.31 | 15,020.31 |
| 443 | 2.4.1 | **Sh Nozzel Pipe Marking** | 0.44d | 2018-06-04 06:00 | 2018-06-04 13:00 |  | 2018-05-11 06:00 | 2018-05-11 13:00 | 0.44d | 75.12d | 0d | TEAM_2Shift_Calendar-1 |  | 14h | 831.25 | 831.25 |
| 444 | 2.4.1.1 | 16"NB- 2 Nos | 4h | 2018-06-04 06:00 | 2018-06-04 10:00 | 2FS+48d | 2018-05-11 06:00 | 2018-05-11 10:00 | 4h | 75.12d | 0d | TEAM_2Shift_Calendar-1 | Helper; Forging Std (Cost) [0.1%]; Pipe (Cost) [0.1%]; Fitter | 8h | 475 | 475 |
| 445 | 2.4.1.2 | 2" NB Mp Con - 2 Nos | 1h | 2018-06-04 10:00 | 2018-06-04 11:00 | 444 | 2018-05-11 10:00 | 2018-05-11 11:00 | 1h | 75.12d | 0d | TEAM_2Shift_Calendar-1 | Helper; Forging Std (Cost) [0.1%]; Pipe (Cost) [0.1%]; Fitter | 2h | 118.75 | 118.75 |
| 446 | 2.4.1.3 | 1.5" NB Mp Con - 2 Nos | 1h | 2018-06-04 11:00 | 2018-06-04 12:00 | 445 | 2018-05-11 11:00 | 2018-05-11 12:00 | 1h | 75.12d | 0d | TEAM_2Shift_Calendar-1 | Helper; Forging Std (Cost) [0.1%]; Pipe (Cost) [0.1%]; Fitter | 2h | 118.75 | 118.75 |
| 447 | 2.4.1.4 | Inspection | 1h | 2018-06-04 12:00 | 2018-06-04 13:00 | 446 | 2018-05-11 12:00 | 2018-05-11 13:00 | 1h | 75.12d |  | TEAM_2Shift_Calendar-1 | Helper; Fitter | 2h | 118.75 | 118.75 |
| 448 | 2.4.2 | **Sh Nozzel Pipe Cutting** | 0.44d | 2018-06-04 13:00 | 2018-06-04 20:00 |  | 2018-05-11 13:00 | 2018-05-11 20:00 | 0.44d | 75.12d | 0d | TEAM_2Shift_Calendar-1 |  | 14h | 831.25 | 831.25 |
| 449 | 2.4.2.1 | 16"NB- 2 Nos | 4h | 2018-06-04 13:00 | 2018-06-04 17:00 | 443 | 2018-05-11 13:00 | 2018-05-11 17:00 | 4h | 75.12d | 0d | TEAM_2Shift_Calendar-1 | Helper; Gas Cutter | 8h | 475 | 475 |
| 450 | 2.4.2.2 | 2" NB Mp Con - 2 Nos | 1h | 2018-06-04 17:00 | 2018-06-04 18:00 | 449 | 2018-05-11 17:00 | 2018-05-11 18:00 | 1h | 75.12d | 0d | TEAM_2Shift_Calendar-1 | Helper; Gas Cutter | 2h | 118.75 | 118.75 |
| 451 | 2.4.2.3 | 1.5" NB Mp Con - 2 Nos | 1h | 2018-06-04 18:00 | 2018-06-04 19:00 | 450 | 2018-05-11 18:00 | 2018-05-11 19:00 | 1h | 75.12d | 0d | TEAM_2Shift_Calendar-1 | Helper; Gas Cutter | 2h | 118.75 | 118.75 |
| 452 | 2.4.2.4 | Inspection | 1h | 2018-06-04 19:00 | 2018-06-04 20:00 | 451 | 2018-05-11 19:00 | 2018-05-11 20:00 | 1h | 75.12d |  | TEAM_2Shift_Calendar-1 | Helper; Gas Cutter | 2h | 118.75 | 118.75 |
| 453 | 2.4.3 | **Sh Nozzel Pipe EP** | 0.5d | 2018-06-04 20:00 | 2018-06-05 12:00 |  | 2018-05-11 20:00 | 2018-05-14 12:00 | 0.5d | 75.12d | 0d | TEAM_2Shift_Calendar-1 |  | 16h | 950 | 950 |
| 454 | 2.4.3.1 | 16"NB- 2 Nos | 5h | 2018-06-04 20:00 | 2018-06-05 09:00 | 448 | 2018-05-11 20:00 | 2018-05-14 09:00 | 5h | 75.12d | 0d | TEAM_2Shift_Calendar-1 | Helper; Gas Cutter | 10h | 593.75 | 593.75 |
| 455 | 2.4.3.2 | 2" NB Mp Con - 2 Nos | 1h | 2018-06-05 09:00 | 2018-06-05 10:00 | 454 | 2018-05-14 09:00 | 2018-05-14 10:00 | 1h | 75.12d | 0d | TEAM_2Shift_Calendar-1 | Helper; Gas Cutter | 2h | 118.75 | 118.75 |
| 456 | 2.4.3.3 | 1.5" NB Mp Con - 2 Nos | 1h | 2018-06-05 10:00 | 2018-06-05 11:00 | 455 | 2018-05-14 10:00 | 2018-05-14 11:00 | 1h | 75.12d | 0d | TEAM_2Shift_Calendar-1 | Helper; Gas Cutter | 2h | 118.75 | 118.75 |
| 457 | 2.4.3.4 | Inspection | 1h | 2018-06-05 11:00 | 2018-06-05 12:00 | 456 | 2018-05-14 11:00 | 2018-05-14 12:00 | 1h | 75.12d |  | TEAM_2Shift_Calendar-1 | Helper; Gas Cutter | 2h | 118.75 | 118.75 |

| ID | WBS | Task | Duration | Start | Finish | Predecessors | Baseline start | Baseline finish | Baseline duration | Total slack | Free slack | Calendar | Resources | Work | Cost | Baseline cost |
| --- | --- | --- | --- | --- | --- | --- | --- | --- | --- | --- | --- | --- | --- | --- | --- | --- |
| 458 | 2.4.4 | **Sh Noz+Flg Fiitup** | 0.44d | 2018-06-05 12:00 | 2018-06-05 19:00 |  | 2018-05-14 12:00 | 2018-05-14 19:00 | 0.44d | 75.12d | 0d | TEAM_2Shift_Calendar-1 |  | 28h | 1,793.75 | 1,793.75 |
| 459 | 2.4.4.1 | 16"NB- 2 Nos | 4h | 2018-06-05 12:00 | 2018-06-05 16:00 | 453 | 2018-05-14 12:00 | 2018-05-14 16:00 | 4h | 75.12d | 0d | TEAM_2Shift_Calendar-1 | SMAW Welder; Helper; Fitter [200%] | 16h | 1,025 | 1,025 |
| 460 | 2.4.4.2 | 2" NB Mp Con - 2 Nos | 1h | 2018-06-05 16:00 | 2018-06-05 17:00 | 459 | 2018-05-14 16:00 | 2018-05-14 17:00 | 1h | 75.12d | 0d | TEAM_2Shift_Calendar-1 | SMAW Welder; Helper; Fitter [200%] | 4h | 256.25 | 256.25 |
| 461 | 2.4.4.3 | 1.5" NB Mp Con - 2 Nos | 1h | 2018-06-05 17:00 | 2018-06-05 18:00 | 460 | 2018-05-14 17:00 | 2018-05-14 18:00 | 1h | 75.12d | 0d | TEAM_2Shift_Calendar-1 | SMAW Welder; Helper; Fitter [200%] | 4h | 256.25 | 256.25 |
| 462 | 2.4.4.4 | Inspection | 1h | 2018-06-05 18:00 | 2018-06-05 19:00 | 461 | 2018-05-14 18:00 | 2018-05-14 19:00 | 1h | 75.12d |  | TEAM_2Shift_Calendar-1 | SMAW Welder; Helper; Fitter [200%] | 4h | 256.25 | 256.25 |
| 463 | 2.4.5 | **Sh Nozzel Pipe+Flg Welding** | 0.53d | 2018-06-05 19:00 | 2018-06-06 11:30 |  | 2018-05-14 19:00 | 2018-05-15 11:30 | 0.53d | 75.12d | 0d | TEAM_2Shift_Calendar-1 |  | 17h | 1,009.38 | 1,009.38 |
| 464 | 2.4.5.1 | 16"NB- 2 Nos | 4.5h | 2018-06-05 19:00 | 2018-06-06 07:30 | 458 | 2018-05-14 19:00 | 2018-05-15 07:30 | 4.5h | 75.12d | 0d | TEAM_2Shift_Calendar-1 | Helper; SMAW Welder | 9h | 534.38 | 534.38 |
| 465 | 2.4.5.2 | 2" NB Mp Con - 2 Nos | 2h | 2018-06-06 07:30 | 2018-06-06 09:30 | 464 | 2018-05-15 07:30 | 2018-05-15 09:30 | 2h | 75.12d | 0d | TEAM_2Shift_Calendar-1 | Helper; SMAW Welder | 4h | 237.5 | 237.5 |
| 466 | 2.4.5.3 | 1.5" NB Mp Con - 2 Nos | 1h | 2018-06-06 09:30 | 2018-06-06 10:30 | 465 | 2018-05-15 09:30 | 2018-05-15 10:30 | 1h | 75.12d | 0d | TEAM_2Shift_Calendar-1 | Helper; SMAW Welder | 2h | 118.75 | 118.75 |
| 467 | 2.4.5.4 | Inspection | 1h | 2018-06-06 10:30 | 2018-06-06 11:30 | 466 | 2018-05-15 10:30 | 2018-05-15 11:30 | 1h | 75.12d |  | TEAM_2Shift_Calendar-1 | Helper; SMAW Welder | 2h | 118.75 | 118.75 |
| 468 | 2.4.6 | **Sh Nozzel Pipe Profile Marking** | 0.31d | 2018-06-06 11:30 | 2018-06-06 16:30 |  | 2018-05-15 11:30 | 2018-05-15 16:30 | 0.31d | 75.12d | 0d | TEAM_2Shift_Calendar-1 |  | 10h | 593.75 | 593.75 |
| 469 | 2.4.6.1 | 16"NB- 2 Nos | 2h | 2018-06-06 11:30 | 2018-06-06 13:30 | 463 | 2018-05-15 11:30 | 2018-05-15 13:30 | 2h | 75.12d | 0d | TEAM_2Shift_Calendar-1 | Helper; Fitter | 4h | 237.5 | 237.5 |
| 470 | 2.4.6.2 | 2" NB Mp Con - 2 Nos | 1h | 2018-06-06 13:30 | 2018-06-06 14:30 | 469 | 2018-05-15 13:30 | 2018-05-15 14:30 | 1h | 75.12d | 0d | TEAM_2Shift_Calendar-1 | Helper; Fitter | 2h | 118.75 | 118.75 |
| 471 | 2.4.6.3 | 1.5" NB Mp Con - 2 Nos | 1h | 2018-06-06 14:30 | 2018-06-06 15:30 | 470 | 2018-05-15 14:30 | 2018-05-15 15:30 | 1h | 75.12d | 0d | TEAM_2Shift_Calendar-1 | Helper; Fitter | 2h | 118.75 | 118.75 |
| 472 | 2.4.6.4 | Inspection | 1h | 2018-06-06 15:30 | 2018-06-06 16:30 | 471 | 2018-05-15 15:30 | 2018-05-15 16:30 | 1h | 75.12d |  | TEAM_2Shift_Calendar-1 | Helper; Fitter | 2h | 118.75 | 118.75 |
| 473 | 2.4.7 | **Sh Nozzle Pipe Profile Cutting** | 0.31d | 2018-06-06 16:30 | 2018-06-06 21:30 |  | 2018-05-15 16:30 | 2018-05-15 21:30 | 0.31d | 75.12d | 0d | TEAM_2Shift_Calendar-1 |  | 10h | 531.25 | 531.25 |
| 474 | 2.4.7.1 | 16"NB- 2 Nos | 2h | 2018-06-06 16:30 | 2018-06-06 18:30 | 468 | 2018-05-15 16:30 | 2018-05-15 18:30 | 2h | 75.12d | 0d | TEAM_2Shift_Calendar-1 | Helper; Grinder | 4h | 212.5 | 212.5 |
| 475 | 2.4.7.2 | 2" NB Mp Con - 2 Nos | 1h | 2018-06-06 18:30 | 2018-06-06 19:30 | 474 | 2018-05-15 18:30 | 2018-05-15 19:30 | 1h | 75.12d | 0d | TEAM_2Shift_Calendar-1 | Helper; Grinder | 2h | 106.25 | 106.25 |
| 476 | 2.4.7.3 | 1.5" NB Mp Con - 2 Nos | 1h | 2018-06-06 19:30 | 2018-06-06 20:30 | 475 | 2018-05-15 19:30 | 2018-05-15 20:30 | 1h | 75.12d | 0d | TEAM_2Shift_Calendar-1 | Helper; Grinder | 2h | 106.25 | 106.25 |
| 477 | 2.4.7.4 | Inspection | 1h | 2018-06-06 20:30 | 2018-06-06 21:30 | 476 | 2018-05-15 20:30 | 2018-05-15 21:30 | 1h | 75.12d |  | TEAM_2Shift_Calendar-1 | Helper; Grinder | 2h | 106.25 | 106.25 |
| 478 | 2.4.8 | **Sh Nozzle Pipe Profile EP** | 0.31d | 2018-06-06 21:30 | 2018-06-07 10:30 |  | 2018-05-15 21:30 | 2018-05-16 10:30 | 0.31d | 75.12d |  | TEAM_2Shift_Calendar-1 |  | 10h | 531.25 | 531.25 |
| 479 | 2.4.8.1 | 16"NB- 2 Nos | 2h | 2018-06-06 21:30 | 2018-06-07 07:30 | 473 | 2018-05-15 21:30 | 2018-05-16 07:30 | 2h | 75.12d | 0d | TEAM_2Shift_Calendar-1 | Helper; Grinder | 4h | 212.5 | 212.5 |
| 480 | 2.4.8.2 | 2" NB Mp Con - 2 Nos | 1h | 2018-06-07 07:30 | 2018-06-07 08:30 | 479 | 2018-05-16 07:30 | 2018-05-16 08:30 | 1h | 75.12d | 0d | TEAM_2Shift_Calendar-1 | Helper; Grinder | 2h | 106.25 | 106.25 |
| 481 | 2.4.8.3 | 1.5" NB Mp Con - 2 Nos | 1h | 2018-06-07 08:30 | 2018-06-07 09:30 | 480 | 2018-05-16 08:30 | 2018-05-16 09:30 | 1h | 75.12d | 0d | TEAM_2Shift_Calendar-1 | Helper; Grinder | 2h | 106.25 | 106.25 |
| 482 | 2.4.8.4 | Inspection | 1h | 2018-06-07 09:30 | 2018-06-07 10:30 | 481 | 2018-05-16 09:30 | 2018-05-16 10:30 | 1h | 75.12d |  | TEAM_2Shift_Calendar-1 | Helper; Grinder | 2h | 106.25 | 106.25 |

| ID | WBS | Task | Duration | Start | Finish | Predecessors | Baseline start | Baseline finish | Baseline duration | Total slack | Free slack | Calendar | Resources | Work | Cost | Baseline cost |
| --- | --- | --- | --- | --- | --- | --- | --- | --- | --- | --- | --- | --- | --- | --- | --- | --- |
| 483 | 2.4.9 | **Ch Nozzel Pipe Marking** | 0.19d | 2018-06-04 06:00 | 2018-06-04 09:00 |  | 2018-05-11 06:00 | 2018-05-11 09:00 | 0.19d | 74.58d | 0d | TEAM_2Shift_Calendar-1 |  | 6h | 356.25 | 356.25 |
| 484 | 2.4.9.1 | 6"Nb- 2 Nos | 1h | 2018-06-04 06:00 | 2018-06-04 07:00 | 2FS+48d | 2018-05-11 06:00 | 2018-05-11 07:00 | 1h | 74.58d | 0d | TEAM_2Shift_Calendar-1 | Helper; Fitter | 2h | 118.75 | 118.75 |
| 485 | 2.4.9.2 | 2" Mp Con - 4 Nos | 0.5h | 2018-06-04 07:00 | 2018-06-04 07:30 | 484 | 2018-05-11 07:00 | 2018-05-11 07:30 | 0.5h | 74.58d | 0d | TEAM_2Shift_Calendar-1 | Helper; Fitter | 1h | 59.38 | 59.38 |
| 486 | 2.4.9.3 | 1.5" Mp Con - 2 Nos | 0.5h | 2018-06-04 07:30 | 2018-06-04 08:00 | 485 | 2018-05-11 07:30 | 2018-05-11 08:00 | 0.5h | 74.58d | 0d | TEAM_2Shift_Calendar-1 | Helper; Fitter | 1h | 59.38 | 59.38 |
| 487 | 2.4.9.4 | Inspection | 1h | 2018-06-04 08:00 | 2018-06-04 09:00 | 486 | 2018-05-11 08:00 | 2018-05-11 09:00 | 1h | 74.58d |  | TEAM_2Shift_Calendar-1 | Helper; Fitter | 2h | 118.75 | 118.75 |
| 488 | 2.4.10 | **Ch Nozzel Pipe Cutting** | 0.84d | 2018-06-04 09:00 | 2018-06-05 06:30 |  | 2018-05-11 09:00 | 2018-05-14 06:30 | 0.84d | 74.58d | 0d | TEAM_2Shift_Calendar-1 |  | 27h | 1,603.12 | 1,603.12 |
| 489 | 2.4.10.1 | 6"Nb- 2 Nos | 10h | 2018-06-04 09:00 | 2018-06-04 19:00 | 483 | 2018-05-11 09:00 | 2018-05-11 19:00 | 10h | 74.58d | 0d | TEAM_2Shift_Calendar-1 | Helper; Gas Cutter | 20h | 1,187.5 | 1,187.5 |
| 490 | 2.4.10.2 | 2" Mp Con - 4 Nos | 2h | 2018-06-04 19:00 | 2018-06-04 21:00 | 489 | 2018-05-11 19:00 | 2018-05-11 21:00 | 2h | 74.58d | 0d | TEAM_2Shift_Calendar-1 | Helper; Gas Cutter | 4h | 237.5 | 237.5 |
| 491 | 2.4.10.3 | 1.5" Mp Con - 2 Nos | 0.5h | 2018-06-04 21:00 | 2018-06-04 21:30 | 490 | 2018-05-11 21:00 | 2018-05-11 21:30 | 0.5h | 74.58d | 0d | TEAM_2Shift_Calendar-1 | Helper; Gas Cutter | 1h | 59.38 | 59.38 |
| 492 | 2.4.10.4 | Inspection | 1h | 2018-06-04 21:30 | 2018-06-05 06:30 | 491 | 2018-05-11 21:30 | 2018-05-14 06:30 | 1h | 74.58d |  | TEAM_2Shift_Calendar-1 | Helper; Gas Cutter | 2h | 118.75 | 118.75 |
| 493 | 2.4.11 | **Ch Nozzel Pipe EP** | 0.38d | 2018-06-05 06:30 | 2018-06-05 12:30 |  | 2018-05-14 06:30 | 2018-05-14 12:30 | 0.38d | 74.58d | 0d | TEAM_2Shift_Calendar-1 |  | 12h | 637.5 | 637.5 |
| 494 | 2.4.11.1 | 6"Nb- 2 Nos | 2h | 2018-06-05 06:30 | 2018-06-05 08:30 | 488 | 2018-05-14 06:30 | 2018-05-14 08:30 | 2h | 74.58d | 0d | TEAM_2Shift_Calendar-1 | Helper; Forging Std (Cost); Pipe (Cost); Grinder | 4h | 212.5 | 212.5 |
| 495 | 2.4.11.2 | 2" Mp Con - 4 Nos | 2h | 2018-06-05 08:30 | 2018-06-05 10:30 | 494 | 2018-05-14 08:30 | 2018-05-14 10:30 | 2h | 74.58d | 0d | TEAM_2Shift_Calendar-1 | Helper; Forging Std (Cost) [0.1%]; Pipe (Cost) [0.1%]; Grinder | 4h | 212.5 | 212.5 |
| 496 | 2.4.11.3 | 1.5" Mp Con - 2 Nos | 1h | 2018-06-05 10:30 | 2018-06-05 11:30 | 495 | 2018-05-14 10:30 | 2018-05-14 11:30 | 1h | 74.58d | 0d | TEAM_2Shift_Calendar-1 | Helper; Grinder | 2h | 106.25 | 106.25 |
| 497 | 2.4.11.4 | Inspection | 1h | 2018-06-05 11:30 | 2018-06-05 12:30 | 496 | 2018-05-14 11:30 | 2018-05-14 12:30 | 1h | 74.58d |  | TEAM_2Shift_Calendar-1 | Helper; Grinder | 2h | 106.25 | 106.25 |
| 498 | 2.4.12 | **Ch Noz+Flg Fit Up** | 0.38d | 2018-06-05 12:30 | 2018-06-05 18:30 |  | 2018-05-14 12:30 | 2018-05-14 18:30 | 0.38d | 74.58d | 0d | TEAM_2Shift_Calendar-1 |  | 24h | 1,537.5 | 1,537.5 |
| 499 | 2.4.12.1 | 6"Nb- 2 Nos | 2h | 2018-06-05 12:30 | 2018-06-05 14:30 | 493 | 2018-05-14 12:30 | 2018-05-14 14:30 | 2h | 74.58d | 0d | TEAM_2Shift_Calendar-1 | SMAW Welder; Helper; Fitter [200%] | 8h | 512.5 | 512.5 |
| 500 | 2.4.12.2 | 2" Mp Con - 4 Nos | 2h | 2018-06-05 14:30 | 2018-06-05 16:30 | 499 | 2018-05-14 14:30 | 2018-05-14 16:30 | 2h | 74.58d | 0d | TEAM_2Shift_Calendar-1 | SMAW Welder; Helper; Fitter [200%] | 8h | 512.5 | 512.5 |
| 501 | 2.4.12.3 | 1.5" Mp Con - 2 Nos | 1h | 2018-06-05 16:30 | 2018-06-05 17:30 | 500 | 2018-05-14 16:30 | 2018-05-14 17:30 | 1h | 74.58d | 0d | TEAM_2Shift_Calendar-1 | SMAW Welder; Helper; Fitter [200%] | 4h | 256.25 | 256.25 |
| 502 | 2.4.12.4 | Inspection | 1h | 2018-06-05 17:30 | 2018-06-05 18:30 | 501 | 2018-05-14 17:30 | 2018-05-14 18:30 | 1h | 74.58d |  | TEAM_2Shift_Calendar-1 | SMAW Welder; Helper; Fitter [200%] | 4h | 256.25 | 256.25 |
| 503 | 2.4.13 | **Ch Nozzel Pipe+Flg Welding** | 0.86d | 2018-06-05 18:30 | 2018-06-06 16:15 |  | 2018-05-14 18:30 | 2018-05-15 16:15 | 0.86d | 74.58d | 0d | TEAM_2Shift_Calendar-1 |  | 27.5h | 1,632.81 | 1,632.81 |
| 504 | 2.4.13.1 | 6"Nb- 2 Nos | 6h | 2018-06-05 18:30 | 2018-06-06 08:30 | 498 | 2018-05-14 18:30 | 2018-05-15 08:30 | 6h | 74.58d | 0d | TEAM_2Shift_Calendar-1 | Helper; SMAW Welder | 12h | 712.5 | 712.5 |
| 505 | 2.4.13.2 | 2" Mp Con - 4 Nos | 6h | 2018-06-06 08:30 | 2018-06-06 14:30 | 504 | 2018-05-15 08:30 | 2018-05-15 14:30 | 6h | 74.58d | 0d | TEAM_2Shift_Calendar-1 | Helper; SMAW Welder | 12h | 712.5 | 712.5 |
| 506 | 2.4.13.3 | 1.5" Mp Con - 2 Nos | 0.75h | 2018-06-06 14:30 | 2018-06-06 15:15 | 505 | 2018-05-15 14:30 | 2018-05-15 15:15 | 0.75h | 74.58d | 0d | TEAM_2Shift_Calendar-1 | Helper; SMAW Welder | 1.5h | 89.06 | 89.06 |
| 507 | 2.4.13.4 | Inspection | 1h | 2018-06-06 15:15 | 2018-06-06 16:15 | 506 | 2018-05-15 15:15 | 2018-05-15 16:15 | 1h | 74.58d |  | TEAM_2Shift_Calendar-1 | Helper; SMAW Welder | 2h | 118.75 | 118.75 |

| ID | WBS | Task | Duration | Start | Finish | Predecessors | Baseline start | Baseline finish | Baseline duration | Total slack | Free slack | Calendar | Resources | Work | Cost | Baseline cost |
| --- | --- | --- | --- | --- | --- | --- | --- | --- | --- | --- | --- | --- | --- | --- | --- | --- |
| 508 | 2.4.14 | **Ch Nozzel Pipe Profile Marking** | 0.44d | 2018-06-06 16:15 | 2018-06-07 07:15 |  | 2018-05-15 16:15 | 2018-05-16 07:15 | 0.44d | 74.58d | 0d | TEAM_2Shift_Calendar-1 |  | 14h | 831.25 | 831.25 |
| 509 | 2.4.14.1 | 6"Nb- 2 Nos | 2h | 2018-06-06 16:15 | 2018-06-06 18:15 | 503 | 2018-05-15 16:15 | 2018-05-15 18:15 | 2h | 74.58d | 0d | TEAM_2Shift_Calendar-1 | Helper; Fitter | 4h | 237.5 | 237.5 |
| 510 | 2.4.14.2 | 2" Mp Con - 4 Nos | 2h | 2018-06-06 18:15 | 2018-06-06 20:15 | 509 | 2018-05-15 18:15 | 2018-05-15 20:15 | 2h | 74.58d | 0d | TEAM_2Shift_Calendar-1 | Helper; Fitter | 4h | 237.5 | 237.5 |
| 511 | 2.4.14.3 | 1.5" Mp Con - 2 Nos | 2h | 2018-06-06 20:15 | 2018-06-07 06:15 | 510 | 2018-05-15 20:15 | 2018-05-16 06:15 | 2h | 74.58d | 0d | TEAM_2Shift_Calendar-1 | Helper; Fitter | 4h | 237.5 | 237.5 |
| 512 | 2.4.14.4 | Inspection | 1h | 2018-06-07 06:15 | 2018-06-07 07:15 | 511 | 2018-05-16 06:15 | 2018-05-16 07:15 | 1h | 74.58d |  | TEAM_2Shift_Calendar-1 | Helper; Fitter | 2h | 118.75 | 118.75 |
| 513 | 2.4.15 | **Ch Nozzle Pipe Profile Cutting** | 0.38d | 2018-06-07 07:15 | 2018-06-07 13:15 |  | 2018-05-16 07:15 | 2018-05-16 13:15 | 0.38d | 74.58d | 0d | TEAM_2Shift_Calendar-1 |  | 12h | 712.5 | 712.5 |
| 514 | 2.4.15.1 | 6"Nb- 2 Nos | 2h | 2018-06-07 07:15 | 2018-06-07 09:15 | 508 | 2018-05-16 07:15 | 2018-05-16 09:15 | 2h | 74.58d | 0d | TEAM_2Shift_Calendar-1 | Helper; Fitter | 4h | 237.5 | 237.5 |
| 515 | 2.4.15.2 | 2" Mp Con - 4 Nos | 2h | 2018-06-07 09:15 | 2018-06-07 11:15 | 514 | 2018-05-16 09:15 | 2018-05-16 11:15 | 2h | 74.58d | 0d | TEAM_2Shift_Calendar-1 | Helper; Fitter | 4h | 237.5 | 237.5 |
| 516 | 2.4.15.3 | 1.5" Mp Con - 2 Nos | 1h | 2018-06-07 11:15 | 2018-06-07 12:15 | 515 | 2018-05-16 11:15 | 2018-05-16 12:15 | 1h | 74.58d | 0d | TEAM_2Shift_Calendar-1 | Helper; Fitter | 2h | 118.75 | 118.75 |
| 517 | 2.4.15.4 | Inspection | 1h | 2018-06-07 12:15 | 2018-06-07 13:15 | 516 | 2018-05-16 12:15 | 2018-05-16 13:15 | 1h | 74.58d |  | TEAM_2Shift_Calendar-1 | Helper; Fitter | 2h | 118.75 | 118.75 |
| 518 | 2.4.16 | **Ch Nozzle Pipe Profile EP** | 0.38d | 2018-06-07 13:15 | 2018-06-07 19:15 |  | 2018-05-16 13:15 | 2018-05-16 19:15 | 0.38d | 74.58d |  | TEAM_2Shift_Calendar-1 |  | 12h | 637.5 | 637.5 |
| 519 | 2.4.16.1 | 6"Nb- 2 Nos | 2h | 2018-06-07 13:15 | 2018-06-07 15:15 | 513 | 2018-05-16 13:15 | 2018-05-16 15:15 | 2h | 74.58d | 0d | TEAM_2Shift_Calendar-1 | Helper; Grinder | 4h | 212.5 | 212.5 |
| 520 | 2.4.16.2 | 2" Mp Con - 4 Nos | 2h | 2018-06-07 15:15 | 2018-06-07 17:15 | 519 | 2018-05-16 15:15 | 2018-05-16 17:15 | 2h | 74.58d | 0d | TEAM_2Shift_Calendar-1 | Helper; Grinder | 4h | 212.5 | 212.5 |
| 521 | 2.4.16.3 | 1.5" Mp Con - 2 Nos | 1h | 2018-06-07 17:15 | 2018-06-07 18:15 | 520 | 2018-05-16 17:15 | 2018-05-16 18:15 | 1h | 74.58d | 0d | TEAM_2Shift_Calendar-1 | Helper; Grinder | 2h | 106.25 | 106.25 |
| 522 | 2.4.16.4 | Inspection | 1h | 2018-06-07 18:15 | 2018-06-07 19:15 | 521 | 2018-05-16 18:15 | 2018-05-16 19:15 | 1h | 74.58d |  | TEAM_2Shift_Calendar-1 | Helper; Grinder | 2h | 106.25 | 106.25 |
| 523 | 2.5 | **Saddle & Other** | 2.26d | 2018-06-02 22:00 | 2018-06-06 10:06 |  | 2018-05-10 22:00 | 2018-05-15 10:06 | 2.26d | 75.74d | 0d | TEAM_2Shift_Calendar-1 |  | 93.2h | 5,336.88 | 5,336.88 |
| 524 | 2.5.1 | **Bottom Saddle Fabrrication** | 0.14d | 2018-06-02 22:00 | 2018-06-04 08:15 |  | 2018-05-10 22:00 | 2018-05-11 08:15 | 0.14d | 75.74d | 0d | TEAM_2Shift_Calendar-1 |  | 3.5h | 148.44 | 148.44 |
| 525 | 2.5.1.1 | Plate Issuence | 1h | 2018-06-02 22:00 | 2018-06-04 07:00 | 2FS+48d | 2018-05-10 22:00 | 2018-05-11 07:00 | 1h | 75.74d | 0d | TEAM_2Shift_Calendar-1 | Plate (Cost); Store | 1h |  |  |
| 526 | 2.5.1.2 | Base Marking | 0.25h | 2018-06-04 07:00 | 2018-06-04 07:15 | 525 | 2018-05-11 07:00 | 2018-05-11 07:15 | 0.25h | 75.74d | 0d | TEAM_2Shift_Calendar-1 | Helper; Fitter | 0.5h | 29.69 | 29.69 |
| 527 | 2.5.1.3 | Web Pl Marking | 0.5h | 2018-06-04 07:15 | 2018-06-04 07:45 | 526 | 2018-05-11 07:15 | 2018-05-11 07:45 | 0.5h | 75.74d | 0d | TEAM_2Shift_Calendar-1 | Helper; Fitter | 1h | 59.38 | 59.38 |
| 528 | 2.5.1.4 | Ribs Marking | 0.5h | 2018-06-04 07:45 | 2018-06-04 08:15 | 527 | 2018-05-11 07:45 | 2018-05-11 08:15 | 0.5h | 75.74d |  | TEAM_2Shift_Calendar-1 | Helper; Fitter | 1h | 59.38 | 59.38 |
| 529 | 2.5.2 | **Bottom Sadlle Plate Cutting** | 0.2d | 2018-06-04 08:15 | 2018-06-04 11:30 |  | 2018-05-11 08:15 | 2018-05-11 11:30 | 0.2d | 75.74d | 0d | TEAM_2Shift_Calendar-1 |  | 6.5h | 379.69 | 379.69 |
| 530 | 2.5.2.1 | Base Cutting | 0.5h | 2018-06-04 08:15 | 2018-06-04 08:45 | 524 | 2018-05-11 08:15 | 2018-05-11 08:45 | 0.5h | 75.74d | 0d | TEAM_2Shift_Calendar-1 | Helper; Gas Cutter | 1h | 59.38 | 59.38 |
| 531 | 2.5.2.2 | Web Pl Cutting | 0.75h | 2018-06-04 08:45 | 2018-06-04 09:30 | 530 | 2018-05-11 08:45 | 2018-05-11 09:30 | 0.75h | 75.74d | 0d | TEAM_2Shift_Calendar-1 | Helper; Gas Cutter | 1.5h | 89.06 | 89.06 |
| 532 | 2.5.2.3 | Ribs Cutting | 1h | 2018-06-04 09:30 | 2018-06-04 10:30 | 531 | 2018-05-11 09:30 | 2018-05-11 10:30 | 1h | 75.74d | 0d | TEAM_2Shift_Calendar-1 | Helper; Gas Cutter | 2h | 118.75 | 118.75 |
| 533 | 2.5.2.4 | Grinding Of Above | 1h | 2018-06-04 10:30 | 2018-06-04 11:30 | 532 | 2018-05-11 10:30 | 2018-05-11 11:30 | 1h | 75.74d |  | TEAM_2Shift_Calendar-1 | Grinder [200%] | 2h | 112.5 | 112.5 |

| ID | WBS | Task | Duration | Start | Finish | Predecessors | Baseline start | Baseline finish | Baseline duration | Total slack | Free slack | Calendar | Resources | Work | Cost | Baseline cost |
| --- | --- | --- | --- | --- | --- | --- | --- | --- | --- | --- | --- | --- | --- | --- | --- | --- |
| 534 | 2.5.3 | **Saddle Fit Up & Welding** | 1.15d | 2018-06-04 11:30 | 2018-06-05 13:54 |  | 2018-05-11 11:30 | 2018-05-14 13:54 | 1.15d | 75.74d | 0d | TEAM_2Shift_Calendar-1 |  | 62.8h | 3,728.75 | 3,728.75 |
| 535 | 2.5.3.1 | Base + Web Fit Up | 4h | 2018-06-04 11:30 | 2018-06-04 15:30 | 529 | 2018-05-11 11:30 | 2018-05-11 15:30 | 4h | 75.74d | 0d | TEAM_2Shift_Calendar-1 | Helper [200%]; SMAW Welder; Fitter | 16h | 950 | 950 |
| 536 | 2.5.3.2 | Base + Web Welding | 5.4h | 2018-06-04 15:30 | 2018-06-04 20:54 | 535 | 2018-05-11 15:30 | 2018-05-11 20:54 | 5.4h | 75.74d | 0d | TEAM_2Shift_Calendar-1 | Helper; SMAW Welder | 10.8h | 641.25 | 641.25 |
| 537 | 2.5.3.3 | Ribs+Web Fit Up | 4h | 2018-06-04 20:54 | 2018-06-05 08:54 | 536 | 2018-05-11 20:54 | 2018-05-14 08:54 | 4h | 75.74d | 0d | TEAM_2Shift_Calendar-1 | Helper [200%]; SMAW Welder; Fitter | 16h | 950 | 950 |
| 538 | 2.5.3.4 | Ribs+Web Welding | 5h | 2018-06-05 08:54 | 2018-06-05 13:54 | 537 | 2018-05-14 08:54 | 2018-05-14 13:54 | 5h | 75.74d |  | TEAM_2Shift_Calendar-1 | Helper [200%]; SMAW Welder [200%] | 20h | 1,187.5 | 1,187.5 |
| 539 | 2.5.4 | **Lifting Lug Pad & RF Pad** | 0.59d | 2018-06-05 13:54 | 2018-06-06 07:24 |  | 2018-05-14 13:54 | 2018-05-15 07:24 | 0.59d | 75.74d | 0d | TEAM_2Shift_Calendar-1 |  | 15h | 771.88 | 771.88 |
| 540 | 2.5.4.1 | Plate Issuence | 2h | 2018-06-05 13:54 | 2018-06-05 15:54 | 534 | 2018-05-14 13:54 | 2018-05-14 15:54 | 2h | 75.74d | 0d | TEAM_2Shift_Calendar-1 | Store | 2h |  |  |
| 541 | 2.5.4.2 | Pad Marking | 2h | 2018-06-05 15:54 | 2018-06-05 17:54 | 540 | 2018-05-14 15:54 | 2018-05-14 17:54 | 2h | 75.74d | 0d | TEAM_2Shift_Calendar-1 | Helper; Fitter | 4h | 237.5 | 237.5 |
| 542 | 2.5.4.3 | Pad Cutting | 2h | 2018-06-05 17:54 | 2018-06-05 19:54 | 541 | 2018-05-14 17:54 | 2018-05-14 19:54 | 2h | 75.74d | 0d | TEAM_2Shift_Calendar-1 | Helper; Gas Cutter | 4h | 237.5 | 237.5 |
| 543 | 2.5.4.4 | Pad Grinding | 1.5h | 2018-06-05 19:54 | 2018-06-05 21:24 | 542 | 2018-05-14 19:54 | 2018-05-14 21:24 | 1.5h | 75.74d | 0d | TEAM_2Shift_Calendar-1 | Helper; Grinder | 3h | 159.38 | 159.38 |
| 544 | 2.5.4.5 | Pad Drilling | 2h | 2018-06-05 21:24 | 2018-06-06 07:24 | 543 | 2018-05-14 21:24 | 2018-05-15 07:24 | 2h | 75.74d |  | TEAM_2Shift_Calendar-1 | Driller | 2h | 137.5 | 137.5 |
| 545 | 2.5.5 | **Lifting Lug Preparation** | 0.17d | 2018-06-06 07:24 | 2018-06-06 10:06 |  | 2018-05-15 07:24 | 2018-05-15 10:06 | 0.17d | 75.74d |  | TEAM_2Shift_Calendar-1 |  | 5.4h | 308.12 | 308.12 |
| 546 | 2.5.5.1 | Lifting Lugs Marking | 0.2h | 2018-06-06 07:24 | 2018-06-06 07:36 | 539 | 2018-05-15 07:24 | 2018-05-15 07:36 | 0.2h | 75.74d | 0d | TEAM_2Shift_Calendar-1 | Helper; Fitter | 0.4h | 23.75 | 23.75 |
| 547 | 2.5.5.2 | Lifting Lugs Cutting | 0.5h | 2018-06-06 07:36 | 2018-06-06 08:06 | 546 | 2018-05-15 07:36 | 2018-05-15 08:06 | 0.5h | 75.74d | 0d | TEAM_2Shift_Calendar-1 | Helper; Gas Cutter | 1h | 59.38 | 59.38 |
| 548 | 2.5.5.3 | Lifting Lugs Grinding | 1h | 2018-06-06 08:06 | 2018-06-06 09:06 | 547 | 2018-05-15 08:06 | 2018-05-15 09:06 | 1h | 75.74d | 0d | TEAM_2Shift_Calendar-1 | Helper; Grinder | 2h | 106.25 | 106.25 |
| 549 | 2.5.5.4 | Lifting Lug Drilling | 1h | 2018-06-06 09:06 | 2018-06-06 10:06 | 548 | 2018-05-15 09:06 | 2018-05-15 10:06 | 1h | 75.74d |  | TEAM_2Shift_Calendar-1 | Helper; Fitter | 2h | 118.75 | 118.75 |
| 550 | 2.6 | **Channel Cover Handle Prepataion** | 0.41d | 2018-06-06 10:06 | 2018-06-06 16:36 |  | 2018-05-15 10:06 | 2018-05-15 16:36 | 0.41d | 75.74d |  | TEAM_2Shift_Calendar-1 |  | 13h | 771.88 | 771.88 |
| 551 | 2.6.1 | **Insulation Ring Prparation** | 0.41d | 2018-06-06 10:06 | 2018-06-06 16:36 |  | 2018-05-15 10:06 | 2018-05-15 16:36 | 0.41d | 75.74d |  | TEAM_2Shift_Calendar-1 |  | 13h | 771.88 | 771.88 |
| 552 | 2.6.1.1 | Insulaion Ring Marking | 2h | 2018-06-06 10:06 | 2018-06-06 12:06 | 523 | 2018-05-15 10:06 | 2018-05-15 12:06 | 2h | 75.74d | 0d | TEAM_2Shift_Calendar-1 | Helper; Forging Non-Std (Cost) [0.1%]; Plate (Cost) [0.1%]; Fitter | 4h | 237.5 | 237.5 |
| 553 | 2.6.1.2 | Insulaion Ring Cutting | 1h | 2018-06-06 12:06 | 2018-06-06 13:06 | 552 | 2018-05-15 12:06 | 2018-05-15 13:06 | 1h | 75.74d | 0d | TEAM_2Shift_Calendar-1 | Helper; Gas Cutter | 2h | 118.75 | 118.75 |
| 554 | 2.6.1.3 | Insulaion Ring Hole Marking | 1.5h | 2018-06-06 13:06 | 2018-06-06 14:36 | 553 | 2018-05-15 13:06 | 2018-05-15 14:36 | 1.5h | 75.74d | 0d | TEAM_2Shift_Calendar-1 | Helper; Fitter | 3h | 178.12 | 178.12 |
| 555 | 2.6.1.4 | Insulaion Ring Hole Drilling | 2h | 2018-06-06 14:36 | 2018-06-06 16:36 | 554 | 2018-05-15 14:36 | 2018-05-15 16:36 | 2h | 75.74d |  | TEAM_2Shift_Calendar-1 | Helper; Fitter | 4h | 237.5 | 237.5 |
| 556 | 2.7 | **Baffle & Tb Items Fab** | 9d | 2018-06-04 06:00 | 2018-06-26 21:30 |  | 2018-05-11 06:00 | 2018-06-02 21:30 | 9d | 13.09d | 12.91d |  |  | 201.5h | 5,097.5 | 5,097.5 |
| 557 | 2.7.1 | **Baffle Preparation** | 0.58d | 2018-06-04 06:00 | 2018-06-04 15:15 |  | 2018-05-11 06:00 | 2018-05-11 15:15 | 0.58d | 26.25d | 0d | TEAM_2Shift_Calendar-1 |  | 14.5h | 623.44 | 623.44 |
| 558 | 2.7.1.1 | Baffle Plate Transfer | 4h | 2018-06-04 06:00 | 2018-06-04 10:00 | 2FS+48d | 2018-05-11 06:00 | 2018-05-11 10:00 | 4h | 26.25d | 0d | TEAM_2Shift_Calendar-1 | Plate (Cost) [0.1%]; Store | 4h |  |  |
| 559 | 2.7.1.2 | Baffle Marking | 2h | 2018-06-04 10:00 | 2018-06-04 12:00 | 558 | 2018-05-11 10:00 | 2018-05-11 12:00 | 2h | 26.25d | 0d | TEAM_2Shift_Calendar-1 | Helper; Fitter | 4h | 237.5 | 237.5 |
| 560 | 2.7.1.3 | Baffle Profile Cutting | 3.25h | 2018-06-04 12:00 | 2018-06-04 15:15 | 559 | 2018-05-11 12:00 | 2018-05-11 15:15 | 3.25h | 26.25d |  | TEAM_2Shift_Calendar-1 | Helper; Gas Cutter | 6.5h | 385.94 | 385.94 |

| ID | WBS | Task | Duration | Start | Finish | Predecessors | Baseline start | Baseline finish | Baseline duration | Total slack | Free slack | Calendar | Resources | Work | Cost | Baseline cost |
| --- | --- | --- | --- | --- | --- | --- | --- | --- | --- | --- | --- | --- | --- | --- | --- | --- |
| 561 | 2.7.2 | **Baffle Bend Removal & Stacking** | 0.33d | 2018-06-04 15:15 | 2018-06-04 20:30 |  | 2018-05-11 15:15 | 2018-05-11 20:30 | 0.33d | 26.25d | 0.25d | TEAM_2Shift_Calendar-1 |  | 15.5h | 873.44 | 873.44 |
| 562 | 2.7.2.1 | Baffle Pl Bend Removal | 5h | 2018-06-04 15:15 | 2018-06-04 20:15 | 557 | 2018-05-11 15:15 | 2018-05-11 20:15 | 5h | 26.25d | 0d | TEAM_2Shift_Calendar-1 | Helper [200%]; Fitter | 15h | 843.75 | 843.75 |
| 563 | 2.7.2.2 | Baffle Pl StackingPer 100mm | 0.25h | 2018-06-04 20:15 | 2018-06-04 20:30 | 562 | 2018-05-11 20:15 | 2018-05-11 20:30 | 0.25h | 26.25d |  | TEAM_2Shift_Calendar-1 | Helper; Fitter | 0.5h | 29.69 | 29.69 |
| 564 | 2.7.3 | **Baffle Drilling** | 7d | 2018-06-05 08:30 | 2018-06-21 17:30 |  | 2018-05-14 08:30 | 2018-05-30 17:30 | 7d | 13d | 0d |  |  | 112h |  |  |
| 565 | 2.7.3.1 | Baffle Drilling | 7d | 2018-06-05 08:30 | 2018-06-21 17:30 | 561 | 2018-05-14 08:30 | 2018-05-30 17:30 | 7d | 13d |  |  | SC (Work) | 112h |  |  |
| 566 | 2.7.4 | **Baffle De Stacking & Chamfering** | 0.45d | 2018-06-21 17:30 | 2018-06-22 08:45 |  | 2018-05-30 17:30 | 2018-05-31 08:45 | 0.45d | 26.32d | 0d | TEAM_2Shift_Calendar-1 |  | 7.5h | 510.94 | 510.94 |
| 567 | 2.7.4.1 | Baffle De Stacking | 0.25h | 2018-06-21 17:30 | 2018-06-21 17:45 | 564 | 2018-05-30 17:30 | 2018-05-30 17:45 | 0.25h | 26.32d | 0d | TEAM_2Shift_Calendar-1 | Helper; Fitter | 0.5h | 29.69 | 29.69 |
| 568 | 2.7.4.2 | Baffle Chamfering (70% of TS Holes*No of Baffles) | 7h | 2018-06-21 17:45 | 2018-06-22 08:45 | 567 | 2018-05-30 17:45 | 2018-05-31 08:45 | 7h | 26.32d |  | TEAM_2Shift_Calendar-1 | Fitter | 7h | 481.25 | 481.25 |
| 569 | 2.7.5 | **Baffle Stacking & Thro Hole Check** | 0.95d | 2018-06-22 08:45 | 2018-06-25 17:00 |  | 2018-05-31 08:45 | 2018-06-01 17:00 | 0.95d | 13.26d | 0d |  |  | 23.5h | 717.19 | 717.19 |
| 570 | 2.7.5.1 | Stacking | 2h | 2018-06-22 08:45 | 2018-06-22 10:45 | 566 | 2018-05-31 08:45 | 2018-05-31 10:45 | 2h | 26.32d | 0d | TEAM_2Shift_Calendar-1 | Helper; Fitter | 4h | 237.5 | 237.5 |
| 571 | 2.7.5.2 | Baffle Hole Alingment | 0.25h | 2018-06-22 10:45 | 2018-06-22 11:00 | 570 | 2018-05-31 10:45 | 2018-05-31 11:00 | 0.25h | 26.32d | 0d | TEAM_2Shift_Calendar-1 | Helper; Fitter | 0.5h | 29.69 | 29.69 |
| 572 | 2.7.5.3 | Baffle Hole Re Drill (Use 40% of Holes in Qty) | 7h | 2018-06-22 11:00 | 2018-06-25 10:00 | 571 | 2018-05-31 11:00 | 2018-06-01 10:00 | 7h | 13.26d | 0d |  | SC (Work) | 7h |  |  |
| 573 | 2.7.5.4 | Baffle Od Machining (100mm L * 700Ø = 3hrs) | 3h | 2018-06-25 10:00 | 2018-06-25 14:00 | 572 | 2018-06-01 10:00 | 2018-06-01 14:00 | 3h | 13.26d | 0d |  | SC (Work) | 3h |  |  |
| 574 | 2.7.5.5 | Baffle Cleaning(100mm L * 700Ø = 3hrs) | 3h | 2018-06-25 14:00 | 2018-06-25 17:00 | 573 | 2018-06-01 14:00 | 2018-06-01 17:00 | 3h | 26.7d |  | TEAM_2Shift_Calendar-1 | Helper [300%] | 9h | 450 | 450 |
| 575 | 2.7.6 | **Tie Rod Preparation** | 0.94d | 2018-06-25 17:00 | 2018-06-26 16:00 |  | 2018-06-01 17:00 | 2018-06-02 16:00 | 0.94d | 26.7d | 0d | TEAM_2Shift_Calendar-1 |  | 19h | 1,745 | 1,745 |
| 576 | 2.7.6.1 | Tie Rod Matl Transfere | 1h | 2018-06-25 17:00 | 2018-06-25 18:00 | 569 | 2018-06-01 17:00 | 2018-06-01 18:00 | 1h | 26.7d | 0d | TEAM_2Shift_Calendar-1 | Store | 1h |  |  |
| 577 | 2.7.6.2 | Rod Cutting | 2h | 2018-06-25 18:00 | 2018-06-25 20:00 | 576 | 2018-06-01 18:00 | 2018-06-01 20:00 | 2h | 26.7d | 0d | TEAM_2Shift_Calendar-1 | Helper; Fitter | 4h | 237.5 | 237.5 |
| 578 | 2.7.6.3 | Thread Machining. | 11h | 2018-06-25 20:00 | 2018-06-26 15:00 | 577 | 2018-06-01 20:00 | 2018-06-02 15:00 | 11h | 26.7d | 0d | TEAM_2Shift_Calendar-1 | Lathe Operator | 11h | 1,320 | 1,320 |
| 579 | 2.7.6.4 | Joining | 1h | 2018-06-26 15:00 | 2018-06-26 16:00 | 578 | 2018-06-02 15:00 | 2018-06-02 16:00 | 1h | 26.7d |  | TEAM_2Shift_Calendar-1 | Fitter; Helper; SMAW Welder | 3h | 187.5 | 187.5 |
| 580 | 2.7.7 | **Spacer Tube Preparation** | 0.34d | 2018-06-26 16:00 | 2018-06-26 21:30 |  | 2018-06-02 16:00 | 2018-06-02 21:30 | 0.34d | 26.7d |  | TEAM_2Shift_Calendar-1 |  | 9.5h | 627.5 | 627.5 |
| 581 | 2.7.7.1 | Spacer Tube Transfere | 0.5h | 2018-06-26 16:00 | 2018-06-26 16:30 | 575 | 2018-06-02 16:00 | 2018-06-02 16:30 | 0.5h | 26.7d | 0d | TEAM_2Shift_Calendar-1 | Store | 0.5h |  |  |
| 582 | 2.7.7.2 | Length Cutting42 Nos | 2h | 2018-06-26 16:30 | 2018-06-26 18:30 | 581 | 2018-06-02 16:30 | 2018-06-02 18:30 | 2h | 26.7d | 0d | TEAM_2Shift_Calendar-1 | Helper; Fitter | 4h | 237.5 | 237.5 |
| 583 | 2.7.7.3 | Length Machining | 2h | 2018-06-26 18:30 | 2018-06-26 20:30 | 582 | 2018-06-02 18:30 | 2018-06-02 20:30 | 2h | 26.7d | 0d | TEAM_2Shift_Calendar-1 | Lathe Operator | 2h | 240 | 240 |
| 584 | 2.7.7.4 | Cleaninng | 1h | 2018-06-26 20:30 | 2018-06-26 21:30 | 583 | 2018-06-02 20:30 | 2018-06-02 21:30 | 1h | 26.7d |  | TEAM_2Shift_Calendar-1 | Helper [300%] | 3h | 150 | 150 |

| ID | WBS | Task | Duration | Start | Finish | Predecessors | Baseline start | Baseline finish | Baseline duration | Total slack | Free slack | Calendar | Resources | Work | Cost | Baseline cost |
| --- | --- | --- | --- | --- | --- | --- | --- | --- | --- | --- | --- | --- | --- | --- | --- | --- |
| 585 | 2.8 | **Shell Fabrication** | 5.79d | 2018-06-02 22:00 | 2018-06-11 18:41 |  | 2018-05-10 22:00 | 2018-05-18 18:41 | 5.79d | 41.59d | 40.55d | TEAM_2Shift_Calendar-1 |  | 223.12h | 12,508.44 | 12,508.44 |
| 586 | 2.8.1 | **Shell Marking & Cutting** | 0.17d | 2018-06-02 22:00 | 2018-06-04 08:45 |  | 2018-05-10 22:00 | 2018-05-11 08:45 | 0.17d | 41.59d | 0d | TEAM_2Shift_Calendar-1 |  | 4.25h | 126.56 | 126.56 |
| 587 | 2.8.1.1 | Sh Plate Trnasfer | 2h | 2018-06-02 22:00 | 2018-06-04 08:00 | 2FS+48d | 2018-05-10 22:00 | 2018-05-11 08:00 | 2h | 41.59d | 0d | TEAM_2Shift_Calendar-1 | Plate (Cost); Store | 2h |  |  |
| 588 | 2.8.1.2 | Sh-Marking | 0.75h | 2018-06-04 08:00 | 2018-06-04 08:45 | 587 | 2018-05-11 08:00 | 2018-05-11 08:45 | 0.75h | 41.59d |  | TEAM_2Shift_Calendar-1 | Helper [200%]; Fitter | 2.25h | 126.56 | 126.56 |
| 589 | 2.8.2 | **Shell Plate Cutting** | 0.09d | 2018-06-04 08:45 | 2018-06-04 10:15 |  | 2018-05-11 08:45 | 2018-05-11 10:15 | 0.09d | 41.59d | 0d | TEAM_2Shift_Calendar-1 |  | 4.5h | 253.12 | 253.12 |
| 590 | 2.8.2.1 | Sh-Cutting | 1.5h | 2018-06-04 08:45 | 2018-06-04 10:15 | 586 | 2018-05-11 08:45 | 2018-05-11 10:15 | 1.5h | 41.59d |  | TEAM_2Shift_Calendar-1 | Helper [200%]; Gas Cutter | 4.5h | 253.12 | 253.12 |
| 591 | 2.8.3 | **Sh Pl Side Grinding** | 0.06d | 2018-06-04 10:15 | 2018-06-04 11:15 |  | 2018-05-11 10:15 | 2018-05-11 11:15 | 0.06d | 41.59d | 0d | TEAM_2Shift_Calendar-1 |  | 4h | 218.75 | 218.75 |
| 592 | 2.8.3.1 | Sh Pl Side Bevel Cutting | 1h | 2018-06-04 10:15 | 2018-06-04 11:15 | 589 | 2018-05-11 10:15 | 2018-05-11 11:15 | 1h | 41.59d |  | TEAM_2Shift_Calendar-1 | Helper [300%]; Fitter | 4h | 218.75 | 218.75 |
| 593 | 2.8.4 | **Shell Plate Edge Preparation** | 0.03d | 2018-06-04 11:15 | 2018-06-04 11:45 |  | 2018-05-11 11:15 | 2018-05-11 11:45 | 0.03d | 41.59d | 0d | TEAM_2Shift_Calendar-1 |  | 1h | 53.12 | 53.12 |
| 594 | 2.8.4.1 | Sh-Bevel Grinding | 0.5h | 2018-06-04 11:15 | 2018-06-04 11:45 | 591 | 2018-05-11 11:15 | 2018-05-11 11:45 | 0.5h | 41.59d |  | TEAM_2Shift_Calendar-1 | Helper; Grinder | 1h | 53.12 | 53.12 |
| 595 | 2.8.5 | **Shell Pre Bending** | 0.12d | 2018-06-04 11:45 | 2018-06-04 13:45 |  | 2018-05-11 11:45 | 2018-05-11 13:45 | 0.12d | 41.59d | 0d | TEAM_2Shift_Calendar-1 |  | 6h | 375 | 375 |
| 596 | 2.8.5.1 | Sh-Pre Bend | 2h | 2018-06-04 11:45 | 2018-06-04 13:45 | 593 | 2018-05-11 11:45 | 2018-05-11 13:45 | 2h | 41.59d |  | TEAM_2Shift_Calendar-1 | Helper; Fitter [200%] | 6h | 375 | 375 |
| 597 | 2.8.6 | **Shell Pl Pre Bend Cut Off** | 0.01d | 2018-06-04 13:45 | 2018-06-04 13:55 |  | 2018-05-11 13:45 | 2018-05-11 13:55 | 0.01d | 41.59d | 0d | TEAM_2Shift_Calendar-1 |  | 0.68h | 43.56 | 43.56 |
| 598 | 2.8.6.1 | Sh-Pre Bend Cut Off | 0.17h | 2018-06-04 13:45 | 2018-06-04 13:55 | 595 | 2018-05-11 13:45 | 2018-05-11 13:55 | 0.17h | 41.59d |  | TEAM_2Shift_Calendar-1 | Helper; Gas Cutter; Fitter [200%] | 0.68h | 43.56 | 43.56 |
| 599 | 2.8.7 | **Shell Plate LS EP** | 0.06d | 2018-06-04 13:55 | 2018-06-04 14:55 |  | 2018-05-11 13:55 | 2018-05-11 14:55 | 0.06d | 41.59d | 0d | TEAM_2Shift_Calendar-1 |  | 2h | 118.75 | 118.75 |
| 600 | 2.8.7.1 | Sh-Pre Bend LS EP | 1h | 2018-06-04 13:55 | 2018-06-04 14:55 | 597 | 2018-05-11 13:55 | 2018-05-11 14:55 | 1h | 41.59d |  | TEAM_2Shift_Calendar-1 | Helper; Fitter | 2h | 118.75 | 118.75 |
| 601 | 2.8.8 | **Shell Rolling** | 0.12d | 2018-06-04 14:55 | 2018-06-04 16:55 |  | 2018-05-11 14:55 | 2018-05-11 16:55 | 0.12d | 41.59d | 0d | TEAM_2Shift_Calendar-1 |  | 6h | 375 | 375 |
| 602 | 2.8.8.1 | Sh-Rolling1/4 | 2h | 2018-06-04 14:55 | 2018-06-04 16:55 | 599 | 2018-05-11 14:55 | 2018-05-11 16:55 | 2h | 41.59d |  | TEAM_2Shift_Calendar-1 | Helper; Fitter [200%] | 6h | 375 | 375 |
| 603 | 2.8.9 | **Shell Cir Length & EP Correction** | 0.03d | 2018-06-04 16:55 | 2018-06-04 17:25 |  | 2018-05-11 16:55 | 2018-05-11 17:25 | 0.03d | 41.59d | 0d | TEAM_2Shift_Calendar-1 |  | 1.5h | 84.38 | 84.38 |
| 604 | 2.8.9.1 | Sh-LS Correction | 0.5h | 2018-06-04 16:55 | 2018-06-04 17:25 | 601 | 2018-05-11 16:55 | 2018-05-11 17:25 | 0.5h | 41.59d |  | TEAM_2Shift_Calendar-1 | Helper [200%]; Fitter | 1.5h | 84.38 | 84.38 |
| 605 | 2.8.10 | **Shell LS Seams Fit Up** | 0.06d | 2018-06-04 17:25 | 2018-06-04 18:25 |  | 2018-05-11 17:25 | 2018-05-11 18:25 | 0.06d | 41.59d | 0d | TEAM_2Shift_Calendar-1 |  | 4h | 237.5 | 237.5 |
| 606 | 2.8.10.1 | Sh-LS Fit Up | 1h | 2018-06-04 17:25 | 2018-06-04 18:25 | 603 | 2018-05-11 17:25 | 2018-05-11 18:25 | 1h | 41.59d |  | TEAM_2Shift_Calendar-1 | SMAW Welder; Helper [200%]; Fitter | 4h | 237.5 | 237.5 |
| 607 | 2.8.11 | **Sh LS Welding Arrangement** | 0.03d | 2018-06-04 18:25 | 2018-06-04 18:55 |  | 2018-05-11 18:25 | 2018-05-11 18:55 | 0.03d | 41.59d | 0d | TEAM_2Shift_Calendar-1 |  | 1h | 59.38 | 59.38 |
| 608 | 2.8.11.1 | Sh-LS Weld Arrangement | 0.5h | 2018-06-04 18:25 | 2018-06-04 18:55 | 605 | 2018-05-11 18:25 | 2018-05-11 18:55 | 0.5h | 41.59d |  | TEAM_2Shift_Calendar-1 | Helper; Fitter | 1h | 59.38 | 59.38 |

| ID | WBS | Task | Duration | Start | Finish | Predecessors | Baseline start | Baseline finish | Baseline duration | Total slack | Free slack | Calendar | Resources | Work | Cost | Baseline cost |
| --- | --- | --- | --- | --- | --- | --- | --- | --- | --- | --- | --- | --- | --- | --- | --- | --- |
| 609 | 2.8.12 | **Shell Long Seam Outer Welding** | 0.11d | 2018-06-04 18:55 | 2018-06-04 20:40 |  | 2018-05-11 18:55 | 2018-05-11 20:40 | 0.11d | 41.59d | 0d | TEAM_2Shift_Calendar-1 |  | 3.5h | 207.81 | 207.81 |
| 610 | 2.8.12.1 | Sh-LS Welding- Top Side | 1.75h | 2018-06-04 18:55 | 2018-06-04 20:40 | 607 | 2018-05-11 18:55 | 2018-05-11 20:40 | 1.75h | 41.59d |  | TEAM_2Shift_Calendar-1 | Helper; SMAW Welder | 3.5h | 207.81 | 207.81 |
| 611 | 2.8.13 | **Sh LS Back Chip** | 0.01d | 2018-06-04 20:40 | 2018-06-04 20:46 |  | 2018-05-11 20:40 | 2018-05-11 20:46 | 0.01d | 41.59d | 0d | TEAM_2Shift_Calendar-1 |  | 0.1h | 5.62 | 5.62 |
| 612 | 2.8.13.1 | Sh-LS Welding- Back Chip | 0.1h | 2018-06-04 20:40 | 2018-06-04 20:46 | 609 | 2018-05-11 20:40 | 2018-05-11 20:46 | 0.1h | 41.59d |  | TEAM_2Shift_Calendar-1 | Grinder | 0.1h | 5.62 | 5.62 |
| 613 | 2.8.14 | **Sh LS Inner Welding** | 4.87d | 2018-06-04 20:46 | 2018-06-11 18:41 |  | 2018-05-11 20:46 | 2018-05-18 18:41 | 4.87d | 41.59d |  | TEAM_2Shift_Calendar-1 |  | 184.59h | 10,349.88 | 10,349.88 |
| 614 | 2.8.14.1 | **Sh Inner LS Flush Grinding** | 0.02d | 2018-06-04 20:46 | 2018-06-04 21:01 |  | 2018-05-11 20:46 | 2018-05-11 21:01 | 0.02d | 41.59d |  | TEAM_2Shift_Calendar-1 |  | 0.25h | 14.06 | 14.06 |
| 615 | 2.8.14.1.1 | Sh Inner Flush Grinding | 0.25h | 2018-06-04 20:46 | 2018-06-04 21:01 | 611 | 2018-05-11 20:46 | 2018-05-11 21:01 | 0.25h | 41.59d | 0d | TEAM_2Shift_Calendar-1 | Grinder | 0.25h | 14.06 | 14.06 |
| 616 | 2.8.14.2 | **Sh LS Radiography** | 1d | 2018-06-04 21:01 | 2018-06-05 21:01 |  | 2018-05-11 21:01 | 2018-05-14 21:01 | 1d | 41.59d |  | TEAM_2Shift_Calendar-1 |  | 16h |  |  |
| 617 | 2.8.14.2.1 | Sh LS Welding Rt | 1d | 2018-06-04 21:01 | 2018-06-05 21:01 | 615 | 2018-05-11 21:01 | 2018-05-14 21:01 | 1d | 41.59d | 0d | TEAM_2Shift_Calendar-1 | SC Radiography (Work) | 16h |  |  |
| 618 | 2.8.14.3 | **Shell Re-Rolling** | 0.12d | 2018-06-05 21:01 | 2018-06-06 07:01 |  | 2018-05-14 21:01 | 2018-05-15 07:01 | 0.12d | 41.59d |  | TEAM_2Shift_Calendar-1 |  | 6h | 375 | 375 |
| 619 | 2.8.14.3.1 | Sh Re-Rolling | 2h | 2018-06-05 21:01 | 2018-06-06 07:01 | 617 | 2018-05-14 21:01 | 2018-05-15 07:01 | 2h | 41.59d | 0d | TEAM_2Shift_Calendar-1 | Helper; Fitter [200%] | 6h | 375 | 375 |
| 620 | 2.8.14.4 | **Sh Final Length Correction** | 0.17d | 2018-06-06 07:01 | 2018-06-06 09:41 |  | 2018-05-15 07:01 | 2018-05-15 09:41 | 0.17d | 41.59d |  | TEAM_2Shift_Calendar-1 |  | 5.34h | 348.31 | 348.31 |
| 621 | 2.8.14.4.1 | Sh Length Marking | 2h | 2018-06-06 07:01 | 2018-06-06 09:01 | 619 | 2018-05-15 07:01 | 2018-05-15 09:01 | 2h | 41.59d | 0d | TEAM_2Shift_Calendar-1 | Fitter [200%] | 4h | 275 | 275 |
| 622 | 2.8.14.4.2 | Length Cutting | 0.17h | 2018-06-06 09:01 | 2018-06-06 09:11 | 621 | 2018-05-15 09:01 | 2018-05-15 09:11 | 0.17h | 41.59d | 0d | TEAM_2Shift_Calendar-1 | Helper; Gas Cutter | 0.34h | 20.19 | 20.19 |
| 623 | 2.8.14.4.3 | Grinding & EP | 0.5h | 2018-06-06 09:11 | 2018-06-06 09:41 | 622 | 2018-05-15 09:11 | 2018-05-15 09:41 | 0.5h | 41.59d | 0d | TEAM_2Shift_Calendar-1 | Helper; Grinder | 1h | 53.12 | 53.12 |
| 624 | 2.8.14.5 | **Nozzle Orientation Marking** | 0.31d | 2018-06-06 09:41 | 2018-06-06 14:41 |  | 2018-05-15 09:41 | 2018-05-15 14:41 | 0.31d | 41.59d | 0d | TEAM_2Shift_Calendar-1 |  | 10h | 687.5 | 687.5 |
| 625 | 2.8.14.5.1 | Sh Nozzel Orientaion Marking | 1h | 2018-06-06 09:41 | 2018-06-06 10:41 | 623 | 2018-05-15 09:41 | 2018-05-15 10:41 | 1h | 41.59d | 0d | TEAM_2Shift_Calendar-1 | Fitter [200%] | 2h | 137.5 | 137.5 |
| 626 | 2.8.14.5.2 | Sh Nozzel Marking16"Nb- 2 Nos | 4h | 2018-06-06 10:41 | 2018-06-06 14:41 | 625 | 2018-05-15 10:41 | 2018-05-15 14:41 | 4h | 41.59d |  | TEAM_2Shift_Calendar-1 | Fitter [200%] | 8h | 550 | 550 |
| 627 | 2.8.14.6 | **Sh Nozzle Openning** | 0.31d | 2018-06-06 14:41 | 2018-06-06 19:41 |  | 2018-05-15 14:41 | 2018-05-15 19:41 | 0.31d | 41.59d | 0d | TEAM_2Shift_Calendar-1 |  | 10h | 593.75 | 593.75 |
| 628 | 2.8.14.6.1 | 16"Nb- 2 Nos | 4h | 2018-06-06 14:41 | 2018-06-06 18:41 | 624 | 2018-05-15 14:41 | 2018-05-15 18:41 | 4h | 41.59d | 0d | TEAM_2Shift_Calendar-1 | Helper; Gas Cutter | 8h | 475 | 475 |
| 629 | 2.8.14.6.2 | Inspection | 1h | 2018-06-06 18:41 | 2018-06-06 19:41 | 628 | 2018-05-15 18:41 | 2018-05-15 19:41 | 1h | 41.59d |  | TEAM_2Shift_Calendar-1 | Helper; Gas Cutter | 2h | 118.75 | 118.75 |
| 630 | 2.8.14.7 | **Sh Nozzle EP** | 0.19d | 2018-06-06 19:41 | 2018-06-07 06:41 |  | 2018-05-15 19:41 | 2018-05-16 06:41 | 0.19d | 41.59d | 0d | TEAM_2Shift_Calendar-1 |  | 4h | 250 | 250 |
| 631 | 2.8.14.7.1 | 16"Nb- 2 Nos | 2h | 2018-06-06 19:41 | 2018-06-06 21:41 | 627 | 2018-05-15 19:41 | 2018-05-15 21:41 | 2h | 41.59d | 0d | TEAM_2Shift_Calendar-1 | Grinder | 2h | 112.5 | 112.5 |
| 632 | 2.8.14.7.2 | Inspection | 1h | 2018-06-06 21:41 | 2018-06-07 06:41 | 631 | 2018-05-15 21:41 | 2018-05-16 06:41 | 1h | 41.59d |  | TEAM_2Shift_Calendar-1 | Fitter [200%] | 2h | 137.5 | 137.5 |

| ID | WBS | Task | Duration | Start | Finish | Predecessors | Baseline start | Baseline finish | Baseline duration | Total slack | Free slack | Calendar | Resources | Work | Cost | Baseline cost |
| --- | --- | --- | --- | --- | --- | --- | --- | --- | --- | --- | --- | --- | --- | --- | --- | --- |
| 633 | 2.8.14.8 | **Sh Nozzzle Fit Up** | 0.19d | 2018-06-07 06:41 | 2018-06-07 09:41 |  | 2018-05-16 06:41 | 2018-05-16 09:41 | 0.19d | 41.59d | 0d | TEAM_2Shift_Calendar-1 |  | 10h | 631.25 | 631.25 |
| 634 | 2.8.14.8.1 | 16"Nb- 2 Nos | 2h | 2018-06-07 06:41 | 2018-06-07 08:41 | 630 | 2018-05-16 06:41 | 2018-05-16 08:41 | 2h | 41.59d | 0d | TEAM_2Shift_Calendar-1 | Helper; SMAW Welder; Fitter [200%] | 8h | 512.5 | 512.5 |
| 635 | 2.8.14.8.2 | DP Check | 1h | 2018-06-07 08:41 | 2018-06-07 09:41 | 634 | 2018-05-16 08:41 | 2018-05-16 09:41 | 1h | 41.59d |  | TEAM_2Shift_Calendar-1 | Helper; Fitter | 2h | 118.75 | 118.75 |
| 636 | 2.8.14.9 | **Sh Nozzle Fit Up Inspection** | 0.12d | 2018-06-07 09:41 | 2018-06-07 11:41 |  | 2018-05-16 09:41 | 2018-05-16 11:41 | 0.12d | 41.59d | 0d | TEAM_2Shift_Calendar-1 |  | 4h | 237.5 | 237.5 |
| 637 | 2.8.14.9.1 | 16"Nb- 2 Nos | 1h | 2018-06-07 09:41 | 2018-06-07 10:41 | 633 | 2018-05-16 09:41 | 2018-05-16 10:41 | 1h | 41.59d | 0d | TEAM_2Shift_Calendar-1 | Helper; Fitter | 2h | 118.75 | 118.75 |
| 638 | 2.8.14.9.2 | DP Check | 1h | 2018-06-07 10:41 | 2018-06-07 11:41 | 637 | 2018-05-16 10:41 | 2018-05-16 11:41 | 1h | 41.59d |  | TEAM_2Shift_Calendar-1 | Helper; Fitter | 2h | 118.75 | 118.75 |
| 639 | 2.8.14.10 | **Sh Nozzle Welding** | 0.5d | 2018-06-07 11:41 | 2018-06-07 19:41 |  | 2018-05-16 11:41 | 2018-05-16 19:41 | 0.5d | 41.59d | 0d | TEAM_2Shift_Calendar-1 |  | 15h | 831.25 | 831.25 |
| 640 | 2.8.14.10.1 | Sh Nozzel Welding Arrangement | 1h | 2018-06-07 11:41 | 2018-06-07 12:41 | 636 | 2018-05-16 11:41 | 2018-05-16 12:41 | 1h | 41.59d | 0d | TEAM_2Shift_Calendar-1 | Store | 1h |  |  |
| 641 | 2.8.14.10.2 | Sh Nozzel WeldingA1 | 3h | 2018-06-07 12:41 | 2018-06-07 15:41 | 640 | 2018-05-16 12:41 | 2018-05-16 15:41 | 3h | 41.59d | 0d | TEAM_2Shift_Calendar-1 | Helper; SMAW Welder | 6h | 356.25 | 356.25 |
| 642 | 2.8.14.10.3 | Sh Nozzel WeldingA2 | 3h | 2018-06-07 15:41 | 2018-06-07 18:41 | 641 | 2018-05-16 15:41 | 2018-05-16 18:41 | 3h | 41.59d | 0d | TEAM_2Shift_Calendar-1 | Helper; SMAW Welder | 6h | 356.25 | 356.25 |
| 643 | 2.8.14.10.4 | Sh Nozzel Root DP Check | 1h | 2018-06-07 18:41 | 2018-06-07 19:41 | 642 | 2018-05-16 18:41 | 2018-05-16 19:41 | 1h | 41.59d |  | TEAM_2Shift_Calendar-1 | Helper; Fitter | 2h | 118.75 | 118.75 |
| 644 | 2.8.14.11 | **Sh Saddle Welding** | 1.44d | 2018-06-07 19:41 | 2018-06-11 10:41 |  | 2018-05-16 19:41 | 2018-05-18 10:41 | 1.44d | 41.59d | 0d | TEAM_2Shift_Calendar-1 |  | 88h | 5,431.25 | 5,431.25 |
| 645 | 2.8.14.11.1 | Sh-Saddle Pad Fit Up | 4h | 2018-06-07 19:41 | 2018-06-08 07:41 | 639 | 2018-05-16 19:41 | 2018-05-17 07:41 | 4h | 41.59d | 0d | TEAM_2Shift_Calendar-1 | SMAW Welder; Helper; Fitter [200%] | 16h | 1,025 | 1,025 |
| 646 | 2.8.14.11.2 | Sh-Saddle Pad Welding | 4h | 2018-06-08 07:41 | 2018-06-08 11:41 | 645 | 2018-05-17 07:41 | 2018-05-17 11:41 | 4h | 41.59d | 0d | TEAM_2Shift_Calendar-1 | Helper [200%]; SMAW Welder [200%] | 16h | 950 | 950 |
| 647 | 2.8.14.11.3 | Sh-Saddle Matching | 4h | 2018-06-08 11:41 | 2018-06-08 15:41 | 646 | 2018-05-17 11:41 | 2018-05-17 15:41 | 4h | 41.59d | 0d | TEAM_2Shift_Calendar-1 | Grinder [200%]; Fitter [200%] | 16h | 1,000 | 1,000 |
| 648 | 2.8.14.11.4 | Sh-Saddle Fit Up | 5h | 2018-06-08 15:41 | 2018-06-08 20:41 | 647 | 2018-05-17 15:41 | 2018-05-17 20:41 | 5h | 41.59d | 0d | TEAM_2Shift_Calendar-1 | Fitter [200%]; Helper; SMAW Welder | 20h | 1,281.25 | 1,281.25 |
| 649 | 2.8.14.11.5 | Sh-Saddle Welding | 4h | 2018-06-08 20:41 | 2018-06-11 08:41 | 648 | 2018-05-17 20:41 | 2018-05-18 08:41 | 4h | 41.59d | 0d | TEAM_2Shift_Calendar-1 | Helper [200%]; SMAW Welder [200%] | 16h | 950 | 950 |
| 650 | 2.8.14.11.6 | Sh-Saddle Dress Up | 2h | 2018-06-11 08:41 | 2018-06-11 10:41 | 649 | 2018-05-18 08:41 | 2018-05-18 10:41 | 2h | 41.59d |  | TEAM_2Shift_Calendar-1 | Grinder [200%] | 4h | 225 | 225 |
| 651 | 2.8.14.12 | **Sh Nde Clearence** | 0.5d | 2018-06-11 10:41 | 2018-06-11 18:41 |  | 2018-05-18 10:41 | 2018-05-18 18:41 | 0.5d | 41.59d |  | TEAM_2Shift_Calendar-1 |  | 16h | 950 | 950 |
| 652 | 2.8.14.12.1 | Sh-Sh Nde Clearence | 4h | 2018-06-11 10:41 | 2018-06-11 14:41 | 644 | 2018-05-18 10:41 | 2018-05-18 14:41 | 4h | 41.59d | 0d | TEAM_2Shift_Calendar-1 | Helper; Fitter | 8h | 475 | 475 |
| 653 | 2.8.14.12.2 | TPI Inspection | 4h | 2018-06-11 14:41 | 2018-06-11 18:41 | 652 | 2018-05-18 14:41 | 2018-05-18 18:41 | 4h | 41.59d |  | TEAM_2Shift_Calendar-1 | Helper; Fitter | 8h | 475 | 475 |
| 654 | 2.9 | **Tube Bundle Assy** | 23.18d | 2018-07-27 16:00 | 2018-08-28 18:51 |  | 2018-07-27 16:00 | 2018-08-28 18:51 | 23.18d | 1.04d | 0d | TEAM_2Shift_Calendar-1 |  | 1012.85h | 58,110.31 | 58,110.31 |
| 655 | 2.9.1 | Frame Set Up & Tube Sht Set Up | 12h | 2018-07-27 16:00 | 2018-07-30 12:00 | 420, 556 | 2018-07-27 16:00 | 2018-07-30 12:00 | 12h | 1.04d | 0d | TEAM_2Shift_Calendar-1 | SMAW Welder; Tube (Cost) [0.1%]; Fitter [200%] | 36h | 2,475 | 2,475 |
| 656 | 2.9.2 | Skeleton Assy | 4h | 2018-07-30 12:00 | 2018-07-30 16:00 | 655 | 2018-07-30 12:00 | 2018-07-30 16:00 | 4h | 1.04d | 0d | TEAM_2Shift_Calendar-1 | Helper [300%]; Fitter [200%] | 20h | 1,150 | 1,150 |

| ID | WBS | Task | Duration | Start | Finish | Predecessors | Baseline start | Baseline finish | Baseline duration | Total slack | Free slack | Calendar | Resources | Work | Cost | Baseline cost |
| --- | --- | --- | --- | --- | --- | --- | --- | --- | --- | --- | --- | --- | --- | --- | --- | --- |
| 657 | 2.9.3 | **Tube Insert** | 1.72d | 2018-07-30 16:00 | 2018-08-01 11:30 |  | 2018-07-30 16:00 | 2018-08-01 11:30 | 1.72d | 1.04d | 0d | TEAM_2Shift_Calendar-1 |  | 137.5h | 7,390.62 | 7,390.62 |
| 658 | 2.9.3.1 | Tube Insert 50% | 13.75h | 2018-07-30 16:00 | 2018-07-31 13:45 | 656 | 2018-07-30 16:00 | 2018-07-31 13:45 | 13.75h | 1.04d | 0d | TEAM_2Shift_Calendar-1 | Helper [400%]; Fitter | 68.75h | 3,695.31 | 3,695.31 |
| 659 | 2.9.3.2 | Tube Insert 50% | 13.75h | 2018-07-31 13:45 | 2018-08-01 11:30 | 658 | 2018-07-31 13:45 | 2018-08-01 11:30 | 13.75h | 1.04d |  | TEAM_2Shift_Calendar-1 | Helper [400%]; Fitter | 68.75h | 3,695.31 | 3,695.31 |
| 660 | 2.9.4 | **Tube Bundle Insert** | 20.46d | 2018-08-01 11:30 | 2018-08-28 18:51 |  | 2018-08-01 11:30 | 2018-08-28 18:51 | 20.46d | 1.04d |  | TEAM_2Shift_Calendar-1 |  | 819.35h | 47,094.69 | 47,094.69 |
| 661 | 2.9.4.1 | Tube Bundle Insert In Shell | 16h | 2018-08-01 11:30 | 2018-08-02 11:30 | 585, 657 | 2018-08-01 11:30 | 2018-08-02 11:30 | 16h | 1.04d | 0d | TEAM_2Shift_Calendar-1 | Helper [800%]; Fitter [300%] | 176h | 9,700 | 9,700 |
| 662 | 2.9.4.2 | Tubesheet 1 fitup | 4h | 2018-08-02 11:30 | 2018-08-02 15:30 | 661 | 2018-08-02 11:30 | 2018-08-02 15:30 | 4h | 1.04d | 0d | TEAM_2Shift_Calendar-1 | Helper [400%]; Fitter [200%] | 24h | 1,350 | 1,350 |
| 663 | 2.9.4.3 | DP CheckFlg CS1 | 1h | 2018-08-02 15:30 | 2018-08-02 16:30 | 662 | 2018-08-02 15:30 | 2018-08-02 16:30 | 1h | 1.04d | 0d | TEAM_2Shift_Calendar-1 | Helper; Fitter | 2h | 118.75 | 118.75 |
| 664 | 2.9.4.4 | Tubesheet 2 fixing with tubes | 4h | 2018-08-02 16:30 | 2018-08-02 20:30 | 663 | 2018-08-02 16:30 | 2018-08-02 20:30 | 4h | 1.04d | 0d | TEAM_2Shift_Calendar-1 | Helper [600%]; Fitter [300%] | 36h | 2,025 | 2,025 |
| 665 | 2.9.4.5 | Tubesheet 2 fitup | 4d | 2018-08-02 20:30 | 2018-08-07 20:30 | 664 | 2018-08-02 20:30 | 2018-08-07 20:30 | 4d | 1.04d | 0d | TEAM_2Shift_Calendar-1 | SMAW Welder; Helper [200%]; Fitter | 256h | 15,200 | 15,200 |
| 666 | 2.9.4.6 | DP CheckFlg CS1 | 1h | 2018-08-07 20:30 | 2018-08-07 21:30 | 665 | 2018-08-07 20:30 | 2018-08-07 21:30 | 1h | 1.04d | 0d | TEAM_2Shift_Calendar-1 | Helper; Fitter | 2h | 118.75 | 118.75 |
| 667 | 2.9.4.7 | Tubesheet 1 Welding | 3h | 2018-08-07 21:30 | 2018-08-08 08:30 | 666 | 2018-08-07 21:30 | 2018-08-08 08:30 | 3h | 1.04d | 0d | TEAM_2Shift_Calendar-1 | Helper [200%]; SMAW Welder | 9h | 506.25 | 506.25 |
| 668 | 2.9.4.8 | Tubesheet 2 Welding | 3h | 2018-08-08 08:30 | 2018-08-08 11:30 | 667 | 2018-08-08 08:30 | 2018-08-08 11:30 | 3h | 1.04d | 0d | TEAM_2Shift_Calendar-1 | Helper [200%]; SMAW Welder | 9h | 506.25 | 506.25 |
| 669 | 2.9.4.9 | Sh CS Welding Back ChipFlg1 | 0.1h | 2018-08-08 11:30 | 2018-08-08 11:36 | 668 | 2018-08-08 11:30 | 2018-08-08 11:36 | 0.1h | 1.04d | 0d | TEAM_2Shift_Calendar-1 | Grinder | 0.1h | 5.62 | 5.62 |
| 670 | 2.9.4.10 | Tubesheet 1 Tube welding | 27h | 2018-08-08 11:36 | 2018-08-10 06:36 | 669 | 2018-08-08 11:36 | 2018-08-10 06:36 | 27h | 1.04d | 0d | TEAM_2Shift_Calendar-1 | Helper [200%]; SMAW Welder | 81h | 4,556.25 | 4,556.25 |
| 671 | 2.9.4.11 | DP CheckFlg1 | 0.25h | 2018-08-10 06:36 | 2018-08-10 06:51 | 670 | 2018-08-10 06:36 | 2018-08-10 06:51 | 0.25h | 1.04d | 0d | TEAM_2Shift_Calendar-1 | Grinder | 0.25h | 14.06 | 14.06 |
| 672 | 2.9.4.12 | Tubesheet 2 tube trimming | 17h | 2018-08-10 06:51 | 2018-08-13 07:51 | 671 | 2018-08-10 06:51 | 2018-08-13 07:51 | 17h | 1.04d | 0d | TEAM_2Shift_Calendar-1 | Grinder | 17h | 956.25 | 956.25 |
| 673 | 2.9.4.13 | Tubesheet 2 tube welding | 27h | 2018-08-13 07:51 | 2018-08-14 18:51 | 672 | 2018-08-13 07:51 | 2018-08-14 18:51 | 27h | 1.04d | 0d | TEAM_2Shift_Calendar-1 | Helper [200%]; SMAW Welder | 81h | 4,556.25 | 4,556.25 |
| 674 | 2.9.4.14 | DP Check | 1h | 2018-08-14 18:51 | 2018-08-14 19:51 | 673 | 2018-08-14 18:51 | 2018-08-14 19:51 | 1h | 1.04d | 0d | TEAM_2Shift_Calendar-1 | Helper; Fitter | 2h | 118.75 | 118.75 |
| 675 | 2.9.4.15 | Tube expansion on both sides- Stage 1 | 13h | 2018-08-14 19:51 | 2018-08-16 16:51 | 674 | 2018-08-14 19:51 | 2018-08-16 16:51 | 13h | 1.04d | 0d | TEAM_2Shift_Calendar-1 | Helper [200%]; Fitter [200%] | 52h | 3,087.5 | 3,087.5 |
| 676 | 2.9.4.16 | Tube expansion on both sides- Stage 2 | 13h | 2018-08-16 16:51 | 2018-08-17 13:51 | 675 | 2018-08-16 16:51 | 2018-08-17 13:51 | 13h | 1.04d | 0d | TEAM_2Shift_Calendar-1 | Helper [200%]; Fitter [200%] | 52h | 3,087.5 | 3,087.5 |
| 677 | 2.9.4.17 | Tube Exp- Pnuematic Test | 5h | 2018-08-17 13:51 | 2018-08-17 18:51 | 676 | 2018-08-17 13:51 | 2018-08-17 18:51 | 5h | 1.04d | 0d | TEAM_2Shift_Calendar-1 | Helper [200%]; Fitter [200%] | 20h | 1,187.5 | 1,187.5 |
| 678 | 2.9.4.18 | Dummy Activity | 8d | 2018-08-17 18:51 | 2018-08-28 18:51 | 677 | 2018-08-17 18:51 | 2018-08-28 18:51 | 8d | 1.04d |  | TEAM_2Shift_Calendar-1 |  |  |  |  |
| 679 | 2.10 | **Channel fabrication** | 53.58d | 2018-06-02 22:00 | 2018-08-09 15:19 |  | 2018-05-10 22:00 | 2018-07-18 15:19 | 53.58d | 14.26d | 13.22d | TEAM_2Shift_Calendar-1 |  | 293.68h | 14,754.44 | 14,754.44 |
| 680 | 2.10.1 | **Channel Shell marking&cutting** | 0.16d | 2018-06-02 22:00 | 2018-06-04 08:31 |  | 2018-05-10 22:00 | 2018-05-11 08:31 | 0.16d | 58.34d | 0d | TEAM_2Shift_Calendar-1 |  | 4.39h | 188.62 | 188.62 |
| 681 | 2.10.1.1 | Ch Plate Trasnfer | 1h | 2018-06-02 22:00 | 2018-06-04 07:00 | 2FS+48d | 2018-05-10 22:00 | 2018-05-11 07:00 | 1h | 58.34d | 0d | TEAM_2Shift_Calendar-1 | Plate (Cost); Store | 1h |  |  |
| 682 | 2.10.1.2 | Ch Marking | 0.1h | 2018-06-04 07:00 | 2018-06-04 07:06 | 681 | 2018-05-11 07:00 | 2018-05-11 07:06 | 0.1h | 58.34d | 0d | TEAM_2Shift_Calendar-1 | Helper [200%]; Fitter | 0.3h | 16.88 | 16.88 |
| 683 | 2.10.1.3 | Ch Cutting | 0.17h | 2018-06-04 07:06 | 2018-06-04 07:16 | 682 | 2018-05-11 07:06 | 2018-05-11 07:16 | 0.17h | 58.34d | 0d | TEAM_2Shift_Calendar-1 | Helper; Gas Cutter | 0.34h | 20.19 | 20.19 |
| 684 | 2.10.1.4 | Ch Pl Side Grinding | 0.25h | 2018-06-04 07:16 | 2018-06-04 07:31 | 683 | 2018-05-11 07:16 | 2018-05-11 07:31 | 0.25h | 58.34d | 0d | TEAM_2Shift_Calendar-1 | Grinder | 0.25h | 14.06 | 14.06 |
| 685 | 2.10.1.5 | Ch Bevelling Cir Side | 0.5h | 2018-06-04 07:31 | 2018-06-04 08:01 | 684 | 2018-05-11 07:31 | 2018-05-11 08:01 | 0.5h | 58.34d | 0d | TEAM_2Shift_Calendar-1 | Helper [300%]; Fitter | 2h | 109.38 | 109.38 |
| 686 | 2.10.1.6 | Ch EP Grinding | 0.5h | 2018-06-04 08:01 | 2018-06-04 08:31 | 685 | 2018-05-11 08:01 | 2018-05-11 08:31 | 0.5h | 58.34d |  | TEAM_2Shift_Calendar-1 | Grinder | 0.5h | 28.12 | 28.12 |

| ID | WBS | Task | Type | Duration | Start | Finish | Predecessors | Baseline start | Baseline finish | Baseline duration | Total slack | Free slack | Calendar | Resources | Work | Cost | Baseline cost |
| --- | --- | --- | --- | --- | --- | --- | --- | --- | --- | --- | --- | --- | --- | --- | --- | --- | --- |
| 687 | 2.10.2 | **Channel Sh Rolling** |  | 0.28d | 2018-06-04 08:31 | 2018-06-04 13:01 |  | 2018-05-11 08:31 | 2018-05-11 13:01 | 0.28d | 58.34d | 0d | TEAM_2Shift_Calendar-1 |  | 13h | 818.75 | 818.75 |
| 688 | 2.10.2.1 | Ch Pre Bend |  | 2h | 2018-06-04 08:31 | 2018-06-04 10:31 | 680 | 2018-05-11 08:31 | 2018-05-11 10:31 | 2h | 58.34d | 0d | TEAM_2Shift_Calendar-1 | Helper; Fitter [200%] | 6h | 375 | 375 |
| 689 | 2.10.2.2 | Ch Pre Bend Cut Off | milestone | 0h | 2018-06-04 10:31 | 2018-06-04 10:31 | 688 | 2018-05-11 10:31 | 2018-05-11 10:31 | 0h | 58.34d | 0d | TEAM_2Shift_Calendar-1 | Gas Cutter; Fitter [200%] |  |  |  |
| 690 | 2.10.2.3 | Ch LS Beveling |  | 0.5h | 2018-06-04 10:31 | 2018-06-04 11:01 | 689 | 2018-05-11 10:31 | 2018-05-11 11:01 | 0.5h | 58.34d | 0d | TEAM_2Shift_Calendar-1 | Fitter [200%] | 1h | 68.75 | 68.75 |
| 691 | 2.10.2.4 | Ch Rolling |  | 2h | 2018-06-04 11:01 | 2018-06-04 13:01 | 690 | 2018-05-11 11:01 | 2018-05-11 13:01 | 2h | 58.34d |  | TEAM_2Shift_Calendar-1 | Helper; Fitter [200%] | 6h | 375 | 375 |
| 692 | 2.10.3 | **Ch Shell LS Fit Up** |  | 0.09d | 2018-06-04 13:01 | 2018-06-04 14:31 |  | 2018-05-11 13:01 | 2018-05-11 14:31 | 0.09d | 58.34d | 0d | TEAM_2Shift_Calendar-1 |  | 5h | 325 | 325 |
| 693 | 2.10.3.1 | Ch LS Correction |  | 0.5h | 2018-06-04 13:01 | 2018-06-04 13:31 | 687 | 2018-05-11 13:01 | 2018-05-11 13:31 | 0.5h | 58.34d | 0d | TEAM_2Shift_Calendar-1 | Fitter [200%] | 1h | 68.75 | 68.75 |
| 694 | 2.10.3.2 | Ch LS Fit Up |  | 1h | 2018-06-04 13:31 | 2018-06-04 14:31 | 693 | 2018-05-11 13:31 | 2018-05-11 14:31 | 1h | 58.34d |  | TEAM_2Shift_Calendar-1 | SMAW Welder; Helper; Fitter [200%] | 4h | 256.25 | 256.25 |
| 695 | 2.10.4 | **Ch Shell LS Welding** |  | 0.39d | 2018-06-04 14:31 | 2018-06-04 20:46 |  | 2018-05-11 14:31 | 2018-05-11 20:46 | 0.39d | 58.34d | 0d | TEAM_2Shift_Calendar-1 |  | 14.75h | 889.06 | 889.06 |
| 696 | 2.10.4.1 | Ch LS Weld Arrangement |  | 0.5h | 2018-06-04 14:31 | 2018-06-04 15:01 | 692 | 2018-05-11 14:31 | 2018-05-11 15:01 | 0.5h | 58.34d | 0d | TEAM_2Shift_Calendar-1 | Helper [200%]; Fitter | 1.5h | 84.38 | 84.38 |
| 697 | 2.10.4.2 | Ch LS Welding- Top Side |  | 1.75h | 2018-06-04 15:01 | 2018-06-04 16:46 | 696 | 2018-05-11 15:01 | 2018-05-11 16:46 | 1.75h | 58.34d | 0d | TEAM_2Shift_Calendar-1 | Helper; SMAW Welder | 3.5h | 207.81 | 207.81 |
| 698 | 2.10.4.3 | Ch LS Welding- Back Chip | milestone | 0h | 2018-06-04 16:46 | 2018-06-04 16:46 | 697 | 2018-05-11 16:46 | 2018-05-11 16:46 | 0h | 58.34d | 0d | TEAM_2Shift_Calendar-1 | Helper; Grinder |  |  |  |
| 699 | 2.10.4.4 | Ch LS Inner Welding |  | 1.75h | 2018-06-04 16:46 | 2018-06-04 18:31 | 698 | 2018-05-11 16:46 | 2018-05-11 18:31 | 1.75h | 58.34d | 0d | TEAM_2Shift_Calendar-1 | Helper; SMAW Welder | 3.5h | 207.81 | 207.81 |
| 700 | 2.10.4.5 | Ch LS Innner Flush Grind |  | 0.25h | 2018-06-04 18:31 | 2018-06-04 18:46 | 699 | 2018-05-11 18:31 | 2018-05-11 18:46 | 0.25h | 58.34d | 0d | TEAM_2Shift_Calendar-1 | Grinder | 0.25h | 14.06 | 14.06 |
| 701 | 2.10.4.6 | Ch Re-Rolling |  | 2h | 2018-06-04 18:46 | 2018-06-04 20:46 | 700 | 2018-05-11 18:46 | 2018-05-11 20:46 | 2h | 58.34d |  | TEAM_2Shift_Calendar-1 | Helper; Fitter [200%] | 6h | 375 | 375 |
| 702 | 2.10.5 | **Ch LS Welding Radiography** |  | 1d | 2018-06-04 20:46 | 2018-06-05 20:46 |  | 2018-05-11 20:46 | 2018-05-14 20:46 | 1d | 58.34d | 0d | TEAM_2Shift_Calendar-1 |  | 16h |  |  |
| 703 | 2.10.5.1 | Ch LS Welding Rt |  | 1d | 2018-06-04 20:46 | 2018-06-05 20:46 | 695 | 2018-05-11 20:46 | 2018-05-14 20:46 | 1d | 58.34d |  | TEAM_2Shift_Calendar-1 | SC Radiography (Work) | 16h |  |  |
| 704 | 2.10.6 | **Ch CS Fit UpFlg1** |  | 44.17d | 2018-06-05 20:46 | 2018-08-01 07:30 |  | 2018-05-14 20:46 | 2018-07-09 07:30 | 44.17d | 14.26d | 0d | TEAM_2Shift_Calendar-1 |  | 5h | 325 | 325 |
| 705 | 2.10.6.1 | Ch Cir EP Correction |  | 0.5h | 2018-06-05 20:46 | 2018-06-05 21:16 | 702 | 2018-05-14 20:46 | 2018-05-14 21:16 | 0.5h | 58.34d | 44.08d | TEAM_2Shift_Calendar-1 | Fitter [200%] | 1h | 68.75 | 68.75 |
| 706 | 2.10.6.2 | Ch CS Fit UpFlg1 |  | 1h | 2018-08-01 06:30 | 2018-08-01 07:30 | 388FS+20d, 705 | 2018-07-09 06:30 | 2018-07-09 07:30 | 1h | 14.26d | 0d | TEAM_2Shift_Calendar-1 | SMAW Welder; Helper; Fitter [200%] | 4h | 256.25 | 256.25 |
| 707 | 2.10.6.3 | Ch CS Tack DP Check Flg1 | milestone | 0h | 2018-08-01 07:30 | 2018-08-01 07:30 | 706 | 2018-07-09 07:30 | 2018-07-09 07:30 | 0h | 14.26d |  | TEAM_2Shift_Calendar-1 | Helper; Fitter |  |  |  |
| 708 | 2.10.7 | **Ch Dish CS WeldingFlg1** |  | 0.66d | 2018-08-01 07:30 | 2018-08-01 18:00 |  | 2018-07-09 07:30 | 2018-07-09 18:00 | 0.66d | 14.26d | 0d | TEAM_2Shift_Calendar-1 |  | 22h | 1,284.38 | 1,284.38 |
| 709 | 2.10.7.1 | Ch CS Welding Transfere |  | 2h | 2018-08-01 07:30 | 2018-08-01 09:30 | 704 | 2018-07-09 07:30 | 2018-07-09 09:30 | 2h | 14.26d | 0d | TEAM_2Shift_Calendar-1 | Helper [200%]; Fitter | 6h | 337.5 | 337.5 |
| 710 | 2.10.7.2 | Ch CS Welding OuterFlg1 |  | 3.75h | 2018-08-01 09:30 | 2018-08-01 13:15 | 709 | 2018-07-09 09:30 | 2018-07-09 13:15 | 3.75h | 14.26d | 0d | TEAM_2Shift_Calendar-1 | Helper; SMAW Welder | 7.5h | 445.31 | 445.31 |
| 711 | 2.10.7.3 | Ch CS Welding Back ChipFlg1 |  | 0.5h | 2018-08-01 13:15 | 2018-08-01 13:45 | 710 | 2018-07-09 13:15 | 2018-07-09 13:45 | 0.5h | 14.26d | 0d | TEAM_2Shift_Calendar-1 | Grinder | 0.5h | 28.12 | 28.12 |
| 712 | 2.10.7.4 | Ch CS Inner WeldingFlg1 |  | 3.75h | 2018-08-01 13:45 | 2018-08-01 17:30 | 711 | 2018-07-09 13:45 | 2018-07-09 17:30 | 3.75h | 14.26d | 0d | TEAM_2Shift_Calendar-1 | Helper; SMAW Welder | 7.5h | 445.31 | 445.31 |
| 713 | 2.10.7.5 | Ch CS Flush GrindingFlg1 |  | 0.5h | 2018-08-01 17:30 | 2018-08-01 18:00 | 712 | 2018-07-09 17:30 | 2018-07-09 18:00 | 0.5h | 14.26d |  | TEAM_2Shift_Calendar-1 | Grinder | 0.5h | 28.12 | 28.12 |

| ID | WBS | Task | Duration | Start | Finish | Predecessors | Baseline start | Baseline finish | Baseline duration | Total slack | Free slack | Calendar | Resources | Work | Cost | Baseline cost |
| --- | --- | --- | --- | --- | --- | --- | --- | --- | --- | --- | --- | --- | --- | --- | --- | --- |
| 714 | 2.10.8 | **Ch CS Fit UpFlg2** | 0.2d | 2018-08-01 18:00 | 2018-08-01 21:16 |  | 2018-07-09 18:00 | 2018-07-09 21:16 | 0.2d | 14.26d | 0d | TEAM_2Shift_Calendar-1 |  | 10.44h | 658.31 | 658.31 |
| 715 | 2.10.8.1 | Ch Length Cutting | 0.17h | 2018-08-01 18:00 | 2018-08-01 18:10 | 708 | 2018-07-09 18:00 | 2018-07-09 18:10 | 0.17h | 14.26d | 0d | TEAM_2Shift_Calendar-1 | Helper; Gas Cutter | 0.34h | 20.19 | 20.19 |
| 716 | 2.10.8.2 | Ch Cir EP Correction | 1h | 2018-08-01 18:10 | 2018-08-01 19:10 | 715 | 2018-07-09 18:10 | 2018-07-09 19:10 | 1h | 14.26d | 0d | TEAM_2Shift_Calendar-1 | Helper; Fitter | 2h | 118.75 | 118.75 |
| 717 | 2.10.8.3 | Ch CS Fit UpFlg2 | 2h | 2018-08-01 19:10 | 2018-08-01 21:10 | 388FS+20d, 716 | 2018-07-09 19:10 | 2018-07-09 21:10 | 2h | 14.26d | 0d | TEAM_2Shift_Calendar-1 | SMAW Welder; Helper; Fitter [200%] | 8h | 512.5 | 512.5 |
| 718 | 2.10.8.4 | Ch CS Tack DP CheckFlg2 | 0.1h | 2018-08-01 21:10 | 2018-08-01 21:16 | 717 | 2018-07-09 21:10 | 2018-07-09 21:16 | 0.1h | 14.26d |  | TEAM_2Shift_Calendar-1 | Fitter | 0.1h | 6.88 | 6.88 |
| 719 | 2.10.9 | **Ch CS Flg Welding** | 0.66d | 2018-08-01 21:16 | 2018-08-02 15:46 |  | 2018-07-09 21:16 | 2018-07-10 15:46 | 0.66d | 14.26d | 0d | TEAM_2Shift_Calendar-1 |  | 22h | 1,284.38 | 1,284.38 |
| 720 | 2.10.9.1 | Ch CS Welding TransfereFlg2 | 2h | 2018-08-01 21:16 | 2018-08-02 07:16 | 714 | 2018-07-09 21:16 | 2018-07-10 07:16 | 2h | 14.26d | 0d | TEAM_2Shift_Calendar-1 | Helper [200%]; Fitter | 6h | 337.5 | 337.5 |
| 721 | 2.10.9.2 | Ch CS Welding OuterFlg2 | 3.75h | 2018-08-02 07:16 | 2018-08-02 11:01 | 720 | 2018-07-10 07:16 | 2018-07-10 11:01 | 3.75h | 14.26d | 0d | TEAM_2Shift_Calendar-1 | Helper; SMAW Welder | 7.5h | 445.31 | 445.31 |
| 722 | 2.10.9.3 | Ch CS Welding Back ChipFlg2 | 0.5h | 2018-08-02 11:01 | 2018-08-02 11:31 | 721 | 2018-07-10 11:01 | 2018-07-10 11:31 | 0.5h | 14.26d | 0d | TEAM_2Shift_Calendar-1 | Grinder | 0.5h | 28.12 | 28.12 |
| 723 | 2.10.9.4 | Ch CS Inner WeldingFlg2 | 3.75h | 2018-08-02 11:31 | 2018-08-02 15:16 | 722 | 2018-07-10 11:31 | 2018-07-10 15:16 | 3.75h | 14.26d | 0d | TEAM_2Shift_Calendar-1 | Helper; SMAW Welder | 7.5h | 445.31 | 445.31 |
| 724 | 2.10.9.5 | Ch CS Flush GrindingFlg2 | 0.5h | 2018-08-02 15:16 | 2018-08-02 15:46 | 723 | 2018-07-10 15:16 | 2018-07-10 15:46 | 0.5h | 14.26d |  | TEAM_2Shift_Calendar-1 | Grinder | 0.5h | 28.12 | 28.12 |
| 725 | 2.10.10 | **Ch CS Welding RtFlg1 & 2** | 2d | 2018-08-02 15:46 | 2018-08-04 15:46 |  | 2018-07-10 15:46 | 2018-07-12 15:46 | 2d | 14.26d | 0d | TEAM_2Shift_Calendar-1 |  | 32h |  |  |
| 726 | 2.10.10.1 | Ch CS Welding Rt | 2d | 2018-08-02 15:46 | 2018-08-04 15:46 | 719 | 2018-07-10 15:46 | 2018-07-12 15:46 | 2d | 14.26d |  | TEAM_2Shift_Calendar-1 | SC Radiography (Work) | 32h |  |  |
| 727 | 2.10.11 | **Channel Nozzel Marking** | 0.12d | 2018-08-04 15:46 | 2018-08-04 17:46 |  | 2018-07-12 15:46 | 2018-07-12 17:46 | 0.12d | 14.26d | 0d | TEAM_2Shift_Calendar-1 |  | 4h | 237.5 | 237.5 |
| 728 | 2.10.11.1 | Ch Nozzel orientation | 1h | 2018-08-04 15:46 | 2018-08-04 16:46 | 725 | 2018-07-12 15:46 | 2018-07-12 16:46 | 1h | 14.26d | 0d | TEAM_2Shift_Calendar-1 | Helper; Fitter | 2h | 118.75 | 118.75 |
| 729 | 2.10.11.2 | Ch Nozzel Marking6"Nb- 2 Nos | 1h | 2018-08-04 16:46 | 2018-08-04 17:46 | 728 | 2018-07-12 16:46 | 2018-07-12 17:46 | 1h | 14.26d |  | TEAM_2Shift_Calendar-1 | Helper; Fitter | 2h | 118.75 | 118.75 |
| 730 | 2.10.12 | **Ch Nozzel Opening** | 0.19d | 2018-08-04 17:46 | 2018-08-04 20:46 |  | 2018-07-12 17:46 | 2018-07-12 20:46 | 0.19d | 14.26d | 0d | TEAM_2Shift_Calendar-1 |  | 6h | 356.25 | 356.25 |
| 731 | 2.10.12.1 | Ch Nozzel Openning-Top | 2h | 2018-08-04 17:46 | 2018-08-04 19:46 | 727 | 2018-07-12 17:46 | 2018-07-12 19:46 | 2h | 14.26d | 0d | TEAM_2Shift_Calendar-1 | Helper; Gas Cutter | 4h | 237.5 | 237.5 |
| 732 | 2.10.12.2 | Ch Nozzel Openning-Bottom | 1h | 2018-08-04 19:46 | 2018-08-04 20:46 | 731 | 2018-07-12 19:46 | 2018-07-12 20:46 | 1h | 14.26d |  | TEAM_2Shift_Calendar-1 | Helper; Gas Cutter | 2h | 118.75 | 118.75 |
| 733 | 2.10.13 | **Ch Nozzel Open EP** | 0.19d | 2018-08-04 20:46 | 2018-08-06 07:46 |  | 2018-07-12 20:46 | 2018-07-13 07:46 | 0.19d | 14.26d | 0d | TEAM_2Shift_Calendar-1 |  | 6h | 318.75 | 318.75 |
| 734 | 2.10.13.1 | Ch Nozzel EP | 2h | 2018-08-04 20:46 | 2018-08-06 06:46 | 730 | 2018-07-12 20:46 | 2018-07-13 06:46 | 2h | 14.26d | 0d | TEAM_2Shift_Calendar-1 | Helper; Grinder | 4h | 212.5 | 212.5 |
| 735 | 2.10.13.2 | Ch Nozzel EP | 1h | 2018-08-06 06:46 | 2018-08-06 07:46 | 734 | 2018-07-13 06:46 | 2018-07-13 07:46 | 1h | 14.26d |  | TEAM_2Shift_Calendar-1 | Helper; Grinder | 2h | 106.25 | 106.25 |
| 736 | 2.10.14 | **Ch Nozzel Fit Up** | 0.38d | 2018-08-06 07:46 | 2018-08-06 13:46 |  | 2018-07-13 07:46 | 2018-07-13 13:46 | 0.38d | 14.26d | 0d | TEAM_2Shift_Calendar-1 |  | 24h | 1,537.5 | 1,537.5 |
| 737 | 2.10.14.1 | Ch Nozzel Fit Up | 4h | 2018-08-06 07:46 | 2018-08-06 11:46 | 733 | 2018-07-13 07:46 | 2018-07-13 11:46 | 4h | 14.26d | 0d | TEAM_2Shift_Calendar-1 | SMAW Welder; Helper; Fitter [200%] | 16h | 1,025 | 1,025 |
| 738 | 2.10.14.2 | Ch Nozzel Fit Up | 2h | 2018-08-06 11:46 | 2018-08-06 13:46 | 737 | 2018-07-13 11:46 | 2018-07-13 13:46 | 2h | 14.26d |  | TEAM_2Shift_Calendar-1 | SMAW Welder; Helper; Fitter [200%] | 8h | 512.5 | 512.5 |

| ID | WBS | Task | Type | Duration | Start | Finish | Predecessors | Baseline start | Baseline finish | Baseline duration | Total slack | Free slack | Calendar | Resources | Work | Cost | Baseline cost |
| --- | --- | --- | --- | --- | --- | --- | --- | --- | --- | --- | --- | --- | --- | --- | --- | --- | --- |
| 739 | 2.10.15 | **Ch Nozzel Fit Up Inspection** |  | 0.12d | 2018-08-06 13:46 | 2018-08-06 15:46 |  | 2018-07-13 13:46 | 2018-07-13 15:46 | 0.12d | 14.26d | 0d | TEAM_2Shift_Calendar-1 |  | 4h | 237.5 | 237.5 |
| 740 | 2.10.15.1 | Ch Nozzel Inspection |  | 1h | 2018-08-06 13:46 | 2018-08-06 14:46 | 736 | 2018-07-13 13:46 | 2018-07-13 14:46 | 1h | 14.26d | 0d | TEAM_2Shift_Calendar-1 | Helper; Fitter | 2h | 118.75 | 118.75 |
| 741 | 2.10.15.2 | Ch Nozzel Inspection |  | 1h | 2018-08-06 14:46 | 2018-08-06 15:46 | 740 | 2018-07-13 14:46 | 2018-07-13 15:46 | 1h | 14.26d |  | TEAM_2Shift_Calendar-1 | Helper; Fitter | 2h | 118.75 | 118.75 |
| 742 | 2.10.16 | **Ch Nozzel Welding** |  | 1.39d | 2018-08-06 15:46 | 2018-08-08 06:04 |  | 2018-07-13 15:46 | 2018-07-17 06:04 | 1.39d | 14.26d | 0d | TEAM_2Shift_Calendar-1 |  | 42.6h | 2,473.12 | 2,473.12 |
| 743 | 2.10.16.1 | Ch Nozzel Welding Arrangement | milestone | 0d | 2018-08-06 15:46 | 2018-08-06 15:46 | 739 | 2018-07-13 15:46 | 2018-07-13 15:46 | 0d | 14.26d | 0d | TEAM_2Shift_Calendar-1 |  |  |  |  |
| 744 | 2.10.16.2 | Ch Nozzel Welding |  | 3h | 2018-08-06 15:46 | 2018-08-06 18:46 | 743 | 2018-07-13 15:46 | 2018-07-13 18:46 | 3h | 14.26d | 0d | TEAM_2Shift_Calendar-1 | Helper; SMAW Welder | 6h | 356.25 | 356.25 |
| 745 | 2.10.16.3 | Ch Nozzel Welding |  | 3h | 2018-08-06 18:46 | 2018-08-06 21:46 | 744 | 2018-07-13 18:46 | 2018-07-13 21:46 | 3h | 14.26d | 0d | TEAM_2Shift_Calendar-1 | Helper; SMAW Welder | 6h | 356.25 | 356.25 |
| 746 | 2.10.16.4 | Ch Nozzel Root DP Check |  | 0.3h | 2018-08-06 21:46 | 2018-08-07 06:04 | 745 | 2018-07-13 21:46 | 2018-07-16 06:04 | 0.3h | 14.26d | 0d | TEAM_2Shift_Calendar-1 | Helper; SMAW Welder | 0.6h | 35.62 | 35.62 |
| 747 | 2.10.16.5 | Ch Nozzel Inner Weld |  | 3h | 2018-08-07 06:04 | 2018-08-07 09:04 | 746 | 2018-07-16 06:04 | 2018-07-16 09:04 | 3h | 14.26d | 0d | TEAM_2Shift_Calendar-1 | Helper; SMAW Welder | 6h | 356.25 | 356.25 |
| 748 | 2.10.16.6 | Ch Nozzel Inner Weld |  | 3h | 2018-08-07 09:04 | 2018-08-07 12:04 | 747 | 2018-07-16 09:04 | 2018-07-16 12:04 | 3h | 14.26d | 0d | TEAM_2Shift_Calendar-1 | Helper; SMAW Welder | 6h | 356.25 | 356.25 |
| 749 | 2.10.16.7 | Rf Pad Fit Up & Nozzle Fit Up |  | 4h | 2018-08-07 12:04 | 2018-08-07 16:04 | 748 | 2018-07-16 12:04 | 2018-07-16 16:04 | 4h | 14.26d | 0d | TEAM_2Shift_Calendar-1 | Helper; SMAW Welder | 8h | 475 | 475 |
| 750 | 2.10.16.8 | Rf Pad Fit Up Welding |  | 4h | 2018-08-07 16:04 | 2018-08-07 20:04 | 749 | 2018-07-16 16:04 | 2018-07-16 20:04 | 4h | 14.26d | 0d | TEAM_2Shift_Calendar-1 | Helper; Grinder | 8h | 425 | 425 |
| 751 | 2.10.16.9 | Nozzel Welding Flush Grind |  | 2h | 2018-08-07 20:04 | 2018-08-08 06:04 | 750 | 2018-07-16 20:04 | 2018-07-17 06:04 | 2h | 14.26d |  | TEAM_2Shift_Calendar-1 | Grinder | 2h | 112.5 | 112.5 |
| 752 | 2.10.17 | **Channel Pp Plate Fit Up** |  | 0.44d | 2018-08-08 06:04 | 2018-08-08 13:04 |  | 2018-07-17 06:04 | 2018-07-17 13:04 | 0.44d | 14.26d | 0d | TEAM_2Shift_Calendar-1 |  | 26h | 1,656.25 | 1,656.25 |
| 753 | 2.10.17.1 | Ch Pp Plate Fit Up |  | 6h | 2018-08-08 06:04 | 2018-08-08 12:04 | 742 | 2018-07-17 06:04 | 2018-07-17 12:04 | 6h | 14.26d | 0d | TEAM_2Shift_Calendar-1 | Helper; SMAW Welder; Fitter [200%] | 24h | 1,537.5 | 1,537.5 |
| 754 | 2.10.17.2 | Ch Pp Plate Fit Up Inspection |  | 1h | 2018-08-08 12:04 | 2018-08-08 13:04 | 753 | 2018-07-17 12:04 | 2018-07-17 13:04 | 1h | 14.26d |  | TEAM_2Shift_Calendar-1 | Helper; Fitter | 2h | 118.75 | 118.75 |
| 755 | 2.10.18 | **Ch Pp Plate Welding** |  | 1.14d | 2018-08-08 13:04 | 2018-08-09 15:19 |  | 2018-07-17 13:04 | 2018-07-18 15:19 | 1.14d | 14.26d |  | TEAM_2Shift_Calendar-1 |  | 36.5h | 2,164.06 | 2,164.06 |
| 756 | 2.10.18.1 | Ch Pp Plate Welding |  | 18h | 2018-08-08 13:04 | 2018-08-09 15:04 | 752 | 2018-07-17 13:04 | 2018-07-18 15:04 | 18h | 14.26d | 0d | TEAM_2Shift_Calendar-1 | Helper; SMAW Welder | 36h | 2,137.5 | 2,137.5 |
| 757 | 2.10.18.2 | Ch Pp Plate Face Grinding |  | 0.25h | 2018-08-09 15:04 | 2018-08-09 15:19 | 756 | 2018-07-18 15:04 | 2018-07-18 15:19 | 0.25h | 14.26d |  | TEAM_2Shift_Calendar-1 | Helper; Grinder | 0.5h | 26.56 | 26.56 |
| 758 | 2.11 | **Shell Side Hydro** |  | 2.62d | 2018-08-28 18:51 | 2018-08-31 12:51 |  | 2018-08-28 18:51 | 2018-08-31 12:51 | 2.62d | 1.04d | 0d | TEAM_2Shift_Calendar-1 |  | 168h | 9,975 | 9,975 |
| 759 | 2.11.1 | Shell Side Hydro |  | 2d | 2018-08-28 18:51 | 2018-08-30 18:51 | 585, 654 | 2018-08-28 18:51 | 2018-08-30 18:51 | 2d | 1.04d | 0d | TEAM_2Shift_Calendar-1 | Helper [200%]; Fitter [200%] | 128h | 7,600 | 7,600 |
| 760 | 2.11.2 | Shell Side TPI Witness |  | 5h | 2018-08-30 18:51 | 2018-08-31 07:51 | 759 | 2018-08-30 18:51 | 2018-08-31 07:51 | 5h | 1.04d | 0d | TEAM_2Shift_Calendar-1 | Fitter [200%] | 10h | 687.5 | 687.5 |
| 761 | 2.11.3 | De Watering & Dismantle Of Gland |  | 5h | 2018-08-31 07:51 | 2018-08-31 12:51 | 760 | 2018-08-31 07:51 | 2018-08-31 12:51 | 5h | 1.04d |  | TEAM_2Shift_Calendar-1 | Helper [400%]; Fitter [200%] | 30h | 1,687.5 | 1,687.5 |
| 762 | 2.12 | **Channel Side Hydro** |  | 2.62d | 2018-08-28 18:51 | 2018-08-31 12:51 |  | 2018-08-28 18:51 | 2018-08-31 12:51 | 2.62d | 1.04d | 0d | TEAM_2Shift_Calendar-1 |  | 168h | 9,975 | 9,975 |
| 763 | 2.12.1 | Shell Side Hydro |  | 2d | 2018-08-28 18:51 | 2018-08-30 18:51 | 654, 679 | 2018-08-28 18:51 | 2018-08-30 18:51 | 2d | 1.04d | 0d | TEAM_2Shift_Calendar-1 | Helper [200%]; Fitter [200%] | 128h | 7,600 | 7,600 |
| 764 | 2.12.2 | Shell Side TPI Witness |  | 5h | 2018-08-30 18:51 | 2018-08-31 07:51 | 763 | 2018-08-30 18:51 | 2018-08-31 07:51 | 5h | 1.04d | 0d | TEAM_2Shift_Calendar-1 | Fitter [200%] | 10h | 687.5 | 687.5 |
| 765 | 2.12.3 | De Watering & Dismantle Of Gland |  | 5h | 2018-08-31 07:51 | 2018-08-31 12:51 | 764 | 2018-08-31 07:51 | 2018-08-31 12:51 | 5h | 1.04d |  | TEAM_2Shift_Calendar-1 | Helper [400%]; Fitter [200%] | 30h | 1,687.5 | 1,687.5 |

| ID | WBS | Task | Duration | Start | Finish | Predecessors | Baseline start | Baseline finish | Baseline duration | Total slack | Free slack | Calendar | Resources | Work | Cost | Baseline cost |
| --- | --- | --- | --- | --- | --- | --- | --- | --- | --- | --- | --- | --- | --- | --- | --- | --- |
| 766 | 2.13 | **Nitrogen Purging** | 1d | 2018-08-31 12:51 | 2018-09-01 12:51 |  | 2018-08-31 12:51 | 2018-09-01 12:51 | 1d | 1.04d | 0d | TEAM_2Shift_Calendar-1 |  | 96h | 5,400 | 5,400 |
| 767 | 2.13.1 | Blind & Nitrogen Purging | 1d | 2018-08-31 12:51 | 2018-09-01 12:51 | 758, 762 | 2018-08-31 12:51 | 2018-09-01 12:51 | 1d | 1.04d |  | TEAM_2Shift_Calendar-1 | Helper [400%]; Fitter [200%] | 96h | 5,400 | 5,400 |
| 768 | 2.14 | **Painting & tranportation** | 4d | 2018-09-01 12:51 | 2018-09-12 12:30 |  | 2018-09-01 12:51 | 2018-10-09 12:30 | 14d | 0d |  |  |  | 176h |  |  |
| 769 | 2.14.1 | Primer | 1d | 2018-09-01 12:51 | 2018-09-03 12:51 | 766 | 2018-09-01 12:51 | 2018-09-03 12:51 | 1d | 1.04d | 0d | TEAM_2Shift_Calendar-1 | Painter [300%] | 48h |  |  |
| 770 | 2.14.2 | Top Coat1 | 1d | 2018-09-03 12:51 | 2018-09-04 12:51 | 769 | 2018-09-03 12:51 | 2018-09-04 12:51 | 1d | 1.04d | 0d | TEAM_2Shift_Calendar-1 | Painter [300%] | 48h |  |  |
| 771 | 2.14.3 | Top Coat2 | 1d | 2018-09-04 12:51 | 2018-09-05 12:51 | 770 | 2018-09-04 12:51 | 2018-09-05 12:51 | 1d | 1.04d |  | TEAM_2Shift_Calendar-1 | Painter [300%] | 48h |  |  |
| 772 | 2.14.4 | Tranportation | 2d | 2018-09-06 13:30 | 2018-09-12 12:30 | 771, 1 | 2018-09-06 13:30 | 2018-09-12 12:30 | 2d | 0d |  |  | SC (Work) | 32h |  |  |
