# 4209 E&J

Schedule from MS Project, 2018-04-02 to 2018-09-18, 16 hours a day, costs in ₹, A marks actual dates.

## Calendars

- TEAM_Stand_Calendar: Mon-Sat 08:30-12:30, 13:30-17:30; Sun off. Exceptions (off unless hours are given): 2017-01-13 to 2023-08-12 (2nd Sat, recurring), 2017-01-26 to 2036-01-26 (Republic Day, recurring), 2017-01-27 to 2023-08-26 (4th Sat, recurring), 2017-05-01 to 2036-05-01 (May Day, recurring), 2017-08-15 to 2036-08-15 (Independence Day, recurring), 2017-10-02 to 2036-10-02 (Gandhi Jayanti, recurring), 2018-09-13 (Vinakaya Chaturthi'2018).
- TEAM_2Shift_Calendar-1: Mon-Sat 06:00-22:00; Sun off. Exceptions (off unless hours are given): 2017-01-13 to 2023-02-11 (2nd Sat, recurring), 2017-01-26 to 2036-01-26 (Republic Day, recurring), 2017-01-27 to 2023-08-26 (4th Sat, recurring), 2017-05-01 to 2036-05-01 (May Day, recurring), 2017-08-15 to 2036-08-15 (Indepdence Day, recurring), 2017-10-02 to 2036-10-02 (Gandhi Jayanti, recurring), 2018-09-13 (Vinakya Chaturthi'2018).

## Resources

| Resource | Rate |
| --- | --- |
| Store |  |
| Fitter | 68.75 |
| Helper | 50 |
| Gas Cutter | 68.75 |
| SMAW Welder | 68.75 |
| Grinder | 56.25 |
| QC Engineer |  |
| Driller | 68.75 |
| Lathe Operator | 120 |
| TIG Welder | 125 |
| Painter |  |
| Consumable - Welding (Cost) |  |
| Fastners (Cost) |  |
| Forging Non-Std (Cost) |  |
| Forging Std (Cost) |  |
| Pipe (Cost) |  |
| Plate (Cost) |  |
| Rod (Cost) |  |
| Tube (Cost) |  |
| Tube Sheet (Cost) |  |
| Finance |  |
| PMO Support |  |
| PM |  |
| SC (Work) |  |
| SC Radiography (Work) |  |

## Schedule

| ID | WBS | Task | Duration | Start | Finish | Predecessors | Complete | Remaining | Baseline start | Baseline finish | Baseline duration | Total slack | Free slack | Calendar | Resources | Work | Cost | Baseline cost |
| --- | --- | --- | --- | --- | --- | --- | --- | --- | --- | --- | --- | --- | --- | --- | --- | --- | --- | --- |
| 1 | 1 | **680-EE-1007** | 63.5d | 2018-04-02 08:30 A | 2018-09-12 07:15 |  | 1% | 62.81d | 2018-04-02 08:30 | 2018-09-12 07:15 | 63.5d | 2d |  |  |  | 2611.35h | 121,449.69 | 121,449.69 |
| 2 | 1.1 | Mateiral receipt | 1d | 2018-04-02 08:30 A | 2018-04-03 17:30 A |  | 100% |  | 2018-04-02 08:30 | 2018-04-03 17:30 | 1d |  |  |  |  |  |  |  |
| 3 | 1.2 | **Dish Forming - Od** | 6d | 2018-06-02 17:30 | 2018-06-19 06:30 |  |  |  | 2018-05-11 17:30 | 2018-05-29 06:30 | 6d | 28.72d | 0d |  |  | 162h | 5,509.38 | 5,509.38 |
| 4 | 1.2.1 | Bar Dish Blank Issuence | 4h | 2018-06-02 17:30 | 2018-06-02 21:30 | 2FS+47d |  |  | 2018-05-11 17:30 | 2018-05-11 21:30 | 4h | 57.66d | 0d | TEAM_2Shift_Calendar-1 | Plate (Cost) [0.1%]; Store | 4h |  |  |
| 5 | 1.2.2 | Bar-Dish Blank Marking10TXBLANK DIA 582 | 0.5h | 2018-06-02 21:30 | 2018-06-02 22:00 | 4 |  |  | 2018-05-11 21:30 | 2018-05-11 22:00 | 0.5h | 57.66d | 0d | TEAM_2Shift_Calendar-1 | Helper; Fitter | 1h | 59.38 | 59.38 |
| 6 | 1.2.3 | Bar-Dish Blank Marking Inspection | 4h | 2018-06-04 06:00 | 2018-06-04 10:00 | 5 |  |  | 2018-05-14 06:00 | 2018-05-14 10:00 | 4h | 57.66d | 0d | TEAM_2Shift_Calendar-1 | Helper; Fitter | 8h | 475 | 475 |
| 7 | 1.2.4 | Bar-Dish Blank Cutting | 5h | 2018-06-04 10:00 | 2018-06-04 15:00 | 6 |  |  | 2018-05-14 10:00 | 2018-05-14 15:00 | 5h | 57.66d | 0d | TEAM_2Shift_Calendar-1 | Helper; Gas Cutter | 10h | 593.75 | 593.75 |
| 8 | 1.2.5 | Bar-Dish Forming | 7h | 2018-06-04 15:00 | 2018-06-05 14:00 | 7 |  |  | 2018-05-14 15:00 | 2018-05-15 14:00 | 7h | 28.72d | 0d |  | SC (Work) | 7h |  |  |
| 9 | 1.2.6 | Profile Insp | 4h | 2018-06-05 14:00 | 2018-06-05 18:00 | 8 |  |  | 2018-05-15 14:00 | 2018-05-15 18:00 | 4h | 57.56d | 0d | TEAM_2Shift_Calendar-1 | Helper; Fitter | 8h | 475 | 475 |
| 10 | 1.2.7 | Heat Treatment Preparation | 1d | 2018-06-05 18:00 | 2018-06-06 18:00 | 9 |  |  | 2018-05-15 18:00 | 2018-05-16 18:00 | 1d | 57.56d | 0.41d | TEAM_2Shift_Calendar-1 | SMAW Welder; Fitter | 32h | 2,200 | 2,200 |
| 11 | 1.2.8 | Stress Releiving- Sub Cont | 4d | 2018-06-07 08:30 | 2018-06-16 17:30 | 10 |  |  | 2018-05-17 08:30 | 2018-05-25 17:30 | 4d | 28.66d | 0d |  | SC (Work) | 64h |  |  |
| 12 | 1.2.9 | Removal Of Spiders | 3h | 2018-06-16 17:30 | 2018-06-16 20:30 | 11 |  |  | 2018-05-25 17:30 | 2018-05-25 20:30 | 3h | 57.59d | 0d | TEAM_2Shift_Calendar-1 | Helper; Fitter | 6h | 356.25 | 356.25 |
| 13 | 1.2.10 | Surface Preparation | 4h | 2018-06-16 20:30 | 2018-06-18 08:30 | 12 |  |  | 2018-05-25 20:30 | 2018-05-28 08:30 | 4h | 57.59d | 0d | TEAM_2Shift_Calendar-1 | Grinder | 4h | 225 | 225 |
| 14 | 1.2.11 | Inspection | 3h | 2018-06-18 08:30 | 2018-06-18 11:30 | 13 |  |  | 2018-05-28 08:30 | 2018-05-28 11:30 | 3h | 57.59d | 0d | TEAM_2Shift_Calendar-1 | Fitter | 3h | 206.25 | 206.25 |
| 15 | 1.2.12 | TPI Inspection | 4h | 2018-06-18 11:30 | 2018-06-18 15:30 | 14 |  |  | 2018-05-28 11:30 | 2018-05-28 15:30 | 4h | 57.59d | 0d | TEAM_2Shift_Calendar-1 | Fitter | 4h | 275 | 275 |
| 16 | 1.2.13 | Sf Marking | 2h | 2018-06-18 15:30 | 2018-06-18 17:30 | 15 |  |  | 2018-05-28 15:30 | 2018-05-28 17:30 | 2h | 57.59d | 0d | TEAM_2Shift_Calendar-1 | Helper; Fitter | 4h | 237.5 | 237.5 |
| 17 | 1.2.14 | Sf Cutting | 2h | 2018-06-18 17:30 | 2018-06-18 19:30 | 16 |  |  | 2018-05-28 17:30 | 2018-05-28 19:30 | 2h | 57.59d | 0d | TEAM_2Shift_Calendar-1 | Helper; Gas Cutter | 4h | 237.5 | 237.5 |
| 18 | 1.2.15 | Sf Gridning & EP | 3h | 2018-06-18 19:30 | 2018-06-19 06:30 | 17 |  |  | 2018-05-28 19:30 | 2018-05-29 06:30 | 3h | 57.59d |  | TEAM_2Shift_Calendar-1 | Grinder | 3h | 168.75 | 168.75 |
| 19 | 1.3 | **Dish Forming - Od** | 12.5d | 2018-06-02 17:30 | 2018-07-05 06:30 |  |  |  | 2018-05-11 17:30 | 2018-06-14 06:30 | 12.5d | 28.5d |  |  |  | 146h | 3,309.38 | 3,309.38 |
| 20 | 1.3.1 | Bar Dish Blank Issuence | 4h | 2018-06-02 17:30 | 2018-06-02 21:30 | 2FS+47d |  |  | 2018-05-11 17:30 | 2018-05-11 21:30 | 4h | 82.11d |  | TEAM_2Shift_Calendar-1 | Plate (Cost) [0.1%]; Store | 4h |  |  |
| 21 | 1.3.2 | Bar-Dish Blank Marking10TXBLANK DIA 582 | 0.5h | 2018-06-19 06:30 | 2018-06-19 07:00 | 3 |  |  | 2018-05-29 06:30 | 2018-05-29 07:00 | 0.5h | 57.59d | 0d | TEAM_2Shift_Calendar-1 | Helper; Fitter | 1h | 59.38 | 59.38 |
| 22 | 1.3.3 | Bar-Dish Blank Marking Inspection | 4h | 2018-06-19 07:00 | 2018-06-19 11:00 | 21 |  |  | 2018-05-29 07:00 | 2018-05-29 11:00 | 4h | 57.59d | 0d | TEAM_2Shift_Calendar-1 | Helper; Fitter | 8h | 475 | 475 |
| 23 | 1.3.4 | Bar-Dish Blank Cutting | 5h | 2018-06-19 11:00 | 2018-06-19 16:00 | 22 |  |  | 2018-05-29 11:00 | 2018-05-29 16:00 | 5h | 57.59d | 0d | TEAM_2Shift_Calendar-1 | Helper; Gas Cutter | 10h | 593.75 | 593.75 |
| 24 | 1.3.5 | Bar-Dish Forming | 7h | 2018-06-19 16:00 | 2018-06-20 15:00 | 23 |  |  | 2018-05-29 16:00 | 2018-05-30 15:00 | 7h | 28.66d | 0d |  | SC (Work) | 7h |  |  |
| 25 | 1.3.6 | Profile Insp | 4h | 2018-06-20 15:00 | 2018-06-20 19:00 | 24 |  |  | 2018-05-30 15:00 | 2018-05-30 19:00 | 4h | 57.34d | 0.34d | TEAM_2Shift_Calendar-1 | Helper; Fitter | 8h | 475 | 475 |
| 26 | 1.3.7 | Heat Treatment Preparation | 1d | 2018-06-21 08:30 | 2018-06-22 17:30 | 25 |  |  | 2018-05-31 08:30 | 2018-06-01 17:30 | 1d | 28.5d | 0d |  | SC (Work) | 16h |  |  |
| 27 | 1.3.8 | Stress Releiving- Sub Cont | 4d | 2018-06-25 08:30 | 2018-07-03 17:30 | 26 |  |  | 2018-06-02 08:30 | 2018-06-12 17:30 | 4d | 28.5d | 0d |  | SC (Work) | 64h |  |  |
| 28 | 1.3.9 | Removal Of Spiders | 3h | 2018-07-03 17:30 | 2018-07-03 20:30 | 27 |  |  | 2018-06-12 17:30 | 2018-06-12 20:30 | 3h | 57.05d | 0d | TEAM_2Shift_Calendar-1 | Helper; Fitter | 6h | 356.25 | 356.25 |
| 29 | 1.3.10 | Surface Preparation | 4h | 2018-07-03 20:30 | 2018-07-04 08:30 | 28 |  |  | 2018-06-12 20:30 | 2018-06-13 08:30 | 4h | 57.05d | 0d | TEAM_2Shift_Calendar-1 | Grinder | 4h | 225 | 225 |
| 30 | 1.3.11 | Inspection | 3h | 2018-07-04 08:30 | 2018-07-04 11:30 | 29 |  |  | 2018-06-13 08:30 | 2018-06-13 11:30 | 3h | 57.05d | 0d | TEAM_2Shift_Calendar-1 | Fitter | 3h | 206.25 | 206.25 |
| 31 | 1.3.12 | TPI Inspection | 4h | 2018-07-04 11:30 | 2018-07-04 15:30 | 30 |  |  | 2018-06-13 11:30 | 2018-06-13 15:30 | 4h | 57.05d | 0d | TEAM_2Shift_Calendar-1 | Fitter | 4h | 275 | 275 |
| 32 | 1.3.13 | Sf Marking | 2h | 2018-07-04 15:30 | 2018-07-04 17:30 | 31 |  |  | 2018-06-13 15:30 | 2018-06-13 17:30 | 2h | 57.05d | 0d | TEAM_2Shift_Calendar-1 | Helper; Fitter | 4h | 237.5 | 237.5 |
| 33 | 1.3.14 | Sf Cutting | 2h | 2018-07-04 17:30 | 2018-07-04 19:30 | 32 |  |  | 2018-06-13 17:30 | 2018-06-13 19:30 | 2h | 57.05d | 0d | TEAM_2Shift_Calendar-1 | Helper; Gas Cutter | 4h | 237.5 | 237.5 |
| 34 | 1.3.15 | Sf Gridning & EP | 3h | 2018-07-04 19:30 | 2018-07-05 06:30 | 33 |  |  | 2018-06-13 19:30 | 2018-06-14 06:30 | 3h | 57.05d |  | TEAM_2Shift_Calendar-1 | Grinder | 3h | 168.75 | 168.75 |

| ID | WBS | Task | Duration | Start | Finish | Predecessors | Baseline start | Baseline finish | Baseline duration | Total slack | Free slack | Calendar | Resources | Work | Cost | Baseline cost |
| --- | --- | --- | --- | --- | --- | --- | --- | --- | --- | --- | --- | --- | --- | --- | --- | --- |
| 35 | 1.4 | **Tube Sheet** | 13d | 2018-06-29 17:30 | 2018-08-01 21:30 |  | 2018-06-29 17:30 | 2018-08-01 21:30 | 13d | 2d | 0d |  |  | 144h | 475 | 475 |
| 36 | 1.4.1 | **Tube Sheet Machining** | 5.12d | 2018-06-29 17:30 | 2018-07-12 10:30 |  | 2018-06-29 17:30 | 2018-07-12 10:30 | 5.12d | 2d | 0d |  |  | 10h |  |  |
| 37 | 1.4.1.1 | Inward Inspection | 11h | 2018-06-29 17:30 | 2018-06-30 12:30 | 2FS+68d | 2018-06-29 17:30 | 2018-06-30 12:30 | 11h | 4.06d | 0.06d | TEAM_2Shift_Calendar-1 | Tube Sheet (Cost) [0.1%]; QC Engineer | 4h |  |  |
| 38 | 1.4.1.2 | Tube Sheet M/C | 6h | 2018-06-30 13:30 | 2018-07-02 10:30 | 37 | 2018-06-30 13:30 | 2018-07-02 10:30 | 6h | 2d | 0d |  | SC (Work) | 6h |  |  |
| 39 | 1.4.1.3 | Dummy Activity | 9d | 2018-07-02 10:30 | 2018-07-12 10:30 | 38 | 2018-07-02 10:30 | 2018-07-12 10:30 | 9d | 4d |  | TEAM_2Shift_Calendar-1 |  |  |  |  |
| 40 | 1.4.2 | **Tube Sheet Drilling** | 7.88d | 2018-07-12 10:30 | 2018-08-01 21:30 |  | 2018-07-12 10:30 | 2018-08-01 21:30 | 7.88d | 2d |  |  |  | 134h | 475 | 475 |
| 41 | 1.4.2.1 | Tube Sheet Drilling | 7d | 2018-07-12 10:30 | 2018-07-31 10:30 | 36 | 2018-07-12 10:30 | 2018-07-31 10:30 | 7d | 2d | 0d |  | SC (Work) | 112h |  |  |
| 42 | 1.4.2.2 | Exp Groove+Welding Groove | 4h | 2018-07-31 10:30 | 2018-07-31 15:30 | 41 | 2018-07-31 10:30 | 2018-07-31 15:30 | 4h | 2d | 0d |  | SC (Work) | 4h |  |  |
| 43 | 1.4.2.3 | Tie Rod, Pulling, Lifting Hole | 4h | 2018-07-31 15:30 | 2018-08-01 10:30 | 42 | 2018-07-31 15:30 | 2018-08-01 10:30 | 4h | 2d | 0d |  | SC (Work) | 4h |  |  |
| 44 | 1.4.2.4 | Pass Partition Groove M/C | 6h | 2018-08-01 10:30 | 2018-08-01 17:30 | 43 | 2018-08-01 10:30 | 2018-08-01 17:30 | 6h | 2d | 0d |  | SC (Work) | 6h |  |  |
| 45 | 1.4.2.5 | Cleaning ,Go/No Go Check | 2h | 2018-08-01 17:30 | 2018-08-01 19:30 | 44 | 2018-08-01 17:30 | 2018-08-01 19:30 | 2h | 4d | 0d | TEAM_2Shift_Calendar-1 | Helper; Fitter | 4h | 237.5 | 237.5 |
| 46 | 1.4.2.6 | Final Inspection | 2h | 2018-08-01 19:30 | 2018-08-01 21:30 | 45 | 2018-08-01 19:30 | 2018-08-01 21:30 | 2h | 4d |  | TEAM_2Shift_Calendar-1 | Helper; Fitter | 4h | 237.5 | 237.5 |
| 47 | 1.5 | **Nozzle Fab** | 7.36d | 2018-06-02 17:30 | 2018-06-13 07:15 |  | 2018-05-11 17:30 | 2018-05-22 07:15 | 7.36d | 75d |  | TEAM_2Shift_Calendar-1 |  | 258h | 15,220.32 | 15,220.32 |
| 48 | 1.5.1 | **Sh Nozzel Pipe Marking** | 0.3d | 2018-06-02 17:30 | 2018-06-04 06:15 |  | 2018-05-11 17:30 | 2018-05-14 06:15 | 0.3d | 75d | 0d | TEAM_2Shift_Calendar-1 |  | 9.5h | 564.06 | 564.06 |
| 49 | 1.5.1.1 | 6" Nozzle-2 Nos | 1.75h | 2018-06-02 17:30 | 2018-06-02 19:15 | 2FS+47d | 2018-05-11 17:30 | 2018-05-11 19:15 | 1.75h | 75d | 0d | TEAM_2Shift_Calendar-1 | Helper; Forging Std (Cost); Pipe (Cost); Fitter | 3.5h | 207.81 | 207.81 |
| 50 | 1.5.1.2 | 1.5" NB Mp Con - 2 Nos | 2h | 2018-06-02 19:15 | 2018-06-02 21:15 | 49 | 2018-05-11 19:15 | 2018-05-11 21:15 | 2h | 75d | 0d | TEAM_2Shift_Calendar-1 | Helper; Fitter | 4h | 237.5 | 237.5 |
| 51 | 1.5.1.3 | Inspection | 1h | 2018-06-02 21:15 | 2018-06-04 06:15 | 50 | 2018-05-11 21:15 | 2018-05-14 06:15 | 1h | 75d |  | TEAM_2Shift_Calendar-1 | Helper; Fitter | 2h | 118.75 | 118.75 |
| 52 | 1.5.2 | **Sh Nozzel Pipe Cutting** | 0.88d | 2018-06-04 06:15 | 2018-06-04 20:15 |  | 2018-05-14 06:15 | 2018-05-14 20:15 | 0.88d | 75d | 0d | TEAM_2Shift_Calendar-1 |  | 28h | 1,662.5 | 1,662.5 |
| 53 | 1.5.2.1 | 6" Nozzle-2 Nos | 11h | 2018-06-04 06:15 | 2018-06-04 17:15 | 48 | 2018-05-14 06:15 | 2018-05-14 17:15 | 11h | 75d | 0d | TEAM_2Shift_Calendar-1 | Helper; Gas Cutter | 22h | 1,306.25 | 1,306.25 |
| 54 | 1.5.2.2 | 1.5" NB Mp Con - 2 Nos | 2h | 2018-06-04 17:15 | 2018-06-04 19:15 | 53 | 2018-05-14 17:15 | 2018-05-14 19:15 | 2h | 75d | 0d | TEAM_2Shift_Calendar-1 | Helper; Gas Cutter | 4h | 237.5 | 237.5 |
| 55 | 1.5.2.3 | Inspection | 1h | 2018-06-04 19:15 | 2018-06-04 20:15 | 54 | 2018-05-14 19:15 | 2018-05-14 20:15 | 1h | 75d |  | TEAM_2Shift_Calendar-1 | Helper; Gas Cutter | 2h | 118.75 | 118.75 |
| 56 | 1.5.3 | **Sh Nozzel Pipe EP** | 0.38d | 2018-06-04 20:15 | 2018-06-05 10:15 |  | 2018-05-14 20:15 | 2018-05-15 10:15 | 0.38d | 75d | 0d | TEAM_2Shift_Calendar-1 |  | 12h | 712.5 | 712.5 |
| 57 | 1.5.3.1 | 6" Nozzle-2 Nos | 3h | 2018-06-04 20:15 | 2018-06-05 07:15 | 52 | 2018-05-14 20:15 | 2018-05-15 07:15 | 3h | 75d | 0d | TEAM_2Shift_Calendar-1 | Helper; Gas Cutter | 6h | 356.25 | 356.25 |
| 58 | 1.5.3.2 | 1.5" NB Mp Con - 2 Nos | 2h | 2018-06-05 07:15 | 2018-06-05 09:15 | 57 | 2018-05-15 07:15 | 2018-05-15 09:15 | 2h | 75d | 0d | TEAM_2Shift_Calendar-1 | Helper; Gas Cutter | 4h | 237.5 | 237.5 |
| 59 | 1.5.3.3 | Inspection | 1h | 2018-06-05 09:15 | 2018-06-05 10:15 | 58 | 2018-05-15 09:15 | 2018-05-15 10:15 | 1h | 75d |  | TEAM_2Shift_Calendar-1 | Helper; Gas Cutter | 2h | 118.75 | 118.75 |

| ID | WBS | Task | Duration | Start | Finish | Predecessors | Baseline start | Baseline finish | Baseline duration | Total slack | Free slack | Calendar | Resources | Work | Cost | Baseline cost |
| --- | --- | --- | --- | --- | --- | --- | --- | --- | --- | --- | --- | --- | --- | --- | --- | --- |
| 60 | 1.5.4 | **Sh Noz+Flg Fiitup** | 0.34d | 2018-06-05 10:15 | 2018-06-05 15:45 |  | 2018-05-15 10:15 | 2018-05-15 15:45 | 0.34d | 75d | 0d | TEAM_2Shift_Calendar-1 |  | 22h | 1,409.38 | 1,409.38 |
| 61 | 1.5.4.1 | 6" Nozzle-2 Nos | 3h | 2018-06-05 10:15 | 2018-06-05 13:15 | 56 | 2018-05-15 10:15 | 2018-05-15 13:15 | 3h | 75d | 0d | TEAM_2Shift_Calendar-1 | SMAW Welder; Helper; Fitter [200%] | 12h | 768.75 | 768.75 |
| 62 | 1.5.4.2 | 1.5" NB Mp Con - 2 Nos | 2h | 2018-06-05 13:15 | 2018-06-05 15:15 | 61 | 2018-05-15 13:15 | 2018-05-15 15:15 | 2h | 75d | 0d | TEAM_2Shift_Calendar-1 | SMAW Welder; Helper; Fitter [200%] | 8h | 512.5 | 512.5 |
| 63 | 1.5.4.3 | Inspection | 0.5h | 2018-06-05 15:15 | 2018-06-05 15:45 | 62 | 2018-05-15 15:15 | 2018-05-15 15:45 | 0.5h | 75d |  | TEAM_2Shift_Calendar-1 | SMAW Welder; Helper; Fitter [200%] | 2h | 128.13 | 128.13 |
| 64 | 1.5.5 | **Sh Nozzel Pipe+Flg Welding** | 0.44d | 2018-06-05 15:45 | 2018-06-06 06:45 |  | 2018-05-15 15:45 | 2018-05-16 06:45 | 0.44d | 75d | 0d | TEAM_2Shift_Calendar-1 |  | 14h | 831.25 | 831.25 |
| 65 | 1.5.5.1 | 6" Nozzle-2 Nos | 3h | 2018-06-05 15:45 | 2018-06-05 18:45 | 60 | 2018-05-15 15:45 | 2018-05-15 18:45 | 3h | 75d | 0d | TEAM_2Shift_Calendar-1 | Helper; SMAW Welder | 6h | 356.25 | 356.25 |
| 66 | 1.5.5.2 | 1.5" NB Mp Con - 2 Nos | 3h | 2018-06-05 18:45 | 2018-06-05 21:45 | 65 | 2018-05-15 18:45 | 2018-05-15 21:45 | 3h | 75d | 0d | TEAM_2Shift_Calendar-1 | Helper; SMAW Welder | 6h | 356.25 | 356.25 |
| 67 | 1.5.5.3 | Inspection | 1h | 2018-06-05 21:45 | 2018-06-06 06:45 | 66 | 2018-05-15 21:45 | 2018-05-16 06:45 | 1h | 75d |  | TEAM_2Shift_Calendar-1 | Helper; SMAW Welder | 2h | 118.75 | 118.75 |
| 68 | 1.5.6 | **Sh Nozzel Pipe Profile Marking** | 0.34d | 2018-06-06 06:45 | 2018-06-06 12:15 |  | 2018-05-16 06:45 | 2018-05-16 12:15 | 0.34d | 75d | 0d | TEAM_2Shift_Calendar-1 |  | 11h | 653.12 | 653.12 |
| 69 | 1.5.6.1 | 6" Nozzle-2 Nos | 3h | 2018-06-06 06:45 | 2018-06-06 09:45 | 64 | 2018-05-16 06:45 | 2018-05-16 09:45 | 3h | 75d | 0d | TEAM_2Shift_Calendar-1 | Helper; Fitter | 6h | 356.25 | 356.25 |
| 70 | 1.5.6.2 | 1.5" NB Mp Con - 2 Nos | 2h | 2018-06-06 09:45 | 2018-06-06 11:45 | 69 | 2018-05-16 09:45 | 2018-05-16 11:45 | 2h | 75d | 0d | TEAM_2Shift_Calendar-1 | Helper; Fitter | 4h | 237.5 | 237.5 |
| 71 | 1.5.6.3 | Inspection | 0.5h | 2018-06-06 11:45 | 2018-06-06 12:15 | 70 | 2018-05-16 11:45 | 2018-05-16 12:15 | 0.5h | 75d |  | TEAM_2Shift_Calendar-1 | Helper; Fitter | 1h | 59.38 | 59.38 |
| 72 | 1.5.7 | **Sh Nozzle Pipe Profile Cutting** | 0.38d | 2018-06-06 12:15 | 2018-06-06 18:15 |  | 2018-05-16 12:15 | 2018-05-16 18:15 | 0.38d | 75d | 0d | TEAM_2Shift_Calendar-1 |  | 12h | 637.5 | 637.5 |
| 73 | 1.5.7.1 | 6" Nozzle-2 Nos | 3h | 2018-06-06 12:15 | 2018-06-06 15:15 | 68 | 2018-05-16 12:15 | 2018-05-16 15:15 | 3h | 75d | 0d | TEAM_2Shift_Calendar-1 | Helper; Grinder | 6h | 318.75 | 318.75 |
| 74 | 1.5.7.2 | 1.5" NB Mp Con - 2 Nos | 2h | 2018-06-06 15:15 | 2018-06-06 17:15 | 73 | 2018-05-16 15:15 | 2018-05-16 17:15 | 2h | 75d | 0d | TEAM_2Shift_Calendar-1 | Helper; Grinder | 4h | 212.5 | 212.5 |
| 75 | 1.5.7.3 | Inspection | 1h | 2018-06-06 17:15 | 2018-06-06 18:15 | 74 | 2018-05-16 17:15 | 2018-05-16 18:15 | 1h | 75d |  | TEAM_2Shift_Calendar-1 | Helper; Grinder | 2h | 106.25 | 106.25 |
| 76 | 1.5.8 | **Sh Nozzle Pipe Profile EP** | 0.38d | 2018-06-06 18:15 | 2018-06-07 08:15 |  | 2018-05-16 18:15 | 2018-05-17 08:15 | 0.38d | 75d | 0d | TEAM_2Shift_Calendar-1 |  | 12h | 637.5 | 637.5 |
| 77 | 1.5.8.1 | 6" Nozzle-2 Nos | 3h | 2018-06-06 18:15 | 2018-06-06 21:15 | 72 | 2018-05-16 18:15 | 2018-05-16 21:15 | 3h | 75d | 0d | TEAM_2Shift_Calendar-1 | Helper; Grinder | 6h | 318.75 | 318.75 |
| 78 | 1.5.8.2 | 1.5" NB Mp Con - 2 Nos | 2h | 2018-06-06 21:15 | 2018-06-07 07:15 | 77 | 2018-05-16 21:15 | 2018-05-17 07:15 | 2h | 75d | 0d | TEAM_2Shift_Calendar-1 | Helper; Grinder | 4h | 212.5 | 212.5 |
| 79 | 1.5.8.3 | Inspection | 1h | 2018-06-07 07:15 | 2018-06-07 08:15 | 78 | 2018-05-17 07:15 | 2018-05-17 08:15 | 1h | 75d |  | TEAM_2Shift_Calendar-1 | Helper; Grinder | 2h | 106.25 | 106.25 |
| 80 | 1.5.9 | **Ch Nozzel Pipe Marking** | 0.36d | 2018-06-07 08:15 | 2018-06-07 14:00 |  | 2018-05-17 08:15 | 2018-05-17 14:00 | 0.36d | 75d | 0d | TEAM_2Shift_Calendar-1 |  | 11.5h | 682.81 | 682.81 |
| 81 | 1.5.9.1 | 4"Nozzle-1No | 1.25h | 2018-06-07 08:15 | 2018-06-07 09:30 | 76 | 2018-05-17 08:15 | 2018-05-17 09:30 | 1.25h | 75d | 0d | TEAM_2Shift_Calendar-1 | Helper; Fitter | 2.5h | 148.44 | 148.44 |
| 82 | 1.5.9.2 | 2"Nozzle-1No | 1.5h | 2018-06-07 09:30 | 2018-06-07 11:00 | 81 | 2018-05-17 09:30 | 2018-05-17 11:00 | 1.5h | 75d | 0d | TEAM_2Shift_Calendar-1 | Helper; Fitter | 3h | 178.12 | 178.12 |
| 83 | 1.5.9.3 | 1.5" NB Mp Con - 2 Nos | 2h | 2018-06-07 11:00 | 2018-06-07 13:00 | 82 | 2018-05-17 11:00 | 2018-05-17 13:00 | 2h | 75d | 0d | TEAM_2Shift_Calendar-1 | Helper; Fitter | 4h | 237.5 | 237.5 |
| 84 | 1.5.9.4 | Inspection | 1h | 2018-06-07 13:00 | 2018-06-07 14:00 | 83 | 2018-05-17 13:00 | 2018-05-17 14:00 | 1h | 75d |  | TEAM_2Shift_Calendar-1 | Helper; Fitter | 2h | 118.75 | 118.75 |

| ID | WBS | Task | Duration | Start | Finish | Predecessors | Baseline start | Baseline finish | Baseline duration | Total slack | Free slack | Calendar | Resources | Work | Cost | Baseline cost |
| --- | --- | --- | --- | --- | --- | --- | --- | --- | --- | --- | --- | --- | --- | --- | --- | --- |
| 85 | 1.5.10 | **Ch Nozzel Pipe Cutting** | 0.44d | 2018-06-07 14:00 | 2018-06-07 21:00 |  | 2018-05-17 14:00 | 2018-05-17 21:00 | 0.44d | 75d | 0d | TEAM_2Shift_Calendar-1 |  | 14h | 831.25 | 831.25 |
| 86 | 1.5.10.1 | 4"Nozzle-1No | 1.5h | 2018-06-07 14:00 | 2018-06-07 15:30 | 80 | 2018-05-17 14:00 | 2018-05-17 15:30 | 1.5h | 75d | 0d | TEAM_2Shift_Calendar-1 | Helper; Gas Cutter | 3h | 178.12 | 178.12 |
| 87 | 1.5.10.2 | 2"Nozzle-1No | 1.5h | 2018-06-07 15:30 | 2018-06-07 17:00 | 86 | 2018-05-17 15:30 | 2018-05-17 17:00 | 1.5h | 75d | 0d | TEAM_2Shift_Calendar-1 | Helper; Gas Cutter | 3h | 178.12 | 178.12 |
| 88 | 1.5.10.3 | 1.5" NB Mp Con - 2 Nos | 3h | 2018-06-07 17:00 | 2018-06-07 20:00 | 87 | 2018-05-17 17:00 | 2018-05-17 20:00 | 3h | 75d | 0d | TEAM_2Shift_Calendar-1 | Helper; Gas Cutter | 6h | 356.25 | 356.25 |
| 89 | 1.5.10.4 | Inspection | 1h | 2018-06-07 20:00 | 2018-06-07 21:00 | 88 | 2018-05-17 20:00 | 2018-05-17 21:00 | 1h | 75d |  | TEAM_2Shift_Calendar-1 | Helper; Gas Cutter | 2h | 118.75 | 118.75 |
| 90 | 1.5.11 | **Ch Nozzel Pipe EP** | 0.44d | 2018-06-07 21:00 | 2018-06-08 12:00 |  | 2018-05-17 21:00 | 2018-05-18 12:00 | 0.44d | 75d | 0d | TEAM_2Shift_Calendar-1 |  | 14h | 743.75 | 743.75 |
| 91 | 1.5.11.1 | 4"Nozzle-1No | 1.5h | 2018-06-07 21:00 | 2018-06-08 06:30 | 85 | 2018-05-17 21:00 | 2018-05-18 06:30 | 1.5h | 75d | 0d | TEAM_2Shift_Calendar-1 | Helper; Grinder | 3h | 159.38 | 159.38 |
| 92 | 1.5.11.2 | 2"Nozzle-1No | 1.5h | 2018-06-08 06:30 | 2018-06-08 08:00 | 91 | 2018-05-18 06:30 | 2018-05-18 08:00 | 1.5h | 75d | 0d | TEAM_2Shift_Calendar-1 | Helper; Grinder | 3h | 159.38 | 159.38 |
| 93 | 1.5.11.3 | 1.5" NB Mp Con - 2 Nos | 3h | 2018-06-08 08:00 | 2018-06-08 11:00 | 92 | 2018-05-18 08:00 | 2018-05-18 11:00 | 3h | 75d | 0d | TEAM_2Shift_Calendar-1 | Helper; Grinder | 6h | 318.75 | 318.75 |
| 94 | 1.5.11.4 | Inspection | 1h | 2018-06-08 11:00 | 2018-06-08 12:00 | 93 | 2018-05-18 11:00 | 2018-05-18 12:00 | 1h | 75d |  | TEAM_2Shift_Calendar-1 | Helper; Grinder | 2h | 106.25 | 106.25 |
| 95 | 1.5.12 | **Ch Noz+Flg Fit Up** | 0.36d | 2018-06-08 12:00 | 2018-06-08 17:45 |  | 2018-05-18 12:00 | 2018-05-18 17:45 | 0.36d | 75d | 0d | TEAM_2Shift_Calendar-1 |  | 23h | 1,473.43 | 1,473.43 |
| 96 | 1.5.12.1 | 4"Nozzle-1No | 1.25h | 2018-06-08 12:00 | 2018-06-08 13:15 | 90 | 2018-05-18 12:00 | 2018-05-18 13:15 | 1.25h | 75d | 0d | TEAM_2Shift_Calendar-1 | SMAW Welder; Helper; Fitter [200%] | 5h | 320.31 | 320.31 |
| 97 | 1.5.12.2 | 2"Nozzle-1No | 1.5h | 2018-06-08 13:15 | 2018-06-08 14:45 | 96 | 2018-05-18 13:15 | 2018-05-18 14:45 | 1.5h | 75d | 0d | TEAM_2Shift_Calendar-1 | SMAW Welder; Helper; Fitter [200%] | 6h | 384.37 | 384.37 |
| 98 | 1.5.12.3 | 1.5" NB Mp Con - 2 Nos | 2h | 2018-06-08 14:45 | 2018-06-08 16:45 | 97 | 2018-05-18 14:45 | 2018-05-18 16:45 | 2h | 75d | 0d | TEAM_2Shift_Calendar-1 | SMAW Welder; Helper; Fitter [200%] | 8h | 512.5 | 512.5 |
| 99 | 1.5.12.4 | Inspection | 1h | 2018-06-08 16:45 | 2018-06-08 17:45 | 98 | 2018-05-18 16:45 | 2018-05-18 17:45 | 1h | 75d |  | TEAM_2Shift_Calendar-1 | SMAW Welder; Helper; Fitter [200%] | 4h | 256.25 | 256.25 |
| 100 | 1.5.13 | **Ch Nozzel Pipe+Flg Welding** | 1d | 2018-06-08 17:45 | 2018-06-11 17:45 |  | 2018-05-18 17:45 | 2018-05-19 17:45 | 1d | 75d | 0d | TEAM_2Shift_Calendar-1 |  | 32h | 1,900 | 1,900 |
| 101 | 1.5.13.1 | 4"Nozzle-1No | 6h | 2018-06-08 17:45 | 2018-06-11 07:45 | 95 | 2018-05-18 17:45 | 2018-05-19 07:45 | 6h | 75d | 0d | TEAM_2Shift_Calendar-1 | Helper; SMAW Welder | 12h | 712.5 | 712.5 |
| 102 | 1.5.13.2 | 2"Nozzle-1No | 6h | 2018-06-11 07:45 | 2018-06-11 13:45 | 101 | 2018-05-19 07:45 | 2018-05-19 13:45 | 6h | 75d | 0d | TEAM_2Shift_Calendar-1 | Helper; SMAW Welder | 12h | 712.5 | 712.5 |
| 103 | 1.5.13.3 | 1.5" NB Mp Con - 2 Nos | 3h | 2018-06-11 13:45 | 2018-06-11 16:45 | 102 | 2018-05-19 13:45 | 2018-05-19 16:45 | 3h | 75d | 0d | TEAM_2Shift_Calendar-1 | Helper; SMAW Welder | 6h | 356.25 | 356.25 |
| 104 | 1.5.13.4 | Inspection | 1h | 2018-06-11 16:45 | 2018-06-11 17:45 | 103 | 2018-05-19 16:45 | 2018-05-19 17:45 | 1h | 75d |  | TEAM_2Shift_Calendar-1 | Helper; SMAW Welder | 2h | 118.75 | 118.75 |
| 105 | 1.5.14 | **Ch Nozzel Pipe Profile Marking** | 0.62d | 2018-06-11 17:45 | 2018-06-12 11:45 |  | 2018-05-19 17:45 | 2018-05-21 11:45 | 0.62d | 75d | 0d | TEAM_2Shift_Calendar-1 |  | 20h | 1,187.5 | 1,187.5 |
| 106 | 1.5.14.1 | 4"Nozzle-1No | 3h | 2018-06-11 17:45 | 2018-06-11 20:45 | 100 | 2018-05-19 17:45 | 2018-05-19 20:45 | 3h | 75d | 0d | TEAM_2Shift_Calendar-1 | Helper; Fitter | 6h | 356.25 | 356.25 |
| 107 | 1.5.14.2 | 2"Nozzle-1No | 3h | 2018-06-11 20:45 | 2018-06-12 07:45 | 106 | 2018-05-19 20:45 | 2018-05-21 07:45 | 3h | 75d | 0d | TEAM_2Shift_Calendar-1 | Helper; Fitter | 6h | 356.25 | 356.25 |
| 108 | 1.5.14.3 | 1.5" NB Mp Con - 2 Nos | 3h | 2018-06-12 07:45 | 2018-06-12 10:45 | 107 | 2018-05-21 07:45 | 2018-05-21 10:45 | 3h | 75d | 0d | TEAM_2Shift_Calendar-1 | Helper; Fitter | 6h | 356.25 | 356.25 |
| 109 | 1.5.14.4 | Inspection | 1h | 2018-06-12 10:45 | 2018-06-12 11:45 | 108 | 2018-05-21 10:45 | 2018-05-21 11:45 | 1h | 75d |  | TEAM_2Shift_Calendar-1 | Helper; Fitter | 2h | 118.75 | 118.75 |

| ID | WBS | Task | Duration | Start | Finish | Predecessors | Baseline start | Baseline finish | Baseline duration | Total slack | Free slack | Calendar | Resources | Work | Cost | Baseline cost |
| --- | --- | --- | --- | --- | --- | --- | --- | --- | --- | --- | --- | --- | --- | --- | --- | --- |
| 110 | 1.5.15 | **Ch Nozzle Pipe Profile Cutting** | 0.36d | 2018-06-12 11:45 | 2018-06-12 17:30 |  | 2018-05-21 11:45 | 2018-05-21 17:30 | 0.36d | 75d | 0d | TEAM_2Shift_Calendar-1 |  | 11.5h | 682.81 | 682.81 |
| 111 | 1.5.15.1 | 4"Nozzle-1No | 1.25h | 2018-06-12 11:45 | 2018-06-12 13:00 | 105 | 2018-05-21 11:45 | 2018-05-21 13:00 | 1.25h | 75d | 0d | TEAM_2Shift_Calendar-1 | Helper; Fitter | 2.5h | 148.44 | 148.44 |
| 112 | 1.5.15.2 | 2"Nozzle-1No | 1.5h | 2018-06-12 13:00 | 2018-06-12 14:30 | 111 | 2018-05-21 13:00 | 2018-05-21 14:30 | 1.5h | 75d | 0d | TEAM_2Shift_Calendar-1 | Helper; Fitter | 3h | 178.12 | 178.12 |
| 113 | 1.5.15.3 | 1.5" NB Mp Con - 2 Nos | 2h | 2018-06-12 14:30 | 2018-06-12 16:30 | 112 | 2018-05-21 14:30 | 2018-05-21 16:30 | 2h | 75d | 0d | TEAM_2Shift_Calendar-1 | Helper; Fitter | 4h | 237.5 | 237.5 |
| 114 | 1.5.15.4 | Inspection | 1h | 2018-06-12 16:30 | 2018-06-12 17:30 | 113 | 2018-05-21 16:30 | 2018-05-21 17:30 | 1h | 75d |  | TEAM_2Shift_Calendar-1 | Helper; Fitter | 2h | 118.75 | 118.75 |
| 115 | 1.5.16 | **Ch Nozzle Pipe Profile EP** | 0.36d | 2018-06-12 17:30 | 2018-06-13 07:15 |  | 2018-05-21 17:30 | 2018-05-22 07:15 | 0.36d | 75d |  | TEAM_2Shift_Calendar-1 |  | 11.5h | 610.94 | 610.94 |
| 116 | 1.5.16.1 | 4"Nozzle-1No | 1.25h | 2018-06-12 17:30 | 2018-06-12 18:45 | 110 | 2018-05-21 17:30 | 2018-05-21 18:45 | 1.25h | 75d | 0d | TEAM_2Shift_Calendar-1 | Helper; Grinder | 2.5h | 132.81 | 132.81 |
| 117 | 1.5.16.2 | 2"Nozzle-1No | 1.5h | 2018-06-12 18:45 | 2018-06-12 20:15 | 116 | 2018-05-21 18:45 | 2018-05-21 20:15 | 1.5h | 75d | 0d | TEAM_2Shift_Calendar-1 | Helper; Grinder | 3h | 159.38 | 159.38 |
| 118 | 1.5.16.3 | 1.5" NB Mp Con - 2 Nos | 2h | 2018-06-12 20:15 | 2018-06-13 06:15 | 117 | 2018-05-21 20:15 | 2018-05-22 06:15 | 2h | 75d | 0d | TEAM_2Shift_Calendar-1 | Helper; Grinder | 4h | 212.5 | 212.5 |
| 119 | 1.5.16.4 | Inspection | 1h | 2018-06-13 06:15 | 2018-06-13 07:15 | 118 | 2018-05-22 06:15 | 2018-05-22 07:15 | 1h | 75d |  | TEAM_2Shift_Calendar-1 | Helper; Grinder | 2h | 106.25 | 106.25 |
| 120 | 1.6 | **Saddle & Other** | 3.11d | 2018-06-02 17:30 | 2018-06-06 19:18 |  | 2018-05-11 17:30 | 2018-05-16 19:18 | 3.11d | 79.25d |  | TEAM_2Shift_Calendar-1 |  | 108.6h | 6,146.56 | 6,146.56 |
| 121 | 1.6.1 | **Bottom Saddle Fabrrication** | 0.28d | 2018-06-02 17:30 | 2018-06-02 22:00 |  | 2018-05-11 17:30 | 2018-05-11 22:00 | 0.28d | 79.25d | 0d | TEAM_2Shift_Calendar-1 |  | 7h | 296.88 | 296.88 |
| 122 | 1.6.1.1 | Plate Issuence | 2h | 2018-06-02 17:30 | 2018-06-02 19:30 | 2FS+47d | 2018-05-11 17:30 | 2018-05-11 19:30 | 2h | 79.25d | 0d | TEAM_2Shift_Calendar-1 | Plate (Cost); Store | 2h |  |  |
| 123 | 1.6.1.2 | Base Marking | 1h | 2018-06-02 19:30 | 2018-06-02 20:30 | 122 | 2018-05-11 19:30 | 2018-05-11 20:30 | 1h | 79.25d | 0d | TEAM_2Shift_Calendar-1 | Helper; Fitter | 2h | 118.75 | 118.75 |
| 124 | 1.6.1.3 | Web Pl Marking | 0.5h | 2018-06-02 20:30 | 2018-06-02 21:00 | 123 | 2018-05-11 20:30 | 2018-05-11 21:00 | 0.5h | 79.25d | 0d | TEAM_2Shift_Calendar-1 | Helper; Fitter | 1h | 59.38 | 59.38 |
| 125 | 1.6.1.4 | RF Pad Marking | 0.5h | 2018-06-02 21:00 | 2018-06-02 21:30 | 124 | 2018-05-11 21:00 | 2018-05-11 21:30 | 0.5h | 79.25d | 0d | TEAM_2Shift_Calendar-1 | Helper; Fitter | 1h | 59.38 | 59.38 |
| 126 | 1.6.1.5 | Ribs Marking | 0.5h | 2018-06-02 21:30 | 2018-06-02 22:00 | 125 | 2018-05-11 21:30 | 2018-05-11 22:00 | 0.5h | 79.25d |  | TEAM_2Shift_Calendar-1 | Helper; Fitter | 1h | 59.38 | 59.38 |
| 127 | 1.6.2 | **Bottom Saddle Plate Cutting** | 0.92d | 2018-06-04 06:00 | 2018-06-04 20:45 |  | 2018-05-14 06:00 | 2018-05-14 20:45 | 0.92d | 79.25d | 0d | TEAM_2Shift_Calendar-1 |  | 29.5h | 1,721.88 | 1,721.88 |
| 128 | 1.6.2.1 | Base Cutting | 3h | 2018-06-04 06:00 | 2018-06-04 09:00 | 121 | 2018-05-14 06:00 | 2018-05-14 09:00 | 3h | 79.25d | 0d | TEAM_2Shift_Calendar-1 | Helper; Gas Cutter | 6h | 356.25 | 356.25 |
| 129 | 1.6.2.2 | Web Pl Cutting | 3h | 2018-06-04 09:00 | 2018-06-04 12:00 | 128 | 2018-05-14 09:00 | 2018-05-14 12:00 | 3h | 79.25d | 0d | TEAM_2Shift_Calendar-1 | Helper; Gas Cutter | 6h | 356.25 | 356.25 |
| 130 | 1.6.2.3 | RF Pad Cutting | 2h | 2018-06-04 12:00 | 2018-06-04 14:00 | 129 | 2018-05-14 12:00 | 2018-05-14 14:00 | 2h | 79.25d | 0d | TEAM_2Shift_Calendar-1 | Helper; Gas Cutter | 4h | 237.5 | 237.5 |
| 131 | 1.6.2.4 | Ribs Cutting | 2h | 2018-06-04 14:00 | 2018-06-04 16:00 | 130 | 2018-05-14 14:00 | 2018-05-14 16:00 | 2h | 79.25d | 0d | TEAM_2Shift_Calendar-1 | Helper; Gas Cutter | 4h | 237.5 | 237.5 |
| 132 | 1.6.2.5 | Grinding Of Above | 4.75h | 2018-06-04 16:00 | 2018-06-04 20:45 | 131 | 2018-05-14 16:00 | 2018-05-14 20:45 | 4.75h | 79.25d |  | TEAM_2Shift_Calendar-1 | Grinder [200%] | 9.5h | 534.38 | 534.38 |
| 133 | 1.6.3 | **Saddle Fit Up & Welding** | 0.62d | 2018-06-04 20:45 | 2018-06-05 14:45 |  | 2018-05-14 20:45 | 2018-05-15 14:45 | 0.62d | 79.25d | 0d | TEAM_2Shift_Calendar-1 |  | 34h | 2,018.75 | 2,018.75 |
| 134 | 1.6.3.1 | Base + Web Fit Up | 2h | 2018-06-04 20:45 | 2018-06-05 06:45 | 127 | 2018-05-14 20:45 | 2018-05-15 06:45 | 2h | 79.25d | 0d | TEAM_2Shift_Calendar-1 | Helper [200%]; SMAW Welder; Fitter | 8h | 475 | 475 |
| 135 | 1.6.3.2 | Base + Web Welding | 3h | 2018-06-05 06:45 | 2018-06-05 09:45 | 134 | 2018-05-15 06:45 | 2018-05-15 09:45 | 3h | 79.25d | 0d | TEAM_2Shift_Calendar-1 | Helper; SMAW Welder | 6h | 356.25 | 356.25 |
| 136 | 1.6.3.3 | Ribs+Web Fit Up | 2h | 2018-06-05 09:45 | 2018-06-05 11:45 | 135 | 2018-05-15 09:45 | 2018-05-15 11:45 | 2h | 79.25d | 0d | TEAM_2Shift_Calendar-1 | Helper [200%]; SMAW Welder; Fitter | 8h | 475 | 475 |
| 137 | 1.6.3.4 | Ribs+Web Welding | 3h | 2018-06-05 11:45 | 2018-06-05 14:45 | 136 | 2018-05-15 11:45 | 2018-05-15 14:45 | 3h | 79.25d |  | TEAM_2Shift_Calendar-1 | Helper [200%]; SMAW Welder [200%] | 12h | 712.5 | 712.5 |

| ID | WBS | Task | Duration | Start | Finish | Predecessors | Baseline start | Baseline finish | Baseline duration | Total slack | Free slack | Calendar | Resources | Work | Cost | Baseline cost |
| --- | --- | --- | --- | --- | --- | --- | --- | --- | --- | --- | --- | --- | --- | --- | --- | --- |
| 138 | 1.6.4 | **Lifting Lug Pad & RF Pad** | 0.38d | 2018-06-05 14:45 | 2018-06-05 20:48 |  | 2018-05-15 14:45 | 2018-05-15 20:48 | 0.38d | 79.25d | 0d | TEAM_2Shift_Calendar-1 |  | 9.1h | 412.19 | 412.19 |
| 139 | 1.6.4.1 | Plate Issuence | 2h | 2018-06-05 14:45 | 2018-06-05 16:45 | 133 | 2018-05-15 14:45 | 2018-05-15 16:45 | 2h | 79.25d | 0d | TEAM_2Shift_Calendar-1 | Store | 2h |  |  |
| 140 | 1.6.4.2 | Pad Marking | 0.3h | 2018-06-05 16:45 | 2018-06-05 17:03 | 139 | 2018-05-15 16:45 | 2018-05-15 17:03 | 0.3h | 79.25d | 0d | TEAM_2Shift_Calendar-1 | Helper; Fitter | 0.6h | 35.62 | 35.62 |
| 141 | 1.6.4.3 | Pad Cutting | 1.25h | 2018-06-05 17:03 | 2018-06-05 18:18 | 140 | 2018-05-15 17:03 | 2018-05-15 18:18 | 1.25h | 79.25d | 0d | TEAM_2Shift_Calendar-1 | Helper; Gas Cutter | 2.5h | 148.44 | 148.44 |
| 142 | 1.6.4.4 | Pad Grinding | 1.5h | 2018-06-05 18:18 | 2018-06-05 19:48 | 141 | 2018-05-15 18:18 | 2018-05-15 19:48 | 1.5h | 79.25d | 0d | TEAM_2Shift_Calendar-1 | Helper; Grinder | 3h | 159.38 | 159.38 |
| 143 | 1.6.4.5 | Pad Drilling | 1h | 2018-06-05 19:48 | 2018-06-05 20:48 | 142 | 2018-05-15 19:48 | 2018-05-15 20:48 | 1h | 79.25d |  | TEAM_2Shift_Calendar-1 | Driller | 1h | 68.75 | 68.75 |
| 144 | 1.6.5 | **Lifting Lug Preparation** | 0.41d | 2018-06-05 20:48 | 2018-06-06 11:18 |  | 2018-05-15 20:48 | 2018-05-16 11:18 | 0.41d | 79.25d | 0d | TEAM_2Shift_Calendar-1 |  | 13h | 746.88 | 746.88 |
| 145 | 1.6.5.1 | Lifting Lugs Marking | 0.5h | 2018-06-05 20:48 | 2018-06-05 21:18 | 138 | 2018-05-15 20:48 | 2018-05-15 21:18 | 0.5h | 79.25d | 0d | TEAM_2Shift_Calendar-1 | Helper; Fitter | 1h | 59.38 | 59.38 |
| 146 | 1.6.5.2 | Lifting Lugs Cutting | 2h | 2018-06-05 21:18 | 2018-06-06 07:18 | 145 | 2018-05-15 21:18 | 2018-05-16 07:18 | 2h | 79.25d | 0d | TEAM_2Shift_Calendar-1 | Helper; Gas Cutter | 4h | 237.5 | 237.5 |
| 147 | 1.6.5.3 | Lifting Lugs Grinding | 2h | 2018-06-06 07:18 | 2018-06-06 09:18 | 146 | 2018-05-16 07:18 | 2018-05-16 09:18 | 2h | 79.25d | 0d | TEAM_2Shift_Calendar-1 | Helper; Grinder | 4h | 212.5 | 212.5 |
| 148 | 1.6.5.4 | Lifting Lug Drilling | 2h | 2018-06-06 09:18 | 2018-06-06 11:18 | 147 | 2018-05-16 09:18 | 2018-05-16 11:18 | 2h | 79.25d |  | TEAM_2Shift_Calendar-1 | Helper; Fitter | 4h | 237.5 | 237.5 |
| 149 | 1.6.6 | **Insulation Ring Prparation** | 0.5d | 2018-06-06 11:18 | 2018-06-06 19:18 |  | 2018-05-16 11:18 | 2018-05-16 19:18 | 0.5d | 79.25d |  | TEAM_2Shift_Calendar-1 |  | 16h | 950 | 950 |
| 150 | 1.6.6.1 | Insulaion Ring Marking | 2h | 2018-06-06 11:18 | 2018-06-06 13:18 | 144 | 2018-05-16 11:18 | 2018-05-16 13:18 | 2h | 79.25d | 0d | TEAM_2Shift_Calendar-1 | Helper; Fitter | 4h | 237.5 | 237.5 |
| 151 | 1.6.6.2 | Insulaion Ring Cutting | 2h | 2018-06-06 13:18 | 2018-06-06 15:18 | 150 | 2018-05-16 13:18 | 2018-05-16 15:18 | 2h | 79.25d | 0d | TEAM_2Shift_Calendar-1 | Helper; Gas Cutter | 4h | 237.5 | 237.5 |
| 152 | 1.6.6.3 | Insulaion Ring Hole Marking | 2h | 2018-06-06 15:18 | 2018-06-06 17:18 | 151 | 2018-05-16 15:18 | 2018-05-16 17:18 | 2h | 79.25d | 0d | TEAM_2Shift_Calendar-1 | Helper; Fitter | 4h | 237.5 | 237.5 |
| 153 | 1.6.6.4 | Insulaion Ring Hole Drilling | 2h | 2018-06-06 17:18 | 2018-06-06 19:18 | 152 | 2018-05-16 17:18 | 2018-05-16 19:18 | 2h | 79.25d |  | TEAM_2Shift_Calendar-1 | Helper; Fitter | 4h | 237.5 | 237.5 |
| 154 | 1.7 | **Baffle & Tb Items Fab** | 7.98d | 2018-06-02 17:30 | 2018-06-22 17:12 |  | 2018-05-11 17:30 | 2018-06-01 17:12 | 7.98d | 14.5d |  |  |  | 208.4h | 6,212.19 | 6,212.19 |
| 155 | 1.7.1 | **Baffle Preparation** | 0.58d | 2018-06-02 17:30 | 2018-06-04 10:45 |  | 2018-05-11 17:30 | 2018-05-14 10:45 | 0.58d | 29.36d | 0d | TEAM_2Shift_Calendar-1 |  | 14.5h | 623.44 | 623.44 |
| 156 | 1.7.1.1 | Baffle Plate Transfer | 4h | 2018-06-02 17:30 | 2018-06-02 21:30 | 2FS+47d | 2018-05-11 17:30 | 2018-05-11 21:30 | 4h | 29.36d | 0d | TEAM_2Shift_Calendar-1 | Plate (Cost) [0.1%]; Store | 4h |  |  |
| 157 | 1.7.1.2 | Baffle Marking | 2h | 2018-06-02 21:30 | 2018-06-04 07:30 | 156 | 2018-05-11 21:30 | 2018-05-14 07:30 | 2h | 29.36d | 0d | TEAM_2Shift_Calendar-1 | Helper; Fitter | 4h | 237.5 | 237.5 |
| 158 | 1.7.1.3 | Baffle Profile Cutting | 3.25h | 2018-06-04 07:30 | 2018-06-04 10:45 | 157 | 2018-05-14 07:30 | 2018-05-14 10:45 | 3.25h | 29.36d |  | TEAM_2Shift_Calendar-1 | Helper; Gas Cutter | 6.5h | 385.94 | 385.94 |
| 159 | 1.7.2 | **Baffle Bend Removal & Stacking** | 0.5d | 2018-06-04 10:45 | 2018-06-04 18:45 |  | 2018-05-14 10:45 | 2018-05-14 18:45 | 0.5d | 29.36d | 0.36d | TEAM_2Shift_Calendar-1 |  | 21h | 1,200 | 1,200 |
| 160 | 1.7.2.1 | Baffle Pl Bend Removal | 5h | 2018-06-04 10:45 | 2018-06-04 15:45 | 155 | 2018-05-14 10:45 | 2018-05-14 15:45 | 5h | 29.36d | 0d | TEAM_2Shift_Calendar-1 | Helper [200%]; Fitter | 15h | 843.75 | 843.75 |
| 161 | 1.7.2.2 | Baffle Pl StackingPer 100mm | 3h | 2018-06-04 15:45 | 2018-06-04 18:45 | 160 | 2018-05-14 15:45 | 2018-05-14 18:45 | 3h | 29.36d |  | TEAM_2Shift_Calendar-1 | Helper; Fitter | 6h | 356.25 | 356.25 |

| ID | WBS | Task | Duration | Start | Finish | Predecessors | Baseline start | Baseline finish | Baseline duration | Total slack | Free slack | Calendar | Resources | Work | Cost | Baseline cost |
| --- | --- | --- | --- | --- | --- | --- | --- | --- | --- | --- | --- | --- | --- | --- | --- | --- |
| 162 | 1.7.3 | **Baffle Drilling** | 2d | 2018-06-05 08:30 | 2018-06-08 17:30 |  | 2018-05-15 08:30 | 2018-05-18 17:30 | 2d | 14.5d | 0d |  |  | 32h |  |  |
| 163 | 1.7.3.1 | Baffle Drilling | 2d | 2018-06-05 08:30 | 2018-06-08 17:30 | 159 | 2018-05-15 08:30 | 2018-05-18 17:30 | 2d | 14.5d |  |  | SC (Work) | 32h |  |  |
| 164 | 1.7.4 | **Baffle De Stacking & Chamfering** | 0.31d | 2018-06-08 17:30 | 2018-06-11 06:30 |  | 2018-05-18 17:30 | 2018-05-19 06:30 | 0.31d | 29d | 0d | TEAM_2Shift_Calendar-1 |  | 7h | 443.75 | 443.75 |
| 165 | 1.7.4.1 | Baffle De Stacking | 2h | 2018-06-08 17:30 | 2018-06-08 19:30 | 162 | 2018-05-18 17:30 | 2018-05-18 19:30 | 2h | 29d | 0d | TEAM_2Shift_Calendar-1 | Helper; Fitter | 4h | 237.5 | 237.5 |
| 166 | 1.7.4.2 | Baffle Chamfering (70% of TS Holes*No of Baffles) | 3h | 2018-06-08 19:30 | 2018-06-11 06:30 | 165 | 2018-05-18 19:30 | 2018-05-19 06:30 | 3h | 29d |  | TEAM_2Shift_Calendar-1 | Fitter | 3h | 206.25 | 206.25 |
| 167 | 1.7.5 | **Baffle Stacking & Thro Hole Check** | 4.5d | 2018-06-11 06:30 | 2018-06-20 20:30 |  | 2018-05-19 06:30 | 2018-05-30 20:30 | 4.5d | 14.5d | 0d |  |  | 86h | 806.25 | 806.25 |
| 168 | 1.7.5.1 | Stacking | 2h | 2018-06-11 06:30 | 2018-06-11 08:30 | 164 | 2018-05-19 06:30 | 2018-05-19 08:30 | 2h | 29d | 0d | TEAM_2Shift_Calendar-1 | Helper; Fitter | 4h | 237.5 | 237.5 |
| 169 | 1.7.5.2 | Baffle Hole Alingment | 1h | 2018-06-11 08:30 | 2018-06-11 09:30 | 168 | 2018-05-19 08:30 | 2018-05-19 09:30 | 1h | 29d | 0d | TEAM_2Shift_Calendar-1 | Helper; Fitter | 2h | 118.75 | 118.75 |
| 170 | 1.7.5.3 | Baffle Hole Re Drill (Use 40% of Holes in Qty) | 7h | 2018-06-11 09:30 | 2018-06-11 17:30 | 169 | 2018-05-19 09:30 | 2018-05-19 17:30 | 7h | 14.5d | 0d |  | SC (Work) | 7h |  |  |
| 171 | 1.7.5.4 | Baffle Od Machining | 4d | 2018-06-12 08:30 | 2018-06-20 17:30 | 170 | 2018-05-21 08:30 | 2018-05-30 17:30 | 4d | 14.5d | 0d |  | SC (Work) | 64h |  |  |
| 172 | 1.7.5.5 | Baffle Cleaning(100mm L * 700Ø = 3hrs) | 3h | 2018-06-20 17:30 | 2018-06-20 20:30 | 171 | 2018-05-30 17:30 | 2018-05-30 20:30 | 3h | 29.21d |  | TEAM_2Shift_Calendar-1 | Helper [300%] | 9h | 450 | 450 |
| 173 | 1.7.6 | **Tie Rod Preparation** | 0.41d | 2018-06-20 20:30 | 2018-06-21 11:00 |  | 2018-05-30 20:30 | 2018-05-31 11:00 | 0.41d | 29.21d | 0d | TEAM_2Shift_Calendar-1 |  | 9.5h | 716.25 | 716.25 |
| 174 | 1.7.6.1 | Tie Rod Matl Transfere | 0.5h | 2018-06-20 20:30 | 2018-06-20 21:00 | 167 | 2018-05-30 20:30 | 2018-05-30 21:00 | 0.5h | 29.21d | 0d | TEAM_2Shift_Calendar-1 | Store | 0.5h |  |  |
| 175 | 1.7.6.2 | Rod Cutting | 3h | 2018-06-20 21:00 | 2018-06-21 08:00 | 174 | 2018-05-30 21:00 | 2018-05-31 08:00 | 3h | 29.21d | 0d | TEAM_2Shift_Calendar-1 | Helper; Fitter | 6h | 356.25 | 356.25 |
| 176 | 1.7.6.3 | Thread Machining. | 3h | 2018-06-21 08:00 | 2018-06-21 11:00 | 175 | 2018-05-31 08:00 | 2018-05-31 11:00 | 3h | 29.21d |  | TEAM_2Shift_Calendar-1 | Lathe Operator | 3h | 360 | 360 |
| 177 | 1.7.7 | **Spacer Tube Preparation** | 0.62d | 2018-06-21 11:00 | 2018-06-21 21:00 |  | 2018-05-31 11:00 | 2018-05-31 21:00 | 0.62d | 29.21d | 0d | TEAM_2Shift_Calendar-1 |  | 17h | 1,180 | 1,180 |
| 178 | 1.7.7.1 | Spacer Tube Transfere | 0.5h | 2018-06-21 11:00 | 2018-06-21 11:30 | 173 | 2018-05-31 11:00 | 2018-05-31 11:30 | 0.5h | 29.21d | 0d | TEAM_2Shift_Calendar-1 | Tube (Cost) [0.1%]; Store | 0.5h |  |  |
| 179 | 1.7.7.2 | Length Cutting21 Nos | 4h | 2018-06-21 11:30 | 2018-06-21 15:30 | 178 | 2018-05-31 11:30 | 2018-05-31 15:30 | 4h | 29.21d | 0d | TEAM_2Shift_Calendar-1 | Helper; Fitter | 8h | 475 | 475 |
| 180 | 1.7.7.3 | Length Machining | 4h | 2018-06-21 15:30 | 2018-06-21 19:30 | 179 | 2018-05-31 15:30 | 2018-05-31 19:30 | 4h | 29.21d | 0d | TEAM_2Shift_Calendar-1 | Lathe Operator | 4h | 480 | 480 |
| 181 | 1.7.7.4 | Cleaning | 1.5h | 2018-06-21 19:30 | 2018-06-21 21:00 | 180 | 2018-05-31 19:30 | 2018-05-31 21:00 | 1.5h | 29.21d |  | TEAM_2Shift_Calendar-1 | Helper [300%] | 4.5h | 225 | 225 |
| 182 | 1.7.8 | **Sealing Strip Preparation** | 0.76d | 2018-06-21 21:00 | 2018-06-22 17:12 |  | 2018-05-31 21:00 | 2018-06-01 17:12 | 0.76d | 29.21d | 0d | TEAM_2Shift_Calendar-1 |  | 21.4h | 1,242.5 | 1,242.5 |
| 183 | 1.7.8.1 | Sealing Strip Marking | 0.2h | 2018-06-21 21:00 | 2018-06-21 21:12 | 177 | 2018-05-31 21:00 | 2018-05-31 21:12 | 0.2h | 29.21d | 0d | TEAM_2Shift_Calendar-1 | Helper; Plate (Cost); Fitter | 0.4h | 23.75 | 23.75 |
| 184 | 1.7.8.2 | Sealing Strip Cutting | 3h | 2018-06-21 21:12 | 2018-06-22 08:12 | 183 | 2018-05-31 21:12 | 2018-06-01 08:12 | 3h | 29.21d | 0d | TEAM_2Shift_Calendar-1 | Helper; Gas Cutter | 6h | 356.25 | 356.25 |
| 185 | 1.7.8.3 | Sealing Strip Bend Removal | 2h | 2018-06-22 08:12 | 2018-06-22 10:12 | 184 | 2018-06-01 08:12 | 2018-06-01 10:12 | 2h | 29.21d | 0d | TEAM_2Shift_Calendar-1 | Helper [200%]; Fitter | 6h | 337.5 | 337.5 |
| 186 | 1.7.8.4 | Sealing Strip Grinding | 5h | 2018-06-22 10:12 | 2018-06-22 15:12 | 185 | 2018-06-01 10:12 | 2018-06-01 15:12 | 5h | 29.21d | 0d | TEAM_2Shift_Calendar-1 | Grinder | 5h | 281.25 | 281.25 |
| 187 | 1.7.8.5 | Sealing Strip Joining | 1h | 2018-06-22 15:12 | 2018-06-22 16:12 | 186 | 2018-06-01 15:12 | 2018-06-01 16:12 | 1h | 29.21d | 0d | TEAM_2Shift_Calendar-1 | Fitter; Helper; SMAW Welder | 3h | 187.5 | 187.5 |
| 188 | 1.7.8.6 | Sealing Strip Dress Up | 1h | 2018-06-22 16:12 | 2018-06-22 17:12 | 187 | 2018-06-01 16:12 | 2018-06-01 17:12 | 1h | 29.21d |  | TEAM_2Shift_Calendar-1 | Grinder | 1h | 56.25 | 56.25 |

| ID | WBS | Task | Type | Duration | Start | Finish | Predecessors | Baseline start | Baseline finish | Baseline duration | Total slack | Free slack | Calendar | Resources | Work | Cost | Baseline cost |
| --- | --- | --- | --- | --- | --- | --- | --- | --- | --- | --- | --- | --- | --- | --- | --- | --- | --- |
| 189 | 1.8 | **Shell Fabrication** |  | 6.06d | 2018-06-22 17:12 | 2018-06-30 18:09 |  | 2018-06-01 17:12 | 2018-06-08 18:09 | 6.06d | 29.21d |  | TEAM_2Shift_Calendar-1 |  | 256.6h | 15,594.06 | 15,594.06 |
| 190 | 1.8.1 | **Shell Fabrication** |  | 6.06d | 2018-06-22 17:12 | 2018-06-30 18:09 |  | 2018-06-01 17:12 | 2018-06-08 18:09 | 6.06d | 29.21d |  | TEAM_2Shift_Calendar-1 |  | 256.6h | 15,594.06 | 15,594.06 |
| 191 | 1.8.1.1 | **Shell pipe Marking** |  | 0.44d | 2018-06-22 17:12 | 2018-06-25 08:12 |  | 2018-06-01 17:12 | 2018-06-02 08:12 | 0.44d | 29.21d | 0d | TEAM_2Shift_Calendar-1 |  | 14h | 962.5 | 962.5 |
| 192 | 1.8.1.1.1 | 16"-1NO |  | 4h | 2018-06-22 17:12 | 2018-06-22 21:12 | 182 | 2018-06-01 17:12 | 2018-06-01 21:12 | 4h | 29.21d | 0d | TEAM_2Shift_Calendar-1 | Pipe (Cost) [0.1%]; Fitter [200%] | 8h | 550 | 550 |
| 193 | 1.8.1.1.2 | 16"-1NO |  | 3h | 2018-06-22 21:12 | 2018-06-25 08:12 | 192 | 2018-06-01 21:12 | 2018-06-02 08:12 | 3h | 29.21d |  | TEAM_2Shift_Calendar-1 | Fitter [200%] | 6h | 412.5 | 412.5 |
| 194 | 1.8.1.2 | **Shell Pipe Cutting** |  | 0.5d | 2018-06-25 08:12 | 2018-06-25 16:12 |  | 2018-06-02 08:12 | 2018-06-02 16:12 | 0.5d | 29.21d | 0d | TEAM_2Shift_Calendar-1 |  | 16h | 950 | 950 |
| 195 | 1.8.1.2.1 | 16"-1NO |  | 4h | 2018-06-25 08:12 | 2018-06-25 12:12 | 191 | 2018-06-02 08:12 | 2018-06-02 12:12 | 4h | 29.21d | 0d | TEAM_2Shift_Calendar-1 | Helper; Gas Cutter | 8h | 475 | 475 |
| 196 | 1.8.1.2.2 | 16"-1NO |  | 3h | 2018-06-25 12:12 | 2018-06-25 15:12 | 195 | 2018-06-02 12:12 | 2018-06-02 15:12 | 3h | 29.21d | 0d | TEAM_2Shift_Calendar-1 | Helper; Gas Cutter | 6h | 356.25 | 356.25 |
| 197 | 1.8.1.2.3 | Inspection |  | 1h | 2018-06-25 15:12 | 2018-06-25 16:12 | 196 | 2018-06-02 15:12 | 2018-06-02 16:12 | 1h | 29.21d |  | TEAM_2Shift_Calendar-1 | Helper; Gas Cutter | 2h | 118.75 | 118.75 |
| 198 | 1.8.1.3 | **Shell Pipe EP** |  | 0.44d | 2018-06-25 16:12 | 2018-06-26 07:12 |  | 2018-06-02 16:12 | 2018-06-04 07:12 | 0.44d | 29.21d | 0d | TEAM_2Shift_Calendar-1 |  | 8h | 475 | 475 |
| 199 | 1.8.1.3.1 | 16"-1NO |  | 3h | 2018-06-25 16:12 | 2018-06-25 19:12 | 194 | 2018-06-02 16:12 | 2018-06-02 19:12 | 3h | 29.21d | 0d | TEAM_2Shift_Calendar-1 | Grinder | 3h | 168.75 | 168.75 |
| 200 | 1.8.1.3.2 | 16"-1NO |  | 3h | 2018-06-25 19:12 | 2018-06-26 06:12 | 199 | 2018-06-02 19:12 | 2018-06-04 06:12 | 3h | 29.21d | 0d | TEAM_2Shift_Calendar-1 | Grinder | 3h | 168.75 | 168.75 |
| 201 | 1.8.1.3.3 | Inspection |  | 1h | 2018-06-26 06:12 | 2018-06-26 07:12 | 200 | 2018-06-04 06:12 | 2018-06-04 07:12 | 1h | 29.21d |  | TEAM_2Shift_Calendar-1 | Fitter [200%] | 2h | 137.5 | 137.5 |
| 202 | 1.8.1.4 | **Sh Cir Seam Fitup - FLNG** |  | 0.22d | 2018-06-26 07:12 | 2018-06-26 10:42 |  | 2018-06-04 07:12 | 2018-06-04 10:42 | 0.22d | 29.21d | 0d | TEAM_2Shift_Calendar-1 |  | 13h | 828.12 | 828.12 |
| 203 | 1.8.1.4.1 | Sh CS Fit Up |  | 3h | 2018-06-26 07:12 | 2018-06-26 10:12 | 198 | 2018-06-04 07:12 | 2018-06-04 10:12 | 3h | 29.21d | 0d | TEAM_2Shift_Calendar-1 | Helper; SMAW Welder; Fitter [200%] | 12h | 768.75 | 768.75 |
| 204 | 1.8.1.4.2 | Sh CS Tack DP Check |  | 0.5h | 2018-06-26 10:12 | 2018-06-26 10:42 | 203 | 2018-06-04 10:12 | 2018-06-04 10:42 | 0.5h | 29.21d |  | TEAM_2Shift_Calendar-1 | Helper; Fitter | 1h | 59.38 | 59.38 |
| 205 | 1.8.1.5 | **Sh Cir Seam Welding - FLNG** |  | 0.31d | 2018-06-26 10:42 | 2018-06-26 15:42 |  | 2018-06-04 10:42 | 2018-06-04 15:42 | 0.31d | 29.21d | 0d | TEAM_2Shift_Calendar-1 |  | 9h | 531.25 | 531.25 |
| 206 | 1.8.1.5.1 | Sh CS Welding Transfere |  | 1h | 2018-06-26 10:42 | 2018-06-26 11:42 | 202 | 2018-06-04 10:42 | 2018-06-04 11:42 | 1h | 29.21d | 0d | TEAM_2Shift_Calendar-1 | Helper; Fitter | 2h | 118.75 | 118.75 |
| 207 | 1.8.1.5.2 | Sh CS Welding Outer |  | 3h | 2018-06-26 11:42 | 2018-06-26 14:42 | 206 | 2018-06-04 11:42 | 2018-06-04 14:42 | 3h | 29.21d | 0d | TEAM_2Shift_Calendar-1 | Helper; SMAW Welder | 6h | 356.25 | 356.25 |
| 208 | 1.8.1.5.3 | Sh CS Welding Back Chip |  | 1h | 2018-06-26 14:42 | 2018-06-26 15:42 | 207 | 2018-06-04 14:42 | 2018-06-04 15:42 | 1h | 29.21d | 0d | TEAM_2Shift_Calendar-1 | Grinder | 1h | 56.25 | 56.25 |
| 209 | 1.8.1.5.4 | Sh CS Inner Welding | milestone | 0h | 2018-06-26 15:42 | 2018-06-26 15:42 | 208 | 2018-06-04 15:42 | 2018-06-04 15:42 | 0h | 29.21d |  | TEAM_2Shift_Calendar-1 | Helper; SMAW Welder |  |  |  |
| 210 | 1.8.1.6 | **Sh Cir Seam Fitup - Dish** |  | 0.08d | 2018-06-26 15:42 | 2018-06-26 17:00 |  | 2018-06-04 15:42 | 2018-06-04 17:00 | 0.08d | 29.21d | 0d | TEAM_2Shift_Calendar-1 |  | 4.6h | 291.88 | 291.88 |
| 211 | 1.8.1.6.1 | Sh CS Fit Up |  | 1h | 2018-06-26 15:42 | 2018-06-26 16:42 | 205 | 2018-06-04 15:42 | 2018-06-04 16:42 | 1h | 29.21d | 0d | TEAM_2Shift_Calendar-1 | Helper; SMAW Welder; Fitter [200%] | 4h | 256.25 | 256.25 |
| 212 | 1.8.1.6.2 | Sh CS Tack DP Check |  | 0.3h | 2018-06-26 16:42 | 2018-06-26 17:00 | 211 | 2018-06-04 16:42 | 2018-06-04 17:00 | 0.3h | 29.21d |  | TEAM_2Shift_Calendar-1 | Helper; Fitter | 0.6h | 35.62 | 35.62 |

| ID | WBS | Task | Type | Duration | Start | Finish | Predecessors | Baseline start | Baseline finish | Baseline duration | Total slack | Free slack | Calendar | Resources | Work | Cost | Baseline cost |
| --- | --- | --- | --- | --- | --- | --- | --- | --- | --- | --- | --- | --- | --- | --- | --- | --- | --- |
| 213 | 1.8.1.7 | **Sh Cir Seam Welding -Dish** |  | 0.19d | 2018-06-26 17:00 | 2018-06-26 20:03 |  | 2018-06-04 17:00 | 2018-06-04 20:03 | 0.19d | 29.21d | 0d | TEAM_2Shift_Calendar-1 |  | 5.8h | 343.44 | 343.44 |
| 214 | 1.8.1.7.1 | Sh CS Welding Transfere |  | 1h | 2018-06-26 17:00 | 2018-06-26 18:00 | 210 | 2018-06-04 17:00 | 2018-06-04 18:00 | 1h | 29.21d | 0d | TEAM_2Shift_Calendar-1 | Helper; Fitter | 2h | 118.75 | 118.75 |
| 215 | 1.8.1.7.2 | Sh CS Welding Outer |  | 1.75h | 2018-06-26 18:00 | 2018-06-26 19:45 | 214 | 2018-06-04 18:00 | 2018-06-04 19:45 | 1.75h | 29.21d | 0d | TEAM_2Shift_Calendar-1 | Helper; SMAW Welder | 3.5h | 207.81 | 207.81 |
| 216 | 1.8.1.7.3 | Sh CS Welding Back Chip |  | 0.3h | 2018-06-26 19:45 | 2018-06-26 20:03 | 215 | 2018-06-04 19:45 | 2018-06-04 20:03 | 0.3h | 29.21d | 0d | TEAM_2Shift_Calendar-1 | Grinder | 0.3h | 16.88 | 16.88 |
| 217 | 1.8.1.7.4 | Sh CS Inner Welding | milestone | 0h | 2018-06-26 20:03 | 2018-06-26 20:03 | 216 | 2018-06-04 20:03 | 2018-06-04 20:03 | 0h | 29.21d | 0d | TEAM_2Shift_Calendar-1 | Helper; SMAW Welder |  |  |  |
| 218 | 1.8.1.7.5 | Sh CS Flush Grinding | milestone | 0h | 2018-06-26 20:03 | 2018-06-26 20:03 | 217 | 2018-06-04 20:03 | 2018-06-04 20:03 | 0h | 29.21d |  | TEAM_2Shift_Calendar-1 | Grinder |  |  |  |
| 219 | 1.8.1.8 | **Nozzle Orientation Marking** |  | 0.25d | 2018-06-26 20:03 | 2018-06-27 08:03 |  | 2018-06-04 20:03 | 2018-06-05 08:03 | 0.25d | 29.21d | 0d | TEAM_2Shift_Calendar-1 |  | 8h | 550 | 550 |
| 220 | 1.8.1.8.1 | Sh Nozzel Orientaion Marking6" Nozzle-2 Nos |  | 4h | 2018-06-26 20:03 | 2018-06-27 08:03 | 213 | 2018-06-04 20:03 | 2018-06-05 08:03 | 4h | 29.21d | 0d | TEAM_2Shift_Calendar-1 | Fitter [200%] | 8h | 550 | 550 |
| 221 | 1.8.1.9 | **Sh Nozzle Openning** |  | 0.19d | 2018-06-27 08:03 | 2018-06-27 11:03 |  | 2018-06-05 08:03 | 2018-06-05 11:03 | 0.19d | 29.21d | 0d | TEAM_2Shift_Calendar-1 |  | 8h | 475 | 475 |
| 222 | 1.8.1.9.1 | 6" Nozzle-2 Nos |  | 3h | 2018-06-27 08:03 | 2018-06-27 11:03 | 219 | 2018-06-05 08:03 | 2018-06-05 11:03 | 3h | 29.21d |  | TEAM_2Shift_Calendar-1 | Helper; Gas Cutter | 6h | 356.25 | 356.25 |
| 223 | 1.8.1.9.2 | Inspection |  | 1h | 2018-06-27 08:03 | 2018-06-27 09:03 | 220 | 2018-06-05 08:03 | 2018-06-05 09:03 | 1h | 29.33d |  | TEAM_2Shift_Calendar-1 | Helper; Gas Cutter | 2h | 118.75 | 118.75 |
| 224 | 1.8.1.10 | **Sh Nozzle EP** |  | 0.25d | 2018-06-27 11:03 | 2018-06-27 15:03 |  | 2018-06-05 11:03 | 2018-06-05 15:03 | 0.25d | 29.21d | 0d | TEAM_2Shift_Calendar-1 |  | 5h | 306.25 | 306.25 |
| 225 | 1.8.1.10.1 | 6" Nozzle-2 Nos |  | 3h | 2018-06-27 11:03 | 2018-06-27 14:03 | 221 | 2018-06-05 11:03 | 2018-06-05 14:03 | 3h | 29.21d | 0d | TEAM_2Shift_Calendar-1 | Grinder | 3h | 168.75 | 168.75 |
| 226 | 1.8.1.10.2 | Inspection |  | 1h | 2018-06-27 14:03 | 2018-06-27 15:03 | 225 | 2018-06-05 14:03 | 2018-06-05 15:03 | 1h | 29.21d |  | TEAM_2Shift_Calendar-1 | Fitter [200%] | 2h | 137.5 | 137.5 |
| 227 | 1.8.1.11 | **Sh Nozzzle Fit Up** |  | 0.14d | 2018-06-27 15:03 | 2018-06-27 17:21 |  | 2018-06-05 15:03 | 2018-06-05 17:21 | 0.14d | 29.21d | 0d | TEAM_2Shift_Calendar-1 |  | 8.6h | 548.12 | 548.12 |
| 228 | 1.8.1.11.1 | 6" Nozzle-2 Nos |  | 2h | 2018-06-27 15:03 | 2018-06-27 17:03 | 224 | 2018-06-05 15:03 | 2018-06-05 17:03 | 2h | 29.21d | 0d | TEAM_2Shift_Calendar-1 | Helper; SMAW Welder; Fitter [200%] | 8h | 512.5 | 512.5 |
| 229 | 1.8.1.11.2 | DP Check |  | 0.3h | 2018-06-27 17:03 | 2018-06-27 17:21 | 228 | 2018-06-05 17:03 | 2018-06-05 17:21 | 0.3h | 29.21d |  | TEAM_2Shift_Calendar-1 | Helper; Fitter | 0.6h | 35.62 | 35.62 |
| 230 | 1.8.1.12 | **Sh Nozzle Fit Up Inspection** |  | 0.08d | 2018-06-27 17:21 | 2018-06-27 18:39 |  | 2018-06-05 17:21 | 2018-06-05 18:39 | 0.08d | 29.21d | 0d | TEAM_2Shift_Calendar-1 |  | 2.6h | 154.38 | 154.38 |
| 231 | 1.8.1.12.1 | 6" Nozzle-2 Nos |  | 1h | 2018-06-27 17:21 | 2018-06-27 18:21 | 227 | 2018-06-05 17:21 | 2018-06-05 18:21 | 1h | 29.21d | 0d | TEAM_2Shift_Calendar-1 | Helper; Fitter | 2h | 118.75 | 118.75 |
| 232 | 1.8.1.12.2 | DP Check |  | 0.3h | 2018-06-27 18:21 | 2018-06-27 18:39 | 231 | 2018-06-05 18:21 | 2018-06-05 18:39 | 0.3h | 29.21d |  | TEAM_2Shift_Calendar-1 | Helper; Fitter | 0.6h | 35.62 | 35.62 |
| 233 | 1.8.1.13 | **Sh Nozzle Welding** |  | 0.34d | 2018-06-27 18:39 | 2018-06-28 08:09 |  | 2018-06-05 18:39 | 2018-06-06 08:09 | 0.34d | 29.21d | 0d | TEAM_2Shift_Calendar-1 |  | 9h | 415.62 | 415.62 |
| 234 | 1.8.1.13.1 | Sh Nozzel Welding Arrangement |  | 2h | 2018-06-27 18:39 | 2018-06-27 20:39 | 230 | 2018-06-05 18:39 | 2018-06-05 20:39 | 2h | 29.21d | 0d | TEAM_2Shift_Calendar-1 | Store | 2h |  |  |
| 235 | 1.8.1.13.2 | Sh Nozzel Welding6" Nozzle-2 Nos-N1,N2 |  | 3h | 2018-06-27 20:39 | 2018-06-28 07:39 | 234 | 2018-06-05 20:39 | 2018-06-06 07:39 | 3h | 29.21d | 0d | TEAM_2Shift_Calendar-1 | Helper; SMAW Welder | 6h | 356.25 | 356.25 |
| 236 | 1.8.1.13.3 | Sh Nozzel Root DP Check |  | 0.5h | 2018-06-28 07:39 | 2018-06-28 08:09 | 235 | 2018-06-06 07:39 | 2018-06-06 08:09 | 0.5h | 29.21d |  | TEAM_2Shift_Calendar-1 | Helper; Fitter | 1h | 59.38 | 59.38 |

| ID | WBS | Task | Duration | Start | Finish | Predecessors | Baseline start | Baseline finish | Baseline duration | Total slack | Free slack | Calendar | Resources | Work | Cost | Baseline cost |
| --- | --- | --- | --- | --- | --- | --- | --- | --- | --- | --- | --- | --- | --- | --- | --- | --- |
| 237 | 1.8.1.14 | **Sh Saddle Welding** | 2.19d | 2018-06-28 08:09 | 2018-06-30 11:09 |  | 2018-06-06 08:09 | 2018-06-08 11:09 | 2.19d | 29.21d | 0d | TEAM_2Shift_Calendar-1 |  | 131h | 7,931.25 | 7,931.25 |
| 238 | 1.8.1.14.1 | Sh-Saddle Pad Fit Up | 3h | 2018-06-28 08:09 | 2018-06-28 11:09 | 233 | 2018-06-06 08:09 | 2018-06-06 11:09 | 3h | 29.21d | 0d | TEAM_2Shift_Calendar-1 | SMAW Welder; Helper; Fitter | 9h | 562.5 | 562.5 |
| 239 | 1.8.1.14.2 | Sh-Saddle Pad Welding | 10h | 2018-06-28 11:09 | 2018-06-28 21:09 | 238 | 2018-06-06 11:09 | 2018-06-06 21:09 | 10h | 29.21d | 0d | TEAM_2Shift_Calendar-1 | Helper [200%]; SMAW Welder [200%] | 40h | 2,375 | 2,375 |
| 240 | 1.8.1.14.3 | Sh-Saddle Matching | 4h | 2018-06-28 21:09 | 2018-06-29 09:09 | 239 | 2018-06-06 21:09 | 2018-06-07 09:09 | 4h | 29.21d | 0d | TEAM_2Shift_Calendar-1 | Grinder [200%]; Fitter [200%] | 16h | 1,000 | 1,000 |
| 241 | 1.8.1.14.4 | Sh-Saddle Fit Up | 5h | 2018-06-29 09:09 | 2018-06-29 14:09 | 240 | 2018-06-07 09:09 | 2018-06-07 14:09 | 5h | 29.21d | 0d | TEAM_2Shift_Calendar-1 | Fitter [200%]; Helper; SMAW Welder | 20h | 1,281.25 | 1,281.25 |
| 242 | 1.8.1.14.5 | Sh-Saddle Welding | 10h | 2018-06-29 14:09 | 2018-06-30 08:09 | 241 | 2018-06-07 14:09 | 2018-06-08 08:09 | 10h | 29.21d | 0d | TEAM_2Shift_Calendar-1 | Helper [200%]; SMAW Welder [200%] | 40h | 2,375 | 2,375 |
| 243 | 1.8.1.14.6 | Sh-Saddle Dress Up | 3h | 2018-06-30 08:09 | 2018-06-30 11:09 | 242 | 2018-06-08 08:09 | 2018-06-08 11:09 | 3h | 29.21d |  | TEAM_2Shift_Calendar-1 | Grinder [200%] | 6h | 337.5 | 337.5 |
| 244 | 1.8.1.15 | **Sh Nde Clearence** | 0.44d | 2018-06-30 11:09 | 2018-06-30 18:09 |  | 2018-06-08 11:09 | 2018-06-08 18:09 | 0.44d | 29.21d | 25.21d | TEAM_2Shift_Calendar-1 |  | 14h | 831.25 | 831.25 |
| 245 | 1.8.1.15.1 | Sh-Sh Nde Clearence | 3h | 2018-06-30 11:09 | 2018-06-30 14:09 | 237 | 2018-06-08 11:09 | 2018-06-08 14:09 | 3h | 29.21d | 0d | TEAM_2Shift_Calendar-1 | Helper; Fitter | 6h | 356.25 | 356.25 |
| 246 | 1.8.1.15.2 | TPI Inspection | 4h | 2018-06-30 14:09 | 2018-06-30 18:09 | 245 | 2018-06-08 14:09 | 2018-06-08 18:09 | 4h | 29.21d |  | TEAM_2Shift_Calendar-1 | Helper; Fitter | 8h | 475 | 475 |
| 247 | 1.9 | **Tube bundle Fabrication** | 10.52d | 2018-08-01 21:30 | 2018-08-16 13:45 |  | 2018-08-01 21:30 | 2018-08-16 13:45 | 10.52d | 4d |  | TEAM_2Shift_Calendar-1 |  | 416h | 24,857.81 | 24,857.81 |
| 248 | 1.9.1 | **Tube Bundle Assy** | 2.75d | 2018-08-01 21:30 | 2018-08-04 17:30 |  | 2018-08-01 21:30 | 2018-08-04 17:30 | 2.75d | 4d | 0d | TEAM_2Shift_Calendar-1 |  | 108h | 6,625 | 6,625 |
| 249 | 1.9.1.1 | Frame Set Up & Tube Sht Set Up | 12h | 2018-08-01 21:30 | 2018-08-02 17:30 | 35, 244 | 2018-08-01 21:30 | 2018-08-02 17:30 | 12h | 4d | 0d | TEAM_2Shift_Calendar-1 | SMAW Welder; Fitter [200%] | 36h | 2,475 | 2,475 |
| 250 | 1.9.1.2 | Skeliton Assy30Baffles | 8h | 2018-08-02 17:30 | 2018-08-03 09:30 | 249 | 2018-08-02 17:30 | 2018-08-03 09:30 | 8h | 4d | 0d | TEAM_2Shift_Calendar-1 | Helper [300%]; Fitter [200%] | 40h | 2,300 | 2,300 |
| 251 | 1.9.1.3 | Flush Grind | 1d | 2018-08-03 09:30 | 2018-08-04 09:30 | 250 | 2018-08-03 09:30 | 2018-08-04 09:30 | 1d | 4d | 0d | TEAM_2Shift_Calendar-1 | Grinder | 16h | 900 | 900 |
| 252 | 1.9.1.4 | DP Check | 0.5d | 2018-08-04 09:30 | 2018-08-04 17:30 | 251 | 2018-08-04 09:30 | 2018-08-04 17:30 | 0.5d | 4d |  | TEAM_2Shift_Calendar-1 | Helper; Fitter | 16h | 950 | 950 |
| 253 | 1.9.2 | **Tube Insert** | 0.58d | 2018-08-04 17:30 | 2018-08-06 10:45 |  | 2018-08-04 17:30 | 2018-08-06 10:45 | 0.58d | 4d | 0d | TEAM_2Shift_Calendar-1 |  | 46.25h | 2,485.94 | 2,485.94 |
| 254 | 1.9.2.1 | Tube Insert | 9.25h | 2018-08-04 17:30 | 2018-08-06 10:45 | 248 | 2018-08-04 17:30 | 2018-08-06 10:45 | 9.25h | 4d |  | TEAM_2Shift_Calendar-1 | Helper [400%]; Tube (Cost) [0.1%]; Tube Sheet (Cost) [0.1%]; Fitter | 46.25h | 2,485.94 | 2,485.94 |
| 255 | 1.9.3 | **Sealing Strip Fit Up Welding** | 0.38d | 2018-08-06 10:45 | 2018-08-06 16:45 |  | 2018-08-06 10:45 | 2018-08-06 16:45 | 0.38d | 4d | 0d | TEAM_2Shift_Calendar-1 |  | 11h | 650 | 650 |
| 256 | 1.9.3.1 | Sealing Strip Fit Up | 5h | 2018-08-06 10:45 | 2018-08-06 15:45 | 253 | 2018-08-06 10:45 | 2018-08-06 15:45 | 5h | 4d | 0d | TEAM_2Shift_Calendar-1 | Helper; Fitter | 10h | 593.75 | 593.75 |
| 257 | 1.9.3.2 | Seal strip Weld Grind | 1h | 2018-08-06 15:45 | 2018-08-06 16:45 | 256 | 2018-08-06 15:45 | 2018-08-06 16:45 | 1h | 4d |  | TEAM_2Shift_Calendar-1 | Grinder | 1h | 56.25 | 56.25 |
| 258 | 1.9.4 | **Tube to Tube Sheet Welding** | 1.34d | 2018-08-06 16:45 | 2018-08-08 06:15 |  | 2018-08-06 16:45 | 2018-08-08 06:15 | 1.34d | 4d | 0d | TEAM_2Shift_Calendar-1 |  | 43h | 3,593.75 | 3,593.75 |
| 259 | 1.9.4.1 | Tube Welding Root | 9.25h | 2018-08-06 16:45 | 2018-08-07 10:00 | 255 | 2018-08-06 16:45 | 2018-08-07 10:00 | 9.25h | 4d | 0d | TEAM_2Shift_Calendar-1 | Helper; TIG Welder | 18.5h | 1,618.75 | 1,618.75 |
| 260 | 1.9.4.2 | Tube Welding Side Root DP | 1h | 2018-08-07 10:00 | 2018-08-07 11:00 | 259 | 2018-08-07 10:00 | 2018-08-07 11:00 | 1h | 4d | 0d | TEAM_2Shift_Calendar-1 | Helper; Fitter | 2h | 118.75 | 118.75 |
| 261 | 1.9.4.3 | Tube Welding Final Weld | 9.25h | 2018-08-07 11:00 | 2018-08-07 20:15 | 260 | 2018-08-07 11:00 | 2018-08-07 20:15 | 9.25h | 4d | 0d | TEAM_2Shift_Calendar-1 | Helper; TIG Welder | 18.5h | 1,618.75 | 1,618.75 |
| 262 | 1.9.4.4 | Tube Welding Final DP | 2h | 2018-08-07 20:15 | 2018-08-08 06:15 | 261 | 2018-08-07 20:15 | 2018-08-08 06:15 | 2h | 4d |  | TEAM_2Shift_Calendar-1 | Helper; Fitter | 4h | 237.5 | 237.5 |

| ID | WBS | Task | Type | Duration | Start | Finish | Predecessors | Baseline start | Baseline finish | Baseline duration | Total slack | Free slack | Calendar | Resources | Work | Cost | Baseline cost |
| --- | --- | --- | --- | --- | --- | --- | --- | --- | --- | --- | --- | --- | --- | --- | --- | --- | --- |
| 263 | 1.9.5 | **Tube Expansion In Grooves** |  | 0.22d | 2018-08-08 06:15 | 2018-08-08 09:45 |  | 2018-08-08 06:15 | 2018-08-08 09:45 | 0.22d | 4d | 0d | TEAM_2Shift_Calendar-1 |  | 7.75h | 453.12 | 453.12 |
| 264 | 1.9.5.1 | Tube Exp 1 Stage |  | 0.75h | 2018-08-08 06:15 | 2018-08-08 07:00 | 258 | 2018-08-08 06:15 | 2018-08-08 07:00 | 0.75h | 4d | 0d | TEAM_2Shift_Calendar-1 | Helper [200%]; Fitter | 2.25h | 126.56 | 126.56 |
| 265 | 1.9.5.2 | Tube Trimming |  | 2.75h | 2018-08-08 07:00 | 2018-08-08 09:45 | 264 | 2018-08-08 07:00 | 2018-08-08 09:45 | 2.75h | 4d |  | TEAM_2Shift_Calendar-1 | Helper; Fitter | 5.5h | 326.56 | 326.56 |
| 266 | 1.9.6 | **Tube Bundle Insert** |  | 5.25d | 2018-08-08 09:45 | 2018-08-16 13:45 |  | 2018-08-08 09:45 | 2018-08-16 13:45 | 5.25d | 4d | 0d | TEAM_2Shift_Calendar-1 |  | 200h | 11,050 | 11,050 |
| 267 | 1.9.6.1 | Tube Bundle Insert In Shell |  | 16h | 2018-08-08 09:45 | 2018-08-09 09:45 | 263 | 2018-08-08 09:45 | 2018-08-09 09:45 | 16h | 4d | 0d | TEAM_2Shift_Calendar-1 | Helper [800%]; Fitter [300%] | 176h | 9,700 | 9,700 |
| 268 | 1.9.6.2 | Tube Sht Fixing |  | 4h | 2018-08-09 09:45 | 2018-08-09 13:45 | 267 | 2018-08-09 09:45 | 2018-08-09 13:45 | 4h | 4d | 0d | TEAM_2Shift_Calendar-1 | Helper [400%]; Fitter [200%] | 24h | 1,350 | 1,350 |
| 269 | 1.9.6.3 | Dummy activity |  | 4d | 2018-08-09 13:45 | 2018-08-16 13:45 | 268 | 2018-08-09 13:45 | 2018-08-16 13:45 | 4d | 4d |  | TEAM_2Shift_Calendar-1 |  |  |  |  |
| 270 | 1.10 | **Channel Fabrication** |  | 14.34d | 2018-08-16 13:45 | 2018-09-03 19:15 |  | 2018-08-16 13:45 | 2018-09-03 19:15 | 14.34d | 4d | 0d | TEAM_2Shift_Calendar-1 |  | 535.75h | 30,575 | 30,575 |
| 271 | 1.10.1 | **Ch Dish CS Fit UpFlg1** |  | 0.44d | 2018-08-17 18:45 | 2018-08-18 09:45 |  | 2018-08-17 18:45 | 2018-08-18 09:45 | 0.44d | 4d | 0d | TEAM_2Shift_Calendar-1 |  | 20h | 1,300 | 1,300 |
| 272 | 1.10.1.1 | Ch Cir EP Correction |  | 3h | 2018-08-17 18:45 | 2018-08-17 21:45 | 325 | 2018-08-17 18:45 | 2018-08-17 21:45 | 3h | 4d | 0d | TEAM_2Shift_Calendar-1 | Plate (Cost); Fitter [200%] | 6h | 412.5 | 412.5 |
| 273 | 1.10.1.2 | Ch CS Fit UpFlg1 |  | 3h | 2018-08-17 21:45 | 2018-08-18 08:45 | 272 | 2018-08-17 21:45 | 2018-08-18 08:45 | 3h | 4d | 0d | TEAM_2Shift_Calendar-1 | SMAW Welder; Helper; Fitter [200%] | 12h | 768.75 | 768.75 |
| 274 | 1.10.1.3 | Ch CS Tack DP Check Flg1 |  | 1h | 2018-08-18 08:45 | 2018-08-18 09:45 | 273 | 2018-08-18 08:45 | 2018-08-18 09:45 | 1h | 4d | 0d | TEAM_2Shift_Calendar-1 | Helper; Fitter | 2h | 118.75 | 118.75 |
| 275 | 1.10.1.4 | Dummy Activity | milestone | 0d | 2018-08-18 09:45 | 2018-08-18 09:45 | 274 | 2018-08-18 09:45 | 2018-08-18 09:45 | 0d | 4d |  | TEAM_2Shift_Calendar-1 |  |  |  |  |
| 276 | 1.10.2 | **Ch Dish CS Welding** |  | 0.52d | 2018-08-18 09:45 | 2018-08-18 18:00 |  | 2018-08-18 09:45 | 2018-08-18 18:00 | 0.52d | 4d | 0d | TEAM_2Shift_Calendar-1 |  | 16.25h | 939.06 | 939.06 |
| 277 | 1.10.2.1 | Ch CS Welding Transfere |  | 2h | 2018-08-18 09:45 | 2018-08-18 11:45 | 271 | 2018-08-18 09:45 | 2018-08-18 11:45 | 2h | 4d | 0d | TEAM_2Shift_Calendar-1 | Helper [200%]; Fitter | 6h | 337.5 | 337.5 |
| 278 | 1.10.2.2 | Ch CS Welding OuterFlg1 |  | 4h | 2018-08-18 11:45 | 2018-08-18 15:45 | 277 | 2018-08-18 11:45 | 2018-08-18 15:45 | 4h | 4d | 0d | TEAM_2Shift_Calendar-1 | Helper; SMAW Welder | 8h | 475 | 475 |
| 279 | 1.10.2.3 | Ch CS Welding Back ChipFlg1 |  | 0.25h | 2018-08-18 15:45 | 2018-08-18 16:00 | 278 | 2018-08-18 15:45 | 2018-08-18 16:00 | 0.25h | 4d | 0d | TEAM_2Shift_Calendar-1 | Grinder | 0.25h | 14.06 | 14.06 |
| 280 | 1.10.2.4 | Ch CS Flush GrindingFlg1 |  | 2h | 2018-08-18 16:00 | 2018-08-18 18:00 | 279 | 2018-08-18 16:00 | 2018-08-18 18:00 | 2h | 4d |  | TEAM_2Shift_Calendar-1 | Grinder | 2h | 112.5 | 112.5 |
| 281 | 1.10.3 | **Ch CS Fit UpFlg1** |  | 0.44d | 2018-08-18 18:00 | 2018-08-20 09:00 |  | 2018-08-18 18:00 | 2018-08-20 09:00 | 0.44d | 4d | 0d | TEAM_2Shift_Calendar-1 |  | 17h | 1,056.25 | 1,056.25 |
| 282 | 1.10.3.1 | Ch Length Cutting |  | 2h | 2018-08-18 18:00 | 2018-08-18 20:00 | 276 | 2018-08-18 18:00 | 2018-08-18 20:00 | 2h | 4d | 0d | TEAM_2Shift_Calendar-1 | Helper; Gas Cutter | 4h | 237.5 | 237.5 |
| 283 | 1.10.3.2 | Ch Cir EP Correction |  | 2h | 2018-08-18 20:00 | 2018-08-18 22:00 | 282 | 2018-08-18 20:00 | 2018-08-18 22:00 | 2h | 4d | 0d | TEAM_2Shift_Calendar-1 | Helper; Fitter | 4h | 237.5 | 237.5 |
| 284 | 1.10.3.3 | Ch CS Fit UpFlg2 |  | 2h | 2018-08-20 06:00 | 2018-08-20 08:00 | 283 | 2018-08-20 06:00 | 2018-08-20 08:00 | 2h | 4d | 0d | TEAM_2Shift_Calendar-1 | SMAW Welder; Helper; Fitter [200%] | 8h | 512.5 | 512.5 |
| 285 | 1.10.3.4 | Ch CS Tack DP CheckFlg2 |  | 1h | 2018-08-20 08:00 | 2018-08-20 09:00 | 284 | 2018-08-20 08:00 | 2018-08-20 09:00 | 1h | 4d |  | TEAM_2Shift_Calendar-1 | Fitter | 1h | 68.75 | 68.75 |
| 286 | 1.10.4 | **Ch CS Flg Welding** |  | 0.56d | 2018-08-20 09:00 | 2018-08-20 18:00 |  | 2018-08-20 09:00 | 2018-08-20 18:00 | 0.56d | 4d | 0d | TEAM_2Shift_Calendar-1 |  | 17h | 981.25 | 981.25 |
| 287 | 1.10.4.1 | Ch CS Welding TransfereFlg2 |  | 2h | 2018-08-20 09:00 | 2018-08-20 11:00 | 281 | 2018-08-20 09:00 | 2018-08-20 11:00 | 2h | 4d | 0d | TEAM_2Shift_Calendar-1 | Helper [200%]; Fitter | 6h | 337.5 | 337.5 |
| 288 | 1.10.4.2 | Ch CS Welding OuterFlg2 |  | 4h | 2018-08-20 11:00 | 2018-08-20 15:00 | 287 | 2018-08-20 11:00 | 2018-08-20 15:00 | 4h | 4d | 0d | TEAM_2Shift_Calendar-1 | Helper; SMAW Welder | 8h | 475 | 475 |
| 289 | 1.10.4.3 | Ch CS Welding Back ChipFlg2 |  | 1h | 2018-08-20 15:00 | 2018-08-20 16:00 | 288 | 2018-08-20 15:00 | 2018-08-20 16:00 | 1h | 4d | 0d | TEAM_2Shift_Calendar-1 | Grinder | 1h | 56.25 | 56.25 |
| 290 | 1.10.4.4 | Ch CS Flush GrindingFlg2 |  | 2h | 2018-08-20 16:00 | 2018-08-20 18:00 | 289 | 2018-08-20 16:00 | 2018-08-20 18:00 | 2h | 4d |  | TEAM_2Shift_Calendar-1 | Grinder | 2h | 112.5 | 112.5 |

| ID | WBS | Task | Type | Duration | Start | Finish | Predecessors | Baseline start | Baseline finish | Baseline duration | Total slack | Free slack | Calendar | Resources | Work | Cost | Baseline cost |
| --- | --- | --- | --- | --- | --- | --- | --- | --- | --- | --- | --- | --- | --- | --- | --- | --- | --- |
| 291 | 1.10.5 | **Ch CS Welding RtFlg1 & 2** |  | 1.97d | 2018-08-20 18:00 | 2018-08-22 17:30 |  | 2018-08-20 18:00 | 2018-08-22 17:30 | 1.97d | 4d | 0d | TEAM_2Shift_Calendar-1 |  | 16h |  |  |
| 292 | 1.10.5.1 | Ch CS Welding Rt |  | 1.97d | 2018-08-20 18:00 | 2018-08-22 17:30 | 286 | 2018-08-20 18:00 | 2018-08-22 17:30 | 1.97d | 4d |  | TEAM_2Shift_Calendar-1 | SC Radiography (Work) | 16h |  |  |
| 293 | 1.10.6 | **Channel Nozzel Marking** |  | 0.22d | 2018-08-22 17:30 | 2018-08-22 21:00 |  | 2018-08-22 17:30 | 2018-08-22 21:00 | 0.22d | 4d | 0d | TEAM_2Shift_Calendar-1 |  | 7h | 415.62 | 415.62 |
| 294 | 1.10.6.1 | Ch Nozzel orientation4"Nozzle-1No |  | 2h | 2018-08-22 17:30 | 2018-08-22 19:30 | 291 | 2018-08-22 17:30 | 2018-08-22 19:30 | 2h | 4d | 0d | TEAM_2Shift_Calendar-1 | Helper; Fitter | 4h | 237.5 | 237.5 |
| 295 | 1.10.6.2 | Ch Nozzel Marking2"Nozzle-1No |  | 1.5h | 2018-08-22 19:30 | 2018-08-22 21:00 | 294 | 2018-08-22 19:30 | 2018-08-22 21:00 | 1.5h | 4d |  | TEAM_2Shift_Calendar-1 | Helper; Fitter | 3h | 178.12 | 178.12 |
| 296 | 1.10.7 | **Ch Nozzel Opening** |  | 0.22d | 2018-08-22 21:00 | 2018-08-23 08:30 |  | 2018-08-22 21:00 | 2018-08-23 08:30 | 0.22d | 4d | 0d | TEAM_2Shift_Calendar-1 |  | 7h | 415.62 | 415.62 |
| 297 | 1.10.7.1 | Ch Nozzel Openning-Top4"Nozzle-1No |  | 2h | 2018-08-22 21:00 | 2018-08-23 07:00 | 293 | 2018-08-22 21:00 | 2018-08-23 07:00 | 2h | 4d | 0d | TEAM_2Shift_Calendar-1 | Helper; Gas Cutter | 4h | 237.5 | 237.5 |
| 298 | 1.10.7.2 | Ch Nozzel Openning-Bottom2"Nozzle-1No |  | 1.5h | 2018-08-23 07:00 | 2018-08-23 08:30 | 297 | 2018-08-23 07:00 | 2018-08-23 08:30 | 1.5h | 4d |  | TEAM_2Shift_Calendar-1 | Helper; Gas Cutter | 3h | 178.12 | 178.12 |
| 299 | 1.10.8 | **Ch Nozzel Open EP** |  | 0.22d | 2018-08-23 08:30 | 2018-08-23 12:00 |  | 2018-08-23 08:30 | 2018-08-23 12:00 | 0.22d | 4d | 0d | TEAM_2Shift_Calendar-1 |  | 7h | 371.88 | 371.88 |
| 300 | 1.10.8.1 | Ch Nozzel EP4"Nozzle-1No |  | 2h | 2018-08-23 08:30 | 2018-08-23 10:30 | 296 | 2018-08-23 08:30 | 2018-08-23 10:30 | 2h | 4d | 0d | TEAM_2Shift_Calendar-1 | Helper; Grinder | 4h | 212.5 | 212.5 |
| 301 | 1.10.8.2 | Ch Nozzel EP2"Nozzle-1No |  | 1.5h | 2018-08-23 10:30 | 2018-08-23 12:00 | 300 | 2018-08-23 10:30 | 2018-08-23 12:00 | 1.5h | 4d |  | TEAM_2Shift_Calendar-1 | Helper; Grinder | 3h | 159.38 | 159.38 |
| 302 | 1.10.9 | **Ch Nozzel Fit Up** |  | 0.19d | 2018-08-23 12:00 | 2018-08-23 15:00 |  | 2018-08-23 12:00 | 2018-08-23 15:00 | 0.19d | 4d | 0d | TEAM_2Shift_Calendar-1 |  | 12h | 768.75 | 768.75 |
| 303 | 1.10.9.1 | Ch Nozzel Fit Up4"Nozzle-1No |  | 2h | 2018-08-23 12:00 | 2018-08-23 14:00 | 299 | 2018-08-23 12:00 | 2018-08-23 14:00 | 2h | 4d | 0d | TEAM_2Shift_Calendar-1 | SMAW Welder; Helper; Fitter [200%] | 8h | 512.5 | 512.5 |
| 304 | 1.10.9.2 | Ch Nozzel Fit Up2"Nozzle-1No |  | 1h | 2018-08-23 14:00 | 2018-08-23 15:00 | 303 | 2018-08-23 14:00 | 2018-08-23 15:00 | 1h | 4d |  | TEAM_2Shift_Calendar-1 | SMAW Welder; Helper; Fitter [200%] | 4h | 256.25 | 256.25 |
| 305 | 1.10.10 | **Ch Nozzel Fit Up Inspection** |  | 0.12d | 2018-08-23 15:00 | 2018-08-23 17:00 |  | 2018-08-23 15:00 | 2018-08-23 17:00 | 0.12d | 4d | 0d | TEAM_2Shift_Calendar-1 |  | 4h | 237.5 | 237.5 |
| 306 | 1.10.10.1 | Ch Nozzel Inspection4"Nozzle-1No |  | 1h | 2018-08-23 15:00 | 2018-08-23 16:00 | 302 | 2018-08-23 15:00 | 2018-08-23 16:00 | 1h | 4d | 0d | TEAM_2Shift_Calendar-1 | Helper; Fitter | 2h | 118.75 | 118.75 |
| 307 | 1.10.10.2 | Ch Nozzel Inspection2"Nozzle-1No |  | 1h | 2018-08-23 16:00 | 2018-08-23 17:00 | 306 | 2018-08-23 16:00 | 2018-08-23 17:00 | 1h | 4d |  | TEAM_2Shift_Calendar-1 | Helper; Fitter | 2h | 118.75 | 118.75 |
| 308 | 1.10.11 | **Ch Nozzel Welding** |  | 0.91d | 2018-08-23 17:00 | 2018-08-24 15:30 |  | 2018-08-23 17:00 | 2018-08-24 15:30 | 0.91d | 4d | 0d | TEAM_2Shift_Calendar-1 |  | 27h | 1,546.88 | 1,546.88 |
| 309 | 1.10.11.1 | Ch Nozzel Welding Arrangement | milestone | 0d | 2018-08-23 17:00 | 2018-08-23 17:00 | 305 | 2018-08-23 17:00 | 2018-08-23 17:00 | 0d | 4d | 0d | TEAM_2Shift_Calendar-1 |  |  |  |  |
| 310 | 1.10.11.2 | Ch Nozzel Welding4"Nozzle-1No |  | 2h | 2018-08-23 17:00 | 2018-08-23 19:00 | 309 | 2018-08-23 17:00 | 2018-08-23 19:00 | 2h | 4d | 0d | TEAM_2Shift_Calendar-1 | Helper; SMAW Welder | 4h | 237.5 | 237.5 |
| 311 | 1.10.11.3 | Ch Nozzel Welding2"Nozzle-1No |  | 2h | 2018-08-23 19:00 | 2018-08-23 21:00 | 310 | 2018-08-23 19:00 | 2018-08-23 21:00 | 2h | 4d | 0d | TEAM_2Shift_Calendar-1 | Helper; SMAW Welder | 4h | 237.5 | 237.5 |
| 312 | 1.10.11.4 | Ch Nozzel Root DP Check |  | 0.5h | 2018-08-23 21:00 | 2018-08-23 21:30 | 311 | 2018-08-23 21:00 | 2018-08-23 21:30 | 0.5h | 4d | 0d | TEAM_2Shift_Calendar-1 | Helper; SMAW Welder | 1h | 59.38 | 59.38 |
| 313 | 1.10.11.5 | Rf Pad Fit Up & Nozzle Fit Up |  | 4h | 2018-08-23 21:30 | 2018-08-24 09:30 | 312 | 2018-08-23 21:30 | 2018-08-24 09:30 | 4h | 4d | 0d | TEAM_2Shift_Calendar-1 | Helper; SMAW Welder | 8h | 475 | 475 |
| 314 | 1.10.11.6 | Rf Pad Fit Up Welding |  | 4h | 2018-08-24 09:30 | 2018-08-24 13:30 | 313 | 2018-08-24 09:30 | 2018-08-24 13:30 | 4h | 4d | 0d | TEAM_2Shift_Calendar-1 | Helper; Grinder | 8h | 425 | 425 |
| 315 | 1.10.11.7 | Nozzel Welding Flush Grind6''NB |  | 2h | 2018-08-24 13:30 | 2018-08-24 15:30 | 314 | 2018-08-24 13:30 | 2018-08-24 15:30 | 2h | 4d |  | TEAM_2Shift_Calendar-1 | Grinder | 2h | 112.5 | 112.5 |

| ID | WBS | Task | Duration | Start | Finish | Predecessors | Baseline start | Baseline finish | Baseline duration | Total slack | Free slack | Calendar | Resources | Work | Cost | Baseline cost |
| --- | --- | --- | --- | --- | --- | --- | --- | --- | --- | --- | --- | --- | --- | --- | --- | --- |
| 316 | 1.10.12 | **Channel Pp Plate Fit Up** | 0.25d | 2018-08-24 15:30 | 2018-08-24 19:30 |  | 2018-08-24 15:30 | 2018-08-24 19:30 | 0.25d | 4d | 0d | TEAM_2Shift_Calendar-1 |  | 14h | 887.5 | 887.5 |
| 317 | 1.10.12.1 | Ch Pp Plate Fit Up | 3h | 2018-08-24 15:30 | 2018-08-24 18:30 | 308 | 2018-08-24 15:30 | 2018-08-24 18:30 | 3h | 4d | 0d | TEAM_2Shift_Calendar-1 | Helper; SMAW Welder; Fitter [200%] | 12h | 768.75 | 768.75 |
| 318 | 1.10.12.2 | Ch Pp Plate Fit Up Inspection | 1h | 2018-08-24 18:30 | 2018-08-24 19:30 | 317 | 2018-08-24 18:30 | 2018-08-24 19:30 | 1h | 4d |  | TEAM_2Shift_Calendar-1 | Helper; Fitter | 2h | 118.75 | 118.75 |
| 319 | 1.10.13 | **Ch Pp Plate Welding** | 0.48d | 2018-08-24 19:30 | 2018-08-27 11:15 |  | 2018-08-24 19:30 | 2018-08-27 11:15 | 0.48d | 4d | 0d | TEAM_2Shift_Calendar-1 |  | 15.5h | 898.44 | 898.44 |
| 320 | 1.10.13.1 | Ch Pp Plate Welding | 6h | 2018-08-24 19:30 | 2018-08-27 09:30 | 316 | 2018-08-24 19:30 | 2018-08-27 09:30 | 6h | 4d | 0d | TEAM_2Shift_Calendar-1 | Helper; SMAW Welder | 12h | 712.5 | 712.5 |
| 321 | 1.10.13.2 | Ch Pp Plate Face Grinding | 1.75h | 2018-08-27 09:30 | 2018-08-27 11:15 | 320 | 2018-08-27 09:30 | 2018-08-27 11:15 | 1.75h | 4d |  | TEAM_2Shift_Calendar-1 | Helper; Grinder | 3.5h | 185.94 | 185.94 |
| 322 | 1.10.14 | **Channel Nde & Pwht** | 4.12d | 2018-08-27 11:15 | 2018-08-31 13:15 |  | 2018-08-27 11:15 | 2018-08-31 13:15 | 4.12d | 4d | 0d | TEAM_2Shift_Calendar-1 |  | 130h | 7,337.5 | 7,337.5 |
| 323 | 1.10.14.1 | Ch All Welding Dressup, DP Check, & SR | 4d | 2018-08-27 11:15 | 2018-08-31 11:15 | 319 | 2018-08-27 11:15 | 2018-08-31 11:15 | 4d | 4d | 0d | TEAM_2Shift_Calendar-1 | Grinder [200%] | 128h | 7,200 | 7,200 |
| 324 | 1.10.14.2 | Ch Ch Nde Clearence | 2h | 2018-08-31 11:15 | 2018-08-31 13:15 | 323 | 2018-08-31 11:15 | 2018-08-31 13:15 | 2h | 4d |  | TEAM_2Shift_Calendar-1 | Fitter | 2h | 137.5 | 137.5 |
| 325 | 1.10.15 | **Tube Exp- Pnuematic Test** | 1.31d | 2018-08-16 13:45 | 2018-08-17 18:45 |  | 2018-08-16 13:45 | 2018-08-17 18:45 | 1.31d | 4d | 0d | TEAM_2Shift_Calendar-1 |  | 78h | 4,593.75 | 4,593.75 |
| 326 | 1.10.15.1 | Tube Exp Pnuematic Test | 1d | 2018-08-16 13:45 | 2018-08-17 13:45 | 266 | 2018-08-16 13:45 | 2018-08-17 13:45 | 1d | 4d | 0d | TEAM_2Shift_Calendar-1 | Helper [200%]; Fitter [200%] | 64h | 3,800 | 3,800 |
| 327 | 1.10.15.2 | Pnuematic Test TPI Witness | 3h | 2018-08-17 13:45 | 2018-08-17 16:45 | 326 | 2018-08-17 13:45 | 2018-08-17 16:45 | 3h | 4d | 0d | TEAM_2Shift_Calendar-1 | Helper; Fitter | 6h | 356.25 | 356.25 |
| 328 | 1.10.15.3 | Cleaning | 2h | 2018-08-17 16:45 | 2018-08-17 18:45 | 327 | 2018-08-17 16:45 | 2018-08-17 18:45 | 2h | 4d |  | TEAM_2Shift_Calendar-1 | Helper [300%]; Fitter | 8h | 437.5 | 437.5 |
| 329 | 1.10.16 | **Shell Side Hydro** | 1.19d | 2018-08-31 13:15 | 2018-09-01 16:15 |  | 2018-08-31 13:15 | 2018-09-01 16:15 | 1.19d | 4d | 0d | TEAM_2Shift_Calendar-1 |  | 74h | 4,412.5 | 4,412.5 |
| 330 | 1.10.16.1 | Shell Side Hydro | 1d | 2018-08-31 13:15 | 2018-09-01 13:15 | 322, 325 | 2018-08-31 13:15 | 2018-09-01 13:15 | 1d | 4d | 0d | TEAM_2Shift_Calendar-1 | Helper [200%]; Fitter [200%] | 64h | 3,800 | 3,800 |
| 331 | 1.10.16.2 | Shell Side TPI Witness | 2h | 2018-09-01 13:15 | 2018-09-01 15:15 | 330 | 2018-09-01 13:15 | 2018-09-01 15:15 | 2h | 4d | 0d | TEAM_2Shift_Calendar-1 | Fitter [200%] | 4h | 275 | 275 |
| 332 | 1.10.16.3 | De Watering & Dismantle Of Gland | 1h | 2018-09-01 15:15 | 2018-09-01 16:15 | 331 | 2018-09-01 15:15 | 2018-09-01 16:15 | 1h | 4d |  | TEAM_2Shift_Calendar-1 | Helper [400%]; Fitter [200%] | 6h | 337.5 | 337.5 |
| 333 | 1.10.17 | **Channel Side Hydro** | 1.19d | 2018-09-01 16:15 | 2018-09-03 19:15 |  | 2018-09-01 16:15 | 2018-09-03 19:15 | 1.19d | 4d | 0d | TEAM_2Shift_Calendar-1 |  | 74h | 4,412.5 | 4,412.5 |
| 334 | 1.10.17.1 | Shell Side Hydro | 1d | 2018-09-01 16:15 | 2018-09-03 16:15 | 325, 329 | 2018-09-01 16:15 | 2018-09-03 16:15 | 1d | 4d | 0d | TEAM_2Shift_Calendar-1 | Helper [200%]; Fitter [200%] | 64h | 3,800 | 3,800 |
| 335 | 1.10.17.2 | Shell Side TPI Witness | 2h | 2018-09-03 16:15 | 2018-09-03 18:15 | 334 | 2018-09-03 16:15 | 2018-09-03 18:15 | 2h | 4d | 0d | TEAM_2Shift_Calendar-1 | Fitter [200%] | 4h | 275 | 275 |
| 336 | 1.10.17.3 | De Watering & Dismantle Of Gland | 1h | 2018-09-03 18:15 | 2018-09-03 19:15 | 335 | 2018-09-03 18:15 | 2018-09-03 19:15 | 1h | 4d |  | TEAM_2Shift_Calendar-1 | Helper [400%]; Fitter [200%] | 6h | 337.5 | 337.5 |
| 337 | 1.11 | **Final Testing** | 6.25d | 2018-09-03 19:15 | 2018-09-12 07:15 |  | 2018-09-03 19:15 | 2018-09-12 07:15 | 6.25d | 4d |  | TEAM_2Shift_Calendar-1 |  | 376h | 13,550 | 13,550 |
| 338 | 1.11.1 | **Final Hydro** | 2.25d | 2018-09-03 19:15 | 2018-09-06 07:15 |  | 2018-09-03 19:15 | 2018-09-06 07:15 | 2.25d | 4d | 0d | TEAM_2Shift_Calendar-1 |  | 136h | 8,150 | 8,150 |
| 339 | 1.11.1.1 | Final Hydro-CH Side | 1d | 2018-09-03 19:15 | 2018-09-04 19:15 | 270, 333 | 2018-09-03 19:15 | 2018-09-04 19:15 | 1d | 4d | 0d | TEAM_2Shift_Calendar-1 | Helper [200%]; Fitter [200%] | 64h | 3,800 | 3,800 |
| 340 | 1.11.1.2 | Final TPI Witness | 2h | 2018-09-04 19:15 | 2018-09-04 21:15 | 339 | 2018-09-04 19:15 | 2018-09-04 21:15 | 2h | 4d | 0d | TEAM_2Shift_Calendar-1 | Fitter [200%] | 4h | 275 | 275 |
| 341 | 1.11.1.3 | Final Hydro-SH Side | 1d | 2018-09-04 21:15 | 2018-09-05 21:15 | 340 | 2018-09-04 21:15 | 2018-09-05 21:15 | 1d | 4d | 0d | TEAM_2Shift_Calendar-1 | Helper [200%]; Fitter [200%] | 64h | 3,800 | 3,800 |
| 342 | 1.11.1.4 | Final TPI Witness | 2h | 2018-09-05 21:15 | 2018-09-06 07:15 | 341 | 2018-09-05 21:15 | 2018-09-06 07:15 | 2h | 4d |  | TEAM_2Shift_Calendar-1 | Fitter [200%] | 4h | 275 | 275 |

| ID | WBS | Task | Duration | Start | Finish | Predecessors | Baseline start | Baseline finish | Baseline duration | Total slack | Free slack | Calendar | Resources | Work | Cost | Baseline cost |
| --- | --- | --- | --- | --- | --- | --- | --- | --- | --- | --- | --- | --- | --- | --- | --- | --- |
| 343 | 1.11.2 | **Nitrogen Purging** | 1d | 2018-09-06 07:15 | 2018-09-07 07:15 |  | 2018-09-06 07:15 | 2018-09-07 07:15 | 1d | 4d | 0d | TEAM_2Shift_Calendar-1 |  | 96h | 5,400 | 5,400 |
| 344 | 1.11.2.1 | Blind & Nitrogen Purging | 1d | 2018-09-06 07:15 | 2018-09-07 07:15 | 338 | 2018-09-06 07:15 | 2018-09-07 07:15 | 1d | 4d |  | TEAM_2Shift_Calendar-1 | Helper [400%]; Fitter [200%] | 96h | 5,400 | 5,400 |
| 345 | 1.11.3 | **Painting** | 3d | 2018-09-07 07:15 | 2018-09-12 07:15 |  | 2018-09-07 07:15 | 2018-09-12 07:15 | 3d | 4d |  | TEAM_2Shift_Calendar-1 |  | 144h |  |  |
| 346 | 1.11.3.1 | Primer | 1d | 2018-09-07 07:15 | 2018-09-10 07:15 | 343 | 2018-09-07 07:15 | 2018-09-10 07:15 | 1d | 4d | 0d | TEAM_2Shift_Calendar-1 | Painter [300%] | 48h |  |  |
| 347 | 1.11.3.2 | Top Coat1 | 1d | 2018-09-10 07:15 | 2018-09-11 07:15 | 346 | 2018-09-10 07:15 | 2018-09-11 07:15 | 1d | 4d | 0d | TEAM_2Shift_Calendar-1 | Painter [300%] | 48h |  |  |
| 348 | 1.11.3.3 | Top Coat2 | 1d | 2018-09-11 07:15 | 2018-09-12 07:15 | 347 | 2018-09-11 07:15 | 2018-09-12 07:15 | 1d | 4d |  | TEAM_2Shift_Calendar-1 | Painter [300%] | 48h |  |  |
| 349 | 2 | **680-EE-1008** | 41d | 2018-06-02 17:30 | 2018-09-18 07:15 |  | 2018-05-11 17:30 | 2018-09-18 07:15 | 49.5d | 0d |  |  |  | 2667.35h | 121,449.69 | 121,449.69 |
| 350 | 2.1 | **Dish Forming - Od** | 6d | 2018-06-02 17:30 | 2018-06-19 06:30 |  | 2018-05-11 17:30 | 2018-05-29 06:30 | 6d | 28.72d | 0d |  |  | 162h | 5,509.38 | 5,509.38 |
| 351 | 2.1.1 | Bar Dish Blank Issuence | 4h | 2018-06-02 17:30 | 2018-06-02 21:30 | 2FS+47d | 2018-05-11 17:30 | 2018-05-11 21:30 | 4h | 57.66d | 0d | TEAM_2Shift_Calendar-1 | Plate (Cost) [0.1%]; Store | 4h |  |  |
| 352 | 2.1.2 | Bar-Dish Blank Marking10TXBLANK DIA 582 | 0.5h | 2018-06-02 21:30 | 2018-06-02 22:00 | 351 | 2018-05-11 21:30 | 2018-05-11 22:00 | 0.5h | 57.66d | 0d | TEAM_2Shift_Calendar-1 | Helper; Fitter | 1h | 59.38 | 59.38 |
| 353 | 2.1.3 | Bar-Dish Blank Marking Inspection | 4h | 2018-06-04 06:00 | 2018-06-04 10:00 | 352 | 2018-05-14 06:00 | 2018-05-14 10:00 | 4h | 57.66d | 0d | TEAM_2Shift_Calendar-1 | Helper; Fitter | 8h | 475 | 475 |
| 354 | 2.1.4 | Bar-Dish Blank Cutting | 5h | 2018-06-04 10:00 | 2018-06-04 15:00 | 353 | 2018-05-14 10:00 | 2018-05-14 15:00 | 5h | 57.66d | 0d | TEAM_2Shift_Calendar-1 | Helper; Gas Cutter | 10h | 593.75 | 593.75 |
| 355 | 2.1.5 | Bar-Dish Forming | 7h | 2018-06-04 15:00 | 2018-06-05 14:00 | 354 | 2018-05-14 15:00 | 2018-05-15 14:00 | 7h | 28.72d | 0d |  | SC (Work) | 7h |  |  |
| 356 | 2.1.6 | Profile Insp | 4h | 2018-06-05 14:00 | 2018-06-05 18:00 | 355 | 2018-05-15 14:00 | 2018-05-15 18:00 | 4h | 57.56d | 0d | TEAM_2Shift_Calendar-1 | Helper; Fitter | 8h | 475 | 475 |
| 357 | 2.1.7 | Heat Treatment Preparation | 1d | 2018-06-05 18:00 | 2018-06-06 18:00 | 356 | 2018-05-15 18:00 | 2018-05-16 18:00 | 1d | 57.56d | 0.41d | TEAM_2Shift_Calendar-1 | SMAW Welder; Fitter | 32h | 2,200 | 2,200 |
| 358 | 2.1.8 | Stress Releiving- Sub Cont | 4d | 2018-06-07 08:30 | 2018-06-16 17:30 | 357 | 2018-05-17 08:30 | 2018-05-25 17:30 | 4d | 28.66d | 0d |  | SC (Work) | 64h |  |  |
| 359 | 2.1.9 | Removal Of Spiders | 3h | 2018-06-16 17:30 | 2018-06-16 20:30 | 358 | 2018-05-25 17:30 | 2018-05-25 20:30 | 3h | 57.59d | 0d | TEAM_2Shift_Calendar-1 | Helper; Fitter | 6h | 356.25 | 356.25 |
| 360 | 2.1.10 | Surface Preparation | 4h | 2018-06-16 20:30 | 2018-06-18 08:30 | 359 | 2018-05-25 20:30 | 2018-05-28 08:30 | 4h | 57.59d | 0d | TEAM_2Shift_Calendar-1 | Grinder | 4h | 225 | 225 |
| 361 | 2.1.11 | Inspection | 3h | 2018-06-18 08:30 | 2018-06-18 11:30 | 360 | 2018-05-28 08:30 | 2018-05-28 11:30 | 3h | 57.59d | 0d | TEAM_2Shift_Calendar-1 | Fitter | 3h | 206.25 | 206.25 |
| 362 | 2.1.12 | TPI Inspection | 4h | 2018-06-18 11:30 | 2018-06-18 15:30 | 361 | 2018-05-28 11:30 | 2018-05-28 15:30 | 4h | 57.59d | 0d | TEAM_2Shift_Calendar-1 | Fitter | 4h | 275 | 275 |
| 363 | 2.1.13 | Sf Marking | 2h | 2018-06-18 15:30 | 2018-06-18 17:30 | 362 | 2018-05-28 15:30 | 2018-05-28 17:30 | 2h | 57.59d | 0d | TEAM_2Shift_Calendar-1 | Helper; Fitter | 4h | 237.5 | 237.5 |
| 364 | 2.1.14 | Sf Cutting | 2h | 2018-06-18 17:30 | 2018-06-18 19:30 | 363 | 2018-05-28 17:30 | 2018-05-28 19:30 | 2h | 57.59d | 0d | TEAM_2Shift_Calendar-1 | Helper; Gas Cutter | 4h | 237.5 | 237.5 |
| 365 | 2.1.15 | Sf Gridning & EP | 3h | 2018-06-18 19:30 | 2018-06-19 06:30 | 364 | 2018-05-28 19:30 | 2018-05-29 06:30 | 3h | 57.59d |  | TEAM_2Shift_Calendar-1 | Grinder | 3h | 168.75 | 168.75 |
| 366 | 2.2 | **Dish Forming - Od** | 12.5d | 2018-06-02 17:30 | 2018-07-05 06:30 |  | 2018-05-11 17:30 | 2018-06-14 06:30 | 12.5d | 28.5d |  |  |  | 146h | 3,309.38 | 3,309.38 |
| 367 | 2.2.1 | Bar Dish Blank Issuence | 4h | 2018-06-02 17:30 | 2018-06-02 21:30 | 2FS+47d | 2018-05-11 17:30 | 2018-05-11 21:30 | 4h | 82.11d |  | TEAM_2Shift_Calendar-1 | Plate (Cost) [0.1%]; Store | 4h |  |  |
| 368 | 2.2.2 | Bar-Dish Blank Marking10TXBLANK DIA 582 | 0.5h | 2018-06-19 06:30 | 2018-06-19 07:00 | 350 | 2018-05-29 06:30 | 2018-05-29 07:00 | 0.5h | 57.59d | 0d | TEAM_2Shift_Calendar-1 | Helper; Fitter | 1h | 59.38 | 59.38 |
| 369 | 2.2.3 | Bar-Dish Blank Marking Inspection | 4h | 2018-06-19 07:00 | 2018-06-19 11:00 | 368 | 2018-05-29 07:00 | 2018-05-29 11:00 | 4h | 57.59d | 0d | TEAM_2Shift_Calendar-1 | Helper; Fitter | 8h | 475 | 475 |
| 370 | 2.2.4 | Bar-Dish Blank Cutting | 5h | 2018-06-19 11:00 | 2018-06-19 16:00 | 369 | 2018-05-29 11:00 | 2018-05-29 16:00 | 5h | 57.59d | 0d | TEAM_2Shift_Calendar-1 | Helper; Gas Cutter | 10h | 593.75 | 593.75 |
| 371 | 2.2.5 | Bar-Dish Forming | 7h | 2018-06-19 16:00 | 2018-06-20 15:00 | 370 | 2018-05-29 16:00 | 2018-05-30 15:00 | 7h | 28.66d | 0d |  | SC (Work) | 7h |  |  |
| 372 | 2.2.6 | Profile Insp | 4h | 2018-06-20 15:00 | 2018-06-20 19:00 | 371 | 2018-05-30 15:00 | 2018-05-30 19:00 | 4h | 57.34d | 0.34d | TEAM_2Shift_Calendar-1 | Helper; Fitter | 8h | 475 | 475 |
| 373 | 2.2.7 | Heat Treatment Preparation | 1d | 2018-06-21 08:30 | 2018-06-22 17:30 | 372 | 2018-05-31 08:30 | 2018-06-01 17:30 | 1d | 28.5d | 0d |  | SC (Work) | 16h |  |  |
| 374 | 2.2.8 | Stress Releiving- Sub Cont | 4d | 2018-06-25 08:30 | 2018-07-03 17:30 | 373 | 2018-06-02 08:30 | 2018-06-12 17:30 | 4d | 28.5d | 0d |  | SC (Work) | 64h |  |  |
| 375 | 2.2.9 | Removal Of Spiders | 3h | 2018-07-03 17:30 | 2018-07-03 20:30 | 374 | 2018-06-12 17:30 | 2018-06-12 20:30 | 3h | 57.05d | 0d | TEAM_2Shift_Calendar-1 | Helper; Fitter | 6h | 356.25 | 356.25 |
| 376 | 2.2.10 | Surface Preparation | 4h | 2018-07-03 20:30 | 2018-07-04 08:30 | 375 | 2018-06-12 20:30 | 2018-06-13 08:30 | 4h | 57.05d | 0d | TEAM_2Shift_Calendar-1 | Grinder | 4h | 225 | 225 |
| 377 | 2.2.11 | Inspection | 3h | 2018-07-04 08:30 | 2018-07-04 11:30 | 376 | 2018-06-13 08:30 | 2018-06-13 11:30 | 3h | 57.05d | 0d | TEAM_2Shift_Calendar-1 | Fitter | 3h | 206.25 | 206.25 |
| 378 | 2.2.12 | TPI Inspection | 4h | 2018-07-04 11:30 | 2018-07-04 15:30 | 377 | 2018-06-13 11:30 | 2018-06-13 15:30 | 4h | 57.05d | 0d | TEAM_2Shift_Calendar-1 | Fitter | 4h | 275 | 275 |
| 379 | 2.2.13 | Sf Marking | 2h | 2018-07-04 15:30 | 2018-07-04 17:30 | 378 | 2018-06-13 15:30 | 2018-06-13 17:30 | 2h | 57.05d | 0d | TEAM_2Shift_Calendar-1 | Helper; Fitter | 4h | 237.5 | 237.5 |
| 380 | 2.2.14 | Sf Cutting | 2h | 2018-07-04 17:30 | 2018-07-04 19:30 | 379 | 2018-06-13 17:30 | 2018-06-13 19:30 | 2h | 57.05d | 0d | TEAM_2Shift_Calendar-1 | Helper; Gas Cutter | 4h | 237.5 | 237.5 |
| 381 | 2.2.15 | Sf Gridning & EP | 3h | 2018-07-04 19:30 | 2018-07-05 06:30 | 380 | 2018-06-13 19:30 | 2018-06-14 06:30 | 3h | 57.05d |  | TEAM_2Shift_Calendar-1 | Grinder | 3h | 168.75 | 168.75 |

| ID | WBS | Task | Duration | Start | Finish | Predecessors | Baseline start | Baseline finish | Baseline duration | Total slack | Free slack | Calendar | Resources | Work | Cost | Baseline cost |
| --- | --- | --- | --- | --- | --- | --- | --- | --- | --- | --- | --- | --- | --- | --- | --- | --- |
| 382 | 2.3 | **Tube Sheet** | 11.5d | 2018-06-30 17:30 | 2018-07-30 21:30 |  | 2018-06-30 17:30 | 2018-07-30 21:30 | 11.5d | 0d |  |  |  | 144h | 475 | 475 |
| 383 | 2.3.1 | **Tube Sheet Machining** | 3.62d | 2018-06-30 17:30 | 2018-07-10 10:30 |  | 2018-06-30 17:30 | 2018-07-10 10:30 | 3.62d | 0d |  |  |  | 10h |  |  |
| 384 | 2.3.1.1 | Inward Inspection | 11h | 2018-06-30 17:30 | 2018-07-02 12:30 | 2FS+69d | 2018-06-30 17:30 | 2018-07-02 12:30 | 11h | 0.06d |  | TEAM_2Shift_Calendar-1 | Tube Sheet (Cost) [0.1%]; QC Engineer | 4h |  |  |
| 385 | 2.3.1.2 | Tube Sheet M/C | 6h | 2018-07-02 13:30 | 2018-07-03 10:30 | 384 | 2018-07-02 13:30 | 2018-07-03 10:30 | 6h | 0d |  |  | SC (Work) | 6h |  |  |
| 386 | 2.3.1.3 | Dummy Activity | 6d | 2018-07-03 10:30 | 2018-07-10 10:30 | 385 | 2018-07-03 10:30 | 2018-07-10 10:30 | 6d | 0d |  | TEAM_2Shift_Calendar-1 |  |  |  |  |
| 387 | 2.3.2 | **Tube Sheet Drilling** | 7.88d | 2018-07-10 10:30 | 2018-07-30 21:30 |  | 2018-07-10 10:30 | 2018-07-30 21:30 | 7.88d | 0d |  |  |  | 134h | 475 | 475 |
| 388 | 2.3.2.1 | Tube Sheet Drilling | 7d | 2018-07-10 10:30 | 2018-07-27 10:30 | 383 | 2018-07-10 10:30 | 2018-07-27 10:30 | 7d | 0d |  |  | SC (Work) | 112h |  |  |
| 389 | 2.3.2.2 | Exp Groove+Welding Groove | 4h | 2018-07-27 10:30 | 2018-07-27 15:30 | 388 | 2018-07-27 10:30 | 2018-07-27 15:30 | 4h | 0d |  |  | SC (Work) | 4h |  |  |
| 390 | 2.3.2.3 | Tie Rod, Pulling, Lifting Hole | 4h | 2018-07-27 15:30 | 2018-07-30 10:30 | 389 | 2018-07-27 15:30 | 2018-07-30 10:30 | 4h | 0d |  |  | SC (Work) | 4h |  |  |
| 391 | 2.3.2.4 | Pass Partition Groove M/C | 6h | 2018-07-30 10:30 | 2018-07-30 17:30 | 390 | 2018-07-30 10:30 | 2018-07-30 17:30 | 6h | 0d |  |  | SC (Work) | 6h |  |  |
| 392 | 2.3.2.5 | Cleaning ,Go/No Go Check | 2h | 2018-07-30 17:30 | 2018-07-30 19:30 | 391 | 2018-07-30 17:30 | 2018-07-30 19:30 | 2h | 0d |  | TEAM_2Shift_Calendar-1 | Helper; Fitter | 4h | 237.5 | 237.5 |
| 393 | 2.3.2.6 | Final Inspection | 2h | 2018-07-30 19:30 | 2018-07-30 21:30 | 392 | 2018-07-30 19:30 | 2018-07-30 21:30 | 2h | 0d |  | TEAM_2Shift_Calendar-1 | Helper; Fitter | 4h | 237.5 | 237.5 |
| 394 | 2.4 | **Nozzle Fab** | 7.36d | 2018-06-02 17:30 | 2018-06-13 07:15 |  | 2018-05-11 17:30 | 2018-05-22 07:15 | 7.36d | 75d |  | TEAM_2Shift_Calendar-1 |  | 258h | 15,220.32 | 15,220.32 |
| 395 | 2.4.1 | **Sh Nozzel Pipe Marking** | 0.3d | 2018-06-02 17:30 | 2018-06-04 06:15 |  | 2018-05-11 17:30 | 2018-05-14 06:15 | 0.3d | 75d | 0d | TEAM_2Shift_Calendar-1 |  | 9.5h | 564.06 | 564.06 |
| 396 | 2.4.1.1 | 6" Nozzle-2 Nos | 1.75h | 2018-06-02 17:30 | 2018-06-02 19:15 | 2FS+47d | 2018-05-11 17:30 | 2018-05-11 19:15 | 1.75h | 75d | 0d | TEAM_2Shift_Calendar-1 | Helper; Forging Std (Cost); Pipe (Cost); Fitter | 3.5h | 207.81 | 207.81 |
| 397 | 2.4.1.2 | 1.5" NB Mp Con - 2 Nos | 2h | 2018-06-02 19:15 | 2018-06-02 21:15 | 396 | 2018-05-11 19:15 | 2018-05-11 21:15 | 2h | 75d | 0d | TEAM_2Shift_Calendar-1 | Helper; Fitter | 4h | 237.5 | 237.5 |
| 398 | 2.4.1.3 | Inspection | 1h | 2018-06-02 21:15 | 2018-06-04 06:15 | 397 | 2018-05-11 21:15 | 2018-05-14 06:15 | 1h | 75d |  | TEAM_2Shift_Calendar-1 | Helper; Fitter | 2h | 118.75 | 118.75 |
| 399 | 2.4.2 | **Sh Nozzel Pipe Cutting** | 0.88d | 2018-06-04 06:15 | 2018-06-04 20:15 |  | 2018-05-14 06:15 | 2018-05-14 20:15 | 0.88d | 75d | 0d | TEAM_2Shift_Calendar-1 |  | 28h | 1,662.5 | 1,662.5 |
| 400 | 2.4.2.1 | 6" Nozzle-2 Nos | 11h | 2018-06-04 06:15 | 2018-06-04 17:15 | 395 | 2018-05-14 06:15 | 2018-05-14 17:15 | 11h | 75d | 0d | TEAM_2Shift_Calendar-1 | Helper; Gas Cutter | 22h | 1,306.25 | 1,306.25 |
| 401 | 2.4.2.2 | 1.5" NB Mp Con - 2 Nos | 2h | 2018-06-04 17:15 | 2018-06-04 19:15 | 400 | 2018-05-14 17:15 | 2018-05-14 19:15 | 2h | 75d | 0d | TEAM_2Shift_Calendar-1 | Helper; Gas Cutter | 4h | 237.5 | 237.5 |
| 402 | 2.4.2.3 | Inspection | 1h | 2018-06-04 19:15 | 2018-06-04 20:15 | 401 | 2018-05-14 19:15 | 2018-05-14 20:15 | 1h | 75d |  | TEAM_2Shift_Calendar-1 | Helper; Gas Cutter | 2h | 118.75 | 118.75 |
| 403 | 2.4.3 | **Sh Nozzel Pipe EP** | 0.38d | 2018-06-04 20:15 | 2018-06-05 10:15 |  | 2018-05-14 20:15 | 2018-05-15 10:15 | 0.38d | 75d | 0d | TEAM_2Shift_Calendar-1 |  | 12h | 712.5 | 712.5 |
| 404 | 2.4.3.1 | 6" Nozzle-2 Nos | 3h | 2018-06-04 20:15 | 2018-06-05 07:15 | 399 | 2018-05-14 20:15 | 2018-05-15 07:15 | 3h | 75d | 0d | TEAM_2Shift_Calendar-1 | Helper; Gas Cutter | 6h | 356.25 | 356.25 |
| 405 | 2.4.3.2 | 1.5" NB Mp Con - 2 Nos | 2h | 2018-06-05 07:15 | 2018-06-05 09:15 | 404 | 2018-05-15 07:15 | 2018-05-15 09:15 | 2h | 75d | 0d | TEAM_2Shift_Calendar-1 | Helper; Gas Cutter | 4h | 237.5 | 237.5 |
| 406 | 2.4.3.3 | Inspection | 1h | 2018-06-05 09:15 | 2018-06-05 10:15 | 405 | 2018-05-15 09:15 | 2018-05-15 10:15 | 1h | 75d |  | TEAM_2Shift_Calendar-1 | Helper; Gas Cutter | 2h | 118.75 | 118.75 |

| ID | WBS | Task | Duration | Start | Finish | Predecessors | Baseline start | Baseline finish | Baseline duration | Total slack | Free slack | Calendar | Resources | Work | Cost | Baseline cost |
| --- | --- | --- | --- | --- | --- | --- | --- | --- | --- | --- | --- | --- | --- | --- | --- | --- |
| 407 | 2.4.4 | **Sh Noz+Flg Fiitup** | 0.34d | 2018-06-05 10:15 | 2018-06-05 15:45 |  | 2018-05-15 10:15 | 2018-05-15 15:45 | 0.34d | 75d | 0d | TEAM_2Shift_Calendar-1 |  | 22h | 1,409.38 | 1,409.38 |
| 408 | 2.4.4.1 | 6" Nozzle-2 Nos | 3h | 2018-06-05 10:15 | 2018-06-05 13:15 | 403 | 2018-05-15 10:15 | 2018-05-15 13:15 | 3h | 75d | 0d | TEAM_2Shift_Calendar-1 | SMAW Welder; Helper; Fitter [200%] | 12h | 768.75 | 768.75 |
| 409 | 2.4.4.2 | 1.5" NB Mp Con - 2 Nos | 2h | 2018-06-05 13:15 | 2018-06-05 15:15 | 408 | 2018-05-15 13:15 | 2018-05-15 15:15 | 2h | 75d | 0d | TEAM_2Shift_Calendar-1 | SMAW Welder; Helper; Fitter [200%] | 8h | 512.5 | 512.5 |
| 410 | 2.4.4.3 | Inspection | 0.5h | 2018-06-05 15:15 | 2018-06-05 15:45 | 409 | 2018-05-15 15:15 | 2018-05-15 15:45 | 0.5h | 75d |  | TEAM_2Shift_Calendar-1 | SMAW Welder; Helper; Fitter [200%] | 2h | 128.13 | 128.13 |
| 411 | 2.4.5 | **Sh Nozzel Pipe+Flg Welding** | 0.44d | 2018-06-05 15:45 | 2018-06-06 06:45 |  | 2018-05-15 15:45 | 2018-05-16 06:45 | 0.44d | 75d | 0d | TEAM_2Shift_Calendar-1 |  | 14h | 831.25 | 831.25 |
| 412 | 2.4.5.1 | 6" Nozzle-2 Nos | 3h | 2018-06-05 15:45 | 2018-06-05 18:45 | 407 | 2018-05-15 15:45 | 2018-05-15 18:45 | 3h | 75d | 0d | TEAM_2Shift_Calendar-1 | Helper; SMAW Welder | 6h | 356.25 | 356.25 |
| 413 | 2.4.5.2 | 1.5" NB Mp Con - 2 Nos | 3h | 2018-06-05 18:45 | 2018-06-05 21:45 | 412 | 2018-05-15 18:45 | 2018-05-15 21:45 | 3h | 75d | 0d | TEAM_2Shift_Calendar-1 | Helper; SMAW Welder | 6h | 356.25 | 356.25 |
| 414 | 2.4.5.3 | Inspection | 1h | 2018-06-05 21:45 | 2018-06-06 06:45 | 413 | 2018-05-15 21:45 | 2018-05-16 06:45 | 1h | 75d |  | TEAM_2Shift_Calendar-1 | Helper; SMAW Welder | 2h | 118.75 | 118.75 |
| 415 | 2.4.6 | **Sh Nozzel Pipe Profile Marking** | 0.34d | 2018-06-06 06:45 | 2018-06-06 12:15 |  | 2018-05-16 06:45 | 2018-05-16 12:15 | 0.34d | 75d | 0d | TEAM_2Shift_Calendar-1 |  | 11h | 653.12 | 653.12 |
| 416 | 2.4.6.1 | 6" Nozzle-2 Nos | 3h | 2018-06-06 06:45 | 2018-06-06 09:45 | 411 | 2018-05-16 06:45 | 2018-05-16 09:45 | 3h | 75d | 0d | TEAM_2Shift_Calendar-1 | Helper; Fitter | 6h | 356.25 | 356.25 |
| 417 | 2.4.6.2 | 1.5" NB Mp Con - 2 Nos | 2h | 2018-06-06 09:45 | 2018-06-06 11:45 | 416 | 2018-05-16 09:45 | 2018-05-16 11:45 | 2h | 75d | 0d | TEAM_2Shift_Calendar-1 | Helper; Fitter | 4h | 237.5 | 237.5 |
| 418 | 2.4.6.3 | Inspection | 0.5h | 2018-06-06 11:45 | 2018-06-06 12:15 | 417 | 2018-05-16 11:45 | 2018-05-16 12:15 | 0.5h | 75d |  | TEAM_2Shift_Calendar-1 | Helper; Fitter | 1h | 59.38 | 59.38 |
| 419 | 2.4.7 | **Sh Nozzle Pipe Profile Cutting** | 0.38d | 2018-06-06 12:15 | 2018-06-06 18:15 |  | 2018-05-16 12:15 | 2018-05-16 18:15 | 0.38d | 75d | 0d | TEAM_2Shift_Calendar-1 |  | 12h | 637.5 | 637.5 |
| 420 | 2.4.7.1 | 6" Nozzle-2 Nos | 3h | 2018-06-06 12:15 | 2018-06-06 15:15 | 415 | 2018-05-16 12:15 | 2018-05-16 15:15 | 3h | 75d | 0d | TEAM_2Shift_Calendar-1 | Helper; Grinder | 6h | 318.75 | 318.75 |
| 421 | 2.4.7.2 | 1.5" NB Mp Con - 2 Nos | 2h | 2018-06-06 15:15 | 2018-06-06 17:15 | 420 | 2018-05-16 15:15 | 2018-05-16 17:15 | 2h | 75d | 0d | TEAM_2Shift_Calendar-1 | Helper; Grinder | 4h | 212.5 | 212.5 |
| 422 | 2.4.7.3 | Inspection | 1h | 2018-06-06 17:15 | 2018-06-06 18:15 | 421 | 2018-05-16 17:15 | 2018-05-16 18:15 | 1h | 75d |  | TEAM_2Shift_Calendar-1 | Helper; Grinder | 2h | 106.25 | 106.25 |
| 423 | 2.4.8 | **Sh Nozzle Pipe Profile EP** | 0.38d | 2018-06-06 18:15 | 2018-06-07 08:15 |  | 2018-05-16 18:15 | 2018-05-17 08:15 | 0.38d | 75d | 0d | TEAM_2Shift_Calendar-1 |  | 12h | 637.5 | 637.5 |
| 424 | 2.4.8.1 | 6" Nozzle-2 Nos | 3h | 2018-06-06 18:15 | 2018-06-06 21:15 | 419 | 2018-05-16 18:15 | 2018-05-16 21:15 | 3h | 75d | 0d | TEAM_2Shift_Calendar-1 | Helper; Grinder | 6h | 318.75 | 318.75 |
| 425 | 2.4.8.2 | 1.5" NB Mp Con - 2 Nos | 2h | 2018-06-06 21:15 | 2018-06-07 07:15 | 424 | 2018-05-16 21:15 | 2018-05-17 07:15 | 2h | 75d | 0d | TEAM_2Shift_Calendar-1 | Helper; Grinder | 4h | 212.5 | 212.5 |
| 426 | 2.4.8.3 | Inspection | 1h | 2018-06-07 07:15 | 2018-06-07 08:15 | 425 | 2018-05-17 07:15 | 2018-05-17 08:15 | 1h | 75d |  | TEAM_2Shift_Calendar-1 | Helper; Grinder | 2h | 106.25 | 106.25 |
| 427 | 2.4.9 | **Ch Nozzel Pipe Marking** | 0.36d | 2018-06-07 08:15 | 2018-06-07 14:00 |  | 2018-05-17 08:15 | 2018-05-17 14:00 | 0.36d | 75d | 0d | TEAM_2Shift_Calendar-1 |  | 11.5h | 682.81 | 682.81 |
| 428 | 2.4.9.1 | 4"Nozzle-1No | 1.25h | 2018-06-07 08:15 | 2018-06-07 09:30 | 423 | 2018-05-17 08:15 | 2018-05-17 09:30 | 1.25h | 75d | 0d | TEAM_2Shift_Calendar-1 | Helper; Fitter | 2.5h | 148.44 | 148.44 |
| 429 | 2.4.9.2 | 2"Nozzle-1No | 1.5h | 2018-06-07 09:30 | 2018-06-07 11:00 | 428 | 2018-05-17 09:30 | 2018-05-17 11:00 | 1.5h | 75d | 0d | TEAM_2Shift_Calendar-1 | Helper; Fitter | 3h | 178.12 | 178.12 |
| 430 | 2.4.9.3 | 1.5" NB Mp Con - 2 Nos | 2h | 2018-06-07 11:00 | 2018-06-07 13:00 | 429 | 2018-05-17 11:00 | 2018-05-17 13:00 | 2h | 75d | 0d | TEAM_2Shift_Calendar-1 | Helper; Fitter | 4h | 237.5 | 237.5 |
| 431 | 2.4.9.4 | Inspection | 1h | 2018-06-07 13:00 | 2018-06-07 14:00 | 430 | 2018-05-17 13:00 | 2018-05-17 14:00 | 1h | 75d |  | TEAM_2Shift_Calendar-1 | Helper; Fitter | 2h | 118.75 | 118.75 |

| ID | WBS | Task | Duration | Start | Finish | Predecessors | Baseline start | Baseline finish | Baseline duration | Total slack | Free slack | Calendar | Resources | Work | Cost | Baseline cost |
| --- | --- | --- | --- | --- | --- | --- | --- | --- | --- | --- | --- | --- | --- | --- | --- | --- |
| 432 | 2.4.10 | **Ch Nozzel Pipe Cutting** | 0.44d | 2018-06-07 14:00 | 2018-06-07 21:00 |  | 2018-05-17 14:00 | 2018-05-17 21:00 | 0.44d | 75d | 0d | TEAM_2Shift_Calendar-1 |  | 14h | 831.25 | 831.25 |
| 433 | 2.4.10.1 | 4"Nozzle-1No | 1.5h | 2018-06-07 14:00 | 2018-06-07 15:30 | 427 | 2018-05-17 14:00 | 2018-05-17 15:30 | 1.5h | 75d | 0d | TEAM_2Shift_Calendar-1 | Helper; Gas Cutter | 3h | 178.12 | 178.12 |
| 434 | 2.4.10.2 | 2"Nozzle-1No | 1.5h | 2018-06-07 15:30 | 2018-06-07 17:00 | 433 | 2018-05-17 15:30 | 2018-05-17 17:00 | 1.5h | 75d | 0d | TEAM_2Shift_Calendar-1 | Helper; Gas Cutter | 3h | 178.12 | 178.12 |
| 435 | 2.4.10.3 | 1.5" NB Mp Con - 2 Nos | 3h | 2018-06-07 17:00 | 2018-06-07 20:00 | 434 | 2018-05-17 17:00 | 2018-05-17 20:00 | 3h | 75d | 0d | TEAM_2Shift_Calendar-1 | Helper; Gas Cutter | 6h | 356.25 | 356.25 |
| 436 | 2.4.10.4 | Inspection | 1h | 2018-06-07 20:00 | 2018-06-07 21:00 | 435 | 2018-05-17 20:00 | 2018-05-17 21:00 | 1h | 75d |  | TEAM_2Shift_Calendar-1 | Helper; Gas Cutter | 2h | 118.75 | 118.75 |
| 437 | 2.4.11 | **Ch Nozzel Pipe EP** | 0.44d | 2018-06-07 21:00 | 2018-06-08 12:00 |  | 2018-05-17 21:00 | 2018-05-18 12:00 | 0.44d | 75d | 0d | TEAM_2Shift_Calendar-1 |  | 14h | 743.75 | 743.75 |
| 438 | 2.4.11.1 | 4"Nozzle-1No | 1.5h | 2018-06-07 21:00 | 2018-06-08 06:30 | 432 | 2018-05-17 21:00 | 2018-05-18 06:30 | 1.5h | 75d | 0d | TEAM_2Shift_Calendar-1 | Helper; Grinder | 3h | 159.38 | 159.38 |
| 439 | 2.4.11.2 | 2"Nozzle-1No | 1.5h | 2018-06-08 06:30 | 2018-06-08 08:00 | 438 | 2018-05-18 06:30 | 2018-05-18 08:00 | 1.5h | 75d | 0d | TEAM_2Shift_Calendar-1 | Helper; Grinder | 3h | 159.38 | 159.38 |
| 440 | 2.4.11.3 | 1.5" NB Mp Con - 2 Nos | 3h | 2018-06-08 08:00 | 2018-06-08 11:00 | 439 | 2018-05-18 08:00 | 2018-05-18 11:00 | 3h | 75d | 0d | TEAM_2Shift_Calendar-1 | Helper; Grinder | 6h | 318.75 | 318.75 |
| 441 | 2.4.11.4 | Inspection | 1h | 2018-06-08 11:00 | 2018-06-08 12:00 | 440 | 2018-05-18 11:00 | 2018-05-18 12:00 | 1h | 75d |  | TEAM_2Shift_Calendar-1 | Helper; Grinder | 2h | 106.25 | 106.25 |
| 442 | 2.4.12 | **Ch Noz+Flg Fit Up** | 0.36d | 2018-06-08 12:00 | 2018-06-08 17:45 |  | 2018-05-18 12:00 | 2018-05-18 17:45 | 0.36d | 75d | 0d | TEAM_2Shift_Calendar-1 |  | 23h | 1,473.43 | 1,473.43 |
| 443 | 2.4.12.1 | 4"Nozzle-1No | 1.25h | 2018-06-08 12:00 | 2018-06-08 13:15 | 437 | 2018-05-18 12:00 | 2018-05-18 13:15 | 1.25h | 75d | 0d | TEAM_2Shift_Calendar-1 | SMAW Welder; Helper; Fitter [200%] | 5h | 320.31 | 320.31 |
| 444 | 2.4.12.2 | 2"Nozzle-1No | 1.5h | 2018-06-08 13:15 | 2018-06-08 14:45 | 443 | 2018-05-18 13:15 | 2018-05-18 14:45 | 1.5h | 75d | 0d | TEAM_2Shift_Calendar-1 | SMAW Welder; Helper; Fitter [200%] | 6h | 384.37 | 384.37 |
| 445 | 2.4.12.3 | 1.5" NB Mp Con - 2 Nos | 2h | 2018-06-08 14:45 | 2018-06-08 16:45 | 444 | 2018-05-18 14:45 | 2018-05-18 16:45 | 2h | 75d | 0d | TEAM_2Shift_Calendar-1 | SMAW Welder; Helper; Fitter [200%] | 8h | 512.5 | 512.5 |
| 446 | 2.4.12.4 | Inspection | 1h | 2018-06-08 16:45 | 2018-06-08 17:45 | 445 | 2018-05-18 16:45 | 2018-05-18 17:45 | 1h | 75d |  | TEAM_2Shift_Calendar-1 | SMAW Welder; Helper; Fitter [200%] | 4h | 256.25 | 256.25 |
| 447 | 2.4.13 | **Ch Nozzel Pipe+Flg Welding** | 1d | 2018-06-08 17:45 | 2018-06-11 17:45 |  | 2018-05-18 17:45 | 2018-05-19 17:45 | 1d | 75d | 0d | TEAM_2Shift_Calendar-1 |  | 32h | 1,900 | 1,900 |
| 448 | 2.4.13.1 | 4"Nozzle-1No | 6h | 2018-06-08 17:45 | 2018-06-11 07:45 | 442 | 2018-05-18 17:45 | 2018-05-19 07:45 | 6h | 75d | 0d | TEAM_2Shift_Calendar-1 | Helper; SMAW Welder | 12h | 712.5 | 712.5 |
| 449 | 2.4.13.2 | 2"Nozzle-1No | 6h | 2018-06-11 07:45 | 2018-06-11 13:45 | 448 | 2018-05-19 07:45 | 2018-05-19 13:45 | 6h | 75d | 0d | TEAM_2Shift_Calendar-1 | Helper; SMAW Welder | 12h | 712.5 | 712.5 |
| 450 | 2.4.13.3 | 1.5" NB Mp Con - 2 Nos | 3h | 2018-06-11 13:45 | 2018-06-11 16:45 | 449 | 2018-05-19 13:45 | 2018-05-19 16:45 | 3h | 75d | 0d | TEAM_2Shift_Calendar-1 | Helper; SMAW Welder | 6h | 356.25 | 356.25 |
| 451 | 2.4.13.4 | Inspection | 1h | 2018-06-11 16:45 | 2018-06-11 17:45 | 450 | 2018-05-19 16:45 | 2018-05-19 17:45 | 1h | 75d |  | TEAM_2Shift_Calendar-1 | Helper; SMAW Welder | 2h | 118.75 | 118.75 |
| 452 | 2.4.14 | **Ch Nozzel Pipe Profile Marking** | 0.62d | 2018-06-11 17:45 | 2018-06-12 11:45 |  | 2018-05-19 17:45 | 2018-05-21 11:45 | 0.62d | 75d | 0d | TEAM_2Shift_Calendar-1 |  | 20h | 1,187.5 | 1,187.5 |
| 453 | 2.4.14.1 | 4"Nozzle-1No | 3h | 2018-06-11 17:45 | 2018-06-11 20:45 | 447 | 2018-05-19 17:45 | 2018-05-19 20:45 | 3h | 75d | 0d | TEAM_2Shift_Calendar-1 | Helper; Fitter | 6h | 356.25 | 356.25 |
| 454 | 2.4.14.2 | 2"Nozzle-1No | 3h | 2018-06-11 20:45 | 2018-06-12 07:45 | 453 | 2018-05-19 20:45 | 2018-05-21 07:45 | 3h | 75d | 0d | TEAM_2Shift_Calendar-1 | Helper; Fitter | 6h | 356.25 | 356.25 |
| 455 | 2.4.14.3 | 1.5" NB Mp Con - 2 Nos | 3h | 2018-06-12 07:45 | 2018-06-12 10:45 | 454 | 2018-05-21 07:45 | 2018-05-21 10:45 | 3h | 75d | 0d | TEAM_2Shift_Calendar-1 | Helper; Fitter | 6h | 356.25 | 356.25 |
| 456 | 2.4.14.4 | Inspection | 1h | 2018-06-12 10:45 | 2018-06-12 11:45 | 455 | 2018-05-21 10:45 | 2018-05-21 11:45 | 1h | 75d |  | TEAM_2Shift_Calendar-1 | Helper; Fitter | 2h | 118.75 | 118.75 |

| ID | WBS | Task | Duration | Start | Finish | Predecessors | Baseline start | Baseline finish | Baseline duration | Total slack | Free slack | Calendar | Resources | Work | Cost | Baseline cost |
| --- | --- | --- | --- | --- | --- | --- | --- | --- | --- | --- | --- | --- | --- | --- | --- | --- |
| 457 | 2.4.15 | **Ch Nozzle Pipe Profile Cutting** | 0.36d | 2018-06-12 11:45 | 2018-06-12 17:30 |  | 2018-05-21 11:45 | 2018-05-21 17:30 | 0.36d | 75d | 0d | TEAM_2Shift_Calendar-1 |  | 11.5h | 682.81 | 682.81 |
| 458 | 2.4.15.1 | 4"Nozzle-1No | 1.25h | 2018-06-12 11:45 | 2018-06-12 13:00 | 452 | 2018-05-21 11:45 | 2018-05-21 13:00 | 1.25h | 75d | 0d | TEAM_2Shift_Calendar-1 | Helper; Fitter | 2.5h | 148.44 | 148.44 |
| 459 | 2.4.15.2 | 2"Nozzle-1No | 1.5h | 2018-06-12 13:00 | 2018-06-12 14:30 | 458 | 2018-05-21 13:00 | 2018-05-21 14:30 | 1.5h | 75d | 0d | TEAM_2Shift_Calendar-1 | Helper; Fitter | 3h | 178.12 | 178.12 |
| 460 | 2.4.15.3 | 1.5" NB Mp Con - 2 Nos | 2h | 2018-06-12 14:30 | 2018-06-12 16:30 | 459 | 2018-05-21 14:30 | 2018-05-21 16:30 | 2h | 75d | 0d | TEAM_2Shift_Calendar-1 | Helper; Fitter | 4h | 237.5 | 237.5 |
| 461 | 2.4.15.4 | Inspection | 1h | 2018-06-12 16:30 | 2018-06-12 17:30 | 460 | 2018-05-21 16:30 | 2018-05-21 17:30 | 1h | 75d |  | TEAM_2Shift_Calendar-1 | Helper; Fitter | 2h | 118.75 | 118.75 |
| 462 | 2.4.16 | **Ch Nozzle Pipe Profile EP** | 0.36d | 2018-06-12 17:30 | 2018-06-13 07:15 |  | 2018-05-21 17:30 | 2018-05-22 07:15 | 0.36d | 75d |  | TEAM_2Shift_Calendar-1 |  | 11.5h | 610.94 | 610.94 |
| 463 | 2.4.16.1 | 4"Nozzle-1No | 1.25h | 2018-06-12 17:30 | 2018-06-12 18:45 | 457 | 2018-05-21 17:30 | 2018-05-21 18:45 | 1.25h | 75d | 0d | TEAM_2Shift_Calendar-1 | Helper; Grinder | 2.5h | 132.81 | 132.81 |
| 464 | 2.4.16.2 | 2"Nozzle-1No | 1.5h | 2018-06-12 18:45 | 2018-06-12 20:15 | 463 | 2018-05-21 18:45 | 2018-05-21 20:15 | 1.5h | 75d | 0d | TEAM_2Shift_Calendar-1 | Helper; Grinder | 3h | 159.38 | 159.38 |
| 465 | 2.4.16.3 | 1.5" NB Mp Con - 2 Nos | 2h | 2018-06-12 20:15 | 2018-06-13 06:15 | 464 | 2018-05-21 20:15 | 2018-05-22 06:15 | 2h | 75d | 0d | TEAM_2Shift_Calendar-1 | Helper; Grinder | 4h | 212.5 | 212.5 |
| 466 | 2.4.16.4 | Inspection | 1h | 2018-06-13 06:15 | 2018-06-13 07:15 | 465 | 2018-05-22 06:15 | 2018-05-22 07:15 | 1h | 75d |  | TEAM_2Shift_Calendar-1 | Helper; Grinder | 2h | 106.25 | 106.25 |
| 467 | 2.5 | **Saddle & Other** | 3.11d | 2018-06-02 17:30 | 2018-06-06 19:18 |  | 2018-05-11 17:30 | 2018-05-16 19:18 | 3.11d | 79.25d |  | TEAM_2Shift_Calendar-1 |  | 108.6h | 6,146.56 | 6,146.56 |
| 468 | 2.5.1 | **Bottom Saddle Fabrrication** | 0.28d | 2018-06-02 17:30 | 2018-06-02 22:00 |  | 2018-05-11 17:30 | 2018-05-11 22:00 | 0.28d | 79.25d | 0d | TEAM_2Shift_Calendar-1 |  | 7h | 296.88 | 296.88 |
| 469 | 2.5.1.1 | Plate Issuence | 2h | 2018-06-02 17:30 | 2018-06-02 19:30 | 2FS+47d | 2018-05-11 17:30 | 2018-05-11 19:30 | 2h | 79.25d | 0d | TEAM_2Shift_Calendar-1 | Plate (Cost); Store | 2h |  |  |
| 470 | 2.5.1.2 | Base Marking | 1h | 2018-06-02 19:30 | 2018-06-02 20:30 | 469 | 2018-05-11 19:30 | 2018-05-11 20:30 | 1h | 79.25d | 0d | TEAM_2Shift_Calendar-1 | Helper; Fitter | 2h | 118.75 | 118.75 |
| 471 | 2.5.1.3 | Web Pl Marking | 0.5h | 2018-06-02 20:30 | 2018-06-02 21:00 | 470 | 2018-05-11 20:30 | 2018-05-11 21:00 | 0.5h | 79.25d | 0d | TEAM_2Shift_Calendar-1 | Helper; Fitter | 1h | 59.38 | 59.38 |
| 472 | 2.5.1.4 | RF Pad Marking | 0.5h | 2018-06-02 21:00 | 2018-06-02 21:30 | 471 | 2018-05-11 21:00 | 2018-05-11 21:30 | 0.5h | 79.25d | 0d | TEAM_2Shift_Calendar-1 | Helper; Fitter | 1h | 59.38 | 59.38 |
| 473 | 2.5.1.5 | Ribs Marking | 0.5h | 2018-06-02 21:30 | 2018-06-02 22:00 | 472 | 2018-05-11 21:30 | 2018-05-11 22:00 | 0.5h | 79.25d |  | TEAM_2Shift_Calendar-1 | Helper; Fitter | 1h | 59.38 | 59.38 |
| 474 | 2.5.2 | **Bottom Saddle Plate Cutting** | 0.92d | 2018-06-04 06:00 | 2018-06-04 20:45 |  | 2018-05-14 06:00 | 2018-05-14 20:45 | 0.92d | 79.25d | 0d | TEAM_2Shift_Calendar-1 |  | 29.5h | 1,721.88 | 1,721.88 |
| 475 | 2.5.2.1 | Base Cutting | 3h | 2018-06-04 06:00 | 2018-06-04 09:00 | 468 | 2018-05-14 06:00 | 2018-05-14 09:00 | 3h | 79.25d | 0d | TEAM_2Shift_Calendar-1 | Helper; Gas Cutter | 6h | 356.25 | 356.25 |
| 476 | 2.5.2.2 | Web Pl Cutting | 3h | 2018-06-04 09:00 | 2018-06-04 12:00 | 475 | 2018-05-14 09:00 | 2018-05-14 12:00 | 3h | 79.25d | 0d | TEAM_2Shift_Calendar-1 | Helper; Gas Cutter | 6h | 356.25 | 356.25 |
| 477 | 2.5.2.3 | RF Pad Cutting | 2h | 2018-06-04 12:00 | 2018-06-04 14:00 | 476 | 2018-05-14 12:00 | 2018-05-14 14:00 | 2h | 79.25d | 0d | TEAM_2Shift_Calendar-1 | Helper; Gas Cutter | 4h | 237.5 | 237.5 |
| 478 | 2.5.2.4 | Ribs Cutting | 2h | 2018-06-04 14:00 | 2018-06-04 16:00 | 477 | 2018-05-14 14:00 | 2018-05-14 16:00 | 2h | 79.25d | 0d | TEAM_2Shift_Calendar-1 | Helper; Gas Cutter | 4h | 237.5 | 237.5 |
| 479 | 2.5.2.5 | Grinding Of Above | 4.75h | 2018-06-04 16:00 | 2018-06-04 20:45 | 478 | 2018-05-14 16:00 | 2018-05-14 20:45 | 4.75h | 79.25d |  | TEAM_2Shift_Calendar-1 | Grinder [200%] | 9.5h | 534.38 | 534.38 |
| 480 | 2.5.3 | **Saddle Fit Up & Welding** | 0.62d | 2018-06-04 20:45 | 2018-06-05 14:45 |  | 2018-05-14 20:45 | 2018-05-15 14:45 | 0.62d | 79.25d | 0d | TEAM_2Shift_Calendar-1 |  | 34h | 2,018.75 | 2,018.75 |
| 481 | 2.5.3.1 | Base + Web Fit Up | 2h | 2018-06-04 20:45 | 2018-06-05 06:45 | 474 | 2018-05-14 20:45 | 2018-05-15 06:45 | 2h | 79.25d | 0d | TEAM_2Shift_Calendar-1 | Helper [200%]; SMAW Welder; Fitter | 8h | 475 | 475 |
| 482 | 2.5.3.2 | Base + Web Welding | 3h | 2018-06-05 06:45 | 2018-06-05 09:45 | 481 | 2018-05-15 06:45 | 2018-05-15 09:45 | 3h | 79.25d | 0d | TEAM_2Shift_Calendar-1 | Helper; SMAW Welder | 6h | 356.25 | 356.25 |
| 483 | 2.5.3.3 | Ribs+Web Fit Up | 2h | 2018-06-05 09:45 | 2018-06-05 11:45 | 482 | 2018-05-15 09:45 | 2018-05-15 11:45 | 2h | 79.25d | 0d | TEAM_2Shift_Calendar-1 | Helper [200%]; SMAW Welder; Fitter | 8h | 475 | 475 |
| 484 | 2.5.3.4 | Ribs+Web Welding | 3h | 2018-06-05 11:45 | 2018-06-05 14:45 | 483 | 2018-05-15 11:45 | 2018-05-15 14:45 | 3h | 79.25d |  | TEAM_2Shift_Calendar-1 | Helper [200%]; SMAW Welder [200%] | 12h | 712.5 | 712.5 |

| ID | WBS | Task | Duration | Start | Finish | Predecessors | Baseline start | Baseline finish | Baseline duration | Total slack | Free slack | Calendar | Resources | Work | Cost | Baseline cost |
| --- | --- | --- | --- | --- | --- | --- | --- | --- | --- | --- | --- | --- | --- | --- | --- | --- |
| 485 | 2.5.4 | **Lifting Lug Pad & RF Pad** | 0.38d | 2018-06-05 14:45 | 2018-06-05 20:48 |  | 2018-05-15 14:45 | 2018-05-15 20:48 | 0.38d | 79.25d | 0d | TEAM_2Shift_Calendar-1 |  | 9.1h | 412.19 | 412.19 |
| 486 | 2.5.4.1 | Plate Issuence | 2h | 2018-06-05 14:45 | 2018-06-05 16:45 | 480 | 2018-05-15 14:45 | 2018-05-15 16:45 | 2h | 79.25d | 0d | TEAM_2Shift_Calendar-1 | Store | 2h |  |  |
| 487 | 2.5.4.2 | Pad Marking | 0.3h | 2018-06-05 16:45 | 2018-06-05 17:03 | 486 | 2018-05-15 16:45 | 2018-05-15 17:03 | 0.3h | 79.25d | 0d | TEAM_2Shift_Calendar-1 | Helper; Fitter | 0.6h | 35.62 | 35.62 |
| 488 | 2.5.4.3 | Pad Cutting | 1.25h | 2018-06-05 17:03 | 2018-06-05 18:18 | 487 | 2018-05-15 17:03 | 2018-05-15 18:18 | 1.25h | 79.25d | 0d | TEAM_2Shift_Calendar-1 | Helper; Gas Cutter | 2.5h | 148.44 | 148.44 |
| 489 | 2.5.4.4 | Pad Grinding | 1.5h | 2018-06-05 18:18 | 2018-06-05 19:48 | 488 | 2018-05-15 18:18 | 2018-05-15 19:48 | 1.5h | 79.25d | 0d | TEAM_2Shift_Calendar-1 | Helper; Grinder | 3h | 159.38 | 159.38 |
| 490 | 2.5.4.5 | Pad Drilling | 1h | 2018-06-05 19:48 | 2018-06-05 20:48 | 489 | 2018-05-15 19:48 | 2018-05-15 20:48 | 1h | 79.25d |  | TEAM_2Shift_Calendar-1 | Driller | 1h | 68.75 | 68.75 |
| 491 | 2.5.5 | **Lifting Lug Preparation** | 0.41d | 2018-06-05 20:48 | 2018-06-06 11:18 |  | 2018-05-15 20:48 | 2018-05-16 11:18 | 0.41d | 79.25d | 0d | TEAM_2Shift_Calendar-1 |  | 13h | 746.88 | 746.88 |
| 492 | 2.5.5.1 | Lifting Lugs Marking | 0.5h | 2018-06-05 20:48 | 2018-06-05 21:18 | 485 | 2018-05-15 20:48 | 2018-05-15 21:18 | 0.5h | 79.25d | 0d | TEAM_2Shift_Calendar-1 | Helper; Fitter | 1h | 59.38 | 59.38 |
| 493 | 2.5.5.2 | Lifting Lugs Cutting | 2h | 2018-06-05 21:18 | 2018-06-06 07:18 | 492 | 2018-05-15 21:18 | 2018-05-16 07:18 | 2h | 79.25d | 0d | TEAM_2Shift_Calendar-1 | Helper; Gas Cutter | 4h | 237.5 | 237.5 |
| 494 | 2.5.5.3 | Lifting Lugs Grinding | 2h | 2018-06-06 07:18 | 2018-06-06 09:18 | 493 | 2018-05-16 07:18 | 2018-05-16 09:18 | 2h | 79.25d | 0d | TEAM_2Shift_Calendar-1 | Helper; Grinder | 4h | 212.5 | 212.5 |
| 495 | 2.5.5.4 | Lifting Lug Drilling | 2h | 2018-06-06 09:18 | 2018-06-06 11:18 | 494 | 2018-05-16 09:18 | 2018-05-16 11:18 | 2h | 79.25d |  | TEAM_2Shift_Calendar-1 | Helper; Fitter | 4h | 237.5 | 237.5 |
| 496 | 2.5.6 | **Insulation Ring Prparation** | 0.5d | 2018-06-06 11:18 | 2018-06-06 19:18 |  | 2018-05-16 11:18 | 2018-05-16 19:18 | 0.5d | 79.25d |  | TEAM_2Shift_Calendar-1 |  | 16h | 950 | 950 |
| 497 | 2.5.6.1 | Insulaion Ring Marking | 2h | 2018-06-06 11:18 | 2018-06-06 13:18 | 491 | 2018-05-16 11:18 | 2018-05-16 13:18 | 2h | 79.25d | 0d | TEAM_2Shift_Calendar-1 | Helper; Fitter | 4h | 237.5 | 237.5 |
| 498 | 2.5.6.2 | Insulaion Ring Cutting | 2h | 2018-06-06 13:18 | 2018-06-06 15:18 | 497 | 2018-05-16 13:18 | 2018-05-16 15:18 | 2h | 79.25d | 0d | TEAM_2Shift_Calendar-1 | Helper; Gas Cutter | 4h | 237.5 | 237.5 |
| 499 | 2.5.6.3 | Insulaion Ring Hole Marking | 2h | 2018-06-06 15:18 | 2018-06-06 17:18 | 498 | 2018-05-16 15:18 | 2018-05-16 17:18 | 2h | 79.25d | 0d | TEAM_2Shift_Calendar-1 | Helper; Fitter | 4h | 237.5 | 237.5 |
| 500 | 2.5.6.4 | Insulaion Ring Hole Drilling | 2h | 2018-06-06 17:18 | 2018-06-06 19:18 | 499 | 2018-05-16 17:18 | 2018-05-16 19:18 | 2h | 79.25d |  | TEAM_2Shift_Calendar-1 | Helper; Fitter | 4h | 237.5 | 237.5 |
| 501 | 2.6 | **Baffle & Tb Items Fab** | 7.98d | 2018-06-02 17:30 | 2018-06-22 17:12 |  | 2018-05-11 17:30 | 2018-06-01 17:12 | 7.98d | 11.5d |  |  |  | 208.4h | 6,212.19 | 6,212.19 |
| 502 | 2.6.1 | **Baffle Preparation** | 0.58d | 2018-06-02 17:30 | 2018-06-04 10:45 |  | 2018-05-11 17:30 | 2018-05-14 10:45 | 0.58d | 23.36d | 0d | TEAM_2Shift_Calendar-1 |  | 14.5h | 623.44 | 623.44 |
| 503 | 2.6.1.1 | Baffle Plate Transfer | 4h | 2018-06-02 17:30 | 2018-06-02 21:30 | 2FS+47d | 2018-05-11 17:30 | 2018-05-11 21:30 | 4h | 23.36d | 0d | TEAM_2Shift_Calendar-1 | Plate (Cost) [0.1%]; Store | 4h |  |  |
| 504 | 2.6.1.2 | Baffle Marking | 2h | 2018-06-02 21:30 | 2018-06-04 07:30 | 503 | 2018-05-11 21:30 | 2018-05-14 07:30 | 2h | 23.36d | 0d | TEAM_2Shift_Calendar-1 | Helper; Fitter | 4h | 237.5 | 237.5 |
| 505 | 2.6.1.3 | Baffle Profile Cutting | 3.25h | 2018-06-04 07:30 | 2018-06-04 10:45 | 504 | 2018-05-14 07:30 | 2018-05-14 10:45 | 3.25h | 23.36d |  | TEAM_2Shift_Calendar-1 | Helper; Gas Cutter | 6.5h | 385.94 | 385.94 |
| 506 | 2.6.2 | **Baffle Bend Removal & Stacking** | 0.5d | 2018-06-04 10:45 | 2018-06-04 18:45 |  | 2018-05-14 10:45 | 2018-05-14 18:45 | 0.5d | 23.36d | 0.36d | TEAM_2Shift_Calendar-1 |  | 21h | 1,200 | 1,200 |
| 507 | 2.6.2.1 | Baffle Pl Bend Removal | 5h | 2018-06-04 10:45 | 2018-06-04 15:45 | 502 | 2018-05-14 10:45 | 2018-05-14 15:45 | 5h | 23.36d | 0d | TEAM_2Shift_Calendar-1 | Helper [200%]; Fitter | 15h | 843.75 | 843.75 |
| 508 | 2.6.2.2 | Baffle Pl StackingPer 100mm | 3h | 2018-06-04 15:45 | 2018-06-04 18:45 | 507 | 2018-05-14 15:45 | 2018-05-14 18:45 | 3h | 23.36d |  | TEAM_2Shift_Calendar-1 | Helper; Fitter | 6h | 356.25 | 356.25 |

| ID | WBS | Task | Duration | Start | Finish | Predecessors | Baseline start | Baseline finish | Baseline duration | Total slack | Free slack | Calendar | Resources | Work | Cost | Baseline cost |
| --- | --- | --- | --- | --- | --- | --- | --- | --- | --- | --- | --- | --- | --- | --- | --- | --- |
| 509 | 2.6.3 | **Baffle Drilling** | 2d | 2018-06-05 08:30 | 2018-06-08 17:30 |  | 2018-05-15 08:30 | 2018-05-18 17:30 | 2d | 11.5d | 0d |  |  | 32h |  |  |
| 510 | 2.6.3.1 | Baffle Drilling | 2d | 2018-06-05 08:30 | 2018-06-08 17:30 | 506 | 2018-05-15 08:30 | 2018-05-18 17:30 | 2d | 11.5d |  |  | SC (Work) | 32h |  |  |
| 511 | 2.6.4 | **Baffle De Stacking & Chamfering** | 0.31d | 2018-06-08 17:30 | 2018-06-11 06:30 |  | 2018-05-18 17:30 | 2018-05-19 06:30 | 0.31d | 23d | 0d | TEAM_2Shift_Calendar-1 |  | 7h | 443.75 | 443.75 |
| 512 | 2.6.4.1 | Baffle De Stacking | 2h | 2018-06-08 17:30 | 2018-06-08 19:30 | 509 | 2018-05-18 17:30 | 2018-05-18 19:30 | 2h | 23d | 0d | TEAM_2Shift_Calendar-1 | Helper; Fitter | 4h | 237.5 | 237.5 |
| 513 | 2.6.4.2 | Baffle Chamfering (70% of TS Holes*No of Baffles) | 3h | 2018-06-08 19:30 | 2018-06-11 06:30 | 512 | 2018-05-18 19:30 | 2018-05-19 06:30 | 3h | 23d |  | TEAM_2Shift_Calendar-1 | Fitter | 3h | 206.25 | 206.25 |
| 514 | 2.6.5 | **Baffle Stacking & Thro Hole Check** | 4.5d | 2018-06-11 06:30 | 2018-06-20 20:30 |  | 2018-05-19 06:30 | 2018-05-30 20:30 | 4.5d | 11.5d | 0d |  |  | 86h | 806.25 | 806.25 |
| 515 | 2.6.5.1 | Stacking | 2h | 2018-06-11 06:30 | 2018-06-11 08:30 | 511 | 2018-05-19 06:30 | 2018-05-19 08:30 | 2h | 23d | 0d | TEAM_2Shift_Calendar-1 | Helper; Fitter | 4h | 237.5 | 237.5 |
| 516 | 2.6.5.2 | Baffle Hole Alingment | 1h | 2018-06-11 08:30 | 2018-06-11 09:30 | 515 | 2018-05-19 08:30 | 2018-05-19 09:30 | 1h | 23d | 0d | TEAM_2Shift_Calendar-1 | Helper; Fitter | 2h | 118.75 | 118.75 |
| 517 | 2.6.5.3 | Baffle Hole Re Drill (Use 40% of Holes in Qty) | 7h | 2018-06-11 09:30 | 2018-06-11 17:30 | 516 | 2018-05-19 09:30 | 2018-05-19 17:30 | 7h | 11.5d | 0d |  | SC (Work) | 7h |  |  |
| 518 | 2.6.5.4 | Baffle Od Machining | 4d | 2018-06-12 08:30 | 2018-06-20 17:30 | 517 | 2018-05-21 08:30 | 2018-05-30 17:30 | 4d | 11.5d | 0d |  | SC (Work) | 64h |  |  |
| 519 | 2.6.5.5 | Baffle Cleaning(100mm L * 700Ø = 3hrs) | 3h | 2018-06-20 17:30 | 2018-06-20 20:30 | 518 | 2018-05-30 17:30 | 2018-05-30 20:30 | 3h | 23.21d |  | TEAM_2Shift_Calendar-1 | Helper [300%] | 9h | 450 | 450 |
| 520 | 2.6.6 | **Tie Rod Preparation** | 0.41d | 2018-06-20 20:30 | 2018-06-21 11:00 |  | 2018-05-30 20:30 | 2018-05-31 11:00 | 0.41d | 23.21d | 0d | TEAM_2Shift_Calendar-1 |  | 9.5h | 716.25 | 716.25 |
| 521 | 2.6.6.1 | Tie Rod Matl Transfere | 0.5h | 2018-06-20 20:30 | 2018-06-20 21:00 | 514 | 2018-05-30 20:30 | 2018-05-30 21:00 | 0.5h | 23.21d | 0d | TEAM_2Shift_Calendar-1 | Store | 0.5h |  |  |
| 522 | 2.6.6.2 | Rod Cutting | 3h | 2018-06-20 21:00 | 2018-06-21 08:00 | 521 | 2018-05-30 21:00 | 2018-05-31 08:00 | 3h | 23.21d | 0d | TEAM_2Shift_Calendar-1 | Helper; Fitter | 6h | 356.25 | 356.25 |
| 523 | 2.6.6.3 | Thread Machining. | 3h | 2018-06-21 08:00 | 2018-06-21 11:00 | 522 | 2018-05-31 08:00 | 2018-05-31 11:00 | 3h | 23.21d |  | TEAM_2Shift_Calendar-1 | Lathe Operator | 3h | 360 | 360 |
| 524 | 2.6.7 | **Spacer Tube Preparation** | 0.62d | 2018-06-21 11:00 | 2018-06-21 21:00 |  | 2018-05-31 11:00 | 2018-05-31 21:00 | 0.62d | 23.21d | 0d | TEAM_2Shift_Calendar-1 |  | 17h | 1,180 | 1,180 |
| 525 | 2.6.7.1 | Spacer Tube Transfere | 0.5h | 2018-06-21 11:00 | 2018-06-21 11:30 | 520 | 2018-05-31 11:00 | 2018-05-31 11:30 | 0.5h | 23.21d | 0d | TEAM_2Shift_Calendar-1 | Store | 0.5h |  |  |
| 526 | 2.6.7.2 | Length Cutting21 Nos | 4h | 2018-06-21 11:30 | 2018-06-21 15:30 | 525 | 2018-05-31 11:30 | 2018-05-31 15:30 | 4h | 23.21d | 0d | TEAM_2Shift_Calendar-1 | Helper; Fitter | 8h | 475 | 475 |
| 527 | 2.6.7.3 | Length Machining | 4h | 2018-06-21 15:30 | 2018-06-21 19:30 | 526 | 2018-05-31 15:30 | 2018-05-31 19:30 | 4h | 23.21d | 0d | TEAM_2Shift_Calendar-1 | Lathe Operator | 4h | 480 | 480 |
| 528 | 2.6.7.4 | Cleaning | 1.5h | 2018-06-21 19:30 | 2018-06-21 21:00 | 527 | 2018-05-31 19:30 | 2018-05-31 21:00 | 1.5h | 23.21d |  | TEAM_2Shift_Calendar-1 | Helper [300%] | 4.5h | 225 | 225 |
| 529 | 2.6.8 | **Sealing Strip Preparation** | 0.76d | 2018-06-21 21:00 | 2018-06-22 17:12 |  | 2018-05-31 21:00 | 2018-06-01 17:12 | 0.76d | 23.21d | 0d | TEAM_2Shift_Calendar-1 |  | 21.4h | 1,242.5 | 1,242.5 |
| 530 | 2.6.8.1 | Sealing Strip Marking | 0.2h | 2018-06-21 21:00 | 2018-06-21 21:12 | 524 | 2018-05-31 21:00 | 2018-05-31 21:12 | 0.2h | 23.21d | 0d | TEAM_2Shift_Calendar-1 | Helper; Fitter | 0.4h | 23.75 | 23.75 |
| 531 | 2.6.8.2 | Sealing Strip Cutting | 3h | 2018-06-21 21:12 | 2018-06-22 08:12 | 530 | 2018-05-31 21:12 | 2018-06-01 08:12 | 3h | 23.21d | 0d | TEAM_2Shift_Calendar-1 | Helper; Gas Cutter | 6h | 356.25 | 356.25 |
| 532 | 2.6.8.3 | Sealing Strip Bend Removal | 2h | 2018-06-22 08:12 | 2018-06-22 10:12 | 531 | 2018-06-01 08:12 | 2018-06-01 10:12 | 2h | 23.21d | 0d | TEAM_2Shift_Calendar-1 | Helper [200%]; Fitter | 6h | 337.5 | 337.5 |
| 533 | 2.6.8.4 | Sealing Strip Grinding | 5h | 2018-06-22 10:12 | 2018-06-22 15:12 | 532 | 2018-06-01 10:12 | 2018-06-01 15:12 | 5h | 23.21d | 0d | TEAM_2Shift_Calendar-1 | Grinder | 5h | 281.25 | 281.25 |
| 534 | 2.6.8.5 | Sealing Strip Joining | 1h | 2018-06-22 15:12 | 2018-06-22 16:12 | 533 | 2018-06-01 15:12 | 2018-06-01 16:12 | 1h | 23.21d | 0d | TEAM_2Shift_Calendar-1 | Fitter; Helper; SMAW Welder | 3h | 187.5 | 187.5 |
| 535 | 2.6.8.6 | Sealing Strip Dress Up | 1h | 2018-06-22 16:12 | 2018-06-22 17:12 | 534 | 2018-06-01 16:12 | 2018-06-01 17:12 | 1h | 23.21d |  | TEAM_2Shift_Calendar-1 | Grinder | 1h | 56.25 | 56.25 |

| ID | WBS | Task | Type | Duration | Start | Finish | Predecessors | Baseline start | Baseline finish | Baseline duration | Total slack | Free slack | Calendar | Resources | Work | Cost | Baseline cost |
| --- | --- | --- | --- | --- | --- | --- | --- | --- | --- | --- | --- | --- | --- | --- | --- | --- | --- |
| 536 | 2.7 | **Shell Fabrication** |  | 6.06d | 2018-06-22 17:12 | 2018-06-30 18:09 |  | 2018-06-01 17:12 | 2018-06-08 18:09 | 6.06d | 23.21d |  | TEAM_2Shift_Calendar-1 |  | 256.6h | 15,594.06 | 15,594.06 |
| 537 | 2.7.1 | **Shell Fabrication** |  | 6.06d | 2018-06-22 17:12 | 2018-06-30 18:09 |  | 2018-06-01 17:12 | 2018-06-08 18:09 | 6.06d | 23.21d |  | TEAM_2Shift_Calendar-1 |  | 256.6h | 15,594.06 | 15,594.06 |
| 538 | 2.7.1.1 | **Shell pipe Marking** |  | 0.44d | 2018-06-22 17:12 | 2018-06-25 08:12 |  | 2018-06-01 17:12 | 2018-06-02 08:12 | 0.44d | 23.21d | 0d | TEAM_2Shift_Calendar-1 |  | 14h | 962.5 | 962.5 |
| 539 | 2.7.1.1.1 | 16"-1NO |  | 4h | 2018-06-22 17:12 | 2018-06-22 21:12 | 529 | 2018-06-01 17:12 | 2018-06-01 21:12 | 4h | 23.21d | 0d | TEAM_2Shift_Calendar-1 | Pipe (Cost) [0.1%]; Fitter [200%] | 8h | 550 | 550 |
| 540 | 2.7.1.1.2 | 16"-1NO |  | 3h | 2018-06-22 21:12 | 2018-06-25 08:12 | 539 | 2018-06-01 21:12 | 2018-06-02 08:12 | 3h | 23.21d |  | TEAM_2Shift_Calendar-1 | Fitter [200%] | 6h | 412.5 | 412.5 |
| 541 | 2.7.1.2 | **Shell Pipe Cutting** |  | 0.5d | 2018-06-25 08:12 | 2018-06-25 16:12 |  | 2018-06-02 08:12 | 2018-06-02 16:12 | 0.5d | 23.21d | 0d | TEAM_2Shift_Calendar-1 |  | 16h | 950 | 950 |
| 542 | 2.7.1.2.1 | 16"-1NO |  | 4h | 2018-06-25 08:12 | 2018-06-25 12:12 | 538 | 2018-06-02 08:12 | 2018-06-02 12:12 | 4h | 23.21d | 0d | TEAM_2Shift_Calendar-1 | Helper; Gas Cutter | 8h | 475 | 475 |
| 543 | 2.7.1.2.2 | 16"-1NO |  | 3h | 2018-06-25 12:12 | 2018-06-25 15:12 | 542 | 2018-06-02 12:12 | 2018-06-02 15:12 | 3h | 23.21d | 0d | TEAM_2Shift_Calendar-1 | Helper; Gas Cutter | 6h | 356.25 | 356.25 |
| 544 | 2.7.1.2.3 | Inspection |  | 1h | 2018-06-25 15:12 | 2018-06-25 16:12 | 543 | 2018-06-02 15:12 | 2018-06-02 16:12 | 1h | 23.21d |  | TEAM_2Shift_Calendar-1 | Helper; Gas Cutter | 2h | 118.75 | 118.75 |
| 545 | 2.7.1.3 | **Shell Pipe EP** |  | 0.44d | 2018-06-25 16:12 | 2018-06-26 07:12 |  | 2018-06-02 16:12 | 2018-06-04 07:12 | 0.44d | 23.21d | 0d | TEAM_2Shift_Calendar-1 |  | 8h | 475 | 475 |
| 546 | 2.7.1.3.1 | 16"-1NO |  | 3h | 2018-06-25 16:12 | 2018-06-25 19:12 | 541 | 2018-06-02 16:12 | 2018-06-02 19:12 | 3h | 23.21d | 0d | TEAM_2Shift_Calendar-1 | Grinder | 3h | 168.75 | 168.75 |
| 547 | 2.7.1.3.2 | 16"-1NO |  | 3h | 2018-06-25 19:12 | 2018-06-26 06:12 | 546 | 2018-06-02 19:12 | 2018-06-04 06:12 | 3h | 23.21d | 0d | TEAM_2Shift_Calendar-1 | Grinder | 3h | 168.75 | 168.75 |
| 548 | 2.7.1.3.3 | Inspection |  | 1h | 2018-06-26 06:12 | 2018-06-26 07:12 | 547 | 2018-06-04 06:12 | 2018-06-04 07:12 | 1h | 23.21d |  | TEAM_2Shift_Calendar-1 | Fitter [200%] | 2h | 137.5 | 137.5 |
| 549 | 2.7.1.4 | **Sh Cir Seam Fitup - FLNG** |  | 0.22d | 2018-06-26 07:12 | 2018-06-26 10:42 |  | 2018-06-04 07:12 | 2018-06-04 10:42 | 0.22d | 23.21d | 0d | TEAM_2Shift_Calendar-1 |  | 13h | 828.12 | 828.12 |
| 550 | 2.7.1.4.1 | Sh CS Fit Up |  | 3h | 2018-06-26 07:12 | 2018-06-26 10:12 | 545 | 2018-06-04 07:12 | 2018-06-04 10:12 | 3h | 23.21d | 0d | TEAM_2Shift_Calendar-1 | Helper; SMAW Welder; Fitter [200%] | 12h | 768.75 | 768.75 |
| 551 | 2.7.1.4.2 | Sh CS Tack DP Check |  | 0.5h | 2018-06-26 10:12 | 2018-06-26 10:42 | 550 | 2018-06-04 10:12 | 2018-06-04 10:42 | 0.5h | 23.21d |  | TEAM_2Shift_Calendar-1 | Helper; Fitter | 1h | 59.38 | 59.38 |
| 552 | 2.7.1.5 | **Sh Cir Seam Welding - FLNG** |  | 0.31d | 2018-06-26 10:42 | 2018-06-26 15:42 |  | 2018-06-04 10:42 | 2018-06-04 15:42 | 0.31d | 23.21d | 0d | TEAM_2Shift_Calendar-1 |  | 9h | 531.25 | 531.25 |
| 553 | 2.7.1.5.1 | Sh CS Welding Transfere |  | 1h | 2018-06-26 10:42 | 2018-06-26 11:42 | 549 | 2018-06-04 10:42 | 2018-06-04 11:42 | 1h | 23.21d | 0d | TEAM_2Shift_Calendar-1 | Helper; Fitter | 2h | 118.75 | 118.75 |
| 554 | 2.7.1.5.2 | Sh CS Welding Outer |  | 3h | 2018-06-26 11:42 | 2018-06-26 14:42 | 553 | 2018-06-04 11:42 | 2018-06-04 14:42 | 3h | 23.21d | 0d | TEAM_2Shift_Calendar-1 | Helper; SMAW Welder | 6h | 356.25 | 356.25 |
| 555 | 2.7.1.5.3 | Sh CS Welding Back Chip |  | 1h | 2018-06-26 14:42 | 2018-06-26 15:42 | 554 | 2018-06-04 14:42 | 2018-06-04 15:42 | 1h | 23.21d | 0d | TEAM_2Shift_Calendar-1 | Grinder | 1h | 56.25 | 56.25 |
| 556 | 2.7.1.5.4 | Sh CS Inner Welding | milestone | 0h | 2018-06-26 15:42 | 2018-06-26 15:42 | 555 | 2018-06-04 15:42 | 2018-06-04 15:42 | 0h | 23.21d |  | TEAM_2Shift_Calendar-1 | Helper; SMAW Welder |  |  |  |
| 557 | 2.7.1.6 | **Sh Cir Seam Fitup - Dish** |  | 0.08d | 2018-06-26 15:42 | 2018-06-26 17:00 |  | 2018-06-04 15:42 | 2018-06-04 17:00 | 0.08d | 23.21d | 0d | TEAM_2Shift_Calendar-1 |  | 4.6h | 291.88 | 291.88 |
| 558 | 2.7.1.6.1 | Sh CS Fit Up |  | 1h | 2018-06-26 15:42 | 2018-06-26 16:42 | 552 | 2018-06-04 15:42 | 2018-06-04 16:42 | 1h | 23.21d | 0d | TEAM_2Shift_Calendar-1 | Helper; SMAW Welder; Fitter [200%] | 4h | 256.25 | 256.25 |
| 559 | 2.7.1.6.2 | Sh CS Tack DP Check |  | 0.3h | 2018-06-26 16:42 | 2018-06-26 17:00 | 558 | 2018-06-04 16:42 | 2018-06-04 17:00 | 0.3h | 23.21d |  | TEAM_2Shift_Calendar-1 | Helper; Fitter | 0.6h | 35.62 | 35.62 |

| ID | WBS | Task | Type | Duration | Start | Finish | Predecessors | Baseline start | Baseline finish | Baseline duration | Total slack | Free slack | Calendar | Resources | Work | Cost | Baseline cost |
| --- | --- | --- | --- | --- | --- | --- | --- | --- | --- | --- | --- | --- | --- | --- | --- | --- | --- |
| 560 | 2.7.1.7 | **Sh Cir Seam Welding -Dish** |  | 0.19d | 2018-06-26 17:00 | 2018-06-26 20:03 |  | 2018-06-04 17:00 | 2018-06-04 20:03 | 0.19d | 23.21d | 0d | TEAM_2Shift_Calendar-1 |  | 5.8h | 343.44 | 343.44 |
| 561 | 2.7.1.7.1 | Sh CS Welding Transfere |  | 1h | 2018-06-26 17:00 | 2018-06-26 18:00 | 557 | 2018-06-04 17:00 | 2018-06-04 18:00 | 1h | 23.21d | 0d | TEAM_2Shift_Calendar-1 | Helper; Fitter | 2h | 118.75 | 118.75 |
| 562 | 2.7.1.7.2 | Sh CS Welding Outer |  | 1.75h | 2018-06-26 18:00 | 2018-06-26 19:45 | 561 | 2018-06-04 18:00 | 2018-06-04 19:45 | 1.75h | 23.21d | 0d | TEAM_2Shift_Calendar-1 | Helper; SMAW Welder | 3.5h | 207.81 | 207.81 |
| 563 | 2.7.1.7.3 | Sh CS Welding Back Chip |  | 0.3h | 2018-06-26 19:45 | 2018-06-26 20:03 | 562 | 2018-06-04 19:45 | 2018-06-04 20:03 | 0.3h | 23.21d | 0d | TEAM_2Shift_Calendar-1 | Grinder | 0.3h | 16.88 | 16.88 |
| 564 | 2.7.1.7.4 | Sh CS Inner Welding | milestone | 0h | 2018-06-26 20:03 | 2018-06-26 20:03 | 563 | 2018-06-04 20:03 | 2018-06-04 20:03 | 0h | 23.21d | 0d | TEAM_2Shift_Calendar-1 | Helper; SMAW Welder |  |  |  |
| 565 | 2.7.1.7.5 | Sh CS Flush Grinding | milestone | 0h | 2018-06-26 20:03 | 2018-06-26 20:03 | 564 | 2018-06-04 20:03 | 2018-06-04 20:03 | 0h | 23.21d |  | TEAM_2Shift_Calendar-1 | Grinder |  |  |  |
| 566 | 2.7.1.8 | **Nozzle Orientation Marking** |  | 0.25d | 2018-06-26 20:03 | 2018-06-27 08:03 |  | 2018-06-04 20:03 | 2018-06-05 08:03 | 0.25d | 23.21d | 0d | TEAM_2Shift_Calendar-1 |  | 8h | 550 | 550 |
| 567 | 2.7.1.8.1 | Sh Nozzel Orientaion Marking6" Nozzle-2 Nos |  | 4h | 2018-06-26 20:03 | 2018-06-27 08:03 | 560 | 2018-06-04 20:03 | 2018-06-05 08:03 | 4h | 23.21d | 0d | TEAM_2Shift_Calendar-1 | Fitter [200%] | 8h | 550 | 550 |
| 568 | 2.7.1.9 | **Sh Nozzle Openning** |  | 0.19d | 2018-06-27 08:03 | 2018-06-27 11:03 |  | 2018-06-05 08:03 | 2018-06-05 11:03 | 0.19d | 23.21d | 0d | TEAM_2Shift_Calendar-1 |  | 8h | 475 | 475 |
| 569 | 2.7.1.9.1 | 6" Nozzle-2 Nos |  | 3h | 2018-06-27 08:03 | 2018-06-27 11:03 | 566 | 2018-06-05 08:03 | 2018-06-05 11:03 | 3h | 23.21d |  | TEAM_2Shift_Calendar-1 | Helper; Gas Cutter | 6h | 356.25 | 356.25 |
| 570 | 2.7.1.9.2 | Inspection |  | 1h | 2018-06-27 08:03 | 2018-06-27 09:03 | 567 | 2018-06-05 08:03 | 2018-06-05 09:03 | 1h | 23.33d |  | TEAM_2Shift_Calendar-1 | Helper; Gas Cutter | 2h | 118.75 | 118.75 |
| 571 | 2.7.1.10 | **Sh Nozzle EP** |  | 0.25d | 2018-06-27 11:03 | 2018-06-27 15:03 |  | 2018-06-05 11:03 | 2018-06-05 15:03 | 0.25d | 23.21d | 0d | TEAM_2Shift_Calendar-1 |  | 5h | 306.25 | 306.25 |
| 572 | 2.7.1.10.1 | 6" Nozzle-2 Nos |  | 3h | 2018-06-27 11:03 | 2018-06-27 14:03 | 568 | 2018-06-05 11:03 | 2018-06-05 14:03 | 3h | 23.21d | 0d | TEAM_2Shift_Calendar-1 | Grinder | 3h | 168.75 | 168.75 |
| 573 | 2.7.1.10.2 | Inspection |  | 1h | 2018-06-27 14:03 | 2018-06-27 15:03 | 572 | 2018-06-05 14:03 | 2018-06-05 15:03 | 1h | 23.21d |  | TEAM_2Shift_Calendar-1 | Fitter [200%] | 2h | 137.5 | 137.5 |
| 574 | 2.7.1.11 | **Sh Nozzzle Fit Up** |  | 0.14d | 2018-06-27 15:03 | 2018-06-27 17:21 |  | 2018-06-05 15:03 | 2018-06-05 17:21 | 0.14d | 23.21d | 0d | TEAM_2Shift_Calendar-1 |  | 8.6h | 548.12 | 548.12 |
| 575 | 2.7.1.11.1 | 6" Nozzle-2 Nos |  | 2h | 2018-06-27 15:03 | 2018-06-27 17:03 | 571 | 2018-06-05 15:03 | 2018-06-05 17:03 | 2h | 23.21d | 0d | TEAM_2Shift_Calendar-1 | Helper; SMAW Welder; Fitter [200%] | 8h | 512.5 | 512.5 |
| 576 | 2.7.1.11.2 | DP Check |  | 0.3h | 2018-06-27 17:03 | 2018-06-27 17:21 | 575 | 2018-06-05 17:03 | 2018-06-05 17:21 | 0.3h | 23.21d |  | TEAM_2Shift_Calendar-1 | Helper; Fitter | 0.6h | 35.62 | 35.62 |
| 577 | 2.7.1.12 | **Sh Nozzle Fit Up Inspection** |  | 0.08d | 2018-06-27 17:21 | 2018-06-27 18:39 |  | 2018-06-05 17:21 | 2018-06-05 18:39 | 0.08d | 23.21d | 0d | TEAM_2Shift_Calendar-1 |  | 2.6h | 154.38 | 154.38 |
| 578 | 2.7.1.12.1 | 6" Nozzle-2 Nos |  | 1h | 2018-06-27 17:21 | 2018-06-27 18:21 | 574 | 2018-06-05 17:21 | 2018-06-05 18:21 | 1h | 23.21d | 0d | TEAM_2Shift_Calendar-1 | Helper; Fitter | 2h | 118.75 | 118.75 |
| 579 | 2.7.1.12.2 | DP Check |  | 0.3h | 2018-06-27 18:21 | 2018-06-27 18:39 | 578 | 2018-06-05 18:21 | 2018-06-05 18:39 | 0.3h | 23.21d |  | TEAM_2Shift_Calendar-1 | Helper; Fitter | 0.6h | 35.62 | 35.62 |
| 580 | 2.7.1.13 | **Sh Nozzle Welding** |  | 0.34d | 2018-06-27 18:39 | 2018-06-28 08:09 |  | 2018-06-05 18:39 | 2018-06-06 08:09 | 0.34d | 23.21d | 0d | TEAM_2Shift_Calendar-1 |  | 9h | 415.62 | 415.62 |
| 581 | 2.7.1.13.1 | Sh Nozzel Welding Arrangement |  | 2h | 2018-06-27 18:39 | 2018-06-27 20:39 | 577 | 2018-06-05 18:39 | 2018-06-05 20:39 | 2h | 23.21d | 0d | TEAM_2Shift_Calendar-1 | Store | 2h |  |  |
| 582 | 2.7.1.13.2 | Sh Nozzel Welding6" Nozzle-2 Nos-N1,N2 |  | 3h | 2018-06-27 20:39 | 2018-06-28 07:39 | 581 | 2018-06-05 20:39 | 2018-06-06 07:39 | 3h | 23.21d | 0d | TEAM_2Shift_Calendar-1 | Helper; SMAW Welder | 6h | 356.25 | 356.25 |
| 583 | 2.7.1.13.3 | Sh Nozzel Root DP Check |  | 0.5h | 2018-06-28 07:39 | 2018-06-28 08:09 | 582 | 2018-06-06 07:39 | 2018-06-06 08:09 | 0.5h | 23.21d |  | TEAM_2Shift_Calendar-1 | Helper; Fitter | 1h | 59.38 | 59.38 |

| ID | WBS | Task | Duration | Start | Finish | Predecessors | Baseline start | Baseline finish | Baseline duration | Total slack | Free slack | Calendar | Resources | Work | Cost | Baseline cost |
| --- | --- | --- | --- | --- | --- | --- | --- | --- | --- | --- | --- | --- | --- | --- | --- | --- |
| 584 | 2.7.1.14 | **Sh Saddle Welding** | 2.19d | 2018-06-28 08:09 | 2018-06-30 11:09 |  | 2018-06-06 08:09 | 2018-06-08 11:09 | 2.19d | 23.21d | 0d | TEAM_2Shift_Calendar-1 |  | 131h | 7,931.25 | 7,931.25 |
| 585 | 2.7.1.14.1 | Sh-Saddle Pad Fit Up | 3h | 2018-06-28 08:09 | 2018-06-28 11:09 | 580 | 2018-06-06 08:09 | 2018-06-06 11:09 | 3h | 23.21d | 0d | TEAM_2Shift_Calendar-1 | SMAW Welder; Helper; Fitter | 9h | 562.5 | 562.5 |
| 586 | 2.7.1.14.2 | Sh-Saddle Pad Welding | 10h | 2018-06-28 11:09 | 2018-06-28 21:09 | 585 | 2018-06-06 11:09 | 2018-06-06 21:09 | 10h | 23.21d | 0d | TEAM_2Shift_Calendar-1 | Helper [200%]; SMAW Welder [200%] | 40h | 2,375 | 2,375 |
| 587 | 2.7.1.14.3 | Sh-Saddle Matching | 4h | 2018-06-28 21:09 | 2018-06-29 09:09 | 586 | 2018-06-06 21:09 | 2018-06-07 09:09 | 4h | 23.21d | 0d | TEAM_2Shift_Calendar-1 | Grinder [200%]; Fitter [200%] | 16h | 1,000 | 1,000 |
| 588 | 2.7.1.14.4 | Sh-Saddle Fit Up | 5h | 2018-06-29 09:09 | 2018-06-29 14:09 | 587 | 2018-06-07 09:09 | 2018-06-07 14:09 | 5h | 23.21d | 0d | TEAM_2Shift_Calendar-1 | Fitter [200%]; Helper; SMAW Welder | 20h | 1,281.25 | 1,281.25 |
| 589 | 2.7.1.14.5 | Sh-Saddle Welding | 10h | 2018-06-29 14:09 | 2018-06-30 08:09 | 588 | 2018-06-07 14:09 | 2018-06-08 08:09 | 10h | 23.21d | 0d | TEAM_2Shift_Calendar-1 | Helper [200%]; SMAW Welder [200%] | 40h | 2,375 | 2,375 |
| 590 | 2.7.1.14.6 | Sh-Saddle Dress Up | 3h | 2018-06-30 08:09 | 2018-06-30 11:09 | 589 | 2018-06-08 08:09 | 2018-06-08 11:09 | 3h | 23.21d |  | TEAM_2Shift_Calendar-1 | Grinder [200%] | 6h | 337.5 | 337.5 |
| 591 | 2.7.1.15 | **Sh Nde Clearence** | 0.44d | 2018-06-30 11:09 | 2018-06-30 18:09 |  | 2018-06-08 11:09 | 2018-06-08 18:09 | 0.44d | 23.21d |  | TEAM_2Shift_Calendar-1 |  | 14h | 831.25 | 831.25 |
| 592 | 2.7.1.15.1 | Sh-Sh Nde Clearence | 3h | 2018-06-30 11:09 | 2018-06-30 14:09 | 584 | 2018-06-08 11:09 | 2018-06-08 14:09 | 3h | 23.21d | 0d | TEAM_2Shift_Calendar-1 | Helper; Fitter | 6h | 356.25 | 356.25 |
| 593 | 2.7.1.15.2 | TPI Inspection | 4h | 2018-06-30 14:09 | 2018-06-30 18:09 | 592 | 2018-06-08 14:09 | 2018-06-08 18:09 | 4h | 23.21d |  | TEAM_2Shift_Calendar-1 | Helper; Fitter | 8h | 475 | 475 |
| 594 | 2.8 | **Tube bundle Fabrication** | 15.52d | 2018-07-30 21:30 | 2018-08-20 13:45 |  | 2018-07-30 21:30 | 2018-08-20 13:45 | 15.52d | 0d |  | TEAM_2Shift_Calendar-1 |  | 416h | 24,857.81 | 24,857.81 |
| 595 | 2.8.1 | **Tube Bundle Assy** | 2.75d | 2018-07-30 21:30 | 2018-08-02 17:30 |  | 2018-07-30 21:30 | 2018-08-02 17:30 | 2.75d | 0d |  | TEAM_2Shift_Calendar-1 |  | 108h | 6,625 | 6,625 |
| 596 | 2.8.1.1 | Frame Set Up & Tube Sht Set Up | 12h | 2018-07-30 21:30 | 2018-07-31 17:30 | 382, 591 | 2018-07-30 21:30 | 2018-07-31 17:30 | 12h | 0d |  | TEAM_2Shift_Calendar-1 | SMAW Welder; Fitter [200%] | 36h | 2,475 | 2,475 |
| 597 | 2.8.1.2 | Skeliton Assy30Baffles | 8h | 2018-07-31 17:30 | 2018-08-01 09:30 | 596 | 2018-07-31 17:30 | 2018-08-01 09:30 | 8h | 0d |  | TEAM_2Shift_Calendar-1 | Helper [300%]; Fitter [200%] | 40h | 2,300 | 2,300 |
| 598 | 2.8.1.3 | Flush Grind | 1d | 2018-08-01 09:30 | 2018-08-02 09:30 | 597 | 2018-08-01 09:30 | 2018-08-02 09:30 | 1d | 0d |  | TEAM_2Shift_Calendar-1 | Grinder | 16h | 900 | 900 |
| 599 | 2.8.1.4 | DP Check | 0.5d | 2018-08-02 09:30 | 2018-08-02 17:30 | 598 | 2018-08-02 09:30 | 2018-08-02 17:30 | 0.5d | 0d |  | TEAM_2Shift_Calendar-1 | Helper; Fitter | 16h | 950 | 950 |
| 600 | 2.8.2 | **Tube Insert** | 0.58d | 2018-08-02 17:30 | 2018-08-03 10:45 |  | 2018-08-02 17:30 | 2018-08-03 10:45 | 0.58d | 0d |  | TEAM_2Shift_Calendar-1 |  | 46.25h | 2,485.94 | 2,485.94 |
| 601 | 2.8.2.1 | Tube Insert | 9.25h | 2018-08-02 17:30 | 2018-08-03 10:45 | 595 | 2018-08-02 17:30 | 2018-08-03 10:45 | 9.25h | 0d |  | TEAM_2Shift_Calendar-1 | Helper [400%]; Tube (Cost) [0.1%]; Fitter | 46.25h | 2,485.94 | 2,485.94 |
| 602 | 2.8.3 | **Sealing Strip Fit Up Welding** | 0.38d | 2018-08-03 10:45 | 2018-08-03 16:45 |  | 2018-08-03 10:45 | 2018-08-03 16:45 | 0.38d | 0d |  | TEAM_2Shift_Calendar-1 |  | 11h | 650 | 650 |
| 603 | 2.8.3.1 | Sealing Strip Fit Up | 5h | 2018-08-03 10:45 | 2018-08-03 15:45 | 600 | 2018-08-03 10:45 | 2018-08-03 15:45 | 5h | 0d |  | TEAM_2Shift_Calendar-1 | Helper; Fitter | 10h | 593.75 | 593.75 |
| 604 | 2.8.3.2 | Seal strip Weld Grind | 1h | 2018-08-03 15:45 | 2018-08-03 16:45 | 603 | 2018-08-03 15:45 | 2018-08-03 16:45 | 1h | 0d |  | TEAM_2Shift_Calendar-1 | Grinder | 1h | 56.25 | 56.25 |
| 605 | 2.8.4 | **Tube to Tube Sheet Welding** | 1.34d | 2018-08-03 16:45 | 2018-08-06 06:15 |  | 2018-08-03 16:45 | 2018-08-06 06:15 | 1.34d | 0d |  | TEAM_2Shift_Calendar-1 |  | 43h | 3,593.75 | 3,593.75 |
| 606 | 2.8.4.1 | Tube Welding Root | 9.25h | 2018-08-03 16:45 | 2018-08-04 10:00 | 602 | 2018-08-03 16:45 | 2018-08-04 10:00 | 9.25h | 0d |  | TEAM_2Shift_Calendar-1 | Helper; TIG Welder | 18.5h | 1,618.75 | 1,618.75 |
| 607 | 2.8.4.2 | Tube Welding Side Root DP | 1h | 2018-08-04 10:00 | 2018-08-04 11:00 | 606 | 2018-08-04 10:00 | 2018-08-04 11:00 | 1h | 0d |  | TEAM_2Shift_Calendar-1 | Helper; Fitter | 2h | 118.75 | 118.75 |
| 608 | 2.8.4.3 | Tube Welding Final Weld | 9.25h | 2018-08-04 11:00 | 2018-08-04 20:15 | 607 | 2018-08-04 11:00 | 2018-08-04 20:15 | 9.25h | 0d |  | TEAM_2Shift_Calendar-1 | Helper; TIG Welder | 18.5h | 1,618.75 | 1,618.75 |
| 609 | 2.8.4.4 | Tube Welding Final DP | 2h | 2018-08-04 20:15 | 2018-08-06 06:15 | 608 | 2018-08-04 20:15 | 2018-08-06 06:15 | 2h | 0d |  | TEAM_2Shift_Calendar-1 | Helper; Fitter | 4h | 237.5 | 237.5 |

| ID | WBS | Task | Type | Duration | Start | Finish | Predecessors | Baseline start | Baseline finish | Baseline duration | Total slack | Calendar | Resources | Work | Cost | Baseline cost |
| --- | --- | --- | --- | --- | --- | --- | --- | --- | --- | --- | --- | --- | --- | --- | --- | --- |
| 610 | 2.8.5 | **Tube Expansion In Grooves** |  | 0.22d | 2018-08-06 06:15 | 2018-08-06 09:45 |  | 2018-08-06 06:15 | 2018-08-06 09:45 | 0.22d | 0d | TEAM_2Shift_Calendar-1 |  | 7.75h | 453.12 | 453.12 |
| 611 | 2.8.5.1 | Tube Exp 1 Stage |  | 0.75h | 2018-08-06 06:15 | 2018-08-06 07:00 | 605 | 2018-08-06 06:15 | 2018-08-06 07:00 | 0.75h | 0d | TEAM_2Shift_Calendar-1 | Helper [200%]; Fitter | 2.25h | 126.56 | 126.56 |
| 612 | 2.8.5.2 | Tube Trimming |  | 2.75h | 2018-08-06 07:00 | 2018-08-06 09:45 | 611 | 2018-08-06 07:00 | 2018-08-06 09:45 | 2.75h | 0d | TEAM_2Shift_Calendar-1 | Helper; Fitter | 5.5h | 326.56 | 326.56 |
| 613 | 2.8.6 | **Tube Bundle Insert** |  | 10.25d | 2018-08-06 09:45 | 2018-08-20 13:45 |  | 2018-08-06 09:45 | 2018-08-20 13:45 | 10.25d | 0d | TEAM_2Shift_Calendar-1 |  | 200h | 11,050 | 11,050 |
| 614 | 2.8.6.1 | Tube Bundle Insert In Shell |  | 16h | 2018-08-06 09:45 | 2018-08-07 09:45 | 610 | 2018-08-06 09:45 | 2018-08-07 09:45 | 16h | 0d | TEAM_2Shift_Calendar-1 | Helper [800%]; Fitter [300%] | 176h | 9,700 | 9,700 |
| 615 | 2.8.6.2 | Tube Sht Fixing |  | 4h | 2018-08-07 09:45 | 2018-08-07 13:45 | 614 | 2018-08-07 09:45 | 2018-08-07 13:45 | 4h | 0d | TEAM_2Shift_Calendar-1 | Helper [400%]; Fitter [200%] | 24h | 1,350 | 1,350 |
| 616 | 2.8.6.3 | Dummy activity |  | 9d | 2018-08-07 13:45 | 2018-08-20 13:45 | 615 | 2018-08-07 13:45 | 2018-08-20 13:45 | 9d | 0d | TEAM_2Shift_Calendar-1 |  |  |  |  |
| 617 | 2.9 | **Channel Fabrication** |  | 14.34d | 2018-08-20 13:45 | 2018-09-06 19:15 |  | 2018-08-20 13:45 | 2018-09-06 19:15 | 14.34d | 0d | TEAM_2Shift_Calendar-1 |  | 535.75h | 30,575 | 30,575 |
| 618 | 2.9.1 | **Ch Dish CS Fit UpFlg1** |  | 0.44d | 2018-08-21 18:45 | 2018-08-22 09:45 |  | 2018-08-21 18:45 | 2018-08-22 09:45 | 0.44d | 0d | TEAM_2Shift_Calendar-1 |  | 20h | 1,300 | 1,300 |
| 619 | 2.9.1.1 | Ch Cir EP Correction |  | 3h | 2018-08-21 18:45 | 2018-08-21 21:45 | 672 | 2018-08-21 18:45 | 2018-08-21 21:45 | 3h | 0d | TEAM_2Shift_Calendar-1 | Plate (Cost); Fitter [200%] | 6h | 412.5 | 412.5 |
| 620 | 2.9.1.2 | Ch CS Fit UpFlg1 |  | 3h | 2018-08-21 21:45 | 2018-08-22 08:45 | 619 | 2018-08-21 21:45 | 2018-08-22 08:45 | 3h | 0d | TEAM_2Shift_Calendar-1 | SMAW Welder; Helper; Fitter [200%] | 12h | 768.75 | 768.75 |
| 621 | 2.9.1.3 | Ch CS Tack DP Check Flg1 |  | 1h | 2018-08-22 08:45 | 2018-08-22 09:45 | 620 | 2018-08-22 08:45 | 2018-08-22 09:45 | 1h | 0d | TEAM_2Shift_Calendar-1 | Helper; Fitter | 2h | 118.75 | 118.75 |
| 622 | 2.9.1.4 | Dummy Activity | milestone | 0d | 2018-08-22 09:45 | 2018-08-22 09:45 | 621 | 2018-08-22 09:45 | 2018-08-22 09:45 | 0d | 0d | TEAM_2Shift_Calendar-1 |  |  |  |  |
| 623 | 2.9.2 | **Ch Dish CS Welding** |  | 0.52d | 2018-08-22 09:45 | 2018-08-22 18:00 |  | 2018-08-22 09:45 | 2018-08-22 18:00 | 0.52d | 0d | TEAM_2Shift_Calendar-1 |  | 16.25h | 939.06 | 939.06 |
| 624 | 2.9.2.1 | Ch CS Welding Transfere |  | 2h | 2018-08-22 09:45 | 2018-08-22 11:45 | 618 | 2018-08-22 09:45 | 2018-08-22 11:45 | 2h | 0d | TEAM_2Shift_Calendar-1 | Helper [200%]; Fitter | 6h | 337.5 | 337.5 |
| 625 | 2.9.2.2 | Ch CS Welding OuterFlg1 |  | 4h | 2018-08-22 11:45 | 2018-08-22 15:45 | 624 | 2018-08-22 11:45 | 2018-08-22 15:45 | 4h | 0d | TEAM_2Shift_Calendar-1 | Helper; SMAW Welder | 8h | 475 | 475 |
| 626 | 2.9.2.3 | Ch CS Welding Back ChipFlg1 |  | 0.25h | 2018-08-22 15:45 | 2018-08-22 16:00 | 625 | 2018-08-22 15:45 | 2018-08-22 16:00 | 0.25h | 0d | TEAM_2Shift_Calendar-1 | Grinder | 0.25h | 14.06 | 14.06 |
| 627 | 2.9.2.4 | Ch CS Flush GrindingFlg1 |  | 2h | 2018-08-22 16:00 | 2018-08-22 18:00 | 626 | 2018-08-22 16:00 | 2018-08-22 18:00 | 2h | 0d | TEAM_2Shift_Calendar-1 | Grinder | 2h | 112.5 | 112.5 |
| 628 | 2.9.3 | **Ch CS Fit UpFlg1** |  | 0.44d | 2018-08-22 18:00 | 2018-08-23 09:00 |  | 2018-08-22 18:00 | 2018-08-23 09:00 | 0.44d | 0d | TEAM_2Shift_Calendar-1 |  | 17h | 1,056.25 | 1,056.25 |
| 629 | 2.9.3.1 | Ch Length Cutting |  | 2h | 2018-08-22 18:00 | 2018-08-22 20:00 | 623 | 2018-08-22 18:00 | 2018-08-22 20:00 | 2h | 0d | TEAM_2Shift_Calendar-1 | Helper; Gas Cutter | 4h | 237.5 | 237.5 |
| 630 | 2.9.3.2 | Ch Cir EP Correction |  | 2h | 2018-08-22 20:00 | 2018-08-22 22:00 | 629 | 2018-08-22 20:00 | 2018-08-22 22:00 | 2h | 0d | TEAM_2Shift_Calendar-1 | Helper; Fitter | 4h | 237.5 | 237.5 |
| 631 | 2.9.3.3 | Ch CS Fit UpFlg2 |  | 2h | 2018-08-23 06:00 | 2018-08-23 08:00 | 630 | 2018-08-23 06:00 | 2018-08-23 08:00 | 2h | 0d | TEAM_2Shift_Calendar-1 | SMAW Welder; Helper; Fitter [200%] | 8h | 512.5 | 512.5 |
| 632 | 2.9.3.4 | Ch CS Tack DP CheckFlg2 |  | 1h | 2018-08-23 08:00 | 2018-08-23 09:00 | 631 | 2018-08-23 08:00 | 2018-08-23 09:00 | 1h | 0d | TEAM_2Shift_Calendar-1 | Fitter | 1h | 68.75 | 68.75 |
| 633 | 2.9.4 | **Ch CS Flg Welding** |  | 0.56d | 2018-08-23 09:00 | 2018-08-23 18:00 |  | 2018-08-23 09:00 | 2018-08-23 18:00 | 0.56d | 0d | TEAM_2Shift_Calendar-1 |  | 17h | 981.25 | 981.25 |
| 634 | 2.9.4.1 | Ch CS Welding TransfereFlg2 |  | 2h | 2018-08-23 09:00 | 2018-08-23 11:00 | 628 | 2018-08-23 09:00 | 2018-08-23 11:00 | 2h | 0d | TEAM_2Shift_Calendar-1 | Helper [200%]; Fitter | 6h | 337.5 | 337.5 |
| 635 | 2.9.4.2 | Ch CS Welding OuterFlg2 |  | 4h | 2018-08-23 11:00 | 2018-08-23 15:00 | 634 | 2018-08-23 11:00 | 2018-08-23 15:00 | 4h | 0d | TEAM_2Shift_Calendar-1 | Helper; SMAW Welder | 8h | 475 | 475 |
| 636 | 2.9.4.3 | Ch CS Welding Back ChipFlg2 |  | 1h | 2018-08-23 15:00 | 2018-08-23 16:00 | 635 | 2018-08-23 15:00 | 2018-08-23 16:00 | 1h | 0d | TEAM_2Shift_Calendar-1 | Grinder | 1h | 56.25 | 56.25 |
| 637 | 2.9.4.4 | Ch CS Flush GrindingFlg2 |  | 2h | 2018-08-23 16:00 | 2018-08-23 18:00 | 636 | 2018-08-23 16:00 | 2018-08-23 18:00 | 2h | 0d | TEAM_2Shift_Calendar-1 | Grinder | 2h | 112.5 | 112.5 |

| ID | WBS | Task | Type | Duration | Start | Finish | Predecessors | Baseline start | Baseline finish | Baseline duration | Total slack | Calendar | Resources | Work | Cost | Baseline cost |
| --- | --- | --- | --- | --- | --- | --- | --- | --- | --- | --- | --- | --- | --- | --- | --- | --- |
| 638 | 2.9.5 | **Ch CS Welding RtFlg1 & 2** |  | 1.97d | 2018-08-23 18:00 | 2018-08-27 17:30 |  | 2018-08-23 18:00 | 2018-08-27 17:30 | 1.97d | 0d | TEAM_2Shift_Calendar-1 |  | 16h |  |  |
| 639 | 2.9.5.1 | Ch CS Welding Rt |  | 1.97d | 2018-08-23 18:00 | 2018-08-27 17:30 | 633 | 2018-08-23 18:00 | 2018-08-27 17:30 | 1.97d | 0d | TEAM_2Shift_Calendar-1 | SC Radiography (Work) | 16h |  |  |
| 640 | 2.9.6 | **Channel Nozzel Marking** |  | 0.22d | 2018-08-27 17:30 | 2018-08-27 21:00 |  | 2018-08-27 17:30 | 2018-08-27 21:00 | 0.22d | 0d | TEAM_2Shift_Calendar-1 |  | 7h | 415.62 | 415.62 |
| 641 | 2.9.6.1 | Ch Nozzel orientation4"Nozzle-1No |  | 2h | 2018-08-27 17:30 | 2018-08-27 19:30 | 638 | 2018-08-27 17:30 | 2018-08-27 19:30 | 2h | 0d | TEAM_2Shift_Calendar-1 | Helper; Fitter | 4h | 237.5 | 237.5 |
| 642 | 2.9.6.2 | Ch Nozzel Marking2"Nozzle-1No |  | 1.5h | 2018-08-27 19:30 | 2018-08-27 21:00 | 641 | 2018-08-27 19:30 | 2018-08-27 21:00 | 1.5h | 0d | TEAM_2Shift_Calendar-1 | Helper; Fitter | 3h | 178.12 | 178.12 |
| 643 | 2.9.7 | **Ch Nozzel Opening** |  | 0.22d | 2018-08-27 21:00 | 2018-08-28 08:30 |  | 2018-08-27 21:00 | 2018-08-28 08:30 | 0.22d | 0d | TEAM_2Shift_Calendar-1 |  | 7h | 415.62 | 415.62 |
| 644 | 2.9.7.1 | Ch Nozzel Openning-Top4"Nozzle-1No |  | 2h | 2018-08-27 21:00 | 2018-08-28 07:00 | 640 | 2018-08-27 21:00 | 2018-08-28 07:00 | 2h | 0d | TEAM_2Shift_Calendar-1 | Helper; Gas Cutter | 4h | 237.5 | 237.5 |
| 645 | 2.9.7.2 | Ch Nozzel Openning-Bottom2"Nozzle-1No |  | 1.5h | 2018-08-28 07:00 | 2018-08-28 08:30 | 644 | 2018-08-28 07:00 | 2018-08-28 08:30 | 1.5h | 0d | TEAM_2Shift_Calendar-1 | Helper; Gas Cutter | 3h | 178.12 | 178.12 |
| 646 | 2.9.8 | **Ch Nozzel Open EP** |  | 0.22d | 2018-08-28 08:30 | 2018-08-28 12:00 |  | 2018-08-28 08:30 | 2018-08-28 12:00 | 0.22d | 0d | TEAM_2Shift_Calendar-1 |  | 7h | 371.88 | 371.88 |
| 647 | 2.9.8.1 | Ch Nozzel EP4"Nozzle-1No |  | 2h | 2018-08-28 08:30 | 2018-08-28 10:30 | 643 | 2018-08-28 08:30 | 2018-08-28 10:30 | 2h | 0d | TEAM_2Shift_Calendar-1 | Helper; Grinder | 4h | 212.5 | 212.5 |
| 648 | 2.9.8.2 | Ch Nozzel EP2"Nozzle-1No |  | 1.5h | 2018-08-28 10:30 | 2018-08-28 12:00 | 647 | 2018-08-28 10:30 | 2018-08-28 12:00 | 1.5h | 0d | TEAM_2Shift_Calendar-1 | Helper; Grinder | 3h | 159.38 | 159.38 |
| 649 | 2.9.9 | **Ch Nozzel Fit Up** |  | 0.19d | 2018-08-28 12:00 | 2018-08-28 15:00 |  | 2018-08-28 12:00 | 2018-08-28 15:00 | 0.19d | 0d | TEAM_2Shift_Calendar-1 |  | 12h | 768.75 | 768.75 |
| 650 | 2.9.9.1 | Ch Nozzel Fit Up4"Nozzle-1No |  | 2h | 2018-08-28 12:00 | 2018-08-28 14:00 | 646 | 2018-08-28 12:00 | 2018-08-28 14:00 | 2h | 0d | TEAM_2Shift_Calendar-1 | SMAW Welder; Helper; Fitter [200%] | 8h | 512.5 | 512.5 |
| 651 | 2.9.9.2 | Ch Nozzel Fit Up2"Nozzle-1No |  | 1h | 2018-08-28 14:00 | 2018-08-28 15:00 | 650 | 2018-08-28 14:00 | 2018-08-28 15:00 | 1h | 0d | TEAM_2Shift_Calendar-1 | SMAW Welder; Helper; Fitter [200%] | 4h | 256.25 | 256.25 |
| 652 | 2.9.10 | **Ch Nozzel Fit Up Inspection** |  | 0.12d | 2018-08-28 15:00 | 2018-08-28 17:00 |  | 2018-08-28 15:00 | 2018-08-28 17:00 | 0.12d | 0d | TEAM_2Shift_Calendar-1 |  | 4h | 237.5 | 237.5 |
| 653 | 2.9.10.1 | Ch Nozzel Inspection4"Nozzle-1No |  | 1h | 2018-08-28 15:00 | 2018-08-28 16:00 | 649 | 2018-08-28 15:00 | 2018-08-28 16:00 | 1h | 0d | TEAM_2Shift_Calendar-1 | Helper; Fitter | 2h | 118.75 | 118.75 |
| 654 | 2.9.10.2 | Ch Nozzel Inspection2"Nozzle-1No |  | 1h | 2018-08-28 16:00 | 2018-08-28 17:00 | 653 | 2018-08-28 16:00 | 2018-08-28 17:00 | 1h | 0d | TEAM_2Shift_Calendar-1 | Helper; Fitter | 2h | 118.75 | 118.75 |
| 655 | 2.9.11 | **Ch Nozzel Welding** |  | 0.91d | 2018-08-28 17:00 | 2018-08-29 15:30 |  | 2018-08-28 17:00 | 2018-08-29 15:30 | 0.91d | 0d | TEAM_2Shift_Calendar-1 |  | 27h | 1,546.88 | 1,546.88 |
| 656 | 2.9.11.1 | Ch Nozzel Welding Arrangement | milestone | 0d | 2018-08-28 17:00 | 2018-08-28 17:00 | 652 | 2018-08-28 17:00 | 2018-08-28 17:00 | 0d | 0d | TEAM_2Shift_Calendar-1 |  |  |  |  |
| 657 | 2.9.11.2 | Ch Nozzel Welding4"Nozzle-1No |  | 2h | 2018-08-28 17:00 | 2018-08-28 19:00 | 656 | 2018-08-28 17:00 | 2018-08-28 19:00 | 2h | 0d | TEAM_2Shift_Calendar-1 | Helper; SMAW Welder | 4h | 237.5 | 237.5 |
| 658 | 2.9.11.3 | Ch Nozzel Welding2"Nozzle-1No |  | 2h | 2018-08-28 19:00 | 2018-08-28 21:00 | 657 | 2018-08-28 19:00 | 2018-08-28 21:00 | 2h | 0d | TEAM_2Shift_Calendar-1 | Helper; SMAW Welder | 4h | 237.5 | 237.5 |
| 659 | 2.9.11.4 | Ch Nozzel Root DP Check |  | 0.5h | 2018-08-28 21:00 | 2018-08-28 21:30 | 658 | 2018-08-28 21:00 | 2018-08-28 21:30 | 0.5h | 0d | TEAM_2Shift_Calendar-1 | Helper; SMAW Welder | 1h | 59.38 | 59.38 |
| 660 | 2.9.11.5 | Rf Pad Fit Up & Nozzle Fit Up |  | 4h | 2018-08-28 21:30 | 2018-08-29 09:30 | 659 | 2018-08-28 21:30 | 2018-08-29 09:30 | 4h | 0d | TEAM_2Shift_Calendar-1 | Helper; SMAW Welder | 8h | 475 | 475 |
| 661 | 2.9.11.6 | Rf Pad Fit Up Welding |  | 4h | 2018-08-29 09:30 | 2018-08-29 13:30 | 660 | 2018-08-29 09:30 | 2018-08-29 13:30 | 4h | 0d | TEAM_2Shift_Calendar-1 | Helper; Grinder | 8h | 425 | 425 |
| 662 | 2.9.11.7 | Nozzel Welding Flush Grind6''NB |  | 2h | 2018-08-29 13:30 | 2018-08-29 15:30 | 661 | 2018-08-29 13:30 | 2018-08-29 15:30 | 2h | 0d | TEAM_2Shift_Calendar-1 | Grinder | 2h | 112.5 | 112.5 |

| ID | WBS | Task | Duration | Start | Finish | Predecessors | Baseline start | Baseline finish | Baseline duration | Total slack | Calendar | Resources | Work | Cost | Baseline cost |
| --- | --- | --- | --- | --- | --- | --- | --- | --- | --- | --- | --- | --- | --- | --- | --- |
| 663 | 2.9.12 | **Channel Pp Plate Fit Up** | 0.25d | 2018-08-29 15:30 | 2018-08-29 19:30 |  | 2018-08-29 15:30 | 2018-08-29 19:30 | 0.25d | 0d | TEAM_2Shift_Calendar-1 |  | 14h | 887.5 | 887.5 |
| 664 | 2.9.12.1 | Ch Pp Plate Fit Up | 3h | 2018-08-29 15:30 | 2018-08-29 18:30 | 655 | 2018-08-29 15:30 | 2018-08-29 18:30 | 3h | 0d | TEAM_2Shift_Calendar-1 | Helper; SMAW Welder; Fitter [200%] | 12h | 768.75 | 768.75 |
| 665 | 2.9.12.2 | Ch Pp Plate Fit Up Inspection | 1h | 2018-08-29 18:30 | 2018-08-29 19:30 | 664 | 2018-08-29 18:30 | 2018-08-29 19:30 | 1h | 0d | TEAM_2Shift_Calendar-1 | Helper; Fitter | 2h | 118.75 | 118.75 |
| 666 | 2.9.13 | **Ch Pp Plate Welding** | 0.48d | 2018-08-29 19:30 | 2018-08-30 11:15 |  | 2018-08-29 19:30 | 2018-08-30 11:15 | 0.48d | 0d | TEAM_2Shift_Calendar-1 |  | 15.5h | 898.44 | 898.44 |
| 667 | 2.9.13.1 | Ch Pp Plate Welding | 6h | 2018-08-29 19:30 | 2018-08-30 09:30 | 663 | 2018-08-29 19:30 | 2018-08-30 09:30 | 6h | 0d | TEAM_2Shift_Calendar-1 | Helper; SMAW Welder | 12h | 712.5 | 712.5 |
| 668 | 2.9.13.2 | Ch Pp Plate Face Grinding | 1.75h | 2018-08-30 09:30 | 2018-08-30 11:15 | 667 | 2018-08-30 09:30 | 2018-08-30 11:15 | 1.75h | 0d | TEAM_2Shift_Calendar-1 | Helper; Grinder | 3.5h | 185.94 | 185.94 |
| 669 | 2.9.14 | **Channel Nde & Pwht** | 4.12d | 2018-08-30 11:15 | 2018-09-04 13:15 |  | 2018-08-30 11:15 | 2018-09-04 13:15 | 4.12d | 0d | TEAM_2Shift_Calendar-1 |  | 130h | 7,337.5 | 7,337.5 |
| 670 | 2.9.14.1 | Ch All Welding Dressup, DP Check, & SR | 4d | 2018-08-30 11:15 | 2018-09-04 11:15 | 666 | 2018-08-30 11:15 | 2018-09-04 11:15 | 4d | 0d | TEAM_2Shift_Calendar-1 | Grinder [200%] | 128h | 7,200 | 7,200 |
| 671 | 2.9.14.2 | Ch Ch Nde Clearence | 2h | 2018-09-04 11:15 | 2018-09-04 13:15 | 670 | 2018-09-04 11:15 | 2018-09-04 13:15 | 2h | 0d | TEAM_2Shift_Calendar-1 | Fitter | 2h | 137.5 | 137.5 |
| 672 | 2.9.15 | **Tube Exp- Pnuematic Test** | 1.31d | 2018-08-20 13:45 | 2018-08-21 18:45 |  | 2018-08-20 13:45 | 2018-08-21 18:45 | 1.31d | 0d | TEAM_2Shift_Calendar-1 |  | 78h | 4,593.75 | 4,593.75 |
| 673 | 2.9.15.1 | Tube Exp Pnuematic Test | 1d | 2018-08-20 13:45 | 2018-08-21 13:45 | 613 | 2018-08-20 13:45 | 2018-08-21 13:45 | 1d | 0d | TEAM_2Shift_Calendar-1 | Helper [200%]; Fitter [200%] | 64h | 3,800 | 3,800 |
| 674 | 2.9.15.2 | Pnuematic Test TPI Witness | 3h | 2018-08-21 13:45 | 2018-08-21 16:45 | 673 | 2018-08-21 13:45 | 2018-08-21 16:45 | 3h | 0d | TEAM_2Shift_Calendar-1 | Helper; Fitter | 6h | 356.25 | 356.25 |
| 675 | 2.9.15.3 | Cleaning | 2h | 2018-08-21 16:45 | 2018-08-21 18:45 | 674 | 2018-08-21 16:45 | 2018-08-21 18:45 | 2h | 0d | TEAM_2Shift_Calendar-1 | Helper [300%]; Fitter | 8h | 437.5 | 437.5 |
| 676 | 2.9.16 | **Shell Side Hydro** | 1.19d | 2018-09-04 13:15 | 2018-09-05 16:15 |  | 2018-09-04 13:15 | 2018-09-05 16:15 | 1.19d | 0d | TEAM_2Shift_Calendar-1 |  | 74h | 4,412.5 | 4,412.5 |
| 677 | 2.9.16.1 | Shell Side Hydro | 1d | 2018-09-04 13:15 | 2018-09-05 13:15 | 669, 672 | 2018-09-04 13:15 | 2018-09-05 13:15 | 1d | 0d | TEAM_2Shift_Calendar-1 | Helper [200%]; Fitter [200%] | 64h | 3,800 | 3,800 |
| 678 | 2.9.16.2 | Shell Side TPI Witness | 2h | 2018-09-05 13:15 | 2018-09-05 15:15 | 677 | 2018-09-05 13:15 | 2018-09-05 15:15 | 2h | 0d | TEAM_2Shift_Calendar-1 | Fitter [200%] | 4h | 275 | 275 |
| 679 | 2.9.16.3 | De Watering & Dismantle Of Gland | 1h | 2018-09-05 15:15 | 2018-09-05 16:15 | 678 | 2018-09-05 15:15 | 2018-09-05 16:15 | 1h | 0d | TEAM_2Shift_Calendar-1 | Helper [400%]; Fitter [200%] | 6h | 337.5 | 337.5 |
| 680 | 2.9.17 | **Channel Side Hydro** | 1.19d | 2018-09-05 16:15 | 2018-09-06 19:15 |  | 2018-09-05 16:15 | 2018-09-06 19:15 | 1.19d | 0d | TEAM_2Shift_Calendar-1 |  | 74h | 4,412.5 | 4,412.5 |
| 681 | 2.9.17.1 | Shell Side Hydro | 1d | 2018-09-05 16:15 | 2018-09-06 16:15 | 672, 676 | 2018-09-05 16:15 | 2018-09-06 16:15 | 1d | 0d | TEAM_2Shift_Calendar-1 | Helper [200%]; Fitter [200%] | 64h | 3,800 | 3,800 |
| 682 | 2.9.17.2 | Shell Side TPI Witness | 2h | 2018-09-06 16:15 | 2018-09-06 18:15 | 681 | 2018-09-06 16:15 | 2018-09-06 18:15 | 2h | 0d | TEAM_2Shift_Calendar-1 | Fitter [200%] | 4h | 275 | 275 |
| 683 | 2.9.17.3 | De Watering & Dismantle Of Gland | 1h | 2018-09-06 18:15 | 2018-09-06 19:15 | 682 | 2018-09-06 18:15 | 2018-09-06 19:15 | 1h | 0d | TEAM_2Shift_Calendar-1 | Helper [400%]; Fitter [200%] | 6h | 337.5 | 337.5 |
| 684 | 2.10 | **Final Testing** | 3.25d | 2018-09-06 19:15 | 2018-09-12 07:15 |  | 2018-09-06 19:15 | 2018-09-12 07:15 | 3.25d | 0d | TEAM_2Shift_Calendar-1 |  | 232h | 13,550 | 13,550 |
| 685 | 2.10.1 | **Final Hydro** | 2.25d | 2018-09-06 19:15 | 2018-09-11 07:15 |  | 2018-09-06 19:15 | 2018-09-11 07:15 | 2.25d | 0d | TEAM_2Shift_Calendar-1 |  | 136h | 8,150 | 8,150 |
| 686 | 2.10.1.1 | Final Hydro-CH Side | 1d | 2018-09-06 19:15 | 2018-09-07 19:15 | 617, 680 | 2018-09-06 19:15 | 2018-09-07 19:15 | 1d | 0d | TEAM_2Shift_Calendar-1 | Helper [200%]; Fitter [200%] | 64h | 3,800 | 3,800 |
| 687 | 2.10.1.2 | Final TPI Witness | 2h | 2018-09-07 19:15 | 2018-09-07 21:15 | 686 | 2018-09-07 19:15 | 2018-09-07 21:15 | 2h | 0d | TEAM_2Shift_Calendar-1 | Fitter [200%] | 4h | 275 | 275 |
| 688 | 2.10.1.3 | Final Hydro-SH Side | 1d | 2018-09-07 21:15 | 2018-09-10 21:15 | 687 | 2018-09-07 21:15 | 2018-09-10 21:15 | 1d | 0d | TEAM_2Shift_Calendar-1 | Helper [200%]; Fitter [200%] | 64h | 3,800 | 3,800 |
| 689 | 2.10.1.4 | Final TPI Witness | 2h | 2018-09-10 21:15 | 2018-09-11 07:15 | 688 | 2018-09-10 21:15 | 2018-09-11 07:15 | 2h | 0d | TEAM_2Shift_Calendar-1 | Fitter [200%] | 4h | 275 | 275 |

| ID | WBS | Task | Duration | Start | Finish | Predecessors | Baseline start | Baseline finish | Baseline duration | Total slack | Calendar | Resources | Work | Cost | Baseline cost |
| --- | --- | --- | --- | --- | --- | --- | --- | --- | --- | --- | --- | --- | --- | --- | --- |
| 690 | 2.10.2 | **Nitrogen Purging** | 1d | 2018-09-11 07:15 | 2018-09-12 07:15 |  | 2018-09-11 07:15 | 2018-09-12 07:15 | 1d | 0d | TEAM_2Shift_Calendar-1 |  | 96h | 5,400 | 5,400 |
| 691 | 2.10.2.1 | Blind & Nitrogen Purging | 1d | 2018-09-11 07:15 | 2018-09-12 07:15 | 685 | 2018-09-11 07:15 | 2018-09-12 07:15 | 1d | 0d | TEAM_2Shift_Calendar-1 | Helper [400%]; Fitter [200%] | 96h | 5,400 | 5,400 |
| 692 | 2.11 | **Painting & Transportation** | 4d | 2018-09-12 07:15 | 2018-09-18 07:15 |  | 2018-09-12 07:15 | 2018-09-18 07:15 | 4d | 0d | TEAM_2Shift_Calendar-1 |  | 200h |  |  |
| 693 | 2.11.1 | Primer | 1d | 2018-09-12 07:15 | 2018-09-14 07:15 | 690 | 2018-09-12 07:15 | 2018-09-14 07:15 | 1d | 0d | TEAM_2Shift_Calendar-1 | Painter [300%] | 48h |  |  |
| 694 | 2.11.2 | Top Coat1 | 1d | 2018-09-14 07:15 | 2018-09-15 07:15 | 693 | 2018-09-14 07:15 | 2018-09-15 07:15 | 1d | 0d | TEAM_2Shift_Calendar-1 | Painter [300%] | 48h |  |  |
| 695 | 2.11.3 | Top Coat2 | 1d | 2018-09-15 07:15 | 2018-09-17 07:15 | 694 | 2018-09-15 07:15 | 2018-09-17 07:15 | 1d | 0d | TEAM_2Shift_Calendar-1 | Painter [300%] | 48h |  |  |
| 696 | 2.11.4 | Transportation | 1d | 2018-09-17 07:15 | 2018-09-18 07:15 | 695 | 2018-09-17 07:15 | 2018-09-18 07:15 | 1d | 0d | TEAM_2Shift_Calendar-1 | Store [350%] | 56h |  |  |
