# 4209-Dangote

Schedule from MS Project, 2017-08-22 to 2018-11-22, costs in Rs., A marks actual dates.

## Calendars

- TEAM_Stand_Calendar: Mon-Sat 08:30-12:30, 13:30-17:30; Sun off. Exceptions (off unless hours are given): 2017-01-13 to 2023-08-12 (2nd Sat, recurring), 2017-01-26 to 2036-01-26 (Republic Day, recurring), 2017-01-27 to 2023-08-26 (4th Sat, recurring), 2017-05-01 to 2036-05-01 (May Day, recurring), 2017-08-15 to 2036-08-15 (Independence Day, recurring), 2017-08-25 (Vinakya Chaturthi'2017), 2017-09-29 (Ayudha Pooja'2017), 2017-10-02 to 2036-10-02 (Gandhi Jayanti, recurring), 2017-10-18 (Deepavali'2017), 2018-01-15 (Thiruvalluvar Day'2018), 2018-09-13 (Vinakaya Chaturthi'2018), 2018-10-18 (Ayudha Pooja'2018), 2018-11-06 to 2018-11-07 (Deepavali'2018).

## Resources

| Resource |
| --- |
| Client |
| Draftman |
| HOD |
| Marketing |
| PPC Engineer |
| Production Department |
| QC Engineer |
| Design Engineer |
| Purchase Engineer |
| Finance |

## Schedule

| ID | Task | Duration | Start | Finish | Complete | Remaining | Baseline start | Baseline finish | Baseline duration | Total slack | Work | Actual work | Cost | Baseline cost |
| --- | --- | --- | --- | --- | --- | --- | --- | --- | --- | --- | --- | --- | --- | --- |
| 1 | 4209-Dangote | 198d | 2017-08-22 A | 2018-05-07 | 85% | 29.98d | 2017-08-22 | 2018-05-07 | 198d | 152d | 2232.5h | 2170.5h |  |  |
| 2 | 4209-A&F | 143d | 2018-04-02 A | 2018-10-03 |  | 143d | 2018-04-02 | 2018-10-03 | 143d | 37d | 10547.1h |  | 499,060 | 499,060 |
| 3 | 4209 B&G | 155d | 2018-04-02 A | 2018-10-19 |  | 154.45d | 2018-04-02 | 2018-10-19 | 155d | 25d | 7102.82h |  | 295,752.5 | 295,752.5 |
| 4 | 4209 C&H | 147d | 2018-05-15 | 2018-11-22 |  |  | 2018-05-15 | 2018-11-22 | 147d | 0d | 15818.8h |  | 774,838.12 | 774,838.12 |
| 5 | 4209 D&I | 137.29d | 2018-04-02 A | 2018-09-26 |  | 137.29d | 2018-04-02 | 2018-09-26 | 137.29d | 42.71d | 8432.42h |  | 341,375.88 | 341,375.88 |
| 6 | 4209 E&J | 125d | 2018-04-09 A | 2018-09-17 |  | 124.61d | 2018-04-09 | 2018-09-17 | 125d | 49d | 6043.04h |  | 201,875.51 | 201,875.51 |
| 7 | 4209 K&L | 130d | 2018-04-02 A | 2018-09-15 | 1% | 128.83d | 2018-04-02 | 2018-09-15 | 130d | 50d | 12609.4h |  | 507,620.39 | 507,620.39 |
| 8 | 4209 M | 142.3d | 2018-04-02 A | 2018-10-03 | 1% | 141.23d | 2018-04-02 | 2018-10-03 | 142.3d | 37.7d | 6545.98h |  | 304,403.76 | 304,403.76 |
| 9 | 4209 N | 129d | 2018-04-16 A | 2018-09-28 | 1% | 128.16d | 2018-04-16 | 2018-09-28 | 129d | 40d | 3334.95h |  | 128,518.13 | 128,518.13 |
| 10 | 4209-O | 126.88d | 2018-04-16 A | 2018-09-26 |  | 126.88d | 2018-04-16 | 2018-09-26 | 126.88d | 42.12d | 7292.16h |  | 326,361.52 | 326,361.52 |
| 11 | 4209 P | 147.5d | 2018-04-02 A | 2018-10-09 |  | 146.96d | 2018-04-02 | 2018-10-09 | 147.5d | 32.5d | 6959.77h |  | 271,561.59 | 271,561.59 |
| 12 | 4209-Q | 126.86d | 2018-04-16 A | 2018-09-26 |  | 126.46d | 2018-04-16 | 2018-09-26 | 126.86d | 42.14d | 7229.8h |  | 319,470.08 | 319,470.08 |
| 13 | 4209 E&J | 143d | 2018-04-02 A | 2018-10-04 |  | 142.33d | 2018-04-02 | 2018-10-04 | 143d | 37d | 5478.7h |  | 242,899.38 | 242,899.38 |
