# 4211-ASL

Schedule from MS Project, 2017-08-28 to 2018-04-30, costs in ₹, A marks actual dates.

## Calendars

- TEAM_2Shift_Calendar-1: Mon-Sat 06:00-22:00; Sun off. Exceptions (off unless hours are given): 2017-01-13 to 2023-02-11 (2nd Sat, recurring), 2017-01-26 to 2036-01-26 (Republic Day, recurring), 2017-01-27 to 2023-08-26 (4th Sat, recurring), 2017-05-01 to 2036-05-01 (May Day, recurring), 2017-08-15 to 2036-08-15 (Indepdence Day, recurring), 2017-10-02 to 2036-10-02 (Gandhi Jayanti, recurring), 2017-10-19 (Deepavali'2017), 2018-01-15 (Thiruvalluvar Day'2018).
- TEAM_Stand_Calendar: Mon-Sat 08:30-12:30, 13:30-17:30; Sun off. Exceptions (off unless hours are given): 2017-01-13 to 2023-08-12 (2nd Sat, recurring), 2017-01-26 to 2036-01-26 (Republic Day, recurring), 2017-01-27 to 2023-08-26 (4th Sat, recurring), 2017-05-01 to 2036-05-01 (May Day, recurring), 2017-08-15 to 2036-08-15 (Independence Day, recurring), 2017-09-29 (Ayudha Pooja'2017), 2017-10-02 to 2036-10-02 (Gandhi Jayanti, recurring), 2017-10-18 (Deepavali'2017), 2018-01-15 (Thiruvalluvar Day'2018).

## Resources

| Resource | Rate |
| --- | --- |
| CNC Lathe |  |
| Helper | 50 |
| Client |  |
| Marketing |  |
| Store |  |
| PM |  |
| PPC Engineer |  |
| QC Engineer |  |
| TIG Welding Machine |  |
| TIG Welder | 125 |
| SC (Work) |  |
| Production Department |  |
| OAGM |  |
| Milling Operator | 120 |
| Milling Machine |  |
| Lathe |  |
| Lathe Operator | 120 |
| Gas Cutter | 68.75 |
| Fitter | 68.75 |
| Crane |  |
| Purchase Engineer |  |
| Foreman |  |
| Design Engineer |  |
| Consumables (Cost) |  |
| Plate (Cost) |  |
| Rod (Cost) |  |
| Finance |  |
| Budget Cost Labour Expenses |  |
| Budget Cost Material Expenses |  |
| Budget Cost P&F/Transport |  |
| Budget Cost Subcontract |  |
| Budget Cost TPI Charges |  |
| Budget Hours Contract |  |
| Budget Hours TEAM |  |

## Schedule

| ID | WBS | Task | Type | Duration | Start | Finish | Predecessors | Complete | Baseline start | Baseline finish | Baseline duration | Resources | Work | Actual work | Cost | Baseline cost | Actual cost |
| --- | --- | --- | --- | --- | --- | --- | --- | --- | --- | --- | --- | --- | --- | --- | --- | --- | --- |
| 1 | 1 | **Project Initiation** |  | 48d | 2017-08-28 A | 2017-10-30 A |  | 100% | 2017-08-28 | 2017-10-30 | 48d |  | 27.85h | 27.85h |  |  |  |
| 2 | 1.1 | LOA Receipt | milestone | 0d | 2017-08-28 A | 2017-08-28 A |  | 100% | 2017-08-28 | 2017-08-28 | 0d | Marketing |  |  |  |  |  |
| 3 | 1.2 | Wo issue |  | 2d | 2017-09-02 A | 2017-09-04 A | 2 | 100% | 2017-09-02 | 2017-09-04 | 2d | Marketing | 16h | 16h |  |  |  |
| 4 | 1.3 | CRM |  | 2d | 2017-09-04 A | 2017-09-05 A | 3 | 100% | 2017-09-04 | 2017-09-05 | 2d | PM; Marketing; Production Department; Purchase Engineer; QC Engineer | 3.85h | 3.85h |  |  |  |
| 5 | 1.4 | ABG (BG) 10% | milestone | 0d | 2017-09-08 A | 2017-09-08 A | 3FS+7d | 100% | 2017-09-08 | 2017-09-08 | 0d | Finance |  |  |  |  |  |
| 6 | 1.5 | Service order receipt |  | 10d | 2017-10-16 A | 2017-10-30 A | 4FS+30d | 100% | 2017-10-16 | 2017-10-30 | 10d | Marketing | 8h | 8h |  |  |  |
| 7 | 2 | Drawing Printing & Issue |  | 1d | 2017-09-15 A | 2017-09-15 A | 5 | 100% | 2017-09-15 | 2017-09-15 | 1d | Design Engineer | 8h | 8h |  |  |  |
| 8 | 3 | **PR issue** |  | 8.06d | 2017-09-12 A | 2017-09-21 A |  | 100% | 2017-09-12 | 2017-09-21 | 8.06d |  | 12h | 12h |  |  |  |
| 9 | 3.1 | Plates |  | 4h | 2017-09-12 A | 2017-09-13 A | 7 | 100% | 2017-09-12 | 2017-09-13 | 4h | Plate (Cost) [0.1%]; PPC Engineer | 4h | 4h |  |  |  |
| 10 | 3.2 | Rods |  | 8h | 2017-09-21 A | 2017-09-21 A | 7 | 100% | 2017-09-21 | 2017-09-21 | 8h | PPC Engineer; Rod (Cost) [0.1%] | 8h | 8h |  |  |  |
| 11 | 4 | **Mesh** |  | 0.25d | 2017-09-21 A | 2017-09-21 A | 7 | 100% | 2017-09-21 | 2017-09-21 | 0.25d |  | 2h | 2h |  |  |  |
| 12 | 4.1 | Testing components |  | 2h | 2017-09-21 A | 2017-09-21 A | 7 | 100% | 2017-09-21 | 2017-09-21 | 2h | PPC Engineer | 2h | 2h |  |  |  |
| 13 | 5 | **Material Ordering** |  | 13.75d | 2017-09-21 A | 2017-10-11 A |  | 100% | 2017-09-21 | 2017-10-11 | 13.75d |  | 20h | 20h |  |  |  |
| 14 | 5.1 | Ti Plate |  | 5.06d | 2017-09-21 A | 2017-09-28 A | 9FS+4d | 100% | 2017-09-21 | 2017-09-28 | 5.06d | Plate (Cost) [0.1%]; Purchase Engineer | 4h | 4h |  |  |  |
| 15 | 5.2 | Ti rod |  | 13.75d | 2017-09-21 A | 2017-10-11 A | 10FS+4d | 100% | 2017-09-21 | 2017-10-11 | 13.75d | Purchase Engineer; Rod (Cost) [0.1%] | 8h | 8h |  |  |  |
| 16 | 5.3 | SS mesh |  | 10.94d | 2017-09-26 A | 2017-10-10 A | 11FS+2d | 100% | 2017-09-26 | 2017-10-10 | 10.94d | Purchase Engineer | 4h | 4h |  |  |  |
| 17 | 5.4 | Testing components |  | 10.94d | 2017-09-26 A | 2017-10-10 A | 12FS+2d | 100% | 2017-09-26 | 2017-10-10 | 10.94d | Purchase Engineer | 4h | 4h |  |  |  |
| 18 | 6 | **Material receipt** |  | 58.94d | 2017-11-03 A | 2018-01-17 A |  | 100% | 2017-11-03 | 2018-01-17 | 58.94d |  | 10h | 10h |  |  |  |
| 19 | 6.1 | Ti plate |  | 58.94d | 2017-11-03 A | 2018-01-17 A | 13FS+25d | 100% | 2017-11-03 | 2018-01-17 | 58.94d | Plate (Cost) [0.1%]; Purchase Engineer | 4h | 4h |  |  |  |
| 20 | 6.2 | Ti rod |  | 40.06d | 2017-11-03 A | 2017-12-25 A | 13FS+25d | 100% | 2017-11-03 | 2017-12-25 | 40.06d | Purchase Engineer; Rod (Cost) [0.1%] | 2h | 2h |  |  |  |
| 21 | 6.3 | SS Mesh |  | 39.94d | 2017-11-03 A | 2017-12-22 A | 13FS+25d | 100% | 2017-11-03 | 2017-12-22 | 39.94d | Purchase Engineer | 2h | 2h |  |  |  |
| 22 | 6.4 | Testing Components |  | 39.94d | 2017-11-03 A | 2017-12-22 A | 13FS+25d | 100% | 2017-11-03 | 2017-12-22 | 39.94d | Purchase Engineer | 2h | 2h |  |  |  |
| 23 | 7 | Material Costing |  | 56.94d | 2017-08-28 A | 2017-11-09 A |  | 100% | 2017-08-28 | 2017-11-09 | 56.94d |  |  |  |  |  |  |
| 24 | 8 | **QC** |  | 67.51d | 2017-11-13 A | 2018-02-08 A |  | 100% | 2017-11-13 | 2018-02-08 | 67.51d |  | 66h | 66h | 1,500 | 1,500 | 1,500 |
| 25 | 8.1 | Welder Qualification |  | 54.01d | 2017-11-13 A | 2018-01-20 A | 19 | 100% | 2017-11-13 | 2018-01-20 | 54.01d | Production Department; QC Engineer; TIG Welder; TIG Welding Machine | 48h | 48h | 1,500 | 1,500 | 1,500 |
| 26 | 8.2 | Chemical testing |  | 48.2d | 2017-11-30 A | 2018-02-01 A | 25FS+6d | 100% | 2017-11-30 | 2018-02-01 | 48.2d | QC Engineer | 8h | 8h |  |  |  |
| 27 | 8.3 | Mechanical testing |  | 387.58h | 2017-12-07 A | 2018-02-08 A | 25FS+12d | 100% | 2017-12-07 | 2018-02-08 | 387.58h | QC Engineer; SC (Work) | 10h | 10h |  |  |  |

| ID | WBS | Task | Duration | Start | Finish | Predecessors | Complete | Baseline start | Baseline finish | Baseline duration | Constraint | Calendar | Resources | Work | Actual work | Cost | Baseline cost | Actual cost |
| --- | --- | --- | --- | --- | --- | --- | --- | --- | --- | --- | --- | --- | --- | --- | --- | --- | --- | --- |
| 28 | 9 | **Fabrication** | 241.6d | 2017-11-25 A | 2018-04-30 A |  | 100% | 2017-11-25 | 2018-04-30 | 240.23d |  | TEAM_2Shift_Calendar-1 |  | 3359.02h | 3359.02h | 147,868.65 | 148,373.33 | 147,868.65 |
| 29 | 9.1 | Marking | 2.22d | 2017-11-25 A | 2017-11-27 A | 19, 20 | 100% | 2017-11-25 | 2017-11-27 | 2.22d |  | TEAM_2Shift_Calendar-1 | Helper; Fitter; Plate (Cost) [0.1%] | 27.5h | 27.5h | 1,557.81 | 1,557.81 | 1,557.81 |
| 30 | 9.2 | Material identification | 0.06d | 2018-01-25 A | 2018-01-25 A | 18, 29 | 100% | 2018-01-25 | 2018-01-25 | 0.06d |  | TEAM_2Shift_Calendar-1 | Helper; Store [50%]; Crane [50%]; Client; Fitter; QC Engineer | 4h | 4h | 149.88 | 149.87 | 149.88 |
| 31 | 9.3 | Machining of Adaptor | 6d | 2018-02-14 A | 2018-02-16 A | 29, 30 | 100% | 2018-02-14 | 2018-04-02 | 6d |  | TEAM_2Shift_Calendar-1 | CNC Lathe; Lathe Operator; Rod (Cost) [0.1%] | 300h | 300h | 17,999.8 | 17,999.8 | 17,999.8 |
| 32 | 9.4 | Machining of Socket | 6d | 2018-02-06 A | 2018-02-08 A | 29, 31 | 100% | 2018-02-06 | 2018-03-26 | 6d |  | TEAM_2Shift_Calendar-1 | CNC Lathe; Lathe Operator; Rod (Cost) [0.1%] | 300h | 300h | 17,999.8 | 17,999.8 | 17,999.8 |
| 33 | 9.5 | Mechanical& Chemical Prep testing speciman | 1d | 2018-02-27 A | 2018-02-27 A | 29, 25, 32 | 100% | 2018-02-27 | 2018-02-27 | 1d |  | TEAM_2Shift_Calendar-1 | Gas Cutter; Milling Machine; Milling Operator [50%]; Production Department; QC Engineer; SC (Work) | 53.99h | 53.99h | 1,427.84 | 1,427.84 | 1,427.84 |
| 34 | 9.6 | Cutting | 2d | 2017-12-01 A | 2017-12-01 A | 29, 33 | 100% | 2017-12-01 | 2017-12-01 | 2d |  | TEAM_2Shift_Calendar-1 | OAGM; Helper; Gas Cutter | 80h | 80h | 2,000 | 2,000 | 2,000 |
| 35 | 9.7 | Machining | 12d | 2017-12-05 A | 2017-12-12 A | 34 | 100% | 2017-12-05 | 2017-12-12 | 12d |  | TEAM_2Shift_Calendar-1 | Lathe; Lathe Operator | 51.39h | 51.39h |  |  |  |
| 36 | 9.8 | Heat Treatment& Forming | 2.2d | 2018-01-06 A | 2018-01-09 A | 35 | 100% | 2018-01-06 | 2018-01-09 | 2.2d |  |  | Foreman [25%]; Helper [200%]; Fitter | 315h | 315h | 12,468.75 | 12,468.75 | 12,468.75 |
| 37 | 9.9 | Machining of Hemisphere | 19d | 2018-01-24 A | 2018-02-06 A | 36 | 100% | 2018-01-24 | 2018-02-06 | 19d |  | TEAM_2Shift_Calendar-1 | CNC Lathe; Lathe Operator | 500h | 500h | 30,000 | 30,000 | 30,000 |
| 38 | 9.10 | Machining of Slot& Hexagon | 4.94d | 2018-02-23 A | 2018-02-27 A | 37 | 100% | 2018-02-23 | 2018-02-27 | 4.94d |  | TEAM_2Shift_Calendar-1 | Production Department; SC (Work) | 62h | 62h |  |  |  |
| 39 | 9.11 | Component inspection | 0.25d | 2018-03-09 A | 2018-03-09 A | 37, 38 | 100% | 2018-03-09 | 2018-03-09 | 0.25d |  | TEAM_2Shift_Calendar-1 | Client; QC Engineer | 2h | 2h |  |  |  |
| 40 | 9.12 | **Top Hem to Socket Welding** | 34.88d | 2018-03-12 A | 2018-04-02 A |  | 100% | 2018-03-12 | 2018-04-02 | 34.88d |  | TEAM_2Shift_Calendar-1 |  | 489.33h | 489.33h | 15,016.67 | 15,016.67 | 15,016.67 |
| 41 | 9.12.1 | Hem to socket Fitup | 1.04d | 2018-03-12 A | 2018-03-12 A | 39 | 100% | 2018-03-12 | 2018-03-12 | 1.04d | finish no earlier than 2018-03-21 | TEAM_2Shift_Calendar-1 | Helper; TIG Welder; TIG Welding Machine | 8.33h | 8.33h | 416.67 | 416.67 | 416.67 |
| 42 | 9.12.2 | Hem to socket root welding | 17.38d | 2018-03-12 A | 2018-03-21 A | 41SS | 100% | 2018-03-12 | 2018-03-21 | 17.38d | finish no earlier than 2018-03-21 | TEAM_2Shift_Calendar-1 | Helper; TIG Welder; TIG Welding Machine | 148h | 148h | 7,400 | 7,400 | 7,400 |
| 43 | 9.12.3 | RT inspection | 22.98d | 2018-03-12 A | 2018-03-26 A | 42SS | 100% | 2018-03-12 | 2018-03-26 | 22.98d | finish no earlier than 2018-03-21 | TEAM_2Shift_Calendar-1 | Production Department; SC (Work) | 48h | 48h |  |  |  |
| 44 | 9.12.4 | Hem to Socket final welding | 17.38d | 2018-03-12 A | 2018-03-21 A | 43SS | 100% | 2018-03-12 | 2018-03-21 | 17.38d | finish no earlier than 2018-03-21 | TEAM_2Shift_Calendar-1 | Helper; TIG Welder; TIG Welding Machine | 144h | 144h | 7,200 | 7,200 | 7,200 |
| 45 | 9.12.5 | RT inspection | 34.88d | 2018-03-12 A | 2018-04-02 A | 44SS | 100% | 2018-03-12 | 2018-04-02 | 34.88d |  | TEAM_2Shift_Calendar-1 | Production Department; SC (Work) | 141h | 141h |  |  |  |
| 46 | 9.13 | **Bottom Hem to Socket Welding** | 34.83d | 2018-03-12 A | 2018-04-02 A |  | 100% | 2018-03-12 | 2018-04-02 | 34.83d |  | TEAM_2Shift_Calendar-1 |  | 766.72h | 766.72h | 30,836.01 | 30,836.01 | 30,836.01 |
| 47 | 9.13.1 | Hem to socket Fitup | 25.7d | 2018-03-12 A | 2018-03-27 A | 39 | 100% | 2018-03-12 | 2018-03-27 | 25.7d |  | TEAM_2Shift_Calendar-1 | Helper; TIG Welder; TIG Welding Machine | 205.57h | 205.57h | 10,278.67 | 10,278.67 | 10,278.67 |
| 48 | 9.13.2 | Hem to socket root welding | 25.7d | 2018-03-12 A | 2018-03-27 A | 47SS | 100% | 2018-03-12 | 2018-03-27 | 25.7d |  | TEAM_2Shift_Calendar-1 | Helper; TIG Welder; TIG Welding Machine | 205.57h | 205.57h | 10,278.67 | 10,278.67 | 10,278.67 |
| 49 | 9.13.3 | RT inspection | 18.69d | 2018-03-12 A | 2018-03-22 A | 48SS | 100% | 2018-03-12 | 2018-03-22 | 18.69d |  | TEAM_2Shift_Calendar-1 | Production Department; SC (Work) | 10h | 10h |  |  |  |
| 50 | 9.13.4 | Hem to Socket final welding | 25.7d | 2018-03-12 A | 2018-03-27 A | 49SS | 100% | 2018-03-12 | 2018-03-27 | 25.7d |  | TEAM_2Shift_Calendar-1 | Helper; TIG Welder; TIG Welding Machine | 205.57h | 205.57h | 10,278.67 | 10,278.67 | 10,278.67 |
| 51 | 9.13.5 | RT inspection | 34.83d | 2018-03-12 A | 2018-04-02 A | 50SS | 100% | 2018-03-12 | 2018-04-02 | 34.83d |  | TEAM_2Shift_Calendar-1 | Production Department; SC (Work) | 140h | 140h |  |  |  |

| ID | WBS | Task | Duration | Start | Finish | Predecessors | Complete | Baseline start | Baseline finish | Baseline duration | Calendar | Resources | Work | Actual work | Cost | Baseline cost | Actual cost |
| --- | --- | --- | --- | --- | --- | --- | --- | --- | --- | --- | --- | --- | --- | --- | --- | --- | --- |
| 52 | 9.14 | **Hemisphere Welding (Dish Ends)** | 17.5d | 2018-03-19 A | 2018-03-29 A |  | 100% | 2018-03-19 | 2018-03-29 | 17.5d | TEAM_2Shift_Calendar-1 |  | 309.25h | 309.25h | 14,609.16 | 14,609.16 | 14,609.16 |
| 53 | 9.14.1 | Dish Fit Up | 17.5d | 2018-03-19 A | 2018-03-29 A | 45FS-5d, 51FS-5d | 100% | 2018-03-19 | 2018-03-29 | 17.5d | TEAM_2Shift_Calendar-1 | Helper; TIG Welder; TIG Welding Machine | 96h | 96h | 4,800 | 4,800 | 4,800 |
| 54 | 9.14.2 | Dish Welding (Root) | 12d | 2018-03-19 A | 2018-03-27 A | 53SS | 100% | 2018-03-19 | 2018-03-27 | 12d | TEAM_2Shift_Calendar-1 | Helper; TIG Welder; TIG Welding Machine | 96h | 96h | 4,800 | 4,800 | 4,800 |
| 55 | 9.14.3 | RT inspection | 8.75d | 2018-03-19 A | 2018-03-23 A | 54SS | 100% | 2018-03-19 | 2018-03-23 | 8.75d | TEAM_2Shift_Calendar-1 | Production Department; SC (Work) | 10h | 10h |  |  |  |
| 56 | 9.14.4 | Dish Welding (Final) | 11.09d | 2018-03-20 A | 2018-03-28 A | 55SS+3d | 100% | 2018-03-20 | 2018-03-28 | 11.09d | TEAM_2Shift_Calendar-1 | Helper; TIG Welder; TIG Welding Machine | 88.75h | 88.75h | 4,437.74 | 4,437.74 | 4,437.74 |
| 57 | 9.14.5 | Cleaning Process | 1d | 2018-03-26 A | 2018-03-26 A | 56 | 100% | 2018-03-26 | 2018-03-26 | 1d | TEAM_2Shift_Calendar-1 | Helper; Fitter | 10h | 10h | 571.42 | 571.43 | 571.42 |
| 58 | 9.14.6 | RT inspection | 4.75h | 2018-03-26 A | 2018-03-26 A | 57SS | 100% | 2018-03-26 | 2018-03-26 | 4.75h | TEAM_2Shift_Calendar-1 | Production Department; SC (Work) | 8.5h | 8.5h |  |  |  |
| 59 | 9.15 | **Final inspection** | 56.62d | 2018-03-26 A | 2018-04-30 A |  | 100% | 2018-03-26 | 2018-04-30 | 55.26d | TEAM_2Shift_Calendar-1 |  | 97.83h | 97.83h | 3,802.93 | 4,307.62 | 3,802.93 |
| 60 | 9.15.1 | Strain gauge fixing | 1.38d | 2018-03-26 A | 2018-03-27 A | 58 | 100% | 2018-03-26 | 2018-03-27 | 1.38d | TEAM_2Shift_Calendar-1 | Fitter; Helper | 13.33h | 13.33h | 791.66 | 791.67 | 791.66 |
| 61 | 9.15.2 | Hydraulic proof pressure testing | 2d | 2018-04-26 A | 2018-04-27 A | 60FS+50d | 100% | 2018-04-23 | 2018-04-24 | 2d | TEAM_2Shift_Calendar-1 | Foreman [50%]; Helper; Fitter [300%]; QC Engineer | 16h | 16h | 310.75 | 310.75 | 310.75 |
| 62 | 9.15.3 | Cleaning | 1d | 2018-04-27 A | 2018-04-27 A | 61 | 100% | 2018-04-24 | 2018-04-24 | 1d | TEAM_2Shift_Calendar-1 | Helper; Fitter | 12.5h | 12.5h | 742.19 | 742.19 | 742.19 |
| 63 | 9.15.4 | RT inspection | 1d | 2018-04-27 A | 2018-04-27 A | 62SS | 100% | 2018-04-24 | 2018-04-25 | 1.38d | TEAM_2Shift_Calendar-1 | SC (Work) | 8h | 8h |  |  |  |
| 64 | 9.15.5 | Final cleaning | 2h | 2018-04-27 A | 2018-04-27 A | 63 | 100% | 2018-04-25 | 2018-04-25 | 1d | TEAM_2Shift_Calendar-1 | Helper; Fitter | 4h | 4h | 237.5 | 742.19 | 237.5 |
| 65 | 9.15.6 | Inspection clearance from client | 1d | 2018-04-27 A | 2018-04-30 A | 64 | 100% | 2018-04-25 | 2018-04-26 | 1d | TEAM_2Shift_Calendar-1 | Client; QC Engineer | 4h | 4h |  |  |  |
| 66 | 9.15.7 | Stenciling | 1d | 2018-04-30 A | 2018-04-30 A | 65 | 100% | 2018-04-26 | 2018-04-26 | 1d | TEAM_2Shift_Calendar-1 | Helper; Fitter | 10h | 10h | 593.75 | 593.75 | 593.75 |
| 67 | 9.15.8 | Sealing | 1d | 2018-04-30 A | 2018-04-30 A | 66SS | 100% | 2018-04-26 | 2018-04-27 | 1d | TEAM_2Shift_Calendar-1 | Helper; Fitter | 10h | 10h | 593.75 | 593.75 | 593.75 |
| 68 | 9.15.9 | Packing | 1d | 2018-04-30 A | 2018-04-30 A | 67SS | 100% | 2018-04-27 | 2018-04-27 | 1d | TEAM_2Shift_Calendar-1 | Store; Helper [200%] | 16h | 16h | 533.33 | 533.33 | 533.33 |
| 69 | 9.15.10 | Despatch | 0.5d | 2018-04-30 A | 2018-04-30 A | 68SS | 100% | 2018-04-27 | 2018-04-30 | 0.5d | TEAM_2Shift_Calendar-1 | Store | 4h | 4h |  |  |  |
