# 4213 SRF

Schedule from MS Project, 2017-08-31 to 2018-03-16, costs in Rs., A marks actual dates.

## Calendars

- TEAM_2Shift_Calendar-1: Mon-Sat 06:00-22:00; Sun off. Exceptions (off unless hours are given): 2017-01-13 to 2023-02-11 (2nd Sat, recurring), 2017-01-26 to 2036-01-26 (Republic Day, recurring), 2017-01-27 to 2023-08-26 (4th Sat, recurring), 2017-05-01 to 2036-05-01 (May Day, recurring), 2017-08-15 to 2036-08-15 (Indepdence Day, recurring), 2017-10-02 to 2036-10-02 (Gandhi Jayanti, recurring), 2017-10-19 (Deepavali'2017), 2018-01-15 (Thiruvalluvar Day'2018).
- TEAM_Stand_Calendar: Mon-Sat 08:30-12:30, 13:30-17:30; Sun off. Exceptions (off unless hours are given): 2017-01-13 to 2023-08-12 (2nd Sat, recurring), 2017-01-26 to 2036-01-26 (Republic Day, recurring), 2017-01-27 to 2023-08-26 (4th Sat, recurring), 2017-05-01 to 2036-05-01 (May Day, recurring), 2017-08-15 to 2036-08-15 (Independence Day, recurring), 2017-09-29 (Ayudha Pooja'2017), 2017-10-02 to 2036-10-02 (Gandhi Jayanti, recurring), 2017-10-18 (Deepavali'2017), 2018-01-15 (Thiruvalluvar Day'2018).

## Resources

| Resource | Rate |
| --- | --- |
| Marketing |  |
| PMO Head |  |
| Client |  |
| PM |  |
| Store |  |
| QC Engineer |  |
| Draftman |  |
| PPC Engineer |  |
| Helper | 50 |
| Crane |  |
| Fitter | 68.75 |
| Gas Cutter | 68.75 |
| OAGM |  |
| Grinder | 56.25 |
| Grinding Machine |  |
| SMAW Welder | 68.75 |
| SMAW Welding Machine |  |
| TIG Welder | 125 |
| TIG Welding Machine |  |
| Driller | 68.75 |
| Radial Drilling Machine |  |
| Cutting Machine |  |
| Lathe Operator | 120 |
| Lathe |  |
| Plate Bending Machine |  |
| Rolling Machine |  |
| Expanding Machine |  |
| Painter |  |
| SC (Work) |  |
| TPI (Cost) |  |
| Design Engineer |  |
| Purchase Engineer |  |
| SC (Cost) |  |
| Finance |  |

## Schedule

| ID | WBS | Task | Duration | Start | Finish | Predecessors | Complete | Baseline start | Baseline finish | Baseline duration | Resources | Work | Actual work | Cost | Baseline cost | Actual cost |
| --- | --- | --- | --- | --- | --- | --- | --- | --- | --- | --- | --- | --- | --- | --- | --- | --- |
| 1 | 1 | **4213-SRF-HEAT EXCHANGER-E542** | 151.06d | 2017-08-31 08:30 A | 2018-03-16 09:00 A |  | 100% | 2017-08-31 08:00 | 2018-01-30 16:00 | 115.81d |  | 1315.66h | 1315.66h | 40,700.13 | 97,461.96 | 40,700.13 |
| 2 | 1.1 | **Project Initiation** | 5d | 2017-08-31 08:30 A | 2017-09-05 17:30 A |  | 100% | 2017-08-31 08:30 | 2017-09-04 17:30 | 4d |  | 25h | 25h |  |  |  |
| 3 | 1.1.1 | PO Receipt | 1d | 2017-08-31 08:30 A | 2017-08-31 17:30 A |  | 100% | 2017-08-31 08:30 | 2017-08-31 17:30 | 1d | Marketing | 8h | 8h |  |  |  |
| 4 | 1.1.2 | Work Order | 1d | 2017-09-02 08:30 A | 2017-09-02 17:30 A | 3FS+1d | 100% | 2017-09-02 08:30 | 2017-09-02 17:30 | 1d | Marketing | 8h | 8h |  |  |  |
| 5 | 1.1.3 | CRM | 1d | 2017-09-05 08:30 A | 2017-09-05 17:30 A | 3FS+2d | 100% | 2017-09-04 08:30 | 2017-09-04 17:30 | 1d | Marketing; PM; PMO Head | 9h | 9h |  |  |  |
| 6 | 1.2 | **Design** | 23d | 2017-09-06 08:30 A | 2017-10-06 17:30 A |  | 100% | 2017-09-05 08:30 | 2017-09-15 17:30 | 9d |  | 22h | 22h |  |  |  |
| 7 | 1.2.1 | Drawing preparation | 3d | 2017-09-06 08:30 A | 2017-09-08 17:30 A | 5 | 100% | 2017-09-05 08:30 | 2017-09-06 17:30 | 2d | Draftman; Design Engineer | 12h | 12h |  |  |  |
| 8 | 1.2.2 | Drawing submission | 1d | 2017-09-11 08:30 A | 2017-09-11 17:30 A | 7 | 100% | 2017-09-07 08:30 | 2017-09-07 17:30 | 1d | Design Engineer | 8h | 8h |  |  |  |
| 9 | 1.2.3 | Drawing Approval | 1d | 2017-10-06 08:30 A | 2017-10-06 17:30 A | 8FS+5d | 100% | 2017-09-15 08:30 | 2017-09-15 17:30 | 1d | Client | 2h | 2h |  |  |  |
| 10 | 1.3 | **PR Issue** | 4d | 2017-09-13 08:30 A | 2017-09-16 17:30 A |  | 100% | 2017-09-08 08:30 | 2017-09-11 17:30 | 2d |  | 16h | 16h |  |  |  |
| 11 | 1.3.1 | Plate,pipes | 2d | 2017-09-14 08:30 A | 2017-09-15 17:30 A | 8 | 100% | 2017-09-08 08:30 | 2017-09-11 17:30 | 2d | PPC Engineer | 3h | 3h |  |  |  |
| 12 | 1.3.2 | Rods | 2d | 2017-09-15 08:30 A | 2017-09-16 17:30 A | 8 | 100% | 2017-09-08 08:30 | 2017-09-11 17:30 | 2d | PPC Engineer | 1.5h | 1.5h |  |  |  |
| 13 | 1.3.3 | Forgings(Std,Non-Std,Blank) | 3d | 2017-09-13 08:30 A | 2017-09-15 17:30 A | 8 | 100% | 2017-09-08 08:30 | 2017-09-11 17:30 | 2d | PPC Engineer | 3h | 3h |  |  |  |
| 14 | 1.3.4 | Tubes | 2d | 2017-09-14 08:30 A | 2017-09-15 17:30 A | 8 | 100% | 2017-09-08 08:30 | 2017-09-11 17:30 | 2d | PPC Engineer | 4h | 4h |  |  |  |
| 15 | 1.3.5 | Spacer | 2d | 2017-09-15 08:30 A | 2017-09-16 17:30 A | 8 | 100% | 2017-09-08 08:30 | 2017-09-11 17:30 | 2d | PPC Engineer | 0.5h | 0.5h |  |  |  |
| 16 | 1.3.6 | Gaskets | 2d | 2017-09-15 08:30 A | 2017-09-16 17:30 A | 8 | 100% | 2017-09-08 08:30 | 2017-09-11 17:30 | 2d | PPC Engineer | 1h | 1h |  |  |  |
| 17 | 1.3.7 | Fastners | 2d | 2017-09-15 08:30 A | 2017-09-16 17:30 A | 8 | 100% | 2017-09-08 08:30 | 2017-09-11 17:30 | 2d | PPC Engineer | 1h | 1h |  |  |  |
| 18 | 1.3.8 | Consumables | 2d | 2017-09-14 08:30 A | 2017-09-15 17:30 A | 8 | 100% | 2017-09-08 08:30 | 2017-09-11 17:30 | 2d | PPC Engineer | 2h | 2h |  |  |  |
| 19 | 1.4 | **Material Ordering** | 96d | 2017-09-20 08:30 A | 2018-01-23 17:30 A |  | 100% | 2017-09-15 08:30 | 2017-09-18 17:30 | 3d |  | 184h | 184h |  |  |  |
| 20 | 1.4.1 | Plate,pipes | 3d | 2017-11-17 08:30 A | 2017-11-20 17:30 A | 11FS+3d | 100% | 2017-09-15 08:30 | 2017-09-18 17:30 | 3d | Purchase Engineer | 24h | 24h |  |  |  |
| 21 | 1.4.2 | Rods | 2d | 2017-10-11 08:30 A | 2017-10-12 17:30 A | 12FS+3d | 100% | 2017-09-15 08:30 | 2017-09-18 17:30 | 3d | Purchase Engineer | 16h | 16h |  |  |  |
| 22 | 1.4.3 | Forgings(Std,Non-Std,Blank) | 3d | 2017-10-06 08:30 A | 2017-10-09 17:30 A | 13FS+3d | 100% | 2017-09-15 08:30 | 2017-09-18 17:30 | 3d | Purchase Engineer | 24h | 24h |  |  |  |
| 23 | 1.4.4 | Tubes | 3d | 2017-11-03 08:30 A | 2017-11-06 17:30 A | 14FS+3d | 100% | 2017-09-15 08:30 | 2017-09-18 17:30 | 3d | Purchase Engineer | 24h | 24h |  |  |  |
| 24 | 1.4.5 | Spacer | 3d | 2017-10-12 08:30 A | 2017-10-16 17:30 A | 15FS+3d | 100% | 2017-09-15 08:30 | 2017-09-18 17:30 | 3d | Purchase Engineer | 24h | 24h |  |  |  |
| 25 | 1.4.6 | Gaskets | 3d | 2017-11-02 08:30 A | 2017-11-04 17:30 A | 16FS+3d | 100% | 2017-09-15 08:30 | 2017-09-18 17:30 | 3d | Purchase Engineer | 24h | 24h |  |  |  |
| 26 | 1.4.7 | Fastners | 3d | 2018-01-20 08:30 A | 2018-01-23 17:30 A | 17FS+3d | 100% | 2017-09-15 08:30 | 2017-09-18 17:30 | 3d | Purchase Engineer | 24h | 24h |  |  |  |
| 27 | 1.4.8 | Consumables | 3d | 2017-09-20 08:30 A | 2017-09-22 17:30 A | 18FS+3d | 100% | 2017-09-15 08:30 | 2017-09-18 17:30 | 3d | Purchase Engineer | 24h | 24h |  |  |  |

Notes:
- 10: Channel shell 500NBXSCH.30x433Lg-SA516 Gr.70SA 106GR.B / Channel flange 500NBX150#XSORF-SA 105 / U tubes (2.11thk) 50 Nos SB 163 UNS no.4400 / Standard Forging- (N17-80NB,N18-100NB)SA105 / PIPE-(N17-80NB,N18-100NB)Xsch.80 SA106GR.B / Blank Forging(60.5T)-SB 127 UNS NO.4400 / Support plate Ø487 (16T,10T)-SB-127US NO.4400 / Tie rod Ø10x(2860/2160/1460)Lg -Monel / Spacer OD 25.4X2.11T SB 163 UNS N0.4400 / Pass partition plate(10T) - SA 516 Gr.70 / Blind flange Ø700X68T- SA 105/516 GR.70 / Gaskets / Fastners-SA 193 GR.B7 / Cosumables
- 19: Channel shell 500NBXSCH.30x433Lg-SA516 Gr.70SA 106GR.B / Channel flange 500NBX150#XSORF-SA 105 / U tubes (2.11thk) 50 Nos SB 163 UNS no.4400 / Standard Forging- (N17-80NB,N18-100NB)SA105 / PIPE-(N17-80NB,N18-100NB)Xsch.80 SA106GR.B / Blank Forging(60.5T)-SB 127 UNS NO.4400 / Support plate Ø487 (16T,10T)-SB-127US NO.4400 / Tie rod Ø10x(2860/2160/1460)Lg -Monel / Spacer OD 25.4X2.11T SB 163 UNS N0.4400 / Pass partition plate(10T) - SA 516 Gr.70 / Blind flange Ø700X68T- SA 105/516 GR.70 / Gaskets / Fastners-SA 193 GR.B7 / Cosumables
- 20: stock
- 21: stock
- 27: stock

| ID | WBS | Task | Duration | Start | Finish | Predecessors | Complete | Baseline start | Baseline finish | Baseline duration | Resources | Work | Actual work | Cost | Baseline cost | Actual cost |
| --- | --- | --- | --- | --- | --- | --- | --- | --- | --- | --- | --- | --- | --- | --- | --- | --- |
| 28 | 1.5 | **Material Receipt** | 68d | 2017-11-15 08:30 A | 2018-02-09 17:30 A |  | 100% | 2017-11-18 08:30 | 2017-12-20 15:30 | 25.75d |  | 32h | 32h | 125 | 150 | 125 |
| 29 | 1.5.1 | Channel shell 500NBXSCH.30x433Lg-SA516 Gr.70\SA 106GR.B | 5h | 2018-01-18 08:30 A | 2018-01-18 14:30 A | 20FS+45d | 100% | 2017-11-18 08:30 | 2017-11-18 14:30 | 5h | Store; Purchase Engineer | 5h | 5h |  |  |  |
| 30 | 1.5.2 | Channel flange 500NBX150#XSORF-SA 105 | 242h | 2017-11-17 08:30 A | 2017-12-26 10:30 A | 21FS+56d | 100% | 2017-12-02 08:30 | 2017-12-02 10:30 | 2h | Crane; Store; Purchase Engineer | 4h | 4h |  |  |  |
| 31 | 1.5.3 | U tubes (2.11thk) 50 Nos SB 163 UNS no.4400 | 1d | 2018-02-08 08:30 A | 2018-02-08 17:30 A | 23FS+70d | 100% | 2017-12-20 08:30 | 2017-12-20 15:30 | 6h | Crane; Store; Purchase Engineer | 3.5h | 3.5h |  |  |  |
| 32 | 1.5.4 | Standard Forging- (N17-80NB,N18-100NB)SA105 | 216h | 2017-11-17 08:30 A | 2017-12-20 17:30 A | 22FS+56d | 100% | 2017-12-02 08:30 | 2017-12-02 10:30 | 2h | Crane; Store; Purchase Engineer | 1h | 1h |  |  |  |
| 33 | 1.5.5 | Pipe-(N17-80NB,N18-100NB)Xsch.80 SA106GR.B | 23d | 2018-01-02 08:30 A | 2018-02-01 17:30 A | 20FS+56d | 100% | 2017-12-02 08:30 | 2017-12-02 10:30 | 2h | Store; Purchase Engineer | 1h | 1h |  |  |  |
| 34 | 1.5.6 | Blank Forging(60.5T)-SB 127 UNS NO.4400 | 1d | 2018-01-18 08:30 A | 2018-01-18 17:30 A | 22FS+70d | 100% | 2017-12-20 08:30 | 2017-12-20 11:30 | 3h | Crane; Store; Purchase Engineer | 3.5h | 3.5h |  |  |  |
| 35 | 1.5.7 | Support plate Ø487 (16T,10T)-SB-127US NO.4400 | 18d | 2018-01-18 08:30 A | 2018-02-09 17:30 A | 20FS+63d | 100% | 2017-12-12 08:30 | 2017-12-12 14:30 | 5h | Store; Purchase Engineer | 1h | 1h |  |  |  |
| 36 | 1.5.8 | Tie rod Ø10x(2860/2160/1460)Lg -Monel | 39d | 2017-11-15 08:30 A | 2018-01-02 17:30 A | 21FS+63d | 100% | 2017-12-12 08:30 | 2017-12-12 10:30 | 2h | Store; Purchase Engineer | 2h | 2h |  |  |  |
| 37 | 1.5.9 | Spacer OD 25.4X2.11T SB 163 UNS N0.4400 | 2h | 2018-01-05 08:30 A | 2018-01-05 10:30 A | 24FS+63d | 100% | 2017-12-12 08:30 | 2017-12-12 10:30 | 2h | Store; Purchase Engineer | 2h | 2h |  |  |  |
| 38 | 1.5.10 | Pass partition plate(10T) - SA 516 Gr.70 | 2h | 2018-01-18 08:30 A | 2018-01-18 10:30 A | 20FS+45d | 100% | 2017-11-18 08:30 | 2017-11-18 10:30 | 2h | Store; Purchase Engineer | 2h | 2h |  |  |  |
| 39 | 1.5.11 | Blind flange Ø700X68T- SA 105/516 GR.70 | 216h | 2017-11-17 08:30 A | 2017-12-20 17:30 A | 22FS+56d | 100% | 2017-12-02 08:30 | 2017-12-02 10:30 | 2h | Crane; Store; Purchase Engineer | 2h | 2h |  |  |  |
| 40 | 1.5.12 | Gaskets | 273h | 2017-12-04 08:30 A | 2018-01-17 09:30 A | 25FS+56d | 100% | 2017-12-02 08:30 | 2017-12-02 09:30 | 1h | Helper; Store | 2h | 2h | 50 | 50 | 50 |
| 41 | 1.5.13 | Fastners-SA 193 GR.B7 | 1d | 2018-02-03 08:30 A | 2018-02-03 17:30 A | 26FS+56d | 100% | 2017-12-02 08:30 | 2017-12-02 09:30 | 1h | Helper; Store | 1h | 1h | 25 | 50 | 25 |
| 42 | 1.5.14 | Cosumables | 1h | 2018-02-03 08:30 A | 2018-02-03 09:30 A | 26FS+56d | 100% | 2017-12-02 08:30 | 2017-12-02 09:30 | 1h | Helper; Store | 2h | 2h | 50 | 50 | 50 |
| 43 | 1.6 | **ABG** | 33d | 2017-11-24 08:30 A | 2018-01-04 17:30 A |  | 100% | 2017-12-20 15:30 | 2017-12-26 15:30 | 4d |  | 16h | 16h |  |  |  |
| 44 | 1.6.1 | ABG Submission(20%) | 2d | 2017-11-24 08:30 A | 2017-11-27 17:30 A | 28 | 100% | 2017-12-20 15:30 | 2017-12-22 15:30 | 2d | Finance | 8h | 8h |  |  |  |
| 45 | 1.6.2 | ABG Approval | 1d | 2018-01-04 08:30 A | 2018-01-04 17:30 A | 44 | 100% | 2017-12-22 15:30 | 2017-12-26 15:30 | 2d | Client; Finance | 8h | 8h |  |  |  |
| 46 | 1.7 | **QA** | 26d | 2018-01-19 08:30 A | 2018-02-21 17:30 A |  | 100% | 2017-09-16 08:30 | 2017-12-22 15:30 | 74.75d |  | 46h | 46h |  |  |  |
| 47 | 1.7.1 | Qap sumission | 3d | 2018-01-22 08:30 A | 2018-01-24 17:30 A | 9 | 100% | 2017-09-16 08:30 | 2017-09-18 17:30 | 2d | QC Engineer | 6h | 6h |  |  |  |
| 48 | 1.7.2 | Raw material inspection(Plates) | 2d | 2018-02-12 14:30 A | 2018-02-14 14:30 A | 35, 38, 29 | 100% | 2017-12-12 14:30 | 2017-12-14 14:30 | 2d | QC Engineer | 10h | 10h |  |  |  |
| 49 | 1.7.3 | Raw material inspection(Forgings) | 2d | 2018-01-19 08:30 A | 2018-01-20 17:30 A | 30, 32, 34, 39 | 100% | 2017-12-20 11:30 | 2017-12-22 11:30 | 2d | QC Engineer | 16h | 16h |  |  |  |
| 50 | 1.7.4 | Raw material inspection(Tubes) | 1d | 2018-02-21 08:30 A | 2018-02-21 17:30 A | 31, 36, 37 | 100% | 2017-12-20 15:30 | 2017-12-22 15:30 | 2d | QC Engineer | 4h | 4h |  |  |  |
| 51 | 1.7.5 | Raw material inspection(Gaskets,consumable) | 2d | 2018-02-05 08:30 A | 2018-02-06 17:30 A | 40, 41, 42 | 100% | 2017-12-02 09:30 | 2017-12-05 09:30 | 2d | QC Engineer | 10h | 10h |  |  |  |

Notes:
- 29: stock
- 33: stock
- 35: stock
- 36: Qty(4/1/1) stock
- 37: 13 NOS stock
- 38: 2 Nos stock

| ID | WBS | Task | Duration | Start | Finish | Predecessors | Complete | Baseline start | Baseline finish | Baseline duration | Calendar | Resources | Work | Actual work | Cost | Baseline cost | Actual cost |
| --- | --- | --- | --- | --- | --- | --- | --- | --- | --- | --- | --- | --- | --- | --- | --- | --- | --- |
| 52 | 1.8 | **Fabrication** | 90.44d | 2018-01-02 17:30 A | 2018-03-02 21:00 A |  | 100% | 2017-08-31 08:00 | 2018-01-30 16:00 | 232.76d | TEAM_2Shift_Calendar-1 |  | 933.66h | 933.66h | 39,562.63 | 97,311.96 | 39,562.63 |
| 53 | 1.8.1 | **Nozzle Fabrication** | 14.69d | 2018-02-02 10:30 A | 2018-02-12 16:01 A |  | 100% | 2017-12-02 10:30 | 2017-12-06 14:34 | 6.5d | TEAM_2Shift_Calendar-1 |  | 66.01h | 66.01h | 2,937.92 | 4,337.5 | 2,937.92 |
| 54 | 1.8.1.1 | Nozzle Pipe Receipt | 1d | 2018-02-02 10:30 A | 2018-02-02 18:31 A | 33 | 100% | 2017-12-02 10:30 | 2017-12-02 18:31 | 1d | TEAM_2Shift_Calendar-1 | Store | 5h | 5h |  |  |  |
| 55 | 1.8.1.2 | Inward Inspection | 4h | 2018-02-03 08:30 A | 2018-02-03 12:30 A | 54 | 100% | 2017-12-02 18:31 | 2017-12-04 06:31 | 4h | TEAM_2Shift_Calendar-1 | Helper; QC Engineer | 8h | 8h | 400 | 400 | 400 |
| 56 | 1.8.1.3 | **Nozzle Prep** | 12.94d | 2018-02-03 08:30 A | 2018-02-12 16:01 A |  | 100% | 2017-12-04 06:31 | 2017-12-06 14:34 | 5d | TEAM_2Shift_Calendar-1 |  | 53.01h | 53.01h | 2,537.92 | 3,937.5 | 2,537.92 |
| 57 | 1.8.1.3.1 | Nozzle Pipe Marking | 1d | 2018-02-03 12:30 A | 2018-02-03 20:30 A | 55 | 100% | 2017-12-04 06:31 | 2017-12-04 08:31 | 2h | TEAM_2Shift_Calendar-1 | Fitter; Helper | 4h | 4h | 237.5 | 237.5 | 237.5 |
| 58 | 1.8.1.3.2 | Nozzle Pipe Stamping | 1d | 2018-02-03 08:30 A | 2018-02-03 16:31 A | 57 | 100% | 2017-12-04 08:31 | 2017-12-04 12:31 | 4h | TEAM_2Shift_Calendar-1 | QC Engineer; TPI (Cost) [0.1%] | 2h | 2h |  |  |  |
| 59 | 1.8.1.3.3 | Nozzle Pipe Cutting | 1d | 2018-02-05 06:00 A | 2018-02-05 14:00 A | 58 | 100% | 2017-12-04 12:31 | 2017-12-04 15:32 | 3h | TEAM_2Shift_Calendar-1 | Helper; Gas Cutter; OAGM | 3h | 3h | 118.87 | 356.25 | 118.87 |
| 60 | 1.8.1.3.4 | Nozzle Pipe EP | 1d | 2018-02-07 06:00 A | 2018-02-07 14:00 A | 59 | 100% | 2017-12-04 15:32 | 2017-12-04 18:32 | 3h | TEAM_2Shift_Calendar-1 | Grinder; Grinding Machine | 2h | 2h | 56.31 | 168.75 | 56.31 |
| 61 | 1.8.1.3.5 | Nozzle Flange +Pipe Fitup | 1d | 2018-02-07 14:01 A | 2018-02-08 06:01 A | 32, 60 | 100% | 2017-12-04 18:32 | 2017-12-05 07:32 | 5h | TEAM_2Shift_Calendar-1 | Fitter; Helper; SMAW Welder; SMAW Welding Machine | 16h | 16h | 750 | 937.5 | 750 |
| 62 | 1.8.1.3.6 | Nozzle Flange +Pipe Fitup Inspection | 1d | 2018-02-08 06:01 A | 2018-02-08 14:02 A | 61 | 100% | 2017-12-05 07:32 | 2017-12-05 09:32 | 2h | TEAM_2Shift_Calendar-1 | Fitter [200%] | 2h | 2h | 137.5 | 275 | 137.5 |
| 63 | 1.8.1.3.7 | Nozzle Flange +Pipe Root Tig Welding | 1d | 2018-02-09 06:00 A | 2018-02-09 14:00 A | 62 | 100% | 2017-12-05 09:32 | 2017-12-05 14:33 | 5h | TEAM_2Shift_Calendar-1 | TIG Welder; TIG Welding Machine; Helper [200%] | 15h | 15h | 875 | 1,125 | 875 |
| 64 | 1.8.1.3.8 | Nozzle Flange +Pipe Filler Pass Welding | 1d | 2018-02-12 06:00 A | 2018-02-12 14:00 A | 63 | 100% | 2017-12-05 14:33 | 2017-12-05 20:33 | 6h | TEAM_2Shift_Calendar-1 | Helper; SMAW Welder; SMAW Welding Machine | 6.01h | 6.01h | 237.74 | 712.5 | 237.74 |
| 65 | 1.8.1.3.9 | Flush Grinding | 1h | 2018-02-12 14:01 A | 2018-02-12 15:01 A | 64 | 100% | 2017-12-05 20:33 | 2017-12-05 21:33 | 1h | TEAM_2Shift_Calendar-1 | Grinder; Grinding Machine | 2h | 2h | 56.25 | 56.25 | 56.25 |
| 66 | 1.8.1.3.10 | DP check | 1h | 2018-02-12 15:01 A | 2018-02-12 16:01 A | 65 | 100% | 2017-12-05 21:33 | 2017-12-06 06:33 | 1h | TEAM_2Shift_Calendar-1 | Fitter | 1h | 1h | 68.75 | 68.75 | 68.75 |
| 67 | 1.8.2 | **Baffle Fabrication** | 41.63d | 2018-01-24 06:00 A | 2018-02-20 19:01 A |  | 100% | 2017-08-31 08:00 | 2017-12-26 06:40 | 179.65d | TEAM_2Shift_Calendar-1 |  | 154.51h | 154.51h | 5,331.47 | 10,868.75 | 5,331.47 |
| 68 | 1.8.2.1 | **Preparation** | 25d | 2018-01-24 06:00 A | 2018-02-09 14:00 A |  | 100% | 2017-12-12 14:30 | 2017-12-15 11:32 | 5.62d | TEAM_2Shift_Calendar-1 |  | 67.5h | 67.5h | 2,768.97 | 4,000 | 2,768.97 |
| 69 | 1.8.2.1.1 | Marking | 1d | 2018-01-24 06:00 A | 2018-01-24 14:00 A | 35 | 100% | 2017-12-13 07:30 | 2017-12-13 14:31 | 7h | TEAM_2Shift_Calendar-1 | Fitter; Helper | 3.5h | 3.5h | 212.72 | 831.25 | 212.72 |
| 70 | 1.8.2.1.2 | Cutting | 8h | 2018-01-24 14:01 A | 2018-01-25 06:01 A | 69 | 100% | 2017-12-13 14:31 | 2017-12-14 06:31 | 8h | TEAM_2Shift_Calendar-1 | Helper; Gas Cutter; OAGM | 24h | 24h | 950 | 950 | 950 |
| 71 | 1.8.2.1.3 | Grinding | 4d | 2018-02-05 06:00 A | 2018-02-07 06:02 A | 70FS+4d | 100% | 2017-12-14 06:31 | 2017-12-14 18:32 | 12h | TEAM_2Shift_Calendar-1 | Grinder; Grinding Machine | 24h | 24h | 675 | 675 | 675 |
| 72 | 1.8.2.1.4 | Stacking | 1d | 2018-02-08 06:00 A | 2018-02-08 14:00 A | 71 | 100% | 2017-12-14 18:32 | 2017-12-15 08:32 | 6h | TEAM_2Shift_Calendar-1 | Helper; Fitter | 11h | 11h | 643.75 | 712.5 | 643.75 |
| 73 | 1.8.2.1.5 | Center Line Marking | 1d | 2018-02-09 06:00 A | 2018-02-09 14:00 A | 72 | 100% | 2017-12-15 08:32 | 2017-12-15 11:32 | 3h | TEAM_2Shift_Calendar-1 | Helper; Fitter | 5h | 5h | 287.5 | 356.25 | 287.5 |
| 74 | 1.8.2.2 | **Activities for holes** | 16.01d | 2018-02-09 14:01 A | 2018-02-20 14:04 A |  | 100% | 2017-12-15 11:32 | 2017-12-25 11:39 | 14d | TEAM_2Shift_Calendar-1 |  | 76.01h | 76.01h | 1,956.25 | 5,675 | 1,956.25 |
| 75 | 1.8.2.2.1 | Drilling | 8.01d | 2018-02-09 14:01 A | 2018-02-15 14:05 A | 73 | 100% | 2017-12-15 11:32 | 2017-12-18 11:34 | 4d | TEAM_2Shift_Calendar-1 | SC (Work) | 25h | 25h |  |  |  |
| 76 | 1.8.2.2.2 | Destacking | 1d | 2018-02-16 06:00 A | 2018-02-16 14:00 A | 75 | 100% | 2017-12-18 11:34 | 2017-12-18 15:35 | 4h | TEAM_2Shift_Calendar-1 | Helper; Fitter | 8h | 8h | 475 | 475 | 475 |
| 77 | 1.8.2.2.3 | Hole Chamfering | 2d | 2018-02-16 14:01 A | 2018-02-17 14:02 A | 76 | 100% | 2017-12-18 15:35 | 2017-12-19 15:36 | 2d | TEAM_2Shift_Calendar-1 | Driller; Radial Drilling Machine | 16h | 16h | 550 | 1,100 | 550 |
| 78 | 1.8.2.2.4 | Edge Trimming | 1d | 2018-02-17 14:02 A | 2018-02-19 06:02 A | 77 | 100% | 2017-12-19 15:36 | 2017-12-19 21:36 | 6h | TEAM_2Shift_Calendar-1 | Grinder; Grinding Machine | 6h | 6h | 168.75 | 337.5 | 168.75 |
| 79 | 1.8.2.2.5 | Grinding | 1d | 2018-02-19 06:02 A | 2018-02-19 14:03 A | 78 | 100% | 2017-12-19 21:36 | 2017-12-20 13:36 | 8h | TEAM_2Shift_Calendar-1 | Grinder; Grinding Machine | 6h | 6h | 168.75 | 450 | 168.75 |
| 80 | 1.8.2.2.6 | Stacking | 1d | 2018-02-19 14:03 A | 2018-02-20 06:03 A | 79 | 100% | 2017-12-20 13:36 | 2017-12-20 19:37 | 6h | TEAM_2Shift_Calendar-1 | Helper; Fitter | 6h | 6h | 356.25 | 712.5 | 356.25 |
| 81 | 1.8.2.2.7 | Through Hole Check | 1d | 2018-02-20 06:03 A | 2018-02-20 14:04 A | 80 | 100% | 2017-12-20 19:37 | 2017-12-21 11:37 | 1d | TEAM_2Shift_Calendar-1 | Helper; Fitter [200%] | 4h | 4h | 237.5 | 1,500 | 237.5 |
| 82 | 1.8.2.2.8 | OD Machining | 3d | 2018-02-19 06:00 A | 2018-02-20 14:02 A |  | 100% | 2017-12-22 11:38 | 2017-12-25 11:39 | 2d | TEAM_2Shift_Calendar-1 | SC (Work) | 5.01h | 5.01h |  |  |  |
| 83 | 1.8.2.3 | Destacking | 3h | 2018-02-20 14:02 A | 2018-02-20 17:02 A | 82 | 100% | 2017-12-25 11:39 | 2017-12-25 16:40 | 5h | TEAM_2Shift_Calendar-1 | Helper; Fitter | 6h | 6h | 356.25 | 593.75 | 356.25 |
| 84 | 1.8.2.4 | Cleaning | 5h | 2018-02-20 06:00 A | 2018-02-20 11:00 A | 83 | 100% | 2017-12-25 16:40 | 2017-12-26 06:40 | 6h | TEAM_2Shift_Calendar-1 | Helper [200%] | 5h | 5h | 250 | 600 | 250 |
| 85 | 1.8.2.5 | Ready For Assembly | 1d | 2018-02-20 11:00 A | 2018-02-20 19:01 A | 84 | 100% | 2017-08-31 08:00 | 2017-08-31 16:01 | 1d | TEAM_2Shift_Calendar-1 |  |  |  |  |  |  |

Notes:
- 57: N17 80NBXSCH.80X~157Lg / N18 100NBXSCH.80X~160Lg
- 69: Ø487X16T
- 75: 100NOS

| ID | WBS | Task | Duration | Start | Finish | Predecessors | Complete | Baseline start | Baseline finish | Baseline duration | Calendar | Resources | Work | Actual work | Cost | Baseline cost | Actual cost |
| --- | --- | --- | --- | --- | --- | --- | --- | --- | --- | --- | --- | --- | --- | --- | --- | --- | --- |
| 86 | 1.8.3 | **Tubesheet** | 51.38d | 2018-01-18 17:30 A | 2018-02-21 12:30 A |  | 100% | 2017-12-20 11:30 | 2017-12-28 09:36 | 11.75d | TEAM_2Shift_Calendar-1 |  | 73h | 73h | 1,737.55 | 4,486.13 | 1,737.55 |
| 87 | 1.8.3.1 | Receipt of Forging | 1d | 2018-01-18 17:30 A | 2018-01-19 09:30 A | 34 | 100% | 2017-12-20 11:30 | 2017-12-20 19:31 | 1d | TEAM_2Shift_Calendar-1 | Helper [200%] | 8h | 8h | 400 | 400 | 400 |
| 88 | 1.8.3.2 | Inward Inspection | 1d | 2018-01-23 08:30 A | 2018-01-23 16:31 A | 87 | 100% | 2017-12-20 19:31 | 2017-12-21 08:31 | 5h | TEAM_2Shift_Calendar-1 | Fitter [200%]; QC Engineer | 8h | 8h | 275 | 686.07 | 275 |
| 89 | 1.8.3.3 | **Drilling & M/C** | 13d | 2018-02-12 06:00 A | 2018-02-19 14:00 A |  | 100% | 2017-12-21 08:31 | 2017-12-27 14:36 | 8.75d | TEAM_2Shift_Calendar-1 |  | 49h | 49h | 787.55 | 2,343.75 | 787.55 |
| 90 | 1.8.3.3.1 | Off Load For Drilling | 1d | 2018-02-12 06:00 A | 2018-02-12 14:00 A | 88 | 100% | 2017-12-21 08:31 | 2017-12-21 12:31 | 4h | TEAM_2Shift_Calendar-1 | Helper [200%] | 1h | 1h | 50 | 400 | 50 |
| 91 | 1.8.3.3.2 | Drilling of Tube Holes | 7.01d | 2018-02-13 06:00 A | 2018-02-16 14:04 A | 90 | 100% | 2017-12-21 12:31 | 2017-12-22 20:33 | 3d | TEAM_2Shift_Calendar-1 | SC (Work) | 15h | 15h |  |  |  |
| 92 | 1.8.3.3.3 | Drilling of Bolt Holes | 3d | 2018-02-14 06:00 A | 2018-02-15 14:02 A | 91 | 100% | 2017-12-22 20:33 | 2017-12-25 17:34 | 13h | TEAM_2Shift_Calendar-1 | Driller; Radial Drilling Machine | 12h | 12h | 412.5 | 893.75 | 412.5 |
| 93 | 1.8.3.3.4 | Drilling of Tie Rod Holes | 1d | 2018-02-15 14:02 A | 2018-02-16 06:02 A | 92 | 100% | 2017-12-25 17:34 | 2017-12-26 09:34 | 8h | TEAM_2Shift_Calendar-1 | Driller; Radial Drilling Machine | 8h | 8h | 275 | 550 | 275 |
| 94 | 1.8.3.3.5 | M/C of Pass Partition | 5d | 2018-02-15 06:00 A | 2018-02-17 14:00 A | 93 | 100% | 2017-12-26 09:34 | 2017-12-27 09:35 | 2d | TEAM_2Shift_Calendar-1 | SC (Work) | 12h | 12h |  |  |  |
| 95 | 1.8.3.3.6 | Tube Sheet Receipt After Drilling | 1d | 2018-02-19 06:00 A | 2018-02-19 14:00 A |  | 100% | 2017-12-27 09:35 | 2017-12-27 14:36 | 5h | TEAM_2Shift_Calendar-1 | Helper [200%] | 1h | 1h | 50.05 | 500 | 50.05 |
| 96 | 1.8.3.4 | Tube Sheet Inspection | 4h | 2018-02-21 08:30 A | 2018-02-21 12:30 A | 95 | 100% | 2017-12-27 14:36 | 2017-12-28 06:36 | 1d | TEAM_2Shift_Calendar-1 | Fitter [200%]; QC Engineer | 8h | 8h | 275 | 606.31 | 275 |
| 97 | 1.8.4 | **Tie Rod** | 52.56d | 2018-01-02 17:30 A | 2018-02-07 06:01 A |  | 100% | 2017-12-12 10:30 | 2017-12-13 19:32 | 3.12d | TEAM_2Shift_Calendar-1 |  | 16.01h | 16.01h | 697.88 | 1,296.25 | 697.88 |
| 98 | 1.8.4.1 | Rod Receipt | 1d | 2018-01-02 17:30 A | 2018-01-03 09:30 A | 36 | 100% | 2017-12-12 10:30 | 2017-12-12 14:31 | 4h | TEAM_2Shift_Calendar-1 | Store | 2h | 2h |  |  |  |
| 99 | 1.8.4.2 | Marking | 1d | 2018-01-29 06:00 A | 2018-01-29 14:00 A | 98 | 100% | 2017-12-12 14:31 | 2017-12-12 17:31 | 3h | TEAM_2Shift_Calendar-1 | Fitter; Helper | 4h | 4h | 237.5 | 356.25 | 237.5 |
| 100 | 1.8.4.3 | Cutting | 1d | 2018-01-30 06:00 A | 2018-01-30 14:00 A | 99 | 100% | 2017-12-12 17:31 | 2017-12-12 19:31 | 2h | TEAM_2Shift_Calendar-1 | Cutting Machine; Helper | 4h | 4h | 100 | 100 | 100 |
| 101 | 1.8.4.4 | Thread Machining | 2d | 2018-02-06 06:00 A | 2018-02-07 06:01 A | 100 | 100% | 2017-12-12 19:31 | 2017-12-13 19:32 | 2d | TEAM_2Shift_Calendar-1 | Lathe Operator; Lathe | 6.01h | 6.01h | 360.38 | 840 | 360.38 |
| 102 | 1.8.5 | **Spacer Tube** | 1.13d | 2018-02-09 06:00 A | 2018-02-09 15:01 A |  | 100% | 2017-12-12 10:30 | 2017-12-14 19:33 | 5.12d | TEAM_2Shift_Calendar-1 |  | 11h | 11h | 938.75 | 3,788.75 | 938.75 |
| 103 | 1.8.5.1 | Spacer Tube Marking | 1h | 2018-02-09 06:00 A | 2018-02-09 07:00 A | 37 | 100% | 2017-12-12 10:30 | 2017-12-12 19:31 | 9h | TEAM_2Shift_Calendar-1 | Fitter; Helper | 2h | 2h | 118.75 | 1,068.75 | 118.75 |
| 104 | 1.8.5.2 | Spacer Tube Cutting | 1h | 2018-02-09 07:00 A | 2018-02-09 08:00 A | 103 | 100% | 2017-12-12 19:31 | 2017-12-13 12:31 | 9h | TEAM_2Shift_Calendar-1 | Cutting Machine; Helper | 2h | 2h | 50 | 450 | 50 |
| 105 | 1.8.5.3 | Spacer Tube M/C | 6h | 2018-02-09 08:00 A | 2018-02-09 14:00 A | 104 | 100% | 2017-12-13 12:31 | 2017-12-14 12:32 | 2d | TEAM_2Shift_Calendar-1 | Lathe Operator | 6h | 6h | 720 | 1,920 | 720 |
| 106 | 1.8.5.4 | Spacer Cleaning | 1h | 2018-02-09 14:01 A | 2018-02-09 15:01 A | 105 | 100% | 2017-12-14 12:32 | 2017-12-14 19:33 | 7h | TEAM_2Shift_Calendar-1 | Helper | 1h | 1h | 50 | 350 | 50 |
| 107 | 1.8.6 | **Other Components** | 28.44d | 2018-01-18 10:30 A | 2018-02-06 14:00 A |  | 100% | 2017-11-18 10:30 | 2017-11-21 11:32 | 4.12d | TEAM_2Shift_Calendar-1 |  | 44h | 44h | 1,950.12 | 3,463.33 | 1,950.12 |
| 108 | 1.8.6.1 | **PP** | 9.44d | 2018-01-18 10:30 A | 2018-01-24 06:01 A |  | 100% | 2017-11-18 10:30 | 2017-11-20 06:31 | 1.5d | TEAM_2Shift_Calendar-1 |  | 16h | 16h | 612.5 | 932.08 | 612.5 |
| 109 | 1.8.6.1.1 | Pass Partition Plate Marking | 2h | 2018-01-18 10:30 A | 2018-01-18 12:30 A | 38 | 100% | 2017-11-18 10:30 | 2017-11-18 12:30 | 2h | TEAM_2Shift_Calendar-1 | Fitter; Helper | 4h | 4h | 237.5 | 237.5 | 237.5 |
| 110 | 1.8.6.1.2 | Inspection | 1d | 2018-01-20 08:30 A | 2018-01-20 16:31 A | 109 | 100% | 2017-11-18 12:30 | 2017-11-18 16:31 | 4h | TEAM_2Shift_Calendar-1 | Fitter; QC Engineer | 2h | 2h | 68.75 | 332.08 | 68.75 |
| 111 | 1.8.6.1.3 | Cutting | 1d | 2018-01-23 06:00 A | 2018-01-23 14:00 A | 110 | 100% | 2017-11-18 16:31 | 2017-11-18 18:31 | 2h | TEAM_2Shift_Calendar-1 | Gas Cutter; OAGM | 4h | 4h | 137.5 | 137.5 | 137.5 |
| 112 | 1.8.6.1.4 | Grinding | 1d | 2018-01-23 14:01 A | 2018-01-24 06:01 A | 111 | 100% | 2017-11-18 18:31 | 2017-11-20 06:31 | 4h | TEAM_2Shift_Calendar-1 | Grinder; Grinding Machine | 6h | 6h | 168.75 | 225 | 168.75 |

Notes:
- 87: OD 698.5X60.35T
- 91: 100NOS
- 109: 242X445X10T / 483X445X10T
- 111: 2Nos

| ID | WBS | Task | Duration | Start | Finish | Predecessors | Complete | Baseline start | Baseline finish | Baseline duration | Calendar | Resources | Work | Actual work | Cost | Baseline cost | Actual cost |
| --- | --- | --- | --- | --- | --- | --- | --- | --- | --- | --- | --- | --- | --- | --- | --- | --- | --- |
| 113 | 1.8.6.2 | **Lifting Lug** | 11d | 2018-01-31 06:00 A | 2018-02-06 14:00 A |  | 100% | 2017-11-20 06:31 | 2017-11-21 11:32 | 2.62d | TEAM_2Shift_Calendar-1 |  | 28h | 28h | 1,337.62 | 2,531.25 | 1,337.62 |
| 114 | 1.8.6.2.1 | Lifting Lug Marking | 16h | 2018-01-31 06:00 A | 2018-01-31 22:00 A | 29, 112 | 100% | 2017-11-20 06:31 | 2017-11-20 08:31 | 2h | TEAM_2Shift_Calendar-1 | Fitter; Helper | 4h | 4h | 237.5 | 237.5 | 237.5 |
| 115 | 1.8.6.2.2 | Lifting Lug Cutting | 1d | 2018-02-01 06:00 A | 2018-02-01 14:00 A | 114 | 100% | 2017-11-20 08:31 | 2017-11-20 10:31 | 2h | TEAM_2Shift_Calendar-1 | Gas Cutter; OAGM | 4h | 4h | 137.5 | 137.5 | 137.5 |
| 116 | 1.8.6.2.3 | Lifting Lug Pad Marking | 1d | 2018-02-02 06:00 A | 2018-02-02 14:00 A | 115 | 100% | 2017-11-20 10:31 | 2017-11-20 12:31 | 2h | TEAM_2Shift_Calendar-1 | Fitter; Helper | 2h | 2h | 118.87 | 237.5 | 118.87 |
| 117 | 1.8.6.2.4 | Lifting Lug Pad Cutting | 16h | 2018-02-03 06:00 A | 2018-02-03 22:00 A | 116 | 100% | 2017-11-20 12:31 | 2017-11-20 14:32 | 2h | TEAM_2Shift_Calendar-1 | Gas Cutter; OAGM | 4h | 4h | 137.5 | 137.5 | 137.5 |
| 118 | 1.8.6.2.5 | Lifting Lug Pad Grinding | 1d | 2018-02-05 06:00 A | 2018-02-05 14:00 A | 117 | 100% | 2017-11-20 14:32 | 2017-11-20 19:32 | 5h | TEAM_2Shift_Calendar-1 | Grinder; Grinding Machine | 4h | 4h | 112.5 | 281.25 | 112.5 |
| 119 | 1.8.6.2.6 | Lifting Lug Pad Forming | 1d | 2018-02-06 06:00 A | 2018-02-06 14:00 A | 118 | 100% | 2017-11-20 19:32 | 2017-11-21 11:32 | 8h | TEAM_2Shift_Calendar-1 | Fitter [200%]; Helper | 10h | 10h | 593.75 | 1,500 | 593.75 |
| 120 | 1.8.7 | **Channel Fabrication** | 51.69d | 2018-01-18 14:30 A | 2018-02-21 12:00 A |  | 100% | 2017-11-18 14:30 | 2017-12-16 08:32 | 43.21d | TEAM_2Shift_Calendar-1 |  | 346.13h | 346.13h | 14,350.24 | 26,625 | 14,350.24 |
| 121 | 1.8.7.1 | **Channel LS** | 39.07d | 2018-01-18 14:30 A | 2018-02-14 07:02 A |  | 100% | 2017-11-18 14:30 | 2017-11-24 08:34 | 9.25d | TEAM_2Shift_Calendar-1 |  | 125.5h | 125.5h | 4,853.36 | 5,381.25 | 4,853.36 |
| 122 | 1.8.7.1.1 | Pl Recipt | 2h | 2018-01-18 14:30 A | 2018-01-18 16:30 A | 29 | 100% | 2017-11-18 14:30 | 2017-11-18 18:30 | 4h | TEAM_2Shift_Calendar-1 | Store | 2h | 2h |  |  |  |
| 123 | 1.8.7.1.2 | Inward Inspection | 1d | 2018-01-18 18:30 A | 2018-01-19 10:30 A | 122 | 100% | 2017-11-18 18:30 | 2017-11-20 10:30 | 1d | TEAM_2Shift_Calendar-1 | QC Engineer | 3h | 3h |  |  |  |
| 124 | 1.8.7.1.3 | Ch Pl Marking | 1d | 2018-02-01 06:00 A | 2018-02-01 14:00 A | 123 | 100% | 2017-11-20 10:30 | 2017-11-20 18:31 | 1d | TEAM_2Shift_Calendar-1 | Fitter; Helper | 4h | 4h | 237.74 | 950 | 237.74 |
| 125 | 1.8.7.1.4 | Ch Pl Stamping | 1d | 2018-02-01 14:01 A | 2018-02-02 06:01 A | 124 | 100% | 2017-11-20 18:31 | 2017-11-21 10:31 | 1d | TEAM_2Shift_Calendar-1 | QC Engineer; TPI (Cost) [0.1%] | 1h | 1h |  |  |  |
| 126 | 1.8.7.1.5 | Ch Pl Cutting | 1h | 2018-02-02 06:01 A | 2018-02-02 07:01 A | 125 | 100% | 2017-11-21 10:31 | 2017-11-21 12:31 | 2h | TEAM_2Shift_Calendar-1 | Helper; Gas Cutter; OAGM | 2.5h | 2.5h | 93.75 | 237.5 | 93.75 |
| 127 | 1.8.7.1.6 | Ch Pl EP | 2d | 2018-02-03 06:00 A | 2018-02-03 22:00 A | 126 | 100% | 2017-11-21 12:31 | 2017-11-21 20:32 | 1d | TEAM_2Shift_Calendar-1 | Grinder; Grinding Machine | 16h | 16h | 450 | 450 | 450 |
| 128 | 1.8.7.1.7 | Ch Pl Pre Bending | 4h | 2018-02-05 06:00 A | 2018-02-05 10:00 A | 127 | 100% | 2017-11-21 20:32 | 2017-11-22 08:32 | 4h | TEAM_2Shift_Calendar-1 | Fitter; Helper [200%]; Plate Bending Machine | 16h | 16h | 675 | 675 | 675 |
| 129 | 1.8.7.1.8 | Ch Pl Pre Bend Cut Off | 1h | 2018-02-06 06:00 A | 2018-02-06 07:00 A | 128 | 100% | 2017-11-22 08:32 | 2017-11-22 10:32 | 2h | TEAM_2Shift_Calendar-1 | Gas Cutter; OAGM | 4h | 4h | 137.5 | 137.5 | 137.5 |
| 130 | 1.8.7.1.9 | Ch Pl LS EP | 1h | 2018-02-07 06:00 A | 2018-02-07 07:00 A | 129 | 100% | 2017-11-22 10:32 | 2017-11-22 13:02 | 2.5h | TEAM_2Shift_Calendar-1 | Grinder; Grinding Machine | 5h | 5h | 140.62 | 140.62 | 140.62 |
| 131 | 1.8.7.1.10 | Ch Pl LS Rolling | 2d | 2018-02-07 07:00 A | 2018-02-08 07:01 A | 130 | 100% | 2017-11-22 13:02 | 2017-11-22 16:03 | 3h | TEAM_2Shift_Calendar-1 | Fitter; Helper [200%]; Rolling Machine | 18h | 18h | 712.5 | 506.25 | 712.5 |
| 132 | 1.8.7.1.11 | Ch Pl LS Fitup | 1d | 2018-02-08 07:01 A | 2018-02-08 15:02 A | 131 | 100% | 2017-11-22 16:03 | 2017-11-22 18:03 | 2h | TEAM_2Shift_Calendar-1 | Fitter; Helper [200%]; SMAW Welder; SMAW Welding Machine | 10h | 10h | 475 | 475 | 475 |
| 133 | 1.8.7.1.12 | Ch Pl LS Fitup Inspection | 1d | 2018-02-09 06:00 A | 2018-02-09 14:00 A | 132 | 100% | 2017-11-22 18:03 | 2017-11-22 20:03 | 2h | TEAM_2Shift_Calendar-1 | Fitter | 2h | 2h | 137.5 | 137.5 | 137.5 |
| 134 | 1.8.7.1.13 | Ch Pl LS Welding | 2d | 2018-02-12 06:00 A | 2018-02-13 06:01 A | 133 | 100% | 2017-11-22 20:03 | 2017-11-23 07:33 | 3.5h | TEAM_2Shift_Calendar-1 | Helper [200%]; SMAW Welder; SMAW Welding Machine | 18h | 18h | 712.5 | 590.62 | 712.5 |
| 135 | 1.8.7.1.14 | Ch Pl LS Back Chip | 2h | 2018-02-13 06:01 A | 2018-02-13 08:01 A | 134 | 100% | 2017-11-23 07:33 | 2017-11-23 09:33 | 2h | TEAM_2Shift_Calendar-1 | Grinder; Grinding Machine | 4h | 4h | 112.5 | 112.5 | 112.5 |
| 136 | 1.8.7.1.15 | Ch Sh Inner Welding | 2h | 2018-02-13 08:01 A | 2018-02-13 10:01 A | 135 | 100% | 2017-11-23 09:33 | 2017-11-23 11:33 | 2h | TEAM_2Shift_Calendar-1 | Helper [200%]; SMAW Welder; SMAW Welding Machine | 8h | 8h | 337.5 | 337.5 | 337.5 |
| 137 | 1.8.7.1.16 | Ch Sh Inner Weld Flush Grind | 1h | 2018-02-13 10:01 A | 2018-02-13 11:01 A | 136 | 100% | 2017-11-23 11:33 | 2017-11-23 12:33 | 1h | TEAM_2Shift_Calendar-1 | Grinder; Grinding Machine | 2h | 2h | 56.25 | 56.25 | 56.25 |
| 138 | 1.8.7.1.17 | Ch Sh Inner Weld DP Check | 1h | 2018-02-13 11:01 A | 2018-02-13 12:01 A | 137 | 100% | 2017-11-23 12:33 | 2017-11-23 13:33 | 1h | TEAM_2Shift_Calendar-1 | Fitter | 1h | 1h | 68.75 | 68.75 | 68.75 |
| 139 | 1.8.7.1.18 | Ch Sh Rerolling | 3.02h | 2018-02-13 12:01 A | 2018-02-13 15:02 A | 138 | 100% | 2017-11-23 13:33 | 2017-11-23 16:34 | 3h | TEAM_2Shift_Calendar-1 | Fitter; Helper [200%] | 9h | 9h | 506.25 | 506.25 | 506.25 |
| 140 | 1.8.7.1.19 | Ch Sh Radiography | 1d | 2018-02-13 15:02 A | 2018-02-14 07:02 A | 139 | 100% | 2017-11-23 16:34 | 2017-11-24 08:34 | 1d | TEAM_2Shift_Calendar-1 | SC (Cost) [0.1%] |  |  |  |  |  |

Notes:
- 114: 3 NOS
- 122: Dev.LG 1552X14TX433 Lg
- 124: OD 508X500L

| ID | WBS | Task | Duration | Start | Finish | Predecessors | Complete | Baseline start | Baseline finish | Baseline duration | Calendar | Resources | Work | Actual work | Cost | Baseline cost | Actual cost |
| --- | --- | --- | --- | --- | --- | --- | --- | --- | --- | --- | --- | --- | --- | --- | --- | --- | --- |
| 141 | 1.8.7.2 | **Channel to flange welding** | 10.25d | 2018-02-14 07:02 A | 2018-02-20 09:01 A |  | 100% | 2017-11-24 08:34 | 2017-11-29 08:37 | 6d | TEAM_2Shift_Calendar-1 |  | 68.29h | 68.29h | 2,851.86 | 5,800 | 2,851.86 |
| 142 | 1.8.7.2.1 | Ch Sh Orientation Marking | 1d | 2018-02-14 07:02 A | 2018-02-14 15:03 A | 140 | 100% | 2017-11-24 08:34 | 2017-11-24 11:34 | 3h | TEAM_2Shift_Calendar-1 | Fitter; Helper [200%] | 4h | 4h | 237.5 | 506.25 | 237.5 |
| 143 | 1.8.7.2.2 | Ch Extra Length Cutting | 1d | 2018-02-14 15:03 A | 2018-02-15 07:03 A | 142 | 100% | 2017-11-24 11:34 | 2017-11-24 13:34 | 2h | TEAM_2Shift_Calendar-1 | Gas Cutter; OAGM; Helper | 3h | 3h | 118.75 | 237.5 | 118.75 |
| 144 | 1.8.7.2.3 | Ch Edge preparation | 1d | 2018-02-15 07:03 A | 2018-02-15 15:04 A | 143 | 100% | 2017-11-24 13:34 | 2017-11-24 16:35 | 3h | TEAM_2Shift_Calendar-1 | Grinder; Grinding Machine | 4h | 4h | 112.5 | 168.75 | 112.5 |
| 145 | 1.8.7.2.4 | Ch to flange fit up | 1d | 2018-02-15 10:03 A | 2018-02-15 18:04 A | 144 | 100% | 2017-11-24 16:35 | 2017-11-24 20:35 | 4h | TEAM_2Shift_Calendar-1 | Fitter; Helper [200%]; SMAW Welder; SMAW Welding Machine | 20h | 20h | 937.5 | 950 | 937.5 |
| 146 | 1.8.7.2.5 | inspection | 1d | 2018-02-16 06:00 A | 2018-02-16 14:00 A | 145 | 100% | 2017-11-24 20:35 | 2017-11-27 06:35 | 2h | TEAM_2Shift_Calendar-1 | Fitter | 2h | 2h | 137.5 | 137.5 | 137.5 |
| 147 | 1.8.7.2.6 | welding | 1d | 2018-02-16 14:01 A | 2018-02-17 06:01 A | 146 | 100% | 2017-11-27 06:35 | 2017-11-27 11:35 | 5h | TEAM_2Shift_Calendar-1 | Helper [200%]; SMAW Welder; SMAW Welding Machine | 15h | 15h | 593.75 | 843.75 | 593.75 |
| 148 | 1.8.7.2.7 | grinding | 4h | 2018-02-17 06:01 A | 2018-02-17 10:01 A | 147 | 100% | 2017-11-27 11:35 | 2017-11-27 15:36 | 4h | TEAM_2Shift_Calendar-1 | Grinder; Grinding Machine | 8h | 8h | 225 | 225 | 225 |
| 149 | 1.8.7.2.8 | inside welding | 1d | 2018-02-17 10:01 A | 2018-02-17 18:02 A | 148 | 100% | 2017-11-27 15:36 | 2017-11-27 19:36 | 4h | TEAM_2Shift_Calendar-1 | Helper [200%]; SMAW Welder; SMAW Welding Machine | 9h | 9h | 356.25 | 675 | 356.25 |
| 150 | 1.8.7.2.9 | inside flush grinding | 1d | 2018-02-19 08:00 A | 2018-02-19 16:01 A | 149 | 100% | 2017-11-27 19:36 | 2017-11-28 06:36 | 3h | TEAM_2Shift_Calendar-1 | Grinder; Grinding Machine | 2.29h | 2.29h | 64.36 | 168.75 | 64.36 |
| 151 | 1.8.7.2.10 | DP check | 1h | 2018-02-19 16:01 A | 2018-02-19 17:01 A | 150 | 100% | 2017-11-28 06:36 | 2017-11-28 08:36 | 2h | TEAM_2Shift_Calendar-1 | Fitter | 1h | 1h | 68.75 | 137.5 | 68.75 |
| 152 | 1.8.7.2.11 | Radiography | 1d | 2018-02-19 17:01 A | 2018-02-20 09:01 A | 151 | 100% | 2017-11-28 08:36 | 2017-11-28 16:37 | 1d | TEAM_2Shift_Calendar-1 | SC (Cost) [0.1%] |  |  |  |  |  |
| 153 | 1.8.7.3 | **Nozzle Welding** | 8d | 2018-02-15 06:00 A | 2018-02-20 06:01 A |  | 100% | 2017-11-29 08:37 | 2017-12-08 16:36 | 16.98d | TEAM_2Shift_Calendar-1 |  | 98h | 98h | 4,350.19 | 10,600 | 4,350.19 |
| 154 | 1.8.7.3.1 | Ch Nozzle Opening- N17,N18 | 1d | 2018-02-15 06:00 A | 2018-02-15 14:00 A | 144 | 100% | 2017-11-29 08:37 | 2017-11-29 12:37 | 4h | TEAM_2Shift_Calendar-1 | Helper [200%]; Gas Cutter; OAGM | 9h | 9h | 356.25 | 675 | 356.25 |
| 155 | 1.8.7.3.2 | Ch Nozzle EP N17,N18 | 1d | 2018-02-15 14:01 A | 2018-02-16 06:01 A | 154 | 100% | 2017-11-29 12:37 | 2017-11-29 19:38 | 7h | TEAM_2Shift_Calendar-1 | Grinder; Grinding Machine | 4h | 4h | 112.5 | 393.75 | 112.5 |
| 156 | 1.8.7.3.3 | RF pad forming | 1d | 2018-02-16 06:01 A | 2018-02-16 14:02 A | 155 | 100% | 2017-11-29 19:38 | 2017-11-30 11:38 | 1d | TEAM_2Shift_Calendar-1 | Fitter [200%]; Helper [200%]; Gas Cutter; OAGM | 20h | 20h | 937.5 | 2,450 | 937.5 |
| 157 | 1.8.7.3.4 | Ch Nozzle RF Pad Fitup- 2 Nos | 1d | 2018-02-16 14:02 A | 2018-02-17 06:02 A | 156 | 100% | 2017-11-30 11:38 | 2017-11-30 16:39 | 5h | TEAM_2Shift_Calendar-1 | Fitter; Helper [200%]; SMAW Welder; SMAW Welding Machine | 20h | 20h | 937.5 | 1,187.5 | 937.5 |
| 158 | 1.8.7.3.5 | Ch Nozzle RF Pad Fitup Inspection | 1d | 2018-02-17 06:02 A | 2018-02-17 14:03 A | 157 | 100% | 2017-11-30 16:39 | 2017-11-30 20:39 | 4h | TEAM_2Shift_Calendar-1 | Fitter [200%] | 1h | 1h | 68.75 | 550 | 68.75 |
| 159 | 1.8.7.3.6 | Ch Nozzle RF Pad Welding - 2 Nos | 0.5d | 2018-02-17 14:03 A | 2018-02-17 18:03 A | 158 | 100% | 2017-11-30 20:39 | 2017-12-01 10:39 | 6h | TEAM_2Shift_Calendar-1 | Helper [200%]; SMAW Welder; SMAW Welding Machine | 18h | 18h | 712.5 | 1,012.5 | 712.5 |
| 160 | 1.8.7.3.7 | Ch Nozzle RF Pad Air Leak Test | 1d | 2018-02-17 06:00 A | 2018-02-17 14:00 A | 159 | 100% | 2017-12-01 10:39 | 2017-12-01 12:39 | 2h | TEAM_2Shift_Calendar-1 | Fitter [200%]; Helper | 2h | 2h | 118.87 | 375 | 118.87 |
| 161 | 1.8.7.3.8 | Ch Nozzle Fitup -N17,N18- 80NB &100NB | 1d | 2018-02-19 06:00 A | 2018-02-19 14:00 A | 53, 159 | 100% | 2017-12-06 14:34 | 2017-12-06 19:34 | 5h | TEAM_2Shift_Calendar-1 | Fitter; Helper [200%]; SMAW Welder; SMAW Welding Machine | 12h | 12h | 562.5 | 1,187.5 | 562.5 |
| 162 | 1.8.7.3.9 | Ch Nozzle Fitup Inspection | 0.5d | 2018-02-19 14:01 A | 2018-02-19 18:01 A | 161 | 100% | 2017-12-06 19:34 | 2017-12-07 07:34 | 4h | TEAM_2Shift_Calendar-1 | Fitter [200%] | 1h | 1h | 68.89 | 550 | 68.89 |
| 163 | 1.8.7.3.10 | Ch Nozzle Welding Arrangement | 1h | 2018-02-19 18:01 A | 2018-02-19 19:01 A | 162 | 100% | 2017-12-07 07:34 | 2017-12-07 09:34 | 2h | TEAM_2Shift_Calendar-1 | Fitter; Helper | 2h | 2h | 118.75 | 237.5 | 118.75 |
| 164 | 1.8.7.3.11 | Ch Nozzle Fitup Welding | 1d | 2018-02-19 06:00 A | 2018-02-19 14:00 A | 163 | 100% | 2017-12-07 09:34 | 2017-12-07 15:35 | 6h | TEAM_2Shift_Calendar-1 | Helper [200%]; SMAW Welder; SMAW Welding Machine | 9h | 9h | 356.18 | 1,012.5 | 356.18 |
| 165 | 1.8.7.3.12 | Radiography | 1d | 2018-02-19 14:00 A | 2018-02-20 06:01 A | 164 | 100% | 2017-12-08 08:35 | 2017-12-08 16:36 | 1d | TEAM_2Shift_Calendar-1 | SC (Cost) [0.1%] |  |  |  |  |  |

Notes:
- 156: RF Pad N17 OD 150XID92X10T / RF Pad N18 OD 200XID117X10T

| ID | WBS | Task | Duration | Start | Finish | Predecessors | Complete | Baseline start | Baseline finish | Baseline duration | Constraint | Calendar | Resources | Work | Actual work | Cost | Baseline cost | Actual cost |
| --- | --- | --- | --- | --- | --- | --- | --- | --- | --- | --- | --- | --- | --- | --- | --- | --- | --- | --- |
| 166 | 1.8.7.4 | **Other Components Welding** | 4.75d | 2018-02-19 06:00 A | 2018-02-21 12:00 A |  | 100% | 2017-12-08 16:36 | 2017-12-16 08:32 | 10.98d |  | TEAM_2Shift_Calendar-1 |  | 54.33h | 54.33h | 2,294.83 | 4,843.75 | 2,294.83 |
| 167 | 1.8.7.4.1 | Ch Lifting Lug Pad Fitup | 3h | 2018-02-19 06:00 A | 2018-02-19 09:00 A | 113, 165 | 100% | 2017-12-08 16:36 | 2017-12-08 19:36 | 3h |  | TEAM_2Shift_Calendar-1 | Fitter; Helper [200%]; SMAW Welder; SMAW Welding Machine | 12h | 12h | 562.5 | 712.5 | 562.5 |
| 168 | 1.8.7.4.2 | Ch Lifting Lug Pad Weld Arrangement | 0.5h | 2018-02-19 09:00 A | 2018-02-19 09:30 A | 167 | 100% | 2017-12-08 19:36 | 2017-12-08 20:36 | 1h |  | TEAM_2Shift_Calendar-1 | Fitter; Helper | 1h | 1h | 59.38 | 118.75 | 59.38 |
| 169 | 1.8.7.4.3 | Ch Lifting Lug Pad Welding | 3h | 2018-02-19 09:30 A | 2018-02-19 12:30 A | 168 | 100% | 2017-12-08 20:36 | 2017-12-11 07:36 | 3h |  | TEAM_2Shift_Calendar-1 | Helper [200%]; SMAW Welder; SMAW Welding Machine | 11h | 11h | 456.25 | 506.25 | 456.25 |
| 170 | 1.8.7.4.4 | Ch Lifting Lug Fitup | 3h | 2018-02-20 06:00 A | 2018-02-20 09:00 A | 169 | 100% | 2017-12-11 07:36 | 2017-12-11 10:36 | 3h |  | TEAM_2Shift_Calendar-1 | Fitter; Helper [200%]; SMAW Welder; SMAW Welding Machine | 12h | 12h | 562.5 | 712.5 | 562.5 |
| 171 | 1.8.7.4.5 | Ch Lifting Lug Welding | 1d | 2018-02-20 09:00 A | 2018-02-20 17:01 A | 170 | 100% | 2017-12-11 10:36 | 2017-12-11 13:36 | 3h |  | TEAM_2Shift_Calendar-1 | Helper [200%]; SMAW Welder; SMAW Welding Machine | 10h | 10h | 406.25 | 506.25 | 406.25 |
| 172 | 1.8.7.4.6 | Ch Final Dress Up | 4h | 2018-02-21 06:00 A | 2018-02-21 10:00 A | 171 | 100% | 2017-12-11 13:36 | 2017-12-11 19:37 | 6h |  | TEAM_2Shift_Calendar-1 | Grinder; Grinding Machine | 8h | 8h | 225 | 337.5 | 225 |
| 173 | 1.8.7.4.7 | Ch Dimensional Inspection | 2h | 2018-02-21 10:00 A | 2018-02-21 12:00 A | 172 | 100% | 2017-12-11 19:37 | 2017-12-12 07:37 | 4h |  | TEAM_2Shift_Calendar-1 | Fitter [200%] | 0.33h | 0.33h | 22.95 | 550 | 22.95 |
| 174 | 1.8.8 | **Tube Bundle Assy** | 6.13d | 2018-02-21 06:00 A | 2018-02-26 07:02 A |  | 100% | 2017-12-28 09:36 | 2018-01-06 15:45 | 16.75d |  | TEAM_2Shift_Calendar-1 |  | 161h | 161h | 8,418.7 | 27,956.25 | 8,418.7 |
| 175 | 1.8.8.1 | **Preliminary Set up** | 2.26d | 2018-02-21 06:00 A | 2018-02-22 08:05 A |  | 100% | 2017-12-28 09:36 | 2018-01-01 19:40 | 7.25d |  | TEAM_2Shift_Calendar-1 |  | 50h | 50h | 2,850 | 16,131.25 | 2,850 |
| 176 | 1.8.8.1.1 | Assy Frame Set Up | 6h | 2018-02-21 14:05 A | 2018-02-21 20:05 A | 67, 86, 97, 102 | 100% | 2017-12-28 09:36 | 2017-12-28 21:37 | 12h |  | TEAM_2Shift_Calendar-1 | Fitter [200%]; Helper [400%] | 12h | 12h | 712.5 | 4,050 | 712.5 |
| 177 | 1.8.8.1.2 | Skeleton Assy | 4h | 2018-02-21 20:05 A | 2018-02-22 08:05 A | 176 | 100% | 2017-12-28 21:37 | 2017-12-30 07:38 | 18h |  | TEAM_2Shift_Calendar-1 | Fitter [200%]; Helper [400%] | 8h | 8h | 475 | 6,075 | 475 |
| 178 | 1.8.8.1.3 | Tie Rod Welding | 2h | 2018-02-21 06:00 A | 2018-02-21 08:00 A | 177 | 100% | 2017-12-30 07:38 | 2017-12-30 10:38 | 3h |  | TEAM_2Shift_Calendar-1 | Helper [200%]; SMAW Welder; SMAW Welding Machine | 6h | 6h | 237.5 | 506.25 | 237.5 |
| 179 | 1.8.8.1.4 | Tube Insert | 12.02h | 2018-02-21 08:00 A | 2018-02-21 20:01 A | 178 | 100% | 2017-12-30 10:38 | 2018-01-01 09:39 | 15h |  | TEAM_2Shift_Calendar-1 | Fitter [200%]; Helper [300%] | 24h | 24h | 1,425 | 4,312.5 | 1,425 |
| 180 | 1.8.8.2 | **Tube Welding & other Works** | 4.13d | 2018-02-22 06:00 A | 2018-02-26 07:02 A |  | 100% | 2018-01-01 19:40 | 2018-01-06 15:45 | 9.5d |  | TEAM_2Shift_Calendar-1 |  | 111h | 111h | 5,568.7 | 11,825 | 5,568.7 |
| 181 | 1.8.8.2.1 | Expansion | 2d | 2018-02-22 06:00 A | 2018-02-23 06:01 A | 179 | 100% | 2018-01-04 15:43 | 2018-01-06 07:44 | 3d |  | TEAM_2Shift_Calendar-1 | Fitter; Helper [200%]; Expanding Machine | 37h | 37h | 1,475 | 4,050 | 1,475 |
| 182 | 1.8.8.2.2 | Tube /Tube Sheet Root Welding | 8.01h | 2018-02-23 06:01 A | 2018-02-23 14:01 A | 181 | 100% | 2018-01-01 19:40 | 2018-01-02 13:40 | 10h |  | TEAM_2Shift_Calendar-1 | Helper [200%]; TIG Welder; TIG Welding Machine | 24h | 24h | 1,400 | 1,687.5 | 1,400 |
| 183 | 1.8.8.2.3 | DP Check | 1h | 2018-02-23 14:02 A | 2018-02-23 15:02 A | 182 | 100% | 2018-01-02 13:40 | 2018-01-02 16:41 | 3h |  | TEAM_2Shift_Calendar-1 | Fitter; Helper | 2h | 2h | 118.75 | 356.25 | 118.75 |
| 184 | 1.8.8.2.4 | Tube /Tube Sheet Final Welding | 8h | 2018-02-23 15:02 A | 2018-02-26 07:02 A | 183 | 100% | 2018-01-02 16:41 | 2018-01-03 16:42 | 16h |  | TEAM_2Shift_Calendar-1 | Helper [200%]; TIG Welder; TIG Welding Machine | 24h | 24h | 1,400 | 3,600 | 1,400 |
| 185 | 1.8.8.2.5 | Tube Trimming | 8h | 2018-02-23 06:00 A | 2018-02-23 14:00 A | 184 | 100% | 2018-01-03 16:42 | 2018-01-04 12:42 | 12h |  | TEAM_2Shift_Calendar-1 | Grinder; Grinding Machine | 8h | 8h | 224.95 | 675 | 224.95 |
| 186 | 1.8.8.2.6 | DP Check | 2h | 2018-02-23 14:01 A | 2018-02-23 16:01 A | 185 | 100% | 2018-01-04 12:42 | 2018-01-04 15:43 | 3h |  | TEAM_2Shift_Calendar-1 | Fitter; Helper | 4h | 4h | 237.5 | 356.25 | 237.5 |
| 187 | 1.8.8.2.7 | Inspection | 4h | 2018-02-23 06:01 A | 2018-02-23 10:01 A | 181 | 100% | 2018-01-06 07:44 | 2018-01-06 15:45 | 1d |  | TEAM_2Shift_Calendar-1 | Fitter [200%] | 4h | 4h | 275 | 1,100 | 275 |
| 188 | 1.8.8.2.8 | Channel Blind flange Assembly | 2h | 2018-02-23 10:01 A | 2018-02-23 12:01 A | 187 | 100% | 2017-11-28 16:37 | 2017-11-29 08:37 | 1d |  | TEAM_2Shift_Calendar-1 | Fitter; Helper [300%] | 8h | 8h | 437.5 | 1,750 | 437.5 |
| 189 | 1.8.9 | **Final Assy & Hydro Test** | 9.5d | 2018-02-24 08:00 A | 2018-03-02 18:00 A |  | 100% | 2018-01-06 15:45 | 2018-01-12 06:49 | 8.88d |  | TEAM_2Shift_Calendar-1 |  | 47h | 47h | 2,525 | 11,425 | 2,525 |
| 190 | 1.8.9.1 | Tube sheet to channel fitup | 4h | 2018-02-24 08:00 A | 2018-02-26 10:00 A | 120, 180 | 100% | 2018-01-08 15:46 | 2018-01-08 20:46 | 5h |  | TEAM_2Shift_Calendar-1 | Fitter; Helper [200%]; SMAW Welder; SMAW Welding Machine | 16h | 16h | 750 | 1,187.5 | 750 |
| 191 | 1.8.9.2 | Inspection | 1h | 2018-02-24 08:00 A | 2018-02-26 07:00 A | 190 | 100% | 2018-01-08 20:46 | 2018-01-09 08:46 | 4h |  | TEAM_2Shift_Calendar-1 | Fitter | 1h | 1h | 68.75 | 275 | 68.75 |
| 192 | 1.8.9.3 | welding | 5h | 2018-02-24 08:00 A | 2018-02-26 11:00 A | 191 | 100% | 2018-01-09 08:46 | 2018-01-09 14:47 | 6h |  | TEAM_2Shift_Calendar-1 | Helper [200%]; TIG Welder; TIG Welding Machine | 15h | 15h | 875 | 1,012.5 | 875 |
| 193 | 1.8.9.4 | DP Check | 2h | 2018-02-24 08:00 A | 2018-02-26 08:00 A | 192 | 100% | 2018-01-09 14:47 | 2018-01-10 06:47 | 1d |  | TEAM_2Shift_Calendar-1 | Fitter | 2h | 2h | 137.5 | 550 | 137.5 |
| 194 | 1.8.9.5 | Open Bundle Hydro | 5h | 2018-03-02 08:00 A | 2018-03-02 13:00 A | 193 | 100% | 2018-01-06 15:45 | 2018-01-08 07:45 | 1d | start no earlier than 2018-03-02 08:00 | TEAM_2Shift_Calendar-1 | Fitter [200%]; Helper [300%] | 10h | 10h | 593.75 | 3,800 | 593.75 |
| 195 | 1.8.9.6 | Open Bundle Hydro- TPI Inspection | 1h | 2018-03-02 13:00 A | 2018-03-02 14:00 A | 194 | 100% | 2018-01-08 07:45 | 2018-01-08 15:46 | 1d |  | TEAM_2Shift_Calendar-1 | QC Engineer; TPI (Cost) [0.1%] | 1h | 1h |  |  |  |
| 196 | 1.8.9.7 | De-Watering & Drying | 4h | 2018-03-02 14:00 A | 2018-03-02 18:00 A | 195 | 100% | 2018-01-11 14:49 | 2018-01-12 06:49 | 1d |  | TEAM_2Shift_Calendar-1 | Helper [200%] | 2h | 2h | 100 | 800 | 100 |

Notes:
- 167: SA 516 GR.70 160X75X10T 2 Nos
- 182: 50Nos U tube
- 194: during the hydro test one tube leak is identified. / awating for client approval for plug the leaked tube

| ID | WBS | Task | Duration | Start | Finish | Predecessors | Complete | Baseline start | Baseline finish | Baseline duration | Calendar | Resources | Work | Actual work | Cost | Baseline cost | Actual cost |
| --- | --- | --- | --- | --- | --- | --- | --- | --- | --- | --- | --- | --- | --- | --- | --- | --- | --- |
| 197 | 1.8.10 | **Cleaning & Painting** | 15.56d | 2018-02-21 08:30 A | 2018-03-02 21:00 A |  | 100% | 2018-01-12 14:50 | 2018-01-30 16:00 | 22.12d | TEAM_2Shift_Calendar-1 |  | 15h | 15h | 675 | 3,065 | 675 |
| 198 | 1.8.10.1 | Blast Cleaning Arrangment | 13.5h | 2018-02-21 08:30 A | 2018-02-21 22:00 A | 120FS+1d | 100% | 2018-01-12 14:50 | 2018-01-16 06:50 | 1d | TEAM_2Shift_Calendar-1 | Store; Helper | 4h | 4h | 100 | 240 | 100 |
| 199 | 1.8.10.2 | Transport For BC | 1h | 2018-02-22 06:00 A | 2018-02-22 07:00 A | 198 | 100% | 2018-01-16 06:50 | 2018-01-16 10:50 | 4h | TEAM_2Shift_Calendar-1 | Fitter [200%]; Helper [300%] | 2h | 2h | 118.75 | 1,150 | 118.75 |
| 200 | 1.8.10.3 | Return From Blast Clean | 2h | 2018-02-23 06:00 A | 2018-02-23 08:00 A | 199 | 100% | 2018-01-17 10:51 | 2018-01-18 18:53 | 3d | TEAM_2Shift_Calendar-1 | Helper [300%] | 2h | 2h | 100 |  | 100 |
| 201 | 1.8.10.4 | Red oxide painting | 3h | 2018-03-02 18:00 A | 2018-03-02 21:00 A | 196 | 100% | 2018-01-18 18:53 | 2018-01-19 18:53 | 2d | TEAM_2Shift_Calendar-1 | Fitter; Helper | 6h | 6h | 356.25 | 200 | 356.25 |
| 202 | 1.8.10.5 | Painting &Final Inspection | 1h | 2018-03-02 08:30 A | 2018-03-02 09:30 A | 201 | 100% | 2018-01-20 18:54 | 2018-01-22 07:54 | 5h | TEAM_2Shift_Calendar-1 | QC Engineer | 1h | 1h |  |  |  |
| 203 | 1.9 | **Final documents &despatch** | 1.88d | 2018-03-02 08:30 A | 2018-03-03 16:30 A |  | 100% |  |  |  |  |  | 33h | 33h | 1,012.5 |  | 1,012.5 |
| 204 | 1.9.1 | Despatch | 3h | 2018-03-03 06:00 A | 2018-03-03 09:00 A | 52 | 100% | 2018-01-23 15:56 | 2018-01-30 16:00 | 8d | TEAM_2Shift_Calendar-1 | Fitter [200%]; Helper [400%] | 18h | 18h | 1,012.5 | 675 | 1,012.5 |
| 205 | 1.9.2 | Final documentation | 3d | 2018-03-02 08:30 A | 2018-03-03 16:30 A | 52 | 100% | 2018-01-22 07:54 | 2018-01-23 15:56 | 3d | TEAM_2Shift_Calendar-1 | QC Engineer | 15h | 15h |  |  |  |
| 206 | 1.10 | **PBG** | 1d | 2018-03-15 09:00 A | 2018-03-16 09:00 A |  | 100% |  |  |  |  |  | 8h | 8h |  |  |  |
| 207 | 1.10.1 | PBG Submission(10%) | 1d | 2018-03-15 09:00 A | 2018-03-16 09:00 A | 204FS+9d | 100% |  |  |  |  | Finance | 8h | 8h |  |  |  |
