# 4215 - SRF

Schedule from MS Project, 2017-09-05 to 2018-02-27, costs in Rs., A marks actual dates.

## Calendars

- TEAM_Stand_Calendar: Mon-Sat 08:30-12:30, 13:30-17:30; Sun off. Exceptions (off unless hours are given): 2017-01-13 to 2023-08-12 (2nd Sat, recurring), 2017-01-26 to 2036-01-26 (Republic Day, recurring), 2017-01-27 to 2023-08-26 (4th Sat, recurring), 2017-05-01 to 2036-05-01 (May Day, recurring), 2017-08-15 to 2036-08-15 (Independence Day, recurring), 2017-09-29 (Ayudha Pooja'2017), 2017-10-02 to 2036-10-02 (Gandhi Jayanti, recurring), 2017-10-18 (Deepavali'2017), 2018-01-15 (Thiruvalluvar Day'2018).
- TEAM_2Shift_Calendar-1: Mon-Sat 06:00-22:00; Sun off. Exceptions (off unless hours are given): 2017-01-13 to 2023-02-11 (2nd Sat, recurring), 2017-01-26 to 2036-01-26 (Republic Day, recurring), 2017-01-27 to 2023-08-26 (4th Sat, recurring), 2017-05-01 to 2036-05-01 (May Day, recurring), 2017-08-15 to 2036-08-15 (Indepdence Day, recurring), 2017-10-02 to 2036-10-02 (Gandhi Jayanti, recurring), 2017-10-19 (Deepavali'2017), 2018-01-15 (Thiruvalluvar Day'2018).

## Resources

| Resource | Rate |
| --- | --- |
| Marketing |  |
| Client |  |
| PM |  |
| PMO Head |  |
| TPI |  |
| Store |  |
| QC Engineer |  |
| PPC Engineer |  |
| Draftman |  |
| Helper | 50 |
| Crane |  |
| Driller | 68.75 |
| Fitter | 68.75 |
| Gas Cutter | 68.75 |
| Grinder | 56.25 |
| Grinding Machine |  |
| Milling Operator | 120 |
| OAGM |  |
| Painter |  |
| Radial Drilling Machine |  |
| Rolling Machine |  |
| SMAW Welder | 68.75 |
| SMAW Welding Machine |  |
| TIG Welder | 125 |
| Vehicle |  |
| SC (Cost) |  |
| SC Radiography (Cost) |  |
| Design Engineer |  |
| Purchase Engineer |  |
| Finance |  |

## Schedule

| ID | WBS | Task | Type | Duration | Start | Finish | Predecessors | Complete | Baseline start | Baseline finish | Baseline duration | Resources | Work | Actual work | Cost | Baseline cost | Actual cost |
| --- | --- | --- | --- | --- | --- | --- | --- | --- | --- | --- | --- | --- | --- | --- | --- | --- | --- |
| 1 | 1 | Receipt Of PO |  | 1d | 2017-09-05 08:30 A | 2017-09-05 17:30 A |  | 100% | 2017-09-05 08:30 | 2017-09-05 17:30 | 1d | Marketing | 4h | 4h |  |  |  |
| 2 | 2 | Work Order |  | 1d | 2017-09-08 08:30 A | 2017-09-08 17:30 A | 1FS+2d | 100% | 2017-09-08 08:30 | 2017-09-08 17:30 | 1d | Marketing | 4h | 4h |  |  |  |
| 3 | 3 | CRM |  | 3h | 2017-09-12 08:30 A | 2017-09-12 11:30 A | 2FS+1d | 100% | 2017-09-12 08:30 | 2017-09-12 11:30 | 3h | PM; PMO Head; Marketing | 9h | 9h |  |  |  |
| 4 | 4 | **Design** |  | 94.88d | 2017-09-12 11:30 A | 2018-01-12 10:30 A |  | 100% | 2017-09-12 11:30 | 2017-10-03 09:30 | 14.75d |  | 38h | 38h |  |  |  |
| 5 | 4.1 | Design Preparation |  | 18.12d | 2017-09-12 11:30 A | 2017-10-06 12:30 A | 3 | 100% | 2017-09-12 11:30 | 2017-09-16 11:30 | 4d | Draftman; Design Engineer | 32h | 32h |  |  |  |
| 6 | 4.2 | Drawing Submission |  | 4h | 2017-10-06 13:30 A | 2017-10-06 17:30 A | 5 | 100% | 2017-09-16 11:30 | 2017-09-16 16:30 | 4h | Design Engineer | 4h | 4h |  |  |  |
| 7 | 4.3 | Drawing Approval |  | 2h | 2018-01-12 08:30 A | 2018-01-12 10:30 A | 6FS+10d | 100% | 2017-09-30 16:30 | 2017-10-03 09:30 | 2h | Client | 2h | 2h |  |  |  |
| 8 | 5 | **Purchase Requisition** |  | 0.38d | 2017-11-23 08:30 A | 2017-11-23 11:30 A |  | 100% | 2017-09-18 16:30 | 2017-09-19 10:30 | 0.38d |  | 18h | 18h |  |  |  |
| 9 | 5.1 | CS plate |  | 3h | 2017-11-23 08:30 A | 2017-11-23 11:30 A | 6FS+1d | 100% | 2017-09-18 16:30 | 2017-09-19 10:30 | 3h | PPC Engineer | 3h | 3h |  |  |  |
| 10 | 5.2 | Inconel Plate |  | 3h | 2017-11-23 08:30 A | 2017-11-23 11:30 A | 6FS+1d | 100% | 2017-09-18 16:30 | 2017-09-19 10:30 | 3h | PPC Engineer | 3h | 3h |  |  |  |
| 11 | 5.3 | Non-std Forging |  | 3h | 2017-11-23 08:30 A | 2017-11-23 11:30 A | 6FS+1d | 100% | 2017-09-18 16:30 | 2017-09-19 10:30 | 3h | PPC Engineer | 3h | 3h |  |  |  |
| 12 | 5.4 | Fasteners |  | 3h | 2017-11-23 08:30 A | 2017-11-23 11:30 A | 6FS+1d | 100% | 2017-09-18 16:30 | 2017-09-19 10:30 | 3h | PPC Engineer | 3h | 3h |  |  |  |
| 13 | 5.5 | Gaskets |  | 3h | 2017-11-23 08:30 A | 2017-11-23 11:30 A | 6FS+1d | 100% | 2017-09-18 16:30 | 2017-09-19 10:30 | 3h | PPC Engineer | 3h | 3h |  |  |  |
| 14 | 5.6 | Consumables |  | 3h | 2017-11-23 08:30 A | 2017-11-23 11:30 A | 6FS+1d | 100% | 2017-09-18 16:30 | 2017-09-19 10:30 | 3h | PPC Engineer | 3h | 3h |  |  |  |
| 15 | 6 | **Material Ordering** |  | 89.38d | 2017-09-26 08:30 A | 2018-01-20 11:30 A |  | 100% | 2017-09-26 10:30 | 2017-09-26 14:30 | 0.38d |  | 18h | 18h |  |  |  |
| 16 | 6.1 | CS plate |  | 3h | 2017-09-26 08:30 A | 2017-09-26 11:30 A | 9FS+5d | 100% | 2017-09-26 10:30 | 2017-09-26 14:30 | 3h | Purchase Engineer | 3h | 3h |  |  |  |
| 17 | 6.2 | Inconel Plate |  | 3h | 2017-12-12 08:30 A | 2017-12-12 11:30 A | 9FS+5d | 100% | 2017-09-26 10:30 | 2017-09-26 14:30 | 3h | Purchase Engineer | 3h | 3h |  |  |  |
| 18 | 6.3 | Non-std Forging |  | 3h | 2017-12-15 08:30 A | 2017-12-15 11:30 A | 9FS+5d | 100% | 2017-09-26 10:30 | 2017-09-26 14:30 | 3h | Purchase Engineer | 3h | 3h |  |  |  |
| 19 | 6.4 | Fasteners |  | 3h | 2018-01-20 08:30 A | 2018-01-20 11:30 A | 9FS+5d | 100% | 2017-09-26 10:30 | 2017-09-26 14:30 | 3h | Purchase Engineer | 3h | 3h |  |  |  |
| 20 | 6.5 | Gaskets |  | 3h | 2017-12-18 08:30 A | 2017-12-18 11:30 A | 9FS+5d | 100% | 2017-09-26 10:30 | 2017-09-26 14:30 | 3h | Purchase Engineer | 3h | 3h |  |  |  |
| 21 | 6.6 | Consumables |  | 3h | 2017-09-26 08:30 A | 2017-09-26 11:30 A | 9FS+5d | 100% | 2017-09-26 10:30 | 2017-09-26 14:30 | 3h | Purchase Engineer | 3h | 3h |  |  |  |
| 22 | 7 | **Material Receipt** |  | 108.94d | 2017-09-26 08:30 A | 2018-02-15 17:00 A |  | 100% | 2017-10-10 14:30 | 2017-12-30 16:30 | 63.25d |  | 18h | 18h | 300 | 600 | 300 |
| 23 | 7.1 | CS plate |  | 2h | 2017-09-26 08:30 A | 2017-12-30 13:54 A | 16FS+73d | 100% | 2017-12-30 14:30 | 2017-12-30 16:30 | 2h | Crane; Helper; Store | 6h | 6h | 100 | 100 | 100 |
| 24 | 7.2 | Inconel Plate | milestone | 0h | 2017-12-27 17:00 A | 2017-12-27 17:00 A | 17FS+73d | 100% | 2017-12-30 14:30 | 2017-12-30 16:30 | 2h | Crane; Helper; Store |  |  |  | 100 |  |
| 25 | 7.3 | Non-std Forging | milestone | 0h | 2018-02-15 17:00 A | 2018-02-15 17:00 A | 18FS+73d | 100% | 2017-12-30 14:30 | 2017-12-30 16:30 | 2h | Crane; Helper; Store |  |  |  | 100 |  |
| 26 | 7.4 | Fasteners |  | 2h | 2018-02-03 11:30 A | 2018-02-03 14:30 A | 19FS+10d | 100% | 2017-10-10 14:30 | 2017-10-10 16:30 | 2h | Crane; Helper; Store | 6h | 6h | 100 | 100 | 100 |
| 27 | 7.5 | Gaskets | milestone | 0h | 2018-01-01 17:00 A | 2018-01-01 17:00 A | 20FS+73d | 100% | 2017-12-30 14:30 | 2017-12-30 16:30 | 2h | Crane; Helper; Store |  |  |  | 100 |  |
| 28 | 7.6 | Consumables |  | 2h | 2017-09-26 08:30 A | 2017-12-30 13:54 A | 21FS+73d | 100% | 2017-12-30 14:30 | 2017-12-30 16:30 | 2h | Crane; Helper; Store | 6h | 6h | 100 | 100 | 100 |

Notes:
- 8: Shell SA 516 Gr.70 10T / Cladding Inconel SB 168 No.6600 Clad 4T / Shell Flange SA 266 Gr.4 + Inconnel 600 Weld Overlay / Gasket / Fastener SA 193 Gr.B16 / SA 194 Gr.16 / Consumables
- 15: Shell SA 516 Gr.70 10T / Cladding Inconel SB 168 No.6600 Clad 4T / Shell Flange SA 266 Gr.4 + Inconnel 600 Weld Overlay / Gasket / Fastener SA 193 Gr.B16 / SA 194 Gr.16 / Consumables

| ID | WBS | Task | Duration | Start | Finish | Predecessors | Complete | Baseline start | Baseline finish | Baseline duration | Calendar | Resources | Work | Actual work | Cost | Baseline cost | Actual cost |
| --- | --- | --- | --- | --- | --- | --- | --- | --- | --- | --- | --- | --- | --- | --- | --- | --- | --- |
| 29 | 8 | **Fabrication** | 222.94d | 2017-09-26 10:30 A | 2018-02-17 18:00 A |  | 100% | 2017-12-30 16:30 | 2018-01-19 15:30 | 29.84d | TEAM_2Shift_Calendar-1 |  | 211h | 211h | 8,160.55 | 8,197.21 | 8,160.55 |
| 30 | 8.1 | **Shell Fabrication** | 222.94d | 2017-09-26 10:30 A | 2018-02-17 18:00 A |  | 100% | 2017-12-30 16:30 | 2018-01-19 15:30 | 29.84d | TEAM_2Shift_Calendar-1 |  | 211h | 211h | 8,160.55 | 8,197.21 | 8,160.55 |
| 31 | 8.1.1 | **Initial Preparation** | 168.88d | 2017-09-26 10:30 A | 2018-01-11 17:31 A |  | 100% | 2017-12-30 16:30 | 2018-01-11 17:31 | 20.11d | TEAM_2Shift_Calendar-1 |  | 36h | 36h | 1,187.95 | 1,187.95 | 1,187.95 |
| 32 | 8.1.1.1 | Plate Receipt | 1d | 2017-09-26 10:30 A | 2017-09-27 10:30 A | 23 | 100% | 2017-12-30 16:30 | 2018-01-01 16:30 | 1d |  | Store | 2h | 2h |  |  |  |
| 33 | 8.1.1.2 | Inward Inspection | 1h | 2017-09-27 10:30 A | 2017-09-27 11:30 A | 32 | 100% | 2018-01-01 16:30 | 2018-01-01 17:30 | 1h | TEAM_2Shift_Calendar-1 | Fitter; QC Engineer | 1h | 1h | 68.75 | 68.75 | 68.75 |
| 34 | 8.1.1.3 | Sh Pl. Mkg | 2h | 2017-09-27 11:30 A | 2017-09-27 13:30 A | 33 | 100% | 2018-01-01 17:30 | 2018-01-01 19:30 | 2h | TEAM_2Shift_Calendar-1 | Fitter; Helper | 1h | 1h | 59.38 | 59.38 | 59.38 |
| 35 | 8.1.1.4 | Sh Pl. Stamping | 1.25d | 2017-09-27 13:30 A | 2017-09-28 07:30 A | 34 | 100% | 2018-01-01 19:30 | 2018-01-02 11:30 | 1d | TEAM_2Shift_Calendar-1 | Fitter; QC Engineer; TPI | 2h | 2h | 78.57 | 78.57 | 78.57 |
| 36 | 8.1.1.5 | Sh Pl. Cutting | 2h | 2017-09-28 07:31 A | 2017-09-28 09:31 A | 35 | 100% | 2018-01-02 11:30 | 2018-01-02 13:30 | 2h | TEAM_2Shift_Calendar-1 | Helper; Gas Cutter; OAGM | 6h | 6h | 237.5 | 237.5 | 237.5 |
| 37 | 8.1.1.6 | Sh Pl. E.P | 2h | 2017-09-28 09:31 A | 2017-09-28 11:31 A | 36 | 100% | 2018-01-02 13:30 | 2018-01-02 15:31 | 2h | TEAM_2Shift_Calendar-1 | Grinder; Grinding Machine | 4h | 4h | 112.5 | 112.5 | 112.5 |
| 38 | 8.1.1.7 | Send for Cladding | 15.01d | 2018-01-02 15:31 A | 2018-01-11 07:38 A | 37 | 100% | 2018-01-02 15:31 | 2018-01-11 07:38 | 15d | TEAM_2Shift_Calendar-1 | SC (Cost) [0.1%] |  |  |  |  |  |
| 39 | 8.1.1.8 | Cladded Plate Receipt | 4h | 2018-01-11 08:30 A | 2018-01-11 12:30 A | 38 | 100% | 2018-01-11 08:30 | 2018-01-11 12:30 | 4h |  | Store | 4h | 4h |  |  |  |
| 40 | 8.1.1.9 | Sh-L1 Pre-Bending | 2.02h | 2018-01-11 12:30 A | 2018-01-11 14:31 A | 39 | 100% | 2018-01-11 12:30 | 2018-01-11 14:31 | 2h | TEAM_2Shift_Calendar-1 | Fitter; Helper [200%]; Rolling Machine | 8h | 8h | 337.5 | 337.5 | 337.5 |
| 41 | 8.1.1.10 | Sh-L1 Pre-Bend Cut-off | 1h | 2018-01-11 14:31 A | 2018-01-11 15:31 A | 40 | 100% | 2018-01-11 14:31 | 2018-01-11 15:31 | 1h | TEAM_2Shift_Calendar-1 | Gas Cutter; OAGM | 2h | 2h | 68.75 | 68.75 | 68.75 |
| 42 | 8.1.1.11 | Sh-L1 E.P | 1h | 2018-01-11 15:31 A | 2018-01-11 16:31 A | 41 | 100% | 2018-01-11 15:31 | 2018-01-11 16:31 | 1h | TEAM_2Shift_Calendar-1 | Grinder; Grinding Machine | 2h | 2h | 56.25 | 56.25 | 56.25 |
| 43 | 8.1.1.12 | Sh-L1 Rolling | 1h | 2018-01-11 16:31 A | 2018-01-11 17:31 A | 42 | 100% | 2018-01-11 16:31 | 2018-01-11 17:31 | 1h | TEAM_2Shift_Calendar-1 | Fitter; Helper [200%]; Rolling Machine | 4h | 4h | 168.75 | 168.75 | 168.75 |
| 44 | 8.1.2 | **Fitup & Welding** | 12.44d | 2018-01-16 11:32 A | 2018-01-23 15:02 A |  | 100% | 2018-01-11 17:31 | 2018-01-16 19:33 | 4.25d | TEAM_2Shift_Calendar-1 |  | 45h | 45h | 1,956.25 | 1,956.25 | 1,956.25 |
| 45 | 8.1.2.1 | Sh-L1 LS Fitup | 16h | 2018-01-20 06:00 A | 2018-01-20 22:00 A | 43 | 100% | 2018-01-11 17:31 | 2018-01-11 18:31 | 1h | TEAM_2Shift_Calendar-1 | Fitter; Helper [200%]; SMAW Welder; SMAW Welding Machine | 5h | 5h | 237.5 | 237.5 | 237.5 |
| 46 | 8.1.2.2 | Sh-L1 fitup Inspection | 1h | 2018-01-20 22:00 A | 2018-01-22 07:00 A | 45 | 100% | 2018-01-11 18:31 | 2018-01-11 19:31 | 1h | TEAM_2Shift_Calendar-1 | Fitter; QC Engineer | 2h | 2h | 137.5 | 137.5 | 137.5 |
| 47 | 8.1.2.3 | Sh-L1 Welding Arrangement | 1h | 2018-01-22 07:00 A | 2018-01-22 08:00 A | 46 | 100% | 2018-01-11 19:31 | 2018-01-11 20:31 | 1h | TEAM_2Shift_Calendar-1 | Fitter; Helper | 2h | 2h | 118.75 | 118.75 | 118.75 |
| 48 | 8.1.2.4 | Sh-L1 LS Welding | 4h | 2018-01-22 08:00 A | 2018-01-22 12:00 A | 47 | 100% | 2018-01-11 20:31 | 2018-01-12 08:31 | 4h | TEAM_2Shift_Calendar-1 | Helper [200%]; SMAW Welder; SMAW Welding Machine | 16h | 16h | 675 | 675 | 675 |
| 49 | 8.1.2.5 | Sh-L1 LS Backchip / DP Check | 8.02h | 2018-01-22 12:00 A | 2018-01-22 20:01 A | 48 | 100% | 2018-01-12 08:31 | 2018-01-12 16:32 | 8h | TEAM_2Shift_Calendar-1 | Grinder; Grinding Machine | 4h | 4h | 112.5 | 112.5 | 112.5 |
| 50 | 8.1.2.6 | Sh-L1 Backchip Welding | 3h | 2018-01-22 20:01 A | 2018-01-23 07:01 A | 49 | 100% | 2018-01-12 16:32 | 2018-01-12 19:32 | 3h | TEAM_2Shift_Calendar-1 | Helper [200%]; SMAW Welder; SMAW Welding Machine | 12h | 12h | 506.25 | 506.25 | 506.25 |
| 51 | 8.1.2.7 | Sh-L1 Re-rolling | 8.02h | 2018-01-23 07:01 A | 2018-01-23 15:02 A | 50 | 100% | 2018-01-12 19:32 | 2018-01-16 11:32 | 8h | TEAM_2Shift_Calendar-1 | Fitter; Helper [200%]; Rolling Machine | 4h | 4h | 168.75 | 168.75 | 168.75 |
| 52 | 8.1.2.8 | Sh-L1 Radiography | 1d | 2018-01-16 11:32 A | 2018-01-16 19:33 A | 51 | 100% | 2018-01-16 11:32 | 2018-01-16 19:33 | 1d | TEAM_2Shift_Calendar-1 | SC (Cost) [0.1%] |  |  |  |  |  |

| ID | WBS | Task | Type | Duration | Start | Finish | Predecessors | Complete | Baseline start | Baseline finish | Baseline duration | Calendar | Resources | Work | Actual work | Cost | Baseline cost | Actual cost |
| --- | --- | --- | --- | --- | --- | --- | --- | --- | --- | --- | --- | --- | --- | --- | --- | --- | --- | --- |
| 53 | 8.1.3 | **Flange Welding** |  | 25.88d | 2018-01-29 10:30 A | 2018-02-14 09:31 A |  | 100% | 2017-12-30 16:30 | 2018-01-08 18:26 | 14.23d | TEAM_2Shift_Calendar-1 |  | 106h | 106h | 4,326.77 | 4,326.76 | 4,326.77 |
| 54 | 8.1.3.1 | Flange Receipt |  | 1d | 2018-01-29 10:30 A | 2018-01-30 10:30 A | 25 | 100% | 2017-12-30 16:30 | 2018-01-01 16:30 | 1d |  | Store | 2h | 2h |  |  |  |
| 55 | 8.1.3.2 | Inward Inspection |  | 1d | 2018-01-30 10:30 A | 2018-01-30 18:31 A | 54 | 100% | 2018-01-01 16:30 | 2018-01-02 08:30 | 1d | TEAM_2Shift_Calendar-1 | Fitter; QC Engineer | 1h | 1h | 68.75 | 68.75 | 68.75 |
| 56 | 8.1.3.3 | Flange Weld Overlay |  | 3d | 2018-01-30 18:31 A | 2018-02-01 12:23 A | 55 | 100% | 2018-01-02 08:30 | 2018-01-03 18:23 | 3d | TEAM_2Shift_Calendar-1 | Helper [200%]; SMAW Welder; SMAW Welding Machine | 20h | 20h | 1,034.27 | 1,034.26 | 1,034.27 |
| 57 | 8.1.3.4 | Pre Machining |  | 5.02h | 2018-02-01 12:23 A | 2018-02-01 17:24 A | 56 | 100% | 2018-01-03 18:23 | 2018-01-04 07:23 | 5h | TEAM_2Shift_Calendar-1 | Grinder; Grinding Machine | 10h | 10h | 281.25 | 281.25 | 281.25 |
| 58 | 8.1.3.5 | Weld Overlay |  | 2d | 2018-02-01 17:24 A | 2018-02-02 17:24 A | 57 | 100% | 2018-01-04 07:23 | 2018-01-05 07:24 | 2d | TEAM_2Shift_Calendar-1 | Helper [200%]; SMAW Welder; SMAW Welding Machine | 8h | 8h | 380 | 380 | 380 |
| 59 | 8.1.3.6 | Final Machining |  | 2h | 2018-02-02 17:25 A | 2018-02-02 19:25 A | 58 | 100% | 2018-01-05 07:24 | 2018-01-05 09:24 | 2h | TEAM_2Shift_Calendar-1 | Grinder; Grinding Machine | 4h | 4h | 112.5 | 112.5 | 112.5 |
| 60 | 8.1.3.7 | Flange Drilling |  | 1d | 2018-02-10 08:00 A | 2018-02-12 17:30 A | 59 | 100% | 2018-01-05 09:24 | 2018-01-06 09:24 | 1d |  | Driller [50%]; Radial Drilling Machine | 8h | 8h | 206.25 | 206.25 | 206.25 |
| 61 | 8.1.3.8 | Flange Fitup |  | 12.48h | 2018-02-10 08:00 A | 2018-02-12 18:29 A | 60 | 100% | 2018-01-06 09:24 | 2018-01-06 10:24 | 1h | TEAM_2Shift_Calendar-1 | Fitter; Helper [200%]; SMAW Welder; SMAW Welding Machine | 5h | 5h | 237.5 | 237.5 | 237.5 |
| 62 | 8.1.3.9 | Flange Fitup Inspection |  | 12.48h | 2018-02-10 08:00 A | 2018-02-12 18:29 A | 61 | 100% | 2018-01-06 10:24 | 2018-01-06 11:24 | 1h | TEAM_2Shift_Calendar-1 | Fitter; QC Engineer | 2h | 2h | 137.5 | 137.5 | 137.5 |
| 63 | 8.1.3.10 | Flange Welding |  | 8h | 2018-02-12 18:30 A | 2018-02-13 10:30 A | 62 | 100% | 2018-01-06 11:24 | 2018-01-06 19:25 | 8h | TEAM_2Shift_Calendar-1 | Helper [200%]; SMAW Welder; SMAW Welding Machine | 32h | 32h | 1,350 | 1,350 | 1,350 |
| 64 | 8.1.3.11 | Flange Backchip |  | 24.48h | 2018-02-12 06:00 A | 2018-02-13 14:29 A | 63 | 100% | 2018-01-06 19:25 | 2018-01-08 07:25 | 4h | TEAM_2Shift_Calendar-1 | Grinder; Grinding Machine | 8h | 8h | 225 | 225 | 225 |
| 65 | 8.1.3.12 | Flange Flush Grinding |  | 1h | 2018-02-13 14:31 A | 2018-02-13 15:31 A | 64 | 100% | 2018-01-08 07:25 | 2018-01-08 08:25 | 1h | TEAM_2Shift_Calendar-1 | Grinder; Grinding Machine | 2h | 2h | 56.25 | 56.25 | 56.25 |
| 66 | 8.1.3.13 | Flange DP Check |  | 2h | 2018-02-13 15:31 A | 2018-02-13 17:31 A | 65 | 100% | 2018-01-08 08:25 | 2018-01-08 10:25 | 2h | TEAM_2Shift_Calendar-1 | Fitter; Helper | 4h | 4h | 237.5 | 237.5 | 237.5 |
| 67 | 8.1.3.14 | Flange Radiography |  | 1d | 2018-02-13 17:31 A | 2018-02-14 09:31 A | 66 | 100% | 2018-01-08 10:25 | 2018-01-08 18:26 | 1d | TEAM_2Shift_Calendar-1 | SC (Cost) [0.1%] |  |  |  |  |  |
| 68 | 8.1.4 | **Cleaning & Painting** |  | 5d | 2018-02-13 06:00 A | 2018-02-17 18:00 A |  | 100% | 2018-01-08 18:26 | 2018-01-19 15:30 | 7.75d |  |  | 24h | 24h | 689.58 | 726.25 | 689.58 |
| 69 | 8.1.4.1 | Blast Cleaning Arrangment |  | 16.67h | 2018-02-13 06:00 A | 2018-02-14 10:11 A | 67 | 100% | 2018-01-08 18:26 | 2018-01-09 11:30 | 3h |  | Store; Helper | 4h | 4h | 133.33 | 120 | 133.33 |
| 70 | 8.1.4.2 | Transport For BC |  | 2h | 2018-02-14 06:00 A | 2018-02-14 10:30 A | 69 | 100% | 2018-01-09 11:30 | 2018-01-09 14:30 | 2h |  | Fitter; Helper [200%] | 6h | 6h | 337.5 | 337.5 | 337.5 |
| 71 | 8.1.4.3 | Blast Cleaning |  | 1d | 2018-02-14 10:30 A | 2018-02-15 10:30 A | 70 | 100% | 2018-01-09 14:30 | 2018-01-10 14:30 | 1d |  | SC (Cost) [0.1%] |  |  |  |  |  |
| 72 | 8.1.4.4 | Primer Painting |  | 1d | 2018-02-14 06:00 A | 2018-02-14 14:00 A | 71 | 100% | 2018-01-10 14:30 | 2018-01-11 14:30 | 1d |  | Painter [50%] | 2h | 2h |  |  |  |
| 73 | 8.1.4.5 | Return From Blast Clean |  | 1d | 2018-02-14 14:00 A | 2018-02-15 14:00 A | 72 | 100% | 2018-01-11 14:30 | 2018-01-12 14:30 | 1d |  | Crane; Helper [200%] | 3h | 3h | 100 | 100 | 100 |
| 74 | 8.1.4.6 | Top Coat Painting |  | 1d | 2018-02-15 14:00 A | 2018-02-16 14:00 A | 73 | 100% | 2018-01-12 14:30 | 2018-01-16 14:30 | 1d |  | Painter | 2h | 2h |  |  |  |
| 75 | 8.1.4.7 | Painting Inspection |  | 1h | 2018-02-15 06:00 A | 2018-02-15 07:00 A | 74 | 100% | 2018-01-16 14:30 | 2018-01-16 15:30 | 1h |  | Painter [50%] | 1h | 1h |  |  |  |
| 76 | 8.1.4.8 | Despatch Clearence and Final documentation |  | 1d | 2018-02-17 08:30 A | 2018-02-17 17:30 A | 75 | 100% | 2018-01-16 15:30 | 2018-01-17 15:30 | 1d |  | QC Engineer | 4h | 4h |  |  |  |
| 77 | 8.1.4.9 | Despatch | milestone | 0h | 2018-02-17 17:30 A | 2018-02-17 18:00 A | 76 | 100% | 2018-01-17 15:30 | 2018-01-19 15:30 | 2d |  | Fitter; Helper [200%] | 2h | 2h | 118.75 | 168.75 | 118.75 |

| ID | WBS | Task | Duration | Start | Finish | Predecessors | Complete | Constraint | Resources | Work | Actual work |
| --- | --- | --- | --- | --- | --- | --- | --- | --- | --- | --- | --- |
| 78 | 9 | **PBG** | 8.38d | 2018-02-16 14:00 A | 2018-02-27 17:00 A |  | 100% |  |  | 67h | 67h |
| 79 | 9.1 | PBG Submission 10% | 2d | 2018-02-16 14:00 A | 2018-02-19 14:00 A | 29 | 100% |  | Finance | 16h | 16h |
| 80 | 9.2 | Approval | 6.38d | 2018-02-19 14:00 A | 2018-02-27 17:00 A | 79 | 100% | finish no earlier than 2018-02-28 17:00 | Finance | 51h | 51h |
