# 4216-BEML

Schedule from MS Project, 2017-09-12 to 2018-06-16, costs in Rs., A marks actual dates.

## Calendars

- TEAM_Stand_Calendar: Mon-Sat 08:30-12:30, 13:30-17:30; Sun off. Exceptions (off unless hours are given): 2017-01-13 to 2023-08-12 (2nd Sat, recurring), 2017-01-26 to 2036-01-26 (Republic Day, recurring), 2017-01-27 to 2023-08-26 (4th Sat, recurring), 2017-05-01 to 2036-05-01 (May Day, recurring), 2017-08-15 to 2036-08-15 (Independence Day, recurring), 2017-09-29 (Ayudha Pooja'2017), 2017-10-02 to 2036-10-02 (Gandhi Jayanti, recurring), 2017-10-18 (Deepavali'2017), 2018-01-15 (Thiruvalluvar Day'2018).
- TEAM_2Shift_Calendar-1: Mon-Sat 06:00-22:00; Sun off. Exceptions (off unless hours are given): 2017-01-13 to 2023-02-11 (2nd Sat, recurring), 2017-01-26 to 2036-01-26 (Republic Day, recurring), 2017-01-27 to 2023-08-26 (4th Sat, recurring), 2017-05-01 to 2036-05-01 (May Day, recurring), 2017-08-15 to 2036-08-15 (Indepdence Day, recurring), 2017-10-02 to 2036-10-02 (Gandhi Jayanti, recurring), 2017-10-19 (Deepavali'2017), 2018-01-15 (Thiruvalluvar Day'2018).

## Resources

| Resource | Rate |
| --- | --- |
| Marketing |  |
| PM |  |
| PMO Head |  |
| Crane |  |
| Helper | 50 |
| Store |  |
| QC Engineer |  |
| Fitter | 68.75 |
| Grinder | 56.25 |
| Grinding Machine |  |
| SMAW Welder | 68.75 |
| SMAW Welding Machine |  |
| Finance |  |
| Budget Cost Labour Expenses |  |
| Budget Cost Material Expenses |  |
| Budget Cost P&F/Transport |  |
| Budget Cost Subcontract |  |
| Budget Cost TPI Charges |  |
| Budget Hours Contract |  |
| Budget Hours TEAM |  |

## Schedule

| ID | WBS | Task | Duration | Start | Finish | Predecessors | Complete | Baseline start | Baseline finish | Baseline duration | Total slack | Free slack | Constraint | Calendar | Resources | Work | Actual work | Cost | Baseline cost |
| --- | --- | --- | --- | --- | --- | --- | --- | --- | --- | --- | --- | --- | --- | --- | --- | --- | --- | --- | --- |
| 1 | 1 | **Project Initiation** | 3.38d | 2017-09-12 A | 2017-09-15 A |  | 100% | 2017-09-12 | 2017-09-15 | 3.38d |  |  |  |  |  | 25h | 25h |  |  |
| 2 | 1.1 | PO Receipt | 1d | 2017-09-12 A | 2017-09-12 A |  | 100% | 2017-09-12 | 2017-09-12 | 1d |  |  |  |  | Marketing | 8h | 8h |  |  |
| 3 | 1.2 | Work Order | 1d | 2017-09-13 A | 2017-09-13 A | 2 | 100% | 2017-09-13 | 2017-09-13 | 1d |  |  |  |  | Marketing | 8h | 8h |  |  |
| 4 | 1.3 | CRM | 3h | 2017-09-15 A | 2017-09-15 A | 3FS+1d | 100% | 2017-09-15 | 2017-09-15 | 3h |  |  |  |  | Marketing; PM; PMO Head | 9h | 9h |  |  |
| 5 | 2 | **4216-Material Receipt** | 0.38d | 2018-06-01 | 2018-06-01 |  |  | 2018-06-01 | 2018-06-01 | 0.38d | 0.75d |  |  |  |  | 3h |  | 50 | 50 |
| 6 | 2.1 | FIM - Ti Sheets | 3h | 2018-06-01 | 2018-06-01 | 4FS+199d |  | 2018-06-01 | 2018-06-01 | 3h | 0.75d | 0.25d |  |  | Crane; Helper; Store | 3h |  | 50 | 50 |
| 7 | 3 | **Raw Material Inspection** | 0.38d | 2018-06-02 | 2018-06-02 |  |  | 2018-06-02 | 2018-06-02 | 0.38d | 0.5d |  |  |  |  | 3h |  |  |  |
| 8 | 3.1 | Raw Material Inspection (Plates) | 3h | 2018-06-02 | 2018-06-02 | 6 |  | 2018-06-02 | 2018-06-02 | 3h | 0.5d | 0d | start no earlier than 2018-06-02 |  | QC Engineer | 3h |  |  |  |
| 9 | 4 | **4216-Fabrication Plan** | 7d | 2018-06-04 | 2018-06-07 |  |  | 2018-06-04 | 2018-06-07 | 7d | 0.62d |  |  | TEAM_2Shift_Calendar-1 |  | 45h |  | 2,171.88 | 2,171.88 |
| 10 | 4.1 | Plate Marking & prepunching | 1.5d | 2018-06-04 | 2018-06-05 | 8FS+2d |  | 2018-06-04 | 2018-06-05 | 1.5d | 0.62d | 0d |  | TEAM_2Shift_Calendar-1 | Fitter; Helper | 10h |  | 593.75 | 593.75 |
| 11 | 4.2 | Plate Grinding Work | 1d | 2018-06-05 | 2018-06-05 | 10 |  | 2018-06-05 | 2018-06-05 | 1d | 0.62d | 0d |  | TEAM_2Shift_Calendar-1 | Grinder; Grinding Machine | 7h |  | 196.88 | 196.88 |
| 12 | 4.3 | Shell Plate Pre Bending Work | 1d | 2018-06-05 | 2018-06-06 | 11 |  | 2018-06-05 | 2018-06-06 | 1d | 0.62d | 0d |  | TEAM_2Shift_Calendar-1 | Fitter; Helper | 5h |  | 296.88 | 296.88 |
| 13 | 4.4 | Shell Rolling Work | 1.5d | 2018-06-06 | 2018-06-06 | 12 |  | 2018-06-06 | 2018-06-06 | 1.5d | 0.62d | 0d |  | TEAM_2Shift_Calendar-1 | Fitter [200%]; Helper | 10h |  | 625 | 625 |
| 14 | 4.5 | Shell Fitup | 1d | 2018-06-06 | 2018-06-07 | 13 |  | 2018-06-06 | 2018-06-07 | 1d | 0.62d | 0d |  | TEAM_2Shift_Calendar-1 | Fitter; Helper; SMAW Welder; SMAW Welding Machine | 5h |  | 234.38 | 234.38 |
| 15 | 4.6 | Final Finishing | 1d | 2018-06-07 | 2018-06-07 | 14 |  | 2018-06-07 | 2018-06-07 | 1d | 0.62d |  |  | TEAM_2Shift_Calendar-1 | Grinder; Grinding Machine | 8h |  | 225 | 225 |
| 16 | 5 | **Project Closure** | 7d | 2018-06-08 | 2018-06-16 |  |  | 2018-06-08 | 2018-06-16 | 7d | 0d |  |  |  |  | 48h |  |  |  |
| 17 | 5.1 | Material Handover to Store | 1d | 2018-06-08 | 2018-06-08 | 15 |  | 2018-06-08 | 2018-06-08 | 1d | 0d |  |  |  | QC Engineer | 4h |  |  |  |
| 18 | 5.2 | Final Documentation | 2d | 2018-06-11 | 2018-06-12 | 17 |  | 2018-06-11 | 2018-06-12 | 2d | 0d |  |  |  | QC Engineer | 16h |  |  |  |
| 19 | 5.3 | Invoice to Customer | 1d | 2018-06-13 | 2018-06-13 | 18 |  | 2018-06-13 | 2018-06-13 | 1d | 0d |  |  |  | Finance | 4h |  |  |  |
| 20 | 5.4 | Product Transportation to Site | 3d | 2018-06-14 | 2018-06-16 | 19 |  | 2018-06-14 | 2018-06-16 | 3d | 0d |  |  |  | Store | 24h |  |  |  |
