# 4220-0

Schedule from MS Project, 2017-10-03 to 2018-09-26, A marks actual dates.

## Calendars

- TEAM_Stand_Calendar: Mon-Sat 08:30-12:30, 13:30-17:30; Sun off. Exceptions (off unless hours are given): 2017-01-13 to 2023-08-12 (2nd Sat, recurring), 2017-01-26 to 2036-01-26 (Republic Day, recurring), 2017-01-27 to 2023-08-26 (4th Sat, recurring), 2017-05-01 to 2036-05-01 (May Day, recurring), 2017-08-15 to 2036-08-15 (Independence Day, recurring), 2017-10-02 to 2036-10-02 (Gandhi Jayanti, recurring), 2017-10-18 (Deepavali'2017), 2018-01-15 (Thiruvalluvar Day'2018), 2018-09-13 (Vinakaya Chaturthi'2018).

## Resources

| Resource |
| --- |
| Marketing |
| PMO Head |
| Draftman |
| Client |
| PPC Engineer |
| QC Engineer |
| PM |
| Production Department |
| Design Engineer |
| Purchase Engineer |
| Production Engineer |
| actual |
| Finance |

## Schedule

| ID | WBS | Task | Duration | Start | Finish | Predecessors | Complete | Remaining | Baseline start | Baseline finish | Baseline duration | Total slack | Free slack | Resources | Work | Actual work |
| --- | --- | --- | --- | --- | --- | --- | --- | --- | --- | --- | --- | --- | --- | --- | --- | --- |
| 1 | 1 | **Project Initiation** | 147.94d | 2017-10-03 A | 2018-04-10 A |  | 100% |  | 2017-10-03 | 2018-04-10 | 147.94d |  |  |  | 144h | 144h |
| 2 | 1.1 | PO Receipt | 1d | 2017-10-03 A | 2017-10-03 A |  | 100% |  | 2017-10-03 | 2017-10-03 | 1d |  |  | Marketing | 8h | 8h |
| 3 | 1.2 | Work Order | 1d | 2017-10-04 A | 2017-10-04 A | 2 | 100% |  | 2017-10-04 | 2017-10-04 | 1d |  |  | Marketing | 8h | 8h |
| 4 | 1.3 | CRM | 2d | 2017-10-05 A | 2017-10-06 A | 3FS+2d | 100% |  | 2017-10-05 | 2017-10-06 | 2d |  |  | Design Engineer; Finance; Marketing; PM; PMO Head; PPC Engineer; Production Department; QC Engineer | 128h | 128h |
| 5 | 1.4 | Advance License | 43.94d | 2018-02-15 A | 2018-04-10 A | 4FS+146d | 100% |  | 2018-02-15 | 2018-04-10 | 43.94d |  |  | Finance |  |  |
| 6 | 2 | **Design** | 277.94d | 2017-10-03 A | 2018-09-26 |  | 64% | 101.34d | 2017-10-07 | 2019-05-27 | 460.44d | 138.38d |  |  | 1625.5h | 1275.5h |
| 7 | 2.1 | Drawing Preparation | 29d | 2017-10-07 A | 2017-11-15 A | 4 | 100% |  | 2017-10-07 | 2017-11-15 | 29d |  |  | Design Engineer; Draftman | 464h | 464h |
| 8 | 2.2 | Drawing Submission | 4.94d | 2017-11-28 A | 2017-12-02 A | 7 | 100% |  | 2017-11-28 | 2017-12-02 | 4.94d |  |  | Design Engineer | 39.5h | 39.5h |
| 9 | 2.3 | Drawing Approval | 2d | 2018-05-07 A | 2018-05-09 A | 8FS+120d | 100% |  | 2018-05-07 | 2018-05-09 | 2d |  |  | Design Engineer | 16h | 16h |
| 10 | 2.4 | PBG preparation | 4h | 2018-06-16 | 2018-06-18 | 9FS+30d |  |  | 2018-05-09 | 2018-05-10 | 4h | 212.88d | 0d | Finance; Marketing; PM | 12h |  |
| 11 | 2.5 | PBG Submission | 3d | 2018-06-18 | 2018-06-21 | 10 |  |  | 2018-05-10 | 2018-05-15 | 3d | 212.88d |  | Finance | 24h |  |
| 12 | 2.6 | Warranty Guarantee Submission | 3d | 2017-10-03 | 2017-10-05 |  |  |  | 2019-03-18 | 2019-03-21 | 3d | 413.31d |  | Finance | 24h |  |
| 13 | 2.7 | ABG Preparation and submission - RM Ordering | 3d | 2018-07-24 | 2018-07-27 | 9FS+60d |  |  | 2018-11-26 | 2018-11-29 | 3d | 183.38d |  | Finance | 24h |  |
| 14 | 2.8 | ABG Preparation and submission - RM receipt | 3d | 2018-09-01 | 2018-09-05 | 9FS+90d |  |  | 2019-05-22 | 2019-05-27 | 3d | 153.38d |  | Finance | 24h |  |
| 15 | 2.9 | **Design Rework** | 173.94d | 2018-02-15 A | 2018-09-26 |  | 56% | 76.46d | 2018-02-15 | 2019-05-16 | 352.94d | 138.38d |  |  | 998h | 756h |
| 16 | 2.9.1 | Revised Mds receipt | 1d | 2018-02-15 A | 2018-02-15 |  | 75% | 0.25d | 2018-02-15 | 2018-02-15 | 1d | 311.31d |  | Client | 8h | 6h |
| 17 | 2.9.2 | Drawing Rework | 14.94d | 2018-02-16 A | 2018-03-06 A | 16 | 100% |  | 2018-02-16 | 2018-03-06 | 15d |  |  | Draftman [200%]; Design Engineer [300%] | 737.5h | 737.5h |
| 18 | 2.9.3 | Drawing Rework Submission | 0.94d | 2018-03-07 A | 2018-03-07 A | 17 | 100% |  | 2018-03-07 | 2018-03-07 | 1d |  |  | Design Engineer | 7.5h | 7.5h |
| 19 | 2.9.4 | Drawing Rework Approval | 21.94d | 2018-04-16 A | 2018-05-14 A | 18FS+55d | 100% |  | 2018-04-16 | 2018-04-21 | 5.75d |  |  | Design Engineer; Client | 5h | 5h |
| 20 | 2.9.5 | ABG Preparation & Submission- RM Ordering | 15d | 2018-07-27 | 2018-08-17 | 19FS+60d |  |  | 2018-11-26 | 2018-12-14 | 15d | 168.38d |  | Finance | 120h |  |
| 21 | 2.9.6 | ABG Preparation & Submission- RM Receipt | 15d | 2018-09-05 | 2018-09-26 | 19FS+90d |  |  | 2019-04-25 | 2019-05-16 | 15d | 138.38d |  | Finance | 120h |  |
| 22 | 3 | **Design & Material Ordering** | 224d | 2017-12-02 A | 2018-09-18 |  | 70% | 66.21d | 2017-12-02 | 2018-11-26 | 274d | 144.38d |  |  | 16557.2h | 11397.7h |
| 23 | 3.1 | **133-EE-1001 A/B/C/D - 4220 A** | 164d | 2017-12-02 A | 2018-07-02 |  | 87% | 22.09d | 2017-12-02 | 2018-08-14 | 198d | 204.38d |  |  | 938.5h | 802.5h |
| 24 | 3.1.1 | **PR Issue / A** | 120d | 2017-12-02 A | 2018-05-07 |  | 95% | 5.54d | 2017-12-02 | 2018-05-07 | 120d | 211.38d |  |  | 504h | 480h |
| 25 | 3.1.1.1 | CS plates | 7d | 2018-03-12 A | 2018-03-20 A | 8 | 100% |  | 2018-03-12 | 2018-03-20 | 7d |  |  | PPC Engineer | 56h | 56h |
| 26 | 3.1.1.2 | Tubes & Spacer | 7d | 2018-03-12 A | 2018-03-20 A | 8 | 100% |  | 2018-03-12 | 2018-03-20 | 7d |  |  | PPC Engineer | 56h | 56h |
| 27 | 3.1.1.3 | Non Std flanges | 7d | 2018-03-12 A | 2018-03-20 A | 8 | 100% |  | 2018-03-12 | 2018-03-20 | 7d |  |  | PPC Engineer | 56h | 56h |
| 28 | 3.1.1.4 | Standard flanges | 7d | 2018-03-12 A | 2018-03-20 A | 8 | 100% |  | 2018-03-12 | 2018-03-20 | 7d |  |  | PPC Engineer | 56h | 56h |
| 29 | 3.1.1.5 | Tie Rod / Seal rod | 7d | 2018-03-12 A | 2018-03-20 A | 8 | 100% |  | 2018-03-12 | 2018-03-20 | 7d |  |  | PPC Engineer | 56h | 56h |
| 30 | 3.1.1.6 | SRN Nozzle | 7d | 2018-03-12 A | 2018-03-20 A | 8 | 100% |  | 2018-03-12 | 2018-03-20 | 7d |  |  | PPC Engineer | 56h | 56h |
| 31 | 3.1.1.7 | Gaskets | 3d | 2018-05-03 | 2018-05-07 | 8FS+117d |  |  | 2018-05-03 | 2018-05-07 | 3d | 211.38d | 0d | PPC Engineer | 24h |  |
| 32 | 3.1.1.8 | Consumables | 7d | 2017-12-02 A | 2017-12-12 A | 8 | 100% |  | 2017-12-02 | 2017-12-12 | 7d |  |  | PPC Engineer | 56h | 56h |
| 33 | 3.1.1.9 | Fasteners | 5.94d | 2018-04-05 A | 2018-04-11 A | 8FS+97d | 100% |  | 2018-04-05 | 2018-04-11 | 5.94d |  |  | PPC Engineer | 32h | 32h |
| 34 | 3.1.1.10 | CS pipes | 7d | 2018-03-12 A | 2018-03-20 A | 8 | 100% |  | 2018-03-12 | 2018-03-20 | 7d |  |  | PPC Engineer | 56h | 56h |

Notes:
- 5: There is a lag of 128 Days because Post CRM we didn't know about Advance License work. Now Management has taken the decsion to add this activity in all Dangote project.
- 25: SA 516 Gr.60

| ID | WBS | Task | Duration | Start | Finish | Predecessors | Complete | Remaining | Baseline start | Baseline finish | Baseline duration | Total slack | Free slack | Resources | Work | Actual work |
| --- | --- | --- | --- | --- | --- | --- | --- | --- | --- | --- | --- | --- | --- | --- | --- | --- |
| 35 | 3.1.2 | **Material Ordering /A** | 81.77d | 2018-03-20 A | 2018-07-02 |  | 77% | 18.68d | 2018-03-20 | 2018-08-14 | 115.77d | 204.38d |  |  | 434.5h | 322.5h |
| 36 | 3.1.2.1 | CS plates | 3.77d | 2018-03-28 A | 2018-03-31 A | 25FS+10d | 100% |  | 2018-03-28 | 2018-03-31 | 3.77d |  |  | Purchase Engineer | 14h | 14h |
| 37 | 3.1.2.2 | Tubes & Spacer | 7.62d | 2018-03-20 A | 2018-03-29 A | 26 | 100% |  | 2018-03-20 | 2018-03-29 | 7.62d |  |  | Purchase Engineer | 61h | 61h |
| 38 | 3.1.2.3 | Non Std flanges | 7d | 2018-03-20 A | 2018-03-29 A | 27 | 100% |  | 2018-03-20 | 2018-03-29 | 7d |  |  | Purchase Engineer | 56h | 56h |
| 39 | 3.1.2.4 | Standard flanges | 7d | 2018-03-20 A | 2018-03-29 A | 28 | 100% |  | 2018-03-20 | 2018-03-29 | 7d |  |  | Purchase Engineer | 56h | 56h |
| 40 | 3.1.2.5 | Tie Rod / Seal rod | 7d | 2018-03-20 A | 2018-03-29 A | 29 | 100% |  | 2018-03-20 | 2018-03-29 | 7d |  |  | Purchase Engineer | 56h | 56h |
| 41 | 3.1.2.6 | SRN Nozzle | 7d | 2018-03-20 A | 2018-03-29 A | 30 | 100% |  | 2018-03-20 | 2018-03-29 | 7d |  |  | Purchase Engineer | 56h | 56h |
| 42 | 3.1.2.7 | Gaskets | 7d | 2018-06-14 | 2018-06-22 | 31FS+30d |  |  | 2018-06-14 | 2018-06-22 | 7d | 211.38d |  | Purchase Engineer | 56h |  |
| 43 | 3.1.2.8 | Consumables | 7d | 2018-06-22 | 2018-07-02 | 32FS+150d |  |  | 2018-04-17 | 2018-04-25 | 7d | 204.38d |  | Purchase Engineer | 56h |  |
| 44 | 3.1.2.9 | Fasteners | 4.94d | 2018-05-01 A | 2018-05-07 A | 33FS+50d | 100% |  | 2018-08-04 | 2018-08-14 | 7d |  |  | Purchase Engineer |  |  |
| 45 | 3.1.2.10 | CS pipes | 2.94d | 2018-05-01 A | 2018-05-04 A | 34FS+28d | 100% |  | 2018-04-17 | 2018-04-25 | 7d |  |  | Purchase Engineer | 23.5h | 23.5h |
| 46 | 3.2 | **133-EE-1003 A/B - 4220 B** | 113.77d | 2018-03-12 A | 2018-08-02 |  | 9% | 103.62d | 2018-03-12 | 2018-07-07 | 93.77d | 179.38d |  |  | 1120h | 112h |
| 47 | 3.2.1 | **PR Issue/B** | 71.77d | 2018-03-12 A | 2018-06-11 |  | 8% | 65.99d | 2018-03-12 | 2018-05-16 | 51.77d | 184.38d |  |  | 560h | 56h |
| 48 | 3.2.1.1 | CS plates | 23.94d | 2018-05-11 A | 2018-06-11 | 8FS+140d |  | 23.94d | 2018-05-07 | 2018-05-16 | 7d | 184.38d | 0d | PPC Engineer | 56h |  |
| 49 | 3.2.1.2 | Tubes & Spacer | 7d | 2018-03-12 A | 2018-03-20 A | 8FS+140d | 100% |  | 2018-03-12 | 2018-03-20 | 7d |  |  | PPC Engineer | 56h | 56h |
| 50 | 3.2.1.3 | Non Std flanges | 7d | 2018-06-01 | 2018-06-11 | 8FS+140d |  |  | 2018-05-07 | 2018-05-16 | 7d | 184.38d | 0d | PPC Engineer | 56h |  |
| 51 | 3.2.1.4 | Standard flanges | 7d | 2018-06-01 | 2018-06-11 | 8FS+140d |  |  | 2018-05-07 | 2018-05-16 | 7d | 184.38d | 0d | PPC Engineer | 56h |  |
| 52 | 3.2.1.5 | Tie Rod / Seal rod | 7d | 2018-06-01 | 2018-06-11 | 8FS+140d |  |  | 2018-05-07 | 2018-05-16 | 7d | 184.38d | 0d | PPC Engineer | 56h |  |
| 53 | 3.2.1.6 | SRN Nozzle | 7d | 2018-06-01 | 2018-06-11 | 8FS+140d |  |  | 2018-05-07 | 2018-05-16 | 7d | 184.38d | 0d | PPC Engineer | 56h |  |
| 54 | 3.2.1.7 | Gaskets | 7d | 2018-06-01 | 2018-06-11 | 8FS+140d |  |  | 2018-05-07 | 2018-05-16 | 7d | 184.38d | 0d | PPC Engineer | 56h |  |
| 55 | 3.2.1.8 | Consumables | 7d | 2018-06-01 | 2018-06-11 | 8FS+140d |  |  | 2018-05-07 | 2018-05-16 | 7d | 179.38d | 0d | PPC Engineer | 56h |  |
| 56 | 3.2.1.9 | Fasteners | 7d | 2018-06-01 | 2018-06-11 | 8FS+140d |  |  | 2018-05-07 | 2018-05-16 | 7d | 179.38d | 0d | PPC Engineer | 56h |  |
| 57 | 3.2.1.10 | CS pipes | 7d | 2018-06-01 | 2018-06-11 | 8FS+140d |  |  | 2018-05-07 | 2018-05-16 | 7d | 179.38d | 0d | PPC Engineer | 56h |  |
| 58 | 3.2.2 | **Material Ordering /B** | 106.77d | 2018-03-20 A | 2018-08-02 |  | 10% | 96.09d | 2018-03-20 | 2018-07-07 | 86.77d | 179.38d |  |  | 560h | 56h |
| 59 | 3.2.2.1 | CS plates | 7d | 2018-07-18 | 2018-07-26 | 48FS+30d |  |  | 2018-05-16 | 2018-05-24 | 7d | 184.38d |  | Purchase Engineer | 56h |  |
| 60 | 3.2.2.2 | Tubes & Spacer | 7d | 2018-03-20 A | 2018-03-29 A | 49FS+30d | 100% |  | 2018-03-20 | 2018-03-29 | 7d |  |  | Purchase Engineer | 56h | 56h |
| 61 | 3.2.2.3 | Non Std flanges | 7d | 2018-07-18 | 2018-07-26 | 50FS+30d |  |  | 2018-05-16 | 2018-05-24 | 7d | 184.38d |  | Purchase Engineer | 56h |  |
| 62 | 3.2.2.4 | Standard flanges | 7d | 2018-07-18 | 2018-07-26 | 51FS+30d |  |  | 2018-05-16 | 2018-05-24 | 7d | 184.38d |  | Purchase Engineer | 56h |  |
| 63 | 3.2.2.5 | Tie Rod / Seal rod | 7d | 2018-07-18 | 2018-07-26 | 52FS+30d |  |  | 2018-05-16 | 2018-05-24 | 7d | 184.38d |  | Purchase Engineer | 56h |  |
| 64 | 3.2.2.6 | SRN Nozzle | 7d | 2018-07-18 | 2018-07-26 | 53FS+30d |  |  | 2018-05-16 | 2018-05-24 | 7d | 184.38d |  | Purchase Engineer | 56h |  |
| 65 | 3.2.2.7 | Gaskets | 7d | 2018-07-18 | 2018-07-26 | 54FS+30d |  |  | 2018-06-22 | 2018-07-02 | 7d | 184.38d |  | Purchase Engineer | 56h |  |
| 66 | 3.2.2.8 | Consumables | 7d | 2018-07-24 | 2018-08-02 | 55FS+35d |  |  | 2018-06-29 | 2018-07-07 | 7d | 179.38d |  | Purchase Engineer | 56h |  |
| 67 | 3.2.2.9 | Fasteners | 7d | 2018-07-24 | 2018-08-02 | 56FS+35d |  |  | 2018-06-29 | 2018-07-07 | 7d | 179.38d |  | Purchase Engineer | 56h |  |
| 68 | 3.2.2.10 | CS pipes | 7d | 2018-07-24 | 2018-08-02 | 57FS+35d |  |  | 2018-06-29 | 2018-07-07 | 7d | 179.38d |  | Purchase Engineer | 56h |  |

Notes:
- 48: SA 516 Gr.60
- 49: SA 179
- 50: SA 266 Gr4

| ID | WBS | Task | Duration | Start | Finish | Predecessors | Complete | Remaining | Baseline start | Baseline finish | Baseline duration | Total slack | Free slack | Resources | Work | Actual work |
| --- | --- | --- | --- | --- | --- | --- | --- | --- | --- | --- | --- | --- | --- | --- | --- | --- |
| 69 | 3.3 | **133-EE-1004 - 4220 C** | 74d | 2018-06-14 | 2018-09-18 |  |  |  | 2018-05-07 | 2018-07-02 | 44d | 144.38d |  |  | 1120h |  |
| 70 | 3.3.1 | **PR Issue /C** | 7d | 2018-06-14 | 2018-06-22 |  |  |  | 2018-05-07 | 2018-05-16 | 7d | 144.38d |  |  | 560h |  |
| 71 | 3.3.1.1 | CS plates | 7d | 2018-06-14 | 2018-06-22 | 8FS+150d |  |  | 2018-05-07 | 2018-05-16 | 7d | 174.38d | 0d | PPC Engineer | 56h |  |
| 72 | 3.3.1.2 | Tubes & Spacer | 7d | 2018-06-14 | 2018-06-22 | 8FS+150d |  |  | 2018-05-07 | 2018-05-16 | 7d | 174.38d | 0d | PPC Engineer | 56h |  |
| 73 | 3.3.1.3 | Non Std flanges | 7d | 2018-06-14 | 2018-06-22 | 8FS+150d |  |  | 2018-05-07 | 2018-05-16 | 7d | 144.38d | 0d | PPC Engineer | 56h |  |
| 74 | 3.3.1.4 | Standard flanges | 7d | 2018-06-14 | 2018-06-22 | 8FS+150d |  |  | 2018-05-07 | 2018-05-16 | 7d | 144.38d | 0d | PPC Engineer | 56h |  |
| 75 | 3.3.1.5 | Tie Rod / Seal rod | 7d | 2018-06-14 | 2018-06-22 | 8FS+150d |  |  | 2018-05-07 | 2018-05-16 | 7d | 174.38d | 0d | PPC Engineer | 56h |  |
| 76 | 3.3.1.6 | SRN Nozzle | 7d | 2018-06-14 | 2018-06-22 | 8FS+150d |  |  | 2018-05-07 | 2018-05-16 | 7d | 144.38d | 0d | PPC Engineer | 56h |  |
| 77 | 3.3.1.7 | Gaskets | 7d | 2018-06-14 | 2018-06-22 | 8FS+150d |  |  | 2018-05-07 | 2018-05-16 | 7d | 174.38d | 0d | PPC Engineer | 56h |  |
| 78 | 3.3.1.8 | Consumables | 7d | 2018-06-14 | 2018-06-22 | 8FS+150d |  |  | 2018-05-07 | 2018-05-16 | 7d | 174.38d | 0d | PPC Engineer | 56h |  |
| 79 | 3.3.1.9 | Fasteners | 7d | 2018-06-14 | 2018-06-22 | 8FS+150d |  |  | 2018-05-07 | 2018-05-16 | 7d | 174.38d | 0d | PPC Engineer | 56h |  |
| 80 | 3.3.1.10 | CS pipes | 7d | 2018-06-14 | 2018-06-22 | 8FS+150d |  |  | 2018-05-07 | 2018-05-16 | 7d | 174.38d | 0d | PPC Engineer | 56h |  |
| 81 | 3.3.2 | **Material Ordering /C** | 37d | 2018-07-31 | 2018-09-18 |  |  |  | 2018-05-16 | 2018-07-02 | 37d | 144.38d |  |  | 560h |  |
| 82 | 3.3.2.1 | CS plates | 7d | 2018-07-31 | 2018-08-08 | 71FS+30d |  |  | 2018-05-16 | 2018-05-24 | 7d | 174.38d |  | Purchase Engineer | 56h |  |
| 83 | 3.3.2.2 | Tubes & Spacer | 7d | 2018-07-31 | 2018-08-08 | 72FS+30d |  |  | 2018-05-16 | 2018-05-24 | 7d | 174.38d |  | Purchase Engineer | 56h |  |
| 84 | 3.3.2.3 | Non Std flanges | 7d | 2018-09-07 | 2018-09-18 | 73FS+60d |  |  | 2018-05-16 | 2018-05-24 | 7d | 144.38d |  | Purchase Engineer | 56h |  |
| 85 | 3.3.2.4 | Standard flanges | 7d | 2018-09-07 | 2018-09-18 | 74FS+60d |  |  | 2018-05-16 | 2018-05-24 | 7d | 144.38d |  | Purchase Engineer | 56h |  |
| 86 | 3.3.2.5 | Tie Rod / Seal rod | 7d | 2018-07-31 | 2018-08-08 | 75FS+30d |  |  | 2018-05-16 | 2018-05-24 | 7d | 174.38d |  | Purchase Engineer | 56h |  |
| 87 | 3.3.2.6 | SRN Nozzle | 7d | 2018-09-07 | 2018-09-18 | 76FS+60d |  |  | 2018-05-16 | 2018-05-24 | 7d | 144.38d |  | Purchase Engineer | 56h |  |
| 88 | 3.3.2.7 | Gaskets | 7d | 2018-07-31 | 2018-08-08 | 77FS+30d |  |  | 2018-06-22 | 2018-07-02 | 7d | 174.38d |  | Purchase Engineer | 56h |  |
| 89 | 3.3.2.8 | Consumables | 7d | 2018-07-31 | 2018-08-08 | 78FS+30d |  |  | 2018-06-22 | 2018-07-02 | 7d | 174.38d |  | Purchase Engineer | 56h |  |
| 90 | 3.3.2.9 | Fasteners | 7d | 2018-07-31 | 2018-08-08 | 79FS+30d |  |  | 2018-06-22 | 2018-07-02 | 7d | 174.38d |  | Purchase Engineer | 56h |  |
| 91 | 3.3.2.10 | CS pipes | 7d | 2018-07-31 | 2018-08-08 | 80FS+30d |  |  | 2018-06-22 | 2018-07-02 | 7d | 174.38d |  | Purchase Engineer | 56h |  |
| 92 | 3.4 | **133-EE-1006 A/B - 4220 D** | 187d | 2017-12-02 A | 2018-07-31 |  | 88% | 23.12d | 2017-12-02 | 2018-08-14 | 198d | 181.38d |  |  | 1061.17h | 925.17h |
| 93 | 3.4.1 | **PR Issue /D** | 150d | 2017-12-02 A | 2018-06-14 |  | 95% | 6.93d | 2017-12-02 | 2018-05-07 | 120d | 181.38d |  |  | 504h | 480h |
| 94 | 3.4.1.1 | CS plates | 7d | 2017-12-02 A | 2017-12-12 A | 8 | 100% |  | 2017-12-02 | 2017-12-12 | 7d |  |  | PPC Engineer | 56h | 56h |
| 95 | 3.4.1.2 | Tubes & Spacer | 7d | 2018-03-12 A | 2018-03-20 A | 8 | 100% |  | 2018-03-12 | 2018-03-20 | 7d |  |  | PPC Engineer | 56h | 56h |
| 96 | 3.4.1.3 | Non Std flanges | 7d | 2018-03-12 A | 2018-03-20 A | 8 | 100% |  | 2018-03-12 | 2018-03-20 | 7d |  |  | PPC Engineer | 56h | 56h |
| 97 | 3.4.1.4 | Standard flanges | 7d | 2018-03-12 A | 2018-03-20 A | 8 | 100% |  | 2018-03-12 | 2018-03-20 | 7d |  |  | PPC Engineer | 56h | 56h |
| 98 | 3.4.1.5 | Tie Rod / Seal rod | 7d | 2018-03-12 A | 2018-03-20 A | 8 | 100% |  | 2018-03-12 | 2018-03-20 | 7d |  |  | PPC Engineer | 56h | 56h |
| 99 | 3.4.1.6 | SRN Nozzle | 7d | 2018-03-12 A | 2018-03-20 A | 8 | 100% |  | 2018-03-12 | 2018-03-20 | 7d |  |  | PPC Engineer | 56h | 56h |
| 100 | 3.4.1.7 | Gaskets | 3d | 2018-06-11 | 2018-06-14 | 8FS+147d |  |  | 2018-05-03 | 2018-05-07 | 3d | 181.38d | 0d | PPC Engineer | 24h |  |
| 101 | 3.4.1.8 | Consumables | 7d | 2017-12-02 A | 2017-12-12 A | 8 | 100% |  | 2017-12-02 | 2017-12-12 | 7d |  |  | PPC Engineer | 56h | 56h |
| 102 | 3.4.1.9 | Fasteners | 5.94d | 2018-04-05 A | 2018-04-11 A | 8FS+97d | 100% |  | 2018-04-05 | 2018-04-11 | 5.94d |  |  | PPC Engineer | 32h | 32h |
| 103 | 3.4.1.10 | CS pipes | 7d | 2017-12-02 A | 2017-12-12 A | 8 | 100% |  | 2017-12-02 | 2017-12-12 | 7d |  |  | PPC Engineer | 56h | 56h |

Notes:
- 71: SA 516 Gr.60
- 94: SA 516 Gr.60

| ID | WBS | Task | Duration | Start | Finish | Predecessors | Complete | Remaining | Baseline start | Baseline finish | Baseline duration | Total slack | Free slack | Resources | Work | Actual work |
| --- | --- | --- | --- | --- | --- | --- | --- | --- | --- | --- | --- | --- | --- | --- | --- | --- |
| 104 | 3.4.2 | **Material Ordering /D** | 141.94d | 2018-02-01 A | 2018-07-31 |  | 81% | 27.38d | 2018-02-01 | 2018-08-14 | 152.94d | 181.38d |  |  | 557.17h | 445.17h |
| 105 | 3.4.2.1 | CS plates | 19.77d | 2018-03-20 A | 2018-04-12 A | 94FS+10d | 100% |  | 2018-03-20 | 2018-04-12 | 19.77d |  |  | Purchase Engineer | 158.17h | 158.17h |
| 106 | 3.4.2.2 | Tubes & Spacer | 7d | 2018-03-20 A | 2018-03-29 A | 95 | 100% |  | 2018-03-20 | 2018-03-29 | 7d |  |  | Purchase Engineer | 56h | 56h |
| 107 | 3.4.2.3 | Non Std flanges | 7d | 2018-03-20 A | 2018-03-29 A | 96 | 100% |  | 2018-03-20 | 2018-03-29 | 7d |  |  | Purchase Engineer | 56h | 56h |
| 108 | 3.4.2.4 | Standard flanges | 7d | 2018-03-20 A | 2018-03-29 A | 97 | 100% |  | 2018-03-20 | 2018-03-29 | 7d |  |  | Purchase Engineer | 56h | 56h |
| 109 | 3.4.2.5 | Tie Rod / Seal rod | 2.94d | 2018-02-01 A | 2018-02-03 A | 98FS+18d | 100% |  | 2018-02-01 | 2018-02-03 | 2.94d |  |  | Purchase Engineer |  |  |
| 110 | 3.4.2.6 | SRN Nozzle | 7d | 2018-03-20 A | 2018-03-29 A | 99 | 100% |  | 2018-03-20 | 2018-03-29 | 7d |  |  | Purchase Engineer | 56h | 56h |
| 111 | 3.4.2.7 | Gaskets | 7d | 2018-07-21 | 2018-07-31 | 100FS+30d |  |  | 2018-06-14 | 2018-06-22 | 7d | 181.38d |  | Purchase Engineer | 56h |  |
| 112 | 3.4.2.8 | Consumables | 7d | 2018-04-27 | 2018-05-08 | 101FS+107d |  |  | 2018-04-18 | 2018-04-26 | 7d | 247.38d |  | Purchase Engineer | 56h |  |
| 113 | 3.4.2.9 | Fasteners | 4.94d | 2018-05-01 A | 2018-05-07 A | 102FS+50d | 100% |  | 2018-08-04 | 2018-08-14 | 7d |  |  | Purchase Engineer | 39.5h | 39.5h |
| 114 | 3.4.2.10 | CS pipes | 2.94d | 2018-05-01 A | 2018-05-04 A | 103FS+104d | 100% |  | 2018-04-18 | 2018-04-26 | 7d |  |  | Purchase Engineer | 23.5h | 23.5h |
| 115 | 3.5 | **133-EE-1007 A/B - 4220 E** | 157.94d | 2018-02-06 A | 2018-08-27 |  | 90% | 15.95d | 2018-02-06 | 2018-06-22 | 108d | 161.38d |  |  | 1156.5h | 997h |
| 116 | 3.5.1 | **PR Issue /E** | 76.94d | 2018-04-03 A | 2018-07-09 |  | 97% | 2.69d | 2018-04-03 | 2018-05-07 | 27d | 161.38d |  |  | 687.5h | 663.5h |
| 117 | 3.5.1.1 | CS plates | 7d | 2018-04-03 A | 2018-04-10 A | 18FS+10d | 100% |  | 2018-04-03 | 2018-04-10 | 7d |  |  | PPC Engineer | 56h | 56h |
| 118 | 3.5.1.2 | SS Duplex Plate | 7d | 2018-04-03 A | 2018-04-10 A | 18FS+20d | 100% |  | 2018-04-03 | 2018-04-10 | 7d |  |  | PPC Engineer | 56h | 56h |
| 119 | 3.5.1.3 | Baffle | 7d | 2018-04-03 A | 2018-04-10 A | 18FS+20d | 100% |  | 2018-04-03 | 2018-04-10 | 7d |  |  | PPC Engineer | 56h | 56h |
| 120 | 3.5.1.4 | Tubes | 7d | 2018-04-03 A | 2018-04-10 A | 18FS+20d | 100% |  | 2018-04-03 | 2018-04-10 | 7d |  |  | PPC Engineer | 56h | 56h |
| 121 | 3.5.1.5 | Spacer | 7d | 2018-04-03 A | 2018-04-10 A | 18FS+20d | 100% |  | 2018-04-03 | 2018-04-10 | 7d |  |  | PPC Engineer | 56h | 56h |
| 122 | 3.5.1.6 | Non Std flanges | 7d | 2018-04-03 A | 2018-04-10 A | 18FS+20d | 100% |  | 2018-04-03 | 2018-04-10 | 7d |  |  | PPC Engineer | 56h | 56h |
| 123 | 3.5.1.7 | Standard flanges | 7d | 2018-04-03 A | 2018-04-10 A | 18FS+20d | 100% |  | 2018-04-03 | 2018-04-10 | 7d |  |  | PPC Engineer | 56h | 56h |
| 124 | 3.5.1.8 | Tie Rod/Rod | 7d | 2018-04-03 A | 2018-04-10 A | 18FS+20d | 100% |  | 2018-04-03 | 2018-04-10 | 7d |  |  | PPC Engineer | 56h | 56h |
| 125 | 3.5.1.9 | SRN Nozzle | 7d | 2018-04-03 A | 2018-04-10 A | 18FS+20d | 100% |  | 2018-04-03 | 2018-04-10 | 7d |  |  | PPC Engineer | 56h | 56h |
| 126 | 3.5.1.10 | Gaskets | 3d | 2018-07-05 | 2018-07-09 | 18FS+94d |  |  | 2018-05-04 | 2018-05-07 | 3d | 161.38d | 0d | PPC Engineer | 24h |  |
| 127 | 3.5.1.11 | Consumables | 7d | 2018-04-03 A | 2018-04-10 A | 18FS+20d | 100% |  | 2018-04-03 | 2018-04-10 | 7d |  |  | PPC Engineer | 56h | 56h |
| 128 | 3.5.1.12 | Fasteners | 5.94d | 2018-04-05 A | 2018-04-11 A | 18FS+21d | 100% |  | 2018-04-05 | 2018-04-11 | 5.94d |  |  | PPC Engineer | 47.5h | 47.5h |
| 129 | 3.5.1.13 | CS pipes | 7d | 2018-04-03 A | 2018-04-10 A | 18FS+20d | 100% |  | 2018-04-03 | 2018-04-10 | 7d |  |  | PPC Engineer | 56h | 56h |

Notes:
- 117: SA 516 Gr.60
- 118: S32205
- 119: SA 240 SS316L
- 120: SA789 S32205
- 121: SS316L
- 124: SS316L/S32205

| ID | WBS | Task | Duration | Start | Finish | Predecessors | Complete | Remaining | Baseline start | Baseline finish | Baseline duration | Total slack | Free slack | Resources | Work | Actual work |
| --- | --- | --- | --- | --- | --- | --- | --- | --- | --- | --- | --- | --- | --- | --- | --- | --- |
| 130 | 3.5.2 | **Material Ordering /E** | 157.94d | 2018-02-06 A | 2018-08-27 |  | 85% | 24d | 2018-02-06 | 2018-06-22 | 108d | 161.38d |  |  | 469h | 333.5h |
| 131 | 3.5.2.1 | CS plates | 5.94d | 2018-04-06 A | 2018-04-12 A | 117 | 100% |  | 2018-04-06 | 2018-04-12 | 5.94d |  |  | Purchase Engineer | 15.5h | 15.5h |
| 132 | 3.5.2.2 | SS Duplex Plate | 4.94d | 2018-03-20 A | 2018-03-26 A | 118 | 100% |  | 2018-03-20 | 2018-03-26 | 4.94d |  |  | Purchase Engineer |  |  |
| 133 | 3.5.2.3 | Baffle | 0.94d | 2018-02-06 A | 2018-02-06 A | 119SS+4ed | 100% |  | 2018-02-06 | 2018-02-06 | 0.94d |  |  | Purchase Engineer |  |  |
| 134 | 3.5.2.4 | Tubes | 7d | 2018-03-20 A | 2018-03-29 A | 120 | 100% |  | 2018-03-20 | 2018-03-29 | 7d |  |  | Purchase Engineer | 56h | 56h |
| 135 | 3.5.2.5 | Spacer | 7d | 2018-04-11 A | 2018-04-19 A | 121 | 100% |  | 2018-04-11 | 2018-04-19 | 7d |  |  | Purchase Engineer | 56h | 56h |
| 136 | 3.5.2.6 | Non Std flanges | 20.94d | 2018-03-24 A | 2018-04-19 A | 122 | 100% |  | 2018-03-24 | 2018-04-19 | 20.94d |  |  | Purchase Engineer | 55.5h | 55.5h |
| 137 | 3.5.2.7 | Standard flanges | 20.94d | 2018-03-24 A | 2018-04-19 A | 123 | 100% |  | 2018-03-24 | 2018-04-19 | 20.94d |  |  | Purchase Engineer | 55.5h | 55.5h |
| 138 | 3.5.2.8 | Tie Rod/Rod | 0.94d | 2018-03-20 A | 2018-03-20 A | 124 | 100% |  | 2018-04-11 | 2018-04-19 | 7d |  |  | Purchase Engineer |  |  |
| 139 | 3.5.2.9 | SRN Nozzle | 20.94d | 2018-03-24 A | 2018-04-19 A | 125 | 100% |  | 2018-03-24 | 2018-04-19 | 20.94d |  |  | Purchase Engineer | 55.5h | 55.5h |
| 140 | 3.5.2.10 | Gaskets | 7d | 2018-08-17 | 2018-08-27 | 126FS+30d |  |  | 2018-06-15 | 2018-06-22 | 7d | 161.38d |  | Purchase Engineer | 56h |  |
| 141 | 3.5.2.11 | Consumables | 7d | 2018-04-30 | 2018-05-08 | 127FS+14d |  |  | 2018-04-12 | 2018-04-20 | 7d | 247.31d |  | Purchase Engineer | 56h |  |
| 142 | 3.5.2.12 | Fasteners | 4.94d | 2018-05-01 A | 2018-05-07 A | 128FS+35d | 100% |  | 2018-05-28 | 2018-06-05 | 7d |  |  | Purchase Engineer | 39.5h | 39.5h |
| 143 | 3.5.2.13 | CS pipes | 2.94d | 2018-06-05 | 2018-06-07 | 129FS+42d |  |  | 2018-04-12 | 2018-04-20 | 7d | 223.38d |  | Purchase Engineer | 23.5h |  |
| 144 | 3.6 | **133-EE-1008 - 4220 F** | 187d | 2017-12-02 A | 2018-07-31 |  | 87% | 23.47d | 2017-12-02 | 2018-08-14 | 198d | 181.38d |  |  | 1002.67h | 866.67h |
| 145 | 3.6.1 | **PR Issue /F** | 150d | 2017-12-02 A | 2018-06-14 |  | 95% | 7.04d | 2017-12-02 | 2018-05-05 | 119d | 181.38d |  |  | 511.5h | 487.5h |
| 146 | 3.6.1.1 | CS plates | 7d | 2018-03-12 A | 2018-03-20 A | 8 | 100% |  | 2018-03-12 | 2018-03-20 | 7d |  |  | PPC Engineer | 56h | 56h |
| 147 | 3.6.1.2 | Tubes | 7d | 2018-03-12 A | 2018-03-20 A | 8 | 100% |  | 2018-03-12 | 2018-03-20 | 7d |  |  | PPC Engineer | 56h | 56h |
| 148 | 3.6.1.3 | Spacer | 7d | 2018-03-12 A | 2018-03-20 A | 8 | 100% |  | 2018-03-12 | 2018-03-20 | 7d |  |  | PPC Engineer | 56h | 56h |
| 149 | 3.6.1.4 | Non Std flanges | 7d | 2018-03-12 A | 2018-03-20 A | 8 | 100% |  | 2018-03-12 | 2018-03-20 | 7d |  |  | PPC Engineer | 56h | 56h |
| 150 | 3.6.1.5 | Standard flanges | 7d | 2018-03-12 A | 2018-03-20 A | 8 | 100% |  | 2018-03-12 | 2018-03-20 | 7d |  |  | PPC Engineer | 56h | 56h |
| 151 | 3.6.1.6 | Tie Rod | 7d | 2018-03-12 A | 2018-03-20 A | 8 | 100% |  | 2018-03-12 | 2018-03-20 | 7d |  |  | PPC Engineer | 56h | 56h |
| 152 | 3.6.1.7 | Gaskets | 3d | 2018-06-11 | 2018-06-14 | 8FS+147d |  |  | 2018-05-02 | 2018-05-05 | 3d | 181.38d | 0d | PPC Engineer | 24h |  |
| 153 | 3.6.1.8 | Consumables | 7d | 2017-12-02 A | 2017-12-12 A | 8 | 100% |  | 2017-12-02 | 2017-12-12 | 7d |  |  | PPC Engineer | 56h | 56h |
| 154 | 3.6.1.9 | Fasteners | 4.94d | 2018-04-06 A | 2018-04-11 A | 8FS+96d | 100% |  | 2018-04-06 | 2018-04-11 | 4.94d |  |  | PPC Engineer | 39.5h | 39.5h |
| 155 | 3.6.1.10 | CS pipes | 7d | 2017-12-02 A | 2017-12-12 A | 8 | 100% |  | 2017-12-02 | 2017-12-12 | 7d |  |  | PPC Engineer | 56h | 56h |

Notes:
- 132: S32205
- 133: SA 240 SS316L
- 134: SA789 S32205
- 135: SS316L
- 138: SS316L/S32205
- 146: SA 516 Gr.60
- 147: SA179
- 148: IS 1239
- 151: IS 2062

| ID | WBS | Task | Duration | Start | Finish | Predecessors | Complete | Remaining | Baseline start | Baseline finish | Baseline duration | Total slack | Free slack | Resources | Work | Actual work |
| --- | --- | --- | --- | --- | --- | --- | --- | --- | --- | --- | --- | --- | --- | --- | --- | --- |
| 156 | 3.6.2 | **Material Ordering /F** | 111.94d | 2018-03-10 A | 2018-07-31 |  | 80% | 21.91d | 2018-03-10 | 2018-08-14 | 122.94d | 181.38d |  |  | 491.17h | 379.17h |
| 157 | 3.6.2.1 | CS plates | 19.77d | 2018-03-20 A | 2018-04-12 A | 146FS+10d | 100% |  | 2018-03-20 | 2018-04-12 | 19.77d |  |  | Purchase Engineer | 92.17h | 92.17h |
| 158 | 3.6.2.2 | Tubes | 7d | 2018-03-20 A | 2018-03-29 A | 147 | 100% |  | 2018-03-20 | 2018-03-29 | 7d |  |  | Purchase Engineer | 56h | 56h |
| 159 | 3.6.2.3 | Spacer | 7.94d | 2018-03-20 A | 2018-03-29 A | 148FS+20d | 100% |  | 2018-03-20 | 2018-03-29 | 7.94d |  |  | Purchase Engineer | 56h | 56h |
| 160 | 3.6.2.4 | Non Std flanges | 7d | 2018-03-20 A | 2018-03-29 A | 149 | 100% |  | 2018-03-20 | 2018-03-29 | 7d |  |  | Purchase Engineer | 56h | 56h |
| 161 | 3.6.2.5 | Standard flanges | 7d | 2018-03-20 A | 2018-03-29 A | 150 | 100% |  | 2018-03-20 | 2018-03-29 | 7d |  |  | Purchase Engineer | 56h | 56h |
| 162 | 3.6.2.6 | Tie Rod | 0.94d | 2018-03-10 A | 2018-03-12 A | 151FS+18d | 100% |  | 2018-03-10 | 2018-03-12 | 0.94d |  |  | Purchase Engineer |  |  |
| 163 | 3.6.2.7 | Gaskets | 7d | 2018-07-21 | 2018-07-31 | 152FS+30d |  |  | 2018-06-13 | 2018-06-21 | 7d | 181.38d |  | Purchase Engineer | 56h |  |
| 164 | 3.6.2.8 | Consumables | 7d | 2018-05-03 | 2018-05-11 | 153FS+110d |  |  | 2018-04-12 | 2018-04-21 | 7d | 244.38d |  | Purchase Engineer | 56h |  |
| 165 | 3.6.2.9 | Fasteners | 4.94d | 2018-05-01 A | 2018-05-07 A | 154FS+50d | 100% |  | 2018-08-04 | 2018-08-14 | 7d |  |  | Purchase Engineer | 39.5h | 39.5h |
| 166 | 3.6.2.10 | CS pipes | 2.94d | 2018-05-01 A | 2018-05-04 A | 155FS+105d | 100% |  | 2018-04-17 | 2018-04-25 | 7d |  |  | Purchase Engineer | 23.5h | 23.5h |
| 167 | 3.7 | **133-EE-1009 A/B- 4220 G** | 187d | 2017-12-02 A | 2018-07-31 |  | 87% | 23.63d | 2017-12-02 | 2018-08-28 | 208d | 181.38d |  |  | 995.17h | 859.17h |
| 168 | 3.7.1 | **PR Issue /G** | 150d | 2017-12-02 A | 2018-06-14 |  | 95% | 7.04d | 2017-12-02 | 2018-05-07 | 120d | 181.38d |  |  | 504h | 480h |
| 169 | 3.7.1.1 | CS plates | 7d | 2018-03-12 A | 2018-03-20 A | 8 | 100% |  | 2018-03-12 | 2018-03-20 | 7d |  |  | PPC Engineer | 56h | 56h |
| 170 | 3.7.1.2 | Tubes & Spacer | 7d | 2018-03-12 A | 2018-03-20 A | 8 | 100% |  | 2018-03-12 | 2018-03-20 | 7d |  |  | PPC Engineer | 56h | 56h |
| 171 | 3.7.1.3 | Non Std flanges | 7d | 2018-03-12 A | 2018-03-20 A | 8 | 100% |  | 2018-03-12 | 2018-03-20 | 7d |  |  | PPC Engineer | 56h | 56h |
| 172 | 3.7.1.4 | Standard flanges | 7d | 2018-03-12 A | 2018-03-20 A | 8 | 100% |  | 2018-03-12 | 2018-03-20 | 7d |  |  | PPC Engineer | 56h | 56h |
| 173 | 3.7.1.5 | Tie Rod / Seal rod | 7d | 2018-03-12 A | 2018-03-20 A | 8 | 100% |  | 2018-03-12 | 2018-03-20 | 7d |  |  | PPC Engineer | 56h | 56h |
| 174 | 3.7.1.6 | SRN Nozzle | 7d | 2018-03-12 A | 2018-03-20 A | 8 | 100% |  | 2018-03-12 | 2018-03-20 | 7d |  |  | PPC Engineer | 56h | 56h |
| 175 | 3.7.1.7 | Gaskets | 3d | 2018-06-11 | 2018-06-14 | 8FS+147d |  |  | 2018-05-03 | 2018-05-07 | 3d | 181.38d | 0d | PPC Engineer | 24h |  |
| 176 | 3.7.1.8 | Consumables | 7d | 2017-12-02 A | 2017-12-12 A | 8 | 100% |  | 2017-12-02 | 2017-12-12 | 7d |  |  | PPC Engineer | 56h | 56h |
| 177 | 3.7.1.9 | Fasteners | 4.94d | 2018-04-06 A | 2018-04-11 A | 8FS+97d | 100% |  | 2018-04-06 | 2018-04-11 | 4.94d |  |  | PPC Engineer | 32h | 32h |
| 178 | 3.7.1.10 | CS pipes | 7d | 2017-12-02 A | 2017-12-12 A | 8 | 100% |  | 2017-12-02 | 2017-12-12 | 7d |  |  | PPC Engineer | 56h | 56h |
| 179 | 3.7.2 | **Material Ordering /G** | 140.94d | 2018-02-02 A | 2018-07-31 |  | 80% | 27.95d | 2018-02-02 | 2018-08-28 | 161.94d | 181.38d |  |  | 491.17h | 379.17h |
| 180 | 3.7.2.1 | CS plates | 19.77d | 2018-03-20 A | 2018-04-12 A | 169FS+10d | 100% |  | 2018-03-20 | 2018-04-12 | 19.77d |  |  | Purchase Engineer | 92.17h | 92.17h |
| 181 | 3.7.2.2 | Tubes & Spacer | 7d | 2018-03-20 A | 2018-03-29 A | 170 | 100% |  | 2018-03-20 | 2018-03-29 | 7d |  |  | Purchase Engineer | 56h | 56h |
| 182 | 3.7.2.3 | Non Std flanges | 7d | 2018-03-20 A | 2018-03-29 A | 171 | 100% |  | 2018-03-20 | 2018-03-29 | 7d |  |  | Purchase Engineer | 56h | 56h |
| 183 | 3.7.2.4 | Standard flanges | 7d | 2018-03-20 A | 2018-03-29 A | 172 | 100% |  | 2018-03-20 | 2018-03-29 | 7d |  |  | Purchase Engineer | 56h | 56h |
| 184 | 3.7.2.5 | Tie Rod / Seal rod | 0.94d | 2018-02-02 A | 2018-02-02 A | 173FS+18d | 100% |  | 2018-02-02 | 2018-02-02 | 0.94d |  |  | Purchase Engineer |  |  |
| 185 | 3.7.2.6 | SRN Nozzle | 7d | 2018-03-20 A | 2018-03-29 A | 174 | 100% |  | 2018-03-20 | 2018-03-29 | 7d |  |  | Purchase Engineer | 56h | 56h |
| 186 | 3.7.2.7 | Gaskets | 7d | 2018-07-21 | 2018-07-31 | 175FS+30d |  |  | 2018-06-14 | 2018-06-22 | 7d | 181.38d |  | Purchase Engineer | 56h |  |
| 187 | 3.7.2.8 | Consumables | 7d | 2018-05-02 | 2018-05-10 | 176FS+109d |  |  | 2018-04-19 | 2018-04-27 | 7d | 245.38d |  | Purchase Engineer | 56h |  |
| 188 | 3.7.2.9 | Fasteners | 4.94d | 2018-05-01 A | 2018-05-07 A | 177FS+50d | 100% |  | 2018-08-18 | 2018-08-28 | 7d |  |  | Purchase Engineer | 39.5h | 39.5h |
| 189 | 3.7.2.10 | CS pipes | 2.94d | 2018-05-01 A | 2018-05-04 A | 178FS+104d | 100% |  | 2018-04-18 | 2018-04-26 | 7d |  |  | Purchase Engineer | 23.5h | 23.5h |

Notes:
- 158: SA179
- 159: IS 1239
- 162: IS 2062
- 169: SA 516 Gr.60
- 170: SA179
- 173: AS 36

| ID | WBS | Task | Duration | Start | Finish | Predecessors | Complete | Remaining | Baseline start | Baseline finish | Baseline duration | Total slack | Free slack | Resources | Work | Actual work |
| --- | --- | --- | --- | --- | --- | --- | --- | --- | --- | --- | --- | --- | --- | --- | --- | --- |
| 190 | 3.8 | **133-EE-1010 - 4220 H** | 187d | 2017-12-02 A | 2018-07-31 |  | 86% | 26.16d | 2017-12-02 | 2018-08-29 | 209d | 181.38d |  |  | 891.17h | 755.17h |
| 191 | 3.8.1 | **PR Issue /H** | 150d | 2017-12-02 A | 2018-06-14 |  | 95% | 7.77d | 2017-12-02 | 2018-05-07 | 120d | 181.38d |  |  | 456h | 432h |
| 192 | 3.8.1.1 | CS plates | 7d | 2018-03-12 A | 2018-03-20 A | 8 | 100% |  | 2018-03-12 | 2018-03-20 | 7d |  |  | PPC Engineer | 56h | 56h |
| 193 | 3.8.1.2 | Tubes & Spacer | 7d | 2018-03-12 A | 2018-03-20 A | 8 | 100% |  | 2018-03-12 | 2018-03-20 | 7d |  |  | PPC Engineer | 56h | 56h |
| 194 | 3.8.1.3 | Non Std flanges | 7d | 2018-03-12 A | 2018-03-20 A | 8 | 100% |  | 2018-03-12 | 2018-03-20 | 7d |  |  | PPC Engineer | 56h | 56h |
| 195 | 3.8.1.4 | Standard flanges | 7d | 2018-03-12 A | 2018-03-20 A | 8 | 100% |  | 2018-03-12 | 2018-03-20 | 7d |  |  | PPC Engineer | 56h | 56h |
| 196 | 3.8.1.5 | Tie Rod / Seal rod | 7d | 2018-03-12 A | 2018-03-20 A | 8 | 100% |  | 2018-03-12 | 2018-03-20 | 7d |  |  | PPC Engineer | 56h | 56h |
| 197 | 3.8.1.6 | Gaskets | 3d | 2018-06-11 | 2018-06-14 | 8FS+147d |  |  | 2018-05-03 | 2018-05-07 | 3d | 181.38d | 0d | PPC Engineer | 24h |  |
| 198 | 3.8.1.7 | Consumables | 7d | 2017-12-02 A | 2017-12-12 A | 8 | 100% |  | 2017-12-02 | 2017-12-12 | 7d |  |  | PPC Engineer | 56h | 56h |
| 199 | 3.8.1.8 | Fasteners | 5.94d | 2018-04-06 A | 2018-04-12 A | 8FS+97d | 100% |  | 2018-04-06 | 2018-04-12 | 5.94d |  |  | PPC Engineer | 40h | 40h |
| 200 | 3.8.1.9 | CS pipes | 7d | 2017-12-02 A | 2017-12-12 A | 8 | 100% |  | 2017-12-02 | 2017-12-12 | 7d |  |  | PPC Engineer | 56h | 56h |
| 201 | 3.8.2 | **Material Ordering /H** | 140.94d | 2018-02-02 A | 2018-07-31 |  | 78% | 31.03d | 2018-02-02 | 2018-08-29 | 162.94d | 181.38d |  |  | 435.17h | 323.17h |
| 202 | 3.8.2.1 | CS plates | 19.77d | 2018-03-20 A | 2018-04-12 A | 192FS+10d | 100% |  | 2018-03-20 | 2018-04-12 | 19.77d |  |  | Purchase Engineer | 92.17h | 92.17h |
| 203 | 3.8.2.2 | Tubes & Spacer | 7d | 2018-03-20 A | 2018-03-29 A | 193 | 100% |  | 2018-03-20 | 2018-03-29 | 7d |  |  | Purchase Engineer | 56h | 56h |
| 204 | 3.8.2.3 | Non Std flanges | 7d | 2018-03-20 A | 2018-03-29 A | 194 | 100% |  | 2018-03-20 | 2018-03-29 | 7d |  |  | Purchase Engineer | 56h | 56h |
| 205 | 3.8.2.4 | Standard flanges | 7d | 2018-03-20 A | 2018-03-29 A | 195 | 100% |  | 2018-03-20 | 2018-03-29 | 7d |  |  | Purchase Engineer | 56h | 56h |
| 206 | 3.8.2.5 | Tie Rod / Seal rod | 0.94d | 2018-02-02 A | 2018-02-02 A | 196FS+18d | 100% |  | 2018-02-02 | 2018-02-02 | 0.94d |  |  | Purchase Engineer |  |  |
| 207 | 3.8.2.6 | Gaskets | 7d | 2018-07-21 | 2018-07-31 | 197FS+30d |  |  | 2018-06-14 | 2018-06-22 | 7d | 181.38d |  | Purchase Engineer | 56h |  |
| 208 | 3.8.2.7 | Consumables | 7d | 2018-05-02 | 2018-05-10 | 198FS+109d |  |  | 2018-04-24 | 2018-05-04 | 7d | 245.38d |  | Purchase Engineer | 56h |  |
| 209 | 3.8.2.8 | Fasteners | 4.94d | 2018-05-01 A | 2018-05-07 A | 199FS+50d | 100% |  | 2018-08-20 | 2018-08-29 | 7d |  |  | Purchase Engineer | 39.5h | 39.5h |
| 210 | 3.8.2.9 | CS pipes | 2.94d | 2018-05-01 A | 2018-05-04 A | 200FS+104d | 100% |  | 2018-04-24 | 2018-05-04 | 7d |  |  | Purchase Engineer | 23.5h | 23.5h |
| 211 | 3.9 | **133-EE-1011 A/B/C/D - 4220 I** | 80.94d | 2018-03-08 A | 2018-06-19 |  | 90% | 8.24d | 2018-03-08 | 2018-06-22 | 83.94d | 214.38d |  |  | 1670h | 1478h |
| 212 | 3.9.1 | **PR Issue /I** | 76.94d | 2018-03-08 A | 2018-06-14 |  | 97% | 2.2d | 2018-03-08 | 2018-05-07 | 46.94d | 218.38d |  |  | 624h | 600h |
| 213 | 3.9.1.1 | SA 387 GR11 CL2 plates | 7d | 2018-03-12 A | 2018-03-20 A | 18 | 100% |  | 2018-03-12 | 2018-03-20 | 7d |  |  | PPC Engineer | 56h | 56h |
| 214 | 3.9.1.2 | SS 321 Plate | 7d | 2018-03-12 A | 2018-03-20 A | 18 | 100% |  | 2018-03-12 | 2018-03-20 | 7d |  |  | PPC Engineer | 56h | 56h |
| 215 | 3.9.1.3 | SA 240 GR 321 Plate | 7d | 2018-03-12 A | 2018-03-20 A | 18 | 100% |  | 2018-03-12 | 2018-03-20 | 7d |  |  | PPC Engineer | 56h | 56h |
| 216 | 3.9.1.4 | Tubes | 7d | 2018-03-12 A | 2018-03-20 A | 18 | 100% |  | 2018-03-12 | 2018-03-20 | 7d |  |  | PPC Engineer | 56h | 56h |
| 217 | 3.9.1.5 | Spacer | 7d | 2018-03-12 A | 2018-03-20 A | 18 | 100% |  | 2018-03-12 | 2018-03-20 | 7d |  |  | PPC Engineer | 56h | 56h |
| 218 | 3.9.1.6 | Non Std flanges | 7d | 2018-03-12 A | 2018-03-20 A | 18 | 100% |  | 2018-03-12 | 2018-03-20 | 7d |  |  | PPC Engineer | 56h | 56h |
| 219 | 3.9.1.7 | Standard flanges | 7d | 2018-03-12 A | 2018-03-20 A | 18 | 100% |  | 2018-03-12 | 2018-03-20 | 7d |  |  | PPC Engineer | 56h | 56h |
| 220 | 3.9.1.8 | Tie Rod / Seal rod | 7d | 2018-03-12 A | 2018-03-20 A | 18 | 100% |  | 2018-03-12 | 2018-03-20 | 7d |  |  | PPC Engineer | 56h | 56h |
| 221 | 3.9.1.9 | SRN Nozzle | 7d | 2018-03-12 A | 2018-03-20 A | 18 | 100% |  | 2018-03-12 | 2018-03-20 | 7d |  |  | PPC Engineer | 56h | 56h |
| 222 | 3.9.1.10 | Gaskets | 3d | 2018-06-11 | 2018-06-14 | 8FS+147d |  |  | 2018-05-03 | 2018-05-07 | 3d | 218.38d |  | PPC Engineer | 24h |  |
| 223 | 3.9.1.11 | Consumables | 7d | 2018-03-08 A | 2018-03-16 A | 18 | 100% |  | 2018-03-08 | 2018-03-16 | 7d |  |  | PPC Engineer | 56h | 56h |
| 224 | 3.9.1.12 | Fasteners | 5.94d | 2018-04-06 A | 2018-04-12 A | 8FS+97d | 100% |  | 2018-04-06 | 2018-04-12 | 5.94d |  |  | PPC Engineer | 40h | 40h |
| 225 | 3.9.1.13 | CS pipes | 25.94d | 2018-03-19 A | 2018-04-19 A | 18FS+37d | 100% |  | 2018-04-24 | 2018-05-03 | 7d |  |  | PPC Engineer |  |  |

Notes:
- 192: SA 516 Gr.60
- 215: SA 240 GR 321
- 216: SA 213 TP 321
- 217: SS 321
- 220: SS 321

| ID | WBS | Task | Duration | Start | Finish | Predecessors | Complete | Remaining | Baseline start | Baseline finish | Baseline duration | Total slack | Resources | Work | Actual work |
| --- | --- | --- | --- | --- | --- | --- | --- | --- | --- | --- | --- | --- | --- | --- | --- |
| 226 | 3.9.2 | **Material Ordering /I** | 71.77d | 2018-03-20 A | 2018-06-19 |  | 84% | 11.53d | 2018-03-20 | 2018-06-22 | 74.77d | 214.38d |  | 1046h | 878h |
| 227 | 3.9.2.1 | SA 387 GR11 CL2 plates | 7d | 2018-04-17 A | 2018-04-25 A | 213FS+22d | 100% |  | 2018-04-17 | 2018-04-25 | 7d |  | Purchase Engineer | 56h | 56h |
| 228 | 3.9.2.2 | SS 321 PLATE | 7d | 2018-03-20 A | 2018-03-29 A | 214 | 100% |  | 2018-03-20 | 2018-03-29 | 7d |  | Purchase Engineer | 56h | 56h |
| 229 | 3.9.2.3 | SA 240 GR 321 Plate | 7d | 2018-03-20 A | 2018-03-29 A | 215 | 100% |  | 2018-03-20 | 2018-03-29 | 7d |  | Purchase Engineer | 56h | 56h |
| 230 | 3.9.2.4 | Tubes | 7d | 2018-03-20 A | 2018-03-29 A | 216 | 100% |  | 2018-03-20 | 2018-03-29 | 7d |  | Purchase Engineer | 56h | 56h |
| 231 | 3.9.2.5 | Spacer | 7d | 2018-04-26 A | 2018-05-07 A | 217FS+30d | 100% |  | 2018-04-26 | 2018-05-07 | 7d |  | Purchase Engineer | 56h | 56h |
| 232 | 3.9.2.6 | Non Std flanges | 20.94d | 2018-03-24 A | 2018-04-19 A | 218FS+16d | 100% |  | 2018-03-24 | 2018-04-19 | 20.94d |  | Purchase Engineer | 167.5h | 167.5h |
| 233 | 3.9.2.7 | Standard flanges | 20.94d | 2018-03-24 A | 2018-04-19 A | 219FS+16d | 100% |  | 2018-03-24 | 2018-04-19 | 20.94d |  | Purchase Engineer | 167.5h | 167.5h |
| 234 | 3.9.2.8 | Tie Rod / Seal rod | 7d | 2018-04-26 A | 2018-05-07 A | 220FS+30d | 100% |  | 2018-04-26 | 2018-05-07 | 7d |  | Purchase Engineer | 56h | 56h |
| 235 | 3.9.2.9 | SRN Nozzle | 20.94d | 2018-03-24 A | 2018-04-19 A | 221FS+16d | 100% |  | 2018-03-24 | 2018-04-19 | 20.94d |  | Purchase Engineer | 167.5h | 167.5h |
| 236 | 3.9.2.10 | Gaskets | 7d | 2018-06-11 | 2018-06-19 | 8FS+147d |  |  | 2018-06-14 | 2018-06-22 | 7d | 214.38d | Purchase Engineer | 56h |  |
| 237 | 3.9.2.11 | Consumables | 7d | 2018-04-30 | 2018-05-08 | 223FS+34d |  |  | 2018-04-23 | 2018-05-02 | 7d | 247.31d | Purchase Engineer | 56h |  |
| 238 | 3.9.2.12 | Fasteners | 4.94d | 2018-05-01 A | 2018-05-07 A | 224FS+30d | 100% |  | 2018-05-22 | 2018-05-31 | 7d |  | Purchase Engineer | 39.5h | 39.5h |
| 239 | 3.9.2.13 | CS pipes | 7d | 2018-05-28 | 2018-06-05 | 225FS+29d |  |  | 2018-05-31 | 2018-06-07 | 7d | 225.38d | Purchase Engineer | 56h |  |
| 240 | 3.10 | **133-EE-1012 A/B/C/D - 4220 J** | 154d | 2017-12-02 A | 2018-06-19 |  | 88% | 19.14d | 2017-12-02 | 2018-08-16 | 199d | 214.38d |  | 1079h | 943h |
| 241 | 3.10.1 | **PR Issue /J** | 150d | 2017-12-02 A | 2018-06-14 |  | 95% | 6.83d | 2017-12-02 | 2018-05-11 | 124d | 218.38d |  | 512h | 488h |
| 242 | 3.10.1.1 | Plates | 7d | 2018-03-12 A | 2018-03-20 A | 8 | 100% |  | 2018-03-12 | 2018-03-20 | 7d |  | PPC Engineer | 56h | 56h |
| 243 | 3.10.1.2 | Tubes | 7d | 2018-03-12 A | 2018-03-20 A | 8 | 100% |  | 2018-03-12 | 2018-03-20 | 7d |  | PPC Engineer | 56h | 56h |
| 244 | 3.10.1.3 | Spacer | 7d | 2018-03-12 A | 2018-03-20 A | 8 | 100% |  | 2018-03-12 | 2018-03-20 | 7d |  | PPC Engineer | 56h | 56h |
| 245 | 3.10.1.4 | Non Std flanges | 7d | 2018-03-12 A | 2018-03-20 A | 8 | 100% |  | 2018-03-12 | 2018-03-20 | 7d |  | PPC Engineer | 56h | 56h |
| 246 | 3.10.1.5 | Standard flanges | 7d | 2018-03-12 A | 2018-03-20 A | 8 | 100% |  | 2018-03-12 | 2018-03-20 | 7d |  | PPC Engineer | 56h | 56h |
| 247 | 3.10.1.6 | Tie Rod | 7d | 2018-03-12 A | 2018-03-20 A | 8 | 100% |  | 2018-03-12 | 2018-03-20 | 7d |  | PPC Engineer | 56h | 56h |
| 248 | 3.10.1.7 | SRN Nozzle | 7d | 2018-03-12 A | 2018-03-20 A | 8 | 100% |  | 2018-03-12 | 2018-03-20 | 7d |  | PPC Engineer | 56h | 56h |
| 249 | 3.10.1.8 | Gaskets | 3d | 2018-06-11 | 2018-06-14 | 8FS+147d |  |  | 2018-05-03 | 2018-05-07 | 3d | 218.38d | PPC Engineer | 24h |  |
| 250 | 3.10.1.9 | Consumables | 7d | 2017-12-02 A | 2017-12-12 A | 8 | 100% |  | 2017-12-02 | 2017-12-12 | 7d |  | PPC Engineer | 56h | 56h |
| 251 | 3.10.1.10 | Fasteners | 5.94d | 2018-04-06 A | 2018-04-12 A | 8FS+97d | 100% |  | 2018-04-06 | 2018-04-12 | 5.94d |  | PPC Engineer | 40h | 40h |
| 252 | 3.10.1.11 | CS pipes | 0.94d | 2018-02-27 A | 2018-02-27 A | 8FS+117d | 100% |  | 2018-05-03 | 2018-05-11 | 7d |  | PPC Engineer |  |  |

Notes:
- 229: SA 240 GR 321
- 230: SA 213 TP 321
- 231: SS 321
- 234: SS 321
- 242: SA 387 GR 11 CL 2
- 243: SA 213 T11
- 244: 1.25 CR-0.5 Mo
- 247: 1.25 CR-0.5 Mo

| ID | WBS | Task | Duration | Start | Finish | Predecessors | Complete | Remaining | Baseline start | Baseline finish | Baseline duration | Total slack | Free slack | Resources | Work | Actual work |
| --- | --- | --- | --- | --- | --- | --- | --- | --- | --- | --- | --- | --- | --- | --- | --- | --- |
| 253 | 3.10.2 | **Material Ordering /J** | 71.77d | 2018-03-20 A | 2018-06-19 |  | 80% | 14.18d | 2018-03-20 | 2018-08-16 | 116.77d | 214.38d |  |  | 567h | 455h |
| 254 | 3.10.2.1 | Plates | 7d | 2018-03-20 A | 2018-03-29 A | 242 | 100% |  | 2018-03-20 | 2018-03-29 | 7d |  |  | Purchase Engineer | 56h | 56h |
| 255 | 3.10.2.2 | Tubes | 7d | 2018-03-20 A | 2018-03-29 A | 243 | 100% |  | 2018-03-20 | 2018-03-29 | 7d |  |  | Purchase Engineer | 56h | 56h |
| 256 | 3.10.2.3 | Spacer | 7d | 2018-03-20 A | 2018-03-29 A | 244 | 100% |  | 2018-03-20 | 2018-03-29 | 7d |  |  | Purchase Engineer | 56h | 56h |
| 257 | 3.10.2.4 | Non Std flanges | 7d | 2018-03-20 A | 2018-03-29 A | 245 | 100% |  | 2018-03-20 | 2018-03-29 | 7d |  |  | Purchase Engineer | 56h | 56h |
| 258 | 3.10.2.5 | Standard flanges | 7d | 2018-03-20 A | 2018-03-29 A | 246 | 100% |  | 2018-03-20 | 2018-03-29 | 7d |  |  | Purchase Engineer | 56h | 56h |
| 259 | 3.10.2.6 | Tie Rod | 7d | 2018-04-11 A | 2018-04-20 A | 247FS+18d | 100% |  | 2018-04-11 | 2018-04-20 | 7d |  |  | Purchase Engineer | 56h | 56h |
| 260 | 3.10.2.7 | SRN Nozzle | 7d | 2018-03-20 A | 2018-03-29 A | 248 | 100% |  | 2018-03-20 | 2018-03-29 | 7d |  |  | Purchase Engineer | 56h | 56h |
| 261 | 3.10.2.8 | Gaskets | 7d | 2018-06-11 | 2018-06-19 | 8FS+147d |  |  | 2018-06-14 | 2018-06-22 | 7d | 214.38d |  | Purchase Engineer | 56h |  |
| 262 | 3.10.2.9 | Consumables | 7d | 2018-05-08 | 2018-05-17 | 250FS+114d |  |  | 2018-05-08 | 2018-05-17 | 7d | 240.38d |  | Purchase Engineer | 56h |  |
| 263 | 3.10.2.10 | Fasteners | 4.94d | 2018-05-01 A | 2018-05-07 A | 251FS+50d | 100% |  | 2018-08-06 | 2018-08-16 | 7d |  |  | Purchase Engineer | 39.5h | 39.5h |
| 264 | 3.10.2.11 | CS pipes | 2.94d | 2018-05-01 A | 2018-05-04 A | 252FS+44d | 100% |  | 2018-06-25 | 2018-07-03 | 7d |  |  | Purchase Engineer | 23.5h | 23.5h |
| 265 | 3.11 | **133-EE-1013 A/B - 4220 K** | 113.94d | 2018-03-08 A | 2018-07-31 |  | 88% | 13.78d | 2018-03-08 | 2018-06-22 | 83.94d | 181.38d |  |  | 1572.17h | 1380.17h |
| 266 | 3.11.1 | **PR Issue /K** | 76.94d | 2018-03-08 A | 2018-06-14 |  | 96% | 2.96d | 2018-03-08 | 2018-05-07 | 46.94d | 181.38d |  |  | 616h | 592h |
| 267 | 3.11.1.1 | CS Plates | 7d | 2018-03-12 A | 2018-03-20 A | 18 | 100% |  | 2018-03-12 | 2018-03-20 | 7d |  |  | PPC Engineer | 56h | 56h |
| 268 | 3.11.1.2 | Inconel Plate | 7d | 2018-03-12 A | 2018-03-20 A | 18 | 100% |  | 2018-03-12 | 2018-03-20 | 7d |  |  | PPC Engineer | 56h | 56h |
| 269 | 3.11.1.3 | Tubes | 7d | 2018-03-12 A | 2018-03-20 A | 18 | 100% |  | 2018-03-12 | 2018-03-20 | 7d |  |  | PPC Engineer | 56h | 56h |
| 270 | 3.11.1.4 | Non Std flanges | 7d | 2018-03-12 A | 2018-03-20 A | 18 | 100% |  | 2018-03-12 | 2018-03-20 | 7d |  |  | PPC Engineer | 56h | 56h |
| 271 | 3.11.1.5 | Standard flanges | 7d | 2018-03-12 A | 2018-03-20 A | 18 | 100% |  | 2018-03-12 | 2018-03-20 | 7d |  |  | PPC Engineer | 56h | 56h |
| 272 | 3.11.1.6 | Tie Rod / Seal rod | 7d | 2018-03-12 A | 2018-03-20 A | 18 | 100% |  | 2018-03-12 | 2018-03-20 | 7d |  |  | PPC Engineer | 56h | 56h |
| 273 | 3.11.1.7 | SRN Nozzle | 7d | 2018-03-12 A | 2018-03-20 A | 18 | 100% |  | 2018-03-12 | 2018-03-20 | 7d |  |  | PPC Engineer | 56h | 56h |
| 274 | 3.11.1.8 | Gaskets | 3d | 2018-06-11 | 2018-06-14 | 8FS+147d |  |  | 2018-05-03 | 2018-05-07 | 3d | 181.38d | 0d | PPC Engineer | 24h |  |
| 275 | 3.11.1.9 | Consumables | 7d | 2018-03-08 A | 2018-03-16 A | 18 | 100% |  | 2018-03-08 | 2018-03-16 | 7d |  |  | PPC Engineer | 56h | 56h |
| 276 | 3.11.1.10 | Fasteners | 4.94d | 2018-04-06 A | 2018-04-11 A | 8FS+97d | 100% |  | 2018-04-06 | 2018-04-11 | 4.94d |  |  | PPC Engineer | 32h | 32h |
| 277 | 3.11.1.11 | CS pipes | 7d | 2018-03-08 A | 2018-03-16 A | 18 | 100% |  | 2018-03-08 | 2018-03-16 | 7d |  |  | PPC Engineer | 56h | 56h |
| 278 | 3.11.1.12 | Inconel Spacer pipes | 7d | 2018-03-08 A | 2018-03-16 A | 18 | 100% |  | 2018-03-08 | 2018-03-16 | 7d |  |  | PPC Engineer | 56h | 56h |

Notes:
- 254: SA 387 GR 11 CL 2
- 255: SA 213 T11
- 256: 1.25 CR-0.5 Mo
- 259: 1.25 CR-0.5 Mo
- 267: SA 516 Gr.60
- 268: SB 424 NO8825
- 272: Incoloy 825

| ID | WBS | Task | Duration | Start | Finish | Predecessors | Complete | Remaining | Baseline start | Baseline finish | Baseline duration | Total slack | Free slack | Resources | Work | Actual work |
| --- | --- | --- | --- | --- | --- | --- | --- | --- | --- | --- | --- | --- | --- | --- | --- | --- |
| 279 | 3.11.2 | **Material Ordering /K** | 106.94d | 2018-03-17 A | 2018-07-31 |  | 83% | 18.64d | 2018-03-17 | 2018-06-22 | 76.94d | 181.38d |  |  | 956.17h | 788.17h |
| 280 | 3.11.2.1 | CS Plates | 9.77d | 2018-04-02 A | 2018-04-12 A | 267FS+10d | 100% |  | 2018-04-02 | 2018-04-12 | 9.77d |  |  | Purchase Engineer | 78.17h | 78.17h |
| 281 | 3.11.2.2 | Inconel Plate | 7d | 2018-03-20 A | 2018-03-29 A | 268 | 100% |  | 2018-03-20 | 2018-03-29 | 7d |  |  | Purchase Engineer | 56h | 56h |
| 282 | 3.11.2.3 | Tubes | 7d | 2018-03-20 A | 2018-03-29 A | 269 | 100% |  | 2018-03-20 | 2018-03-29 | 7d |  |  | Purchase Engineer | 56h | 56h |
| 283 | 3.11.2.4 | Non Std flanges | 20.94d | 2018-03-24 A | 2018-04-19 A | 270FS+16d | 100% |  | 2018-03-24 | 2018-04-19 | 20.94d |  |  | Purchase Engineer | 167.5h | 167.5h |
| 284 | 3.11.2.5 | Standard flanges | 20.94d | 2018-03-24 A | 2018-04-19 A | 271FS+16d | 100% |  | 2018-03-24 | 2018-04-19 | 20.94d |  |  | Purchase Engineer | 167.5h | 167.5h |
| 285 | 3.11.2.6 | Tie Rod / Seal rod | 0.94d | 2018-04-02 A | 2018-04-02 A | 272FS+38d | 100% |  | 2018-05-08 | 2018-06-04 | 20.94d |  |  | Purchase Engineer |  |  |
| 286 | 3.11.2.7 | SRN Nozzle | 20.94d | 2018-03-24 A | 2018-04-19 A | 273FS+16d | 100% |  | 2018-03-24 | 2018-04-19 | 20.94d |  |  | Purchase Engineer | 167.5h | 167.5h |
| 287 | 3.11.2.8 | Gaskets | 7d | 2018-07-21 | 2018-07-31 | 274FS+30d |  |  | 2018-06-14 | 2018-06-22 | 7d | 181.38d |  | Purchase Engineer | 56h |  |
| 288 | 3.11.2.9 | Consumables | 7d | 2018-05-03 | 2018-05-10 | 275FS+36d |  |  | 2018-04-23 | 2018-05-02 | 7d | 245.31d |  | Purchase Engineer | 56h |  |
| 289 | 3.11.2.10 | Fasteners | 4.94d | 2018-05-01 A | 2018-05-07 A | 276FS+30d | 100% |  | 2018-05-21 | 2018-05-30 | 7d |  |  | Purchase Engineer | 39.5h | 39.5h |
| 290 | 3.11.2.11 | CS pipes | 7d | 2018-05-28 | 2018-06-04 | 277FS+55d |  |  | 2018-04-23 | 2018-05-02 | 7d | 226.31d |  | Purchase Engineer | 56h |  |
| 291 | 3.11.2.12 | Inconel Spacer pipes | 7d | 2018-03-17 A | 2018-03-26 A | 278 | 100% |  | 2018-03-17 | 2018-03-26 | 7d |  |  | Purchase Engineer | 56h | 56h |
| 292 | 3.12 | **133-EE-1014 - 4220 L** | 187d | 2017-12-02 A | 2018-07-31 |  | 93% | 13.58d | 2017-12-02 | 2018-08-28 | 208d | 181.38d |  |  | 1026.58h | 946.58h |
| 293 | 3.12.1 | **PR Issue /L** | 150d | 2017-12-02 A | 2018-06-14 |  | 95% | 7.04d | 2017-12-02 | 2018-05-07 | 120d | 181.38d |  |  | 504h | 480h |
| 294 | 3.12.1.1 | CS plates | 7d | 2018-03-12 A | 2018-03-20 A | 8 | 100% |  | 2018-03-12 | 2018-03-20 | 7d |  |  | PPC Engineer | 56h | 56h |
| 295 | 3.12.1.2 | Shell pipe | 7d | 2018-03-12 A | 2018-03-20 A | 8 | 100% |  | 2018-03-12 | 2018-03-20 | 7d |  |  | PPC Engineer | 56h | 56h |
| 296 | 3.12.1.3 | U Tubes & Spacer | 7d | 2018-03-12 A | 2018-03-20 A | 8 | 100% |  | 2018-03-12 | 2018-03-20 | 7d |  |  | PPC Engineer | 56h | 56h |
| 297 | 3.12.1.4 | Non Std flanges | 7d | 2018-03-12 A | 2018-03-20 A | 8 | 100% |  | 2018-03-12 | 2018-03-20 | 7d |  |  | PPC Engineer | 56h | 56h |
| 298 | 3.12.1.5 | Standard flanges | 7d | 2018-03-12 A | 2018-03-20 A | 8 | 100% |  | 2018-03-12 | 2018-03-20 | 7d |  |  | PPC Engineer | 56h | 56h |
| 299 | 3.12.1.6 | Tie Rod / Seal rod | 7d | 2018-03-12 A | 2018-03-20 A | 8 | 100% |  | 2018-03-12 | 2018-03-20 | 7d |  |  | PPC Engineer | 56h | 56h |
| 300 | 3.12.1.7 | Gaskets | 3d | 2018-06-11 | 2018-06-14 | 8FS+147d |  |  | 2018-05-03 | 2018-05-07 | 3d | 181.38d | 0d | PPC Engineer | 24h |  |
| 301 | 3.12.1.8 | Consumables | 7d | 2017-12-02 A | 2017-12-12 A | 8 | 100% |  | 2017-12-02 | 2017-12-12 | 7d |  |  | PPC Engineer | 56h | 56h |
| 302 | 3.12.1.9 | Fasteners | 4.94d | 2018-04-06 A | 2018-04-11 A | 8FS+97d | 100% |  | 2018-04-06 | 2018-04-11 | 4.94d |  |  | PPC Engineer | 32h | 32h |
| 303 | 3.12.1.10 | CS pipes | 7d | 2017-12-02 A | 2017-12-12 A | 8 | 100% |  | 2017-12-02 | 2017-12-12 | 7d |  |  | PPC Engineer | 56h | 56h |

Notes:
- 280: SA 516 Gr.60
- 281: SB 424 NO8825
- 285: Purchase Eng
- 294: SA 516 Gr.60
- 295: SA 106 GR B
- 296: SA 179

| ID | WBS | Task | Duration | Start | Finish | Predecessors | Complete | Remaining | Baseline start | Baseline finish | Baseline duration | Total slack | Free slack | Resources | Work | Actual work |
| --- | --- | --- | --- | --- | --- | --- | --- | --- | --- | --- | --- | --- | --- | --- | --- | --- |
| 304 | 3.12.2 | **Material Ordering /L** | 104.77d | 2018-03-20 A | 2018-07-31 |  | 91% | 9.95d | 2018-03-20 | 2018-08-28 | 125.77d | 181.38d |  |  | 522.58h | 466.58h |
| 305 | 3.12.2.1 | CS plates | 19.77d | 2018-03-20 A | 2018-04-12 A | 294FS+10d | 100% |  | 2018-03-20 | 2018-04-12 | 19.77d |  |  | Purchase Engineer | 92.17h | 92.17h |
| 306 | 3.12.2.2 | Shell pipe | 3.94d | 2018-04-30 A | 2018-05-04 A | 295FS+32d | 100% |  | 2018-04-30 | 2018-05-09 | 7d |  |  | Purchase Engineer | 30.17h | 30.17h |
| 307 | 3.12.2.3 | U Tubes & Spacer | 7.16d | 2018-03-20 A | 2018-03-29 A | 296 | 100% |  | 2018-03-20 | 2018-03-29 | 7.16d |  |  | Purchase Engineer | 57.25h | 57.25h |
| 308 | 3.12.2.4 | Non Std flanges | 7d | 2018-03-20 A | 2018-03-29 A | 297 | 100% |  | 2018-03-20 | 2018-03-29 | 7d |  |  | Purchase Engineer | 56h | 56h |
| 309 | 3.12.2.5 | Standard flanges | 7d | 2018-03-20 A | 2018-03-29 A | 298 | 100% |  | 2018-03-20 | 2018-03-29 | 7d |  |  | Purchase Engineer | 56h | 56h |
| 310 | 3.12.2.6 | Tie Rod / Seal rod | 7d | 2018-03-20 A | 2018-03-29 A | 299 | 100% |  | 2018-03-20 | 2018-03-29 | 7d |  |  | Purchase Engineer | 56h | 56h |
| 311 | 3.12.2.7 | Gaskets | 7d | 2018-07-21 | 2018-07-31 | 300FS+30d |  |  | 2018-06-14 | 2018-06-22 | 7d | 181.38d |  | Purchase Engineer | 56h |  |
| 312 | 3.12.2.8 | Consumables | 7d | 2018-04-11 A | 2018-04-20 A | 301FS+94d | 100% |  | 2018-04-11 | 2018-04-20 | 7d |  |  | Purchase Engineer | 56h | 56h |
| 313 | 3.12.2.9 | Fasteners | 4.94d | 2018-05-01 A | 2018-05-07 A | 302FS+50d | 100% |  | 2018-08-18 | 2018-08-28 | 7d |  |  | Purchase Engineer | 39.5h | 39.5h |
| 314 | 3.12.2.10 | CS pipes | 2.94d | 2018-05-01 A | 2018-05-04 A | 303FS+104d | 100% |  | 2018-04-24 | 2018-05-04 | 7d |  |  | Purchase Engineer | 23.5h | 23.5h |
| 315 | 3.13 | **133-EE-1015 - 4220 M** | 117.94d | 2018-03-08 A | 2018-08-04 |  | 58% | 49.49d | 2018-03-08 | 2018-06-30 | 90d | 177.38d |  |  | 1035.5h | 587.5h |
| 316 | 3.13.1 | **PR Issue /M** | 80.94d | 2018-03-08 A | 2018-06-19 |  | 90% | 8.22d | 2018-03-08 | 2018-05-15 | 53d | 177.38d |  |  | 519.5h | 463.5h |
| 317 | 3.13.1.1 | CS plates | 7d | 2018-03-12 A | 2018-03-20 A | 8, 18 | 100% |  | 2018-03-12 | 2018-03-20 | 7d |  |  | PPC Engineer | 56h | 56h |
| 318 | 3.13.1.2 | Tubes & Spacer | 7d | 2018-03-12 A | 2018-03-20 A | 8, 18 | 100% |  | 2018-03-12 | 2018-03-20 | 7d |  |  | PPC Engineer | 56h | 56h |
| 319 | 3.13.1.3 | Non Std flanges | 7d | 2018-03-12 A | 2018-03-20 A | 8, 18 | 100% |  | 2018-03-12 | 2018-03-20 | 7d |  |  | PPC Engineer | 56h | 56h |
| 320 | 3.13.1.4 | Standard flanges | 7d | 2018-03-12 A | 2018-03-20 A | 8, 18 | 100% |  | 2018-03-12 | 2018-03-20 | 7d |  |  | PPC Engineer | 56h | 56h |
| 321 | 3.13.1.5 | Tie Rod / Seal rod | 7d | 2018-03-12 A | 2018-03-20 A | 8, 18 | 100% |  | 2018-03-12 | 2018-03-20 | 7d |  |  | PPC Engineer | 56h | 56h |
| 322 | 3.13.1.6 | SRN Nozzle | 7d | 2018-03-12 A | 2018-03-20 A | 8, 18 | 100% |  | 2018-03-12 | 2018-03-20 | 7d |  |  | PPC Engineer | 56h | 56h |
| 323 | 3.13.1.7 | Gaskets | 7d | 2018-06-11 | 2018-06-19 | 8FS+147d |  |  | 2018-05-07 | 2018-05-15 | 7d | 177.38d | 0d | PPC Engineer | 56h |  |
| 324 | 3.13.1.8 | Consumables | 7d | 2018-03-08 A | 2018-03-16 A | 8, 18 | 100% |  | 2018-03-08 | 2018-03-16 | 7d |  |  | PPC Engineer | 56h | 56h |
| 325 | 3.13.1.9 | Fasteners | 5.94d | 2018-04-05 A | 2018-04-11 A | 8, 18FS+26d | 100% |  | 2018-04-05 | 2018-04-11 | 5.94d |  |  | PPC Engineer | 15.5h | 15.5h |
| 326 | 3.13.1.10 | CS pipes | 7d | 2018-03-08 A | 2018-03-16 A | 8, 18 | 100% |  | 2018-03-08 | 2018-03-16 | 7d |  |  | PPC Engineer | 56h | 56h |
| 327 | 3.13.2 | **Material Ordering /M** | 108.77d | 2018-03-20 A | 2018-08-04 |  | 24% | 82.63d | 2018-03-20 | 2018-06-30 | 80.83d | 177.38d |  |  | 516h | 124h |
| 328 | 3.13.2.1 | CS plates | 7d | 2018-05-10 | 2018-05-19 | 317FS+40d |  |  | 2018-05-10 | 2018-05-19 | 7d | 239.15d |  | Purchase Engineer | 56h |  |
| 329 | 3.13.2.2 | Tubes & Spacer | 7.62d | 2018-03-20 A | 2018-03-29 A | 318FS+40d | 100% |  | 2018-03-20 | 2018-03-29 | 7.62d |  |  | Purchase Engineer | 61h | 61h |
| 330 | 3.13.2.3 | Non Std flanges | 7d | 2018-05-23 | 2018-06-01 | 319FS+50d |  |  | 2018-05-10 | 2018-05-19 | 7d | 229.15d |  | Purchase Engineer | 56h |  |
| 331 | 3.13.2.4 | Standard flanges | 7d | 2018-05-23 | 2018-06-01 | 320FS+50d |  |  | 2018-05-10 | 2018-05-19 | 7d | 229.15d |  | Purchase Engineer | 56h |  |
| 332 | 3.13.2.5 | Tie Rod / Seal rod | 7d | 2018-05-23 | 2018-06-01 | 321FS+50d |  |  | 2018-05-10 | 2018-05-19 | 7d | 229.15d |  | Purchase Engineer | 56h |  |
| 333 | 3.13.2.6 | SRN Nozzle | 7d | 2018-05-23 | 2018-06-01 | 322FS+50d |  |  | 2018-05-10 | 2018-05-19 | 7d | 229.15d |  | Purchase Engineer | 56h |  |
| 334 | 3.13.2.7 | Gaskets | 7d | 2018-07-26 | 2018-08-04 | 323FS+30d |  |  | 2018-06-22 | 2018-06-30 | 7d | 177.38d |  | Purchase Engineer | 56h |  |
| 335 | 3.13.2.8 | Consumables | 7d | 2018-06-04 | 2018-06-12 | 324FS+61d |  |  | 2018-04-24 | 2018-05-03 | 7d | 220.31d |  | Purchase Engineer | 56h |  |
| 336 | 3.13.2.9 | Fasteners | 4.94d | 2018-05-01 A | 2018-05-07 A | 325FS+50d | 100% |  | 2018-05-21 | 2018-05-30 | 7d |  |  | Purchase Engineer | 39.5h | 39.5h |
| 337 | 3.13.2.10 | CS pipes | 2.94d | 2018-05-01 A | 2018-05-04 A | 326FS+50d | 100% |  | 2018-04-24 | 2018-05-03 | 7d |  |  | Purchase Engineer | 23.5h | 23.5h |

Notes:
- 305: SA 516 Gr.60
- 306: SA 106 GR B
- 307: SA 179
- 317: SA 516 Gr.60

| ID | WBS | Task | Duration | Start | Finish | Predecessors | Complete | Remaining | Baseline start | Baseline finish | Baseline duration | Total slack | Free slack | Resources | Work | Actual work |
| --- | --- | --- | --- | --- | --- | --- | --- | --- | --- | --- | --- | --- | --- | --- | --- | --- |
| 338 | 3.14 | **100-EE-1011 - 4220 N** | 187d | 2017-12-02 A | 2018-07-31 |  | 86% | 26.06d | 2017-12-02 | 2018-08-28 | 208d | 181.38d |  |  | 880.75h | 744.75h |
| 339 | 3.14.1 | **PR Issue /N** | 150d | 2017-12-02 A | 2018-06-14 |  | 95% | 7.77d | 2017-12-02 | 2018-05-07 | 120d | 181.38d |  |  | 448h | 424h |
| 340 | 3.14.1.1 | CS plates | 7d | 2018-03-12 A | 2018-03-20 A | 8 | 100% |  | 2018-03-12 | 2018-03-20 | 7d |  |  | PPC Engineer | 56h | 56h |
| 341 | 3.14.1.2 | Tubes & Spacer | 7d | 2018-03-12 A | 2018-03-20 A | 8 | 100% |  | 2018-03-12 | 2018-03-20 | 7d |  |  | PPC Engineer | 56h | 56h |
| 342 | 3.14.1.3 | Non Std flanges | 7d | 2018-03-12 A | 2018-03-20 A | 8 | 100% |  | 2018-03-12 | 2018-03-20 | 7d |  |  | PPC Engineer | 56h | 56h |
| 343 | 3.14.1.4 | Standard flanges | 7d | 2018-03-12 A | 2018-03-20 A | 8 | 100% |  | 2018-03-12 | 2018-03-20 | 7d |  |  | PPC Engineer | 56h | 56h |
| 344 | 3.14.1.5 | Tie Rod | 7d | 2018-03-12 A | 2018-03-20 A | 8 | 100% |  | 2018-03-12 | 2018-03-20 | 7d |  |  | PPC Engineer | 56h | 56h |
| 345 | 3.14.1.6 | Gaskets | 3d | 2018-06-11 | 2018-06-14 | 8FS+147d |  |  | 2018-05-03 | 2018-05-07 | 3d | 181.38d | 0d | PPC Engineer | 24h |  |
| 346 | 3.14.1.7 | Consumables | 7d | 2017-12-02 A | 2017-12-12 A | 8 | 100% |  | 2017-12-02 | 2017-12-12 | 7d |  |  | PPC Engineer | 56h | 56h |
| 347 | 3.14.1.8 | Fasteners | 5.94d | 2018-04-05 A | 2018-04-11 A | 8FS+97d | 100% |  | 2018-04-05 | 2018-04-11 | 5.94d |  |  | PPC Engineer | 32h | 32h |
| 348 | 3.14.1.9 | CS pipes | 7d | 2017-12-02 A | 2017-12-12 A | 8 | 100% |  | 2017-12-02 | 2017-12-12 | 7d |  |  | PPC Engineer | 56h | 56h |
| 349 | 3.14.2 | **Material Ordering /N** | 104.77d | 2018-03-20 A | 2018-07-31 |  | 78% | 22.91d | 2018-03-20 | 2018-08-28 | 125.77d | 181.38d |  |  | 432.75h | 320.75h |
| 350 | 3.14.2.1 | CS plates | 9.94d | 2018-04-02 A | 2018-04-12 A | 340FS+20d | 100% |  | 2018-04-02 | 2018-04-12 | 9.94d |  |  | Purchase Engineer |  |  |
| 351 | 3.14.2.2 | Tubes & Spacer | 7.16d | 2018-03-20 A | 2018-03-29 A | 341 | 100% |  | 2018-03-20 | 2018-03-29 | 7.16d |  |  | Purchase Engineer | 57.25h | 57.25h |
| 352 | 3.14.2.3 | Non Std flanges | 7d | 2018-03-20 A | 2018-03-29 A | 342 | 100% |  | 2018-03-20 | 2018-03-29 | 7d |  |  | Purchase Engineer | 56h | 56h |
| 353 | 3.14.2.4 | Standard flanges | 7d | 2018-03-20 A | 2018-03-29 A | 343 | 100% |  | 2018-03-20 | 2018-03-29 | 7d |  |  | Purchase Engineer | 56h | 56h |
| 354 | 3.14.2.5 | Tie Rod | 7d | 2018-04-11 A | 2018-04-20 A | 344FS+18d | 100% |  | 2018-04-11 | 2018-04-20 | 7d |  |  | Purchase Engineer | 56h | 56h |
| 355 | 3.14.2.6 | Gaskets | 7d | 2018-07-21 | 2018-07-31 | 345FS+30d |  |  | 2018-06-14 | 2018-06-22 | 7d | 181.38d |  | Purchase Engineer | 56h |  |
| 356 | 3.14.2.7 | Consumables | 7d | 2018-04-11 A | 2018-04-20 A | 346FS+94d | 100% |  | 2018-04-11 | 2018-04-20 | 7d |  |  | Purchase Engineer | 56h | 56h |
| 357 | 3.14.2.8 | Fasteners | 4.94d | 2018-05-01 A | 2018-05-07 A | 347FS+50d | 100% |  | 2018-08-18 | 2018-08-28 | 7d |  |  | Purchase Engineer | 39.5h | 39.5h |
| 358 | 3.14.2.9 | CS pipes | 7d | 2018-04-24 | 2018-05-04 | 348FS+104d |  |  | 2018-04-24 | 2018-05-04 | 7d | 250.38d |  | Purchase Engineer | 56h |  |
| 359 | 3.15 | **100-EE-1016 - 4220 O** | 44d | 2018-06-14 | 2018-08-08 |  |  |  | 2017-12-02 | 2018-11-26 | 274d | 174.38d |  |  | 1008h |  |
| 360 | 3.15.1 | **PR Issue /O** | 7d | 2018-06-14 | 2018-06-22 |  |  |  | 2017-12-02 | 2018-05-29 | 137d | 174.38d |  |  | 504h |  |
| 361 | 3.15.1.1 | CS plates | 7d | 2018-06-14 | 2018-06-22 | 8FS+150d |  |  | 2018-05-19 | 2018-05-29 | 7d | 174.38d | 0d | PPC Engineer | 56h |  |
| 362 | 3.15.1.2 | Tubes & Spacer | 7d | 2018-06-14 | 2018-06-22 | 8FS+150d |  |  | 2018-05-19 | 2018-05-29 | 7d | 174.38d | 0d | PPC Engineer | 56h |  |
| 363 | 3.15.1.3 | Non Std flanges | 7d | 2018-06-14 | 2018-06-22 | 8FS+150d |  |  | 2018-05-19 | 2018-05-29 | 7d | 174.38d | 0d | PPC Engineer | 56h |  |
| 364 | 3.15.1.4 | Standard flanges | 7d | 2018-06-14 | 2018-06-22 | 8FS+150d |  |  | 2018-05-19 | 2018-05-29 | 7d | 174.38d | 0d | PPC Engineer | 56h |  |
| 365 | 3.15.1.5 | Tie Rod | 7d | 2018-06-14 | 2018-06-22 | 8FS+150d |  |  | 2018-05-19 | 2018-05-29 | 7d | 174.38d | 0d | PPC Engineer | 56h |  |
| 366 | 3.15.1.6 | Gaskets | 7d | 2018-06-14 | 2018-06-22 | 8FS+150d |  |  | 2018-05-19 | 2018-05-29 | 7d | 174.38d | 0d | PPC Engineer | 56h |  |
| 367 | 3.15.1.7 | Consumables | 7d | 2018-06-14 | 2018-06-22 | 8FS+150d |  |  | 2017-12-02 | 2017-12-12 | 7d | 174.38d | 0d | PPC Engineer | 56h |  |
| 368 | 3.15.1.8 | Fasteners | 7d | 2018-06-14 | 2018-06-22 | 8FS+150d |  |  | 2018-05-19 | 2018-05-29 | 7d | 174.38d | 0d | PPC Engineer | 56h |  |
| 369 | 3.15.1.9 | CS pipes | 7d | 2018-06-14 | 2018-06-22 | 8FS+150d |  |  | 2017-12-02 | 2017-12-12 | 7d | 174.38d | 0d | PPC Engineer | 56h |  |

Notes:
- 340: SA 516 Gr.60
- 361: SA 516 Gr.60

| ID | WBS | Task | Duration | Start | Finish | Predecessors | Baseline start | Baseline finish | Baseline duration | Total slack | Resources | Work |
| --- | --- | --- | --- | --- | --- | --- | --- | --- | --- | --- | --- | --- |
| 370 | 3.15.2 | **Material Ordering /O** | 7d | 2018-07-31 | 2018-08-08 |  | 2018-05-29 | 2018-11-26 | 137d | 174.38d |  | 504h |
| 371 | 3.15.2.1 | CS plates | 7d | 2018-07-31 | 2018-08-08 | 361FS+30d | 2018-11-16 | 2018-11-26 | 7d | 174.38d | Purchase Engineer | 56h |
| 372 | 3.15.2.2 | Tubes & Spacer | 7d | 2018-07-31 | 2018-08-08 | 362FS+30d | 2018-11-16 | 2018-11-26 | 7d | 174.38d | Purchase Engineer | 56h |
| 373 | 3.15.2.3 | Non Std flanges | 7d | 2018-07-31 | 2018-08-08 | 363FS+30d | 2018-11-16 | 2018-11-26 | 7d | 174.38d | Purchase Engineer | 56h |
| 374 | 3.15.2.4 | Standard flanges | 7d | 2018-07-31 | 2018-08-08 | 364FS+30d | 2018-05-29 | 2018-06-06 | 7d | 174.38d | Purchase Engineer | 56h |
| 375 | 3.15.2.5 | Tie Rod | 7d | 2018-07-31 | 2018-08-08 | 365FS+30d | 2018-11-16 | 2018-11-26 | 7d | 174.38d | Purchase Engineer | 56h |
| 376 | 3.15.2.6 | Gaskets | 7d | 2018-07-31 | 2018-08-08 | 366FS+30d | 2018-11-16 | 2018-11-26 | 7d | 174.38d | Purchase Engineer | 56h |
| 377 | 3.15.2.7 | Consumables | 7d | 2018-07-31 | 2018-08-08 | 367FS+30d | 2018-05-29 | 2018-06-06 | 7d | 174.38d | Purchase Engineer | 56h |
| 378 | 3.15.2.8 | Fasteners | 7d | 2018-07-31 | 2018-08-08 | 368FS+30d | 2018-11-16 | 2018-11-26 | 7d | 174.38d | Purchase Engineer | 56h |
| 379 | 3.15.2.9 | CS pipes | 7d | 2018-07-31 | 2018-08-08 | 369FS+30d | 2018-05-29 | 2018-06-06 | 7d | 174.38d | Purchase Engineer | 56h |
