# 4220-F1008

Schedule from MS Project, 2017-10-03 to 2018-09-19, costs in ₹, A marks actual dates.

## Calendars

- TEAM_2Shift_Calendar-1: Mon-Sat 06:00-22:00; Sun off. Exceptions (off unless hours are given): 2017-01-13 to 2023-02-11 (2nd Sat, recurring), 2017-01-26 to 2036-01-26 (Republic Day, recurring), 2017-01-27 to 2023-08-26 (4th Sat, recurring), 2017-05-01 to 2036-05-01 (May Day, recurring), 2017-08-15 to 2036-08-15 (Indepdence Day, recurring), 2017-10-02 to 2036-10-02 (Gandhi Jayanti, recurring), 2017-10-19 (Deepavali'2017), 2018-01-15 (Thiruvalluvar Day'2018), 2018-09-13 (Vinakya Chaturthi'2018).
- TEAM_Stand_Calendar: Mon-Sat 08:30-12:30, 13:30-17:30; Sun off. Exceptions (off unless hours are given): 2017-01-13 to 2023-08-12 (2nd Sat, recurring), 2017-01-26 to 2036-01-26 (Republic Day, recurring), 2017-01-27 to 2023-08-26 (4th Sat, recurring), 2017-05-01 to 2036-05-01 (May Day, recurring), 2017-08-15 to 2036-08-15 (Independence Day, recurring), 2017-10-02 to 2036-10-02 (Gandhi Jayanti, recurring), 2017-10-18 (Deepavali'2017), 2018-01-15 (Thiruvalluvar Day'2018), 2018-09-13 (Vinakaya Chaturthi'2018).

## Resources

| Resource | Rate |
| --- | --- |
| Grinder | 56.25 |
| SMAW Welder | 68.75 |
| TIG Welder | 125 |
| Store |  |
| SC (Work) |  |
| SC Radiography (Work) |  |
| QC Engineer |  |
| Helper | 50 |
| Gas Cutter | 68.75 |
| Fitter | 68.75 |
| Lathe Operator | 120 |
| Driller | 68.75 |
| Purchase Engineer |  |
| Milling Operator | 120 |
| Foreman |  |
| Marketing |  |
| SC Transport (Cost) |  |
| Crane |  |
| Forging Non-Std (Cost) |  |
| Forging Std (Cost) |  |
| Pipe (Cost) |  |
| Plate (Cost) |  |
| Rod (Cost) |  |
| Tube (Cost) |  |
| Tube Sheet (Cost) |  |
| Tue 03-10-17 |  |
| Tue 28-11-17 |  |
| Fri 23-02-18 |  |
| Finance |  |
| PMO Support |  |
| PM |  |

## Schedule

| ID | WBS | Task | Duration | Start | Finish | Predecessors | Complete | Remaining | Baseline start | Baseline finish | Baseline duration | Total slack | Constraint | Calendar | Work | Actual work | Cost | Baseline cost |
| --- | --- | --- | --- | --- | --- | --- | --- | --- | --- | --- | --- | --- | --- | --- | --- | --- | --- | --- |
| 1 | 1 | Project Start date | 1d | 2017-10-03 08:30 A | 2017-10-03 17:30 A |  | 100% |  | 2017-10-03 08:30 | 2017-10-03 17:30 | 1d |  |  |  |  |  |  |  |
| 2 | 2 | Drawing submission | 1d | 2017-11-28 08:30 A | 2017-11-28 17:30 A | 1FS+55ed | 100% |  | 2017-11-28 08:30 | 2017-11-28 17:30 | 1d |  |  |  |  |  |  |  |
| 3 | 3 | Drawing Approval | 1d | 2018-02-09 08:30 A | 2018-02-09 17:30 A | 2FS+72ed | 100% |  | 2018-02-09 08:30 | 2018-02-09 17:30 | 1d |  |  |  |  |  |  |  |
| 4 | 4 | **4220-F1008** | 356.28d | 2018-02-02 08:00 A | 2018-09-19 10:16 |  | 36% | 229.43d | 2018-02-02 08:00 | 2018-09-19 10:16 | 356.28d | 0d |  | TEAM_2Shift_Calendar-1 | 5733.67h | 6h | 296,577.37 | 296,577.37 |
| 5 | 4.1 | **Raw Material Ordering** | 71d | 2018-02-02 08:00 A | 2018-05-03 17:30 A |  | 100% |  | 2018-02-02 08:00 | 2018-05-03 17:30 | 71d |  |  |  | 6h | 6h |  |  |
| 6 | 4.1.1 | Material Ordering Start | 1d | 2018-02-16 08:30 A | 2018-02-16 17:30 A | 3 | 100% |  | 2018-02-16 08:30 | 2018-02-16 17:30 | 1d |  | start no earlier than 2018-02-16 08:00 |  | 0.25h | 0.25h |  |  |
| 7 | 4.1.2 | Shell Plate | 9.94d | 2018-04-02 08:00 A | 2018-04-12 17:00 A | 6FS+50ed | 100% |  | 2018-04-02 08:00 | 2018-04-12 17:00 | 9.94d |  |  |  | 0.25h | 0.25h |  |  |
| 8 | 4.1.3 | Shell Girth Flange | 3d | 2018-03-29 08:30 A | 2018-03-31 17:30 A | 6FS+50ed | 100% |  | 2018-03-29 08:30 | 2018-03-31 17:30 | 3d |  |  |  | 0.25h | 0.25h |  |  |
| 9 | 4.1.4 | Channel Plate | 9.94d | 2018-04-02 08:00 A | 2018-04-12 17:00 A | 6FS+50ed | 100% |  | 2018-04-02 08:00 | 2018-04-12 17:00 | 9.94d |  |  |  | 0.25h | 0.25h |  |  |
| 10 | 4.1.5 | Channel Girth Flange | 3d | 2018-03-29 08:30 A | 2018-03-31 17:30 A | 6FS+50ed | 100% |  | 2018-03-29 08:30 | 2018-03-31 17:30 | 3d |  |  |  | 0.25h | 0.25h |  |  |
| 11 | 4.1.6 | Barrel Sheel Plate | 9.94d | 2018-04-02 08:00 A | 2018-04-12 17:00 A | 6FS+50ed | 100% |  | 2018-04-02 08:00 | 2018-04-12 17:00 | 9.94d |  |  |  | 0.25h | 0.25h |  |  |
| 12 | 4.1.7 | Barrel Girth Flange | 3d | 2018-03-29 08:30 A | 2018-03-31 17:30 A | 6FS+50ed | 100% |  | 2018-03-29 08:30 | 2018-03-31 17:30 | 3d |  |  |  | 0.25h | 0.25h |  |  |
| 13 | 4.1.8 | Barrel Dish | 9.94d | 2018-04-02 08:00 A | 2018-04-12 17:00 A | 6FS+50ed | 100% |  | 2018-04-02 08:00 | 2018-04-12 17:00 | 9.94d |  |  |  | 0.25h | 0.25h |  |  |
| 14 | 4.1.9 | Tube Sheet-1 | 3d | 2018-03-29 08:30 A | 2018-03-31 17:30 A | 6FS+50ed | 100% |  | 2018-03-29 08:30 | 2018-03-31 17:30 | 3d |  |  |  | 0.25h | 0.25h |  |  |
| 15 | 4.1.10 | Tube Sheet -2 | 3d | 2018-03-29 08:30 A | 2018-03-31 17:30 A | 6FS+50ed | 100% |  | 2018-03-29 08:30 | 2018-03-31 17:30 | 3d |  |  |  | 0.25h | 0.25h |  |  |
| 16 | 4.1.11 | Floating Head Flg | 3d | 2018-03-29 08:30 A | 2018-03-31 17:30 A | 6FS+50ed | 100% |  | 2018-03-29 08:30 | 2018-03-31 17:30 | 3d |  |  |  | 0.25h | 0.25h |  |  |
| 17 | 4.1.12 | Floating Head Dish | 9.94d | 2018-04-02 08:00 A | 2018-04-12 17:00 A | 6FS+50ed | 100% |  | 2018-04-02 08:00 | 2018-04-12 17:00 | 9.94d |  |  |  | 0.25h | 0.25h |  |  |
| 18 | 4.1.13 | Backing Ring | 3d | 2018-03-29 08:30 A | 2018-03-31 17:30 A | 6FS+50ed | 100% |  | 2018-03-29 08:30 | 2018-03-31 17:30 | 3d |  |  |  | 0.25h | 0.25h |  |  |
| 19 | 4.1.14 | Baffle Plate | 9.94d | 2018-04-02 08:00 A | 2018-04-12 17:00 A | 6FS+50ed | 100% |  | 2018-04-02 08:00 | 2018-04-12 17:00 | 9.94d |  |  |  | 0.25h | 0.25h |  |  |
| 20 | 4.1.15 | Sealing Strip Plate | 9.94d | 2018-04-09 08:30 A | 2018-04-20 17:00 A | 6FS+50ed | 100% |  | 2018-04-09 08:30 | 2018-04-20 17:00 | 9.94d |  |  |  | 0.25h | 0.25h |  |  |
| 21 | 4.1.16 | Sliding Strip Plate | 9.94d | 2018-04-02 08:00 A | 2018-04-12 17:00 A | 6FS+50ed | 100% |  | 2018-04-02 08:00 | 2018-04-12 17:00 | 9.94d |  |  |  | 0.25h | 0.25h |  |  |
| 22 | 4.1.17 | Seal Rod | 52.03d | 2018-02-02 08:00 A | 2018-04-09 08:45 A | 6FS+50ed | 100% |  | 2018-02-02 08:00 | 2018-04-09 08:45 | 52.03d |  |  |  | 0.25h | 0.25h |  |  |
| 23 | 4.1.18 | Noz Srn | 3d | 2018-03-29 08:30 A | 2018-03-31 17:30 A | 6FS+50ed | 100% |  | 2018-03-29 08:30 | 2018-03-31 17:30 | 3d |  |  |  | 0.25h | 0.25h |  |  |
| 24 | 4.1.19 | Tube | 3d | 2018-03-29 08:30 A | 2018-03-31 17:30 A | 6FS+50ed | 100% |  | 2018-03-29 08:30 | 2018-03-31 17:30 | 3d |  |  |  | 0.25h | 0.25h |  |  |
| 25 | 4.1.20 | Spacer Tube | 3d | 2018-03-29 08:30 A | 2018-03-31 17:30 A | 6FS+50ed | 100% |  | 2018-03-29 08:30 | 2018-03-31 17:30 | 3d |  |  |  | 0.25h | 0.25h |  |  |
| 26 | 4.1.21 | Tie Rod | 52.03d | 2018-02-02 08:00 A | 2018-04-09 08:45 A | 6FS+50ed | 100% |  | 2018-02-02 08:00 | 2018-04-09 08:45 | 52.03d |  |  |  | 0.25h | 0.25h |  |  |
| 27 | 4.1.22 | Test Ring & Test Flg | 2.94d | 2018-03-29 08:00 A | 2018-03-31 17:00 A | 6FS+50ed | 100% |  | 2018-03-29 08:00 | 2018-03-31 17:00 | 2.94d |  |  |  | 0.25h | 0.25h |  |  |
| 28 | 4.1.23 | Ms Rod For Handle Etc | 3d | 2018-04-30 08:30 A | 2018-05-03 17:30 A | 6FS+70ed | 100% |  | 2018-04-30 08:30 | 2018-05-03 17:30 | 3d |  |  |  | 0.25h | 0.25h |  |  |
| 29 | 4.1.24 | Ms Plate For Saddle | 3d | 2018-04-30 08:30 A | 2018-05-03 17:30 A | 6FS+70ed | 100% |  | 2018-04-30 08:30 | 2018-05-03 17:30 | 3d |  |  |  | 0.25h | 0.25h |  |  |

| ID | WBS | Task | Duration | Start | Finish | Predecessors | Baseline start | Baseline finish | Baseline duration | Total slack | Free slack |
| --- | --- | --- | --- | --- | --- | --- | --- | --- | --- | --- | --- |
| 30 | 4.2 | **Raw Material receipt** | 45.1d | 2018-06-02 17:00 | 2018-07-31 08:46 |  | 2018-05-16 17:00 | 2018-07-31 08:46 | 59.1d | 31.06d |  |
| 31 | 4.2.1 | Shell Plate-Sa 516 Gr60 | 1d | 2018-06-02 17:00 | 2018-06-04 17:01 | 7FS+39d | 2018-05-16 17:00 | 2018-05-17 17:01 | 1d | 65.66d | 0d |
| 32 | 4.2.2 | Shell Girth Flange-Sa266 Gr4 | 1d | 2018-07-12 08:30 | 2018-07-13 08:31 | 8FS+80d | 2018-07-12 08:30 | 2018-07-13 08:31 | 1d | 43.43d | 0d |
| 33 | 4.2.3 | Channel Plate-Sa 516 Gr60 | 1d | 2018-06-02 17:00 | 2018-06-04 17:01 | 7FS+39d | 2018-05-16 17:00 | 2018-05-17 17:01 | 1d | 69.06d | 0d |
| 34 | 4.2.4 | Channel Girth Flange-Sa 266 Gr4 | 1d | 2018-07-12 08:30 | 2018-07-13 08:31 | 10FS+80d | 2018-07-12 08:30 | 2018-07-13 08:31 | 1d | 51.22d |  |
| 35 | 4.2.5 | Barrel Sheel Plate-Sa 516 Gr 60 | 1d | 2018-06-02 17:00 | 2018-06-04 17:01 | 7FS+39d | 2018-05-16 17:00 | 2018-05-17 17:01 | 1d | 71.06d | 0d |
| 36 | 4.2.6 | Barrel Girth Flange-Sa 266 Gr4 | 1d | 2018-07-12 08:30 | 2018-07-13 08:31 | 12FS+80d | 2018-07-12 08:30 | 2018-07-13 08:31 | 1d | 51.22d |  |
| 37 | 4.2.7 | Barrel Dish-Sa 516 Gr 60 | 1d | 2018-06-02 17:00 | 2018-06-04 17:01 | 7FS+39d | 2018-05-16 17:00 | 2018-05-17 17:01 | 1d | 68.28d | 0d |
| 38 | 4.2.8 | Tube Sheet-1-Sa 266 Gr4 | 1d | 2018-07-12 08:30 | 2018-07-13 08:31 | 14FS+80d | 2018-07-12 08:30 | 2018-07-13 08:31 | 1d | 0d |  |
| 39 | 4.2.9 | Tube Sheet -2-Sa 266 Gr4 | 1d | 2018-07-12 08:30 | 2018-07-13 08:31 | 15FS+80d | 2018-07-12 08:30 | 2018-07-13 08:31 | 1d | 51.22d |  |
| 40 | 4.2.10 | Floating Head Flg-Sa 266 Gr4 | 1d | 2018-07-12 08:30 | 2018-07-13 08:31 | 16FS+80d | 2018-07-12 08:30 | 2018-07-13 08:31 | 1d | 51.22d |  |
| 41 | 4.2.11 | Floating Head Dish-Sa 516 Gr60 | 1d | 2018-07-24 17:00 | 2018-07-25 17:01 | 17FS+80d | 2018-07-24 17:00 | 2018-07-25 17:01 | 1d | 29.06d | 0d |
| 42 | 4.2.12 | Backing Ring-Sa 266 Gr4 | 1d | 2018-07-12 08:30 | 2018-07-13 08:31 | 18FS+80d | 2018-07-12 08:30 | 2018-07-13 08:31 | 1d | 51.22d |  |
| 43 | 4.2.13 | Baffle Plate-Sa 516 Gr60 | 1d | 2018-06-02 17:00 | 2018-06-04 17:01 | 7FS+39d | 2018-05-16 17:00 | 2018-05-17 17:01 | 1d | 76.06d | 0d |
| 44 | 4.2.14 | Sealing Strip Plate-Sa 516 Gr60 | 1d | 2018-06-02 17:00 | 2018-06-04 17:01 | 7FS+39d | 2018-05-16 17:00 | 2018-05-17 17:01 | 1d | 79.53d | 0d |
| 45 | 4.2.15 | Sliding Strip Plate-Sa 516 Gr60 | 1d | 2018-06-02 17:00 | 2018-06-04 17:01 | 7FS+39d | 2018-05-16 17:00 | 2018-05-17 17:01 | 1d | 79.53d | 0d |
| 46 | 4.2.16 | Lifting lug RF pad & Pad plate | 1d | 2018-07-30 08:45 | 2018-07-31 08:46 | 22FS+87d | 2018-07-30 08:45 | 2018-07-31 08:46 | 1d | 35.97d | 0d |
| 47 | 4.2.17 | STD flanges, Pipes, davit arm pipe & plate | 1d | 2018-07-12 08:30 | 2018-07-13 08:31 | 23FS+80d | 2018-07-12 08:30 | 2018-07-13 08:31 | 1d | 48.34d | 0d |
| 48 | 4.2.18 | Tube -Sa 179 | 1d | 2018-06-05 08:30 | 2018-06-06 08:31 | 24FS+50d | 2018-06-05 08:30 | 2018-06-06 08:31 | 1d | 81.22d |  |
| 49 | 4.2.19 | Spacer Tube-Sa 179 | 1d | 2018-06-05 08:30 | 2018-06-06 08:31 | 25FS+50d | 2018-06-05 08:30 | 2018-06-06 08:31 | 1d | 80d | 0d |
| 50 | 4.2.20 | Tie Rod-Sa 36 | 1d | 2018-07-07 08:45 | 2018-07-09 08:46 | 26FS+70d | 2018-07-07 08:45 | 2018-07-09 08:46 | 1d | 52.97d | 0d |
| 51 | 4.2.21 | Test Ring & Test Flg-Sa 266 Gr4 | 1d | 2018-07-11 17:00 | 2018-07-12 17:01 | 27FS+80d | 2018-07-11 17:00 | 2018-07-12 17:01 | 1d | 51.28d |  |
| 52 | 4.2.22 | Ms Rod For Handle Etc | 1d | 2018-07-06 08:30 | 2018-07-07 08:31 | 28FS+50d | 2018-07-06 08:30 | 2018-07-07 08:31 | 1d | 55.22d | 0d |
| 53 | 4.2.23 | Ms Plate For Saddle | 1d | 2018-07-06 08:30 | 2018-07-07 08:31 | 29FS+50d | 2018-07-06 08:30 | 2018-07-07 08:31 | 1d | 53d | 0d |

| ID | WBS | Task | Duration | Start | Finish | Predecessors | Baseline start | Baseline finish | Baseline duration | Total slack | Free slack | Calendar | Resources | Work | Cost | Baseline cost |
| --- | --- | --- | --- | --- | --- | --- | --- | --- | --- | --- | --- | --- | --- | --- | --- | --- |
| 54 | 4.3 | **133-EE1008F** | 82.28d | 2018-06-04 17:01 | 2018-09-19 10:16 |  | 2018-05-17 17:01 | 2018-09-19 10:16 | 96.28d | 0d |  |  |  | 5727.67h | 296,577.37 | 296,577.37 |
| 55 | 4.3.1 | **Dish Forming - 12T* 764 OD** | 28d | 2018-06-04 17:01 | 2018-06-21 17:01 |  | 2018-05-17 17:01 | 2018-06-04 17:01 | 28d | 137.16d |  | TEAM_2Shift_Calendar-1 |  | 260.5h | 6,481.25 | 6,481.25 |
| 56 | 4.3.1.1 | Bar Dish Blank Issuence | 4d | 2018-06-04 17:01 | 2018-06-06 17:01 | 37 | 2018-05-17 17:01 | 2018-05-19 17:01 | 4d | 137.16d | 0d | TEAM_2Shift_Calendar-1 | Plate (Cost) [0.1%]; Store | 32h |  |  |
| 57 | 4.3.1.2 | Bar-Dish Blank Marking - 12 * 764 Od | 1h | 2018-06-06 17:01 | 2018-06-06 18:01 | 56 | 2018-05-19 17:01 | 2018-05-19 18:01 | 1h | 137.16d | 0d | TEAM_2Shift_Calendar-1 | Helper; Fitter | 2h | 118.75 | 118.75 |
| 58 | 4.3.1.3 | Bar-Dish Blank Marking Inspection | 1d | 2018-06-06 18:01 | 2018-06-07 10:01 | 57 | 2018-05-19 18:01 | 2018-05-21 10:01 | 1d | 137.16d | 0d | TEAM_2Shift_Calendar-1 | Helper; Fitter | 16h | 950 | 950 |
| 59 | 4.3.1.4 | Bar-Dish Blank Cutting | 1h | 2018-06-07 10:01 | 2018-06-07 11:01 | 58 | 2018-05-21 10:01 | 2018-05-21 11:01 | 1h | 137.16d | 0d | TEAM_2Shift_Calendar-1 | Helper; Gas Cutter | 2h | 118.75 | 118.75 |
| 60 | 4.3.1.5 | Bar-Dish Forming | 10d | 2018-06-07 11:01 | 2018-06-14 11:01 | 59 | 2018-05-21 11:01 | 2018-05-28 11:01 | 10d | 137.16d | 0d | TEAM_2Shift_Calendar-1 | SC (Work) | 80h |  |  |
| 61 | 4.3.1.6 | Profile Insp | 1d | 2018-06-14 11:01 | 2018-06-14 19:01 | 60 | 2018-05-28 11:01 | 2018-05-28 19:01 | 1d | 137.16d | 0d | TEAM_2Shift_Calendar-1 | Helper; Fitter | 16h | 950 | 950 |
| 62 | 4.3.1.7 | Heat Treatment Preparation | 1d | 2018-06-14 19:01 | 2018-06-15 11:01 | 61 | 2018-05-28 19:01 | 2018-05-29 11:01 | 1d | 137.16d | 0d | TEAM_2Shift_Calendar-1 | SC (Work) | 8h |  |  |
| 63 | 4.3.1.8 | Stress Releiving- Sub Cont | 4d | 2018-06-15 11:01 | 2018-06-18 11:01 | 62 | 2018-05-29 11:01 | 2018-05-31 11:01 | 4d | 137.16d | 0d | TEAM_2Shift_Calendar-1 | SC (Work) | 32h |  |  |
| 64 | 4.3.1.9 | Removal Of Spiders | 1d | 2018-06-18 11:01 | 2018-06-18 19:01 | 63 | 2018-05-31 11:01 | 2018-05-31 19:01 | 1d | 137.16d | 0d | TEAM_2Shift_Calendar-1 | Helper; Fitter | 16h | 950 | 950 |
| 65 | 4.3.1.10 | Surface Preparation | 2d | 2018-06-18 19:01 | 2018-06-19 19:01 | 64 | 2018-05-31 19:01 | 2018-06-01 19:01 | 2d | 137.16d | 0d | TEAM_2Shift_Calendar-1 | Grinder | 16h | 900 | 900 |
| 66 | 4.3.1.11 | Inspection | 1d | 2018-06-19 19:01 | 2018-06-20 11:01 | 65 | 2018-06-01 19:01 | 2018-06-02 11:01 | 1d | 137.16d | 0d | TEAM_2Shift_Calendar-1 | Fitter | 8h | 550 | 550 |
| 67 | 4.3.1.12 | Tpi Inspection | 4h | 2018-06-20 11:01 | 2018-06-20 15:01 | 66 | 2018-06-02 11:01 | 2018-06-02 15:01 | 4h | 137.16d | 0d | TEAM_2Shift_Calendar-1 | Fitter | 4h | 275 | 275 |
| 68 | 4.3.1.13 | Sf Marking | 2h | 2018-06-20 15:01 | 2018-06-20 17:01 | 67 | 2018-06-02 15:01 | 2018-06-02 17:01 | 2h | 137.16d | 0d | TEAM_2Shift_Calendar-1 | Helper; Fitter | 4h | 237.5 | 237.5 |
| 69 | 4.3.1.14 | Sf Cutting | 8.5h | 2018-06-20 17:01 | 2018-06-21 09:31 | 68 | 2018-06-02 17:01 | 2018-06-04 09:31 | 8.5h | 137.16d | 0d | TEAM_2Shift_Calendar-1 | Helper; Gas Cutter | 17h | 1,009.38 | 1,009.38 |
| 70 | 4.3.1.15 | Sf Gridning & Ep | 7.5h | 2018-06-21 09:31 | 2018-06-21 17:01 | 69 | 2018-06-04 09:31 | 2018-06-04 17:01 | 7.5h | 137.16d |  | TEAM_2Shift_Calendar-1 | Grinder | 7.5h | 421.88 | 421.88 |
| 71 | 4.3.2 | **Tube Sheet** | 23.62d | 2018-07-13 08:31 | 2018-07-27 21:31 |  | 2018-07-13 08:31 | 2018-07-27 21:31 | 23.62d | 0d |  | TEAM_2Shift_Calendar-1 |  | 384h | 9,975 | 9,975 |
| 72 | 4.3.2.1 | **Tube Sheet Machining 1 Off 2** | 9d | 2018-07-13 08:31 | 2018-07-19 16:31 |  | 2018-07-13 08:31 | 2018-07-19 16:31 | 9d | 5.75d |  | TEAM_2Shift_Calendar-1 |  | 56h |  |  |
| 73 | 4.3.2.1.1 | Inward Inspection | 2d | 2018-07-13 08:31 | 2018-07-17 08:31 | 38 | 2018-07-13 08:31 | 2018-07-17 08:31 | 2d | 5.75d | 0d | TEAM_2Shift_Calendar-1 | Tube Sheet (Cost) [0.1%]; QC Engineer | 16h |  |  |
| 74 | 4.3.2.1.2 | Tube Sheet M/C - 1/2 | 5d | 2018-07-17 08:31 | 2018-07-19 16:31 | 73 | 2018-07-17 08:31 | 2018-07-19 16:31 | 5d | 5.75d | 0d | TEAM_2Shift_Calendar-1 | SC (Work) | 40h |  |  |
| 75 | 4.3.2.2 | **Tube Sheet Drilling 1 Off 2** | 8.88d | 2018-07-19 16:31 | 2018-07-25 07:31 |  | 2018-07-19 16:31 | 2018-07-25 07:31 | 8.88d | 5.75d |  | TEAM_2Shift_Calendar-1 |  | 90h | 2,256.25 | 2,256.25 |
| 76 | 4.3.2.2.1 | Tube Sheet Drilling -1/2 | 0.5d | 2018-07-19 16:31 | 2018-07-19 20:31 | 74 | 2018-07-19 16:31 | 2018-07-19 20:31 | 0.5d | 5.75d | 0d | TEAM_2Shift_Calendar-1 | SC (Work) | 4h |  |  |
| 77 | 4.3.2.2.2 | Exp Groove+Welding Groove -1/2 | 1d | 2018-07-19 20:31 | 2018-07-20 12:31 | 76 | 2018-07-19 20:31 | 2018-07-20 12:31 | 1d | 5.75d | 0d | TEAM_2Shift_Calendar-1 | SC (Work) | 8h |  |  |
| 78 | 4.3.2.2.3 | Tie Rod, Pulling, Lifting Hole - 1/2 | 1d | 2018-07-20 12:31 | 2018-07-20 20:31 | 77 | 2018-07-20 12:31 | 2018-07-20 20:31 | 1d | 5.75d | 0d | TEAM_2Shift_Calendar-1 | SC (Work) | 8h |  |  |
| 79 | 4.3.2.2.4 | Pass Partition Groove M/C -1/2 | 4d | 2018-07-20 20:31 | 2018-07-23 20:31 | 78 | 2018-07-20 20:31 | 2018-07-23 20:31 | 4d | 5.75d | 0d | TEAM_2Shift_Calendar-1 | SC (Work) | 32h |  |  |
| 80 | 4.3.2.2.5 | Cleaning ,Go/No Go Check -1/2 | 11h | 2018-07-23 20:31 | 2018-07-24 15:31 | 79 | 2018-07-23 20:31 | 2018-07-24 15:31 | 11h | 5.75d | 0d | TEAM_2Shift_Calendar-1 | Helper; Fitter | 22h | 1,306.25 | 1,306.25 |
| 81 | 4.3.2.2.6 | Final Inspection -1/2 | 1d | 2018-07-24 15:31 | 2018-07-25 07:31 | 80 | 2018-07-24 15:31 | 2018-07-25 07:31 | 1d | 5.75d |  | TEAM_2Shift_Calendar-1 | Helper; Fitter | 16h | 950 | 950 |

| ID | WBS | Task | Duration | Start | Finish | Predecessors | Baseline start | Baseline finish | Baseline duration | Total slack | Free slack | Calendar | Resources | Work | Cost | Baseline cost |
| --- | --- | --- | --- | --- | --- | --- | --- | --- | --- | --- | --- | --- | --- | --- | --- | --- |
| 82 | 4.3.2.3 | **Tube Sheet Machining 2 Off 2** | 9d | 2018-07-13 08:31 | 2018-07-19 16:31 |  | 2018-07-13 08:31 | 2018-07-19 16:31 | 9d | 0d |  | TEAM_2Shift_Calendar-1 |  | 56h |  |  |
| 83 | 4.3.2.3.1 | Inward Inspection | 2d | 2018-07-13 08:31 | 2018-07-17 08:31 | 38 | 2018-07-13 08:31 | 2018-07-17 08:31 | 2d | 0d |  | TEAM_2Shift_Calendar-1 | Tube Sheet (Cost) [0.1%]; QC Engineer | 16h |  |  |
| 84 | 4.3.2.3.2 | Tube Sheet M/C - 2/2 | 5d | 2018-07-17 08:31 | 2018-07-19 16:31 | 83 | 2018-07-17 08:31 | 2018-07-19 16:31 | 5d | 0d |  | TEAM_2Shift_Calendar-1 | SC (Work) | 40h |  |  |
| 85 | 4.3.2.4 | **Tube Sheet Drilling 2 Off 2** | 14.62d | 2018-07-19 16:31 | 2018-07-27 21:31 |  | 2018-07-19 16:31 | 2018-07-27 21:31 | 14.62d | 0d |  | TEAM_2Shift_Calendar-1 |  | 182h | 7,718.75 | 7,718.75 |
| 86 | 4.3.2.4.1 | Tube Sheet Drilling -2/2 | 0.5d | 2018-07-19 16:31 | 2018-07-19 20:31 | 84 | 2018-07-19 16:31 | 2018-07-19 20:31 | 0.5d | 0d |  | TEAM_2Shift_Calendar-1 | SC (Work) | 4h |  |  |
| 87 | 4.3.2.4.2 | Exp Groove+Welding Groove -2/2 | 1d | 2018-07-19 20:31 | 2018-07-20 12:31 | 86 | 2018-07-19 20:31 | 2018-07-20 12:31 | 1d | 0d |  | TEAM_2Shift_Calendar-1 | SC (Work) | 8h |  |  |
| 88 | 4.3.2.4.3 | Tie Rod, Pulling, Lifting Hole - 2/2 | 1d | 2018-07-20 12:31 | 2018-07-20 20:31 | 87 | 2018-07-20 12:31 | 2018-07-20 20:31 | 1d | 0d |  | TEAM_2Shift_Calendar-1 | SC (Work) | 8h |  |  |
| 89 | 4.3.2.4.4 | Pass Partition Groove M/C -2/2 | 4d | 2018-07-20 20:31 | 2018-07-23 20:31 | 88 | 2018-07-20 20:31 | 2018-07-23 20:31 | 4d | 0d |  | TEAM_2Shift_Calendar-1 | SC (Work) | 32h |  |  |
| 90 | 4.3.2.4.5 | Cleaning ,Go/No Go Check -2/2 | 11h | 2018-07-23 20:31 | 2018-07-24 15:31 | 89 | 2018-07-23 20:31 | 2018-07-24 15:31 | 11h | 0d |  | TEAM_2Shift_Calendar-1 | Helper; Fitter | 22h | 1,306.25 | 1,306.25 |
| 91 | 4.3.2.4.6 | Final Inspection -2/2 | 54h | 2018-07-24 15:31 | 2018-07-27 21:31 | 90 | 2018-07-24 15:31 | 2018-07-27 21:31 | 54h | 0d |  | TEAM_2Shift_Calendar-1 | Helper; Fitter | 108h | 6,412.5 | 6,412.5 |
| 92 | 4.3.3 | **Top Saddle Fabrrication** | 4.75d | 2018-07-07 08:31 | 2018-07-10 14:31 |  | 2018-07-07 08:31 | 2018-07-10 14:31 | 4.75d | 107.47d |  | TEAM_2Shift_Calendar-1 |  | 44h | 712.5 | 712.5 |
| 93 | 4.3.3.1 | Plate Issuence | 4d | 2018-07-07 08:31 | 2018-07-10 08:31 | 53 | 2018-07-07 08:31 | 2018-07-10 08:31 | 4d | 107.47d | 0d | TEAM_2Shift_Calendar-1 | Store; Plate (Cost) [0.1%] | 32h |  |  |
| 94 | 4.3.3.2 | Base Marking | 2h | 2018-07-10 08:31 | 2018-07-10 10:31 | 93 | 2018-07-10 08:31 | 2018-07-10 10:31 | 2h | 107.47d | 0d | TEAM_2Shift_Calendar-1 | Helper; Fitter | 4h | 237.5 | 237.5 |
| 95 | 4.3.3.3 | Web Pl Marking | 2h | 2018-07-10 10:31 | 2018-07-10 12:31 | 94 | 2018-07-10 10:31 | 2018-07-10 12:31 | 2h | 107.47d | 0d | TEAM_2Shift_Calendar-1 | Helper; Fitter | 4h | 237.5 | 237.5 |
| 96 | 4.3.3.4 | Ribs Marking | 2h | 2018-07-10 12:31 | 2018-07-10 14:31 | 95 | 2018-07-10 12:31 | 2018-07-10 14:31 | 2h | 107.47d |  | TEAM_2Shift_Calendar-1 | Helper; Fitter | 4h | 237.5 | 237.5 |
| 97 | 4.3.4 | **Top Sadlle Plate Cutting** | 2.38d | 2018-07-07 08:31 | 2018-07-09 11:31 |  | 2018-07-07 08:31 | 2018-07-09 11:31 | 2.38d | 105.22d |  | TEAM_2Shift_Calendar-1 |  | 31h | 2,095.62 | 2,095.62 |
| 98 | 4.3.4.1 | Base Cutting | 2.5h | 2018-07-07 08:31 | 2018-07-07 11:01 | 53 | 2018-07-07 08:31 | 2018-07-07 11:01 | 2.5h | 105.28d | 0.06d | TEAM_2Shift_Calendar-1 | Helper; Gas Cutter | 5h | 296.88 | 296.88 |
| 99 | 4.3.4.2 | Web Pl Cutting | 3h | 2018-07-07 08:31 | 2018-07-07 11:31 | 53 | 2018-07-07 08:31 | 2018-07-07 11:31 | 3h | 105.22d | 0d | TEAM_2Shift_Calendar-1 | Helper; Gas Cutter | 6h | 356.25 | 356.25 |
| 100 | 4.3.4.3 | Ribs Cutting | 2h | 2018-07-07 08:31 | 2018-07-07 10:31 | 53 | 2018-07-07 08:31 | 2018-07-07 10:31 | 2h | 109.97d | 0.12d | TEAM_2Shift_Calendar-1 | Helper; Gas Cutter | 4h | 237.5 | 237.5 |
| 101 | 4.3.4.4 | Grinnding Of Above | 0.5d | 2018-07-07 11:31 | 2018-07-07 15:31 | 98, 99, 100 | 2018-07-07 11:31 | 2018-07-07 15:31 | 0.5d | 109.84d | 0d | TEAM_2Shift_Calendar-1 | Grinder [200%] | 8h | 450 | 450 |
| 102 | 4.3.4.5 | Drilling | 4h | 2018-07-07 15:31 | 2018-07-07 19:31 | 101 | 2018-07-07 15:31 | 2018-07-07 19:31 | 4h | 109.84d | 0d | TEAM_2Shift_Calendar-1 | Driller | 4h | 275 | 275 |
| 103 | 4.3.4.6 | Milling | 8h | 2018-07-07 19:31 | 2018-07-09 11:31 | 102 | 2018-07-07 19:31 | 2018-07-09 11:31 | 8h | 109.84d |  | TEAM_2Shift_Calendar-1 | Milling Operator [50%] | 4h | 480 | 480 |
| 104 | 4.3.5 | **Saddle Fit Up & Welding** | 6.62d | 2018-07-07 11:31 | 2018-07-11 16:31 |  | 2018-07-07 11:31 | 2018-07-11 16:31 | 6.62d | 105.22d |  | TEAM_2Shift_Calendar-1 |  | 150h | 9,318.75 | 9,318.75 |
| 105 | 4.3.5.1 | Base + Web Fit Up | 12h | 2018-07-07 11:31 | 2018-07-09 07:31 | 98, 99 | 2018-07-07 11:31 | 2018-07-09 07:31 | 12h | 105.22d | 0d | TEAM_2Shift_Calendar-1 | Helper [200%]; SMAW Welder; Fitter | 36h | 2,250 | 2,250 |
| 106 | 4.3.5.2 | Base + Web Welding | 9h | 2018-07-09 07:31 | 2018-07-09 16:31 | 105 | 2018-07-09 07:31 | 2018-07-09 16:31 | 9h | 105.22d | 0d | TEAM_2Shift_Calendar-1 | Helper; SMAW Welder | 18h | 1,068.75 | 1,068.75 |
| 107 | 4.3.5.3 | Ribs+Web Fit Up | 16h | 2018-07-09 16:31 | 2018-07-10 16:31 | 106 | 2018-07-09 16:31 | 2018-07-10 16:31 | 16h | 105.22d | 0d | TEAM_2Shift_Calendar-1 | Helper [200%]; SMAW Welder; Fitter | 48h | 3,000 | 3,000 |
| 108 | 4.3.5.4 | Ribs+Web Welding | 16h | 2018-07-10 16:31 | 2018-07-11 16:31 | 107 | 2018-07-10 16:31 | 2018-07-11 16:31 | 16h | 105.22d |  | TEAM_2Shift_Calendar-1 | Helper [200%]; SMAW Welder [200%] | 48h | 3,000 | 3,000 |

| ID | WBS | Task | Duration | Start | Finish | Predecessors | Baseline start | Baseline finish | Baseline duration | Total slack | Free slack | Calendar | Resources | Work | Cost | Baseline cost |
| --- | --- | --- | --- | --- | --- | --- | --- | --- | --- | --- | --- | --- | --- | --- | --- | --- |
| 109 | 4.3.6 | **Davit Pipe Fabrication** | 5.88d | 2018-07-13 08:31 | 2018-07-18 07:31 |  | 2018-07-13 08:31 | 2018-07-18 07:31 | 5.88d | 96.34d |  | TEAM_2Shift_Calendar-1 |  | 171h | 8,956.25 | 8,956.25 |
| 110 | 4.3.6.1 | Pipe Transfere | 4d | 2018-07-13 08:31 | 2018-07-17 08:31 | 47 | 2018-07-13 08:31 | 2018-07-17 08:31 | 4d | 96.34d | 0d | TEAM_2Shift_Calendar-1 | Pipe (Cost) [0.1%]; Helper [400%] | 128h | 6,400 | 6,400 |
| 111 | 4.3.6.2 | Pipe Marking - 4 Nos | 3h | 2018-07-17 08:31 | 2018-07-17 11:31 | 110 | 2018-07-17 08:31 | 2018-07-17 11:31 | 3h | 96.34d | 0d | TEAM_2Shift_Calendar-1 | Helper; Fitter | 6h | 356.25 | 356.25 |
| 112 | 4.3.6.3 | Support Pl Marking | 2h | 2018-07-13 08:31 | 2018-07-13 10:31 | 47 | 2018-07-13 08:31 | 2018-07-13 10:31 | 2h | 101.72d | 0d | TEAM_2Shift_Calendar-1 | Helper; Fitter | 4h | 237.5 | 237.5 |
| 113 | 4.3.6.4 | Gusset Pl Marking | 2h | 2018-07-13 08:31 | 2018-07-13 10:31 | 47 | 2018-07-13 08:31 | 2018-07-13 10:31 | 2h | 101.97d |  | TEAM_2Shift_Calendar-1 | Helper; Fitter | 4h | 237.5 | 237.5 |
| 114 | 4.3.6.5 | Base Hub Marking | 1h | 2018-07-13 08:31 | 2018-07-13 09:31 | 47 | 2018-07-13 08:31 | 2018-07-13 09:31 | 1h | 102.09d |  | TEAM_2Shift_Calendar-1 | Helper; Fitter | 2h | 118.75 | 118.75 |
| 115 | 4.3.6.6 | Pipe Cutting - 6 Nos | 3h | 2018-07-17 11:31 | 2018-07-17 14:31 | 111 | 2018-07-17 11:31 | 2018-07-17 14:31 | 3h | 96.34d | 0d | TEAM_2Shift_Calendar-1 | Helper; Gas Cutter | 6h | 356.25 | 356.25 |
| 116 | 4.3.6.7 | Support Pl Cutting | 2h | 2018-07-13 10:31 | 2018-07-13 12:31 | 112 | 2018-07-13 10:31 | 2018-07-13 12:31 | 2h | 101.72d |  | TEAM_2Shift_Calendar-1 | Helper; Gas Cutter | 4h | 237.5 | 237.5 |
| 117 | 4.3.6.8 | Pipe Grinding - 6 Nos | 3h | 2018-07-17 14:31 | 2018-07-17 17:31 | 115 | 2018-07-17 14:31 | 2018-07-17 17:31 | 3h | 96.34d | 0d | TEAM_2Shift_Calendar-1 | Helper; Fitter | 6h | 356.25 | 356.25 |
| 118 | 4.3.6.9 | Support Pl Grinding-10 Nos | 1h | 2018-07-17 17:31 | 2018-07-17 18:31 | 117 | 2018-07-17 17:31 | 2018-07-17 18:31 | 1h | 96.34d | 0d | TEAM_2Shift_Calendar-1 | Grinder | 1h | 56.25 | 56.25 |
| 119 | 4.3.6.10 | Pivot Pl Grinding | 1h | 2018-07-17 18:31 | 2018-07-17 19:31 | 118 | 2018-07-17 18:31 | 2018-07-17 19:31 | 1h | 96.34d | 0d | TEAM_2Shift_Calendar-1 | Grinder | 1h | 56.25 | 56.25 |
| 120 | 4.3.6.11 | Pipe Fit Up-2 Nos | 1h | 2018-07-17 19:31 | 2018-07-17 20:31 | 119 | 2018-07-17 19:31 | 2018-07-17 20:31 | 1h | 96.34d | 0d | TEAM_2Shift_Calendar-1 | Helper; SMAW Welder; Fitter | 3h | 187.5 | 187.5 |
| 121 | 4.3.6.12 | Pipe Welding -2 Nos | 1h | 2018-07-17 20:31 | 2018-07-17 21:31 | 120 | 2018-07-17 20:31 | 2018-07-17 21:31 | 1h | 96.34d | 0d | TEAM_2Shift_Calendar-1 | Helper; SMAW Welder | 2h | 118.75 | 118.75 |
| 122 | 4.3.6.13 | Pivot Pl Welding | 1h | 2018-07-17 21:31 | 2018-07-18 06:31 | 121 | 2018-07-17 21:31 | 2018-07-18 06:31 | 1h | 96.34d | 0d | TEAM_2Shift_Calendar-1 | Helper; SMAW Welder | 2h | 118.75 | 118.75 |
| 123 | 4.3.6.14 | Support Pl Welding -2 Nos | 1h | 2018-07-18 06:31 | 2018-07-18 07:31 | 122 | 2018-07-18 06:31 | 2018-07-18 07:31 | 1h | 96.34d |  | TEAM_2Shift_Calendar-1 | Helper; Fitter | 2h | 118.75 | 118.75 |
| 124 | 4.3.7 | **Lifting Lug Pad** | 4.88d | 2018-07-31 08:46 | 2018-08-02 15:46 |  | 2018-07-31 08:46 | 2018-08-02 15:46 | 4.88d | 71.31d |  | TEAM_2Shift_Calendar-1 |  | 14h | 806.25 | 806.25 |
| 125 | 4.3.7.1 | Plate Issuence | 4d | 2018-07-31 08:46 | 2018-08-02 08:46 | 46 | 2018-07-31 08:46 | 2018-08-02 08:46 | 4d | 71.31d | 0d | TEAM_2Shift_Calendar-1 |  |  |  |  |
| 126 | 4.3.7.2 | Lifting Lug Pad Marking | 3h | 2018-08-02 08:46 | 2018-08-02 11:46 | 125 | 2018-08-02 08:46 | 2018-08-02 11:46 | 3h | 71.31d | 0d | TEAM_2Shift_Calendar-1 | Helper; Fitter | 6h | 356.25 | 356.25 |
| 127 | 4.3.7.3 | Lifting Lug Pad Cutting | 2h | 2018-08-02 11:46 | 2018-08-02 13:46 | 126 | 2018-08-02 11:46 | 2018-08-02 13:46 | 2h | 71.31d | 0d | TEAM_2Shift_Calendar-1 | Helper; Gas Cutter | 4h | 237.5 | 237.5 |
| 128 | 4.3.7.4 | Lifting Lugs Pad Grinding | 2h | 2018-08-02 13:46 | 2018-08-02 15:46 | 127 | 2018-08-02 13:46 | 2018-08-02 15:46 | 2h | 71.31d |  | TEAM_2Shift_Calendar-1 | Helper; Grinder | 4h | 212.5 | 212.5 |
| 129 | 4.3.8 | **Lifting Lug Preparation** | 4.75d | 2018-07-31 08:46 | 2018-08-02 14:46 |  | 2018-07-31 08:46 | 2018-08-02 14:46 | 4.75d | 71.44d |  | TEAM_2Shift_Calendar-1 |  | 76h | 4,487.5 | 4,487.5 |
| 130 | 4.3.8.1 | Lifting Lugs Marking | 4d | 2018-07-31 08:46 | 2018-08-02 08:46 | 46 | 2018-07-31 08:46 | 2018-08-02 08:46 | 4d | 71.44d | 0d | TEAM_2Shift_Calendar-1 | Helper; Fitter | 64h | 3,800 | 3,800 |
| 131 | 4.3.8.2 | Lifting Lugs Cutting | 2h | 2018-08-02 08:46 | 2018-08-02 10:46 | 130 | 2018-08-02 08:46 | 2018-08-02 10:46 | 2h | 71.44d | 0d | TEAM_2Shift_Calendar-1 | Helper; Gas Cutter | 4h | 237.5 | 237.5 |
| 132 | 4.3.8.3 | Lifting Lugs Grinding | 2h | 2018-08-02 10:46 | 2018-08-02 12:46 | 131 | 2018-08-02 10:46 | 2018-08-02 12:46 | 2h | 71.44d | 0d | TEAM_2Shift_Calendar-1 | Helper; Grinder | 4h | 212.5 | 212.5 |
| 133 | 4.3.8.4 | Lifting Lug Drilling | 2h | 2018-08-02 12:46 | 2018-08-02 14:46 | 132 | 2018-08-02 12:46 | 2018-08-02 14:46 | 2h | 71.44d |  | TEAM_2Shift_Calendar-1 | Helper; Fitter | 4h | 237.5 | 237.5 |

| ID | WBS | Task | Duration | Start | Finish | Predecessors | Baseline start | Baseline finish | Baseline duration | Total slack | Free slack | Calendar | Resources | Work | Cost | Baseline cost |
| --- | --- | --- | --- | --- | --- | --- | --- | --- | --- | --- | --- | --- | --- | --- | --- | --- |
| 134 | 4.3.9 | **Channel Cover Handle Prepataion** | 2d | 2018-07-07 08:31 | 2018-07-09 08:31 |  | 2018-07-07 08:31 | 2018-07-09 08:31 | 2d | 110.22d |  | TEAM_2Shift_Calendar-1 |  | 64h | 3,800 | 3,800 |
| 135 | 4.3.9.1 | Ch Cover Ring Forming | 2d | 2018-07-07 08:31 | 2018-07-09 08:31 | 52 | 2018-07-07 08:31 | 2018-07-09 08:31 | 2d | 110.22d |  | TEAM_2Shift_Calendar-1 | Helper; Fitter | 32h | 1,900 | 1,900 |
| 136 | 4.3.9.2 | Sliding Sling Forming | 2d | 2018-07-07 08:31 | 2018-07-09 08:31 | 52 | 2018-07-07 08:31 | 2018-07-09 08:31 | 2d | 110.22d |  | TEAM_2Shift_Calendar-1 | Helper; Fitter | 32h | 1,900 | 1,900 |
| 137 | 4.3.10 | **Baffle & Tb Items Fab** | 59.97d | 2018-06-04 17:01 | 2018-07-11 16:46 |  | 2018-05-17 17:01 | 2018-07-11 16:46 | 87.97d | 105.19d |  | TEAM_2Shift_Calendar-1 |  | 421h | 18,037.5 | 18,037.5 |
| 138 | 4.3.10.1 | **Baffle Preparation** | 1.88d | 2018-06-04 17:01 | 2018-06-05 16:01 |  | 2018-05-17 17:01 | 2018-05-18 16:01 | 1.88d | 152.53d |  | TEAM_2Shift_Calendar-1 |  | 19h | 475 | 475 |
| 139 | 4.3.10.1.1 | Baffle Plate Transfer | 8h | 2018-06-04 17:01 | 2018-06-05 09:01 | 43 | 2018-05-17 17:01 | 2018-05-18 09:01 | 8h | 152.53d | 0d | TEAM_2Shift_Calendar-1 | Store; Plate (Cost) [0.1%] | 8h |  |  |
| 140 | 4.3.10.1.2 | Baffle Marking | 4h | 2018-06-05 09:01 | 2018-06-05 13:01 | 139 | 2018-05-18 09:01 | 2018-05-18 13:01 | 4h | 152.53d | 0d | TEAM_2Shift_Calendar-1 | Helper; Fitter | 8h | 475 | 475 |
| 141 | 4.3.10.1.3 | Baffle Profile Cutting | 3h | 2018-06-05 13:01 | 2018-06-05 16:01 | 140 | 2018-05-18 13:01 | 2018-05-18 16:01 | 3h | 152.53d | 0d | TEAM_2Shift_Calendar-1 | SC (Work) | 3h |  |  |
| 142 | 4.3.10.2 | **Baffle Bend Removal & Stacking** | 1.72d | 2018-06-05 16:01 | 2018-06-06 13:46 |  | 2018-05-18 16:01 | 2018-05-19 13:46 | 1.72d | 152.53d |  | TEAM_2Shift_Calendar-1 |  | 27.5h | 1,632.81 | 1,632.81 |
| 143 | 4.3.10.2.1 | Baffle Pl Bend Removal | 13.5h | 2018-06-05 16:01 | 2018-06-06 13:31 | 141 | 2018-05-18 16:01 | 2018-05-19 13:31 | 13.5h | 152.53d | 0d | TEAM_2Shift_Calendar-1 | Helper [200%]; Fitter | 27h | 1,603.12 | 1,603.12 |
| 144 | 4.3.10.2.2 | Baffle Pl Stacking / 100 mm | 0.25h | 2018-06-06 13:31 | 2018-06-06 13:46 | 143 | 2018-05-19 13:31 | 2018-05-19 13:46 | 0.25h | 152.53d | 0d | TEAM_2Shift_Calendar-1 | Helper; Fitter | 0.5h | 29.69 | 29.69 |
| 145 | 4.3.10.3 | **Baffle Drilling** | 4d | 2018-06-06 13:46 | 2018-06-08 13:46 |  | 2018-05-19 13:46 | 2018-05-22 13:46 | 4d | 152.53d | 0d | TEAM_2Shift_Calendar-1 |  | 32h |  |  |
| 146 | 4.3.10.3.1 | Baffle Drilling | 4d | 2018-06-06 13:46 | 2018-06-08 13:46 | 144 | 2018-05-19 13:46 | 2018-05-22 13:46 | 4d | 152.53d | 0d | TEAM_2Shift_Calendar-1 | SC (Work) | 32h |  |  |
| 147 | 4.3.10.4 | **Baffle De Stacking & Chamfering** | 1.75d | 2018-06-08 13:46 | 2018-06-11 11:46 |  | 2018-05-22 13:46 | 2018-05-23 11:46 | 1.75d | 152.53d |  | TEAM_2Shift_Calendar-1 |  | 32h | 2,031.25 | 2,031.25 |
| 148 | 4.3.10.4.1 | Baffle De Stacing | 9h | 2018-06-08 13:46 | 2018-06-11 06:46 | 145 | 2018-05-22 13:46 | 2018-05-23 06:46 | 9h | 156.44d |  | TEAM_2Shift_Calendar-1 | Helper; Fitter | 18h | 1,068.75 | 1,068.75 |
| 149 | 4.3.10.4.2 | Baffle Chamfering | 14h | 2018-06-08 13:46 | 2018-06-11 11:46 | 146 | 2018-05-22 13:46 | 2018-05-23 11:46 | 14h | 152.53d | 0d | TEAM_2Shift_Calendar-1 | Fitter | 14h | 962.5 | 962.5 |
| 150 | 4.3.10.5 | **Baffle Stacking & Thro Hole Check** | 3.28d | 2018-06-11 11:46 | 2018-06-13 06:01 |  | 2018-05-23 11:46 | 2018-05-25 06:01 | 3.28d | 152.53d |  | TEAM_2Shift_Calendar-1 |  | 38.5h | 1,192.19 | 1,192.19 |
| 151 | 4.3.10.5.1 | Stacking | 4.25h | 2018-06-11 11:46 | 2018-06-11 16:01 | 149 | 2018-05-23 11:46 | 2018-05-23 16:01 | 4.25h | 152.53d | 0d | TEAM_2Shift_Calendar-1 | Helper; Fitter | 8.5h | 504.69 | 504.69 |
| 152 | 4.3.10.5.2 | Baffle Hole Alingment | 2h | 2018-06-11 16:01 | 2018-06-11 18:01 | 151 | 2018-05-23 16:01 | 2018-05-23 18:01 | 2h | 152.53d | 0d | TEAM_2Shift_Calendar-1 | Helper; Fitter | 4h | 237.5 | 237.5 |
| 153 | 4.3.10.5.3 | Baffle Hole Re Drill | 14h | 2018-06-11 18:01 | 2018-06-12 16:01 | 152 | 2018-05-23 18:01 | 2018-05-24 16:01 | 14h | 152.53d | 0d | TEAM_2Shift_Calendar-1 | SC (Work) | 14h |  |  |
| 154 | 4.3.10.5.4 | Baffle Od Machining | 3h | 2018-06-12 16:01 | 2018-06-12 19:01 | 153 | 2018-05-24 16:01 | 2018-05-24 19:01 | 3h | 152.53d | 0d | TEAM_2Shift_Calendar-1 | SC (Work) | 3h |  |  |
| 155 | 4.3.10.5.5 | Baffle Cleaning | 3h | 2018-06-12 19:01 | 2018-06-13 06:01 | 154 | 2018-05-24 19:01 | 2018-05-25 06:01 | 3h | 152.53d |  | TEAM_2Shift_Calendar-1 | Helper [300%] | 9h | 450 | 450 |
| 156 | 4.3.10.6 | **Support Plate Marking** | 2.75d | 2018-06-04 17:01 | 2018-06-06 07:01 |  | 2018-05-17 17:01 | 2018-05-19 07:01 | 2.75d | 160.16d |  | TEAM_2Shift_Calendar-1 |  | 22h |  |  |
| 157 | 4.3.10.6.1 | Support Plate Transfer | 0.5d | 2018-06-04 17:01 | 2018-06-04 21:01 | 43 | 2018-05-17 17:01 | 2018-05-17 21:01 | 0.5d | 160.16d | 0d | TEAM_2Shift_Calendar-1 | Store; Plate (Cost) [0.1%] | 4h |  |  |
| 158 | 4.3.10.6.2 | Support Marking | 2h | 2018-06-04 21:01 | 2018-06-05 07:01 | 157 | 2018-05-17 21:01 | 2018-05-18 07:01 | 2h | 160.16d | 0d | TEAM_2Shift_Calendar-1 | SC (Work) | 2h |  |  |
| 159 | 4.3.10.6.3 | Support Profile Cutting | 2d | 2018-06-05 07:01 | 2018-06-06 07:01 | 158 | 2018-05-18 07:01 | 2018-05-19 07:01 | 2d | 160.16d | 0d | TEAM_2Shift_Calendar-1 | SC (Work) | 16h |  |  |

| ID | WBS | Task | Duration | Start | Finish | Predecessors | Baseline start | Baseline finish | Baseline duration | Total slack | Free slack | Calendar | Resources | Work | Cost | Baseline cost |
| --- | --- | --- | --- | --- | --- | --- | --- | --- | --- | --- | --- | --- | --- | --- | --- | --- |
| 160 | 4.3.10.7 | **Support Plate Bend Removal** | 0.5d | 2018-06-06 07:01 | 2018-06-06 11:01 |  | 2018-05-19 07:01 | 2018-05-19 11:01 | 0.5d | 160.16d |  | TEAM_2Shift_Calendar-1 |  | 8h | 475 | 475 |
| 161 | 4.3.10.7.1 | Support Pl Bend Removal | 4h | 2018-06-06 07:01 | 2018-06-06 11:01 | 159 | 2018-05-19 07:01 | 2018-05-19 11:01 | 4h | 160.16d | 0d | TEAM_2Shift_Calendar-1 | Helper [300%]; Fitter | 8h | 475 | 475 |
| 162 | 4.3.10.8 | **Support Plate Drlinng** | 1.25d | 2018-06-06 11:01 | 2018-06-06 21:01 |  | 2018-05-19 11:01 | 2018-05-19 21:01 | 1.25d | 160.16d |  | TEAM_2Shift_Calendar-1 |  | 10h |  |  |
| 163 | 4.3.10.8.1 | Support Drilling | 10h | 2018-06-06 11:01 | 2018-06-06 21:01 | 161 | 2018-05-19 11:01 | 2018-05-19 21:01 | 10h | 160.16d | 0d | TEAM_2Shift_Calendar-1 | SC (Work) | 10h |  |  |
| 164 | 4.3.10.9 | Support Hole Chamfering | 4h | 2018-06-06 21:01 | 2018-06-07 09:01 | 163 | 2018-05-19 21:01 | 2018-05-21 09:01 | 4h | 160.16d |  | TEAM_2Shift_Calendar-1 | Fitter | 4h | 275 | 275 |
| 165 | 4.3.10.10 | **Tie Rod Preparation** | 5d | 2018-07-09 08:46 | 2018-07-11 16:46 |  | 2018-07-09 08:46 | 2018-07-11 16:46 | 5d | 105.19d |  | TEAM_2Shift_Calendar-1 |  | 48h | 1,160 | 1,160 |
| 166 | 4.3.10.10.1 | Tie Rod Matl Transfere | 4d | 2018-07-09 08:46 | 2018-07-11 08:46 | 50 | 2018-07-09 08:46 | 2018-07-11 08:46 | 4d | 105.19d | 0d | TEAM_2Shift_Calendar-1 | Store; Rod (Cost) [0.1%] | 32h |  |  |
| 167 | 4.3.10.10.2 | Rod Cutting | 2h | 2018-07-11 08:46 | 2018-07-11 10:46 | 166 | 2018-07-11 08:46 | 2018-07-11 10:46 | 2h | 105.19d | 0d | TEAM_2Shift_Calendar-1 | Helper; Fitter | 4h | 237.5 | 237.5 |
| 168 | 4.3.10.10.3 | Thread Machining. | 3h | 2018-07-11 10:46 | 2018-07-11 13:46 | 167 | 2018-07-11 10:46 | 2018-07-11 13:46 | 3h | 105.19d | 0d | TEAM_2Shift_Calendar-1 | Lathe Operator | 3h | 360 | 360 |
| 169 | 4.3.10.10.4 | Joining | 3h | 2018-07-11 13:46 | 2018-07-11 16:46 | 168 | 2018-07-11 13:46 | 2018-07-11 16:46 | 3h | 105.19d |  | TEAM_2Shift_Calendar-1 | Fitter; Helper; SMAW Welder | 9h | 562.5 | 562.5 |
| 170 | 4.3.10.11 | **Spacer Tube Preparation** | 2.38d | 2018-06-06 08:31 | 2018-06-07 11:31 |  | 2018-06-06 08:31 | 2018-06-07 11:31 | 2.38d | 159.84d |  | TEAM_2Shift_Calendar-1 |  | 28h | 1,821.25 | 1,821.25 |
| 171 | 4.3.10.11.1 | Spacer Tube Transfere | 4h | 2018-06-06 08:31 | 2018-06-06 12:31 | 49 | 2018-06-06 08:31 | 2018-06-06 12:31 | 4h | 159.84d | 0d | TEAM_2Shift_Calendar-1 | Tube (Cost) [0.1%]; Store | 4h |  |  |
| 172 | 4.3.10.11.2 | Length Cutting 237Nos | 7h | 2018-06-06 12:31 | 2018-06-06 19:31 | 171 | 2018-06-06 12:31 | 2018-06-06 19:31 | 7h | 159.84d | 0d | TEAM_2Shift_Calendar-1 | Helper; Fitter | 14h | 831.25 | 831.25 |
| 173 | 4.3.10.11.3 | Lenngth Machining | 7h | 2018-06-06 19:31 | 2018-06-07 10:31 | 172 | 2018-06-06 19:31 | 2018-06-07 10:31 | 7h | 159.84d | 0d | TEAM_2Shift_Calendar-1 | Lathe Operator | 7h | 840 | 840 |
| 174 | 4.3.10.11.4 | Cleaninng | 1h | 2018-06-07 10:31 | 2018-06-07 11:31 | 173 | 2018-06-07 10:31 | 2018-06-07 11:31 | 1h | 159.84d |  | TEAM_2Shift_Calendar-1 | Helper [300%] | 3h | 150 | 150 |
| 175 | 4.3.10.12 | **Sealing Strip Preparation** | 5.75d | 2018-06-04 17:01 | 2018-06-07 15:01 |  | 2018-05-17 17:01 | 2018-05-21 15:01 | 5.75d | 159.41d |  | TEAM_2Shift_Calendar-1 |  | 76h | 4,487.5 | 4,487.5 |
| 176 | 4.3.10.12.1 | Sealing Strip Marking | 1h | 2018-06-04 17:01 | 2018-06-04 18:01 | 44 | 2018-05-17 17:01 | 2018-05-17 18:01 | 1h | 159.41d | 0d | TEAM_2Shift_Calendar-1 | Helper; Plate (Cost) [0.1%]; Fitter | 2h | 118.75 | 118.75 |
| 177 | 4.3.10.12.2 | Sealing Strip Cutting | 3h | 2018-06-04 18:01 | 2018-06-04 21:01 | 176 | 2018-05-17 18:01 | 2018-05-17 21:01 | 3h | 159.41d | 0d | TEAM_2Shift_Calendar-1 | Helper; Gas Cutter | 6h | 356.25 | 356.25 |
| 178 | 4.3.10.12.3 | Sealing Strip Bend Removal | 18h | 2018-06-04 21:01 | 2018-06-06 07:01 | 177 | 2018-05-17 21:01 | 2018-05-19 07:01 | 18h | 159.41d | 0d | TEAM_2Shift_Calendar-1 | Helper [200%]; Fitter | 36h | 2,137.5 | 2,137.5 |
| 179 | 4.3.10.12.4 | Sealing Strip Grinding | 16h | 2018-06-06 07:01 | 2018-06-07 07:01 | 178 | 2018-05-19 07:01 | 2018-05-21 07:01 | 16h | 159.41d | 0d | TEAM_2Shift_Calendar-1 | Grinder | 16h | 900 | 900 |
| 180 | 4.3.10.12.5 | Sealing Strip Joining | 4h | 2018-06-07 07:01 | 2018-06-07 11:01 | 179 | 2018-05-21 07:01 | 2018-05-21 11:01 | 4h | 159.41d | 0d | TEAM_2Shift_Calendar-1 | Fitter; Helper; SMAW Welder | 12h | 750 | 750 |
| 181 | 4.3.10.12.6 | Sealing Strip Dress Up | 4h | 2018-06-07 11:01 | 2018-06-07 15:01 | 180 | 2018-05-21 11:01 | 2018-05-21 15:01 | 4h | 159.41d |  | TEAM_2Shift_Calendar-1 | Grinder | 4h | 225 | 225 |
| 182 | 4.3.10.13 | **Sliding Strip Preparation** | 5.75d | 2018-06-04 17:01 | 2018-06-07 15:01 |  | 2018-05-17 17:01 | 2018-05-21 15:01 | 5.75d | 159.41d |  | TEAM_2Shift_Calendar-1 |  | 76h | 4,487.5 | 4,487.5 |
| 183 | 4.3.10.13.1 | Sliding Strip Marking | 1h | 2018-06-04 17:01 | 2018-06-04 18:01 | 45 | 2018-05-17 17:01 | 2018-05-17 18:01 | 1h | 159.41d | 0d | TEAM_2Shift_Calendar-1 | Helper; Fitter | 2h | 118.75 | 118.75 |
| 184 | 4.3.10.13.2 | Sliding Strip Cutting | 3h | 2018-06-04 18:01 | 2018-06-04 21:01 | 183 | 2018-05-17 18:01 | 2018-05-17 21:01 | 3h | 159.41d | 0d | TEAM_2Shift_Calendar-1 | Helper; Gas Cutter | 6h | 356.25 | 356.25 |
| 185 | 4.3.10.13.3 | Sliding Strip Bend Removal | 18h | 2018-06-04 21:01 | 2018-06-06 07:01 | 184 | 2018-05-17 21:01 | 2018-05-19 07:01 | 18h | 159.41d | 0d | TEAM_2Shift_Calendar-1 | Helper [200%]; Fitter | 36h | 2,137.5 | 2,137.5 |
| 186 | 4.3.10.13.4 | Sliding Strip Grinding | 16h | 2018-06-06 07:01 | 2018-06-07 07:01 | 185 | 2018-05-19 07:01 | 2018-05-21 07:01 | 16h | 159.41d | 0d | TEAM_2Shift_Calendar-1 | Grinder | 16h | 900 | 900 |
| 187 | 4.3.10.13.5 | Sliding Strip Joining | 4h | 2018-06-07 07:01 | 2018-06-07 11:01 | 186 | 2018-05-21 07:01 | 2018-05-21 11:01 | 4h | 159.41d | 0d | TEAM_2Shift_Calendar-1 | Fitter; Helper; SMAW Welder | 12h | 750 | 750 |
| 188 | 4.3.10.13.6 | Sliding Strip Dress Up | 4h | 2018-06-07 11:01 | 2018-06-07 15:01 | 187 | 2018-05-21 11:01 | 2018-05-21 15:01 | 4h | 159.41d |  | TEAM_2Shift_Calendar-1 | Grinder | 4h | 225 | 225 |

| ID | WBS | Task | Duration | Start | Finish | Predecessors | Baseline start | Baseline finish | Baseline duration | Total slack | Free slack | Calendar | Resources | Work | Cost | Baseline cost |
| --- | --- | --- | --- | --- | --- | --- | --- | --- | --- | --- | --- | --- | --- | --- | --- | --- |
| 189 | 4.3.11 | **Nozzle Fabrication with Flange** | 4.4d | 2018-07-13 08:31 | 2018-07-17 11:41 |  | 2018-07-13 08:31 | 2018-07-17 11:41 | 4.4d | 97.82d |  | TEAM_2Shift_Calendar-1 |  | 103.67h | 5,455.44 | 5,455.44 |
| 190 | 4.3.11.1 | **PIPE MARKING - 6" 4 NOS** | 2.4d | 2018-07-13 08:31 | 2018-07-17 11:41 |  | 2018-07-13 08:31 | 2018-07-17 11:41 | 2.4d | 48.82d |  |  |  | 46.67h | 2,417.94 | 2,417.94 |
| 191 | 4.3.11.1.1 | PIPE MARKING - 6" 4 NOS | 3h | 2018-07-13 08:31 | 2018-07-13 11:31 | 47 | 2018-07-13 08:31 | 2018-07-13 11:31 | 3h | 97.82d | 0d | TEAM_2Shift_Calendar-1 | Helper; Forging Std (Cost) [0.1%]; Pipe (Cost) [0.1%]; Fitter | 6h | 356.25 | 356.25 |
| 192 | 4.3.11.1.2 | CUTTING | 3h | 2018-07-13 11:31 | 2018-07-13 14:31 | 191 | 2018-07-13 11:31 | 2018-07-13 14:31 | 3h | 97.82d | 0d | TEAM_2Shift_Calendar-1 | Gas Cutter | 3h | 206.25 | 206.25 |
| 193 | 4.3.11.1.3 | EDGE PREPARATION | 4h | 2018-07-13 14:31 | 2018-07-13 18:31 | 192 | 2018-07-13 14:31 | 2018-07-13 18:31 | 4h | 97.82d | 0d | TEAM_2Shift_Calendar-1 | Grinder | 4h | 225 | 225 |
| 194 | 4.3.11.1.4 | NOZZLE FIT UP FLANGE | 4h | 2018-07-13 18:31 | 2018-07-16 06:31 | 193 | 2018-07-13 18:31 | 2018-07-16 06:31 | 4h | 97.82d | 0d | TEAM_2Shift_Calendar-1 | SMAW Welder; Fitter | 8h | 550 | 550 |
| 195 | 4.3.11.1.5 | WELDING | 3h | 2018-07-16 06:31 | 2018-07-16 09:31 | 194 | 2018-07-16 06:31 | 2018-07-16 09:31 | 3h | 97.82d | 0d | TEAM_2Shift_Calendar-1 | SMAW Welder; Helper | 6h | 356.25 | 356.25 |
| 196 | 4.3.11.1.6 | DP | 40.2min | 2018-07-16 09:31 | 2018-07-16 10:11 | 195 | 2018-07-16 09:31 | 2018-07-16 10:11 | 40.2min | 97.82d | 0d | TEAM_2Shift_Calendar-1 | Fitter | 0.67h | 46.06 | 46.06 |
| 197 | 4.3.11.1.7 | RT | 1d | 2018-07-16 10:11 | 2018-07-16 18:11 | 196 | 2018-07-16 10:11 | 2018-07-16 18:11 | 1d | 97.82d | 0d | TEAM_2Shift_Calendar-1 | SC (Work) | 8h |  |  |
| 198 | 4.3.11.1.8 | PROFILE MARKING | 1.5h | 2018-07-16 18:11 | 2018-07-16 19:41 | 197 | 2018-07-16 18:11 | 2018-07-16 19:41 | 1.5h | 97.82d | 0d | TEAM_2Shift_Calendar-1 | Helper; Fitter | 3h | 178.12 | 178.12 |
| 199 | 4.3.11.1.9 | CUTTING | 4h | 2018-07-16 19:41 | 2018-07-17 07:41 | 198 | 2018-07-16 19:41 | 2018-07-17 07:41 | 4h | 97.82d | 0d | TEAM_2Shift_Calendar-1 | Gas Cutter | 4h | 275 | 275 |
| 200 | 4.3.11.1.10 | Profile Grinding | 4h | 2018-07-17 07:41 | 2018-07-17 11:41 | 199 | 2018-07-17 07:41 | 2018-07-17 11:41 | 4h | 97.82d |  | TEAM_2Shift_Calendar-1 | Grinder | 4h | 225 | 225 |
| 201 | 4.3.11.2 | **PIPE MARKING - 2" 4 NOS** | 2d | 2018-07-13 08:31 | 2018-07-16 21:11 |  | 2018-07-13 08:31 | 2018-07-16 21:11 | 2d | 49.22d |  |  |  | 38.67h | 1,946.07 | 1,946.07 |
| 202 | 4.3.11.2.1 | PIPE MARKING - 2" 4 NOS | 2h | 2018-07-13 08:31 | 2018-07-13 10:31 | 47 | 2018-07-13 08:31 | 2018-07-13 10:31 | 2h | 98.64d | 0d | TEAM_2Shift_Calendar-1 | Helper; Fitter | 4h | 237.5 | 237.5 |
| 203 | 4.3.11.2.2 | CUTTING | 2h | 2018-07-13 10:31 | 2018-07-13 12:31 | 202 | 2018-07-13 10:31 | 2018-07-13 12:31 | 2h | 98.64d | 0d | TEAM_2Shift_Calendar-1 | Gas Cutter | 2h | 137.5 | 137.5 |
| 204 | 4.3.11.2.3 | EDGE PREPARATION | 2h | 2018-07-13 12:31 | 2018-07-13 14:31 | 203 | 2018-07-13 12:31 | 2018-07-13 14:31 | 2h | 98.64d | 0d | TEAM_2Shift_Calendar-1 | Grinder | 2h | 112.5 | 112.5 |
| 205 | 4.3.11.2.4 | NOZZLE FIT UP FLANGE | 4h | 2018-07-13 14:31 | 2018-07-13 18:31 | 204 | 2018-07-13 14:31 | 2018-07-13 18:31 | 4h | 98.64d | 0d | TEAM_2Shift_Calendar-1 | SMAW Welder; Fitter | 8h | 550 | 550 |
| 206 | 4.3.11.2.5 | WELDING | 2.5h | 2018-07-13 18:31 | 2018-07-13 21:01 | 205 | 2018-07-13 18:31 | 2018-07-13 21:01 | 2.5h | 98.64d | 0d | TEAM_2Shift_Calendar-1 | SMAW Welder; Helper | 5h | 296.88 | 296.88 |
| 207 | 4.3.11.2.6 | DP | 40.2min | 2018-07-13 21:01 | 2018-07-13 21:41 | 206 | 2018-07-13 21:01 | 2018-07-13 21:41 | 40.2min | 98.64d | 0d | TEAM_2Shift_Calendar-1 | Fitter | 0.67h | 46.06 | 46.06 |
| 208 | 4.3.11.2.7 | RT | 1d | 2018-07-13 21:41 | 2018-07-16 13:41 | 207 | 2018-07-13 21:41 | 2018-07-16 13:41 | 1d | 98.64d | 0d | TEAM_2Shift_Calendar-1 | SC (Work) | 8h |  |  |
| 209 | 4.3.11.2.8 | PROFILE MARKING | 1.5h | 2018-07-16 13:41 | 2018-07-16 15:11 | 208 | 2018-07-16 13:41 | 2018-07-16 15:11 | 1.5h | 98.64d | 0d | TEAM_2Shift_Calendar-1 | Helper; Fitter | 3h | 178.12 | 178.12 |
| 210 | 4.3.11.2.9 | CUTTING | 4h | 2018-07-16 15:11 | 2018-07-16 19:11 | 209 | 2018-07-16 15:11 | 2018-07-16 19:11 | 4h | 98.64d | 0d | TEAM_2Shift_Calendar-1 | Gas Cutter | 4h | 275 | 275 |
| 211 | 4.3.11.2.10 | Profile Grinding | 2h | 2018-07-16 19:11 | 2018-07-16 21:11 | 210 | 2018-07-16 19:11 | 2018-07-16 21:11 | 2h | 98.64d |  | TEAM_2Shift_Calendar-1 | Grinder | 2h | 112.5 | 112.5 |
| 212 | 4.3.11.3 | **PIPE MARKING - 1.5 2 NOS** | 1d | 2018-07-13 08:31 | 2018-07-13 20:50 |  | 2018-07-13 08:31 | 2018-07-13 20:50 | 1d | 50.22d |  |  |  | 18.33h | 1,091.43 | 1,091.43 |
| 213 | 4.3.11.3.1 | PIPE MARKING - 1.5" 2 NOS | 1h | 2018-07-13 08:31 | 2018-07-13 09:31 | 47 | 2018-07-13 08:31 | 2018-07-13 09:31 | 1h | 100.68d | 0d | TEAM_2Shift_Calendar-1 | Helper; Fitter | 2h | 118.75 | 118.75 |
| 214 | 4.3.11.3.2 | CUTTING | 1h | 2018-07-13 09:31 | 2018-07-13 10:31 | 213 | 2018-07-13 09:31 | 2018-07-13 10:31 | 1h | 100.68d | 0d | TEAM_2Shift_Calendar-1 | Gas Cutter | 1h | 68.75 | 68.75 |
| 215 | 4.3.11.3.3 | EDGE PREPARATION | 1h | 2018-07-13 10:31 | 2018-07-13 11:31 | 214 | 2018-07-13 10:31 | 2018-07-13 11:31 | 1h | 100.68d | 0d | TEAM_2Shift_Calendar-1 | Grinder | 1h | 56.25 | 56.25 |
| 216 | 4.3.11.3.4 | NOZZLE FIT UP FLANGE | 2h | 2018-07-13 11:31 | 2018-07-13 13:31 | 215 | 2018-07-13 11:31 | 2018-07-13 13:31 | 2h | 100.68d | 0d | TEAM_2Shift_Calendar-1 | SMAW Welder; Fitter | 4h | 275 | 275 |
| 217 | 4.3.11.3.5 | WELDING | 1.5h | 2018-07-13 13:31 | 2018-07-13 15:01 | 216 | 2018-07-13 13:31 | 2018-07-13 15:01 | 1.5h | 100.68d | 0d | TEAM_2Shift_Calendar-1 | SMAW Welder; Helper | 3h | 178.12 | 178.12 |
| 218 | 4.3.11.3.6 | DP | 19.8min | 2018-07-13 15:01 | 2018-07-13 15:20 | 217 | 2018-07-13 15:01 | 2018-07-13 15:20 | 19.8min | 100.68d | 0d | TEAM_2Shift_Calendar-1 | Fitter | 0.33h | 22.69 | 22.69 |
| 219 | 4.3.11.3.7 | RT | 1h | 2018-07-13 15:20 | 2018-07-13 16:20 | 218 | 2018-07-13 15:20 | 2018-07-13 16:20 | 1h | 100.68d | 0d | TEAM_2Shift_Calendar-1 | SC (Work) | 1h |  |  |
| 220 | 4.3.11.3.8 | PROFILE MARKING | 1.5h | 2018-07-13 16:20 | 2018-07-13 17:50 | 219 | 2018-07-13 16:20 | 2018-07-13 17:50 | 1.5h | 100.68d | 0d | TEAM_2Shift_Calendar-1 | Helper; Fitter | 3h | 178.12 | 178.12 |
| 221 | 4.3.11.3.9 | CUTTING | 2h | 2018-07-13 17:50 | 2018-07-13 19:50 | 220 | 2018-07-13 17:50 | 2018-07-13 19:50 | 2h | 100.68d | 0d | TEAM_2Shift_Calendar-1 | Gas Cutter | 2h | 137.5 | 137.5 |
| 222 | 4.3.11.3.10 | Profile Grinding | 1h | 2018-07-13 19:50 | 2018-07-13 20:50 | 221 | 2018-07-13 19:50 | 2018-07-13 20:50 | 1h | 100.68d |  | TEAM_2Shift_Calendar-1 | Grinder | 1h | 56.25 | 56.25 |

| ID | WBS | Task | Duration | Start | Finish | Predecessors | Baseline start | Baseline finish | Baseline duration | Total slack | Free slack | Calendar | Resources | Work | Cost | Baseline cost |
| --- | --- | --- | --- | --- | --- | --- | --- | --- | --- | --- | --- | --- | --- | --- | --- | --- |
| 223 | 4.3.12 | **Nozzle RF Pad fabrication** | 1.05d | 2018-07-31 08:46 | 2018-07-31 17:10 |  | 2018-07-31 08:46 | 2018-07-31 17:10 | 1.05d | 75.03d |  | TEAM_2Shift_Calendar-1 |  | 15.28h | 685 | 685 |
| 224 | 4.3.12.1 | PLATE ISSUENCE | 4h | 2018-07-31 08:46 | 2018-07-31 12:46 | 46 | 2018-07-31 08:46 | 2018-07-31 12:46 | 4h | 75.03d | 0d | TEAM_2Shift_Calendar-1 | Fitter; Store; QC Engineer | 8.48h | 275 | 275 |
| 225 | 4.3.12.2 | PAD MARKING | 0.2h | 2018-07-31 12:46 | 2018-07-31 12:58 | 224 | 2018-07-31 12:46 | 2018-07-31 12:58 | 0.2h | 75.14d | 0d | TEAM_2Shift_Calendar-1 | Helper; Fitter | 0.4h | 23.75 | 23.75 |
| 226 | 4.3.12.3 | PAD CUTTING | 0.2h | 2018-07-31 12:58 | 2018-07-31 13:10 | 225 | 2018-07-31 12:58 | 2018-07-31 13:10 | 0.2h | 75.14d | 0d | TEAM_2Shift_Calendar-1 | Helper; Gas Cutter | 0.4h | 23.75 | 23.75 |
| 227 | 4.3.12.4 | PAD GRINDING | 1h | 2018-07-31 13:10 | 2018-07-31 14:10 | 226 | 2018-07-31 13:10 | 2018-07-31 14:10 | 1h | 75.14d | 0d | TEAM_2Shift_Calendar-1 | Grinder | 1h | 56.25 | 56.25 |
| 228 | 4.3.12.5 | Profile Marking | 1h | 2018-07-31 14:10 | 2018-07-31 15:10 | 227 | 2018-07-31 14:10 | 2018-07-31 15:10 | 1h | 75.14d | 0d | TEAM_2Shift_Calendar-1 | Helper; Fitter | 2h | 118.75 | 118.75 |
| 229 | 4.3.12.6 | Profile Forming | 1h | 2018-07-31 15:10 | 2018-07-31 16:10 | 228 | 2018-07-31 15:10 | 2018-07-31 16:10 | 1h | 75.14d | 0d | TEAM_2Shift_Calendar-1 | Helper; Fitter | 2h | 118.75 | 118.75 |
| 230 | 4.3.12.7 | Vent hole drilling and tapping | 1h | 2018-07-31 16:10 | 2018-07-31 17:10 | 229 | 2018-07-31 16:10 | 2018-07-31 17:10 | 1h | 75.14d |  | TEAM_2Shift_Calendar-1 | Driller | 1h | 68.75 | 68.75 |
| 231 | 4.3.13 | **Shell Fabrication** | 78.73d | 2018-06-04 17:01 | 2018-07-24 06:51 |  | 2018-05-17 17:01 | 2018-07-24 06:51 | 106.73d | 86.43d |  | TEAM_2Shift_Calendar-1 |  | 1048.75h | 60,487.78 | 60,487.78 |
| 232 | 4.3.13.1 | **Shell Marking & Cutting** | 4.28d | 2018-06-04 17:01 | 2018-06-06 19:16 |  | 2018-05-17 17:01 | 2018-05-19 19:16 | 4.28d | 131.66d |  | TEAM_2Shift_Calendar-1 |  | 36.5h | 267.19 | 267.19 |
| 233 | 4.3.13.1.1 | Sh Plate Trnasfer | 4d | 2018-06-04 17:01 | 2018-06-06 17:01 | 31 | 2018-05-17 17:01 | 2018-05-19 17:01 | 4d | 131.66d | 0d | TEAM_2Shift_Calendar-1 | Plate (Cost) [0.1%]; Forging Non-Std (Cost) [0.1%]; Store | 32h |  |  |
| 234 | 4.3.13.1.2 | Sh-Marking | 2.25h | 2018-06-06 17:01 | 2018-06-06 19:16 | 233 | 2018-05-19 17:01 | 2018-05-19 19:16 | 2.25h | 131.66d | 0d | TEAM_2Shift_Calendar-1 | Helper [200%]; Fitter | 4.5h | 267.19 | 267.19 |
| 235 | 4.3.13.2 | **Shell Plate Cutting** | 0.94d | 2018-06-06 19:16 | 2018-06-07 10:46 |  | 2018-05-19 19:16 | 2018-05-21 10:46 | 0.94d | 131.66d |  | TEAM_2Shift_Calendar-1 |  | 15h | 890.62 | 890.62 |
| 236 | 4.3.13.2.1 | Sh-Cutting | 7.5h | 2018-06-06 19:16 | 2018-06-07 10:46 | 234 | 2018-05-19 19:16 | 2018-05-21 10:46 | 7.5h | 131.66d | 0d | TEAM_2Shift_Calendar-1 | Helper [200%]; Gas Cutter | 15h | 890.62 | 890.62 |
| 237 | 4.3.13.3 | **Sh Pl Side Grinding** | 0.5d | 2018-06-07 10:46 | 2018-06-07 14:46 |  | 2018-05-21 10:46 | 2018-05-21 14:46 | 0.5d | 131.66d |  | TEAM_2Shift_Calendar-1 |  | 22h | 1,306.25 | 1,306.25 |
| 238 | 4.3.13.3.1 | Sh Pl Side Bevel Cutting | 4h | 2018-06-07 10:46 | 2018-06-07 14:46 | 236 | 2018-05-21 10:46 | 2018-05-21 14:46 | 4h | 131.66d | 0d | TEAM_2Shift_Calendar-1 | Helper [300%]; Fitter | 8h | 475 | 475 |
| 239 | 4.3.13.3.2 | Sh Pl Side Bevel Cutting | 4h | 2018-06-07 10:46 | 2018-06-07 14:46 | 236 | 2018-05-21 10:46 | 2018-05-21 14:46 | 4h | 132.33d | 0d | TEAM_2Shift_Calendar-1 | Helper [300%]; Fitter | 8h | 475 | 475 |
| 240 | 4.3.13.3.3 | Sh Pl Side Bevel Cutting | 3h | 2018-06-07 10:46 | 2018-06-07 13:46 | 236 | 2018-05-21 10:46 | 2018-05-21 13:46 | 3h | 136.18d | 0d | TEAM_2Shift_Calendar-1 | Helper [300%]; Fitter | 6h | 356.25 | 356.25 |
| 241 | 4.3.13.4 | **Shell Plate Edge Preparation** | 0.44d | 2018-06-07 13:46 | 2018-06-07 17:16 |  | 2018-05-21 13:46 | 2018-05-21 17:16 | 0.44d | 131.79d |  | TEAM_2Shift_Calendar-1 |  | 11h | 584.38 | 584.38 |
| 242 | 4.3.13.4.1 | Sh-Bevel Grinding | 2.5h | 2018-06-07 14:46 | 2018-06-07 17:16 | 238 | 2018-05-21 14:46 | 2018-05-21 17:16 | 2.5h | 131.66d | 0d | TEAM_2Shift_Calendar-1 | Helper; Grinder | 5h | 265.62 | 265.62 |
| 243 | 4.3.13.4.2 | Sh-Bevel Grinding | 2h | 2018-06-07 14:46 | 2018-06-07 16:46 | 239 | 2018-05-21 14:46 | 2018-05-21 16:46 | 2h | 132.33d | 0d | TEAM_2Shift_Calendar-1 | Helper; Grinder | 4h | 212.5 | 212.5 |
| 244 | 4.3.13.4.3 | Sh-Bevel Grinding | 1h | 2018-06-07 13:46 | 2018-06-07 14:46 | 240 | 2018-05-21 13:46 | 2018-05-21 14:46 | 1h | 136.18d | 0d | TEAM_2Shift_Calendar-1 | Helper; Grinder | 2h | 106.25 | 106.25 |
| 245 | 4.3.13.5 | **Shell Pre Bending** | 0.56d | 2018-06-07 14:46 | 2018-06-07 19:16 |  | 2018-05-21 14:46 | 2018-05-21 19:16 | 0.56d | 131.97d |  | TEAM_2Shift_Calendar-1 |  | 18h | 1,125 | 1,125 |
| 246 | 4.3.13.5.1 | Sh-Pre Bend | 2h | 2018-06-07 17:16 | 2018-06-07 19:16 | 242 | 2018-05-21 17:16 | 2018-05-21 19:16 | 2h | 131.66d | 0d | TEAM_2Shift_Calendar-1 | Helper; Fitter [200%] | 6h | 375 | 375 |
| 247 | 4.3.13.5.2 | Sh-Pre Bend | 2h | 2018-06-07 16:46 | 2018-06-07 18:46 | 243 | 2018-05-21 16:46 | 2018-05-21 18:46 | 2h | 132.33d | 0d | TEAM_2Shift_Calendar-1 | Helper; Fitter [200%] | 6h | 375 | 375 |
| 248 | 4.3.13.5.3 | Sh-Pre Bend | 2h | 2018-06-07 14:46 | 2018-06-07 16:46 | 244 | 2018-05-21 14:46 | 2018-05-21 16:46 | 2h | 136.18d | 0d | TEAM_2Shift_Calendar-1 | Helper; Fitter [200%] | 6h | 375 | 375 |

| ID | WBS | Task | Duration | Start | Finish | Predecessors | Baseline start | Baseline finish | Baseline duration | Total slack | Free slack | Calendar | Resources | Work | Cost | Baseline cost |
| --- | --- | --- | --- | --- | --- | --- | --- | --- | --- | --- | --- | --- | --- | --- | --- | --- |
| 249 | 4.3.13.6 | **Shell Pl Pre Bend Cut Off** | 0.38d | 2018-06-07 16:46 | 2018-06-07 19:46 |  | 2018-05-21 16:46 | 2018-05-21 19:46 | 0.38d | 131.97d |  | TEAM_2Shift_Calendar-1 |  | 8h | 512.51 | 512.51 |
| 250 | 4.3.13.6.1 | Sh-Pre Bend Cut Off | 0.5h | 2018-06-07 19:16 | 2018-06-07 19:46 | 246 | 2018-05-21 19:16 | 2018-05-21 19:46 | 0.5h | 131.66d | 0d | TEAM_2Shift_Calendar-1 | Helper; Gas Cutter; Fitter [200%] | 2h | 128.13 | 128.13 |
| 251 | 4.3.13.6.2 | Sh-Pre Bend Cut Off | 0.5h | 2018-06-07 18:46 | 2018-06-07 19:16 | 247 | 2018-05-21 18:46 | 2018-05-21 19:16 | 0.5h | 132.33d | 0d | TEAM_2Shift_Calendar-1 | Helper; Gas Cutter; Fitter [200%] | 2h | 128.13 | 128.13 |
| 252 | 4.3.13.6.3 | Sh-Pre Bend Cut Off | 1h | 2018-06-07 16:46 | 2018-06-07 17:46 | 248 | 2018-05-21 16:46 | 2018-05-21 17:46 | 1h | 136.18d | 0d | TEAM_2Shift_Calendar-1 | Helper; Gas Cutter; Fitter [200%] | 4h | 256.25 | 256.25 |
| 253 | 4.3.13.7 | **Shell Plate Ls Ep** | 0.56d | 2018-06-07 17:46 | 2018-06-08 06:16 |  | 2018-05-21 17:46 | 2018-05-22 06:16 | 0.56d | 131.91d |  | TEAM_2Shift_Calendar-1 |  | 11h | 653.12 | 653.12 |
| 254 | 4.3.13.7.1 | Sh-Pre Bend Ls Ep | 2.5h | 2018-06-07 19:46 | 2018-06-08 06:16 | 250 | 2018-05-21 19:46 | 2018-05-22 06:16 | 2.5h | 131.66d | 0d | TEAM_2Shift_Calendar-1 | Helper; Fitter | 5h | 296.88 | 296.88 |
| 255 | 4.3.13.7.2 | Sh-Pre Bend Ls Ep | 2h | 2018-06-07 19:16 | 2018-06-07 21:16 | 251 | 2018-05-21 19:16 | 2018-05-21 21:16 | 2h | 132.33d | 0d | TEAM_2Shift_Calendar-1 | Helper; Fitter | 4h | 237.5 | 237.5 |
| 256 | 4.3.13.7.3 | Sh-Pre Bend Ls Ep | 1h | 2018-06-07 17:46 | 2018-06-07 18:46 | 252 | 2018-05-21 17:46 | 2018-05-21 18:46 | 1h | 136.18d | 0d | TEAM_2Shift_Calendar-1 | Helper; Fitter | 2h | 118.75 | 118.75 |
| 257 | 4.3.13.8 | **Shell Rolling** | 0.94d | 2018-06-07 18:46 | 2018-06-08 10:16 |  | 2018-05-21 18:46 | 2018-05-22 10:16 | 0.94d | 132.1d |  | TEAM_2Shift_Calendar-1 |  | 36h | 2,250 | 2,250 |
| 258 | 4.3.13.8.1 | Sh-Rolling 1/3 | 4h | 2018-06-08 06:16 | 2018-06-08 10:16 | 254 | 2018-05-22 06:16 | 2018-05-22 10:16 | 4h | 131.66d | 0d | TEAM_2Shift_Calendar-1 | Helper; Fitter [200%] | 12h | 750 | 750 |
| 259 | 4.3.13.8.2 | Sh-Rolling | 4h | 2018-06-07 21:16 | 2018-06-08 09:16 | 255 | 2018-05-21 21:16 | 2018-05-22 09:16 | 4h | 132.33d | 0d | TEAM_2Shift_Calendar-1 | Helper; Fitter [200%] | 12h | 750 | 750 |
| 260 | 4.3.13.8.3 | Sh-Rolling | 4h | 2018-06-07 18:46 | 2018-06-08 06:46 | 256 | 2018-05-21 18:46 | 2018-05-22 06:46 | 4h | 136.18d | 0d | TEAM_2Shift_Calendar-1 | Helper; Fitter [200%] | 12h | 750 | 750 |
| 261 | 4.3.13.9 | **Shell Cir Length & Ep Correction** | 0.67d | 2018-06-08 06:46 | 2018-06-08 12:08 |  | 2018-05-22 06:46 | 2018-05-22 12:08 | 0.67d | 132.1d |  | TEAM_2Shift_Calendar-1 |  | 8.25h | 489.84 | 489.84 |
| 262 | 4.3.13.9.1 | Sh-Ls Correction | 1.88h | 2018-06-08 10:16 | 2018-06-08 12:08 | 258 | 2018-05-22 10:16 | 2018-05-22 12:08 | 1.88h | 131.66d | 0d | TEAM_2Shift_Calendar-1 | Helper [200%]; Fitter | 3.75h | 222.66 | 222.66 |
| 263 | 4.3.13.9.2 | Sh-Ls Correction | 1.5h | 2018-06-08 09:16 | 2018-06-08 10:46 | 259 | 2018-05-22 09:16 | 2018-05-22 10:46 | 1.5h | 132.33d | 0d | TEAM_2Shift_Calendar-1 | Helper [200%]; Fitter | 3h | 178.12 | 178.12 |
| 264 | 4.3.13.9.3 | Sh-Ls Correction | 0.75h | 2018-06-08 06:46 | 2018-06-08 07:31 | 260 | 2018-05-22 06:46 | 2018-05-22 07:31 | 0.75h | 136.18d | 0d | TEAM_2Shift_Calendar-1 | Helper [200%]; Fitter | 1.5h | 89.06 | 89.06 |
| 265 | 4.3.13.10 | **Shell Ls Seams Fit Up** | 0.89d | 2018-06-08 07:31 | 2018-06-08 14:38 |  | 2018-05-22 07:31 | 2018-05-22 14:38 | 0.89d | 132.24d |  | TEAM_2Shift_Calendar-1 |  | 22h | 1,409.38 | 1,409.38 |
| 266 | 4.3.13.10.1 | Sh-Ls Fit Up | 2.5h | 2018-06-08 12:08 | 2018-06-08 14:38 | 262 | 2018-05-22 12:08 | 2018-05-22 14:38 | 2.5h | 131.66d | 0d | TEAM_2Shift_Calendar-1 | Helper; SMAW Welder; Fitter [200%] | 10h | 640.63 | 640.63 |
| 267 | 4.3.13.10.2 | Sh-Ls Fit Up | 2h | 2018-06-08 10:46 | 2018-06-08 12:46 | 263 | 2018-05-22 10:46 | 2018-05-22 12:46 | 2h | 132.33d | 0d | TEAM_2Shift_Calendar-1 | Helper; SMAW Welder; Fitter [200%] | 8h | 512.5 | 512.5 |
| 268 | 4.3.13.10.3 | Sh-Ls Fit Up | 1h | 2018-06-08 07:31 | 2018-06-08 08:31 | 264 | 2018-05-22 07:31 | 2018-05-22 08:31 | 1h | 136.18d | 0d | TEAM_2Shift_Calendar-1 | Helper; SMAW Welder; Fitter [200%] | 4h | 256.25 | 256.25 |
| 269 | 4.3.13.11 | **Sh Ls Welding Arrangement** | 0.92d | 2018-06-08 08:31 | 2018-06-08 15:53 |  | 2018-05-22 08:31 | 2018-05-22 15:53 | 0.92d | 132.43d |  | TEAM_2Shift_Calendar-1 |  | 5.5h | 326.56 | 326.56 |
| 270 | 4.3.13.11.1 | Sh-Ls Weld Arrangement | 1.25h | 2018-06-08 14:38 | 2018-06-08 15:53 | 266 | 2018-05-22 14:38 | 2018-05-22 15:53 | 1.25h | 131.66d | 0d | TEAM_2Shift_Calendar-1 | Helper; Fitter | 2.5h | 148.44 | 148.44 |
| 271 | 4.3.13.11.2 | Sh-Ls Weld Arrangement | 1h | 2018-06-08 12:46 | 2018-06-08 13:46 | 267 | 2018-05-22 12:46 | 2018-05-22 13:46 | 1h | 132.33d | 0d | TEAM_2Shift_Calendar-1 | Helper; Fitter | 2h | 118.75 | 118.75 |
| 272 | 4.3.13.11.3 | Sh-Ls Weld Arrangement | 0.5h | 2018-06-08 08:31 | 2018-06-08 09:01 | 268 | 2018-05-22 08:31 | 2018-05-22 09:01 | 0.5h | 136.18d | 0d | TEAM_2Shift_Calendar-1 | Helper; Fitter | 1h | 59.38 | 59.38 |

| ID | WBS | Task | Duration | Start | Finish | Predecessors | Baseline start | Baseline finish | Baseline duration | Total slack | Free slack | Calendar | Resources | Work | Cost | Baseline cost |
| --- | --- | --- | --- | --- | --- | --- | --- | --- | --- | --- | --- | --- | --- | --- | --- | --- |
| 273 | 4.3.13.12 | **Shell Long Seam Outer Welding** | 1.64d | 2018-06-08 09:01 | 2018-06-11 06:08 |  | 2018-05-22 09:01 | 2018-05-23 06:08 | 1.64d | 132.52d |  | TEAM_2Shift_Calendar-1 |  | 27.5h | 1,632.81 | 1,632.81 |
| 274 | 4.3.13.12.1 | Sh-Ls Welding- Top Side | 6.25h | 2018-06-08 15:53 | 2018-06-11 06:08 | 270 | 2018-05-22 15:53 | 2018-05-23 06:08 | 6.25h | 131.66d | 0d | TEAM_2Shift_Calendar-1 | Helper; SMAW Welder | 12.5h | 742.19 | 742.19 |
| 275 | 4.3.13.12.2 | Sh-Ls Welding- Top Side | 5h | 2018-06-08 13:46 | 2018-06-08 18:46 | 271 | 2018-05-22 13:46 | 2018-05-22 18:46 | 5h | 132.33d | 0d | TEAM_2Shift_Calendar-1 | Helper; SMAW Welder | 10h | 593.75 | 593.75 |
| 276 | 4.3.13.12.3 | Sh-Ls Welding- Top Side | 2.5h | 2018-06-08 09:01 | 2018-06-08 11:31 | 272 | 2018-05-22 09:01 | 2018-05-22 11:31 | 2.5h | 136.18d | 0d | TEAM_2Shift_Calendar-1 | Helper; SMAW Welder | 5h | 296.88 | 296.88 |
| 277 | 4.3.13.13 | **Sh Ls Back Chip** | 1.83d | 2018-06-08 11:31 | 2018-06-11 10:08 |  | 2018-05-22 11:31 | 2018-05-23 10:08 | 1.83d | 132.99d |  | TEAM_2Shift_Calendar-1 |  | 9h | 506.25 | 506.25 |
| 278 | 4.3.13.13.1 | Sh-Ls Welding- Back Chip | 4h | 2018-06-11 06:08 | 2018-06-11 10:08 | 274 | 2018-05-23 06:08 | 2018-05-23 10:08 | 4h | 131.66d | 0d | TEAM_2Shift_Calendar-1 | Grinder | 4h | 225 | 225 |
| 279 | 4.3.13.13.2 | Sh-Ls Welding- Back Chip | 3h | 2018-06-08 18:46 | 2018-06-08 21:46 | 275 | 2018-05-22 18:46 | 2018-05-22 21:46 | 3h | 132.33d | 0d | TEAM_2Shift_Calendar-1 | Grinder | 3h | 168.75 | 168.75 |
| 280 | 4.3.13.13.3 | Sh-Ls Welding- Back Chip | 2h | 2018-06-08 11:31 | 2018-06-08 13:31 | 276 | 2018-05-22 11:31 | 2018-05-22 13:31 | 2h | 136.18d | 0d | TEAM_2Shift_Calendar-1 | Grinder | 2h | 112.5 | 112.5 |
| 281 | 4.3.13.14 | **Sh Inner Ls Flush Grinding** | 1.89d | 2018-06-08 13:31 | 2018-06-11 12:38 |  | 2018-05-22 13:31 | 2018-05-23 12:38 | 1.89d | 133.24d |  | TEAM_2Shift_Calendar-1 |  | 5h | 281.25 | 281.25 |
| 282 | 4.3.13.14.1 | Sh Inner Flush Grinding | 2.5h | 2018-06-11 10:08 | 2018-06-11 12:38 | 278 | 2018-05-23 10:08 | 2018-05-23 12:38 | 2.5h | 131.66d | 0d | TEAM_2Shift_Calendar-1 | Grinder | 2.5h | 140.62 | 140.62 |
| 283 | 4.3.13.14.2 | Sh Inner Flush Grinding | 1.5h | 2018-06-08 21:46 | 2018-06-11 07:16 | 279 | 2018-05-22 21:46 | 2018-05-23 07:16 | 1.5h | 132.33d | 0d | TEAM_2Shift_Calendar-1 | Grinder | 1.5h | 84.38 | 84.38 |
| 284 | 4.3.13.14.3 | Sh Inner Flush Grinding | 1h | 2018-06-08 13:31 | 2018-06-08 14:31 | 280 | 2018-05-22 13:31 | 2018-05-22 14:31 | 1h | 136.18d | 0d | TEAM_2Shift_Calendar-1 | Grinder | 1h | 56.25 | 56.25 |
| 285 | 4.3.13.15 | **Sh Ls Radiography** | 2.77d | 2018-06-08 14:31 | 2018-06-11 20:38 |  | 2018-05-22 14:31 | 2018-05-23 20:38 | 2.77d | 133.43d |  | TEAM_2Shift_Calendar-1 |  | 24h |  |  |
| 286 | 4.3.13.15.1 | Sh Ls Welding Rt | 1d | 2018-06-11 12:38 | 2018-06-11 20:38 | 282 | 2018-05-23 12:38 | 2018-05-23 20:38 | 1d | 131.66d | 0d | TEAM_2Shift_Calendar-1 | SC Radiography (Work) | 8h |  |  |
| 287 | 4.3.13.15.2 | Sh Ls Welding Rt | 1d | 2018-06-11 07:16 | 2018-06-11 15:16 | 283 | 2018-05-23 07:16 | 2018-05-23 15:16 | 1d | 132.33d | 0d | TEAM_2Shift_Calendar-1 | SC Radiography (Work) | 8h |  |  |
| 288 | 4.3.13.15.3 | Sh Ls Welding Rt | 1d | 2018-06-08 14:31 | 2018-06-11 06:31 | 284 | 2018-05-22 14:31 | 2018-05-23 06:31 | 1d | 136.18d | 0d | TEAM_2Shift_Calendar-1 | SC Radiography (Work) | 8h |  |  |
| 289 | 4.3.13.16 | **Shell Re Rolling** | 2.27d | 2018-06-11 06:31 | 2018-06-12 08:38 |  | 2018-05-23 06:31 | 2018-05-24 08:38 | 2.27d | 133.43d |  | TEAM_2Shift_Calendar-1 |  | 36h | 2,250 | 2,250 |
| 290 | 4.3.13.16.1 | Sh Re Rolling | 4h | 2018-06-11 20:38 | 2018-06-12 08:38 | 286 | 2018-05-23 20:38 | 2018-05-24 08:38 | 4h | 131.66d | 0d | TEAM_2Shift_Calendar-1 | Helper; Fitter [200%] | 12h | 750 | 750 |
| 291 | 4.3.13.16.2 | Sh Re Rolling | 4h | 2018-06-11 15:16 | 2018-06-11 19:16 | 287 | 2018-05-23 15:16 | 2018-05-23 19:16 | 4h | 132.33d | 0d | TEAM_2Shift_Calendar-1 | Helper; Fitter [200%] | 12h | 750 | 750 |
| 292 | 4.3.13.16.3 | Sh Re Rolling | 4h | 2018-06-11 06:31 | 2018-06-11 10:31 | 288 | 2018-05-23 06:31 | 2018-05-23 10:31 | 4h | 136.18d | 0d | TEAM_2Shift_Calendar-1 | Helper; Fitter [200%] | 12h | 750 | 750 |
| 293 | 4.3.13.17 | **Sh Plate Cs Ep Correction** | 2.14d | 2018-06-11 10:31 | 2018-06-12 11:38 |  | 2018-05-23 10:31 | 2018-05-24 11:38 | 2.14d | 133.43d |  | TEAM_2Shift_Calendar-1 |  | 18h | 1,068.75 | 1,068.75 |
| 294 | 4.3.13.17.1 | Sh Cir Ep Correction | 3h | 2018-06-12 08:38 | 2018-06-12 11:38 | 290 | 2018-05-24 08:38 | 2018-05-24 11:38 | 3h | 131.66d | 0d | TEAM_2Shift_Calendar-1 | Helper; Fitter | 6h | 356.25 | 356.25 |
| 295 | 4.3.13.17.2 | Sh Cir Ep Correction | 3h | 2018-06-11 19:16 | 2018-06-12 06:16 | 291 | 2018-05-23 19:16 | 2018-05-24 06:16 | 3h | 132.33d | 0.67d | TEAM_2Shift_Calendar-1 | Helper; Fitter | 6h | 356.25 | 356.25 |
| 296 | 4.3.13.17.3 | Sh Cir Ep Correction | 3h | 2018-06-11 10:31 | 2018-06-11 13:31 | 292 | 2018-05-23 10:31 | 2018-05-23 13:31 | 3h | 155.59d |  | TEAM_2Shift_Calendar-1 | Helper; Fitter | 6h | 356.25 | 356.25 |

| ID | WBS | Task | Duration | Start | Finish | Predecessors | Baseline start | Baseline finish | Baseline duration | Total slack | Free slack | Calendar | Resources | Work | Cost | Baseline cost |
| --- | --- | --- | --- | --- | --- | --- | --- | --- | --- | --- | --- | --- | --- | --- | --- | --- |
| 297 | 4.3.13.18 | **Sh Cir Seam First Fit Up** | 0.75d | 2018-06-12 11:38 | 2018-06-12 17:38 |  | 2018-05-24 11:38 | 2018-05-24 17:38 | 0.75d | 131.66d |  | TEAM_2Shift_Calendar-1 |  | 18h | 1,125 | 1,125 |
| 298 | 4.3.13.18.1 | Sh Cs Fit Up - [Ls1+Ls2] | 3h | 2018-06-12 11:38 | 2018-06-12 14:38 | 294, 295 | 2018-05-24 11:38 | 2018-05-24 14:38 | 3h | 131.66d | 0d | TEAM_2Shift_Calendar-1 | Helper; SMAW Welder; Fitter [200%] | 12h | 768.75 | 768.75 |
| 299 | 4.3.13.18.2 | Sh Cs Tack Dp Check - [Ls1+Ls2] | 3h | 2018-06-12 14:38 | 2018-06-12 17:38 | 298 | 2018-05-24 14:38 | 2018-05-24 17:38 | 3h | 131.66d | 0d | TEAM_2Shift_Calendar-1 | Helper; Fitter | 6h | 356.25 | 356.25 |
| 300 | 4.3.13.19 | **Sh Cir Seam First Welding** | 1.62d | 2018-06-12 17:38 | 2018-06-13 14:38 |  | 2018-05-24 17:38 | 2018-05-25 14:38 | 1.62d | 131.66d |  | TEAM_2Shift_Calendar-1 |  | 21h | 1,231.25 | 1,231.25 |
| 301 | 4.3.13.19.1 | Sh Cs Welding Transfere | 2h | 2018-06-12 17:38 | 2018-06-12 19:38 | 299 | 2018-05-24 17:38 | 2018-05-24 19:38 | 2h | 131.66d | 0d | TEAM_2Shift_Calendar-1 | Helper; Fitter | 4h | 237.5 | 237.5 |
| 302 | 4.3.13.19.2 | Sh Cs Welding Outer [Ls1+Ls2] | 6h | 2018-06-12 19:38 | 2018-06-13 09:38 | 301 | 2018-05-24 19:38 | 2018-05-25 09:38 | 6h | 131.66d | 0d | TEAM_2Shift_Calendar-1 | Helper; SMAW Welder | 12h | 712.5 | 712.5 |
| 303 | 4.3.13.19.3 | Sh Cs Welding Back Chip [Ls1+Ls2] | 3h | 2018-06-13 09:38 | 2018-06-13 12:38 | 302 | 2018-05-25 09:38 | 2018-05-25 12:38 | 3h | 131.66d | 0d | TEAM_2Shift_Calendar-1 | Grinder | 3h | 168.75 | 168.75 |
| 304 | 4.3.13.19.4 | Sh Cs Flush Grinding [Ls1+Ls2] | 2h | 2018-06-13 12:38 | 2018-06-13 14:38 | 303 | 2018-05-25 12:38 | 2018-05-25 14:38 | 2h | 131.66d | 0d | TEAM_2Shift_Calendar-1 | Grinder | 2h | 112.5 | 112.5 |
| 305 | 4.3.13.20 | **Sh Cir Seam Second Fitup** | 0.75d | 2018-06-13 14:38 | 2018-06-13 20:38 |  | 2018-05-25 14:38 | 2018-05-25 20:38 | 0.75d | 131.66d |  | TEAM_2Shift_Calendar-1 |  | 18h | 1,125 | 1,125 |
| 306 | 4.3.13.20.1 | Sh Cs Fit Up - [Ls2+Ls3] | 3h | 2018-06-13 14:38 | 2018-06-13 17:38 | 304, 292 | 2018-05-25 14:38 | 2018-05-25 17:38 | 3h | 131.66d | 0d | TEAM_2Shift_Calendar-1 | Helper; SMAW Welder; Fitter [200%] | 12h | 768.75 | 768.75 |
| 307 | 4.3.13.20.2 | Sh Cs Tack Dp Check - [Ls2+Ls3] | 3h | 2018-06-13 17:38 | 2018-06-13 20:38 | 306 | 2018-05-25 17:38 | 2018-05-25 20:38 | 3h | 131.66d | 0d | TEAM_2Shift_Calendar-1 | Helper; Fitter | 6h | 356.25 | 356.25 |
| 308 | 4.3.13.21 | **Sh Cir Seam Second Welding** | 1.62d | 2018-06-13 20:38 | 2018-06-14 17:38 |  | 2018-05-25 20:38 | 2018-05-28 17:38 | 1.62d | 131.66d |  | TEAM_2Shift_Calendar-1 |  | 21h | 1,231.25 | 1,231.25 |
| 309 | 4.3.13.21.1 | Sh Cs Welding Transfere-[Ls2+Ls3] | 2h | 2018-06-13 20:38 | 2018-06-14 06:38 | 307 | 2018-05-25 20:38 | 2018-05-28 06:38 | 2h | 131.66d | 0d | TEAM_2Shift_Calendar-1 | Helper; Fitter | 4h | 237.5 | 237.5 |
| 310 | 4.3.13.21.2 | Sh Cs Welding Outer [Ls2+Ls3] | 6h | 2018-06-14 06:38 | 2018-06-14 12:38 | 309 | 2018-05-28 06:38 | 2018-05-28 12:38 | 6h | 131.66d | 0d | TEAM_2Shift_Calendar-1 | Helper; SMAW Welder | 12h | 712.5 | 712.5 |
| 311 | 4.3.13.21.3 | Sh Cs Welding Back Chip [Ls2+Ls3] | 3h | 2018-06-14 12:38 | 2018-06-14 15:38 | 310 | 2018-05-28 12:38 | 2018-05-28 15:38 | 3h | 131.66d | 0d | TEAM_2Shift_Calendar-1 | Grinder | 3h | 168.75 | 168.75 |
| 312 | 4.3.13.21.4 | Sh Cs Flush Grinding [Ls2+Ls3] | 2h | 2018-06-14 15:38 | 2018-06-14 17:38 | 311 | 2018-05-28 15:38 | 2018-05-28 17:38 | 2h | 131.66d | 0d | TEAM_2Shift_Calendar-1 | Grinder | 2h | 112.5 | 112.5 |
| 313 | 4.3.13.22 | **Sh Final Length Correction** | 1.62d | 2018-06-14 17:38 | 2018-06-15 14:38 |  | 2018-05-28 17:38 | 2018-05-29 14:38 | 1.62d | 131.66d |  | TEAM_2Shift_Calendar-1 |  | 26h | 1,587.5 | 1,587.5 |
| 314 | 4.3.13.22.1 | Sh Length Marking | 5h | 2018-06-14 17:38 | 2018-06-15 06:38 | 312 | 2018-05-28 17:38 | 2018-05-29 06:38 | 5h | 131.66d | 0d | TEAM_2Shift_Calendar-1 | Fitter [200%] | 10h | 687.5 | 687.5 |
| 315 | 4.3.13.22.2 | Length Cutting | 4h | 2018-06-15 06:38 | 2018-06-15 10:38 | 314 | 2018-05-29 06:38 | 2018-05-29 10:38 | 4h | 131.66d | 0d | TEAM_2Shift_Calendar-1 | Helper; Gas Cutter | 8h | 475 | 475 |
| 316 | 4.3.13.22.3 | Grinding & Ep | 4h | 2018-06-15 10:38 | 2018-06-15 14:38 | 315 | 2018-05-29 10:38 | 2018-05-29 14:38 | 4h | 131.66d | 45.23d | TEAM_2Shift_Calendar-1 | Helper; Grinder | 8h | 425 | 425 |
| 317 | 4.3.13.23 | **Sh Cir Seam Flange 1 Fitup** | 0.75d | 2018-07-13 08:31 | 2018-07-13 14:31 |  | 2018-07-13 08:31 | 2018-07-13 14:31 | 0.75d | 99.84d |  | TEAM_2Shift_Calendar-1 |  | 18h | 1,125 | 1,125 |
| 318 | 4.3.13.23.1 | Sh Cs Fit Up Flg Cs1 | 3h | 2018-07-13 08:31 | 2018-07-13 11:31 | 32, 316 | 2018-07-13 08:31 | 2018-07-13 11:31 | 3h | 99.84d | 0d | TEAM_2Shift_Calendar-1 | Helper; SMAW Welder; Fitter [200%] | 12h | 768.75 | 768.75 |
| 319 | 4.3.13.23.2 | Sh Cs Tack Dp Check Flg Cs1 | 3h | 2018-07-13 11:31 | 2018-07-13 14:31 | 318 | 2018-07-13 11:31 | 2018-07-13 14:31 | 3h | 99.84d | 0d | TEAM_2Shift_Calendar-1 | Helper; Fitter | 6h | 356.25 | 356.25 |
| 320 | 4.3.13.24 | **Sh Cir Seam Flange 1 Welding** | 1.62d | 2018-07-13 14:31 | 2018-07-16 11:31 |  | 2018-07-13 14:31 | 2018-07-16 11:31 | 1.62d | 99.84d |  | TEAM_2Shift_Calendar-1 |  | 21h | 1,231.25 | 1,231.25 |
| 321 | 4.3.13.24.1 | Sh Cs Welding Transfere | 2h | 2018-07-13 14:31 | 2018-07-13 16:31 | 319 | 2018-07-13 14:31 | 2018-07-13 16:31 | 2h | 99.84d | 0d | TEAM_2Shift_Calendar-1 | Helper; Fitter | 4h | 237.5 | 237.5 |
| 322 | 4.3.13.24.2 | Sh Cs Welding Outer Flg Cs1 | 6h | 2018-07-13 16:31 | 2018-07-16 06:31 | 321 | 2018-07-13 16:31 | 2018-07-16 06:31 | 6h | 99.84d | 0d | TEAM_2Shift_Calendar-1 | Helper; SMAW Welder | 12h | 712.5 | 712.5 |
| 323 | 4.3.13.24.3 | Sh Cs Welding Back Chip Flg Cs1 | 3h | 2018-07-16 06:31 | 2018-07-16 09:31 | 322 | 2018-07-16 06:31 | 2018-07-16 09:31 | 3h | 99.84d | 0d | TEAM_2Shift_Calendar-1 | Grinder | 3h | 168.75 | 168.75 |
| 324 | 4.3.13.24.4 | Sh Cs Flush Grinding Flg Cs1 | 2h | 2018-07-16 09:31 | 2018-07-16 11:31 | 323 | 2018-07-16 09:31 | 2018-07-16 11:31 | 2h | 99.84d |  | TEAM_2Shift_Calendar-1 | Grinder | 2h | 112.5 | 112.5 |

| ID | WBS | Task | Duration | Start | Finish | Predecessors | Baseline start | Baseline finish | Baseline duration | Total slack | Free slack | Calendar | Resources | Work | Cost | Baseline cost |
| --- | --- | --- | --- | --- | --- | --- | --- | --- | --- | --- | --- | --- | --- | --- | --- | --- |
| 325 | 4.3.13.25 | **Sh Cs Fit Up Flg2** | 0.75d | 2018-07-13 08:31 | 2018-07-13 14:31 |  | 2018-07-13 08:31 | 2018-07-13 14:31 | 0.75d | 86.43d |  | TEAM_2Shift_Calendar-1 |  | 18h | 1,125 | 1,125 |
| 326 | 4.3.13.25.1 | Sh Cs Fit Up Flg 2 | 3h | 2018-07-13 08:31 | 2018-07-13 11:31 | 32, 316 | 2018-07-13 08:31 | 2018-07-13 11:31 | 3h | 86.43d | 0d | TEAM_2Shift_Calendar-1 | Helper; SMAW Welder; Fitter [200%] | 12h | 768.75 | 768.75 |
| 327 | 4.3.13.25.2 | Sh Cs Tack Dp Check Flg2 | 3h | 2018-07-13 11:31 | 2018-07-13 14:31 | 326 | 2018-07-13 11:31 | 2018-07-13 14:31 | 3h | 86.43d | 0d | TEAM_2Shift_Calendar-1 | Helper; Fitter | 6h | 356.25 | 356.25 |
| 328 | 4.3.13.26 | **Sh Cs Welding Flg2** | 1.62d | 2018-07-13 14:31 | 2018-07-16 11:31 |  | 2018-07-13 14:31 | 2018-07-16 11:31 | 1.62d | 86.43d | 0d | TEAM_2Shift_Calendar-1 |  | 21h | 1,231.25 | 1,231.25 |
| 329 | 4.3.13.26.1 | Sh Cs Welding Transfere Flg2 | 2h | 2018-07-13 14:31 | 2018-07-13 16:31 | 327 | 2018-07-13 14:31 | 2018-07-13 16:31 | 2h | 86.43d | 0d | TEAM_2Shift_Calendar-1 | Helper; Fitter | 4h | 237.5 | 237.5 |
| 330 | 4.3.13.26.2 | Sh Cs Welding Outer Flg2 | 6h | 2018-07-13 16:31 | 2018-07-16 06:31 | 329 | 2018-07-13 16:31 | 2018-07-16 06:31 | 6h | 86.43d | 0d | TEAM_2Shift_Calendar-1 | Helper; SMAW Welder | 12h | 712.5 | 712.5 |
| 331 | 4.3.13.26.3 | Sh Cs Welding Back Chip Flg2 | 3h | 2018-07-16 06:31 | 2018-07-16 09:31 | 330 | 2018-07-16 06:31 | 2018-07-16 09:31 | 3h | 86.43d | 0d | TEAM_2Shift_Calendar-1 | Grinder | 3h | 168.75 | 168.75 |
| 332 | 4.3.13.26.4 | Sh Cs Flush Grinding Flg2 | 2h | 2018-07-16 09:31 | 2018-07-16 11:31 | 331 | 2018-07-16 09:31 | 2018-07-16 11:31 | 2h | 86.43d | 0d | TEAM_2Shift_Calendar-1 | Grinder | 2h | 112.5 | 112.5 |
| 333 | 4.3.13.27 | **Shell Noz Opnning** | 0.5d | 2018-07-16 11:31 | 2018-07-16 15:31 |  | 2018-07-16 11:31 | 2018-07-16 15:31 | 0.5d | 93.5d |  | TEAM_2Shift_Calendar-1 |  | 8h | 475 | 475 |
| 334 | 4.3.13.27.1 | Shell-Noz Openning-Top | 2h | 2018-07-16 11:31 | 2018-07-16 13:31 | 332 | 2018-07-16 11:31 | 2018-07-16 13:31 | 2h | 93.5d | 0d | TEAM_2Shift_Calendar-1 | Helper; Gas Cutter | 4h | 237.5 | 237.5 |
| 335 | 4.3.13.27.2 | Shell-Noz Openning-Bot | 2h | 2018-07-16 13:31 | 2018-07-16 15:31 | 334 | 2018-07-16 13:31 | 2018-07-16 15:31 | 2h | 93.5d | 0d | TEAM_2Shift_Calendar-1 | Helper; Gas Cutter | 4h | 237.5 | 237.5 |
| 336 | 4.3.13.28 | **Shell Noz Open Ep** | 0.25d | 2018-07-16 15:31 | 2018-07-16 17:31 |  | 2018-07-16 15:31 | 2018-07-16 17:31 | 0.25d | 93.5d |  | TEAM_2Shift_Calendar-1 |  | 8h | 425 | 425 |
| 337 | 4.3.13.28.1 | Shell -Noz Ep -N1 | 2h | 2018-07-16 15:31 | 2018-07-16 17:31 | 335 | 2018-07-16 15:31 | 2018-07-16 17:31 | 2h | 93.5d | 0d | TEAM_2Shift_Calendar-1 | Helper; Grinder | 4h | 212.5 | 212.5 |
| 338 | 4.3.13.28.2 | Shell -Noz Ep-N2 | 2h | 2018-07-16 15:31 | 2018-07-16 17:31 | 335 | 2018-07-16 15:31 | 2018-07-16 17:31 | 2h | 95.22d | 0d | TEAM_2Shift_Calendar-1 | Helper; Grinder | 4h | 212.5 | 212.5 |
| 339 | 4.3.13.29 | **Shell Noz Fit Up** | 0.25d | 2018-07-16 17:31 | 2018-07-16 19:31 |  | 2018-07-16 17:31 | 2018-07-16 19:31 | 0.25d | 93.5d |  | TEAM_2Shift_Calendar-1 |  | 16h | 1,025 | 1,025 |
| 340 | 4.3.13.29.1 | Shell-Noz Fit Up -N1 | 2h | 2018-07-16 17:31 | 2018-07-16 19:31 | 337 | 2018-07-16 17:31 | 2018-07-16 19:31 | 2h | 93.5d | 0d | TEAM_2Shift_Calendar-1 | SMAW Welder; Helper; Fitter [200%] | 8h | 512.5 | 512.5 |
| 341 | 4.3.13.29.2 | Shell-Noz Fit Up -N2 | 2h | 2018-07-16 17:31 | 2018-07-16 19:31 | 338 | 2018-07-16 17:31 | 2018-07-16 19:31 | 2h | 95.22d | 0d | TEAM_2Shift_Calendar-1 | SMAW Welder; Helper; Fitter [200%] | 8h | 512.5 | 512.5 |
| 342 | 4.3.13.30 | **Shell Noz Fit Up Insp** | 0.25d | 2018-07-16 19:31 | 2018-07-16 21:31 |  | 2018-07-16 19:31 | 2018-07-16 21:31 | 0.25d | 93.5d |  | TEAM_2Shift_Calendar-1 |  | 8h | 475 | 475 |
| 343 | 4.3.13.30.1 | Shell-Noz Inspn -N1 | 2h | 2018-07-16 19:31 | 2018-07-16 21:31 | 340 | 2018-07-16 19:31 | 2018-07-16 21:31 | 2h | 93.5d | 0d | TEAM_2Shift_Calendar-1 | Helper; Fitter | 4h | 237.5 | 237.5 |
| 344 | 4.3.13.30.2 | Shell-Noz Inspn-N2 | 2h | 2018-07-16 19:31 | 2018-07-16 21:31 | 341 | 2018-07-16 19:31 | 2018-07-16 21:31 | 2h | 95.22d | 0d | TEAM_2Shift_Calendar-1 | Helper; Fitter | 4h | 237.5 | 237.5 |
| 345 | 4.3.13.31 | **Shell Noz Welding** | 5.09d | 2018-07-16 21:31 | 2018-07-19 14:16 |  | 2018-07-16 21:31 | 2018-07-19 14:16 | 5.09d | 93.5d |  | TEAM_2Shift_Calendar-1 |  | 111h | 6,460.94 | 6,460.94 |
| 346 | 4.3.13.31.1 | Shell Noz Welding Arrangement | 4.5h | 2018-07-16 21:31 | 2018-07-17 10:01 | 343, 344 | 2018-07-16 21:31 | 2018-07-17 10:01 | 4.5h | 98.03d |  | TEAM_2Shift_Calendar-1 | Helper [200%]; Fitter | 9h | 534.38 | 534.38 |
| 347 | 4.3.13.31.2 | Shell-Noz Welding -N1 | 4h | 2018-07-16 21:31 | 2018-07-17 09:31 | 343 | 2018-07-16 21:31 | 2018-07-17 09:31 | 4h | 93.5d | 0d | TEAM_2Shift_Calendar-1 | Helper; SMAW Welder | 8h | 475 | 475 |
| 348 | 4.3.13.31.3 | Shell Noz Welding-N2 | 4h | 2018-07-16 21:31 | 2018-07-17 09:31 | 344 | 2018-07-16 21:31 | 2018-07-17 09:31 | 4h | 95.22d | 0d | TEAM_2Shift_Calendar-1 | Helper; SMAW Welder | 8h | 475 | 475 |
| 349 | 4.3.13.31.4 | Shell Noz Root Dp Check - N1 | 3h | 2018-07-17 09:31 | 2018-07-17 12:31 | 347 | 2018-07-17 09:31 | 2018-07-17 12:31 | 3h | 93.5d | 0d | TEAM_2Shift_Calendar-1 | Helper; SMAW Welder | 6h | 356.25 | 356.25 |
| 350 | 4.3.13.31.5 | Shell Noz Root Dp Check - N2 | 3h | 2018-07-17 09:31 | 2018-07-17 12:31 | 348 | 2018-07-17 09:31 | 2018-07-17 12:31 | 3h | 95.22d | 0d | TEAM_2Shift_Calendar-1 | Helper; SMAW Welder | 6h | 356.25 | 356.25 |
| 351 | 4.3.13.31.6 | Shell-Noz Inner Weld -N1 | 4h | 2018-07-17 12:31 | 2018-07-17 16:31 | 349 | 2018-07-17 12:31 | 2018-07-17 16:31 | 4h | 93.5d | 0d | TEAM_2Shift_Calendar-1 | Helper; SMAW Welder | 8h | 475 | 475 |
| 352 | 4.3.13.31.7 | Shell-Noz Inner Weld-N2 | 4h | 2018-07-17 12:31 | 2018-07-17 16:31 | 350 | 2018-07-17 12:31 | 2018-07-17 16:31 | 4h | 95.22d | 0d | TEAM_2Shift_Calendar-1 | Helper; SMAW Welder | 8h | 475 | 475 |
| 353 | 4.3.13.31.8 | Rf Pad Fit Up & Nozzle Fit Up - N1 | 5h | 2018-07-17 16:31 | 2018-07-17 21:31 | 351 | 2018-07-17 16:31 | 2018-07-17 21:31 | 5h | 93.5d | 0d | TEAM_2Shift_Calendar-1 | Helper; SMAW Welder | 10h | 593.75 | 593.75 |
| 354 | 4.3.13.31.9 | Rf Pad Fit Up & Nozzle Fit Up - N2 | 8h | 2018-07-17 16:31 | 2018-07-18 08:31 | 352 | 2018-07-17 16:31 | 2018-07-18 08:31 | 8h | 95.22d | 0d | TEAM_2Shift_Calendar-1 |  |  |  |  |
| 355 | 4.3.13.31.10 | Rf Pad Fit Up Welding - N1 | 10h | 2018-07-17 21:31 | 2018-07-18 15:31 | 353 | 2018-07-17 21:31 | 2018-07-18 15:31 | 10h | 93.5d | 0d | TEAM_2Shift_Calendar-1 | Helper; Grinder | 20h | 1,062.5 | 1,062.5 |
| 356 | 4.3.13.31.11 | Rf Pad Fit Up Welding - N2 | 8h | 2018-07-18 08:31 | 2018-07-18 16:31 | 354 | 2018-07-18 08:31 | 2018-07-18 16:31 | 8h | 95.22d |  | TEAM_2Shift_Calendar-1 |  |  |  |  |
| 357 | 4.3.13.31.12 | Noz Welding Flush Grind- 6"Nb | 1.5h | 2018-07-18 15:31 | 2018-07-18 17:01 | 355 | 2018-07-18 15:31 | 2018-07-18 17:01 | 1.5h | 93.5d | 0d | TEAM_2Shift_Calendar-1 | Grinder | 1.5h | 84.38 | 84.38 |
| 358 | 4.3.13.31.13 | Shell Noz Welding Arrangement | 2.25h | 2018-07-18 17:01 | 2018-07-18 19:16 | 357 | 2018-07-18 17:01 | 2018-07-18 19:16 | 2.25h | 93.5d | 0d | TEAM_2Shift_Calendar-1 | Helper [200%]; Fitter | 4.5h | 267.19 | 267.19 |
| 359 | 4.3.13.31.14 | Shell-Noz Welding - MP connections | 4h | 2018-07-18 19:16 | 2018-07-19 07:16 | 358 | 2018-07-18 19:16 | 2018-07-19 07:16 | 4h | 93.5d | 0d | TEAM_2Shift_Calendar-1 | Helper; SMAW Welder | 8h | 475 | 475 |
| 360 | 4.3.13.31.15 | Shell Noz Welding-N7 & N8 - 2" SCH 160 | 4h | 2018-07-19 07:16 | 2018-07-19 11:16 | 359 | 2018-07-19 07:16 | 2018-07-19 11:16 | 4h | 93.5d | 0d | TEAM_2Shift_Calendar-1 | Helper; SMAW Welder | 8h | 475 | 475 |
| 361 | 4.3.13.31.16 | Shell Noz Root Dp Check | 3h | 2018-07-19 11:16 | 2018-07-19 14:16 | 360 | 2018-07-19 11:16 | 2018-07-19 14:16 | 3h | 93.5d |  | TEAM_2Shift_Calendar-1 | Helper; SMAW Welder | 6h | 356.25 | 356.25 |

| ID | WBS | Task | Duration | Start | Finish | Predecessors | Baseline start | Baseline finish | Baseline duration | Total slack | Free slack | Calendar | Resources | Work | Cost | Baseline cost |
| --- | --- | --- | --- | --- | --- | --- | --- | --- | --- | --- | --- | --- | --- | --- | --- | --- |
| 362 | 4.3.13.32 | **Sh Saddle Welding** | 13.42d | 2018-07-16 11:31 | 2018-07-24 06:51 |  | 2018-07-16 11:31 | 2018-07-24 06:51 | 13.42d | 86.43d |  | TEAM_2Shift_Calendar-1 |  | 318h | 19,935.42 | 19,935.42 |
| 363 | 4.3.13.32.1 | Sh-Saddle Pad Fit Up | 5h | 2018-07-16 11:31 | 2018-07-16 16:31 | 328 | 2018-07-16 11:31 | 2018-07-16 16:31 | 5h | 86.43d | 0d | TEAM_2Shift_Calendar-1 | SMAW Welder; Helper; Fitter [200%] | 20h | 1,281.25 | 1,281.25 |
| 364 | 4.3.13.32.2 | Sh-Saddle Pad Welding | 18.67h | 2018-07-16 16:31 | 2018-07-17 19:11 | 363 | 2018-07-16 16:31 | 2018-07-17 19:11 | 18.67h | 86.43d | 0d | TEAM_2Shift_Calendar-1 | Helper; SMAW Welder [200%] | 56h | 3,500 | 3,500 |
| 365 | 4.3.13.32.3 | Sh-Saddle Matching | 22.67h | 2018-07-17 19:11 | 2018-07-19 09:51 | 364 | 2018-07-17 19:11 | 2018-07-19 09:51 | 22.67h | 86.43d | 0d | TEAM_2Shift_Calendar-1 | Grinder [200%]; Fitter [200%] | 68h | 4,391.67 | 4,391.67 |
| 366 | 4.3.13.32.4 | Sh-Saddle Fit Up | 17.33h | 2018-07-19 09:51 | 2018-07-20 11:11 | 365 | 2018-07-19 09:51 | 2018-07-20 11:11 | 17.33h | 86.43d | 0d | TEAM_2Shift_Calendar-1 | Fitter [200%]; Helper; SMAW Welder | 52h | 3,250 | 3,250 |
| 367 | 4.3.13.32.5 | Sh-Saddle Welding | 34.67h | 2018-07-20 11:11 | 2018-07-23 13:51 | 366 | 2018-07-20 11:11 | 2018-07-23 13:51 | 34.67h | 86.43d | 0d | TEAM_2Shift_Calendar-1 | Helper [200%]; SMAW Welder [200%] | 104h | 6,500 | 6,500 |
| 368 | 4.3.13.32.6 | Sh-Saddle Dress Up | 9h | 2018-07-23 13:51 | 2018-07-24 06:51 | 367 | 2018-07-23 13:51 | 2018-07-24 06:51 | 9h | 86.43d |  | TEAM_2Shift_Calendar-1 | Grinder [200%] | 18h | 1,012.5 | 1,012.5 |
| 369 | 4.3.13.33 | **Sh Davit Arm Welding** | 2.38d | 2018-07-16 11:31 | 2018-07-17 14:31 |  | 2018-07-16 11:31 | 2018-07-17 14:31 | 2.38d | 94.84d | 0d | TEAM_2Shift_Calendar-1 |  | 43h | 2,631.25 | 2,631.25 |
| 370 | 4.3.13.33.1 | Sh-Davit Arm Arm Match | 5h | 2018-07-16 11:31 | 2018-07-16 16:31 | 328 | 2018-07-16 11:31 | 2018-07-16 16:31 | 5h | 94.84d | 0d | TEAM_2Shift_Calendar-1 | Grinder; Fitter | 10h | 625 | 625 |
| 371 | 4.3.13.33.2 | Sh-Davit Arm Fit Up | 5h | 2018-07-16 16:31 | 2018-07-16 21:31 | 370 | 2018-07-16 16:31 | 2018-07-16 21:31 | 5h | 94.84d | 0d | TEAM_2Shift_Calendar-1 | Helper; SMAW Welder; Fitter | 15h | 937.5 | 937.5 |
| 372 | 4.3.13.33.3 | Sh-Davit Arm Welding | 9h | 2018-07-16 21:31 | 2018-07-17 14:31 | 371 | 2018-07-16 21:31 | 2018-07-17 14:31 | 9h | 94.84d |  | TEAM_2Shift_Calendar-1 | Helper; SMAW Welder | 18h | 1,068.75 | 1,068.75 |
| 373 | 4.3.13.34 | **Sh Nde Clearence** | 2.62d | 2018-07-17 14:31 | 2018-07-18 19:31 |  | 2018-07-17 14:31 | 2018-07-18 19:31 | 2.62d | 94.84d |  | TEAM_2Shift_Calendar-1 |  | 42h | 2,493.75 | 2,493.75 |
| 374 | 4.3.13.34.1 | Sh-Sh Nde Clearence | 13h | 2018-07-17 14:31 | 2018-07-18 11:31 | 369 | 2018-07-17 14:31 | 2018-07-18 11:31 | 13h | 94.84d | 0d | TEAM_2Shift_Calendar-1 | Helper; Fitter | 26h | 1,543.75 | 1,543.75 |
| 375 | 4.3.13.34.2 | Tpi Inspection | 1d | 2018-07-18 11:31 | 2018-07-18 19:31 | 374 | 2018-07-18 11:31 | 2018-07-18 19:31 | 1d | 94.84d |  | TEAM_2Shift_Calendar-1 | Helper; Fitter | 16h | 950 | 950 |
| 376 | 4.3.14 | **Channel Fabrication** | 13.06d | 2018-06-04 17:01 | 2018-06-21 08:19 |  | 2018-05-17 17:01 | 2018-06-04 08:19 | 13.06d | 69.06d |  |  |  | 591.9h | 32,507.2 | 32,507.2 |
| 377 | 4.3.14.1 | **Channel Fabrication** | 4.88d | 2018-06-04 17:01 | 2018-06-07 08:01 |  | 2018-05-17 17:01 | 2018-05-21 08:01 | 4.88d | 138.24d | 0d | TEAM_2Shift_Calendar-1 |  | 43.5h | 675 | 675 |
| 378 | 4.3.14.1.1 | Ch Plate Trnasfer | 4d | 2018-06-04 17:01 | 2018-06-06 17:01 | 33 | 2018-05-17 17:01 | 2018-05-19 17:01 | 4d | 138.24d | 0d | TEAM_2Shift_Calendar-1 | Plate (Cost) [0.1%]; Forging Non-Std (Cost) [0.1%]; Store | 32h |  |  |
| 379 | 4.3.14.1.2 | Ch-Marking | 1.5h | 2018-06-06 17:01 | 2018-06-06 18:31 | 378 | 2018-05-19 17:01 | 2018-05-19 18:31 | 1.5h | 138.24d | 0d | TEAM_2Shift_Calendar-1 | Helper [200%]; Fitter | 3h | 178.12 | 178.12 |
| 380 | 4.3.14.1.3 | Ch-Cutting | 1h | 2018-06-06 18:31 | 2018-06-06 19:31 | 379 | 2018-05-19 18:31 | 2018-05-19 19:31 | 1h | 138.24d | 0d | TEAM_2Shift_Calendar-1 | Helper; Gas Cutter | 2h | 118.75 | 118.75 |
| 381 | 4.3.14.1.4 | Ch Pl Side Grinding | 1h | 2018-06-06 19:31 | 2018-06-06 20:31 | 380 | 2018-05-19 19:31 | 2018-05-19 20:31 | 1h | 138.24d | 0d | TEAM_2Shift_Calendar-1 | Grinder | 1h | 56.25 | 56.25 |
| 382 | 4.3.14.1.5 | Ch-Bevelling Cir Side | 2h | 2018-06-06 20:31 | 2018-06-07 06:31 | 381 | 2018-05-19 20:31 | 2018-05-21 06:31 | 2h | 138.24d | 0d | TEAM_2Shift_Calendar-1 | Helper [300%]; Fitter | 4h | 237.5 | 237.5 |
| 383 | 4.3.14.1.6 | Ch Ep Grinding | 1.5h | 2018-06-07 06:31 | 2018-06-07 08:01 | 382 | 2018-05-21 06:31 | 2018-05-21 08:01 | 1.5h | 138.24d |  | TEAM_2Shift_Calendar-1 | Grinder | 1.5h | 84.38 | 84.38 |
| 384 | 4.3.14.2 | **Channel Sh Rolling** | 1.41d | 2018-06-07 08:01 | 2018-06-07 19:19 |  | 2018-05-21 08:01 | 2018-05-21 19:19 | 1.41d | 138.24d | 0d | TEAM_2Shift_Calendar-1 |  | 31.9h | 2,043.13 | 2,043.13 |
| 385 | 4.3.14.2.1 | Ch-Pre Bend | 4h | 2018-06-07 08:01 | 2018-06-07 12:01 | 377 | 2018-05-21 08:01 | 2018-05-21 12:01 | 4h | 138.24d | 0d | TEAM_2Shift_Calendar-1 | Helper; Fitter [200%] | 12h | 750 | 750 |
| 386 | 4.3.14.2.2 | Ch-Pre Bend Cut Off | 1.3h | 2018-06-07 12:01 | 2018-06-07 13:19 | 385 | 2018-05-21 12:01 | 2018-05-21 13:19 | 1.3h | 138.24d | 0d | TEAM_2Shift_Calendar-1 | Gas Cutter; Fitter [200%] | 3.9h | 268.13 | 268.13 |
| 387 | 4.3.14.2.3 | Ch Ls Beveling | 2h | 2018-06-07 13:19 | 2018-06-07 15:19 | 386 | 2018-05-21 13:19 | 2018-05-21 15:19 | 2h | 138.24d | 0d | TEAM_2Shift_Calendar-1 | Fitter [200%] | 4h | 275 | 275 |
| 388 | 4.3.14.2.4 | Ch-Rolling | 4h | 2018-06-07 15:19 | 2018-06-07 19:19 | 387 | 2018-05-21 15:19 | 2018-05-21 19:19 | 4h | 138.24d |  | TEAM_2Shift_Calendar-1 | Helper; Fitter [200%] | 12h | 750 | 750 |

| ID | WBS | Task | Duration | Start | Finish | Predecessors | Baseline start | Baseline finish | Baseline duration | Total slack | Free slack | Calendar | Resources | Work | Cost | Baseline cost |
| --- | --- | --- | --- | --- | --- | --- | --- | --- | --- | --- | --- | --- | --- | --- | --- | --- |
| 389 | 4.3.14.3 | **Ch Shell Ls Fit Up** | 0.5d | 2018-06-07 19:19 | 2018-06-08 07:19 |  | 2018-05-21 19:19 | 2018-05-22 07:19 | 0.5d | 138.24d | 0d | TEAM_2Shift_Calendar-1 |  | 12h | 787.5 | 787.5 |
| 390 | 4.3.14.3.1 | Ch-Ls Correction | 2h | 2018-06-07 19:19 | 2018-06-07 21:19 | 384 | 2018-05-21 19:19 | 2018-05-21 21:19 | 2h | 138.24d | 0d | TEAM_2Shift_Calendar-1 | Fitter [200%] | 4h | 275 | 275 |
| 391 | 4.3.14.3.2 | Ch-Ls Fit Up | 2h | 2018-06-07 21:19 | 2018-06-08 07:19 | 390 | 2018-05-21 21:19 | 2018-05-22 07:19 | 2h | 138.24d |  | TEAM_2Shift_Calendar-1 | SMAW Welder; Helper; Fitter [200%] | 8h | 512.5 | 512.5 |
| 392 | 4.3.14.4 | **Ch Shell Ls Welding** | 1.56d | 2018-06-08 07:19 | 2018-06-08 19:49 |  | 2018-05-22 07:19 | 2018-05-22 19:49 | 1.56d | 138.24d | 0d | TEAM_2Shift_Calendar-1 |  | 27.5h | 1,640.62 | 1,640.62 |
| 393 | 4.3.14.4.1 | Ch-Ls Weld Arrangement | 3h | 2018-06-08 07:19 | 2018-06-08 10:19 | 389 | 2018-05-22 07:19 | 2018-05-22 10:19 | 3h | 138.24d | 0d | TEAM_2Shift_Calendar-1 | Helper [200%]; Fitter | 6h | 356.25 | 356.25 |
| 394 | 4.3.14.4.2 | Ch-Ls Welding- Top Side | 2h | 2018-06-08 10:19 | 2018-06-08 12:19 | 393 | 2018-05-22 10:19 | 2018-05-22 12:19 | 2h | 138.24d | 0d | TEAM_2Shift_Calendar-1 | Helper; SMAW Welder | 4h | 237.5 | 237.5 |
| 395 | 4.3.14.4.3 | Ch-Ls Welding- Back Chip | 2h | 2018-06-08 12:19 | 2018-06-08 14:19 | 394 | 2018-05-22 12:19 | 2018-05-22 14:19 | 2h | 138.24d | 0d | TEAM_2Shift_Calendar-1 | Helper; Grinder | 4h | 212.5 | 212.5 |
| 396 | 4.3.14.4.4 | Ch-Ls Innner Flush Grind | 1.5h | 2018-06-08 14:19 | 2018-06-08 15:49 | 395 | 2018-05-22 14:19 | 2018-05-22 15:49 | 1.5h | 138.24d | 0d | TEAM_2Shift_Calendar-1 | Grinder | 1.5h | 84.38 | 84.38 |
| 397 | 4.3.14.4.5 | Ch Re Rolling | 4h | 2018-06-08 15:49 | 2018-06-08 19:49 | 396 | 2018-05-22 15:49 | 2018-05-22 19:49 | 4h | 138.24d |  | TEAM_2Shift_Calendar-1 | Helper; Fitter [200%] | 12h | 750 | 750 |
| 398 | 4.3.14.5 | **Ch Ls Welding Radiography** | 1d | 2018-06-08 19:49 | 2018-06-11 11:49 |  | 2018-05-22 19:49 | 2018-05-23 11:49 | 1d | 138.24d | 0d | TEAM_2Shift_Calendar-1 |  | 8h |  |  |
| 399 | 4.3.14.5.1 | Ch Ls Welding Rt | 1d | 2018-06-08 19:49 | 2018-06-11 11:49 | 392 | 2018-05-22 19:49 | 2018-05-23 11:49 | 1d | 138.24d |  | TEAM_2Shift_Calendar-1 | SC Radiography (Work) | 8h |  |  |
| 400 | 4.3.14.6 | **Ch Cs Flg 1 Fit Up** | 1.38d | 2018-06-11 11:49 | 2018-06-12 06:49 |  | 2018-05-23 11:49 | 2018-05-24 06:49 | 1.38d | 152.68d | 0d | TEAM_2Shift_Calendar-1 |  | 28h | 1,775 | 1,775 |
| 401 | 4.3.14.6.1 | Ch Cir Ep Correction | 3h | 2018-06-11 11:49 | 2018-06-11 14:49 | 398 | 2018-05-23 11:49 | 2018-05-23 14:49 | 3h | 152.68d | 0d | TEAM_2Shift_Calendar-1 | Fitter [200%] | 6h | 412.5 | 412.5 |
| 402 | 4.3.14.6.2 | Ch Cs Fit Up Flg1 | 3h | 2018-06-11 14:49 | 2018-06-11 17:49 | 401 | 2018-05-23 14:49 | 2018-05-23 17:49 | 3h | 152.68d | 0d | TEAM_2Shift_Calendar-1 | SMAW Welder; Helper; Fitter [200%] | 12h | 768.75 | 768.75 |
| 403 | 4.3.14.6.3 | Ch Cs Tack Dp Check Flg1 | 5h | 2018-06-11 17:49 | 2018-06-12 06:49 | 402 | 2018-05-23 17:49 | 2018-05-24 06:49 | 5h | 152.68d |  | TEAM_2Shift_Calendar-1 | Helper; Fitter | 10h | 593.75 | 593.75 |
| 404 | 4.3.14.7 | **Ch Cs Flg 1 Welding** | 1.75d | 2018-06-12 06:49 | 2018-06-12 20:49 |  | 2018-05-24 06:49 | 2018-05-24 20:49 | 1.75d | 152.68d |  | TEAM_2Shift_Calendar-1 |  | 23h | 1,350 | 1,350 |
| 405 | 4.3.14.7.1 | Ch Cs Welding Transfere | 3h | 2018-06-12 06:49 | 2018-06-12 09:49 | 400 | 2018-05-24 06:49 | 2018-05-24 09:49 | 3h | 152.68d | 0d | TEAM_2Shift_Calendar-1 | Helper [200%]; Fitter | 6h | 356.25 | 356.25 |
| 406 | 4.3.14.7.2 | Ch Cs Welding Outer Flg1 | 6h | 2018-06-12 09:49 | 2018-06-12 15:49 | 405 | 2018-05-24 09:49 | 2018-05-24 15:49 | 6h | 152.68d | 0d | TEAM_2Shift_Calendar-1 | Helper; SMAW Welder | 12h | 712.5 | 712.5 |
| 407 | 4.3.14.7.3 | Ch Cs Welding Back Chip Flg1 | 3h | 2018-06-12 15:49 | 2018-06-12 18:49 | 406 | 2018-05-24 15:49 | 2018-05-24 18:49 | 3h | 152.68d | 0d | TEAM_2Shift_Calendar-1 | Grinder | 3h | 168.75 | 168.75 |
| 408 | 4.3.14.7.4 | Ch Cs Flush Grinding Flg1 | 2h | 2018-06-12 18:49 | 2018-06-12 20:49 | 407 | 2018-05-24 18:49 | 2018-05-24 20:49 | 2h | 152.68d |  | TEAM_2Shift_Calendar-1 | Grinder | 2h | 112.5 | 112.5 |
| 409 | 4.3.14.8 | **Ch Cs Flg 2 Fit Up** | 1.06d | 2018-06-11 11:49 | 2018-06-11 20:19 |  | 2018-05-23 11:49 | 2018-05-23 20:19 | 1.06d | 138.24d | 0d | TEAM_2Shift_Calendar-1 |  | 20h | 1,271.88 | 1,271.88 |
| 410 | 4.3.14.8.1 | Ch Length Cutting | 1.5h | 2018-06-11 11:49 | 2018-06-11 13:19 | 398 | 2018-05-23 11:49 | 2018-05-23 13:19 | 1.5h | 138.24d | 0d | TEAM_2Shift_Calendar-1 | Helper; Gas Cutter | 3h | 178.12 | 178.12 |
| 411 | 4.3.14.8.2 | Ch Cir Ep Correction | 1h | 2018-06-11 13:19 | 2018-06-11 14:19 | 410 | 2018-05-23 13:19 | 2018-05-23 14:19 | 1h | 138.24d | 0d | TEAM_2Shift_Calendar-1 | Helper; Fitter | 2h | 118.75 | 118.75 |
| 412 | 4.3.14.8.3 | Ch Cs Fit Up Flg2 | 3h | 2018-06-11 14:19 | 2018-06-11 17:19 | 411 | 2018-05-23 14:19 | 2018-05-23 17:19 | 3h | 138.24d | 0d | TEAM_2Shift_Calendar-1 | SMAW Welder; Helper; Fitter [200%] | 12h | 768.75 | 768.75 |
| 413 | 4.3.14.8.4 | Ch Cs Tack Dp Check Flg1 | 3h | 2018-06-11 17:19 | 2018-06-11 20:19 | 412 | 2018-05-23 17:19 | 2018-05-23 20:19 | 3h | 138.24d |  | TEAM_2Shift_Calendar-1 | Fitter | 3h | 206.25 | 206.25 |

| ID | WBS | Task | Duration | Start | Finish | Predecessors | Baseline start | Baseline finish | Baseline duration | Total slack | Free slack | Calendar | Resources | Work | Cost | Baseline cost |
| --- | --- | --- | --- | --- | --- | --- | --- | --- | --- | --- | --- | --- | --- | --- | --- | --- |
| 414 | 4.3.14.9 | **Ch Cs Flg 2 Welding** | 1.75d | 2018-06-11 20:19 | 2018-06-12 18:19 |  | 2018-05-23 20:19 | 2018-05-24 18:19 | 1.75d | 138.24d | 0d | TEAM_2Shift_Calendar-1 |  | 23h | 1,350 | 1,350 |
| 415 | 4.3.14.9.1 | Ch Cs Welding Transfere Flg2 | 3h | 2018-06-11 20:19 | 2018-06-12 07:19 | 409 | 2018-05-23 20:19 | 2018-05-24 07:19 | 3h | 138.24d | 0d | TEAM_2Shift_Calendar-1 | Helper [200%]; Fitter | 6h | 356.25 | 356.25 |
| 416 | 4.3.14.9.2 | Ch Cs Welding Outer Flg2 | 6h | 2018-06-12 07:19 | 2018-06-12 13:19 | 415 | 2018-05-24 07:19 | 2018-05-24 13:19 | 6h | 138.24d | 0d | TEAM_2Shift_Calendar-1 | Helper; SMAW Welder | 12h | 712.5 | 712.5 |
| 417 | 4.3.14.9.3 | Ch Cs Welding Back Chip Flg2 | 3h | 2018-06-12 13:19 | 2018-06-12 16:19 | 416 | 2018-05-24 13:19 | 2018-05-24 16:19 | 3h | 138.24d | 0d | TEAM_2Shift_Calendar-1 | Grinder | 3h | 168.75 | 168.75 |
| 418 | 4.3.14.9.4 | Ch Cs Flush Grinding Flg2 | 2h | 2018-06-12 16:19 | 2018-06-12 18:19 | 417 | 2018-05-24 16:19 | 2018-05-24 18:19 | 2h | 138.24d |  | TEAM_2Shift_Calendar-1 | Grinder | 2h | 112.5 | 112.5 |
| 419 | 4.3.14.10 | **Ch Cs Flg 1 & 2 Welding Rt** | 1d | 2018-06-12 18:19 | 2018-06-13 10:19 |  | 2018-05-24 18:19 | 2018-05-25 10:19 | 1d | 138.24d | 0d | TEAM_2Shift_Calendar-1 |  | 8h |  |  |
| 420 | 4.3.14.10.1 | Ch Cs Welding Rt | 1d | 2018-06-12 18:19 | 2018-06-13 10:19 | 414 | 2018-05-24 18:19 | 2018-05-25 10:19 | 1d | 138.24d |  | TEAM_2Shift_Calendar-1 | SC Radiography (Work) | 8h |  |  |
| 421 | 4.3.14.11 | **Channel Noz Marking** | 1.25d | 2018-06-13 10:19 | 2018-06-13 20:19 |  | 2018-05-25 10:19 | 2018-05-25 20:19 | 1.25d | 138.24d | 0d | TEAM_2Shift_Calendar-1 |  | 20h | 1,187.5 | 1,187.5 |
| 422 | 4.3.14.11.1 | Ch- Noz Ireientation Nkg | 5h | 2018-06-13 10:19 | 2018-06-13 15:19 | 419 | 2018-05-25 10:19 | 2018-05-25 15:19 | 5h | 138.24d | 0d | TEAM_2Shift_Calendar-1 | Helper; Fitter | 10h | 593.75 | 593.75 |
| 423 | 4.3.14.11.2 | Ch-Noz Marking- 6"Nb - 2 Nos | 5h | 2018-06-13 15:19 | 2018-06-13 20:19 | 422 | 2018-05-25 15:19 | 2018-05-25 20:19 | 5h | 138.24d |  | TEAM_2Shift_Calendar-1 | Helper; Fitter | 10h | 593.75 | 593.75 |
| 424 | 4.3.14.12 | **Ch Noz Opnning** | 0.19d | 2018-06-13 20:19 | 2018-06-13 21:49 |  | 2018-05-25 20:19 | 2018-05-25 21:49 | 0.19d | 138.24d |  | TEAM_2Shift_Calendar-1 |  | 6h | 356.25 | 356.25 |
| 425 | 4.3.14.12.1 | Ch-Noz Openning-Top | 1.5h | 2018-06-13 20:19 | 2018-06-13 21:49 | 421 | 2018-05-25 20:19 | 2018-05-25 21:49 | 1.5h | 138.24d | 0d | TEAM_2Shift_Calendar-1 | Helper; Gas Cutter | 3h | 178.12 | 178.12 |
| 426 | 4.3.14.12.2 | Ch-Noz Openning-Bot | 1.5h | 2018-06-13 20:19 | 2018-06-13 21:49 | 421 | 2018-05-25 20:19 | 2018-05-25 21:49 | 1.5h | 138.24d | 0d | TEAM_2Shift_Calendar-1 | Helper; Gas Cutter | 3h | 178.12 | 178.12 |
| 427 | 4.3.14.13 | **Ch Noz Open Ep** | 0.25d | 2018-06-13 21:49 | 2018-06-14 07:49 |  | 2018-05-25 21:49 | 2018-05-28 07:49 | 0.25d | 138.24d |  | TEAM_2Shift_Calendar-1 |  | 8h | 425 | 425 |
| 428 | 4.3.14.13.1 | Ch-Noz Ep -N5 | 2h | 2018-06-13 21:49 | 2018-06-14 07:49 | 425 | 2018-05-25 21:49 | 2018-05-28 07:49 | 2h | 138.24d | 0d | TEAM_2Shift_Calendar-1 | Helper; Grinder | 4h | 212.5 | 212.5 |
| 429 | 4.3.14.13.2 | Ch-Noz Ep-N6 | 2h | 2018-06-13 21:49 | 2018-06-14 07:49 | 426 | 2018-05-25 21:49 | 2018-05-28 07:49 | 2h | 138.24d | 0d | TEAM_2Shift_Calendar-1 | Helper; Grinder | 4h | 212.5 | 212.5 |
| 430 | 4.3.14.14 | **Ch Noz Fit Up** | 0.25d | 2018-06-14 07:49 | 2018-06-14 09:49 |  | 2018-05-28 07:49 | 2018-05-28 09:49 | 0.25d | 138.24d |  | TEAM_2Shift_Calendar-1 |  | 16h | 1,025 | 1,025 |
| 431 | 4.3.14.14.1 | Ch-Noz Fit Up -N5 | 2h | 2018-06-14 07:49 | 2018-06-14 09:49 | 428 | 2018-05-28 07:49 | 2018-05-28 09:49 | 2h | 138.24d | 0d | TEAM_2Shift_Calendar-1 | SMAW Welder; Helper; Fitter [200%] | 8h | 512.5 | 512.5 |
| 432 | 4.3.14.14.2 | Ch-Noz Fit Up -N6 | 2h | 2018-06-14 07:49 | 2018-06-14 09:49 | 429 | 2018-05-28 07:49 | 2018-05-28 09:49 | 2h | 138.24d | 0d | TEAM_2Shift_Calendar-1 | SMAW Welder; Helper; Fitter [200%] | 8h | 512.5 | 512.5 |
| 433 | 4.3.14.15 | **Ch Noz Fit Up Insp** | 0.25d | 2018-06-14 09:49 | 2018-06-14 11:49 |  | 2018-05-28 09:49 | 2018-05-28 11:49 | 0.25d | 138.24d | 0d | TEAM_2Shift_Calendar-1 |  | 8h | 475 | 475 |
| 434 | 4.3.14.15.1 | Ch-Noz Inspn -N5 | 2h | 2018-06-14 09:49 | 2018-06-14 11:49 | 431 | 2018-05-28 09:49 | 2018-05-28 11:49 | 2h | 138.24d | 0d | TEAM_2Shift_Calendar-1 | Helper; Fitter | 4h | 237.5 | 237.5 |
| 435 | 4.3.14.15.2 | Ch-Noz Inspn-N6 | 2h | 2018-06-14 09:49 | 2018-06-14 11:49 | 432 | 2018-05-28 09:49 | 2018-05-28 11:49 | 2h | 138.24d | 0d | TEAM_2Shift_Calendar-1 | Helper; Fitter | 4h | 237.5 | 237.5 |
| 436 | 4.3.14.16 | **Ch Noz Welding** | 3.31d | 2018-06-14 11:49 | 2018-06-16 06:19 |  | 2018-05-28 11:49 | 2018-05-30 06:19 | 3.31d | 138.24d | 0d | TEAM_2Shift_Calendar-1 |  | 100h | 5,707.81 | 5,707.81 |
| 437 | 4.3.14.16.1 | Ch Noz Welding Arrangement | 2.25h | 2018-06-14 11:49 | 2018-06-14 14:04 | 433 | 2018-05-28 11:49 | 2018-05-28 14:04 | 2.25h | 141.28d |  | TEAM_2Shift_Calendar-1 | Helper [200%]; Fitter | 4.5h | 267.19 | 267.19 |
| 438 | 4.3.14.16.2 | Ch-Noz Welding -N5 | 4h | 2018-06-14 11:49 | 2018-06-14 15:49 | 434 | 2018-05-28 11:49 | 2018-05-28 15:49 | 4h | 138.24d | 0d | TEAM_2Shift_Calendar-1 | Helper; SMAW Welder | 8h | 475 | 475 |
| 439 | 4.3.14.16.3 | Ch-Noz Welding-N6 | 4h | 2018-06-14 11:49 | 2018-06-14 15:49 | 435 | 2018-05-28 11:49 | 2018-05-28 15:49 | 4h | 138.24d | 0d | TEAM_2Shift_Calendar-1 | Helper; SMAW Welder | 8h | 475 | 475 |
| 440 | 4.3.14.16.4 | Ch Noz Root Dp Check | 3h | 2018-06-14 15:49 | 2018-06-14 18:49 | 438, 439 | 2018-05-28 15:49 | 2018-05-28 18:49 | 3h | 138.24d | 0d | TEAM_2Shift_Calendar-1 | Helper; SMAW Welder | 6h | 356.25 | 356.25 |
| 441 | 4.3.14.16.5 | Ch-Noz Inner Weld -N5 | 4h | 2018-06-14 18:49 | 2018-06-15 06:49 | 440 | 2018-05-28 18:49 | 2018-05-29 06:49 | 4h | 138.43d | 0d | TEAM_2Shift_Calendar-1 | Helper; SMAW Welder | 8h | 475 | 475 |
| 442 | 4.3.14.16.6 | Ch-Noz Inner Weld-N6 | 4h | 2018-06-14 18:49 | 2018-06-15 06:49 | 440 | 2018-05-28 18:49 | 2018-05-29 06:49 | 4h | 138.24d | 0d | TEAM_2Shift_Calendar-1 | Helper; SMAW Welder | 8h | 475 | 475 |
| 443 | 4.3.14.16.7 | Rf Pad Fit Up & Nozzle Fit Up - N5 | 5h | 2018-06-15 06:49 | 2018-06-15 11:49 | 441 | 2018-05-29 06:49 | 2018-05-29 11:49 | 5h | 138.43d | 0d | TEAM_2Shift_Calendar-1 | Helper; SMAW Welder | 10h | 593.75 | 593.75 |
| 444 | 4.3.14.16.8 | Rf Pad Fit Up & Nozzle Fit Up - N6 | 5h | 2018-06-15 06:49 | 2018-06-15 11:49 | 442 | 2018-05-29 06:49 | 2018-05-29 11:49 | 5h | 138.24d | 0d | TEAM_2Shift_Calendar-1 | Helper; SMAW Welder | 10h | 593.75 | 593.75 |
| 445 | 4.3.14.16.9 | Rf Pad Fit Up Welding - N5 | 9h | 2018-06-15 11:49 | 2018-06-15 20:49 | 443 | 2018-05-29 11:49 | 2018-05-29 20:49 | 9h | 138.43d |  | TEAM_2Shift_Calendar-1 | Helper; Grinder | 18h | 956.25 | 956.25 |
| 446 | 4.3.14.16.10 | Rf Pad Fit Up Welding - N6 | 9h | 2018-06-15 11:49 | 2018-06-15 20:49 | 444 | 2018-05-29 11:49 | 2018-05-29 20:49 | 9h | 138.24d | 0d | TEAM_2Shift_Calendar-1 | Helper; Grinder | 18h | 956.25 | 956.25 |
| 447 | 4.3.14.16.11 | Noz Welding Flush Grind- 16"Nb | 1.5h | 2018-06-15 20:49 | 2018-06-16 06:19 | 446 | 2018-05-29 20:49 | 2018-05-30 06:19 | 1.5h | 138.24d |  | TEAM_2Shift_Calendar-1 | Grinder | 1.5h | 84.38 | 84.38 |

| ID | WBS | Task | Duration | Start | Finish | Predecessors | Baseline start | Baseline finish | Baseline duration | Total slack | Free slack | Calendar | Resources | Work | Cost | Baseline cost |
| --- | --- | --- | --- | --- | --- | --- | --- | --- | --- | --- | --- | --- | --- | --- | --- | --- |
| 448 | 4.3.14.17 | **Channel Pp Plate Fit Up** | 1.19d | 2018-06-16 06:19 | 2018-06-16 15:49 |  | 2018-05-30 06:19 | 2018-05-30 15:49 | 1.19d | 138.24d | 0d | TEAM_2Shift_Calendar-1 |  | 32h | 2,021.88 | 2,021.88 |
| 449 | 4.3.14.17.1 | Ch- Pp Plate Fit Up | 6.5h | 2018-06-16 06:19 | 2018-06-16 12:49 | 436 | 2018-05-30 06:19 | 2018-05-30 12:49 | 6.5h | 138.24d | 0d | TEAM_2Shift_Calendar-1 | Helper; SMAW Welder; Fitter [200%] | 26h | 1,665.63 | 1,665.63 |
| 450 | 4.3.14.17.2 | Ch- Pp Plate Fit Up Insp | 3h | 2018-06-16 12:49 | 2018-06-16 15:49 | 449 | 2018-05-30 12:49 | 2018-05-30 15:49 | 3h | 138.24d |  | TEAM_2Shift_Calendar-1 | Helper; Fitter | 6h | 356.25 | 356.25 |
| 451 | 4.3.14.18 | **Ch Pp Plate Welding** | 7.06d | 2018-06-16 15:49 | 2018-06-21 08:19 |  | 2018-05-30 15:49 | 2018-06-04 08:19 | 7.06d | 138.24d |  | TEAM_2Shift_Calendar-1 |  | 113h | 6,615.62 | 6,615.62 |
| 452 | 4.3.14.18.1 | Ch- Pp Plate Welding | 49h | 2018-06-16 15:49 | 2018-06-20 16:49 | 448 | 2018-05-30 15:49 | 2018-06-02 16:49 | 49h | 138.24d | 0d | TEAM_2Shift_Calendar-1 | Helper; SMAW Welder | 98h | 5,818.75 | 5,818.75 |
| 453 | 4.3.14.18.2 | Ch- Pp Plate Face Grinding | 7.5h | 2018-06-20 16:49 | 2018-06-21 08:19 | 452 | 2018-06-02 16:49 | 2018-06-04 08:19 | 7.5h | 138.24d |  | TEAM_2Shift_Calendar-1 | Helper; Grinder | 15h | 796.88 | 796.88 |
| 454 | 4.3.14.19 | **Channel Davit Arm Welding** | 2.5d | 2018-06-16 15:49 | 2018-06-18 19:49 |  | 2018-05-30 15:49 | 2018-05-31 19:49 | 2.5d | 141.56d | 0d | TEAM_2Shift_Calendar-1 |  | 45h | 2,718.75 | 2,718.75 |
| 455 | 4.3.14.19.1 | Ch-Davit Arm Arm Match | 5h | 2018-06-16 15:49 | 2018-06-16 20:49 | 448 | 2018-05-30 15:49 | 2018-05-30 20:49 | 5h | 141.56d | 0d | TEAM_2Shift_Calendar-1 | Helper; Fitter | 10h | 593.75 | 593.75 |
| 456 | 4.3.14.19.2 | Ch-Davit Arm Fit Up | 5h | 2018-06-16 20:49 | 2018-06-18 09:49 | 455 | 2018-05-30 20:49 | 2018-05-31 09:49 | 5h | 141.56d | 0d | TEAM_2Shift_Calendar-1 | SMAW Welder; Helper; Fitter | 15h | 937.5 | 937.5 |
| 457 | 4.3.14.19.3 | Ch-Davit Arm Welding | 10h | 2018-06-18 09:49 | 2018-06-18 19:49 | 456 | 2018-05-31 09:49 | 2018-05-31 19:49 | 10h | 141.56d |  | TEAM_2Shift_Calendar-1 | Helper; SMAW Welder | 20h | 1,187.5 | 1,187.5 |
| 458 | 4.3.14.20 | **Channel Nde & Pwht** | 1.25d | 2018-06-18 19:49 | 2018-06-19 13:49 |  | 2018-05-31 19:49 | 2018-06-01 13:49 | 1.25d | 141.56d |  | TEAM_2Shift_Calendar-1 |  | 19h | 1,081.25 | 1,081.25 |
| 459 | 4.3.14.20.1 | Ch All Welding Dressup & Dp Check | 9h | 2018-06-18 19:49 | 2018-06-19 12:49 | 454 | 2018-05-31 19:49 | 2018-06-01 12:49 | 9h | 141.56d | 0d | TEAM_2Shift_Calendar-1 | Grinder [200%] | 18h | 1,012.5 | 1,012.5 |
| 460 | 4.3.14.20.2 | Ch-Ch Nde Clearence | 1h | 2018-06-19 12:49 | 2018-06-19 13:49 | 459 | 2018-06-01 12:49 | 2018-06-01 13:49 | 1h | 141.56d |  | TEAM_2Shift_Calendar-1 | Fitter | 1h | 68.75 | 68.75 |
| 461 | 4.3.15 | **Barrel Fabrication** | 11.06d | 2018-06-04 17:01 | 2018-06-18 21:45 |  | 2018-05-17 17:01 | 2018-05-31 21:45 | 11.06d | 71.06d |  |  |  | 367h | 20,874.99 | 20,874.99 |
| 462 | 4.3.15.1 | **Barrel Fabrication** | 4.09d | 2018-06-04 17:01 | 2018-06-06 17:46 |  | 2018-05-17 17:01 | 2018-05-19 17:46 | 4.09d | 142.78d | 0d | TEAM_2Shift_Calendar-1 |  | 54.5h | 3,170.31 | 3,170.31 |
| 463 | 4.3.15.1.1 | Barrel Plate Trnasfer | 1h | 2018-06-04 17:01 | 2018-06-04 18:01 | 35 | 2018-05-17 17:01 | 2018-05-17 18:01 | 1h | 142.78d | 0d | TEAM_2Shift_Calendar-1 | Plate (Cost) [0.1%]; Store | 1h |  |  |
| 464 | 4.3.15.1.2 | Barrel Sh Plate Cutting & Ep | 4h | 2018-06-04 18:01 | 2018-06-05 06:01 | 463 | 2018-05-17 18:01 | 2018-05-18 06:01 | 4h | 142.78d | 0d | TEAM_2Shift_Calendar-1 | Grinder; Gas Cutter | 8h | 500 | 500 |
| 465 | 4.3.15.1.3 | Barrel-Marking | 3.75h | 2018-06-05 06:01 | 2018-06-05 09:46 | 464 | 2018-05-18 06:01 | 2018-05-18 09:46 | 3.75h | 142.78d | 0d | TEAM_2Shift_Calendar-1 | Helper [200%]; Fitter | 7.5h | 445.31 | 445.31 |
| 466 | 4.3.15.1.4 | Barrel-Cutting | 2h | 2018-06-05 09:46 | 2018-06-05 11:46 | 465 | 2018-05-18 09:46 | 2018-05-18 11:46 | 2h | 142.78d | 0d | TEAM_2Shift_Calendar-1 | Helper; Gas Cutter | 4h | 237.5 | 237.5 |
| 467 | 4.3.15.1.5 | Barrel Pl Side Grinding | 4h | 2018-06-05 11:46 | 2018-06-05 15:46 | 466 | 2018-05-18 11:46 | 2018-05-18 15:46 | 4h | 142.78d | 0d | TEAM_2Shift_Calendar-1 | Grinder | 4h | 225 | 225 |
| 468 | 4.3.15.1.6 | Barrel-Bevelling Cir Side | 12h | 2018-06-05 15:46 | 2018-06-06 11:46 | 467 | 2018-05-18 15:46 | 2018-05-19 11:46 | 12h | 142.78d | 0d | TEAM_2Shift_Calendar-1 | Helper [300%]; Fitter | 24h | 1,425 | 1,425 |
| 469 | 4.3.15.1.7 | Ch Ep Grinding | 6h | 2018-06-06 11:46 | 2018-06-06 17:46 | 468 | 2018-05-19 11:46 | 2018-05-19 17:46 | 6h | 142.78d |  | TEAM_2Shift_Calendar-1 | Grinder | 6h | 337.5 | 337.5 |
| 470 | 4.3.15.2 | **Bar Shell Rolling** | 1.5d | 2018-06-06 17:46 | 2018-06-07 13:46 |  | 2018-05-19 17:46 | 2018-05-21 13:46 | 1.5d | 142.78d | 0d | TEAM_2Shift_Calendar-1 |  | 33.5h | 2,153.12 | 2,153.12 |
| 471 | 4.3.15.2.1 | Barrel-Pre Bend | 4h | 2018-06-06 17:46 | 2018-06-06 21:46 | 462 | 2018-05-19 17:46 | 2018-05-19 21:46 | 4h | 142.78d | 0d | TEAM_2Shift_Calendar-1 | Helper; Fitter [200%] | 12h | 750 | 750 |
| 472 | 4.3.15.2.2 | Barrel-Pre Bend Cut Off | 1.5h | 2018-06-06 21:46 | 2018-06-07 07:16 | 471 | 2018-05-19 21:46 | 2018-05-21 07:16 | 1.5h | 142.78d | 0d | TEAM_2Shift_Calendar-1 | Gas Cutter; Fitter [200%] | 4.5h | 309.37 | 309.37 |
| 473 | 4.3.15.2.3 | Barrel -Pre Ls Ep | 2.5h | 2018-06-07 07:16 | 2018-06-07 09:46 | 472 | 2018-05-21 07:16 | 2018-05-21 09:46 | 2.5h | 142.78d | 0d | TEAM_2Shift_Calendar-1 | Fitter [200%] | 5h | 343.75 | 343.75 |
| 474 | 4.3.15.2.4 | Barrel-Rolling | 4h | 2018-06-07 09:46 | 2018-06-07 13:46 | 473 | 2018-05-21 09:46 | 2018-05-21 13:46 | 4h | 142.78d |  | TEAM_2Shift_Calendar-1 | Helper; Fitter [200%] | 12h | 750 | 750 |

| ID | WBS | Task | Duration | Start | Finish | Predecessors | Baseline start | Baseline finish | Baseline duration | Total slack | Free slack | Calendar | Resources | Work | Cost | Baseline cost |
| --- | --- | --- | --- | --- | --- | --- | --- | --- | --- | --- | --- | --- | --- | --- | --- | --- |
| 475 | 4.3.15.3 | **Barrel Shell Ls Fit Up** | 0.56d | 2018-06-07 13:46 | 2018-06-07 18:16 |  | 2018-05-21 13:46 | 2018-05-21 18:16 | 0.56d | 142.78d | 0d | TEAM_2Shift_Calendar-1 |  | 13h | 856.25 | 856.25 |
| 476 | 4.3.15.3.1 | Barrel-Ls Correction | 2.5h | 2018-06-07 13:46 | 2018-06-07 16:16 | 470 | 2018-05-21 13:46 | 2018-05-21 16:16 | 2.5h | 142.78d | 0d | TEAM_2Shift_Calendar-1 | Fitter [200%] | 5h | 343.75 | 343.75 |
| 477 | 4.3.15.3.2 | Barrel-Ls Fit Up | 2h | 2018-06-07 16:16 | 2018-06-07 18:16 | 476 | 2018-05-21 16:16 | 2018-05-21 18:16 | 2h | 142.78d |  | TEAM_2Shift_Calendar-1 | SMAW Welder; Helper; Fitter [200%] | 8h | 512.5 | 512.5 |
| 478 | 4.3.15.4 | **Barrel Shell Ls Welding** | 1.75d | 2018-06-07 18:16 | 2018-06-08 16:16 |  | 2018-05-21 18:16 | 2018-05-22 16:16 | 1.75d | 142.78d | 0d | TEAM_2Shift_Calendar-1 |  | 30h | 1,787.5 | 1,787.5 |
| 479 | 4.3.15.4.1 | Barrel-Ls Weld Arrangement | 3h | 2018-06-07 18:16 | 2018-06-07 21:16 | 475 | 2018-05-21 18:16 | 2018-05-21 21:16 | 3h | 142.78d | 0d | TEAM_2Shift_Calendar-1 | Helper [200%]; Fitter | 6h | 356.25 | 356.25 |
| 480 | 4.3.15.4.2 | Barrel-Ls Welding- Top Side | 3h | 2018-06-07 21:16 | 2018-06-08 08:16 | 479 | 2018-05-21 21:16 | 2018-05-22 08:16 | 3h | 142.78d | 0d | TEAM_2Shift_Calendar-1 | Helper; SMAW Welder | 6h | 356.25 | 356.25 |
| 481 | 4.3.15.4.3 | Barrel-Ls Welding- Back Chip | 2h | 2018-06-08 08:16 | 2018-06-08 10:16 | 480 | 2018-05-22 08:16 | 2018-05-22 10:16 | 2h | 142.78d | 0d | TEAM_2Shift_Calendar-1 | Helper; Grinder | 4h | 212.5 | 212.5 |
| 482 | 4.3.15.4.4 | Barrel-Ls Innner Flush Grind | 2h | 2018-06-08 10:16 | 2018-06-08 12:16 | 481 | 2018-05-22 10:16 | 2018-05-22 12:16 | 2h | 142.78d | 0d | TEAM_2Shift_Calendar-1 | Grinder | 2h | 112.5 | 112.5 |
| 483 | 4.3.15.4.5 | Barrel Re Rolling | 4h | 2018-06-08 12:16 | 2018-06-08 16:16 | 482 | 2018-05-22 12:16 | 2018-05-22 16:16 | 4h | 142.78d |  | TEAM_2Shift_Calendar-1 | Helper; Fitter [200%] | 12h | 750 | 750 |
| 484 | 4.3.15.5 | **Barrel Ls Welding Rt** | 1d | 2018-06-08 16:16 | 2018-06-11 08:16 |  | 2018-05-22 16:16 | 2018-05-23 08:16 | 1d | 142.78d |  | TEAM_2Shift_Calendar-1 |  | 8h |  |  |
| 485 | 4.3.15.5.1 | Bar Ls Welding Rt | 1d | 2018-06-08 16:16 | 2018-06-11 08:16 | 478 | 2018-05-22 16:16 | 2018-05-23 08:16 | 1d | 142.78d | 0d | TEAM_2Shift_Calendar-1 | SC Radiography (Work) | 8h |  |  |
| 486 | 4.3.15.6 | **Barrel Shell Cs Flg 1 Fit Up** | 0.88d | 2018-06-11 08:16 | 2018-06-11 15:16 |  | 2018-05-23 08:16 | 2018-05-23 15:16 | 0.88d | 142.78d | 0d | TEAM_2Shift_Calendar-1 |  | 20h | 1,262.5 | 1,262.5 |
| 487 | 4.3.15.6.1 | Barrel Cir Ep Correction | 1h | 2018-06-11 08:16 | 2018-06-11 09:16 | 485 | 2018-05-23 08:16 | 2018-05-23 09:16 | 1h | 142.78d | 0d | TEAM_2Shift_Calendar-1 | Fitter [200%] | 2h | 137.5 | 137.5 |
| 488 | 4.3.15.6.2 | Barrel Cs Fit Up Flg1 | 3h | 2018-06-11 09:16 | 2018-06-11 12:16 | 487 | 2018-05-23 09:16 | 2018-05-23 12:16 | 3h | 142.78d | 0d | TEAM_2Shift_Calendar-1 | SMAW Welder; Helper; Fitter [200%] | 12h | 768.75 | 768.75 |
| 489 | 4.3.15.6.3 | Barrel Cs Tack Dp Check Flg1 | 3h | 2018-06-11 12:16 | 2018-06-11 15:16 | 488 | 2018-05-23 12:16 | 2018-05-23 15:16 | 3h | 142.78d |  | TEAM_2Shift_Calendar-1 | Helper; Fitter | 6h | 356.25 | 356.25 |
| 490 | 4.3.15.7 | **Barrel Sh Cs Flg 1 Welding** | 2.12d | 2018-06-11 15:16 | 2018-06-12 16:16 |  | 2018-05-23 15:16 | 2018-05-24 16:16 | 2.12d | 142.78d | 0d | TEAM_2Shift_Calendar-1 |  | 29h | 1,706.25 | 1,706.25 |
| 491 | 4.3.15.7.1 | Barrel Cs Welding Transfere | 3h | 2018-06-11 15:16 | 2018-06-11 18:16 | 486 | 2018-05-23 15:16 | 2018-05-23 18:16 | 3h | 142.78d | 0d | TEAM_2Shift_Calendar-1 | Helper [200%]; Fitter | 6h | 356.25 | 356.25 |
| 492 | 4.3.15.7.2 | Barrel Cs Welding Outer Flg1 | 7h | 2018-06-11 18:16 | 2018-06-12 09:16 | 491 | 2018-05-23 18:16 | 2018-05-24 09:16 | 7h | 142.78d | 0d | TEAM_2Shift_Calendar-1 | Helper; SMAW Welder | 14h | 831.25 | 831.25 |
| 493 | 4.3.15.7.3 | Barrel Cs Welding Back Chip Flg1 | 3h | 2018-06-12 09:16 | 2018-06-12 12:16 | 492 | 2018-05-24 09:16 | 2018-05-24 12:16 | 3h | 142.78d | 0d | TEAM_2Shift_Calendar-1 | Grinder | 3h | 168.75 | 168.75 |
| 494 | 4.3.15.7.4 | Barrel Cs Inner Welding Flg 1 | 2h | 2018-06-12 12:16 | 2018-06-12 14:16 | 493 | 2018-05-24 12:16 | 2018-05-24 14:16 | 2h | 142.78d | 0d | TEAM_2Shift_Calendar-1 | Helper; SMAW Welder | 4h | 237.5 | 237.5 |
| 495 | 4.3.15.7.5 | Barrel Cs Flush Grinding Flg1 | 2h | 2018-06-12 14:16 | 2018-06-12 16:16 | 494 | 2018-05-24 14:16 | 2018-05-24 16:16 | 2h | 142.78d |  | TEAM_2Shift_Calendar-1 | Grinder | 2h | 112.5 | 112.5 |
| 496 | 4.3.15.8 | **Barrel Cs Fit Up With Dish** | 1.06d | 2018-06-12 16:16 | 2018-06-13 08:46 | 490 | 2018-05-24 16:16 | 2018-05-25 08:46 | 1.06d | 142.78d | 0d | TEAM_2Shift_Calendar-1 |  | 20h | 1,271.88 | 1,271.88 |
| 497 | 4.3.15.8.1 | Barrel Length Cutting | 1.5h | 2018-06-12 16:16 | 2018-06-12 17:46 | 490 | 2018-05-24 16:16 | 2018-05-24 17:46 | 1.5h | 142.78d | 0d | TEAM_2Shift_Calendar-1 | Helper; Gas Cutter | 3h | 178.12 | 178.12 |
| 498 | 4.3.15.8.2 | Barrel Ep | 1h | 2018-06-12 17:46 | 2018-06-12 18:46 | 497 | 2018-05-24 17:46 | 2018-05-24 18:46 | 1h | 142.78d | 0d | TEAM_2Shift_Calendar-1 | Helper; Fitter | 2h | 118.75 | 118.75 |
| 499 | 4.3.15.8.3 | Barrel Cs Fit Up Dish | 3h | 2018-06-12 18:46 | 2018-06-12 21:46 | 498 | 2018-05-24 18:46 | 2018-05-24 21:46 | 3h | 142.78d | 0d | TEAM_2Shift_Calendar-1 | SMAW Welder; Helper; Fitter [200%] | 12h | 768.75 | 768.75 |
| 500 | 4.3.15.8.4 | Barrel Cs Tack Dp Check Dish | 3h | 2018-06-12 21:46 | 2018-06-13 08:46 | 499 | 2018-05-24 21:46 | 2018-05-25 08:46 | 3h | 142.78d |  | TEAM_2Shift_Calendar-1 | Fitter | 3h | 206.25 | 206.25 |

| ID | WBS | Task | Duration | Start | Finish | Predecessors | Baseline start | Baseline finish | Baseline duration | Total slack | Free slack | Calendar | Resources | Work | Cost | Baseline cost |
| --- | --- | --- | --- | --- | --- | --- | --- | --- | --- | --- | --- | --- | --- | --- | --- | --- |
| 501 | 4.3.15.9 | **Barrel Cs Welding With Dish** | 2.75d | 2018-06-13 08:46 | 2018-06-14 14:46 | 496 | 2018-05-25 08:46 | 2018-05-28 14:46 | 2.75d | 142.78d | 0d | TEAM_2Shift_Calendar-1 |  | 39h | 2,300 | 2,300 |
| 502 | 4.3.15.9.1 | Barrel Cs Welding Transfere Dish | 3h | 2018-06-13 08:46 | 2018-06-13 11:46 | 496 | 2018-05-25 08:46 | 2018-05-25 11:46 | 3h | 142.78d | 0d | TEAM_2Shift_Calendar-1 | Helper [200%]; Fitter | 6h | 356.25 | 356.25 |
| 503 | 4.3.15.9.2 | Barrel Cs Welding Outer Dish | 7h | 2018-06-13 11:46 | 2018-06-13 18:46 | 502 | 2018-05-25 11:46 | 2018-05-25 18:46 | 7h | 142.78d | 0d | TEAM_2Shift_Calendar-1 | Helper; SMAW Welder | 14h | 831.25 | 831.25 |
| 504 | 4.3.15.9.3 | Barrel Cs Welding Back Chip Dish | 3h | 2018-06-13 18:46 | 2018-06-13 21:46 | 503 | 2018-05-25 18:46 | 2018-05-25 21:46 | 3h | 142.78d | 0d | TEAM_2Shift_Calendar-1 | Grinder | 3h | 168.75 | 168.75 |
| 505 | 4.3.15.9.4 | Barrel Cs Inner Welding Dish | 7h | 2018-06-13 21:46 | 2018-06-14 12:46 | 504 | 2018-05-25 21:46 | 2018-05-28 12:46 | 7h | 142.78d | 0d | TEAM_2Shift_Calendar-1 | Helper; SMAW Welder | 14h | 831.25 | 831.25 |
| 506 | 4.3.15.9.5 | Barrel Cs Flush Grinding Dish | 2h | 2018-06-14 12:46 | 2018-06-14 14:46 | 505 | 2018-05-28 12:46 | 2018-05-28 14:46 | 2h | 142.78d |  | TEAM_2Shift_Calendar-1 | Grinder | 2h | 112.5 | 112.5 |
| 507 | 4.3.15.10 | **Barrel Cs Flg 1 & Dish Welding Rt** | 1d | 2018-06-14 14:46 | 2018-06-15 06:46 | 501 | 2018-05-28 14:46 | 2018-05-29 06:46 | 1d | 142.78d | 0d | TEAM_2Shift_Calendar-1 |  | 8h |  |  |
| 508 | 4.3.15.10.1 | Barrel Cs Welding Rt | 1d | 2018-06-14 14:46 | 2018-06-15 06:46 | 501 | 2018-05-28 14:46 | 2018-05-29 06:46 | 1d | 142.78d |  | TEAM_2Shift_Calendar-1 | SC Radiography (Work) | 8h |  |  |
| 509 | 4.3.15.11 | **Barrel Noz Oreination Marking** | 0.75d | 2018-06-15 06:46 | 2018-06-15 12:46 | 507 | 2018-05-29 06:46 | 2018-05-29 12:46 | 0.75d | 142.78d | 0d | TEAM_2Shift_Calendar-1 |  | 12h | 712.5 | 712.5 |
| 510 | 4.3.15.11.1 | Barrel- Noz Ireientation Nkg | 4h | 2018-06-15 06:46 | 2018-06-15 10:46 | 507 | 2018-05-29 06:46 | 2018-05-29 10:46 | 4h | 142.78d | 0d | TEAM_2Shift_Calendar-1 | Helper; Fitter | 8h | 475 | 475 |
| 511 | 4.3.15.11.2 | Barrel-Noz Marking- 2 | 2h | 2018-06-15 10:46 | 2018-06-15 12:46 | 510 | 2018-05-29 10:46 | 2018-05-29 12:46 | 2h | 142.78d |  | TEAM_2Shift_Calendar-1 | Helper; Fitter | 4h | 237.5 | 237.5 |
| 512 | 4.3.15.12 | **Barrel Nozzle Oppening** | 0.5d | 2018-06-15 12:46 | 2018-06-15 16:46 | 509 | 2018-05-29 12:46 | 2018-05-29 16:46 | 0.5d | 142.78d | 0d | TEAM_2Shift_Calendar-1 |  | 16h | 950 | 950 |
| 513 | 4.3.15.12.1 | Barrel-Noz Openning-40 Nb - Lwn | 4h | 2018-06-15 12:46 | 2018-06-15 16:46 | 509 | 2018-05-29 12:46 | 2018-05-29 16:46 | 4h | 142.78d |  | TEAM_2Shift_Calendar-1 | Helper; Gas Cutter | 8h | 475 | 475 |
| 514 | 4.3.15.12.2 | Barrel-Noz Openning-40 Nb - Lwn | 4h | 2018-06-15 12:46 | 2018-06-15 16:46 | 509 | 2018-05-29 12:46 | 2018-05-29 16:46 | 4h | 142.78d |  | TEAM_2Shift_Calendar-1 | Helper; Gas Cutter | 8h | 475 | 475 |
| 515 | 4.3.15.13 | **Barrel Noz Edge Preparation** | 0.38d | 2018-06-15 16:46 | 2018-06-15 19:46 | 512 | 2018-05-29 16:46 | 2018-05-29 19:46 | 0.38d | 142.78d | 0d | TEAM_2Shift_Calendar-1 |  | 12h | 637.5 | 637.5 |
| 516 | 4.3.15.13.1 | Barrel-Noz Openning-40 Nb - Lwn | 3h | 2018-06-15 16:46 | 2018-06-15 19:46 | 512 | 2018-05-29 16:46 | 2018-05-29 19:46 | 3h | 142.78d |  | TEAM_2Shift_Calendar-1 | Helper; Grinder | 6h | 318.75 | 318.75 |
| 517 | 4.3.15.13.2 | Barrel-Noz Openning-40 Nb - Lwn | 3h | 2018-06-15 16:46 | 2018-06-15 19:46 | 512 | 2018-05-29 16:46 | 2018-05-29 19:46 | 3h | 142.78d |  | TEAM_2Shift_Calendar-1 | Helper; Grinder | 6h | 318.75 | 318.75 |
| 518 | 4.3.15.14 | **Barrel Nozzzle Fit Up** | 0.25d | 2018-06-15 19:46 | 2018-06-15 21:46 | 515 | 2018-05-29 19:46 | 2018-05-29 21:46 | 0.25d | 142.78d | 0.34d | TEAM_2Shift_Calendar-1 |  | 16h | 1,025 | 1,025 |
| 519 | 4.3.15.14.1 | Barrel-Noz Fit Up -N4 | 2h | 2018-06-15 19:46 | 2018-06-15 21:46 | 515 | 2018-05-29 19:46 | 2018-05-29 21:46 | 2h | 142.78d | 0.34d | TEAM_2Shift_Calendar-1 | SMAW Welder; Helper; Fitter [200%] | 8h | 512.5 | 512.5 |
| 520 | 4.3.15.14.2 | Barrel-Noz Fit Up -N3 | 2h | 2018-06-15 19:46 | 2018-06-15 21:46 | 515 | 2018-05-29 19:46 | 2018-05-29 21:46 | 2h | 142.78d | 0.34d | TEAM_2Shift_Calendar-1 | SMAW Welder; Helper; Fitter [200%] | 8h | 512.5 | 512.5 |
| 521 | 4.3.15.15 | **Barrel Noz Fit Up Inspection** | 0.19d | 2018-06-16 08:30 | 2018-06-16 10:00 | 518 | 2018-05-30 08:30 | 2018-05-30 10:00 | 0.19d | 142.44d | 0d | TEAM_2Shift_Calendar-1 |  | 3h |  |  |
| 522 | 4.3.15.15.1 | Barrel-Noz Inspn -N3 | 1.5h | 2018-06-16 08:30 | 2018-06-16 10:00 | 519 | 2018-05-30 08:30 | 2018-05-30 10:00 | 1.5h | 142.44d |  | TEAM_2Shift_Calendar-1 | QC Engineer | 1.5h |  |  |
| 523 | 4.3.15.15.2 | Barrel-Noz Inspn-N4 | 1.5h | 2018-06-16 08:30 | 2018-06-16 10:00 | 520 | 2018-05-30 08:30 | 2018-05-30 10:00 | 1.5h | 142.44d |  | TEAM_2Shift_Calendar-1 | QC Engineer | 1.5h |  |  |
| 524 | 4.3.15.16 | **Barrel Nozzle Welding** | 2.84d | 2018-06-16 10:00 | 2018-06-18 16:45 | 521 | 2018-05-30 10:00 | 2018-05-31 16:45 | 2.84d | 142.56d | 0d | TEAM_2Shift_Calendar-1 |  | 44h | 2,523.44 | 2,523.44 |
| 525 | 4.3.15.16.1 | Barrel Noz Welding Arrangement | 1.5h | 2018-06-16 10:00 | 2018-06-16 11:30 | 521 | 2018-05-30 10:00 | 2018-05-30 11:30 | 1.5h | 142.56d | 0d | TEAM_2Shift_Calendar-1 | Store | 1.5h |  |  |
| 526 | 4.3.15.16.2 | Barrel-Noz Welding -N3 | 1.5h | 2018-06-16 11:30 | 2018-06-16 13:00 | 525 | 2018-05-30 11:30 | 2018-05-30 13:00 | 1.5h | 142.56d | 0d | TEAM_2Shift_Calendar-1 | Helper; SMAW Welder | 3h | 178.12 | 178.12 |
| 527 | 4.3.15.16.3 | Barrel-Noz Welding-N4 | 1.5h | 2018-06-16 13:00 | 2018-06-16 14:30 | 526 | 2018-05-30 13:00 | 2018-05-30 14:30 | 1.5h | 142.56d | 0d | TEAM_2Shift_Calendar-1 | Helper; SMAW Welder | 3h | 178.12 | 178.12 |
| 528 | 4.3.15.16.4 | Barrel Noz Root Dp | 2h | 2018-06-16 14:30 | 2018-06-16 16:30 | 527 | 2018-05-30 14:30 | 2018-05-30 16:30 | 2h | 142.56d | 0d | TEAM_2Shift_Calendar-1 | Helper; Fitter | 4h | 237.5 | 237.5 |
| 529 | 4.3.15.16.5 | Barrel-Noz Inner Welding -N3 | 1.5h | 2018-06-16 16:30 | 2018-06-16 18:00 | 528 | 2018-05-30 16:30 | 2018-05-30 18:00 | 1.5h | 142.56d | 0d | TEAM_2Shift_Calendar-1 | Helper; SMAW Welder | 3h | 178.12 | 178.12 |
| 530 | 4.3.15.16.6 | Barrel-Noz Inner Welding-N4 | 1.5h | 2018-06-16 18:00 | 2018-06-16 19:30 | 529 | 2018-05-30 18:00 | 2018-05-30 19:30 | 1.5h | 142.56d | 0d | TEAM_2Shift_Calendar-1 | Helper; SMAW Welder | 3h | 178.12 | 178.12 |
| 531 | 4.3.15.16.7 | Shell Noz Welding Arrangement | 2.25h | 2018-06-16 19:30 | 2018-06-16 21:45 | 530 | 2018-05-30 19:30 | 2018-05-30 21:45 | 2.25h | 142.56d | 0d | TEAM_2Shift_Calendar-1 | Helper [200%]; Fitter | 4.5h | 267.19 | 267.19 |
| 532 | 4.3.15.16.8 | Shell-Noz Welding - MP connections | 4h | 2018-06-16 21:45 | 2018-06-18 09:45 | 531 | 2018-05-30 21:45 | 2018-05-31 09:45 | 4h | 142.56d | 0d | TEAM_2Shift_Calendar-1 | Helper; SMAW Welder | 8h | 475 | 475 |
| 533 | 4.3.15.16.9 | Shell Noz Welding-N9 & N10 - 1.5" SCH 160 | 4h | 2018-06-18 09:45 | 2018-06-18 13:45 | 532 | 2018-05-31 09:45 | 2018-05-31 13:45 | 4h | 142.56d | 0d | TEAM_2Shift_Calendar-1 | Helper; SMAW Welder | 8h | 475 | 475 |
| 534 | 4.3.15.16.10 | Shell Noz Root Dp Check | 3h | 2018-06-18 13:45 | 2018-06-18 16:45 | 533 | 2018-05-31 13:45 | 2018-05-31 16:45 | 3h | 142.56d |  | TEAM_2Shift_Calendar-1 | Helper; SMAW Welder | 6h | 356.25 | 356.25 |

| ID | WBS | Task | Duration | Start | Finish | Predecessors | Baseline start | Baseline finish | Baseline duration | Total slack | Free slack | Calendar | Resources | Work | Cost | Baseline cost |
| --- | --- | --- | --- | --- | --- | --- | --- | --- | --- | --- | --- | --- | --- | --- | --- | --- |
| 535 | 4.3.15.17 | **Barrel Noz Inner Weld Flush Grind** | 0.62d | 2018-06-18 16:45 | 2018-06-18 21:45 | 524 | 2018-05-31 16:45 | 2018-05-31 21:45 | 0.62d | 142.56d |  | TEAM_2Shift_Calendar-1 |  | 9h | 518.75 | 518.75 |
| 536 | 4.3.15.17.1 | Barrel All Welding Dressup & Dp | 4h | 2018-06-18 16:45 | 2018-06-18 20:45 | 524 | 2018-05-31 16:45 | 2018-05-31 20:45 | 4h | 142.56d | 0d | TEAM_2Shift_Calendar-1 | Grinder [200%] | 8h | 450 | 450 |
| 537 | 4.3.15.17.2 | Barrel-Barrel Nde Clearence | 1h | 2018-06-18 20:45 | 2018-06-18 21:45 | 536 | 2018-05-31 20:45 | 2018-05-31 21:45 | 1h | 142.56d |  | TEAM_2Shift_Calendar-1 | Fitter | 1h | 68.75 | 68.75 |
| 538 | 4.3.16 | **Floating Head Fabrication** | 12.06d | 2018-07-25 17:01 | 2018-08-09 21:31 |  | 2018-07-25 17:01 | 2018-08-09 21:31 | 12.06d | 29.06d |  |  |  | 283h | 9,628.12 | 9,628.12 |
| 539 | 4.3.16.1 | **Floating Head Dish Forming** | 5d | 2018-07-25 17:01 | 2018-07-30 09:01 | 41 | 2018-07-25 17:01 | 2018-07-30 09:01 | 5d | 58.59d | 0d | TEAM_2Shift_Calendar-1 |  | 45h | 762.5 | 762.5 |
| 540 | 4.3.16.1.1 | Fl Head Dish Pl Issue | 4d | 2018-07-25 17:01 | 2018-07-27 17:01 | 41 | 2018-07-25 17:01 | 2018-07-27 17:01 | 4d | 58.59d | 0d | TEAM_2Shift_Calendar-1 | Forging Non-Std (Cost) [0.1%]; Plate (Cost) [0.1%]; Store | 32h |  |  |
| 541 | 4.3.16.1.2 | Fl Head Pl Marking | 1.5h | 2018-07-27 17:01 | 2018-07-27 18:31 | 540 | 2018-07-27 17:01 | 2018-07-27 18:31 | 1.5h | 58.59d | 0d | TEAM_2Shift_Calendar-1 | Helper; Fitter | 3h | 178.12 | 178.12 |
| 542 | 4.3.16.1.3 | Fl Head Pl Stamping | 2h | 2018-07-27 18:31 | 2018-07-27 20:31 | 541 | 2018-07-27 18:31 | 2018-07-27 20:31 | 2h | 58.59d | 0d | TEAM_2Shift_Calendar-1 | Helper; Fitter | 4h | 237.5 | 237.5 |
| 543 | 4.3.16.1.4 | Fl Head Pl Cutting | 1.5h | 2018-07-27 20:31 | 2018-07-30 06:01 | 542 | 2018-07-27 20:31 | 2018-07-30 06:01 | 1.5h | 58.59d | 0d | TEAM_2Shift_Calendar-1 | Helper; Gas Cutter | 3h | 178.12 | 178.12 |
| 544 | 4.3.16.1.5 | Fl Head Pl Grinding | 3h | 2018-07-30 06:01 | 2018-07-30 09:01 | 543 | 2018-07-30 06:01 | 2018-07-30 09:01 | 3h | 58.59d |  | TEAM_2Shift_Calendar-1 | Grinder | 3h | 168.75 | 168.75 |
| 545 | 4.3.16.2 | **Fl Head Formig** | 11d | 2018-07-30 09:01 | 2018-08-04 17:01 | 539 | 2018-07-30 09:01 | 2018-08-04 17:01 | 11d | 58.59d | 0d | TEAM_2Shift_Calendar-1 |  | 96h | 950 | 950 |
| 546 | 4.3.16.2.1 | Fl Head Forming | 10d | 2018-07-30 09:01 | 2018-08-04 09:01 | 539 | 2018-07-30 09:01 | 2018-08-04 09:01 | 10d | 58.59d | 0d | TEAM_2Shift_Calendar-1 | SC (Work) | 80h |  |  |
| 547 | 4.3.16.2.2 | Fl Head Profile Check | 1d | 2018-08-04 09:01 | 2018-08-04 17:01 | 546 | 2018-08-04 09:01 | 2018-08-04 17:01 | 1d | 58.59d |  | TEAM_2Shift_Calendar-1 | Helper; Fitter | 16h | 950 | 950 |
| 548 | 4.3.16.3 | **Fl Head Cutting** | 0.75d | 2018-08-04 17:01 | 2018-08-06 07:01 | 545 | 2018-08-04 17:01 | 2018-08-06 07:01 | 0.75d | 58.59d | 0d | TEAM_2Shift_Calendar-1 |  | 12h | 712.5 | 712.5 |
| 549 | 4.3.16.3.1 | Fl Head Marking | 4h | 2018-08-04 17:01 | 2018-08-04 21:01 | 545 | 2018-08-04 17:01 | 2018-08-04 21:01 | 4h | 58.59d | 0d | TEAM_2Shift_Calendar-1 | Helper; Fitter | 8h | 475 | 475 |
| 550 | 4.3.16.3.2 | Fl Head Cutting | 2h | 2018-08-04 21:01 | 2018-08-06 07:01 | 549 | 2018-08-04 21:01 | 2018-08-06 07:01 | 2h | 58.59d |  | TEAM_2Shift_Calendar-1 | Helper; Gas Cutter | 4h | 237.5 | 237.5 |
| 551 | 4.3.16.4 | **Fl Head Ep** | 0.5d | 2018-08-06 07:01 | 2018-08-06 11:01 | 548 | 2018-08-06 07:01 | 2018-08-06 11:01 | 0.5d | 58.59d | 0d | TEAM_2Shift_Calendar-1 |  | 8h | 425 | 425 |
| 552 | 4.3.16.4.1 | Fl Head Grinding | 4h | 2018-08-06 07:01 | 2018-08-06 11:01 | 548 | 2018-08-06 07:01 | 2018-08-06 11:01 | 4h | 58.59d |  | TEAM_2Shift_Calendar-1 | Helper; Grinder | 8h | 425 | 425 |
| 553 | 4.3.16.5 | **Fl Head Fit Up** | 0.5d | 2018-08-06 11:01 | 2018-08-06 15:01 | 551 | 2018-08-06 11:01 | 2018-08-06 15:01 | 0.5d | 58.59d | 0d | TEAM_2Shift_Calendar-1 |  | 16h | 1,025 | 1,025 |
| 554 | 4.3.16.5.1 | Fl Head Fit Up | 4h | 2018-08-06 11:01 | 2018-08-06 15:01 | 551 | 2018-08-06 11:01 | 2018-08-06 15:01 | 4h | 58.59d |  | TEAM_2Shift_Calendar-1 | SMAW Welder; Helper; Fitter [200%] | 16h | 1,025 | 1,025 |
| 555 | 4.3.16.6 | **Fl Head Welding** | 5.25d | 2018-08-06 15:01 | 2018-08-09 09:01 | 553 | 2018-08-06 15:01 | 2018-08-09 09:01 | 5.25d | 58.59d | 0d | TEAM_2Shift_Calendar-1 |  | 92h | 5,575 | 5,575 |
| 556 | 4.3.16.6.1 | Fl Head Welding | 18h | 2018-08-06 15:01 | 2018-08-07 17:01 | 553 | 2018-08-06 15:01 | 2018-08-07 17:01 | 18h | 58.59d | 0d | TEAM_2Shift_Calendar-1 | Helper; SMAW Welder | 36h | 2,137.5 | 2,137.5 |
| 557 | 4.3.16.6.2 | Fl Head Pp Plate Fit Up | 5h | 2018-08-07 17:01 | 2018-08-08 06:01 | 556 | 2018-08-07 17:01 | 2018-08-08 06:01 | 5h | 58.59d | 0d | TEAM_2Shift_Calendar-1 | Helper; SMAW Welder; Fitter [200%] | 20h | 1,281.25 | 1,281.25 |
| 558 | 4.3.16.6.3 | Fl Head Pp Pl Welding | 10h | 2018-08-08 06:01 | 2018-08-08 16:01 | 557 | 2018-08-08 06:01 | 2018-08-08 16:01 | 10h | 58.59d | 0d | TEAM_2Shift_Calendar-1 | Helper; SMAW Welder | 20h | 1,187.5 | 1,187.5 |
| 559 | 4.3.16.6.4 | Fl Head Pp Pl Level Grinding | 7h | 2018-08-08 16:01 | 2018-08-09 07:01 | 558 | 2018-08-08 16:01 | 2018-08-09 07:01 | 7h | 58.59d | 0d | TEAM_2Shift_Calendar-1 | Helper; Fitter | 14h | 831.25 | 831.25 |
| 560 | 4.3.16.6.5 | Fl Head Inspection | 2h | 2018-08-09 07:01 | 2018-08-09 09:01 | 559 | 2018-08-09 07:01 | 2018-08-09 09:01 | 2h | 58.59d |  | TEAM_2Shift_Calendar-1 | Fitter | 2h | 137.5 | 137.5 |

| ID | WBS | Task | Duration | Start | Finish | Predecessors | Baseline start | Baseline finish | Baseline duration | Total slack | Free slack | Calendar | Resources | Work | Cost | Baseline cost |
| --- | --- | --- | --- | --- | --- | --- | --- | --- | --- | --- | --- | --- | --- | --- | --- | --- |
| 561 | 4.3.16.7 | **Fl Head Sr & Machining** | 1.56d | 2018-08-09 09:01 | 2018-08-09 21:31 | 555 | 2018-08-09 09:01 | 2018-08-09 21:31 | 1.56d | 58.59d |  | TEAM_2Shift_Calendar-1 |  | 14h | 178.12 | 178.12 |
| 562 | 4.3.16.7.1 | Fl Head Sr | 3h | 2018-08-09 09:01 | 2018-08-09 12:01 | 555 | 2018-08-09 09:01 | 2018-08-09 12:01 | 3h | 58.59d | 0d | TEAM_2Shift_Calendar-1 | SC (Work) | 3h |  |  |
| 563 | 4.3.16.7.2 | Fl Head Final Machining | 4h | 2018-08-09 12:01 | 2018-08-09 16:01 | 562 | 2018-08-09 12:01 | 2018-08-09 16:01 | 4h | 58.59d | 0d | TEAM_2Shift_Calendar-1 | SC (Work) | 4h |  |  |
| 564 | 4.3.16.7.3 | Fl Head Hole Marking | 0.5h | 2018-08-09 16:01 | 2018-08-09 16:31 | 563 | 2018-08-09 16:01 | 2018-08-09 16:31 | 0.5h | 58.59d | 0d | TEAM_2Shift_Calendar-1 | Helper; Fitter | 1h | 59.38 | 59.38 |
| 565 | 4.3.16.7.4 | Fl Head Hole Drilling | 4h | 2018-08-09 16:31 | 2018-08-09 20:31 | 564 | 2018-08-09 16:31 | 2018-08-09 20:31 | 4h | 58.59d | 0d | TEAM_2Shift_Calendar-1 | SC (Work) | 4h |  |  |
| 566 | 4.3.16.7.5 | Fl Head Final Inspection | 1h | 2018-08-09 20:31 | 2018-08-09 21:31 | 565 | 2018-08-09 20:31 | 2018-08-09 21:31 | 1h | 58.59d |  | TEAM_2Shift_Calendar-1 | Helper; Fitter | 2h | 118.75 | 118.75 |
| 567 | 4.3.17 | **Tube Bundle Fabrication** | 14.82d | 2018-07-27 21:31 | 2018-08-17 16:06 |  | 2018-07-27 21:31 | 2018-08-17 16:06 | 14.82d | 0d |  |  |  | 683h | 43,982.81 | 43,982.81 |
| 568 | 4.3.17.1 | **Tube Bundle Assy** | 1.19d | 2018-07-27 21:31 | 2018-07-30 15:01 | 75, 85 | 2018-07-27 21:31 | 2018-07-30 15:01 | 1.19d | 0d |  | TEAM_2Shift_Calendar-1 |  | 38h | 2,284.37 | 2,284.37 |
| 569 | 4.3.17.1.1 | Frame Set Up & Tube Sht Set Up | 1.5h | 2018-07-27 21:31 | 2018-07-30 07:01 | 75, 85 | 2018-07-27 21:31 | 2018-07-30 07:01 | 1.5h | 0d |  | TEAM_2Shift_Calendar-1 | SMAW Welder; Tube (Cost) [0.1%]; Fitter [200%] | 4.5h | 309.37 | 309.37 |
| 570 | 4.3.17.1.2 | Skeliton Assy- 19 Baffle | 8h | 2018-07-30 07:01 | 2018-07-30 15:01 | 569 | 2018-07-30 07:01 | 2018-07-30 15:01 | 8h | 0d |  | TEAM_2Shift_Calendar-1 | Helper [300%]; Fitter [200%] | 33.5h | 1,975 | 1,975 |
| 571 | 4.3.17.2 | **Tube Insert** | 3.5d | 2018-07-30 15:01 | 2018-08-01 11:01 | 568 | 2018-07-30 15:01 | 2018-08-01 11:01 | 3.5d | 0d |  | TEAM_2Shift_Calendar-1 |  | 140h | 7,525 | 7,525 |
| 572 | 4.3.17.2.1 | Tube Insert | 28h | 2018-07-30 15:01 | 2018-08-01 11:01 | 568 | 2018-07-30 15:01 | 2018-08-01 11:01 | 28h | 0d |  | TEAM_2Shift_Calendar-1 | Helper [400%]; Fitter | 140h | 7,525 | 7,525 |
| 573 | 4.3.17.3 | **Sliding Strip Fit Up Welding** | 5.38d | 2018-08-01 11:01 | 2018-08-04 06:01 | 571 | 2018-08-01 11:01 | 2018-08-04 06:01 | 5.38d | 0d |  | TEAM_2Shift_Calendar-1 |  | 68h | 3,981.25 | 3,981.25 |
| 574 | 4.3.17.3.1 | Sealing Strip Fit Up | 7h | 2018-08-01 11:01 | 2018-08-01 18:01 | 571 | 2018-08-01 11:01 | 2018-08-01 18:01 | 7h | 0d |  | TEAM_2Shift_Calendar-1 | Helper; Fitter | 14h | 831.25 | 831.25 |
| 575 | 4.3.17.3.2 | Sliding Strip Welding | 18h | 2018-08-01 18:01 | 2018-08-02 20:01 | 574 | 2018-08-01 18:01 | 2018-08-02 20:01 | 18h | 0d |  | TEAM_2Shift_Calendar-1 | Helper; SMAW Welder | 36h | 2,137.5 | 2,137.5 |
| 576 | 4.3.17.3.3 | Seal/Slid Trip Weld Grind | 18h | 2018-08-02 20:01 | 2018-08-04 06:01 | 575 | 2018-08-02 20:01 | 2018-08-04 06:01 | 18h | 0d |  | TEAM_2Shift_Calendar-1 | Grinder | 18h | 1,012.5 | 1,012.5 |
| 577 | 4.3.17.4 | **Tube Bundle Insert** | 3.19d | 2018-08-04 06:01 | 2018-08-06 15:31 | 573 | 2018-08-04 06:01 | 2018-08-06 15:31 | 3.19d | 0d |  | TEAM_2Shift_Calendar-1 |  | 128.5h | 7,475 | 7,475 |
| 578 | 4.3.17.4.1 | Tube Bundle Insert In Shell | 8h | 2018-08-04 06:01 | 2018-08-04 14:01 | 573 | 2018-08-04 06:01 | 2018-08-04 14:01 | 8h | 0d |  | TEAM_2Shift_Calendar-1 | Helper [500%]; Fitter [300%] | 64h | 3,650 | 3,650 |
| 579 | 4.3.17.4.2 | Fl Head Tube Sht Fixing | 10h | 2018-08-04 14:01 | 2018-08-06 08:01 | 578 | 2018-08-04 14:01 | 2018-08-06 08:01 | 10h | 0d |  | TEAM_2Shift_Calendar-1 | Helper [400%]; Fitter [200%] | 30h | 1,875 | 1,875 |
| 580 | 4.3.17.4.3 | Test Flg & Gland Assy | 7.5h | 2018-08-06 08:01 | 2018-08-06 15:31 | 579 | 2018-08-06 08:01 | 2018-08-06 15:31 | 7.5h | 0d |  | TEAM_2Shift_Calendar-1 | Helper [300%]; Fitter [200%] | 34.5h | 1,950 | 1,950 |
| 581 | 4.3.17.5 | **Tube Expansion In Grooves** | 3.24d | 2018-08-06 15:31 | 2018-08-08 09:26 | 577 | 2018-08-06 15:31 | 2018-08-08 09:26 | 3.24d | 0d |  | TEAM_2Shift_Calendar-1 |  | 58.5h | 3,535.94 | 3,535.94 |
| 582 | 4.3.17.5.1 | Tube Exp - St Side - 1 Stage | 6.75h | 2018-08-06 15:31 | 2018-08-07 06:16 | 577 | 2018-08-06 15:31 | 2018-08-07 06:16 | 6.75h | 0d |  | TEAM_2Shift_Calendar-1 | Helper [200%]; Fitter | 13.5h | 801.56 | 801.56 |
| 583 | 4.3.17.5.2 | Tube Exp - Fl Side - 1 Stage | 4.5h | 2018-08-07 06:16 | 2018-08-07 10:46 | 582 | 2018-08-07 06:16 | 2018-08-07 10:46 | 4.5h | 0d |  | TEAM_2Shift_Calendar-1 | Helper [200%]; Fitter | 9h | 534.38 | 534.38 |
| 584 | 4.3.17.5.3 | Tube Trimming Fl Side | 8h | 2018-08-07 10:46 | 2018-08-07 18:46 | 583 | 2018-08-07 10:46 | 2018-08-07 18:46 | 8h | 0d |  | TEAM_2Shift_Calendar-1 | Helper; Fitter | 16h | 950 | 950 |
| 585 | 4.3.17.5.4 | Tube Exp Both Side - 4 Stage | 6.67h | 2018-08-07 18:46 | 2018-08-08 09:26 | 584 | 2018-08-07 18:46 | 2018-08-08 09:26 | 6.67h | 0d |  | TEAM_2Shift_Calendar-1 | Helper [200%]; Fitter [200%] | 20h | 1,250 | 1,250 |

| ID | WBS | Task | Duration | Start | Finish | Predecessors | Baseline start | Baseline finish | Baseline duration | Total slack | Calendar | Resources | Work | Cost | Baseline cost |
| --- | --- | --- | --- | --- | --- | --- | --- | --- | --- | --- | --- | --- | --- | --- | --- |
| 586 | 4.3.17.6 | **Tube Exp- Pnuematic Test** | 1.21d | 2018-08-08 09:26 | 2018-08-08 19:06 | 581 | 2018-08-08 09:26 | 2018-08-08 19:06 | 1.21d | 0d | TEAM_2Shift_Calendar-1 |  | 26h | 1,606.25 | 1,606.25 |
| 587 | 4.3.17.6.1 | Tube Exp Pnuematic Test | 6.67h | 2018-08-08 09:26 | 2018-08-08 16:06 | 581 | 2018-08-08 09:26 | 2018-08-08 16:06 | 6.67h | 0d | TEAM_2Shift_Calendar-1 | Helper [200%]; Fitter [200%] | 20h | 1,250 | 1,250 |
| 588 | 4.3.17.6.2 | Pnuematic Test Tpi Witness | 1h | 2018-08-08 16:06 | 2018-08-08 17:06 | 587 | 2018-08-08 16:06 | 2018-08-08 17:06 | 1h | 0d | TEAM_2Shift_Calendar-1 | Helper; Fitter | 2h | 118.75 | 118.75 |
| 589 | 4.3.17.6.3 | Cleaning | 2h | 2018-08-08 17:06 | 2018-08-08 19:06 | 588 | 2018-08-08 17:06 | 2018-08-08 19:06 | 2h | 0d | TEAM_2Shift_Calendar-1 | Helper [300%]; Fitter | 4h | 237.5 | 237.5 |
| 590 | 4.3.17.7 | **Tube Tube Sheet Welding- Ft Side** | 7d | 2018-08-08 19:06 | 2018-08-14 11:06 | 586 | 2018-08-08 19:06 | 2018-08-14 11:06 | 7d | 0d | TEAM_2Shift_Calendar-1 |  | 112h | 8,787.5 | 8,787.5 |
| 591 | 4.3.17.7.1 | Tube Welding - St Side Root | 19h | 2018-08-08 19:06 | 2018-08-10 06:06 | 586 | 2018-08-08 19:06 | 2018-08-10 06:06 | 19h | 0d | TEAM_2Shift_Calendar-1 | Helper; TIG Welder | 38h | 3,325 | 3,325 |
| 592 | 4.3.17.7.2 | Tube Welding - St Side Root Dp | 9h | 2018-08-10 06:06 | 2018-08-10 15:06 | 591 | 2018-08-10 06:06 | 2018-08-10 15:06 | 9h | 0d | TEAM_2Shift_Calendar-1 | Helper; Fitter | 18h | 1,068.75 | 1,068.75 |
| 593 | 4.3.17.7.3 | Tube Welding - St Side Final Weld | 19h | 2018-08-10 15:06 | 2018-08-13 18:06 | 592 | 2018-08-10 15:06 | 2018-08-13 18:06 | 19h | 0d | TEAM_2Shift_Calendar-1 | Helper; TIG Welder | 38h | 3,325 | 3,325 |
| 594 | 4.3.17.7.4 | Tube Welding - St Side Final Dp | 9h | 2018-08-13 18:06 | 2018-08-14 11:06 | 593 | 2018-08-13 18:06 | 2018-08-14 11:06 | 9h | 0d | TEAM_2Shift_Calendar-1 | Helper; Fitter | 18h | 1,068.75 | 1,068.75 |
| 595 | 4.3.17.8 | **Tube To Tube Sheet Welding - Fl Head Side** | 4.62d | 2018-08-14 11:06 | 2018-08-17 16:06 | 590 | 2018-08-14 11:06 | 2018-08-17 16:06 | 4.62d | 0d | TEAM_2Shift_Calendar-1 |  | 112h | 8,787.5 | 8,787.5 |
| 596 | 4.3.17.8.1 | Tube Welding - Flh Side Root | 19h | 2018-08-14 11:06 | 2018-08-16 14:06 | 590 | 2018-08-14 11:06 | 2018-08-16 14:06 | 19h | 2.25d | TEAM_2Shift_Calendar-1 | Helper; TIG Welder | 38h | 3,325 | 3,325 |
| 597 | 4.3.17.8.2 | Tube Welding - Flh Side Root Dp | 9h | 2018-08-14 11:06 | 2018-08-14 20:06 | 590 | 2018-08-14 11:06 | 2018-08-14 20:06 | 9h | 0d | TEAM_2Shift_Calendar-1 | Helper; Fitter | 18h | 1,068.75 | 1,068.75 |
| 598 | 4.3.17.8.3 | Tube Welding - Flh Side Final Weld | 19h | 2018-08-14 20:06 | 2018-08-17 07:06 | 597 | 2018-08-14 20:06 | 2018-08-17 07:06 | 19h | 0d | TEAM_2Shift_Calendar-1 | Helper; TIG Welder | 38h | 3,325 | 3,325 |
| 599 | 4.3.17.8.4 | Tube Welding - Flh Side Final Dp | 9h | 2018-08-17 07:06 | 2018-08-17 16:06 | 598 | 2018-08-17 07:06 | 2018-08-17 16:06 | 9h | 0d | TEAM_2Shift_Calendar-1 | Helper; Fitter | 18h | 1,068.75 | 1,068.75 |
| 600 | 4.3.18 | **Hydro Testing** | 16.4d | 2018-08-17 16:06 | 2018-09-07 10:16 |  | 2018-08-17 16:06 | 2018-09-07 10:16 | 16.4d | 0d |  |  | 779h | 48,359.38 | 48,359.38 |
| 601 | 4.3.18.1 | **Shell Side Hydro** | 5.42d | 2018-08-17 16:06 | 2018-08-21 11:26 |  | 2018-08-17 16:06 | 2018-08-21 11:26 | 5.42d | 0d | TEAM_2Shift_Calendar-1 |  | 144h | 8,731.25 | 8,731.25 |
| 602 | 4.3.18.1.1 | Inserting the Tube bundle in shell | 12h | 2018-08-17 16:06 | 2018-08-18 12:06 | 595 | 2018-08-17 16:06 | 2018-08-18 12:06 | 12h | 0d |  | Helper [600%]; Fitter [200%] | 56h | 3,250 | 3,250 |
| 603 | 4.3.18.1.2 | Shell Side Water Filling | 5h | 2018-08-18 12:06 | 2018-08-18 17:06 | 602 | 2018-08-18 12:06 | 2018-08-18 17:06 | 5h | 0d | TEAM_2Shift_Calendar-1 | Helper; Fitter | 10h | 593.75 | 593.75 |
| 604 | 4.3.18.1.3 | Shell Side Hydro | 17.33h | 2018-08-18 17:06 | 2018-08-20 18:26 | 603 | 2018-08-18 17:06 | 2018-08-20 18:26 | 17.33h | 0d | TEAM_2Shift_Calendar-1 | Helper [200%]; Fitter [200%] | 52h | 3,250 | 3,250 |
| 605 | 4.3.18.1.4 | Shell Side Tpi Witness | 1h | 2018-08-20 18:26 | 2018-08-20 19:26 | 604 | 2018-08-20 18:26 | 2018-08-20 19:26 | 1h | 0d | TEAM_2Shift_Calendar-1 | Fitter [200%] | 2h | 137.5 | 137.5 |
| 606 | 4.3.18.1.5 | De Watering & Dismantle Of Gland | 8h | 2018-08-20 19:26 | 2018-08-21 11:26 | 605 | 2018-08-20 19:26 | 2018-08-21 11:26 | 8h | 0d | TEAM_2Shift_Calendar-1 | Helper [400%]; Fitter [200%] | 24h | 1,500 | 1,500 |
| 607 | 4.3.18.2 | **Channel Side Hydro - Open bundle** | 12.85d | 2018-08-21 11:26 | 2018-08-29 18:16 |  | 2018-08-21 11:26 | 2018-08-29 18:16 | 12.85d | 0d | TEAM_2Shift_Calendar-1 |  | 275h | 17,128.12 | 17,128.12 |
| 608 | 4.3.18.2.1 | Tube bundle to Channel fixing | 25.5h | 2018-08-21 11:26 | 2018-08-22 20:56 | 601 | 2018-08-21 11:26 | 2018-08-22 20:56 | 25.5h | 0d | TEAM_2Shift_Calendar-1 | Helper [200%]; Fitter | 51h | 3,028.12 | 3,028.12 |
| 609 | 4.3.18.2.2 | Assembly | 17.33h | 2018-08-22 20:56 | 2018-08-24 06:16 | 608 | 2018-08-22 20:56 | 2018-08-24 06:16 | 17.33h | 0d | TEAM_2Shift_Calendar-1 | Helper [200%]; Fitter [200%] | 52h | 3,250 | 3,250 |
| 610 | 4.3.18.2.3 | Water Fill | 1d | 2018-08-24 06:16 | 2018-08-24 14:16 | 609 | 2018-08-24 06:16 | 2018-08-24 14:16 | 1d | 0d | TEAM_2Shift_Calendar-1 | Fitter [200%] | 16h | 1,100 | 1,100 |
| 611 | 4.3.18.2.4 | Ch Side Hydro | 24h | 2018-08-24 14:16 | 2018-08-28 06:16 | 610 | 2018-08-24 14:16 | 2018-08-28 06:16 | 24h | 0d | TEAM_2Shift_Calendar-1 | Helper [400%]; Fitter [200%] | 72h | 4,500 | 4,500 |
| 612 | 4.3.18.2.5 | Ch Side Hydro Tpi Witness | 2d | 2018-08-28 06:16 | 2018-08-29 06:16 | 611 | 2018-08-28 06:16 | 2018-08-29 06:16 | 2d | 0d | TEAM_2Shift_Calendar-1 | Helper [400%]; Fitter [200%] | 48h | 3,000 | 3,000 |
| 613 | 4.3.18.2.6 | De Watering | 12h | 2018-08-29 06:16 | 2018-08-29 18:16 | 612 | 2018-08-29 06:16 | 2018-08-29 18:16 | 12h | 0d | TEAM_2Shift_Calendar-1 | Helper [400%]; Fitter [200%] | 36h | 2,250 | 2,250 |

| ID | WBS | Task | Type | Duration | Start | Finish | Predecessors | Baseline start | Baseline finish | Baseline duration | Total slack | Free slack | Calendar | Resources | Work | Cost | Baseline cost |
| --- | --- | --- | --- | --- | --- | --- | --- | --- | --- | --- | --- | --- | --- | --- | --- | --- | --- |
| 614 | 4.3.18.3 | **Barrel shell Hydro - Stacked** |  | 12d | 2018-08-29 18:16 | 2018-09-05 18:16 |  | 2018-08-29 18:16 | 2018-09-05 18:16 | 12d | 0d |  | TEAM_2Shift_Calendar-1 |  | 288h | 18,000 | 18,000 |
| 615 | 4.3.18.3.1 | Barrel Assy |  | 32h | 2018-08-29 18:16 | 2018-08-31 18:16 | 607 | 2018-08-29 18:16 | 2018-08-31 18:16 | 32h | 0d |  | TEAM_2Shift_Calendar-1 | Helper [400%]; Fitter [200%] | 96h | 6,000 | 6,000 |
| 616 | 4.3.18.3.2 | Water Fill |  | 12h | 2018-08-31 18:16 | 2018-09-01 14:16 | 615 | 2018-08-31 18:16 | 2018-09-01 14:16 | 12h | 0d |  | TEAM_2Shift_Calendar-1 | Helper [400%]; Fitter [200%] | 36h | 2,250 | 2,250 |
| 617 | 4.3.18.3.3 | Shell Side Hydro - Stacked |  | 24h | 2018-09-01 14:16 | 2018-09-04 06:16 | 616 | 2018-09-01 14:16 | 2018-09-04 06:16 | 24h | 0d |  | TEAM_2Shift_Calendar-1 | Helper [400%]; Fitter [200%] | 72h | 4,500 | 4,500 |
| 618 | 4.3.18.3.4 | Shell Side Hydro- Stacked Tpi Witness |  | 2d | 2018-09-04 06:16 | 2018-09-05 06:16 | 617 | 2018-09-04 06:16 | 2018-09-05 06:16 | 2d | 0d |  | TEAM_2Shift_Calendar-1 | Helper [400%]; Fitter [200%] | 48h | 3,000 | 3,000 |
| 619 | 4.3.18.3.5 | De Watering |  | 12h | 2018-09-05 06:16 | 2018-09-05 18:16 | 618 | 2018-09-05 06:16 | 2018-09-05 18:16 | 12h | 0d |  | TEAM_2Shift_Calendar-1 | Helper [400%]; Fitter [200%] | 36h | 2,250 | 2,250 |
| 620 | 4.3.18.4 | **Nitorgen Purging** |  | 3d | 2018-09-05 18:16 | 2018-09-07 10:16 | 614 | 2018-09-05 18:16 | 2018-09-07 10:16 | 3d | 0d |  | TEAM_2Shift_Calendar-1 |  | 72h | 4,500 | 4,500 |
| 621 | 4.3.18.4.1 | N2 Gas Purging |  | 24h | 2018-09-05 18:16 | 2018-09-07 10:16 | 614 | 2018-09-05 18:16 | 2018-09-07 10:16 | 24h | 0d |  | TEAM_2Shift_Calendar-1 | Helper [400%]; Fitter [200%] | 72h | 4,500 | 4,500 |
| 622 | 4.3.19 | **Painting** |  | 6d | 2018-09-07 10:16 | 2018-09-12 10:16 | 620 | 2018-09-07 10:16 | 2018-09-12 10:16 | 6d | 10d |  | TEAM_2Shift_Calendar-1 |  | 144h | 9,000 | 9,000 |
| 623 | 4.3.19.1 | Primer Painting |  | 2d | 2018-09-07 10:16 | 2018-09-10 10:16 | 620 | 2018-09-07 10:16 | 2018-09-10 10:16 | 2d | 10d | 0d | TEAM_2Shift_Calendar-1 | Helper [400%]; Fitter [200%] | 48h | 3,000 | 3,000 |
| 624 | 4.3.19.2 | Intermediate Painting |  | 2d | 2018-09-10 10:16 | 2018-09-11 10:16 | 623 | 2018-09-10 10:16 | 2018-09-11 10:16 | 2d | 10d | 0d | TEAM_2Shift_Calendar-1 | Helper [400%]; Fitter [200%] | 48h | 3,000 | 3,000 |
| 625 | 4.3.19.3 | Top Coat Painting |  | 2d | 2018-09-11 10:16 | 2018-09-12 10:16 | 624 | 2018-09-11 10:16 | 2018-09-12 10:16 | 2d | 10d |  | TEAM_2Shift_Calendar-1 | Helper [400%]; Fitter [200%] | 48h | 3,000 | 3,000 |
| 626 | 4.3.20 | **133-EE-1008 Closure** |  | 8d | 2018-09-07 10:16 | 2018-09-19 10:16 |  | 2018-09-07 10:16 | 2018-09-19 10:16 | 8d | 0d |  |  |  | 96.57h | 926.04 | 926.04 |
| 627 | 4.3.20.1 | Store Handover |  | 1d | 2018-09-07 10:16 | 2018-09-10 10:16 | 600 | 2018-09-07 10:16 | 2018-09-10 10:16 | 1d | 0d |  |  | Helper [400%]; Foreman [50%]; Store | 21.82h | 775.82 | 775.82 |
| 628 | 4.3.20.2 | Transport Equipment to Delivery Location | milestone | 5d | 2018-09-10 10:16 | 2018-09-17 10:16 | 627 | 2018-09-10 10:16 | 2018-09-17 10:16 | 5d | 0d |  |  | Helper; Store; SC Transport (Cost) [0.1%]; Foreman [50%] | 8.75h | 150.21 | 150.21 |
| 629 | 4.3.20.3 | Final Documentation Preperation & Review |  | 5d | 2018-09-07 10:16 | 2018-09-15 10:16 | 600 | 2018-09-07 10:16 | 2018-09-15 10:16 | 5d | 1.75d | 0d |  | QC Engineer [200%] | 40h |  |  |
| 630 | 4.3.20.4 | Final Documentation Submission |  | 2h | 2018-09-15 10:16 | 2018-09-15 12:16 | 629 | 2018-09-15 10:16 | 2018-09-15 12:16 | 2h | 1.75d | 0d |  | QC Engineer | 2h |  |  |
| 631 | 4.3.20.5 | Warranty guarantee Submission |  | 1d | 2018-09-15 12:16 | 2018-09-17 12:16 | 630 | 2018-09-15 12:16 | 2018-09-17 12:16 | 1d | 1.75d |  |  | Finance | 8h |  |  |
| 632 | 4.3.20.6 | Invoice Submission |  | 2d | 2018-09-17 10:16 | 2018-09-19 10:16 | 628 | 2018-09-17 10:16 | 2018-09-19 10:16 | 2d | 0d |  |  | PM | 16h |  |  |
