# 4220-L1014

Schedule from MS Project, 2017-10-03 to 2018-10-12, costs in Rs., A marks actual dates.

## Calendars

- TEAM_Stand_Calendar: Mon-Sat 08:30-12:30, 13:30-17:30; Sun off. Exceptions (off unless hours are given): 2017-01-13 to 2023-08-12 (2nd Sat, recurring), 2017-01-26 to 2036-01-26 (Republic Day, recurring), 2017-01-27 to 2023-08-26 (4th Sat, recurring), 2017-05-01 to 2036-05-01 (May Day, recurring), 2017-08-15 to 2036-08-15 (Independence Day, recurring), 2017-10-02 to 2036-10-02 (Gandhi Jayanti, recurring), 2017-10-18 (Deepavali'2017), 2018-01-15 (Thiruvalluvar Day'2018), 2018-09-13 (Vinakaya Chaturthi'2018).
- TEAM_2Shift_Calendar-1: Mon-Sat 06:00-22:00; Sun off. Exceptions (off unless hours are given): 2017-01-13 to 2023-02-11 (2nd Sat, recurring), 2017-01-26 to 2036-01-26 (Republic Day, recurring), 2017-01-27 to 2023-08-26 (4th Sat, recurring), 2017-05-01 to 2036-05-01 (May Day, recurring), 2017-08-15 to 2036-08-15 (Indepdence Day, recurring), 2017-10-02 to 2036-10-02 (Gandhi Jayanti, recurring), 2017-10-19 (Deepavali'2017), 2018-01-15 (Thiruvalluvar Day'2018), 2018-09-13 (Vinakya Chaturthi'2018).

## Resources

| Resource | Rate |
| --- | --- |
| Gas Cutter | 68.75 |
| SMAW Welder | 68.75 |
| TIG Welder | 125 |
| SC (Work) |  |
| Painter |  |
| Lathe Operator | 120 |
| Helper | 50 |
| Grinder | 56.25 |
| Fitter | 68.75 |
| Driller | 68.75 |
| Forging Non-Std (Cost) |  |
| Forging Std (Cost) |  |
| Pipe (Cost) |  |
| Plate (Cost) |  |
| Rod (Cost) |  |
| Tube (Cost) |  |
| Tube Sheet (Cost) |  |
| Store |  |
| Foreman |  |
| QC Engineer |  |
| Marketing |  |
| Finance |  |

## Schedule

| ID | WBS | Task | Duration | Start | Finish | Predecessors | Complete | Remaining | Baseline start | Baseline finish | Baseline duration | Total slack | Constraint | Work | Cost | Baseline cost |
| --- | --- | --- | --- | --- | --- | --- | --- | --- | --- | --- | --- | --- | --- | --- | --- | --- |
| 1 | 1 | Project Start date | 1d | 2017-10-03 08:30 A | 2017-10-03 17:30 A |  | 100% |  | 2017-10-03 08:30 | 2017-10-03 17:30 | 1d |  |  |  |  |  |
| 2 | 2 | Drawing submission | 1d | 2017-11-28 08:30 A | 2017-11-28 17:30 A | 1FS+55ed | 100% |  | 2017-11-28 08:30 | 2017-11-28 17:30 | 1d |  |  |  |  |  |
| 3 | 3 | Drawing Approval | 1d | 2018-02-12 08:30 A | 2018-02-12 17:30 A | 2FS+75ed | 100% |  | 2018-02-12 08:30 | 2018-02-12 17:30 | 1d |  |  |  |  |  |
| 4 | 4 | **4220-L1014** | 196.25d | 2018-02-02 08:00 A | 2018-10-12 10:30 |  | 29% | 140.27d | 2018-02-02 08:00 | 2018-10-12 10:30 | 196.25d | 0d |  | 1910.94h | 88,358.87 | 88,358.87 |
| 5 | 4.1 | **133-EE-1014L** | 196.25d | 2018-02-02 08:00 A | 2018-10-12 10:30 |  | 29% | 140.27d | 2018-02-02 08:00 | 2018-10-12 10:30 | 196.25d | 0d |  | 1910.94h | 88,358.87 | 88,358.87 |
| 6 | 4.1.1 | **Raw Material Ordering** | 71.94d | 2018-02-02 08:00 A | 2018-05-04 17:00 A |  | 100% |  | 2018-02-02 08:00 | 2018-05-02 17:30 | 70d |  |  |  |  |  |
| 7 | 4.1.1.1 | Material Ordering Start | 1d | 2018-02-16 08:30 A | 2018-02-16 17:30 A | 3 | 100% |  | 2018-02-16 08:30 | 2018-02-16 17:30 | 1d |  | start no earlier than 2018-02-16 08:00 |  |  |  |
| 8 | 4.1.1.2 | Shell Pipe | 4.94d | 2018-04-27 08:30 A | 2018-05-04 17:00 A | 7FS+69ed | 100% |  | 2018-04-27 08:30 | 2018-05-02 17:30 | 3d |  |  |  |  |  |
| 9 | 4.1.1.3 | Shell Girth Flange | 3d | 2018-03-28 08:30 A | 2018-03-30 17:30 A | 7FS+49ed | 100% |  | 2018-03-28 08:30 | 2018-03-30 17:30 | 3d |  |  |  |  |  |
| 10 | 4.1.1.4 | Channel Pipe | 3.94d | 2018-04-30 08:00 A | 2018-05-04 17:00 A | 7FS+69ed | 100% |  | 2018-04-27 08:30 | 2018-05-02 17:30 | 3d |  |  |  |  |  |
| 11 | 4.1.1.5 | Channel Girth Flange | 3d | 2018-03-28 08:30 A | 2018-03-30 17:30 A | 7FS+49ed | 100% |  | 2018-03-28 08:30 | 2018-03-30 17:30 | 3d |  |  |  |  |  |
| 12 | 4.1.1.6 | Barrel Sheel Plate | 8.94d | 2018-04-03 08:00 A | 2018-04-12 17:00 A | 7FS+69ed | 100% |  | 2018-04-03 08:00 | 2018-04-12 17:00 | 8.94d |  |  |  |  |  |
| 13 | 4.1.1.7 | Barrel Girth Flange | 3d | 2018-03-28 08:30 A | 2018-03-30 17:30 A | 7FS+49ed | 100% |  | 2018-03-28 08:30 | 2018-03-30 17:30 | 3d |  |  |  |  |  |
| 14 | 4.1.1.8 | Barrel Dish | 8.94d | 2018-04-03 08:00 A | 2018-04-12 17:00 A | 7FS+49ed | 100% |  | 2018-04-03 08:00 | 2018-04-12 17:00 | 8.94d |  |  |  |  |  |
| 15 | 4.1.1.9 | Tube Sheet-1 | 3d | 2018-03-28 08:30 A | 2018-03-30 17:30 A | 7FS+49ed | 100% |  | 2018-03-28 08:30 | 2018-03-30 17:30 | 3d |  |  |  |  |  |
| 16 | 4.1.1.10 | STD Flange | 2.94d | 2018-03-28 08:00 A | 2018-03-30 17:00 A | 7FS+49ed | 100% |  | 2018-03-28 08:00 | 2018-03-30 17:00 | 2.94d |  |  |  |  |  |
| 17 | 4.1.1.11 | Floating Head Flg | 3d | 2018-03-28 08:30 A | 2018-03-30 17:30 A | 7FS+49ed | 100% |  | 2018-03-28 08:30 | 2018-03-30 17:30 | 3d |  |  |  |  |  |
| 18 | 4.1.1.12 | Floating Head Dish | 8.94d | 2018-04-03 08:00 A | 2018-04-12 17:00 A | 7FS+49ed | 100% |  | 2018-04-03 08:00 | 2018-04-12 17:00 | 8.94d |  |  |  |  |  |
| 19 | 4.1.1.13 | Backing Ring | 3d | 2018-04-04 08:30 A | 2018-04-06 17:30 A | 7FS+49ed | 100% |  | 2018-04-04 08:30 | 2018-04-06 17:30 | 3d |  |  |  |  |  |
| 20 | 4.1.1.14 | Baffle Plate | 8.94d | 2018-04-03 08:00 A | 2018-04-12 17:00 A | 7FS+49ed | 100% |  | 2018-04-03 08:00 | 2018-04-12 17:00 | 8.94d |  |  |  |  |  |
| 21 | 4.1.1.15 | Sealing Strip Plate | 8.94d | 2018-04-03 08:00 A | 2018-04-12 17:00 A | 7FS+49ed | 100% |  | 2018-04-03 08:00 | 2018-04-12 17:00 | 8.94d |  |  |  |  |  |
| 22 | 4.1.1.16 | Sliding Strip Plate | 8.94d | 2018-04-03 08:00 A | 2018-04-12 17:00 A | 7FS+49ed | 100% |  | 2018-04-03 08:00 | 2018-04-12 17:00 | 8.94d |  |  |  |  |  |
| 23 | 4.1.1.17 | Seal Rod | 0.94d | 2018-02-03 08:00 A | 2018-02-03 17:00 A | 7FS+49ed | 100% |  | 2018-02-03 08:00 | 2018-02-03 17:00 | 0.94d |  |  |  |  |  |
| 24 | 4.1.1.18 | Nozzle pipe | 0.94d | 2018-02-02 08:00 A | 2018-02-02 17:00 A | 7FS+69ed | 100% |  | 2018-02-02 08:00 | 2018-02-02 17:00 | 0.94d |  |  |  |  |  |
| 25 | 4.1.1.19 | Tube | 3d | 2018-03-28 08:30 A | 2018-03-30 17:30 A | 7FS+49ed | 100% |  | 2018-03-28 08:30 | 2018-03-30 17:30 | 3d |  |  |  |  |  |
| 26 | 4.1.1.20 | Spacer Tube | 3d | 2018-03-28 08:30 A | 2018-03-30 17:30 A | 7FS+49ed | 100% |  | 2018-03-28 08:30 | 2018-03-30 17:30 | 3d |  |  |  |  |  |
| 27 | 4.1.1.21 | Tie Rod | 3d | 2018-03-28 08:30 A | 2018-03-30 17:30 A | 7FS+49ed | 100% |  | 2018-03-28 08:30 | 2018-03-30 17:30 | 3d |  |  |  |  |  |
| 28 | 4.1.1.22 | Test Ring & Test Flg | 3d | 2018-03-28 08:30 A | 2018-03-30 17:30 A | 7FS+49ed | 100% |  | 2018-03-28 08:30 | 2018-03-30 17:30 | 3d |  |  |  |  |  |
| 29 | 4.1.1.23 | Ms Rod For Handle Etc | 4.94d | 2018-04-27 08:30 A | 2018-05-04 17:00 A | 7FS+69ed | 100% |  | 2018-04-27 08:30 | 2018-05-02 17:30 | 3d |  |  |  |  |  |
| 30 | 4.1.1.24 | Ms Plate For Saddle | 4.94d | 2018-04-27 08:30 A | 2018-05-04 17:00 A | 7FS+69ed | 100% |  | 2018-04-27 08:30 | 2018-05-02 17:30 | 3d |  |  |  |  |  |

| ID | WBS | Task | Duration | Start | Finish | Predecessors | Baseline start | Baseline finish | Baseline duration | Total slack | Free slack |
| --- | --- | --- | --- | --- | --- | --- | --- | --- | --- | --- | --- |
| 31 | 4.1.2 | **Raw Material Receipt** | 41.94d | 2018-06-04 08:30 | 2018-07-25 17:00 |  | 2018-04-30 17:00 | 2018-07-25 17:00 | 68d | 30.29d |  |
| 32 | 4.1.2.1 | Shell Pipe | 1d | 2018-06-05 17:00 | 2018-06-06 17:00 | 8FS+25d | 2018-06-04 08:30 | 2018-06-04 17:30 | 1d | 48.57d | 0d |
| 33 | 4.1.2.2 | Shell Girth Flange | 1d | 2018-07-11 08:30 | 2018-07-11 17:30 | 9FS+80d | 2018-07-11 08:30 | 2018-07-11 17:30 | 1d | 70.25d |  |
| 34 | 4.1.2.3 | Channel Pipe | 1d | 2018-06-05 17:00 | 2018-06-06 17:00 | 8FS+25d | 2018-06-04 08:30 | 2018-06-04 17:30 | 1d | 47.25d | 0d |
| 35 | 4.1.2.4 | Channel Girth Flange | 1d | 2018-07-11 08:30 | 2018-07-11 17:30 | 11FS+80d | 2018-07-11 08:30 | 2018-07-11 17:30 | 1d | 70.25d |  |
| 36 | 4.1.2.5 | Barrel Sheel Plate | 1d | 2018-06-05 17:00 | 2018-06-06 17:00 | 8FS+25d | 2018-06-04 08:30 | 2018-06-04 17:30 | 1d | 98.31d |  |
| 37 | 4.1.2.6 | Barrel Girth Flange | 1d | 2018-07-11 08:30 | 2018-07-11 17:30 | 13FS+80d | 2018-07-11 08:30 | 2018-07-11 17:30 | 1d | 70.25d |  |
| 38 | 4.1.2.7 | Barrel Dish | 1d | 2018-06-05 17:00 | 2018-06-06 17:00 | 8FS+25d | 2018-06-04 08:30 | 2018-06-04 17:30 | 1d | 86.56d | 0d |
| 39 | 4.1.2.8 | Tube Sheet-1 | 1d | 2018-07-11 08:30 | 2018-07-11 17:30 | 15FS+80d | 2018-07-11 08:30 | 2018-07-11 17:30 | 1d | 0.29d | 0d |
| 40 | 4.1.2.9 | Std Flange | 1d | 2018-07-10 17:00 | 2018-07-11 17:00 | 16FS+80d | 2018-07-10 17:00 | 2018-07-11 17:00 | 1d | 67.08d | 0d |
| 41 | 4.1.2.10 | Floating Head Flg | 1d | 2018-07-11 08:30 | 2018-07-11 17:30 | 17FS+80d | 2018-07-11 08:30 | 2018-07-11 17:30 | 1d | 70.25d |  |
| 42 | 4.1.2.11 | Floating Head Dish | 1d | 2018-07-24 17:00 | 2018-07-25 17:00 | 18FS+80d | 2018-07-24 17:00 | 2018-07-25 17:00 | 1d | 59.31d |  |
| 43 | 4.1.2.12 | Backing Ring | 1d | 2018-07-19 08:30 | 2018-07-19 17:30 | 19FS+80d | 2018-07-19 08:30 | 2018-07-19 17:30 | 1d | 64.25d |  |
| 44 | 4.1.2.13 | Baffle Plate | 1d | 2018-06-05 17:00 | 2018-06-06 17:00 | 8FS+25d | 2018-06-04 08:30 | 2018-06-04 17:30 | 1d | 50.19d | 0d |
| 45 | 4.1.2.14 | Sealing Strip Plate | 1d | 2018-06-05 17:00 | 2018-06-06 17:00 | 8FS+25d | 2018-06-04 08:30 | 2018-06-04 17:30 | 1d | 98.31d |  |
| 46 | 4.1.2.15 | Sliding Strip Plate | 1d | 2018-06-05 17:00 | 2018-06-06 17:00 | 8FS+25d | 2018-06-04 08:30 | 2018-06-04 17:30 | 1d | 98.31d |  |
| 47 | 4.1.2.16 | Seal Rod | 1d | 2018-07-06 17:00 | 2018-07-07 17:00 | 23FS+120d | 2018-04-30 17:00 | 2018-05-02 17:00 | 1d | 73.31d |  |
| 48 | 4.1.2.17 | Noz pipe | 1d | 2018-06-06 17:00 | 2018-06-07 17:00 | 24FS+97d | 2018-05-16 17:00 | 2018-05-17 17:00 | 1d | 94.06d | 0d |
| 49 | 4.1.2.18 | Tube | 1d | 2018-06-04 08:30 | 2018-06-04 17:30 | 25FS+50d | 2018-06-04 08:30 | 2018-06-04 17:30 | 1d | 100.25d |  |
| 50 | 4.1.2.19 | Spacer Tube | 1d | 2018-06-04 08:30 | 2018-06-04 17:30 | 26FS+50d | 2018-06-04 08:30 | 2018-06-04 17:30 | 1d | 100.25d |  |
| 51 | 4.1.2.20 | Tie Rod | 1d | 2018-06-16 08:30 | 2018-06-16 17:30 | 27FS+60d | 2018-06-16 08:30 | 2018-06-16 17:30 | 1d | 90.25d |  |
| 52 | 4.1.2.21 | Test Ring & Test Flg | 1d | 2018-07-11 08:30 | 2018-07-11 17:30 | 28FS+80d | 2018-07-11 08:30 | 2018-07-11 17:30 | 1d | 70.25d |  |
| 53 | 4.1.2.22 | Ms Rod For Handle Etc | 1d | 2018-07-06 17:00 | 2018-07-07 17:00 | 29FS+50d | 2018-07-05 08:30 | 2018-07-05 17:30 | 1d | 73.31d |  |
| 54 | 4.1.2.23 | Ms Plate For Saddle | 1d | 2018-07-06 17:00 | 2018-07-07 17:00 | 30FS+50d | 2018-07-05 08:30 | 2018-07-05 17:30 | 1d | 63.35d | 0d |

Notes:
- 32: 06-Apr-18
- 33: 30-Apr-18
- 34: 06-Apr-18
- 35: 30-Apr-18
- 36: 30-Apr-18
- 37: 30-Apr-18
- 38: 30-Apr-18
- 39: 30-Apr-18
- 40: 30-Apr-18
- 41: 30-Apr-18
- 42: 30-Apr-18
- 43: 30-Apr-18
- 44: 06-Apr-18
- 45: 06-Apr-18
- 46: 06-Apr-18
- 47: 10-Apr-18
- 48: 30-Apr-18
- 49: 15-Apr-18
- 50: 15-Apr-18
- 51: 10-Apr-18
- 52: 30-Apr-18
- 53: 10-Apr-18
- 54: 30-Mar-18

| ID | WBS | Task | Duration | Start | Finish | Predecessors | Baseline start | Baseline finish | Baseline duration | Total slack | Free slack | Calendar | Resources | Work | Cost | Baseline cost |
| --- | --- | --- | --- | --- | --- | --- | --- | --- | --- | --- | --- | --- | --- | --- | --- | --- |
| 55 | 4.1.3 | **Dish Forming - 24t*1700 Od** | 11.97d | 2018-06-06 17:00 | 2018-06-21 16:46 |  | 2018-06-04 17:30 | 2018-06-19 17:16 | 11.97d | 86.34d |  |  |  | 90.5h | 3,178.35 | 3,178.35 |
| 56 | 4.1.3.1 | Bar Dish Blank Issuence | 8h | 2018-06-06 17:00 | 2018-06-07 09:00 | 38 | 2018-06-04 17:30 | 2018-06-05 09:30 | 8h | 173.47d | 0d | TEAM_2Shift_Calendar-1 | Store; Plate (Cost) [0.1%] | 8h |  |  |
| 57 | 4.1.3.2 | Bar-Dish Blank Marking 14TXOD 406.4 | 0.5h | 2018-06-07 09:00 | 2018-06-07 09:30 | 56 | 2018-06-05 09:30 | 2018-06-05 10:00 | 0.5h | 173.47d | 0d | TEAM_2Shift_Calendar-1 | Fitter; Helper | 1h | 59.38 | 59.38 |
| 58 | 4.1.3.3 | Bar-Dish Blank Marking Inspection | 5h | 2018-06-07 09:30 | 2018-06-07 14:30 | 57 | 2018-06-05 10:00 | 2018-06-05 15:00 | 5h | 173.47d | 0d | TEAM_2Shift_Calendar-1 | Fitter; Helper | 8h | 466.67 | 466.67 |
| 59 | 4.1.3.4 | Bar-Dish Blank Cutting | 1.27h | 2018-06-07 14:30 | 2018-06-07 15:46 | 58 | 2018-06-05 15:00 | 2018-06-05 16:16 | 1.27h | 173.47d | 0d | TEAM_2Shift_Calendar-1 | Helper; Gas Cutter | 2.5h | 148.44 | 148.44 |
| 60 | 4.1.3.5 | Bar-Dish Forming | 29h | 2018-06-07 15:46 | 2018-06-13 11:46 | 59 | 2018-06-05 16:16 | 2018-06-11 12:16 | 29h | 86.59d | 0d |  | SC (Work) | 14h |  |  |
| 61 | 4.1.3.6 | Profile Insp | 5h | 2018-06-13 11:46 | 2018-06-13 16:46 | 60 | 2018-06-11 12:16 | 2018-06-11 17:16 | 5h | 173.22d | 0d | TEAM_2Shift_Calendar-1 | Helper; Fitter | 8h | 483.33 | 483.33 |
| 62 | 4.1.3.7 | Heat Treatment Preparation | 2d | 2018-06-13 16:46 | 2018-06-15 16:46 | 61 | 2018-06-11 17:16 | 2018-06-13 17:16 | 2d | 86.34d | 0d |  | SC (Work) | 8h |  |  |
| 63 | 4.1.3.8 | Stress Releiving- Sub Cont | 2d | 2018-06-15 16:46 | 2018-06-18 16:46 | 62 | 2018-06-13 17:16 | 2018-06-15 17:16 | 2d | 86.34d | 0d |  | SC (Work) | 8h |  |  |
| 64 | 4.1.3.9 | Removal Of Spiders | 10h | 2018-06-18 16:46 | 2018-06-19 10:46 | 63 | 2018-06-15 17:16 | 2018-06-16 11:16 | 10h | 173.22d | 0d | TEAM_2Shift_Calendar-1 | Helper; Fitter | 6h | 386.54 | 386.54 |
| 65 | 4.1.3.10 | Surface Preparation | 5h | 2018-06-19 10:46 | 2018-06-19 15:46 | 64 | 2018-06-16 11:16 | 2018-06-16 16:16 | 5h | 173.22d | 0d | TEAM_2Shift_Calendar-1 | Grinder | 4h | 225 | 225 |
| 66 | 4.1.3.11 | Inspection | 11h | 2018-06-19 15:46 | 2018-06-20 10:46 | 65 | 2018-06-16 16:16 | 2018-06-18 11:16 | 11h | 173.22d | 0d | TEAM_2Shift_Calendar-1 | Fitter | 4h | 275 | 275 |
| 67 | 4.1.3.12 | TPI Inspection | 5h | 2018-06-20 10:46 | 2018-06-20 15:46 | 66 | 2018-06-18 11:16 | 2018-06-18 16:16 | 5h | 173.22d | 0d | TEAM_2Shift_Calendar-1 | Fitter | 4h | 275 | 275 |
| 68 | 4.1.3.13 | Sf Marking | 10h | 2018-06-20 15:46 | 2018-06-21 09:46 | 67 | 2018-06-18 16:16 | 2018-06-19 10:16 | 10h | 173.22d | 0d | TEAM_2Shift_Calendar-1 | Fitter; Helper | 6h | 325.96 | 325.96 |
| 69 | 4.1.3.14 | Sf Cutting | 4h | 2018-06-21 09:46 | 2018-06-21 13:46 | 68 | 2018-06-19 10:16 | 2018-06-19 14:16 | 4h | 173.22d | 0d | TEAM_2Shift_Calendar-1 | Helper; Gas Cutter | 6h | 364.29 | 364.29 |
| 70 | 4.1.3.15 | Sf Gridning & Ep | 3h | 2018-06-21 13:46 | 2018-06-21 16:46 | 69 | 2018-06-19 14:16 | 2018-06-19 17:16 | 3h | 173.22d |  | TEAM_2Shift_Calendar-1 | Grinder | 3h | 168.75 | 168.75 |
| 71 | 4.1.4 | **Tube Sheet** | 24d | 2018-07-12 08:30 | 2018-08-13 08:30 |  | 2018-07-12 08:30 | 2018-08-13 08:30 | 24d | 0.29d | 0d |  |  | 110h | 668.75 | 668.75 |
| 72 | 4.1.4.1 | **Tube Sheet Machining 1 off 2** | 2.38d | 2018-07-12 08:30 | 2018-07-16 11:30 |  | 2018-07-12 08:30 | 2018-07-16 11:30 | 2.38d | 0.29d | 0d |  |  | 12h |  |  |
| 73 | 4.1.4.1.1 | Inward Inspection | 4h | 2018-07-12 08:30 | 2018-07-12 12:30 | 39 | 2018-07-12 08:30 | 2018-07-12 12:30 | 4h | 0.29d | 0d |  | Tube Sheet (Cost) [0.1%]; SC (Work) | 4h |  |  |
| 74 | 4.1.4.1.2 | Tube Sheet M/C 1/2 | 15h | 2018-07-12 13:30 | 2018-07-16 11:30 | 73 | 2018-07-12 13:30 | 2018-07-16 11:30 | 15h | 0.29d |  |  | SC (Work) | 8h |  |  |
| 75 | 4.1.4.2 | **Tube Sheet Drilling 1 off 2** | 21.62d | 2018-07-16 11:30 | 2018-08-13 08:30 |  | 2018-07-16 11:30 | 2018-08-13 08:30 | 21.62d | 0.29d |  |  |  | 98h | 668.75 | 668.75 |
| 76 | 4.1.4.2.1 | Tube Sheet Drilling 1/2 | 13.88d | 2018-07-16 11:30 | 2018-08-02 10:30 | 72 | 2018-07-16 11:30 | 2018-08-02 10:30 | 13.88d | 0.29d | 0d |  | SC (Work) | 56h |  |  |
| 77 | 4.1.4.2.2 | Exp Groove+Welding Groove 1/2 | 3.88d | 2018-08-02 10:30 | 2018-08-07 09:30 | 76 | 2018-08-02 10:30 | 2018-08-07 09:30 | 3.88d | 0.29d | 0d |  | SC (Work) | 16h |  |  |
| 78 | 4.1.4.2.3 | Tie Rod, Pulling, Lifting Hole 1/2 | 1.88d | 2018-08-07 09:30 | 2018-08-08 17:30 | 77 | 2018-08-07 09:30 | 2018-08-08 17:30 | 1.88d | 0.29d | 0d |  | SC (Work) | 8h |  |  |
| 79 | 4.1.4.2.4 | Pass Partition Groove M/C 1/2 | 1.88d | 2018-08-09 08:30 | 2018-08-10 16:30 | 78 | 2018-08-09 08:30 | 2018-08-10 16:30 | 1.88d | 0.29d | 0d |  | SC (Work) | 8h |  |  |
| 80 | 4.1.4.2.5 | Cleaning ,Go/No Go Check 1/2 | 4h | 2018-08-10 16:30 | 2018-08-10 20:30 | 79 | 2018-08-10 16:30 | 2018-08-10 20:30 | 4h | 1.16d | 0d | TEAM_2Shift_Calendar-1 | Helper; Fitter | 2h | 118.75 | 118.75 |
| 81 | 4.1.4.2.6 | Final Inspection 1/2 | 4h | 2018-08-10 20:30 | 2018-08-13 08:30 | 80 | 2018-08-10 20:30 | 2018-08-13 08:30 | 4h | 1.16d |  | TEAM_2Shift_Calendar-1 | Fitter [200%] | 8h | 550 | 550 |

| ID | WBS | Task | Duration | Start | Finish | Predecessors | Baseline start | Baseline finish | Baseline duration | Total slack | Free slack | Calendar | Resources | Work | Cost | Baseline cost |
| --- | --- | --- | --- | --- | --- | --- | --- | --- | --- | --- | --- | --- | --- | --- | --- | --- |
| 82 | 4.1.5 | **Shell + Channel nozzle pipe Fabrication** | 62.23d | 2018-06-06 17:00 | 2018-07-16 18:52 |  | 2018-05-17 17:00 | 2018-07-16 18:52 | 94.23d | 134.95d |  | TEAM_2Shift_Calendar-1 |  | 178.96h | 11,316.31 | 11,316.31 |
| 83 | 4.1.5.1 | **Sh Noz Pipe Marking** | 0.38d | 2018-06-07 17:00 | 2018-06-07 20:00 |  | 2018-05-17 17:00 | 2018-05-17 20:00 | 0.38d | 188.07d | 0d | TEAM_2Shift_Calendar-1 |  | 7.5h | 482.81 | 482.81 |
| 84 | 4.1.5.1.1 | 6"NB- 2 Nos | 0.75h | 2018-06-07 17:00 | 2018-06-07 17:45 | 48 | 2018-05-17 17:00 | 2018-05-17 17:45 | 0.75h | 188.35d |  | TEAM_2Shift_Calendar-1 | Helper; Pipe (Cost) [0.1%]; Fitter | 1.5h | 89.06 | 89.06 |
| 85 | 4.1.5.1.2 | 2" NB Mp Con - 2 Nos | 1h | 2018-06-07 17:00 | 2018-06-07 18:00 | 48 | 2018-05-17 17:00 | 2018-05-17 18:00 | 1h | 188.07d | 0d | TEAM_2Shift_Calendar-1 | Helper; Pipe (Cost) [0.1%]; Fitter | 2h | 118.75 | 118.75 |
| 86 | 4.1.5.1.3 | Inspection | 2h | 2018-06-07 18:00 | 2018-06-07 20:00 | 85 | 2018-05-17 18:00 | 2018-05-17 20:00 | 2h | 188.07d |  | TEAM_2Shift_Calendar-1 | Fitter [200%] | 4h | 275 | 275 |
| 87 | 4.1.5.2 | **Sh Noz Pipe Cutting** | 0.75d | 2018-06-07 20:00 | 2018-06-08 10:00 |  | 2018-05-17 20:00 | 2018-05-18 10:00 | 0.75d | 188.07d | 0d | TEAM_2Shift_Calendar-1 |  | 10h | 638.75 | 638.75 |
| 88 | 4.1.5.2.1 | 6"NB- 2 Nos | 3h | 2018-06-07 20:00 | 2018-06-08 07:00 | 83 | 2018-05-17 20:00 | 2018-05-18 07:00 | 3h | 188.07d | 0d | TEAM_2Shift_Calendar-1 | Helper; Gas Cutter | 4h | 245 | 245 |
| 89 | 4.1.5.2.2 | 2" NB Mp Con - 2 Nos | 1h | 2018-06-08 07:00 | 2018-06-08 08:00 | 88 | 2018-05-18 07:00 | 2018-05-18 08:00 | 1h | 188.07d | 0d | TEAM_2Shift_Calendar-1 | Helper; Gas Cutter | 2h | 118.75 | 118.75 |
| 90 | 4.1.5.2.3 | Inspection | 2h | 2018-06-08 08:00 | 2018-06-08 10:00 | 89 | 2018-05-18 08:00 | 2018-05-18 10:00 | 2h | 188.07d |  | TEAM_2Shift_Calendar-1 | Fitter [200%] | 4h | 275 | 275 |
| 91 | 4.1.5.3 | **Sh Noz Pipe Ep** | 0.75d | 2018-06-08 10:00 | 2018-06-08 16:00 |  | 2018-05-18 10:00 | 2018-05-18 16:00 | 0.75d | 188.07d | 52.12d | TEAM_2Shift_Calendar-1 |  | 10h | 631.25 | 631.25 |
| 92 | 4.1.5.3.1 | 6"NB- 2 Nos | 2h | 2018-06-08 10:00 | 2018-06-08 12:00 | 87 | 2018-05-18 10:00 | 2018-05-18 12:00 | 2h | 188.07d | 0d | TEAM_2Shift_Calendar-1 | Helper; Gas Cutter | 4h | 237.5 | 237.5 |
| 93 | 4.1.5.3.2 | 2" NB Mp Con - 2 Nos | 1h | 2018-06-08 12:00 | 2018-06-08 13:00 | 92 | 2018-05-18 12:00 | 2018-05-18 13:00 | 1h | 188.07d | 0d | TEAM_2Shift_Calendar-1 | Helper; Gas Cutter | 2h | 118.75 | 118.75 |
| 94 | 4.1.5.3.3 | Inspection | 3h | 2018-06-08 13:00 | 2018-06-08 16:00 | 93 | 2018-05-18 13:00 | 2018-05-18 16:00 | 3h | 188.07d |  | TEAM_2Shift_Calendar-1 | Fitter [200%] | 4h | 275 | 275 |
| 95 | 4.1.5.4 | **Sh Noz+Flg Fiitup** | 0.62d | 2018-07-11 17:00 | 2018-07-11 22:00 |  | 2018-07-11 17:00 | 2018-07-11 22:00 | 0.62d | 135.95d | 0d | TEAM_2Shift_Calendar-1 |  | 16h | 1,043.75 | 1,043.75 |
| 96 | 4.1.5.4.1 | 6"NB- 2 Nos | 2h | 2018-07-11 17:00 | 2018-07-11 19:00 | 91, 40 | 2018-07-11 17:00 | 2018-07-11 19:00 | 2h | 135.95d | 0d | TEAM_2Shift_Calendar-1 | SMAW Welder; Helper; Forging Std (Cost) [0.1%]; Fitter [200%] | 8h | 512.5 | 512.5 |
| 97 | 4.1.5.4.2 | 2" NB Mp Con - 2 Nos | 1h | 2018-07-11 19:00 | 2018-07-11 20:00 | 96, 40 | 2018-07-11 19:00 | 2018-07-11 20:00 | 1h | 135.95d | 0d | TEAM_2Shift_Calendar-1 | SMAW Welder; Helper; Forging Std (Cost) [0.1%]; Fitter [200%] | 4h | 256.25 | 256.25 |
| 98 | 4.1.5.4.3 | Inspection | 2h | 2018-07-11 20:00 | 2018-07-11 22:00 | 97 | 2018-07-11 20:00 | 2018-07-11 22:00 | 2h | 135.95d |  | TEAM_2Shift_Calendar-1 | Fitter [200%] | 4h | 275 | 275 |
| 99 | 4.1.5.5 | **Sh Noz Pipe+Flg Welding** | 0.74d | 2018-07-12 06:00 | 2018-07-12 11:54 |  | 2018-07-12 06:00 | 2018-07-12 11:54 | 0.74d | 135.95d | 0d | TEAM_2Shift_Calendar-1 |  | 9.82h | 628.4 | 628.4 |
| 100 | 4.1.5.5.1 | 6"Nb- 2 Nos | 3.55h | 2018-07-12 06:00 | 2018-07-12 09:33 | 95 | 2018-07-12 06:00 | 2018-07-12 09:33 | 3.55h | 135.95d | 0d | TEAM_2Shift_Calendar-1 | Helper; SMAW Welder | 5.1h | 310.65 | 310.65 |
| 101 | 4.1.5.5.2 | 2" Mp Con - 2 Nos | 0.36h | 2018-07-12 09:33 | 2018-07-12 09:54 | 100 | 2018-07-12 09:33 | 2018-07-12 09:54 | 0.36h | 135.95d | 0d | TEAM_2Shift_Calendar-1 | Helper; SMAW Welder | 0.72h | 42.75 | 42.75 |
| 102 | 4.1.5.5.3 | Inspection | 2h | 2018-07-12 09:54 | 2018-07-12 11:54 | 101 | 2018-07-12 09:54 | 2018-07-12 11:54 | 2h | 135.95d |  | TEAM_2Shift_Calendar-1 | Fitter [200%] | 4h | 275 | 275 |
| 103 | 4.1.5.6 | **Sh Noz Pipe Profile Marking** | 1.5d | 2018-07-12 11:54 | 2018-07-13 07:54 |  | 2018-07-12 11:54 | 2018-07-13 07:54 | 1.5d | 135.95d | 0d | TEAM_2Shift_Calendar-1 |  | 10h | 655.11 | 655.11 |
| 104 | 4.1.5.6.1 | 6"Nb- 2 Nos | 9h | 2018-07-12 11:54 | 2018-07-12 20:54 | 99 | 2018-07-12 11:54 | 2018-07-12 20:54 | 9h | 135.95d | 0d | TEAM_2Shift_Calendar-1 | Helper; Fitter | 4h | 261.36 | 261.36 |
| 105 | 4.1.5.6.2 | 2" Mp Con - 2 Nos | 1h | 2018-07-12 20:54 | 2018-07-12 21:54 | 104 | 2018-07-12 20:54 | 2018-07-12 21:54 | 1h | 135.95d | 0d | TEAM_2Shift_Calendar-1 | Helper; Fitter | 2h | 118.75 | 118.75 |
| 106 | 4.1.5.6.3 | Inspection | 2h | 2018-07-12 21:54 | 2018-07-13 07:54 | 105 | 2018-07-12 21:54 | 2018-07-13 07:54 | 2h | 135.95d |  | TEAM_2Shift_Calendar-1 | Fitter [200%] | 4h | 275 | 275 |

| ID | WBS | Task | Duration | Start | Finish | Predecessors | Baseline start | Baseline finish | Baseline duration | Total slack | Free slack | Calendar | Resources | Work | Cost | Baseline cost |
| --- | --- | --- | --- | --- | --- | --- | --- | --- | --- | --- | --- | --- | --- | --- | --- | --- |
| 107 | 4.1.5.7 | **Sh Nozzle Pipe Profile Cutting** | 1.62d | 2018-07-13 07:54 | 2018-07-13 20:54 |  | 2018-07-13 07:54 | 2018-07-13 20:54 | 1.62d | 135.95d | 0d | TEAM_2Shift_Calendar-1 |  | 10h | 596.25 | 596.25 |
| 108 | 4.1.5.7.1 | 6"Nb- 2 Nos | 3h | 2018-07-13 07:54 | 2018-07-13 10:54 | 103 | 2018-07-13 07:54 | 2018-07-13 10:54 | 3h | 135.95d | 0d | TEAM_2Shift_Calendar-1 | Helper; Grinder | 4h | 215 | 215 |
| 109 | 4.1.5.7.2 | 2" Mp Con - 2 Nos | 1h | 2018-07-13 10:54 | 2018-07-13 11:54 | 108 | 2018-07-13 10:54 | 2018-07-13 11:54 | 1h | 135.95d | 0d | TEAM_2Shift_Calendar-1 | Helper; Grinder | 2h | 106.25 | 106.25 |
| 110 | 4.1.5.7.3 | Inspection | 9h | 2018-07-13 11:54 | 2018-07-13 20:54 | 109 | 2018-07-13 11:54 | 2018-07-13 20:54 | 9h | 135.95d |  | TEAM_2Shift_Calendar-1 | Fitter [200%] | 4h | 275 | 275 |
| 111 | 4.1.5.8 | **Sh Nozzle Pipe Profile Ep** | 0.75d | 2018-07-13 20:54 | 2018-07-16 10:54 |  | 2018-07-13 20:54 | 2018-07-16 10:54 | 0.75d | 135.95d |  | TEAM_2Shift_Calendar-1 |  | 10h | 593.75 | 593.75 |
| 112 | 4.1.5.8.1 | 6"Nb- 2 Nos | 2h | 2018-07-13 20:54 | 2018-07-16 06:54 | 107 | 2018-07-13 20:54 | 2018-07-16 06:54 | 2h | 135.95d | 0d | TEAM_2Shift_Calendar-1 | Helper; Grinder | 4h | 212.5 | 212.5 |
| 113 | 4.1.5.8.2 | 2" Mp Con - 2 Nos | 1h | 2018-07-16 06:54 | 2018-07-16 07:54 | 112 | 2018-07-16 06:54 | 2018-07-16 07:54 | 1h | 135.95d | 0d | TEAM_2Shift_Calendar-1 | Helper; Grinder | 2h | 106.25 | 106.25 |
| 114 | 4.1.5.8.3 | Inspection | 3h | 2018-07-16 07:54 | 2018-07-16 10:54 | 113 | 2018-07-16 07:54 | 2018-07-16 10:54 | 3h | 135.95d |  | TEAM_2Shift_Calendar-1 | Fitter [200%] | 4h | 275 | 275 |
| 115 | 4.1.5.9 | **Channel Pipe Fabrication** | 0.88d | 2018-06-06 17:00 | 2018-06-07 08:00 |  | 2018-06-04 17:30 | 2018-06-05 08:30 | 0.88d | 187.26d | 0d | TEAM_2Shift_Calendar-1 |  | 11h | 681.25 | 681.25 |
| 116 | 4.1.5.9.1 | Channel Pipe Marking | 2h | 2018-06-06 17:00 | 2018-06-06 19:00 | 34 | 2018-06-04 17:30 | 2018-06-04 19:30 | 2h | 187.26d | 0d | TEAM_2Shift_Calendar-1 | Pipe (Cost) [0.1%]; Fitter [200%] | 4h | 275 | 275 |
| 117 | 4.1.5.9.2 | Channel pipe Cutting | 2h | 2018-06-06 19:00 | 2018-06-06 21:00 | 116 | 2018-06-04 19:30 | 2018-06-04 21:30 | 2h | 187.26d | 0d | TEAM_2Shift_Calendar-1 | Helper; Gas Cutter | 4h | 237.5 | 237.5 |
| 118 | 4.1.5.9.3 | Channel Pipe Edge Preparation | 3h | 2018-06-06 21:00 | 2018-06-07 08:00 | 117 | 2018-06-04 21:30 | 2018-06-05 08:30 | 3h | 187.26d |  | TEAM_2Shift_Calendar-1 | Grinder | 3h | 168.75 | 168.75 |
| 119 | 4.1.5.10 | **Ch Noz Pipe Marking** | 0.44d | 2018-06-07 08:00 | 2018-06-07 11:30 |  | 2018-06-05 08:30 | 2018-06-05 12:00 | 0.44d | 187.26d | 0d | TEAM_2Shift_Calendar-1 |  | 7h | 453.12 | 453.12 |
| 120 | 4.1.5.10.1 | 6"Nb-1 No,2"-1no | 1h | 2018-06-07 08:00 | 2018-06-07 09:00 | 115 | 2018-06-05 08:30 | 2018-06-05 09:30 | 1h | 187.26d | 0d | TEAM_2Shift_Calendar-1 | Helper; Fitter | 2h | 118.75 | 118.75 |
| 121 | 4.1.5.10.2 | 2" Mp Con - 2 Nos | 0.5h | 2018-06-07 09:00 | 2018-06-07 09:30 | 120 | 2018-06-05 09:30 | 2018-06-05 10:00 | 0.5h | 187.26d | 0d | TEAM_2Shift_Calendar-1 | Helper; Pipe (Cost) [0.1%]; Fitter | 1h | 59.38 | 59.38 |
| 122 | 4.1.5.10.3 | Inspection | 2h | 2018-06-07 09:30 | 2018-06-07 11:30 | 121 | 2018-06-05 10:00 | 2018-06-05 12:00 | 2h | 187.26d |  | TEAM_2Shift_Calendar-1 | Fitter [200%] | 4h | 275 | 275 |
| 123 | 4.1.5.11 | **Ch Noz Pipe Cutting** | 0.75d | 2018-06-07 11:30 | 2018-06-07 17:31 |  | 2018-06-05 12:00 | 2018-06-05 18:01 | 0.75d | 187.26d | 0d | TEAM_2Shift_Calendar-1 |  | 10h | 638.75 | 638.75 |
| 124 | 4.1.5.11.1 | 6"Nb-1 No,2"-1no | 3h | 2018-06-07 11:30 | 2018-06-07 14:30 | 119 | 2018-06-05 12:00 | 2018-06-05 15:00 | 3h | 187.26d | 0d | TEAM_2Shift_Calendar-1 | Helper; Gas Cutter | 4h | 245 | 245 |
| 125 | 4.1.5.11.2 | 2" Mp Con - 2 Nos | 1.02h | 2018-06-07 14:30 | 2018-06-07 15:31 | 124 | 2018-06-05 15:00 | 2018-06-05 16:01 | 1.02h | 187.26d | 0d | TEAM_2Shift_Calendar-1 | Helper; Gas Cutter | 2h | 118.75 | 118.75 |
| 126 | 4.1.5.11.3 | Inspection | 2h | 2018-06-07 15:31 | 2018-06-07 17:31 | 125 | 2018-06-05 16:01 | 2018-06-05 18:01 | 2h | 187.26d |  | TEAM_2Shift_Calendar-1 | Fitter [200%] | 4h | 275 | 275 |
| 127 | 4.1.5.12 | **Ch Noz Pipe Ep** | 1.62d | 2018-06-07 17:31 | 2018-06-08 14:31 |  | 2018-06-05 18:01 | 2018-06-06 15:01 | 1.62d | 187.26d | 52.31d | TEAM_2Shift_Calendar-1 |  | 10h | 601.7 | 601.7 |
| 128 | 4.1.5.12.1 | 6"Nb-1 No,2"-1no | 9h | 2018-06-07 17:31 | 2018-06-08 10:31 | 123 | 2018-06-05 18:01 | 2018-06-06 11:01 | 9h | 187.26d | 0d | TEAM_2Shift_Calendar-1 | Helper; Grinder | 4h | 220.45 | 220.45 |
| 129 | 4.1.5.12.2 | 2" Mp Con - 2 Nos | 1h | 2018-06-08 10:31 | 2018-06-08 11:31 | 128 | 2018-06-06 11:01 | 2018-06-06 12:01 | 1h | 187.26d | 0d | TEAM_2Shift_Calendar-1 | Helper; Grinder | 2h | 106.25 | 106.25 |
| 130 | 4.1.5.12.3 | Inspection | 3h | 2018-06-08 11:31 | 2018-06-08 14:31 | 129 | 2018-06-06 12:01 | 2018-06-06 15:01 | 3h | 187.26d |  | TEAM_2Shift_Calendar-1 | Fitter [200%] | 4h | 275 | 275 |

| ID | WBS | Task | Duration | Start | Finish | Predecessors | Baseline start | Baseline finish | Baseline duration | Total slack | Free slack | Calendar | Resources | Work | Cost | Baseline cost |
| --- | --- | --- | --- | --- | --- | --- | --- | --- | --- | --- | --- | --- | --- | --- | --- | --- |
| 131 | 4.1.5.13 | **Ch Noz+Flg Fit Up** | 0.75d | 2018-07-11 17:00 | 2018-07-12 07:00 |  | 2018-07-11 17:00 | 2018-07-12 07:00 | 0.75d | 134.95d | 0d | TEAM_2Shift_Calendar-1 |  | 16h | 1,043.75 | 1,043.75 |
| 132 | 4.1.5.13.1 | 6"Nb-1 No,2"-1no | 2h | 2018-07-11 17:00 | 2018-07-11 19:00 | 127, 40 | 2018-07-11 17:00 | 2018-07-11 19:00 | 2h | 134.95d | 0d | TEAM_2Shift_Calendar-1 | SMAW Welder; Helper; Forging Std (Cost) [0.1%]; Fitter [200%] | 8h | 512.5 | 512.5 |
| 133 | 4.1.5.13.2 | 2" Mp Con - 2 Nos | 1h | 2018-07-11 19:00 | 2018-07-11 20:00 | 132, 40 | 2018-07-11 19:00 | 2018-07-11 20:00 | 1h | 134.95d | 0d | TEAM_2Shift_Calendar-1 | SMAW Welder; Helper; Forging Std (Cost) [0.1%]; Fitter [200%] | 4h | 256.25 | 256.25 |
| 134 | 4.1.5.13.3 | Inspection | 3h | 2018-07-11 20:00 | 2018-07-12 07:00 | 133 | 2018-07-11 20:00 | 2018-07-12 07:00 | 3h | 134.95d |  | TEAM_2Shift_Calendar-1 | Fitter [200%] | 4h | 275 | 275 |
| 135 | 4.1.5.14 | **Ch Noz Pipe+Flg Welding** | 1.54d | 2018-07-12 07:00 | 2018-07-12 19:17 |  | 2018-07-12 07:00 | 2018-07-12 19:17 | 1.54d | 134.95d | 0d | TEAM_2Shift_Calendar-1 |  | 10.54h | 674.47 | 674.47 |
| 136 | 4.1.5.14.1 | 6"Nb-1 No,2"-1no | 2.55h | 2018-07-12 07:00 | 2018-07-12 09:33 | 131 | 2018-07-12 07:00 | 2018-07-12 09:33 | 2.55h | 134.95d | 0d | TEAM_2Shift_Calendar-1 | Helper; SMAW Welder | 5.1h | 302.81 | 302.81 |
| 137 | 4.1.5.14.2 | 2" Mp Con - 2 Nos | 7.74h | 2018-07-12 09:33 | 2018-07-12 17:17 | 136 | 2018-07-12 09:33 | 2018-07-12 17:17 | 7.74h | 134.95d | 0d | TEAM_2Shift_Calendar-1 | Helper; SMAW Welder | 1.44h | 96.65 | 96.65 |
| 138 | 4.1.5.14.3 | Inspection | 2h | 2018-07-12 17:17 | 2018-07-12 19:17 | 137 | 2018-07-12 17:17 | 2018-07-12 19:17 | 2h | 134.95d |  | TEAM_2Shift_Calendar-1 | Fitter [200%] | 4h | 275 | 275 |
| 139 | 4.1.5.15 | **Ch Noz Pipe Profile Marking** | 0.82d | 2018-07-12 19:17 | 2018-07-13 09:50 |  | 2018-07-12 19:17 | 2018-07-13 09:50 | 0.82d | 134.95d | 0d | TEAM_2Shift_Calendar-1 |  | 11.1h | 704.4 | 704.4 |
| 140 | 4.1.5.15.1 | 6"Nb-1 No,2"-1no | 3.55h | 2018-07-12 19:17 | 2018-07-13 06:50 | 135 | 2018-07-12 19:17 | 2018-07-13 06:50 | 3.55h | 134.95d | 0d | TEAM_2Shift_Calendar-1 | Helper; Fitter | 5.1h | 310.65 | 310.65 |
| 141 | 4.1.5.15.2 | 2" Mp Con - 2 Nos | 1h | 2018-07-13 06:50 | 2018-07-13 07:50 | 140 | 2018-07-13 06:50 | 2018-07-13 07:50 | 1h | 134.95d | 0d | TEAM_2Shift_Calendar-1 | Helper; Fitter | 2h | 118.75 | 118.75 |
| 142 | 4.1.5.15.3 | Inspection | 2h | 2018-07-13 07:50 | 2018-07-13 09:50 | 141 | 2018-07-13 07:50 | 2018-07-13 09:50 | 2h | 134.95d |  | TEAM_2Shift_Calendar-1 | Fitter [200%] | 4h | 275 | 275 |
| 143 | 4.1.5.16 | **Ch Nozzle Pipe Profile Cutting** | 1.63d | 2018-07-13 09:50 | 2018-07-16 06:51 |  | 2018-07-13 09:50 | 2018-07-16 06:51 | 1.63d | 134.95d | 0d | TEAM_2Shift_Calendar-1 |  | 10h | 655.04 | 655.04 |
| 144 | 4.1.5.16.1 | 6"Nb-1 No,2"-1no | 9.02h | 2018-07-13 09:50 | 2018-07-13 18:51 | 139 | 2018-07-13 09:50 | 2018-07-13 18:51 | 9.02h | 134.95d | 0d | TEAM_2Shift_Calendar-1 | Helper; Fitter | 4h | 261.29 | 261.29 |
| 145 | 4.1.5.16.2 | 2" Mp Con - 2 Nos | 1h | 2018-07-13 18:51 | 2018-07-13 19:51 | 144 | 2018-07-13 18:51 | 2018-07-13 19:51 | 1h | 134.95d | 0d | TEAM_2Shift_Calendar-1 | Helper; Fitter | 2h | 118.75 | 118.75 |
| 146 | 4.1.5.16.3 | Inspection | 3h | 2018-07-13 19:51 | 2018-07-16 06:51 | 145 | 2018-07-13 19:51 | 2018-07-16 06:51 | 3h | 134.95d |  | TEAM_2Shift_Calendar-1 | Fitter [200%] | 4h | 275 | 275 |
| 147 | 4.1.5.17 | **Ch Nozzle Pipe Profile Ep** | 1.5d | 2018-07-16 06:51 | 2018-07-16 18:52 |  | 2018-07-16 06:51 | 2018-07-16 18:52 | 1.5d | 134.95d |  | TEAM_2Shift_Calendar-1 |  | 10h | 593.75 | 593.75 |
| 148 | 4.1.5.17.1 | 6"Nb-1 No,2"-1no | 2h | 2018-07-16 06:51 | 2018-07-16 08:51 | 143 | 2018-07-16 06:51 | 2018-07-16 08:51 | 2h | 134.95d | 0d | TEAM_2Shift_Calendar-1 | Helper; Grinder | 4h | 212.5 | 212.5 |
| 149 | 4.1.5.17.2 | 2" Mp Con - 2 Nos | 1h | 2018-07-16 08:51 | 2018-07-16 09:51 | 148 | 2018-07-16 08:51 | 2018-07-16 09:51 | 1h | 134.95d | 0d | TEAM_2Shift_Calendar-1 | Helper; Grinder | 2h | 106.25 | 106.25 |
| 150 | 4.1.5.17.3 | Inspection | 9.02h | 2018-07-16 09:51 | 2018-07-16 18:52 | 149 | 2018-07-16 09:51 | 2018-07-16 18:52 | 9.02h | 134.95d |  | TEAM_2Shift_Calendar-1 | Fitter [200%] | 4h | 275 | 275 |
| 151 | 4.1.6 | **Saddle & Other** | 19.97d | 2018-07-07 17:00 | 2018-07-20 16:43 |  | 2018-07-05 17:30 | 2018-07-18 17:13 | 19.97d | 127.22d |  | TEAM_2Shift_Calendar-1 |  | 227.38h | 13,902.47 | 13,902.47 |
| 152 | 4.1.6.1 | **Saddle Fabrication** | 2.12d | 2018-07-07 17:00 | 2018-07-09 18:00 |  | 2018-07-05 17:30 | 2018-07-06 18:30 | 2.12d | 127.22d | 0d | TEAM_2Shift_Calendar-1 |  | 20h | 1,217.79 | 1,217.79 |
| 153 | 4.1.6.1.1 | Plate Issuence | 1h | 2018-07-07 17:00 | 2018-07-07 18:00 | 54 | 2018-07-05 17:30 | 2018-07-05 18:30 | 1h | 127.22d | 0d | TEAM_2Shift_Calendar-1 | Helper; Plate (Cost) [0.1%]; Fitter | 2h | 118.75 | 118.75 |
| 154 | 4.1.6.1.2 | Base Marking | 3h | 2018-07-07 18:00 | 2018-07-07 21:00 | 153 | 2018-07-05 18:30 | 2018-07-05 21:30 | 3h | 127.22d | 0d | TEAM_2Shift_Calendar-1 | Helper; Fitter | 6h | 356.25 | 356.25 |
| 155 | 4.1.6.1.3 | Web Pl Marking | 3h | 2018-07-07 21:00 | 2018-07-09 08:00 | 154 | 2018-07-05 21:30 | 2018-07-06 08:30 | 3h | 127.22d | 0d | TEAM_2Shift_Calendar-1 | Helper; Fitter | 6h | 356.25 | 356.25 |
| 156 | 4.1.6.1.4 | Ribs Marking | 10h | 2018-07-09 08:00 | 2018-07-09 18:00 | 155 | 2018-07-06 08:30 | 2018-07-06 18:30 | 10h | 127.22d |  | TEAM_2Shift_Calendar-1 | Helper; Fitter | 6h | 386.54 | 386.54 |

| ID | WBS | Task | Duration | Start | Finish | Predecessors | Baseline start | Baseline finish | Baseline duration | Total slack | Free slack | Calendar | Resources | Work | Cost | Baseline cost |
| --- | --- | --- | --- | --- | --- | --- | --- | --- | --- | --- | --- | --- | --- | --- | --- | --- |
| 157 | 4.1.6.2 | **Saddle Plate Cutting** | 2.12d | 2018-07-09 18:00 | 2018-07-10 19:00 |  | 2018-07-06 18:30 | 2018-07-07 19:30 | 2.12d | 127.22d | 0d | TEAM_2Shift_Calendar-1 |  | 10h | 565.62 | 565.62 |
| 158 | 4.1.6.2.1 | Base Cutting | 0.25h | 2018-07-09 18:00 | 2018-07-09 18:15 | 152 | 2018-07-06 18:30 | 2018-07-06 18:45 | 0.25h | 127.22d | 0d | TEAM_2Shift_Calendar-1 | Helper; Gas Cutter | 0.5h | 29.69 | 29.69 |
| 159 | 4.1.6.2.2 | Web Pl Cutting | 0.25h | 2018-07-09 18:15 | 2018-07-09 18:30 | 158 | 2018-07-06 18:45 | 2018-07-06 19:00 | 0.25h | 127.22d | 0d | TEAM_2Shift_Calendar-1 | Helper; Gas Cutter | 0.5h | 29.69 | 29.69 |
| 160 | 4.1.6.2.3 | Ribs Cutting | 0.5h | 2018-07-09 18:30 | 2018-07-09 19:00 | 159 | 2018-07-06 19:00 | 2018-07-06 19:30 | 0.5h | 127.22d | 0d | TEAM_2Shift_Calendar-1 | Grinder [200%] | 1h | 56.25 | 56.25 |
| 161 | 4.1.6.2.4 | Grinding Of Above | 16h | 2018-07-09 19:00 | 2018-07-10 19:00 | 160 | 2018-07-06 19:30 | 2018-07-07 19:30 | 16h | 127.22d |  | TEAM_2Shift_Calendar-1 | Grinder | 8h | 450 | 450 |
| 162 | 4.1.6.3 | **Saddle Fit Up & Welding** | 11.65d | 2018-07-10 19:00 | 2018-07-18 16:11 |  | 2018-07-07 19:30 | 2018-07-16 16:41 | 11.65d | 127.22d | 0d | TEAM_2Shift_Calendar-1 |  | 160.38h | 9,869.98 | 9,869.98 |
| 163 | 4.1.6.3.1 | Base + Web Fit Up | 3.19h | 2018-07-10 19:00 | 2018-07-11 06:11 | 157 | 2018-07-07 19:30 | 2018-07-09 06:41 | 3.19h | 127.22d | 0d | TEAM_2Shift_Calendar-1 | Helper; SMAW Welder | 4.38h | 267.69 | 267.69 |
| 164 | 4.1.6.3.2 | Base + Web Welding | 12h | 2018-07-11 06:11 | 2018-07-11 18:11 | 163 | 2018-07-09 06:41 | 2018-07-09 18:41 | 12h | 127.22d | 0d | TEAM_2Shift_Calendar-1 | Helper [200%]; SMAW Welder; Fitter | 20h | 1,236.11 | 1,236.11 |
| 165 | 4.1.6.3.3 | Ribs+Web Fit Up | 46h | 2018-07-11 18:11 | 2018-07-16 16:11 | 164 | 2018-07-09 18:41 | 2018-07-12 16:41 | 46h | 127.22d | 0d | TEAM_2Shift_Calendar-1 | Helper [200%]; SMAW Welder [200%] | 88h | 5,516.18 | 5,516.18 |
| 166 | 4.1.6.3.4 | Ribs+Web Welding | 32h | 2018-07-16 16:11 | 2018-07-18 16:11 | 165 | 2018-07-12 16:41 | 2018-07-16 16:41 | 32h | 127.22d |  | TEAM_2Shift_Calendar-1 | Helper [200%]; SMAW Welder | 48h | 2,850 | 2,850 |
| 167 | 4.1.6.4 | **Lifting Lug Pad** | 1.13d | 2018-07-18 16:11 | 2018-07-19 09:12 |  | 2018-07-16 16:41 | 2018-07-17 09:42 | 1.13d | 127.22d | 0d | TEAM_2Shift_Calendar-1 |  | 12h | 695 | 695 |
| 168 | 4.1.6.4.1 | Plate Issuence OD 288 x ID 177 | 2h | 2018-07-18 16:11 | 2018-07-18 18:11 | 162 | 2018-07-16 16:41 | 2018-07-16 18:41 | 2h | 127.22d | 0d | TEAM_2Shift_Calendar-1 | Helper; Fitter | 4h | 237.5 | 237.5 |
| 169 | 4.1.6.4.2 | Lifting Lug Pad Marking | 3h | 2018-07-18 18:11 | 2018-07-18 21:11 | 168 | 2018-07-16 18:41 | 2018-07-16 21:41 | 3h | 127.22d | 0d | TEAM_2Shift_Calendar-1 | Helper; Gas Cutter | 4h | 245 | 245 |
| 170 | 4.1.6.4.3 | Lifting Lug Pad Cutting | 2.02h | 2018-07-18 21:11 | 2018-07-19 07:12 | 169 | 2018-07-16 21:41 | 2018-07-17 07:42 | 2.02h | 127.22d | 0d | TEAM_2Shift_Calendar-1 | Helper; Grinder | 4h | 212.5 | 212.5 |
| 171 | 4.1.6.4.4 | Lifting Lugs Pad Grinding | 2h | 2018-07-19 07:12 | 2018-07-19 09:12 | 170 | 2018-07-17 07:42 | 2018-07-17 09:42 | 2h | 127.22d |  | TEAM_2Shift_Calendar-1 |  |  |  |  |
| 172 | 4.1.6.5 | **Lifting Lug Preparation** | 1.06d | 2018-07-19 09:12 | 2018-07-19 17:43 |  | 2018-07-17 09:42 | 2018-07-17 18:13 | 1.06d | 127.22d | 0d | TEAM_2Shift_Calendar-1 |  | 13h | 792.71 | 792.71 |
| 173 | 4.1.6.5.1 | Lifting Lugs Marking | 5h | 2018-07-19 09:12 | 2018-07-19 14:12 | 167 | 2018-07-17 09:42 | 2018-07-17 14:42 | 5h | 127.22d | 0d | TEAM_2Shift_Calendar-1 | Helper; Gas Cutter | 8h | 483.33 | 483.33 |
| 174 | 4.1.6.5.2 | Lifting Lugs Cutting | 0.52h | 2018-07-19 14:12 | 2018-07-19 14:43 | 173 | 2018-07-17 14:42 | 2018-07-17 15:13 | 0.52h | 127.22d | 0d | TEAM_2Shift_Calendar-1 | Helper; Grinder | 1h | 53.12 | 53.12 |
| 175 | 4.1.6.5.3 | Lifting Lugs Grinding | 1h | 2018-07-19 14:43 | 2018-07-19 15:43 | 174 | 2018-07-17 15:13 | 2018-07-17 16:13 | 1h | 127.22d | 0d | TEAM_2Shift_Calendar-1 | Helper; Fitter | 2h | 118.75 | 118.75 |
| 176 | 4.1.6.5.4 | Lifting Lug Drilling | 2h | 2018-07-19 15:43 | 2018-07-19 17:43 | 175 | 2018-07-17 16:13 | 2018-07-17 18:13 | 2h | 127.22d |  | TEAM_2Shift_Calendar-1 | Driller | 2h | 137.5 | 137.5 |
| 177 | 4.1.6.6 | **Insulation Ring Prparation** | 1.88d | 2018-07-19 17:43 | 2018-07-20 16:43 |  | 2018-07-17 18:13 | 2018-07-18 17:13 | 1.88d | 127.22d |  | TEAM_2Shift_Calendar-1 |  | 12h | 761.36 | 761.36 |
| 178 | 4.1.6.6.1 | Insulaion Ring Marking | 9h | 2018-07-19 17:43 | 2018-07-20 10:43 | 172 | 2018-07-17 18:13 | 2018-07-18 11:13 | 9h | 127.22d | 0d | TEAM_2Shift_Calendar-1 | Helper; Gas Cutter | 4h | 261.36 | 261.36 |
| 179 | 4.1.6.6.2 | Insulaion Ring Cutting | 2h | 2018-07-20 10:43 | 2018-07-20 12:43 | 178 | 2018-07-18 11:13 | 2018-07-18 13:13 | 2h | 127.22d | 0d | TEAM_2Shift_Calendar-1 | Helper; Fitter | 4h | 237.5 | 237.5 |
| 180 | 4.1.6.6.3 | Insulaion Ring Hole Marking | 2h | 2018-07-20 12:43 | 2018-07-20 14:43 | 179 | 2018-07-18 13:13 | 2018-07-18 15:13 | 2h | 127.22d | 0d | TEAM_2Shift_Calendar-1 | Helper; Fitter | 2h | 125 | 125 |
| 181 | 4.1.6.6.4 | Insulaion Ring Hole Drilling | 2h | 2018-07-20 14:43 | 2018-07-20 16:43 | 180 | 2018-07-18 15:13 | 2018-07-18 17:13 | 2h | 127.22d |  | TEAM_2Shift_Calendar-1 | Driller | 2h | 137.5 | 137.5 |

| ID | WBS | Task | Duration | Start | Finish | Predecessors | Baseline start | Baseline finish | Baseline duration | Total slack | Free slack | Calendar | Resources | Work | Cost | Baseline cost |
| --- | --- | --- | --- | --- | --- | --- | --- | --- | --- | --- | --- | --- | --- | --- | --- | --- |
| 182 | 4.1.7 | **Baffle & Tb Items Fab** | 2.85d | 2018-06-06 17:00 | 2018-06-11 15:46 |  | 2018-06-04 17:30 | 2018-06-07 16:16 | 2.85d | 50.19d | 49.22d |  |  | 95.35h | 5,445.2 | 5,445.2 |
| 183 | 4.1.7.1 | **Baffle Preparation** | 0.5d | 2018-06-06 17:00 | 2018-06-06 21:00 |  | 2018-06-04 17:30 | 2018-06-04 21:30 | 0.5d | 101.26d | 0d | TEAM_2Shift_Calendar-1 |  | 8h | 475 | 475 |
| 184 | 4.1.7.1.1 | Baffle Plate Transfer | 2h | 2018-06-06 17:00 | 2018-06-06 19:00 | 44 | 2018-06-04 17:30 | 2018-06-04 19:30 | 2h | 101.26d | 0d | TEAM_2Shift_Calendar-1 | Helper; Plate (Cost) [0.1%]; Fitter | 4h | 237.5 | 237.5 |
| 185 | 4.1.7.1.2 | Baffle Marking | 0.75h | 2018-06-06 19:00 | 2018-06-06 19:45 | 184 | 2018-06-04 19:30 | 2018-06-04 20:15 | 0.75h | 101.26d | 0d | TEAM_2Shift_Calendar-1 | Helper; Gas Cutter | 1.5h | 89.06 | 89.06 |
| 186 | 4.1.7.1.3 | Baffle Profile Cutting | 1.25h | 2018-06-06 19:45 | 2018-06-06 21:00 | 185 | 2018-06-04 20:15 | 2018-06-04 21:30 | 1.25h | 101.26d |  | TEAM_2Shift_Calendar-1 | Helper; Gas Cutter | 2.5h | 148.44 | 148.44 |
| 187 | 4.1.7.2 | **Baffle Bend Removal & Stacking** | 0.75d | 2018-06-06 21:00 | 2018-06-07 11:00 |  | 2018-06-04 21:30 | 2018-06-05 11:30 | 0.75d | 101.26d | 0d | TEAM_2Shift_Calendar-1 |  | 14h | 850 | 850 |
| 188 | 4.1.7.2.1 | Baffle Pl Bend Removal | 4h | 2018-06-06 21:00 | 2018-06-07 09:00 | 183 | 2018-06-04 21:30 | 2018-06-05 09:30 | 4h | 101.26d | 0d | TEAM_2Shift_Calendar-1 | Helper; Fitter | 8h | 475 | 475 |
| 189 | 4.1.7.2.2 | Baffle Pl Stacking Per 100mm | 2h | 2018-06-07 09:00 | 2018-06-07 11:00 | 188 | 2018-06-05 09:30 | 2018-06-05 11:30 | 2h | 101.26d |  | TEAM_2Shift_Calendar-1 | Helper; Fitter [200%] | 6h | 375 | 375 |
| 190 | 4.1.7.3 | **Baffle Drilling** | 0.62d | 2018-06-07 11:00 | 2018-06-07 16:00 |  | 2018-06-05 11:30 | 2018-06-05 16:30 | 0.62d | 101.26d |  | TEAM_2Shift_Calendar-1 |  | 4h | 275 | 275 |
| 191 | 4.1.7.3.1 | Baffle Drilling | 5h | 2018-06-07 11:00 | 2018-06-07 16:00 | 187 | 2018-06-05 11:30 | 2018-06-05 16:30 | 5h | 101.26d | 0d | TEAM_2Shift_Calendar-1 | Driller | 4h | 275 | 275 |
| 192 | 4.1.7.4 | **Baffle De Stacking & Chamfering** | 0.28d | 2018-06-07 16:00 | 2018-06-07 18:12 |  | 2018-06-05 16:30 | 2018-06-05 18:42 | 0.28d | 101.26d | 0d | TEAM_2Shift_Calendar-1 |  | 2.2h | 151.25 | 151.25 |
| 193 | 4.1.7.4.1 | Baffle De Stacking | 2h | 2018-06-07 16:00 | 2018-06-07 18:00 | 191 | 2018-06-05 16:30 | 2018-06-05 18:30 | 2h | 101.26d | 0d | TEAM_2Shift_Calendar-1 | Fitter | 2h | 137.5 | 137.5 |
| 194 | 4.1.7.4.2 | Baffle Chamfering (70% of TS Holes*No of Baffles) | 0.2h | 2018-06-07 18:00 | 2018-06-07 18:12 | 193 | 2018-06-05 18:30 | 2018-06-05 18:42 | 0.2h | 101.26d |  | TEAM_2Shift_Calendar-1 | Driller | 0.2h | 13.75 | 13.75 |
| 195 | 4.1.7.5 | **Baffle Stacking & Thro Hole Check** | 1.03d | 2018-06-07 18:12 | 2018-06-11 08:46 |  | 2018-06-05 18:42 | 2018-06-07 08:46 | 1.03d | 50.47d |  |  |  | 21.25h | 987.5 | 987.5 |
| 196 | 4.1.7.5.1 | Stacking | 2h | 2018-06-07 18:12 | 2018-06-07 20:12 | 192 | 2018-06-05 18:42 | 2018-06-05 20:42 | 2h | 101.26d | 0.54d | TEAM_2Shift_Calendar-1 | Helper; Fitter | 4h | 237.5 | 237.5 |
| 197 | 4.1.7.5.2 | Baffle Hole Alingment | 1h | 2018-06-08 08:30 | 2018-06-08 09:30 | 196 | 2018-06-06 08:30 | 2018-06-06 09:30 | 1h | 50.59d | 0d |  | SC (Work) | 1h |  |  |
| 198 | 4.1.7.5.3 | Baffle Hole Re Drill (Use 40% of Holes in Qty) | 2.25h | 2018-06-08 09:30 | 2018-06-08 11:45 | 197 | 2018-06-06 09:30 | 2018-06-06 11:45 | 2.25h | 50.59d | 0d |  | SC (Work) | 1.25h |  |  |
| 199 | 4.1.7.5.4 | Baffle Od Machining (100mm L * 700Ø = 3hrs) | 3.02h | 2018-06-08 11:45 | 2018-06-08 14:46 | 198 | 2018-06-06 11:45 | 2018-06-06 14:46 | 3.02h | 101.13d | 0d | TEAM_2Shift_Calendar-1 | Helper [300%] | 9h | 450 | 450 |
| 200 | 4.1.7.5.5 | Baffle Cleaning (100mm L * 700Ø = 3hrs) | 10h | 2018-06-08 14:46 | 2018-06-11 08:46 | 199 | 2018-06-06 14:46 | 2018-06-07 08:46 | 10h | 101.13d |  | TEAM_2Shift_Calendar-1 | Helper [200%] | 6h | 300 | 300 |
| 201 | 4.1.7.6 | **Support Plate Marking** | 0.75d | 2018-06-06 17:00 | 2018-06-07 15:00 |  | 2018-06-05 08:30 | 2018-06-05 15:30 | 0.75d | 50.19d | 0d |  |  | 9h | 364.29 | 364.29 |
| 202 | 4.1.7.6.1 | Support Plate Transfer | 1h | 2018-06-06 17:00 | 2018-06-07 09:00 | 44 | 2018-06-05 08:30 | 2018-06-05 09:30 | 1h | 50.19d | 0d |  | Plate (Cost) [0.1%]; SC (Work) | 1h |  |  |
| 203 | 4.1.7.6.2 | Support Marking | 2h | 2018-06-07 09:00 | 2018-06-07 11:00 | 202 | 2018-06-05 09:30 | 2018-06-05 11:30 | 2h | 50.19d | 0d |  | SC (Work) | 2h |  |  |
| 204 | 4.1.7.6.3 | Support Profile Cutting | 4h | 2018-06-07 11:00 | 2018-06-07 15:00 | 203 | 2018-06-05 11:30 | 2018-06-05 15:30 | 4h | 100.25d |  | TEAM_2Shift_Calendar-1 | Helper; Gas Cutter | 6h | 364.29 | 364.29 |
| 205 | 4.1.7.7 | **Support Plate Bend Removal** | 0.16d | 2018-06-07 15:00 | 2018-06-07 16:15 |  | 2018-06-05 15:30 | 2018-06-05 16:45 | 0.16d | 100.25d | 0d | TEAM_2Shift_Calendar-1 |  | 3h | 178.13 | 178.13 |
| 206 | 4.1.7.7.1 | Support Pl Bend Removal | 1h | 2018-06-07 15:00 | 2018-06-07 16:00 | 201 | 2018-06-05 15:30 | 2018-06-05 16:30 | 1h | 100.25d | 0d | TEAM_2Shift_Calendar-1 | Helper; Fitter | 2h | 118.75 | 118.75 |
| 207 | 4.1.7.7.2 | Support Pl Stacking | 0.25h | 2018-06-07 16:00 | 2018-06-07 16:15 | 206 | 2018-06-05 16:30 | 2018-06-05 16:45 | 0.25h | 100.25d |  | TEAM_2Shift_Calendar-1 | Helper [200%]; Fitter; SMAW Welder | 1h | 59.38 | 59.38 |

| ID | WBS | Task | Type | Duration | Start | Finish | Predecessors | Baseline start | Baseline finish | Baseline duration | Total slack | Free slack | Calendar | Resources | Work | Cost | Baseline cost |
| --- | --- | --- | --- | --- | --- | --- | --- | --- | --- | --- | --- | --- | --- | --- | --- | --- | --- |
| 208 | 4.1.7.8 | **Support Plate Drlinng** |  | 1.38d | 2018-06-07 16:15 | 2018-06-08 11:15 |  | 2018-06-05 16:45 | 2018-06-06 11:45 | 1.38d | 100.25d | 0d | TEAM_2Shift_Calendar-1 |  | 4h | 275 | 275 |
| 209 | 4.1.7.8.1 | Support Drilling |  | 11h | 2018-06-07 16:15 | 2018-06-08 11:15 | 205 | 2018-06-05 16:45 | 2018-06-06 11:45 | 11h | 100.25d |  | TEAM_2Shift_Calendar-1 | Driller | 4h | 275 | 275 |
| 210 | 4.1.7.9 | **Sup Plate De Stacking & Chamfering** |  | 0.06d | 2018-06-08 11:15 | 2018-06-08 11:45 |  | 2018-06-06 11:45 | 2018-06-06 12:15 | 0.06d | 100.25d | 0d | TEAM_2Shift_Calendar-1 |  | 0.5h | 34.38 | 34.38 |
| 211 | 4.1.7.9.1 | Support De Stacking |  | 0.25h | 2018-06-08 11:15 | 2018-06-08 11:30 | 208 | 2018-06-06 11:45 | 2018-06-06 12:00 | 0.25h | 100.25d | 0d | TEAM_2Shift_Calendar-1 | Fitter | 0.25h | 17.19 | 17.19 |
| 212 | 4.1.7.9.2 | Support Hole Chamfering |  | 0.25h | 2018-06-08 11:30 | 2018-06-08 11:45 | 211 | 2018-06-06 12:00 | 2018-06-06 12:15 | 0.25h | 100.25d |  | TEAM_2Shift_Calendar-1 | Driller | 0.25h | 17.19 | 17.19 |
| 213 | 4.1.7.10 | **Tie Rod Preparation** |  | 1.7d | 2018-06-08 11:45 | 2018-06-11 09:22 |  | 2018-06-06 12:15 | 2018-06-07 09:52 | 1.7d | 100.25d | 0d | TEAM_2Shift_Calendar-1 |  | 17.8h | 1,130.92 | 1,130.92 |
| 214 | 4.1.7.10.1 | Tie Rod Matl Transfere |  | 0.2h | 2018-06-08 11:45 | 2018-06-08 11:57 | 210 | 2018-06-06 12:15 | 2018-06-06 12:27 | 0.2h | 100.25d | 0d | TEAM_2Shift_Calendar-1 | Helper; Fitter | 0.4h | 23.75 | 23.75 |
| 215 | 4.1.7.10.2 | Rod Cutting |  | 1.4h | 2018-06-08 11:57 | 2018-06-08 13:21 | 214 | 2018-06-06 12:27 | 2018-06-06 13:51 | 1.4h | 100.25d | 0d | TEAM_2Shift_Calendar-1 | Lathe Operator | 0.4h | 48 | 48 |
| 216 | 4.1.7.10.3 | Thread Machining. |  | 3.02h | 2018-06-08 13:21 | 2018-06-08 16:22 | 215 | 2018-06-06 13:51 | 2018-06-06 16:52 | 3.02h | 100.25d | 0d | TEAM_2Shift_Calendar-1 | Fitter; Helper; SMAW Welder | 9h | 562.5 | 562.5 |
| 217 | 4.1.7.10.4 | Joining |  | 9h | 2018-06-08 16:22 | 2018-06-11 09:22 | 216 | 2018-06-06 16:52 | 2018-06-07 09:52 | 9h | 100.25d |  | TEAM_2Shift_Calendar-1 | Helper [200%]; Grinder; SMAW Welder | 8h | 496.67 | 496.67 |
| 218 | 4.1.7.11 | **Spacer Tube Preparation** |  | 0.8d | 2018-06-11 09:22 | 2018-06-11 15:46 |  | 2018-06-07 09:52 | 2018-06-07 16:16 | 0.8d | 100.25d |  | TEAM_2Shift_Calendar-1 |  | 11.6h | 723.75 | 723.75 |
| 219 | 4.1.7.11.1 | Spacer Tube Transfere |  | 0.2h | 2018-06-11 09:22 | 2018-06-11 09:34 | 213 | 2018-06-07 09:52 | 2018-06-07 10:04 | 0.2h | 100.25d | 0d | TEAM_2Shift_Calendar-1 | Helper; Tube (Cost) [0.1%]; Fitter | 0.4h | 23.75 | 23.75 |
| 220 | 4.1.7.11.2 | Length Cutting |  | 2h | 2018-06-11 09:34 | 2018-06-11 11:34 | 219 | 2018-06-07 10:04 | 2018-06-07 12:04 | 2h | 100.25d | 0d | TEAM_2Shift_Calendar-1 | Lathe Operator | 2h | 240 | 240 |
| 221 | 4.1.7.11.3 | Length Machining |  | 4h | 2018-06-11 11:34 | 2018-06-11 15:34 | 220 | 2018-06-07 12:04 | 2018-06-07 16:04 | 4h | 100.25d | 0d | TEAM_2Shift_Calendar-1 | Helper [300%] | 9h | 450 | 450 |
| 222 | 4.1.7.11.4 | Cleaninng |  | 0.2h | 2018-06-11 15:34 | 2018-06-11 15:46 | 221 | 2018-06-07 16:04 | 2018-06-07 16:16 | 0.2h | 100.25d |  | TEAM_2Shift_Calendar-1 | Helper | 0.2h | 10 | 10 |
| 223 | 4.1.8 | **Shell Fabrication** |  | 26.06d | 2018-06-06 17:00 | 2018-06-22 17:30 |  | 2018-06-04 17:30 | 2018-06-20 18:00 | 26.06d | 97.57d |  | TEAM_2Shift_Calendar-1 |  | 238.5h | 14,846.34 | 14,846.34 |
| 224 | 4.1.8.1 | **Shell Pipe Fabrication** |  | 2.38d | 2018-06-06 17:00 | 2018-06-07 20:00 |  | 2018-06-04 17:30 | 2018-06-05 20:30 | 2.38d | 97.57d | 0d | TEAM_2Shift_Calendar-1 |  | 16h | 976.79 | 976.79 |
| 225 | 4.1.8.1.1 | Shell Pipe Marking |  | 2h | 2018-06-06 17:00 | 2018-06-06 19:00 | 32 | 2018-06-04 17:30 | 2018-06-04 19:30 | 2h | 97.57d | 0d | TEAM_2Shift_Calendar-1 | Pipe (Cost) [0.1%]; Fitter [200%] | 4h | 275 | 275 |
| 226 | 4.1.8.1.2 | Shell pipe Cutting |  | 4h | 2018-06-06 19:00 | 2018-06-07 07:00 | 225 | 2018-06-04 19:30 | 2018-06-05 07:30 | 4h | 97.57d | 0d | TEAM_2Shift_Calendar-1 | Helper; Gas Cutter | 6h | 364.29 | 364.29 |
| 227 | 4.1.8.1.3 | Shell Pipe Edge Preparation |  | 13h | 2018-06-07 07:00 | 2018-06-07 20:00 | 226 | 2018-06-05 07:30 | 2018-06-05 20:30 | 13h | 97.57d |  | TEAM_2Shift_Calendar-1 | Grinder | 6h | 337.5 | 337.5 |
| 228 | 4.1.8.2 | **Sh Final Length Correction** |  | 0.56d | 2018-06-07 20:00 | 2018-06-08 08:30 |  | 2018-06-05 20:30 | 2018-06-06 09:00 | 0.56d | 97.57d | 0d | TEAM_2Shift_Calendar-1 |  | 6.5h | 392.41 | 392.41 |
| 229 | 4.1.8.2.1 | Sh Length Marking |  | 4h | 2018-06-07 20:00 | 2018-06-08 08:00 | 224, 280 | 2018-06-05 20:30 | 2018-06-06 08:30 | 4h | 97.57d | 0d | TEAM_2Shift_Calendar-1 | Helper; Gas Cutter | 6h | 364.29 | 364.29 |
| 230 | 4.1.8.2.2 | Length Cutting | milestone | 0h | 2018-06-08 08:00 | 2018-06-08 08:00 | 229 | 2018-06-06 08:30 | 2018-06-06 08:30 | 0h | 97.57d | 0d | TEAM_2Shift_Calendar-1 | Helper; Grinder |  |  |  |
| 231 | 4.1.8.2.3 | Grinding & Ep |  | 0.5h | 2018-06-08 08:00 | 2018-06-08 08:30 | 230 | 2018-06-06 08:30 | 2018-06-06 09:00 | 0.5h | 97.57d |  | TEAM_2Shift_Calendar-1 | Grinder | 0.5h | 28.12 | 28.12 |

| ID | WBS | Task | Type | Duration | Start | Finish | Predecessors | Baseline start | Baseline finish | Baseline duration | Total slack | Free slack | Calendar | Resources | Work | Cost | Baseline cost |
| --- | --- | --- | --- | --- | --- | --- | --- | --- | --- | --- | --- | --- | --- | --- | --- | --- | --- |
| 232 | 4.1.8.3 | **Sh Cir Seam Fitup Flg1** |  | 0.12d | 2018-06-08 08:30 | 2018-06-08 09:30 |  | 2018-06-06 09:00 | 2018-06-06 10:00 | 0.12d | 97.57d | 0d | TEAM_2Shift_Calendar-1 |  | 2h | 118.75 | 118.75 |
| 233 | 4.1.8.3.1 | Sh Cs Fit Up Flg CS1 |  | 1h | 2018-06-08 08:30 | 2018-06-08 09:30 | 228 | 2018-06-06 09:00 | 2018-06-06 10:00 | 1h | 97.57d | 0d | TEAM_2Shift_Calendar-1 | Helper; Fitter | 2h | 118.75 | 118.75 |
| 234 | 4.1.8.3.2 | Sh Cs Tack Dp Check Flg CS1 | milestone | 0h | 2018-06-08 09:30 | 2018-06-08 09:30 | 233 | 2018-06-06 10:00 | 2018-06-06 10:00 | 0h | 97.57d |  | TEAM_2Shift_Calendar-1 | Helper; Fitter |  |  |  |
| 235 | 4.1.8.4 | **Sh Cir Seam Welding Flg1** |  | 1.78d | 2018-06-08 09:30 | 2018-06-11 07:45 |  | 2018-06-06 10:00 | 2018-06-07 08:15 | 1.78d | 97.57d | 0d | TEAM_2Shift_Calendar-1 |  | 7.5h | 444.27 | 444.27 |
| 236 | 4.1.8.4.1 | Sh Cs Welding Transfere |  | 8h | 2018-06-08 09:30 | 2018-06-08 17:30 | 232 | 2018-06-06 10:00 | 2018-06-06 18:00 | 8h | 97.57d | 0d | TEAM_2Shift_Calendar-1 | Helper; SMAW Welder | 2h | 133.33 | 133.33 |
| 237 | 4.1.8.4.2 | Sh Cs Welding Outer Flg1 |  | 5.75h | 2018-06-08 17:30 | 2018-06-11 07:15 | 236 | 2018-06-06 18:00 | 2018-06-07 07:45 | 5.75h | 97.57d | 0d | TEAM_2Shift_Calendar-1 | Grinder | 4.75h | 267.19 | 267.19 |
| 238 | 4.1.8.4.3 | Sh Cs Welding Back Chip Flg1 |  | 0.25h | 2018-06-11 07:15 | 2018-06-11 07:30 | 237 | 2018-06-07 07:45 | 2018-06-07 08:00 | 0.25h | 97.57d | 0d | TEAM_2Shift_Calendar-1 | Helper; SMAW Welder | 0.5h | 29.69 | 29.69 |
| 239 | 4.1.8.4.4 | Sh Cs Flush Grinding Flg1 |  | 0.25h | 2018-06-11 07:30 | 2018-06-11 07:45 | 238 | 2018-06-07 08:00 | 2018-06-07 08:15 | 0.25h | 97.57d |  | TEAM_2Shift_Calendar-1 | Grinder | 0.25h | 14.06 | 14.06 |
| 240 | 4.1.8.5 | **Sh Cs Fit Up Dish** |  | 0.12d | 2018-06-11 07:45 | 2018-06-11 08:45 |  | 2018-06-07 08:15 | 2018-06-07 09:15 | 0.12d | 97.57d | 0d | TEAM_2Shift_Calendar-1 |  | 2h | 118.75 | 118.75 |
| 241 | 4.1.8.5.1 | Sh Cs Fit Up Flg2 |  | 1h | 2018-06-11 07:45 | 2018-06-11 08:45 | 235 | 2018-06-07 08:15 | 2018-06-07 09:15 | 1h | 97.57d | 0d | TEAM_2Shift_Calendar-1 | Helper; Fitter | 2h | 118.75 | 118.75 |
| 242 | 4.1.8.5.2 | Sh Cs Tack Dp Check Flg2 | milestone | 0h | 2018-06-11 08:45 | 2018-06-11 08:45 | 241 | 2018-06-07 09:15 | 2018-06-07 09:15 | 0h | 97.57d |  | TEAM_2Shift_Calendar-1 | Helper; Fitter |  |  |  |
| 243 | 4.1.8.6 | **Sh Cs Welding Dish** |  | 1.78d | 2018-06-11 08:45 | 2018-06-12 07:01 |  | 2018-06-07 09:15 | 2018-06-08 07:31 | 1.78d | 97.57d | 0d | TEAM_2Shift_Calendar-1 |  | 7.5h | 429.69 | 429.69 |
| 244 | 4.1.8.6.1 | Sh Cs Welding Transfere Flg2 |  | 1h | 2018-06-11 08:45 | 2018-06-11 09:45 | 240 | 2018-06-07 09:15 | 2018-06-07 10:15 | 1h | 97.57d | 0d | TEAM_2Shift_Calendar-1 | Helper; SMAW Welder | 2h | 118.75 | 118.75 |
| 245 | 4.1.8.6.2 | Sh Cs Welding Outer Flg2 |  | 12.75h | 2018-06-11 09:45 | 2018-06-12 06:30 | 244 | 2018-06-07 10:15 | 2018-06-08 07:00 | 12.75h | 97.57d | 0d | TEAM_2Shift_Calendar-1 | Grinder | 4.75h | 267.19 | 267.19 |
| 246 | 4.1.8.6.3 | Sh Cs Welding Back Chip Flg2 |  | 0.27h | 2018-06-12 06:30 | 2018-06-12 06:46 | 245 | 2018-06-08 07:00 | 2018-06-08 07:16 | 0.27h | 97.57d | 0d | TEAM_2Shift_Calendar-1 | Helper; SMAW Welder | 0.5h | 29.69 | 29.69 |
| 247 | 4.1.8.6.4 | Sh Cs Flush Grinding Flg2 |  | 0.25h | 2018-06-12 06:46 | 2018-06-12 07:01 | 246 | 2018-06-08 07:16 | 2018-06-08 07:31 | 0.25h | 97.57d |  | TEAM_2Shift_Calendar-1 | Grinder | 0.25h | 14.06 | 14.06 |
| 248 | 4.1.8.7 | **Nozzle Orientation Marking** |  | 0.31d | 2018-06-12 07:01 | 2018-06-12 09:31 |  | 2018-06-08 07:31 | 2018-06-08 10:01 | 0.31d | 97.57d | 0d | TEAM_2Shift_Calendar-1 |  | 5h | 325 | 325 |
| 249 | 4.1.8.7.1 | Sh-Noz Orientaion Marking 6"-2Nos |  | 0.75h | 2018-06-12 07:01 | 2018-06-12 07:46 | 243 | 2018-06-08 07:31 | 2018-06-08 08:16 | 0.75h | 97.57d | 0d | TEAM_2Shift_Calendar-1 | Fitter [200%] | 1.5h | 103.12 | 103.12 |
| 250 | 4.1.8.7.2 | Sh-Noz Marking 6"-2Nos |  | 0.75h | 2018-06-12 07:46 | 2018-06-12 08:31 | 249 | 2018-06-08 08:16 | 2018-06-08 09:01 | 0.75h | 97.57d | 0d | TEAM_2Shift_Calendar-1 | Fitter [200%] | 1.5h | 103.12 | 103.12 |
| 251 | 4.1.8.7.3 | Sh-Noz Marking |  | 1h | 2018-06-12 08:31 | 2018-06-12 09:31 | 250 | 2018-06-08 09:01 | 2018-06-08 10:01 | 1h | 97.57d |  | TEAM_2Shift_Calendar-1 | Helper; Fitter | 2h | 118.75 | 118.75 |
| 252 | 4.1.8.8 | **Sh Nozzle Openning** |  | 1.38d | 2018-06-12 09:31 | 2018-06-12 20:31 |  | 2018-06-08 10:01 | 2018-06-08 21:01 | 1.38d | 97.57d | 0d | TEAM_2Shift_Calendar-1 |  | 8h | 536.36 | 536.36 |
| 253 | 4.1.8.8.1 | 6"-2Nos |  | 9h | 2018-06-12 09:31 | 2018-06-12 18:31 | 248 | 2018-06-08 10:01 | 2018-06-08 19:01 | 9h | 97.57d | 0d | TEAM_2Shift_Calendar-1 | Helper; Gas Cutter | 4h | 261.36 | 261.36 |
| 254 | 4.1.8.8.2 | Inspection |  | 2h | 2018-06-12 18:31 | 2018-06-12 20:31 | 253 | 2018-06-08 19:01 | 2018-06-08 21:01 | 2h | 97.57d |  | TEAM_2Shift_Calendar-1 | Fitter [200%] | 4h | 275 | 275 |
| 255 | 4.1.8.9 | **Sh Nozzle Ep** |  | 0.62d | 2018-06-12 20:31 | 2018-06-13 09:31 |  | 2018-06-08 21:01 | 2018-06-11 10:01 | 0.62d | 97.57d | 0d | TEAM_2Shift_Calendar-1 |  | 6h | 387.5 | 387.5 |
| 256 | 4.1.8.9.1 | 6"-2Nos |  | 3h | 2018-06-12 20:31 | 2018-06-13 07:31 | 252 | 2018-06-08 21:01 | 2018-06-11 08:01 | 3h | 97.57d | 0d | TEAM_2Shift_Calendar-1 | Grinder | 2h | 112.5 | 112.5 |
| 257 | 4.1.8.9.2 | Inspection |  | 2h | 2018-06-13 07:31 | 2018-06-13 09:31 | 256 | 2018-06-11 08:01 | 2018-06-11 10:01 | 2h | 97.57d |  | TEAM_2Shift_Calendar-1 | Fitter [200%] | 4h | 275 | 275 |

| ID | WBS | Task | Duration | Start | Finish | Predecessors | Baseline start | Baseline finish | Baseline duration | Total slack | Free slack | Calendar | Resources | Work | Cost | Baseline cost |
| --- | --- | --- | --- | --- | --- | --- | --- | --- | --- | --- | --- | --- | --- | --- | --- | --- |
| 258 | 4.1.8.10 | **Sh Nozzzle Fit Up** | 1.25d | 2018-06-13 09:31 | 2018-06-13 19:31 |  | 2018-06-11 10:01 | 2018-06-11 20:01 | 1.25d | 97.57d | 0d | TEAM_2Shift_Calendar-1 |  | 10h | 655.11 | 655.11 |
| 259 | 4.1.8.10.1 | 6"-2Nos | 9h | 2018-06-13 09:31 | 2018-06-13 18:31 | 255 | 2018-06-11 10:01 | 2018-06-11 19:01 | 9h | 97.57d | 0d | TEAM_2Shift_Calendar-1 | Helper; SMAW Welder; Fitter [200%] | 8h | 536.36 | 536.36 |
| 260 | 4.1.8.10.2 | Dp Check | 1h | 2018-06-13 18:31 | 2018-06-13 19:31 | 259 | 2018-06-11 19:01 | 2018-06-11 20:01 | 1h | 97.57d |  | TEAM_2Shift_Calendar-1 | Helper; Fitter | 2h | 118.75 | 118.75 |
| 261 | 4.1.8.11 | **Sh Nozzle Fit Up Inspection** | 0.38d | 2018-06-13 19:31 | 2018-06-14 06:31 |  | 2018-06-11 20:01 | 2018-06-12 07:01 | 0.38d | 97.57d | 0d | TEAM_2Shift_Calendar-1 |  | 4h | 243.75 | 243.75 |
| 262 | 4.1.8.11.1 | 6"-2Nos | 1h | 2018-06-13 19:31 | 2018-06-13 20:31 | 258 | 2018-06-11 20:01 | 2018-06-11 21:01 | 1h | 97.57d | 0d | TEAM_2Shift_Calendar-1 | Helper; Fitter | 2h | 118.75 | 118.75 |
| 263 | 4.1.8.11.2 | Dp Check | 2h | 2018-06-13 20:31 | 2018-06-14 06:31 | 262 | 2018-06-11 21:01 | 2018-06-12 07:01 | 2h | 97.57d |  | TEAM_2Shift_Calendar-1 | Helper; Fitter | 2h | 125 | 125 |
| 264 | 4.1.8.12 | **Sh Nozzle Welding** | 1.69d | 2018-06-14 06:31 | 2018-06-14 20:01 |  | 2018-06-12 07:01 | 2018-06-12 20:31 | 1.69d | 97.57d | 0d | TEAM_2Shift_Calendar-1 |  | 13h | 799.22 | 799.22 |
| 265 | 4.1.8.12.1 | Sh Noz Welding Arrangement | 1h | 2018-06-14 06:31 | 2018-06-14 07:31 | 261 | 2018-06-12 07:01 | 2018-06-12 08:01 | 1h | 97.57d | 0d | TEAM_2Shift_Calendar-1 | Helper; SMAW Welder | 2h | 118.75 | 118.75 |
| 266 | 4.1.8.12.2 | Sh-Noz Welding N1 | 9.5h | 2018-06-14 07:31 | 2018-06-14 17:01 | 265 | 2018-06-12 08:01 | 2018-06-12 17:31 | 9.5h | 97.57d | 0d | TEAM_2Shift_Calendar-1 | Helper; SMAW Welder | 5h | 324.22 | 324.22 |
| 267 | 4.1.8.12.3 | Sh-Noz Welding N2 | 2.5h | 2018-06-14 17:01 | 2018-06-14 19:31 | 266 | 2018-06-12 17:31 | 2018-06-12 20:01 | 2.5h | 97.57d | 0d | TEAM_2Shift_Calendar-1 | Helper; Fitter | 5h | 296.88 | 296.88 |
| 268 | 4.1.8.12.4 | Sh Noz Root Dp Check | 0.5h | 2018-06-14 19:31 | 2018-06-14 20:01 | 267 | 2018-06-12 20:01 | 2018-06-12 20:31 | 0.5h | 97.57d |  | TEAM_2Shift_Calendar-1 | SMAW Welder; Helper | 1h | 59.38 | 59.38 |
| 269 | 4.1.8.13 | **Sh Saddle Welding** | 10.5d | 2018-06-14 20:01 | 2018-06-21 08:01 |  | 2018-06-12 20:31 | 2018-06-19 08:31 | 10.5d | 97.57d | 0d | TEAM_2Shift_Calendar-1 |  | 139h | 8,619.69 | 8,619.69 |
| 270 | 4.1.8.13.1 | Sh-Saddle Pad Fit Up | 14h | 2018-06-14 20:01 | 2018-06-15 18:01 | 264 | 2018-06-12 20:31 | 2018-06-13 18:31 | 14h | 97.57d | 0d | TEAM_2Shift_Calendar-1 | Helper [200%]; SMAW Welder [200%] | 24h | 1,515 | 1,515 |
| 271 | 4.1.8.13.2 | Sh-Saddle Pad Welding | 22h | 2018-06-15 18:01 | 2018-06-18 08:01 | 270 | 2018-06-13 18:31 | 2018-06-15 08:31 | 22h | 97.57d | 0d | TEAM_2Shift_Calendar-1 | Grinder [200%]; Fitter [200%] | 52h | 3,333.57 | 3,333.57 |
| 272 | 4.1.8.13.3 | Sh-Saddle Matching | 11h | 2018-06-18 08:01 | 2018-06-18 19:01 | 271 | 2018-06-15 08:31 | 2018-06-15 19:31 | 11h | 97.57d | 0d | TEAM_2Shift_Calendar-1 | Fitter [200%]; Helper; SMAW Welder | 16h | 1,047.83 | 1,047.83 |
| 273 | 4.1.8.13.4 | Sh-Saddle Fit Up | 6h | 2018-06-18 19:01 | 2018-06-19 09:01 | 272 | 2018-06-15 19:31 | 2018-06-16 09:31 | 6h | 97.57d | 0d | TEAM_2Shift_Calendar-1 | Helper [200%]; SMAW Welder [200%] | 20h | 1,204.55 | 1,204.55 |
| 274 | 4.1.8.13.5 | Sh-Saddle Welding | 27h | 2018-06-19 09:01 | 2018-06-20 20:01 | 273 | 2018-06-16 09:31 | 2018-06-18 20:31 | 27h | 97.57d | 0d | TEAM_2Shift_Calendar-1 | Grinder [200%] | 24h | 1,350 | 1,350 |
| 275 | 4.1.8.13.6 | Sh-Saddle Dress Up | 4h | 2018-06-20 20:01 | 2018-06-21 08:01 | 274 | 2018-06-18 20:31 | 2018-06-19 08:31 | 4h | 97.57d |  | TEAM_2Shift_Calendar-1 | Grinder | 3h | 168.75 | 168.75 |
| 276 | 4.1.8.14 | **Sh Nde Clearence** | 3.19d | 2018-06-21 08:01 | 2018-06-22 17:30 |  | 2018-06-19 08:31 | 2018-06-20 18:00 | 3.19d | 97.57d | 96.41d | TEAM_2Shift_Calendar-1 |  | 12h | 799.04 | 799.04 |
| 277 | 4.1.8.14.1 | Sh-Sh Nde Clearence | 10h | 2018-06-21 08:01 | 2018-06-21 18:01 | 269 | 2018-06-19 08:31 | 2018-06-19 18:31 | 10h | 97.57d | 0d | TEAM_2Shift_Calendar-1 | Helper; Fitter | 6h | 386.54 | 386.54 |
| 278 | 4.1.8.14.2 | Tpi Inspection | 15.48h | 2018-06-21 18:01 | 2018-06-22 17:30 | 277 | 2018-06-19 18:31 | 2018-06-20 18:00 | 15.48h | 97.57d |  | TEAM_2Shift_Calendar-1 | Fitter [200%] | 6h | 412.5 | 412.5 |
| 279 | 4.1.9 | **Channel Fabrication** | 13.69d | 2018-06-06 17:00 | 2018-06-25 14:29 |  | 2018-06-04 17:30 | 2018-06-21 14:29 | 13.62d | 47.25d | 0d |  |  | 193.5h | 11,286.67 | 11,286.67 |
| 280 | 4.1.9.1 | **Channel Pipe Fabrication** | 2.38d | 2018-06-06 17:00 | 2018-06-07 20:00 |  | 2018-06-04 17:30 | 2018-06-05 20:30 | 2.38d | 95.13d | 0d | TEAM_2Shift_Calendar-1 |  | 16h | 976.79 | 976.79 |
| 281 | 4.1.9.1.1 | Channelll Pipe Marking | 2h | 2018-06-06 17:00 | 2018-06-06 19:00 | 34 | 2018-06-04 17:30 | 2018-06-04 19:30 | 2h | 95.13d | 0d | TEAM_2Shift_Calendar-1 | Pipe (Cost) [0.1%]; Fitter [200%] | 4h | 275 | 275 |
| 282 | 4.1.9.1.2 | Channel pipe Cutting | 4h | 2018-06-06 19:00 | 2018-06-07 07:00 | 281 | 2018-06-04 19:30 | 2018-06-05 07:30 | 4h | 95.13d | 0d | TEAM_2Shift_Calendar-1 | Helper; Gas Cutter | 6h | 364.29 | 364.29 |
| 283 | 4.1.9.1.3 | Channell Pipe Edge Preparation | 13h | 2018-06-07 07:00 | 2018-06-07 20:00 | 282 | 2018-06-05 07:30 | 2018-06-05 20:30 | 13h | 95.13d |  | TEAM_2Shift_Calendar-1 | Grinder | 6h | 337.5 | 337.5 |

| ID | WBS | Task | Type | Duration | Start | Finish | Predecessors | Baseline start | Baseline finish | Baseline duration | Total slack | Free slack | Calendar | Resources | Work | Cost | Baseline cost |
| --- | --- | --- | --- | --- | --- | --- | --- | --- | --- | --- | --- | --- | --- | --- | --- | --- | --- |
| 284 | 4.1.9.2 | **Ch Cs Fit Up Flg1** |  | 0.56d | 2018-06-07 20:00 | 2018-06-08 08:31 |  | 2018-06-05 20:30 | 2018-06-06 09:01 | 0.56d | 95.13d | 0d | TEAM_2Shift_Calendar-1 |  | 8h | 490.63 | 490.63 |
| 285 | 4.1.9.2.1 | Ch Cir Ep Correction |  | 0.5h | 2018-06-07 20:00 | 2018-06-07 20:30 | 280 | 2018-06-05 20:30 | 2018-06-05 21:00 | 0.5h | 95.13d | 0d | TEAM_2Shift_Calendar-1 | SMAW Welder; Helper; Fitter [200%] | 2h | 128.13 | 128.13 |
| 286 | 4.1.9.2.2 | Ch Cs Fit Up Flg1 |  | 2h | 2018-06-07 20:30 | 2018-06-08 06:30 | 285 | 2018-06-05 21:00 | 2018-06-06 07:00 | 2h | 95.13d | 0d | TEAM_2Shift_Calendar-1 | Helper; Fitter | 2h | 125 | 125 |
| 287 | 4.1.9.2.3 | Ch Cs Tack Dp Check Flg1 |  | 2.02h | 2018-06-08 06:30 | 2018-06-08 08:31 | 286 | 2018-06-06 07:00 | 2018-06-06 09:01 | 2.02h | 95.13d |  | TEAM_2Shift_Calendar-1 | Helper; Fitter | 4h | 237.5 | 237.5 |
| 288 | 4.1.9.3 | **Ch Cs Welding Flg1** |  | 1.44d | 2018-06-08 08:31 | 2018-06-08 20:01 |  | 2018-06-06 09:01 | 2018-06-06 20:31 | 1.44d | 95.13d | 0d | TEAM_2Shift_Calendar-1 |  | 5.75h | 331.25 | 331.25 |
| 289 | 4.1.9.3.1 | Ch Cs Welding Transfere |  | 1h | 2018-06-08 08:31 | 2018-06-08 09:31 | 284 | 2018-06-06 09:01 | 2018-06-06 10:01 | 1h | 95.13d | 0d | TEAM_2Shift_Calendar-1 | Helper; Forging Non-Std (Cost) [0.1%]; SMAW Welder | 2h | 118.75 | 118.75 |
| 290 | 4.1.9.3.2 | Ch Cs Welding Outer Flg1 |  | 10h | 2018-06-08 09:31 | 2018-06-08 19:31 | 289 | 2018-06-06 10:01 | 2018-06-06 20:01 | 10h | 95.13d | 0d | TEAM_2Shift_Calendar-1 | Grinder | 3h | 168.75 | 168.75 |
| 291 | 4.1.9.3.3 | Ch Cs Welding Back Chip Flg1 |  | 0.25h | 2018-06-08 19:31 | 2018-06-08 19:46 | 290 | 2018-06-06 20:01 | 2018-06-06 20:16 | 0.25h | 95.13d | 0d | TEAM_2Shift_Calendar-1 | Helper; SMAW Welder | 0.5h | 29.69 | 29.69 |
| 292 | 4.1.9.3.4 | Ch Cs Flush Grinding Flg1 |  | 0.25h | 2018-06-08 19:46 | 2018-06-08 20:01 | 291 | 2018-06-06 20:16 | 2018-06-06 20:31 | 0.25h | 95.13d |  | TEAM_2Shift_Calendar-1 | Grinder | 0.25h | 14.06 | 14.06 |
| 293 | 4.1.9.4 | **Ch Cs Fit Up Dish** |  | 0.31d | 2018-06-08 20:01 | 2018-06-11 06:31 |  | 2018-06-06 20:31 | 2018-06-07 07:01 | 0.31d | 95.13d | 0d | TEAM_2Shift_Calendar-1 |  | 3h | 196.88 | 196.88 |
| 294 | 4.1.9.4.1 | Ch Length Cutting | milestone | 0h | 2018-06-08 20:01 | 2018-06-08 20:01 | 288 | 2018-06-06 20:31 | 2018-06-06 20:31 | 0h | 95.13d | 0d | TEAM_2Shift_Calendar-1 | Helper; Fitter |  |  |  |
| 295 | 4.1.9.4.2 | Ch Cir Ep Correction |  | 0.5h | 2018-06-08 20:01 | 2018-06-08 20:31 | 294 | 2018-06-06 20:31 | 2018-06-06 21:01 | 0.5h | 95.13d | 0d | TEAM_2Shift_Calendar-1 | SMAW Welder; Helper; Fitter [200%] | 2h | 128.13 | 128.13 |
| 296 | 4.1.9.4.3 | Ch Cs Fit Up Flg2 |  | 2h | 2018-06-08 20:31 | 2018-06-11 06:31 | 295 | 2018-06-06 21:01 | 2018-06-07 07:01 | 2h | 95.13d | 0d | TEAM_2Shift_Calendar-1 | Fitter | 1h | 68.75 | 68.75 |
| 297 | 4.1.9.4.4 | Ch Cs Tack Dp Check Flg2 | milestone | 0h | 2018-06-11 06:31 | 2018-06-11 06:31 | 296 | 2018-06-07 07:01 | 2018-06-07 07:01 | 0h | 95.13d |  | TEAM_2Shift_Calendar-1 | Helper; Fitter |  |  |  |
| 298 | 4.1.9.5 | **Ch Cs Flg 2 Dish** |  | 1.44d | 2018-06-11 06:31 | 2018-06-11 18:01 |  | 2018-06-07 07:01 | 2018-06-07 18:31 | 1.44d | 95.13d | 0.81d | TEAM_2Shift_Calendar-1 |  | 5.75h | 331.25 | 331.25 |
| 299 | 4.1.9.5.1 | Ch Cs Welding Transfere Flg2 |  | 1h | 2018-06-11 06:31 | 2018-06-11 07:31 | 293 | 2018-06-07 07:01 | 2018-06-07 08:01 | 1h | 95.13d | 0d | TEAM_2Shift_Calendar-1 | Helper; SMAW Welder | 2h | 118.75 | 118.75 |
| 300 | 4.1.9.5.2 | Ch Cs Welding Outer Flg2 |  | 10h | 2018-06-11 07:31 | 2018-06-11 17:31 | 299 | 2018-06-07 08:01 | 2018-06-07 18:01 | 10h | 95.13d | 0d | TEAM_2Shift_Calendar-1 | Grinder | 3h | 168.75 | 168.75 |
| 301 | 4.1.9.5.3 | Ch Cs Welding Back Chip Flg2 |  | 0.25h | 2018-06-11 17:31 | 2018-06-11 17:46 | 300 | 2018-06-07 18:01 | 2018-06-07 18:16 | 0.25h | 95.13d | 0d | TEAM_2Shift_Calendar-1 | Helper; SMAW Welder | 0.5h | 29.69 | 29.69 |
| 302 | 4.1.9.5.4 | Ch Cs Flush Grinding Flg2 |  | 0.25h | 2018-06-11 17:46 | 2018-06-11 18:01 | 301 | 2018-06-07 18:16 | 2018-06-07 18:31 | 0.25h | 95.13d |  | TEAM_2Shift_Calendar-1 | Grinder | 0.25h | 14.06 | 14.06 |
| 303 | 4.1.9.6 | **Ch Cs Welding Rt Flg1 & 2** |  | 2d | 2018-06-12 08:30 | 2018-06-13 17:30 |  | 2018-06-08 08:30 | 2018-06-11 17:30 | 2d | 47.32d | 0d |  |  | 8h |  |  |
| 304 | 4.1.9.6.1 | Ch Cs Welding Rt |  | 2d | 2018-06-12 08:30 | 2018-06-13 17:30 | 298 | 2018-06-08 08:30 | 2018-06-11 17:30 | 2d | 47.32d |  |  | SC (Work) | 8h |  |  |
| 305 | 4.1.9.7 | **Channel Noz Marking** |  | 2.09d | 2018-06-13 17:30 | 2018-06-14 18:15 |  | 2018-06-11 17:30 | 2018-06-12 18:15 | 2.09d | 95.19d | 0d | TEAM_2Shift_Calendar-1 |  | 17.5h | 1,089.06 | 1,089.06 |
| 306 | 4.1.9.7.1 | Ch- Noz orientation |  | 2d | 2018-06-13 17:30 | 2018-06-14 17:30 | 303 | 2018-06-11 17:30 | 2018-06-12 17:30 | 2d | 95.19d | 0d | TEAM_2Shift_Calendar-1 | Helper; Fitter | 16h | 1,000 | 1,000 |
| 307 | 4.1.9.7.2 | Ch-Noz Marking 6''Nb - 2 Nos |  | 0.75h | 2018-06-14 17:30 | 2018-06-14 18:15 | 306 | 2018-06-12 17:30 | 2018-06-12 18:15 | 0.75h | 95.19d |  | TEAM_2Shift_Calendar-1 | Helper; Fitter | 1.5h | 89.06 | 89.06 |

| ID | WBS | Task | Duration | Start | Finish | Predecessors | Baseline start | Baseline finish | Baseline duration | Total slack | Free slack | Calendar | Resources | Work | Cost | Baseline cost |
| --- | --- | --- | --- | --- | --- | --- | --- | --- | --- | --- | --- | --- | --- | --- | --- | --- |
| 308 | 4.1.9.8 | **Ch Noz Opening** | 0.62d | 2018-06-14 18:15 | 2018-06-15 07:15 |  | 2018-06-12 18:15 | 2018-06-13 07:15 | 0.62d | 95.19d | 0d | TEAM_2Shift_Calendar-1 |  | 8h | 482.5 | 482.5 |
| 309 | 4.1.9.8.1 | Ch-Noz Openning-Top N4 | 2h | 2018-06-14 18:15 | 2018-06-14 20:15 | 305 | 2018-06-12 18:15 | 2018-06-12 20:15 | 2h | 95.19d | 0d | TEAM_2Shift_Calendar-1 | Helper; Gas Cutter | 4h | 237.5 | 237.5 |
| 310 | 4.1.9.8.2 | Ch-Noz Openning-Bottom N3 | 3h | 2018-06-14 20:15 | 2018-06-15 07:15 | 309 | 2018-06-12 20:15 | 2018-06-13 07:15 | 3h | 95.19d |  | TEAM_2Shift_Calendar-1 | Helper; Gas Cutter | 4h | 245 | 245 |
| 311 | 4.1.9.9 | **Ch Noz Open Ep** | 1.38d | 2018-06-15 07:15 | 2018-06-15 18:15 |  | 2018-06-13 07:15 | 2018-06-13 18:15 | 1.38d | 95.19d | 0d | TEAM_2Shift_Calendar-1 |  | 6h | 325 | 325 |
| 312 | 4.1.9.9.1 | Ch-Noz Ep N4 | 2h | 2018-06-15 07:15 | 2018-06-15 09:15 | 308 | 2018-06-13 07:15 | 2018-06-13 09:15 | 2h | 95.19d | 0d | TEAM_2Shift_Calendar-1 | Helper; Grinder | 4h | 212.5 | 212.5 |
| 313 | 4.1.9.9.2 | Ch-Noz Ep N3 | 9h | 2018-06-15 09:15 | 2018-06-15 18:15 | 312 | 2018-06-13 09:15 | 2018-06-13 18:15 | 9h | 95.19d |  | TEAM_2Shift_Calendar-1 | Grinder | 2h | 112.5 | 112.5 |
| 314 | 4.1.9.10 | **Ch Noz Fit Up** | 2d | 2018-06-15 18:15 | 2018-06-16 18:15 |  | 2018-06-13 18:15 | 2018-06-14 18:15 | 2d | 95.19d | 0d | TEAM_2Shift_Calendar-1 |  | 32h | 2,028.99 | 2,028.99 |
| 315 | 4.1.9.10.1 | Ch-Noz Fit Up N4 | 5h | 2018-06-15 18:15 | 2018-06-16 07:15 | 311 | 2018-06-13 18:15 | 2018-06-14 07:15 | 5h | 95.19d | 0d | TEAM_2Shift_Calendar-1 | SMAW Welder; Helper; Fitter [200%] | 16h | 1,033.33 | 1,033.33 |
| 316 | 4.1.9.10.2 | Ch-Noz Fit Up N3 | 11h | 2018-06-16 07:15 | 2018-06-16 18:15 | 315 | 2018-06-14 07:15 | 2018-06-14 18:15 | 11h | 95.19d |  | TEAM_2Shift_Calendar-1 | SMAW Welder; Helper [200%]; Fitter | 16h | 995.65 | 995.65 |
| 317 | 4.1.9.11 | **Ch Noz Fit Up Insp** | 0.25d | 2018-06-16 18:15 | 2018-06-16 20:15 |  | 2018-06-14 18:15 | 2018-06-14 20:15 | 0.25d | 95.19d | 0d | TEAM_2Shift_Calendar-1 |  | 4h | 256.25 | 256.25 |
| 318 | 4.1.9.11.1 | Ch-Noz Inspn N4 | 1h | 2018-06-16 18:15 | 2018-06-16 19:15 | 314 | 2018-06-14 18:15 | 2018-06-14 19:15 | 1h | 95.19d | 0d | TEAM_2Shift_Calendar-1 | Helper; Fitter | 2h | 118.75 | 118.75 |
| 319 | 4.1.9.11.2 | Ch-Noz Inspn N3 | 1h | 2018-06-16 19:15 | 2018-06-16 20:15 | 318 | 2018-06-14 19:15 | 2018-06-14 20:15 | 1h | 95.19d |  | TEAM_2Shift_Calendar-1 | Fitter [200%] | 2h | 137.5 | 137.5 |
| 320 | 4.1.9.12 | **Ch Noz Welding** | 6.62d | 2018-06-16 20:15 | 2018-06-21 09:15 |  | 2018-06-14 20:15 | 2018-06-19 09:15 | 6.62d | 95.19d | 0d | TEAM_2Shift_Calendar-1 |  | 49h | 2,945.53 | 2,945.53 |
| 321 | 4.1.9.12.1 | Ch Noz Welding Arrangement | 2d | 2018-06-16 20:15 | 2018-06-18 20:15 | 317 | 2018-06-14 20:15 | 2018-06-15 20:15 | 2d | 95.19d | 0d | TEAM_2Shift_Calendar-1 | Helper; SMAW Welder | 16h | 1,000 | 1,000 |
| 322 | 4.1.9.12.2 | Ch-Noz Welding N4 | 4h | 2018-06-18 20:15 | 2018-06-19 08:15 | 321 | 2018-06-15 20:15 | 2018-06-16 08:15 | 4h | 95.19d | 0d | TEAM_2Shift_Calendar-1 | Helper; SMAW Welder | 6h | 364.29 | 364.29 |
| 323 | 4.1.9.12.3 | Ch-Noz Welding N3 | 10h | 2018-06-19 08:15 | 2018-06-19 18:15 | 322 | 2018-06-16 08:15 | 2018-06-16 18:15 | 10h | 95.19d | 0d | TEAM_2Shift_Calendar-1 | Helper; SMAW Welder | 6h | 386.54 | 386.54 |
| 324 | 4.1.9.12.4 | Ch Noz Root Dp Check | 4h | 2018-06-19 18:15 | 2018-06-20 06:15 | 323 | 2018-06-16 18:15 | 2018-06-18 06:15 | 4h | 95.19d | 0d | TEAM_2Shift_Calendar-1 | Helper; SMAW Welder | 6h | 364.29 | 364.29 |
| 325 | 4.1.9.12.5 | Rf Pad Fit Up & Nozzle Fit Up | 11h | 2018-06-20 06:15 | 2018-06-20 17:15 | 324 | 2018-06-18 06:15 | 2018-06-18 17:15 | 11h | 95.19d | 0d | TEAM_2Shift_Calendar-1 | Helper; Grinder | 8h | 436.67 | 436.67 |
| 326 | 4.1.9.12.6 | Rf Pad Fit Up Welding | 6h | 2018-06-20 17:15 | 2018-06-21 07:15 | 325 | 2018-06-18 17:15 | 2018-06-19 07:15 | 6h | 95.19d | 0d | TEAM_2Shift_Calendar-1 | Grinder | 5h | 281.25 | 281.25 |
| 327 | 4.1.9.12.7 | Noz Welding Flush Grind 12''NB | 2h | 2018-06-21 07:15 | 2018-06-21 09:15 | 326 | 2018-06-19 07:15 | 2018-06-19 09:15 | 2h | 95.19d |  | TEAM_2Shift_Calendar-1 | Grinder | 2h | 112.5 | 112.5 |
| 328 | 4.1.9.13 | **Channel Pp Plate Fit Up** | 1.75d | 2018-06-21 09:15 | 2018-06-22 07:15 |  | 2018-06-19 09:15 | 2018-06-20 07:15 | 1.75d | 95.19d | 0d | TEAM_2Shift_Calendar-1 |  | 12h | 785 | 785 |
| 329 | 4.1.9.13.1 | Ch- Pp Plate Fit Up | 11h | 2018-06-21 09:15 | 2018-06-21 20:15 | 320 | 2018-06-19 09:15 | 2018-06-19 20:15 | 11h | 95.19d | 0d | TEAM_2Shift_Calendar-1 | Helper; Fitter | 8h | 510 | 510 |
| 330 | 4.1.9.13.2 | Ch- Pp Plate Fit Up Insp | 3h | 2018-06-21 20:15 | 2018-06-22 07:15 | 329 | 2018-06-19 20:15 | 2018-06-20 07:15 | 3h | 95.19d |  | TEAM_2Shift_Calendar-1 | Fitter [200%] | 4h | 275 | 275 |
| 331 | 4.1.9.14 | **Ch Pp Plate Welding** | 2.28d | 2018-06-22 07:15 | 2018-06-25 09:29 |  | 2018-06-20 07:15 | 2018-06-21 09:29 | 2.28d | 95.19d | 0d | TEAM_2Shift_Calendar-1 |  | 15.5h | 841.3 | 841.3 |
| 332 | 4.1.9.14.1 | Ch- Pp Plate Welding | 15.5h | 2018-06-22 07:15 | 2018-06-25 06:45 | 328 | 2018-06-20 07:15 | 2018-06-21 06:45 | 15.5h | 95.19d | 0d | TEAM_2Shift_Calendar-1 | Helper; Grinder | 15h | 813.18 | 813.18 |
| 333 | 4.1.9.14.2 | Ch- Pp Plate Face Grinding | 2.73h | 2018-06-25 06:45 | 2018-06-25 09:29 | 332 | 2018-06-21 06:45 | 2018-06-21 09:29 | 2.73h | 95.19d |  | TEAM_2Shift_Calendar-1 | Grinder | 0.5h | 28.12 | 28.12 |

| ID | WBS | Task | Duration | Start | Finish | Predecessors | Baseline start | Baseline finish | Baseline duration | Total slack | Free slack | Calendar | Resources | Work | Cost | Baseline cost |
| --- | --- | --- | --- | --- | --- | --- | --- | --- | --- | --- | --- | --- | --- | --- | --- | --- |
| 334 | 4.1.9.15 | **Channel Nde & Pwht** | 0.62d | 2018-06-25 09:29 | 2018-06-25 14:29 |  | 2018-06-21 09:29 | 2018-06-21 14:29 | 0.62d | 95.19d |  | TEAM_2Shift_Calendar-1 |  | 3h | 206.25 | 206.25 |
| 335 | 4.1.9.15.1 | Ch All Welding Dressup & Dp Check | 3h | 2018-06-25 09:29 | 2018-06-25 12:29 | 331 | 2018-06-21 09:29 | 2018-06-21 12:29 | 3h | 95.19d | 0d | TEAM_2Shift_Calendar-1 | Fitter | 3h | 206.25 | 206.25 |
| 336 | 4.1.9.15.2 | Ch-Ch Nde Clearence | 2h | 2018-06-25 12:29 | 2018-06-25 14:29 | 335 | 2018-06-21 12:29 | 2018-06-21 14:29 | 2h | 95.19d |  | TEAM_2Shift_Calendar-1 |  |  |  |  |
| 337 | 4.1.10 | **Tube Bundle Assy** | 17.53d | 2018-08-13 08:30 | 2018-08-23 20:45 |  | 2018-08-13 08:30 | 2018-08-23 20:45 | 17.53d | 1.16d | 0d | TEAM_2Shift_Calendar-1 |  | 330h | 19,200.84 | 19,200.84 |
| 338 | 4.1.10.1 | **Tube Bundle Assy** | 3d | 2018-08-13 08:30 | 2018-08-14 16:30 |  | 2018-08-13 08:30 | 2018-08-14 16:30 | 3d | 1.16d | 0d | TEAM_2Shift_Calendar-1 |  | 96h | 5,261.54 | 5,261.54 |
| 339 | 4.1.10.1.1 | Frame Set Up & Tube Sht Set Up | 20h | 2018-08-13 08:30 | 2018-08-14 12:30 | 182, 71 | 2018-08-13 08:30 | 2018-08-14 12:30 | 20h | 1.16d | 0d | TEAM_2Shift_Calendar-1 | Fitter [200%]; Tube (Cost) [0.1%]; Helper [400%] | 72h | 3,911.54 | 3,911.54 |
| 340 | 4.1.10.1.2 | Skeliton Assy | 4h | 2018-08-14 12:30 | 2018-08-14 16:30 | 339 | 2018-08-14 12:30 | 2018-08-14 16:30 | 4h | 1.16d |  | TEAM_2Shift_Calendar-1 | Fitter [200%]; Helper [400%] | 24h | 1,350 | 1,350 |
| 341 | 4.1.10.2 | **Tube Insert** | 3.44d | 2018-08-14 16:30 | 2018-08-17 12:00 |  | 2018-08-14 16:30 | 2018-08-17 12:00 | 3.44d | 1.16d |  | TEAM_2Shift_Calendar-1 |  | 66.75h | 3,805.11 | 3,805.11 |
| 342 | 4.1.10.2.1 | Tube Insert | 11.25h | 2018-08-14 16:30 | 2018-08-16 11:45 | 338 | 2018-08-14 16:30 | 2018-08-16 11:45 | 11.25h | 1.16d | 0d | TEAM_2Shift_Calendar-1 | SMAW Welder; Helper [200%]; Fitter [200%] | 21.25h | 1,364.86 | 1,364.86 |
| 343 | 4.1.10.2.2 | Seal Rod Insert & Weld | 5h | 2018-08-16 11:45 | 2018-08-16 16:45 | 342 | 2018-08-16 11:45 | 2018-08-16 16:45 | 5h | 1.16d | 0d | TEAM_2Shift_Calendar-1 | Helper [400%]; Fitter | 20h | 1,089.29 | 1,089.29 |
| 344 | 4.1.10.2.3 | Tube Insert | 11.25h | 2018-08-16 16:45 | 2018-08-17 12:00 | 343 | 2018-08-16 16:45 | 2018-08-17 12:00 | 11.25h | 1.16d | 0d | TEAM_2Shift_Calendar-1 | Fitter [200%]; Helper [400%] | 25.5h | 1,350.96 | 1,350.96 |
| 345 | 4.1.10.3 | **Tube Bundle Insert** | 4d | 2018-08-17 12:00 | 2018-08-20 12:00 |  | 2018-08-17 12:00 | 2018-08-20 12:00 | 4d | 1.16d | 0d | TEAM_2Shift_Calendar-1 |  | 96h | 5,700 | 5,700 |
| 346 | 4.1.10.3.1 | Tube Bundle Insert In Shell | 32h | 2018-08-17 12:00 | 2018-08-20 12:00 | 344 | 2018-08-17 12:00 | 2018-08-20 12:00 | 32h | 1.16d |  | TEAM_2Shift_Calendar-1 | Helper [400%]; Fitter [200%] | 96h | 5,700 | 5,700 |
| 347 | 4.1.10.4 | **Tube Expansion In Grooves** | 0.41d | 2018-08-20 12:00 | 2018-08-20 15:15 |  | 2018-08-20 12:00 | 2018-08-20 15:15 | 0.41d | 1.16d | 0d | TEAM_2Shift_Calendar-1 |  | 12.25h | 720.31 | 720.31 |
| 348 | 4.1.10.4.1 | Tube Exp - St Side 1 Stage | 0.75h | 2018-08-20 12:00 | 2018-08-20 12:45 | 345 | 2018-08-20 12:00 | 2018-08-20 12:45 | 0.75h | 1.16d | 0d | TEAM_2Shift_Calendar-1 | Helper [200%]; Fitter | 2.25h | 126.56 | 126.56 |
| 349 | 4.1.10.4.2 | Tube Trimming Fl Side | 2.5h | 2018-08-20 12:45 | 2018-08-20 15:15 | 348 | 2018-08-20 12:45 | 2018-08-20 15:15 | 2.5h | 1.16d |  | TEAM_2Shift_Calendar-1 | Helper [200%]; Fitter [200%] | 10h | 593.75 | 593.75 |
| 350 | 4.1.10.5 | **Tube Exp- Pnuematic Test** | 4d | 2018-08-20 15:15 | 2018-08-22 15:15 |  | 2018-08-20 15:15 | 2018-08-22 15:15 | 4d | 1.16d | 0d | TEAM_2Shift_Calendar-1 |  | 34h | 2,076.36 | 2,076.36 |
| 351 | 4.1.10.5.1 | Tube Exp Pnuematic Test | 21h | 2018-08-20 15:15 | 2018-08-21 20:15 | 347 | 2018-08-20 15:15 | 2018-08-21 20:15 | 21h | 1.16d | 0d | TEAM_2Shift_Calendar-1 | Helper; Fitter | 24h | 1,486.36 | 1,486.36 |
| 352 | 4.1.10.5.2 | Pnuematic Test Tpi Witness | 9h | 2018-08-21 20:15 | 2018-08-22 13:15 | 351 | 2018-08-21 20:15 | 2018-08-22 13:15 | 9h | 1.16d | 0d | TEAM_2Shift_Calendar-1 | Helper [300%]; Fitter | 8h | 490 | 490 |
| 353 | 4.1.10.5.3 | Cleaning | 2h | 2018-08-22 13:15 | 2018-08-22 15:15 | 352 | 2018-08-22 13:15 | 2018-08-22 15:15 | 2h | 1.16d |  | TEAM_2Shift_Calendar-1 | Helper | 2h | 100 | 100 |
| 354 | 4.1.10.6 | **Tube Tube Sheet Welding- Ft Side** | 2.69d | 2018-08-22 15:15 | 2018-08-23 20:45 |  | 2018-08-22 15:15 | 2018-08-23 20:45 | 2.69d | 1.16d |  | TEAM_2Shift_Calendar-1 |  | 25h | 1,637.51 | 1,637.51 |
| 355 | 4.1.10.6.1 | Tube Welding - St Side Root | 5.25h | 2018-08-22 15:15 | 2018-08-22 20:30 | 350 | 2018-08-22 15:15 | 2018-08-22 20:30 | 5.25h | 1.16d | 0d | TEAM_2Shift_Calendar-1 | Helper; Fitter | 8.5h | 513.08 | 513.08 |
| 356 | 4.1.10.6.2 | Tube Welding - St Side Root Dp | 2h | 2018-08-22 20:30 | 2018-08-23 06:30 | 355 | 2018-08-22 20:30 | 2018-08-23 06:30 | 2h | 1.16d | 0d | TEAM_2Shift_Calendar-1 | Helper; TIG Welder | 4h | 350 | 350 |
| 357 | 4.1.10.6.3 | Tube Welding - St Side Final Weld | 5.25h | 2018-08-23 06:30 | 2018-08-23 11:45 | 356 | 2018-08-23 06:30 | 2018-08-23 11:45 | 5.25h | 1.16d | 0d | TEAM_2Shift_Calendar-1 | Helper; Fitter | 8.5h | 513.08 | 513.08 |
| 358 | 4.1.10.6.4 | Tube Welding - St Side Final Dp | 9h | 2018-08-23 11:45 | 2018-08-23 20:45 | 357 | 2018-08-23 11:45 | 2018-08-23 20:45 | 9h | 1.16d |  | TEAM_2Shift_Calendar-1 | Helper; Fitter | 4h | 261.36 | 261.36 |

| ID | WBS | Task | Type | Duration | Start | Finish | Predecessors | Baseline start | Baseline finish | Baseline duration | Total slack | Free slack | Calendar | Resources | Work | Cost | Baseline cost |
| --- | --- | --- | --- | --- | --- | --- | --- | --- | --- | --- | --- | --- | --- | --- | --- | --- | --- |
| 359 | 4.1.11 | **Hydro** |  | 99.78d | 2018-06-25 14:29 | 2018-08-28 12:45 |  | 2018-06-21 14:29 | 2018-08-28 12:45 | 103.78d | 1.16d | 0d | TEAM_2Shift_Calendar-1 |  | 104h | 6,383.08 | 6,383.08 |
| 360 | 4.1.11.1 | **Shell Side Hydro** |  | 5d | 2018-08-23 20:45 | 2018-08-28 12:45 |  | 2018-08-23 20:45 | 2018-08-28 12:45 | 5d | 1.16d |  | TEAM_2Shift_Calendar-1 |  | 42h | 2,660 | 2,660 |
| 361 | 4.1.11.1.1 | Shell Side Hydro |  | 21h | 2018-08-23 20:45 | 2018-08-27 09:45 | 337, 276 | 2018-08-23 20:45 | 2018-08-27 09:45 | 21h | 1.16d | 0d | TEAM_2Shift_Calendar-1 | Fitter [200%] | 24h | 1,650 | 1,650 |
| 362 | 4.1.11.1.2 | Shell Side Tpi Witness |  | 11h | 2018-08-27 09:45 | 2018-08-27 20:45 | 361 | 2018-08-27 09:45 | 2018-08-27 20:45 | 11h | 1.16d | 0d | TEAM_2Shift_Calendar-1 | Helper; Fitter | 8h | 510 | 510 |
| 363 | 4.1.11.1.3 | De Watering & Dismantle Of Gland |  | 8h | 2018-08-27 20:45 | 2018-08-28 12:45 | 362 | 2018-08-27 20:45 | 2018-08-28 12:45 | 8h | 1.16d |  | TEAM_2Shift_Calendar-1 | Helper [200%] | 10h | 500 | 500 |
| 364 | 4.1.11.2 | **Channel Side Hydro** |  | 5.75d | 2018-06-25 14:29 | 2018-06-28 12:29 |  | 2018-06-21 14:29 | 2018-06-26 12:29 | 5.75d | 95.19d |  | TEAM_2Shift_Calendar-1 |  | 62h | 3,723.08 | 3,723.08 |
| 365 | 4.1.11.2.1 | Shell Side Hydro |  | 27h | 2018-06-25 14:29 | 2018-06-27 09:29 | 279 | 2018-06-21 14:29 | 2018-06-25 09:29 | 27h | 95.19d | 0d | TEAM_2Shift_Calendar-1 | Fitter [200%] | 24h | 1,650 | 1,650 |
| 366 | 4.1.11.2.2 | Shell Side Tpi Witness |  | 5h | 2018-06-27 09:29 | 2018-06-27 14:29 | 365 | 2018-06-25 09:29 | 2018-06-25 14:29 | 5h | 95.19d | 0d | TEAM_2Shift_Calendar-1 | Helper [400%]; Fitter [200%] | 24h | 1,373.08 | 1,373.08 |
| 367 | 4.1.11.2.3 | De Watering & Dismantle Of Gland |  | 14h | 2018-06-27 14:29 | 2018-06-28 12:29 | 366 | 2018-06-25 14:29 | 2018-06-26 12:29 | 14h | 95.19d |  | TEAM_2Shift_Calendar-1 | Helper [200%] | 14h | 700 | 700 |
| 368 | 4.1.12 | **Nitrogen Purging** |  | 2d | 2018-08-28 12:45 | 2018-08-29 12:45 |  | 2018-08-28 12:45 | 2018-08-29 12:45 | 2d | 1.16d | 0d | TEAM_2Shift_Calendar-1 |  | 8h | 475 | 475 |
| 369 | 4.1.12.1 | Blind & Nitrogen Purging |  | 2d | 2018-08-28 12:45 | 2018-08-29 12:45 | 359 | 2018-08-28 12:45 | 2018-08-29 12:45 | 2d | 1.16d |  | TEAM_2Shift_Calendar-1 | Helper [200%]; Fitter | 8h | 475 | 475 |
| 370 | 4.1.13 | **Painting** |  | 6d | 2018-08-29 12:45 | 2018-09-01 12:45 |  | 2018-08-29 12:45 | 2018-09-01 12:45 | 6d | 1.16d | 0d | TEAM_2Shift_Calendar-1 |  | 24h |  |  |
| 371 | 4.1.13.1 | Primer |  | 2d | 2018-08-29 12:45 | 2018-08-30 12:45 | 368 | 2018-08-29 12:45 | 2018-08-30 12:45 | 2d | 1.16d | 0d | TEAM_2Shift_Calendar-1 | Painter | 8h |  |  |
| 372 | 4.1.13.2 | Top Coat 1 |  | 2d | 2018-08-30 12:45 | 2018-08-31 12:45 | 371 | 2018-08-30 12:45 | 2018-08-31 12:45 | 2d | 1.16d | 0d | TEAM_2Shift_Calendar-1 | Painter | 8h |  |  |
| 373 | 4.1.13.3 | Top Coat 2 |  | 2d | 2018-08-31 12:45 | 2018-09-01 12:45 | 372 | 2018-08-31 12:45 | 2018-09-01 12:45 | 2d | 1.16d |  | TEAM_2Shift_Calendar-1 | Painter | 8h |  |  |
| 374 | 4.1.14 | **133-EE-1014L Closure** |  | 61.72d | 2018-09-01 12:45 | 2018-10-12 10:30 |  | 2018-09-01 12:45 | 2018-10-12 10:30 | 61.72d | 0d |  | TEAM_2Shift_Calendar-1 |  | 310.75h | 1,655.85 | 1,655.85 |
| 375 | 4.1.14.1 | Store Handover |  | 8d | 2018-09-01 12:45 | 2018-09-06 12:43 | 370 | 2018-09-01 12:45 | 2018-09-06 12:43 | 8d | 1.16d |  | TEAM_2Shift_Calendar-1 | Helper [400%]; Foreman [50%]; Store | 48h | 1,476.69 | 1,476.69 |
| 376 | 4.1.14.2 | Transport Equipment to Delivery Location | milestone | 14d | 2018-09-14 06:00 | 2018-09-21 22:00 | 375FS+7ed | 2018-09-14 06:00 | 2018-09-21 22:00 | 14d | 0d |  | TEAM_2Shift_Calendar-1 | Helper; Store; Foreman [50%] | 10.75h | 179.17 | 179.17 |
| 377 | 4.1.14.3 | Final Documentation Preperation & Review |  | 29.97d | 2018-09-24 06:00 | 2018-10-11 21:47 | 376 | 2018-09-24 06:00 | 2018-10-11 21:47 | 29.97d | 0d |  | TEAM_2Shift_Calendar-1 | QC Engineer [200%] | 240h |  |  |
| 378 | 4.1.14.4 | Final Documentation Submission |  | 4.72h | 2018-10-11 21:47 | 2018-10-12 10:30 | 377 | 2018-10-11 21:47 | 2018-10-12 10:30 | 4.72h | 0d |  | TEAM_2Shift_Calendar-1 | Marketing | 2h |  |  |
| 379 | 4.1.14.5 | Warranty guarantee Submission |  | 15.97d | 2018-09-24 06:00 | 2018-10-03 21:47 | 376 | 2018-09-24 06:00 | 2018-10-03 21:47 | 15.97d | 14.56d |  | TEAM_2Shift_Calendar-1 | Marketing; Finance | 6h |  |  |
| 380 | 4.1.14.6 | Invoice Submission |  | 3.97d | 2018-09-24 06:00 | 2018-09-25 21:47 | 376 | 2018-09-24 06:00 | 2018-09-25 21:47 | 3.97d | 26.56d |  | TEAM_2Shift_Calendar-1 | Marketing | 4h |  |  |
