# 4220-N1011

Schedule from MS Project, 2017-10-03 to 2018-09-29, costs in Rs., A marks actual dates.

## Calendars

- TEAM_Stand_Calendar: Mon-Sat 08:30-12:30, 13:30-17:30; Sun off. Exceptions (off unless hours are given): 2017-01-13 to 2023-08-12 (2nd Sat, recurring), 2017-01-26 to 2036-01-26 (Republic Day, recurring), 2017-01-27 to 2023-08-26 (4th Sat, recurring), 2017-05-01 to 2036-05-01 (May Day, recurring), 2017-08-15 to 2036-08-15 (Independence Day, recurring), 2017-10-02 to 2036-10-02 (Gandhi Jayanti, recurring), 2017-10-18 (Deepavali'2017), 2018-01-15 (Thiruvalluvar Day'2018), 2018-09-13 (Vinakaya Chaturthi'2018).
- TEAM_2Shift_Calendar-1: Mon-Sat 06:00-22:00; Sun off. Exceptions (off unless hours are given): 2017-01-13 to 2023-02-11 (2nd Sat, recurring), 2017-01-26 to 2036-01-26 (Republic Day, recurring), 2017-01-27 to 2023-08-26 (4th Sat, recurring), 2017-05-01 to 2036-05-01 (May Day, recurring), 2017-08-15 to 2036-08-15 (Indepdence Day, recurring), 2017-10-02 to 2036-10-02 (Gandhi Jayanti, recurring), 2017-10-19 (Deepavali'2017), 2018-01-15 (Thiruvalluvar Day'2018), 2018-09-13 (Vinakya Chaturthi'2018).

## Resources

| Resource | Rate |
| --- | --- |
| Gas Cutter | 68.75 |
| SMAW Welder | 68.75 |
| TIG Welder | 125 |
| SC (Work) |  |
| Painter |  |
| Lathe Operator | 120 |
| Helper | 50 |
| Grinder | 56.25 |
| Fitter | 68.75 |
| SC Radiography (Work) |  |
| Store |  |
| QC Engineer |  |
| Forging Non-Std (Cost) |  |
| Forging Std (Cost) |  |
| Pipe (Cost) |  |
| Plate (Cost) |  |
| Rod (Cost) |  |
| Tube (Cost) |  |
| Tube Sheet (Cost) |  |
| Foreman |  |
| Marketing |  |
| Finance |  |

## Schedule

| ID | WBS | Task | Type | Duration | Start | Finish | Predecessors | Complete | Remaining | Baseline start | Baseline finish | Baseline duration | Total slack | Constraint | Work | Cost | Baseline cost |
| --- | --- | --- | --- | --- | --- | --- | --- | --- | --- | --- | --- | --- | --- | --- | --- | --- | --- |
| 1 | 1 | **4220-N1011** |  | 281d | 2017-10-03 08:30 A | 2018-09-29 17:45 |  | 21% | 223.14d | 2017-10-03 08:30 | 2018-09-29 17:45 | 281d | 0d |  | 6468.2h | 302,184.05 | 302,184.05 |
| 2 | 1.1 | Project Start date |  | 1d | 2017-10-03 08:30 A | 2017-10-03 17:30 A |  | 100% |  | 2017-10-03 08:30 | 2017-10-03 17:30 | 1d |  |  |  |  |  |
| 3 | 1.2 | Drawing submission |  | 1d | 2017-11-28 08:30 A | 2017-11-28 17:30 A | 2FS+55ed | 100% |  | 2017-11-28 08:30 | 2017-11-28 17:30 | 1d |  |  |  |  |  |
| 4 | 1.3 | Drawing Approval |  | 1d | 2018-02-23 08:30 A | 2018-02-23 17:30 A | 3FS+86ed | 100% |  | 2018-02-23 08:30 | 2018-02-23 17:30 | 1d |  |  |  |  |  |
| 5 | 1.4 | **Raw Material Ordering** |  | 71.94d | 2018-02-02 08:00 A | 2018-05-04 17:00 A |  | 100% |  | 2018-02-02 08:00 | 2018-05-02 10:30 | 69.25d |  |  |  |  |  |
| 6 | 1.4.1 | Material Ordering Start |  | 1d | 2018-02-26 08:30 A | 2018-02-26 17:30 A | 4 | 100% |  | 2018-02-26 08:30 | 2018-02-26 17:30 | 1d |  | start no earlier than 2018-02-16 08:00 |  |  |  |
| 7 | 1.4.2 | Shell Plate |  | 4.94d | 2018-04-07 08:30 A | 2018-04-12 17:00 A | 6FS+39ed | 100% |  | 2018-04-07 08:30 | 2018-04-12 17:00 | 4.94d |  |  |  |  |  |
| 8 | 1.4.3 | Shell Girth Flange |  | 0.94d | 2018-03-29 08:00 A | 2018-03-29 17:00 A | 6FS+39ed | 100% |  | 2018-03-29 08:00 | 2018-03-29 17:00 | 0.94d |  |  |  |  |  |
| 9 | 1.4.4 | Channel Plate |  | 4.94d | 2018-04-07 08:00 A | 2018-04-12 17:00 A | 6FS+39ed | 100% |  | 2018-04-07 08:00 | 2018-04-12 17:00 | 4.94d |  |  |  |  |  |
| 10 | 1.4.5 | Channel Girth Flange |  | 0.94d | 2018-03-29 08:00 A | 2018-03-29 17:00 A | 6FS+39ed | 100% |  | 2018-03-29 08:00 | 2018-03-29 17:00 | 0.94d |  |  |  |  |  |
| 11 | 1.4.6 | Barrel Sheel Plate |  | 4.94d | 2018-04-07 08:00 A | 2018-04-12 17:00 A | 6FS+39ed | 100% |  | 2018-04-07 08:00 | 2018-04-12 17:00 | 4.94d |  |  |  |  |  |
| 12 | 1.4.7 | Barrel Girth Flange |  | 0.94d | 2018-03-29 08:00 A | 2018-03-29 17:00 A | 6FS+39ed | 100% |  | 2018-03-29 08:00 | 2018-03-29 17:00 | 0.94d |  |  |  |  |  |
| 13 | 1.4.8 | Barrel Dish |  | 4.94d | 2018-04-07 08:00 A | 2018-04-12 17:00 A | 6FS+39ed | 100% |  | 2018-04-07 08:00 | 2018-04-12 17:00 | 4.94d |  |  |  |  |  |
| 14 | 1.4.9 | Tube Sheet-1 |  | 0.94d | 2018-03-29 08:00 A | 2018-03-29 17:00 A | 6FS+39ed | 100% |  | 2018-03-29 08:00 | 2018-03-29 17:00 | 0.94d |  |  |  |  |  |
| 15 | 1.4.10 | Tube Sheet -2 |  | 0.94d | 2018-03-29 08:00 A | 2018-03-29 17:00 A | 6FS+39ed | 100% |  | 2018-03-29 08:00 | 2018-03-29 17:00 | 0.94d |  |  |  |  |  |
| 16 | 1.4.11 | Floating Head Flg |  | 0.94d | 2018-03-29 08:00 A | 2018-03-29 17:00 A | 6FS+39ed | 100% |  | 2018-03-29 08:00 | 2018-03-29 17:00 | 0.94d |  |  |  |  |  |
| 17 | 1.4.12 | Floating Head Dish |  | 4.94d | 2018-04-07 08:00 A | 2018-04-12 17:00 A | 6FS+39ed | 100% |  | 2018-04-07 08:00 | 2018-04-12 17:00 | 4.94d |  |  |  |  |  |
| 18 | 1.4.13 | Backing Ring | milestone | 0d | 2018-03-29 17:00 A | 2018-03-29 17:00 A | 6FS+39ed | 100% |  | 2018-03-29 17:00 | 2018-03-29 17:00 | 0d |  |  |  |  |  |
| 19 | 1.4.14 | Baffle Plate |  | 4.94d | 2018-04-07 08:00 A | 2018-04-12 17:00 A | 6FS+39ed | 100% |  | 2018-04-07 08:00 | 2018-04-12 17:00 | 4.94d |  |  |  |  |  |
| 20 | 1.4.15 | Sealing Strip Plate |  | 4.94d | 2018-04-07 08:00 A | 2018-04-12 17:00 A | 6FS+39ed | 100% |  | 2018-04-07 08:00 | 2018-04-12 17:00 | 4.94d |  |  |  |  |  |
| 21 | 1.4.16 | Sliding Strip Plate |  | 4.94d | 2018-04-07 08:00 A | 2018-04-12 17:00 A | 6FS+39ed | 100% |  | 2018-04-07 08:00 | 2018-04-12 17:00 | 4.94d |  |  |  |  |  |
| 22 | 1.4.17 | Seal Rod |  | 0.94d | 2018-02-02 08:00 A | 2018-02-02 17:00 A | 6FS+39ed | 100% |  | 2018-02-02 08:00 | 2018-02-02 17:00 | 0.94d |  |  |  |  |  |
| 23 | 1.4.18 | Noz Srn |  | 0.94d | 2018-03-29 08:00 A | 2018-03-29 17:00 A | 6FS+39ed | 100% |  | 2018-03-29 08:00 | 2018-03-29 17:00 | 0.94d |  |  |  |  |  |
| 24 | 1.4.19 | Tube |  | 3d | 2018-04-07 08:30 A | 2018-04-10 17:30 A | 6FS+39ed | 100% |  | 2018-04-07 08:30 | 2018-04-10 17:30 | 3d |  |  |  |  |  |
| 25 | 1.4.20 | Spacer Tube |  | 3d | 2018-04-07 08:30 A | 2018-04-10 17:30 A | 6FS+39ed | 100% |  | 2018-04-07 08:30 | 2018-04-10 17:30 | 3d |  |  |  |  |  |
| 26 | 1.4.21 | Tie Rod |  | 3d | 2018-04-07 08:30 A | 2018-04-10 17:30 A | 6FS+39ed | 100% |  | 2018-04-07 08:30 | 2018-04-10 17:30 | 3d |  |  |  |  |  |
| 27 | 1.4.22 | Test Ring & Test Flg |  | 0.94d | 2018-03-29 08:00 A | 2018-03-29 17:00 A | 6FS+39ed | 100% |  | 2018-03-29 08:00 | 2018-03-29 17:00 | 0.94d |  |  |  |  |  |
| 28 | 1.4.23 | Ms Rod For Handle Etc |  | 20.94d | 2018-04-07 08:30 A | 2018-05-04 17:00 A | 6FS+59ed | 100% |  | 2018-04-07 08:30 | 2018-05-02 10:30 | 18.25d |  |  |  |  |  |
| 29 | 1.4.24 | Ms Plate For Saddle |  | 20.94d | 2018-04-07 08:30 A | 2018-05-04 17:00 A | 6FS+59ed | 100% |  | 2018-04-07 08:30 | 2018-05-02 10:30 | 18.25d |  |  |  |  |  |

| ID | WBS | Task | Duration | Start | Finish | Predecessors | Complete | Remaining | Baseline start | Baseline finish | Baseline duration | Total slack | Free slack | Calendar |
| --- | --- | --- | --- | --- | --- | --- | --- | --- | --- | --- | --- | --- | --- | --- |
| 30 | 1.5 | **Raw Material Receipt** | 116.06d | 2018-02-08 08:00 A | 2018-07-06 09:00 |  | 23% | 89.44d | 2018-02-08 08:00 | 2018-07-06 09:00 | 116.06d | 65.94d |  |  |
| 31 | 1.5.1 | Shell Plate | 1d | 2018-06-04 09:00 | 2018-06-04 17:00 | 7FS+79d |  |  | 2018-05-14 09:00 | 2018-05-14 17:00 | 1d | 77.91d | 0d | TEAM_2Shift_Calendar-1 |
| 32 | 1.5.2 | Shell Girth Flange | 1d | 2018-06-07 17:00 | 2018-06-08 09:00 | 8FS+110d |  |  | 2018-06-07 17:00 | 2018-06-08 09:00 | 1d | 97.19d | 19.28d | TEAM_2Shift_Calendar-1 |
| 33 | 1.5.3 | Channel Plate | 1d | 2018-06-04 09:00 | 2018-06-04 17:00 | 7FS+79d |  |  | 2018-05-14 09:00 | 2018-05-14 17:00 | 1d | 97.88d | 0d | TEAM_2Shift_Calendar-1 |
| 34 | 1.5.4 | Channel Girth Flange | 1d | 2018-06-07 17:00 | 2018-06-08 09:00 | 10FS+110d |  |  | 2018-06-07 17:00 | 2018-06-08 09:00 | 1d | 175.09d |  | TEAM_2Shift_Calendar-1 |
| 35 | 1.5.5 | Barrel Sheel Plate | 1d | 2018-06-04 09:00 | 2018-06-04 17:00 | 7FS+79d |  |  | 2018-05-14 09:00 | 2018-05-14 17:00 | 1d | 110.19d | 0d | TEAM_2Shift_Calendar-1 |
| 36 | 1.5.6 | Barrel Girth Flange | 1d | 2018-06-07 17:00 | 2018-06-08 09:00 | 12FS+110d |  |  | 2018-06-07 17:00 | 2018-06-08 09:00 | 1d | 175.09d |  | TEAM_2Shift_Calendar-1 |
| 37 | 1.5.7 | Barrel Dish | 1d | 2018-06-04 09:00 | 2018-06-04 17:00 | 7FS+79d |  |  | 2018-05-14 09:00 | 2018-05-14 17:00 | 1d | 151.84d | 0d | TEAM_2Shift_Calendar-1 |
| 38 | 1.5.8 | Tube Sheet-1 | 1d | 2018-06-20 17:00 | 2018-06-21 09:00 | 14FS+130d |  |  | 2018-06-20 17:00 | 2018-06-21 09:00 | 1d | 38.81d | 0d | TEAM_2Shift_Calendar-1 |
| 39 | 1.5.9 | Tube Sheet -2 | 1d | 2018-06-20 17:00 | 2018-06-21 09:00 | 15FS+130d |  |  | 2018-06-20 17:00 | 2018-06-21 09:00 | 1d | 0d |  | TEAM_2Shift_Calendar-1 |
| 40 | 1.5.10 | Floating Head Flg | 1d | 2018-06-20 17:00 | 2018-06-21 09:00 | 16FS+130d |  |  | 2018-06-20 17:00 | 2018-06-21 09:00 | 1d | 62.5d | 0d | TEAM_2Shift_Calendar-1 |
| 41 | 1.5.11 | Floating Head Dish | 1d | 2018-07-05 17:00 | 2018-07-06 09:00 | 17FS+130d |  |  | 2018-07-05 17:00 | 2018-07-06 09:00 | 1d | 46.62d | 0d | TEAM_2Shift_Calendar-1 |
| 42 | 1.5.12 | Backing Ring | 1d | 2018-06-20 17:00 | 2018-06-21 09:00 | 18FS+130d |  |  | 2018-06-20 17:00 | 2018-06-21 09:00 | 1d | 155.09d |  | TEAM_2Shift_Calendar-1 |
| 43 | 1.5.13 | Baffle Plate | 1d | 2018-06-04 09:00 | 2018-06-04 17:00 | 7FS+79d |  |  | 2018-05-14 09:00 | 2018-05-14 17:00 | 1d | 92.62d | 0d | TEAM_2Shift_Calendar-1 |
| 44 | 1.5.14 | Sealing Strip Plate | 1d | 2018-06-04 09:00 | 2018-06-04 17:00 | 7FS+79d |  |  | 2018-05-14 09:00 | 2018-05-14 17:00 | 1d | 110.94d | 0d | TEAM_2Shift_Calendar-1 |
| 45 | 1.5.15 | Sliding Strip Plate | 1d | 2018-06-04 09:00 | 2018-06-04 17:00 | 7FS+79d |  |  | 2018-05-14 09:00 | 2018-05-14 17:00 | 1d | 112.75d | 0d | TEAM_2Shift_Calendar-1 |
| 46 | 1.5.16 | Seal Rod | 3.12d | 2018-02-08 08:00 A | 2018-02-09 17:00 A | 22FS+45d | 100% |  | 2018-02-08 08:00 | 2018-02-09 17:00 | 3.12d |  |  | TEAM_2Shift_Calendar-1 |
| 47 | 1.5.17 | Noz pipe | 1d | 2018-05-19 17:00 | 2018-05-21 09:00 | 23FS+80d |  |  | 2018-05-19 17:00 | 2018-05-21 09:00 | 1d | 193.72d | 0d | TEAM_2Shift_Calendar-1 |
| 48 | 1.5.18 | Tube | 1d | 2018-06-20 17:30 | 2018-06-21 09:30 | 24FS+110d |  |  | 2018-06-20 17:30 | 2018-06-21 09:30 | 1d | 86.94d |  | TEAM_2Shift_Calendar-1 |
| 49 | 1.5.19 | Spacer Tube | 1d | 2018-06-20 17:30 | 2018-06-21 09:30 | 25FS+110d |  |  | 2018-06-20 17:30 | 2018-06-21 09:30 | 1d | 155.03d |  | TEAM_2Shift_Calendar-1 |
| 50 | 1.5.20 | Tie Rod | 1d | 2018-05-19 17:30 | 2018-05-21 09:30 | 26FS+60d |  |  | 2018-05-19 17:30 | 2018-05-21 09:30 | 1d | 130.75d | 0d | TEAM_2Shift_Calendar-1 |
| 51 | 1.5.21 | Test Ring & Test Flg | 1d | 2018-06-07 17:00 | 2018-06-08 09:00 | 27FS+110d |  |  | 2018-06-07 17:00 | 2018-06-08 09:00 | 1d | 175.09d |  | TEAM_2Shift_Calendar-1 |
| 52 | 1.5.22 | Ms Rod For Handle Etc | 3.12d | 2018-02-08 08:00 A | 2018-02-09 17:00 A | 28FS+50d | 100% |  | 2018-02-08 08:00 | 2018-02-09 17:00 | 3.12d |  |  | TEAM_2Shift_Calendar-1 |
| 53 | 1.5.23 | Ms Plate For Saddle | 1d | 2018-06-05 17:00 | 2018-06-06 09:00 | 29FS+50d |  |  | 2018-06-02 10:30 | 2018-06-02 18:30 | 1d | 151.03d | 0d | TEAM_2Shift_Calendar-1 |

Notes:
- 31: 06-Apr-18
- 32: 30-Apr-18
- 33: 06-Apr-18
- 34: 30-Apr-18
- 35: 30-Apr-18
- 36: 30-Apr-18
- 37: 30-Apr-18
- 38: 30-Apr-18
- 39: 30-Apr-18
- 40: 30-Apr-18
- 41: 30-Apr-18
- 42: 30-Apr-18
- 43: 06-Apr-18
- 44: 06-Apr-18
- 45: 06-Apr-18
- 46: 10-Apr-18
- 47: 30-Apr-18
- 48: 15-Apr-18
- 49: 15-Apr-18
- 50: 10-Apr-18
- 51: 30-Apr-18
- 52: 10-Apr-18
- 53: 30-Mar-18

| ID | WBS | Task | Duration | Start | Finish | Predecessors | Baseline start | Baseline finish | Baseline duration | Total slack | Free slack | Calendar | Resources | Work | Cost | Baseline cost |
| --- | --- | --- | --- | --- | --- | --- | --- | --- | --- | --- | --- | --- | --- | --- | --- | --- |
| 54 | 1.6 | **Dish Forming** | 15.06d | 2018-06-04 17:00 | 2018-06-22 19:00 |  | 2018-05-14 17:00 | 2018-06-01 19:00 | 15.06d | 75.84d |  |  |  | 160h | 3,606.25 | 3,606.25 |
| 55 | 1.6.1 | Bar Dish Blank Issuence | 4h | 2018-06-04 17:00 | 2018-06-04 21:00 | 37 | 2018-05-14 17:00 | 2018-05-14 21:00 | 4h | 151.84d | 0d | TEAM_2Shift_Calendar-1 | Plate (Cost) [0.1%]; Store | 4h |  |  |
| 56 | 1.6.2 | Bar-Dish Blank Marking | 4h | 2018-06-04 21:00 | 2018-06-05 09:00 | 55 | 2018-05-14 21:00 | 2018-05-15 09:00 | 4h | 151.84d | 0d | TEAM_2Shift_Calendar-1 | Helper; Fitter | 8h | 475 | 475 |
| 57 | 1.6.3 | Bar-Dish Blank Marking Inspection | 4h | 2018-06-05 09:00 | 2018-06-05 13:00 | 56 | 2018-05-15 09:00 | 2018-05-15 13:00 | 4h | 151.84d | 0d | TEAM_2Shift_Calendar-1 | Helper; Fitter | 8h | 475 | 475 |
| 58 | 1.6.4 | Bar-Dish Blank Cutting | 2h | 2018-06-05 13:00 | 2018-06-05 15:00 | 57 | 2018-05-15 13:00 | 2018-05-15 15:00 | 2h | 151.84d | 0d | TEAM_2Shift_Calendar-1 | Helper; Gas Cutter | 4h | 237.5 | 237.5 |
| 59 | 1.6.5 | Bar-Dish Forming | 7d | 2018-06-05 15:00 | 2018-06-14 15:00 | 58 | 2018-05-15 15:00 | 2018-05-23 15:00 | 7d | 75.84d | 0d |  | SC (Work) | 56h |  |  |
| 60 | 1.6.6 | Profile Insp | 4h | 2018-06-14 15:00 | 2018-06-15 10:00 | 59 | 2018-05-23 15:00 | 2018-05-24 10:00 | 4h | 75.84d | 0d |  | Helper; Fitter | 8h | 475 | 475 |
| 61 | 1.6.7 | Heat Treatment Preparation | 1d | 2018-06-15 10:00 | 2018-06-16 10:00 | 60 | 2018-05-24 10:00 | 2018-05-25 10:00 | 1d | 75.84d | 0d |  | SC (Work) | 8h |  |  |
| 62 | 1.6.8 | Stress Releiving- Sub Cont | 4d | 2018-06-16 10:00 | 2018-06-21 10:00 | 61 | 2018-05-25 10:00 | 2018-05-31 10:00 | 4d | 75.84d | 0d |  | SC (Work) | 32h |  |  |
| 63 | 1.6.9 | Removal Of Spiders | 3h | 2018-06-21 10:00 | 2018-06-21 13:00 | 62 | 2018-05-31 10:00 | 2018-05-31 13:00 | 3h | 151.84d | 0d | TEAM_2Shift_Calendar-1 | Helper; Fitter | 6h | 356.25 | 356.25 |
| 64 | 1.6.10 | Surface Preparation | 7h | 2018-06-21 13:00 | 2018-06-21 20:00 | 63 | 2018-05-31 13:00 | 2018-05-31 20:00 | 7h | 151.84d | 0d | TEAM_2Shift_Calendar-1 | Grinder | 7h | 393.75 | 393.75 |
| 65 | 1.6.11 | Inspection | 4h | 2018-06-21 20:00 | 2018-06-22 08:00 | 64 | 2018-05-31 20:00 | 2018-06-01 08:00 | 4h | 151.84d | 0d | TEAM_2Shift_Calendar-1 | Fitter | 4h | 275 | 275 |
| 66 | 1.6.12 | TPI Inspection | 4h | 2018-06-22 08:00 | 2018-06-22 12:00 | 65 | 2018-06-01 08:00 | 2018-06-01 12:00 | 4h | 151.84d | 0d | TEAM_2Shift_Calendar-1 | Fitter | 4h | 275 | 275 |
| 67 | 1.6.13 | Sf Marking | 2h | 2018-06-22 12:00 | 2018-06-22 14:00 | 66 | 2018-06-01 12:00 | 2018-06-01 14:00 | 2h | 151.84d | 0d | TEAM_2Shift_Calendar-1 | Helper; Fitter | 4h | 237.5 | 237.5 |
| 68 | 1.6.14 | Sf Cutting | 2h | 2018-06-22 14:00 | 2018-06-22 16:00 | 67 | 2018-06-01 14:00 | 2018-06-01 16:00 | 2h | 151.84d | 0d | TEAM_2Shift_Calendar-1 | Helper; Gas Cutter | 4h | 237.5 | 237.5 |
| 69 | 1.6.15 | Sf Gridning & Ep | 3h | 2018-06-22 16:00 | 2018-06-22 19:00 | 68 | 2018-06-01 16:00 | 2018-06-01 19:00 | 3h | 151.84d |  | TEAM_2Shift_Calendar-1 | Grinder | 3h | 168.75 | 168.75 |
| 70 | 1.7 | **Tube Sheet** | 43.88d | 2018-06-21 09:00 | 2018-08-16 17:00 |  | 2018-06-21 09:00 | 2018-08-16 17:00 | 43.88d | 0d |  |  |  | 733h | 1,743.75 | 1,743.75 |
| 71 | 1.7.1 | **Tube Sheet Machining 1 off 2** | 2.25d | 2018-06-21 09:00 | 2018-06-25 11:00 |  | 2018-06-21 09:00 | 2018-06-25 11:00 | 2.25d | 19.69d | 0d |  |  | 20h | 100 | 100 |
| 72 | 1.7.1.1 | Inward Inspection | 2h | 2018-06-21 09:00 | 2018-06-21 11:00 | 38 | 2018-06-21 09:00 | 2018-06-21 11:00 | 2h | 19.69d | 0d |  | Helper; Tube Sheet (Cost) [0.1%]; QC Engineer | 4h | 100 | 100 |
| 73 | 1.7.1.2 | Tube Sheet M/C 1/2 | 2d | 2018-06-21 11:00 | 2018-06-25 11:00 | 72 | 2018-06-21 11:00 | 2018-06-25 11:00 | 2d | 19.69d |  |  | SC (Work) | 16h |  |  |
| 74 | 1.7.2 | **Tube Sheet Drilling 1 off 2** | 21.69d | 2018-06-25 11:00 | 2018-07-20 22:00 |  | 2018-06-25 11:00 | 2018-07-20 22:00 | 21.69d | 19.69d |  |  |  | 354h | 831.25 | 831.25 |
| 75 | 1.7.2.1 | Tube Sheet Drilling 1/2 | 305h | 2018-06-25 11:00 | 2018-07-18 12:00 | 71 | 2018-06-25 11:00 | 2018-07-18 12:00 | 305h | 39.38d | 0d | TEAM_2Shift_Calendar-1 | SC (Work) | 305h |  |  |
| 76 | 1.7.2.2 | Exp Groove+Welding Groove 1/2 | 2d | 2018-07-18 12:00 | 2018-07-19 12:00 | 75 | 2018-07-18 12:00 | 2018-07-19 12:00 | 2d | 39.38d | 0d | TEAM_2Shift_Calendar-1 | SC (Work) | 16h |  |  |
| 77 | 1.7.2.3 | Tie Rod, Pulling, Lifting Hole 1/2 | 4h | 2018-07-19 12:00 | 2018-07-19 16:00 | 76 | 2018-07-19 12:00 | 2018-07-19 16:00 | 4h | 39.38d | 0d | TEAM_2Shift_Calendar-1 | SC (Work) | 4h |  |  |
| 78 | 1.7.2.4 | Pass Partition Groove M/C 1/2 | 15h | 2018-07-19 16:00 | 2018-07-20 15:00 | 77 | 2018-07-19 16:00 | 2018-07-20 15:00 | 15h | 39.38d | 0d | TEAM_2Shift_Calendar-1 | SC (Work) | 15h |  |  |
| 79 | 1.7.2.5 | Cleaning ,Go/No Go Check 1/2 | 3h | 2018-07-20 15:00 | 2018-07-20 18:00 | 78 | 2018-07-20 15:00 | 2018-07-20 18:00 | 3h | 39.38d | 0d | TEAM_2Shift_Calendar-1 | Helper; Fitter | 6h | 356.25 | 356.25 |
| 80 | 1.7.2.6 | Final Inspection 1/2 | 4h | 2018-07-20 18:00 | 2018-07-20 22:00 | 79 | 2018-07-20 18:00 | 2018-07-20 22:00 | 4h | 39.38d |  | TEAM_2Shift_Calendar-1 | Helper; Fitter | 8h | 475 | 475 |

| ID | WBS | Task | Duration | Start | Finish | Predecessors | Baseline start | Baseline finish | Baseline duration | Total slack | Free slack | Calendar | Resources | Work | Cost | Baseline cost |
| --- | --- | --- | --- | --- | --- | --- | --- | --- | --- | --- | --- | --- | --- | --- | --- | --- |
| 81 | 1.7.3 | **Tube Sheet Machining 2 off 2** | 1.25d | 2018-06-21 09:00 | 2018-06-22 11:00 |  | 2018-06-21 09:00 | 2018-06-22 11:00 | 1.25d | 0d |  |  |  | 12h | 100 | 100 |
| 82 | 1.7.3.1 | Inward Inspection | 2h | 2018-06-21 09:00 | 2018-06-21 11:00 | 39 | 2018-06-21 09:00 | 2018-06-21 11:00 | 2h | 0d |  |  | Helper; Tube Sheet (Cost) [0.1%]; QC Engineer | 4h | 100 | 100 |
| 83 | 1.7.3.2 | Tube Sheet M/C 2/2 | 8h | 2018-06-21 11:00 | 2018-06-22 11:00 | 82 | 2018-06-21 11:00 | 2018-06-22 11:00 | 8h | 0d |  |  | SC (Work) | 8h |  |  |
| 84 | 1.7.4 | **Tube Sheet Drilling 2 off 2** | 42.62d | 2018-06-22 11:00 | 2018-08-16 17:00 |  | 2018-06-22 11:00 | 2018-08-16 17:00 | 42.62d | 0d |  |  |  | 347h | 712.5 | 712.5 |
| 85 | 1.7.4.1 | Tube Sheet Drilling 2/2 | 305h | 2018-06-22 11:00 | 2018-08-09 12:00 | 81 | 2018-06-22 11:00 | 2018-08-09 12:00 | 305h | 0d |  |  | SC (Work) | 305h |  |  |
| 86 | 1.7.4.2 | Exp Groove+Welding Groove 2/2 | 2d | 2018-08-09 12:00 | 2018-08-13 12:00 | 85 | 2018-08-09 12:00 | 2018-08-13 12:00 | 2d | 0d |  |  | SC (Work) | 16h |  |  |
| 87 | 1.7.4.3 | Tie Rod, Pulling, Lifting Hole 2/2 | 4h | 2018-08-13 12:00 | 2018-08-13 17:00 | 86 | 2018-08-13 12:00 | 2018-08-13 17:00 | 4h | 0d |  |  | SC (Work) | 4h |  |  |
| 88 | 1.7.4.4 | Pass Partition Groove M/C 2/2 | 10h | 2018-08-13 17:00 | 2018-08-16 10:00 | 87 | 2018-08-13 17:00 | 2018-08-16 10:00 | 10h | 0d |  |  | SC (Work) | 10h |  |  |
| 89 | 1.7.4.5 | Cleaning ,Go/No Go Check 2/2 | 4h | 2018-08-16 10:00 | 2018-08-16 15:00 | 88 | 2018-08-16 10:00 | 2018-08-16 15:00 | 4h | 0d |  |  | Helper; Fitter | 8h | 475 | 475 |
| 90 | 1.7.4.6 | Final Inspection 2/2 | 2h | 2018-08-16 15:00 | 2018-08-16 17:00 | 89 | 2018-08-16 15:00 | 2018-08-16 17:00 | 2h | 0d |  |  | Helper; Fitter | 4h | 237.5 | 237.5 |
| 91 | 1.8 | **Nozzle Fab** | 11.38d | 2018-05-21 09:00 | 2018-05-28 20:00 |  | 2018-05-21 09:00 | 2018-05-28 20:00 | 11.38d | 193.72d |  | TEAM_2Shift_Calendar-1 |  | 210h | 12,462.5 | 12,462.5 |
| 92 | 1.8.1 | **Sh Noz Pipe Marking** | 0.25d | 2018-05-21 09:00 | 2018-05-21 11:00 |  | 2018-05-21 09:00 | 2018-05-21 11:00 | 0.25d | 193.72d | 0d | TEAM_2Shift_Calendar-1 |  | 8h | 475 | 475 |
| 93 | 1.8.1.1 | 10"NB- 2 Nos | 2h | 2018-05-21 09:00 | 2018-05-21 11:00 | 47 | 2018-05-21 09:00 | 2018-05-21 11:00 | 2h | 193.72d |  | TEAM_2Shift_Calendar-1 | Helper; Fitter | 4h | 237.5 | 237.5 |
| 94 | 1.8.1.2 | 1.5" NB Mp Con - 2 Nos | 1h | 2018-05-21 09:00 | 2018-05-21 10:00 | 47 | 2018-05-21 09:00 | 2018-05-21 10:00 | 1h | 193.72d | 0d | TEAM_2Shift_Calendar-1 | Helper; Forging Std (Cost) [0.1%]; Pipe (Cost) [0.1%]; Fitter | 2h | 118.75 | 118.75 |
| 95 | 1.8.1.3 | Inspection of Marking | 1h | 2018-05-21 10:00 | 2018-05-21 11:00 | 94 | 2018-05-21 10:00 | 2018-05-21 11:00 | 1h | 193.72d |  | TEAM_2Shift_Calendar-1 | Helper; Fitter | 2h | 118.75 | 118.75 |
| 96 | 1.8.2 | **Sh Noz Pipe Cutting** | 0.5d | 2018-05-21 11:00 | 2018-05-21 15:00 |  | 2018-05-21 11:00 | 2018-05-21 15:00 | 0.5d | 193.72d | 0d | TEAM_2Shift_Calendar-1 |  | 8h | 475 | 475 |
| 97 | 1.8.2.1 | 10"Nb- 2 Nos | 2h | 2018-05-21 11:00 | 2018-05-21 13:00 | 92 | 2018-05-21 11:00 | 2018-05-21 13:00 | 2h | 193.72d | 0d | TEAM_2Shift_Calendar-1 | Helper; Gas Cutter | 4h | 237.5 | 237.5 |
| 98 | 1.8.2.2 | 1.5" Mp Con - 2 Nos | 1h | 2018-05-21 13:00 | 2018-05-21 14:00 | 97 | 2018-05-21 13:00 | 2018-05-21 14:00 | 1h | 193.72d | 0d | TEAM_2Shift_Calendar-1 | Helper; Gas Cutter | 2h | 118.75 | 118.75 |
| 99 | 1.8.2.3 | Inspection | 1h | 2018-05-21 14:00 | 2018-05-21 15:00 | 98 | 2018-05-21 14:00 | 2018-05-21 15:00 | 1h | 193.72d |  | TEAM_2Shift_Calendar-1 | Helper; Gas Cutter | 2h | 118.75 | 118.75 |
| 100 | 1.8.3 | **Sh Noz Pipe Ep** | 1.38d | 2018-05-21 15:00 | 2018-05-22 10:00 |  | 2018-05-21 15:00 | 2018-05-22 10:00 | 1.38d | 193.72d | 0d | TEAM_2Shift_Calendar-1 |  | 22h | 1,306.25 | 1,306.25 |
| 101 | 1.8.3.1 | 10"Nb- 2 Nos | 6h | 2018-05-21 15:00 | 2018-05-21 21:00 | 96 | 2018-05-21 15:00 | 2018-05-21 21:00 | 6h | 193.72d | 0d | TEAM_2Shift_Calendar-1 | Helper; Gas Cutter | 12h | 712.5 | 712.5 |
| 102 | 1.8.3.2 | 1.5" Mp Con - 2 Nos | 4h | 2018-05-21 21:00 | 2018-05-22 09:00 | 101 | 2018-05-21 21:00 | 2018-05-22 09:00 | 4h | 193.72d | 0d | TEAM_2Shift_Calendar-1 | Helper; Gas Cutter | 8h | 475 | 475 |
| 103 | 1.8.3.3 | Inspection | 1h | 2018-05-22 09:00 | 2018-05-22 10:00 | 102 | 2018-05-22 09:00 | 2018-05-22 10:00 | 1h | 193.72d |  | TEAM_2Shift_Calendar-1 | Helper; Gas Cutter | 2h | 118.75 | 118.75 |
| 104 | 1.8.4 | **Sh Noz+Flg Fiitup** | 0.75d | 2018-05-22 10:00 | 2018-05-22 16:00 |  | 2018-05-22 10:00 | 2018-05-22 16:00 | 0.75d | 193.72d | 0d | TEAM_2Shift_Calendar-1 |  | 24h | 1,537.5 | 1,537.5 |
| 105 | 1.8.4.1 | 10"NB - 2 Nos | 3h | 2018-05-22 10:00 | 2018-05-22 13:00 | 100 | 2018-05-22 10:00 | 2018-05-22 13:00 | 3h | 193.72d | 0d | TEAM_2Shift_Calendar-1 | SMAW Welder; Helper; Fitter [200%] | 12h | 768.75 | 768.75 |
| 106 | 1.8.4.2 | 1.5" Mp Con - 2 Nos | 2h | 2018-05-22 13:00 | 2018-05-22 15:00 | 105 | 2018-05-22 13:00 | 2018-05-22 15:00 | 2h | 193.72d | 0d | TEAM_2Shift_Calendar-1 | SMAW Welder; Helper; Fitter [200%] | 8h | 512.5 | 512.5 |
| 107 | 1.8.4.3 | Inspection | 1h | 2018-05-22 15:00 | 2018-05-22 16:00 | 106 | 2018-05-22 15:00 | 2018-05-22 16:00 | 1h | 193.72d |  | TEAM_2Shift_Calendar-1 | SMAW Welder; Helper; Fitter [200%] | 4h | 256.25 | 256.25 |

| ID | WBS | Task | Duration | Start | Finish | Predecessors | Baseline start | Baseline finish | Baseline duration | Total slack | Free slack | Calendar | Resources | Work | Cost | Baseline cost |
| --- | --- | --- | --- | --- | --- | --- | --- | --- | --- | --- | --- | --- | --- | --- | --- | --- |
| 108 | 1.8.5 | **Sh Noz Pipe+Flg Welding** | 1.62d | 2018-05-22 16:00 | 2018-05-23 13:00 |  | 2018-05-22 16:00 | 2018-05-23 13:00 | 1.62d | 193.72d | 0d | TEAM_2Shift_Calendar-1 |  | 26h | 1,543.75 | 1,543.75 |
| 109 | 1.8.5.1 | 10"Nb- 2 Nos | 8h | 2018-05-22 16:00 | 2018-05-23 08:00 | 104 | 2018-05-22 16:00 | 2018-05-23 08:00 | 8h | 193.72d | 0d | TEAM_2Shift_Calendar-1 | Helper; SMAW Welder | 16h | 950 | 950 |
| 110 | 1.8.5.2 | 1.5" Mp Con - 2 Nos | 4h | 2018-05-23 08:00 | 2018-05-23 12:00 | 109 | 2018-05-23 08:00 | 2018-05-23 12:00 | 4h | 193.72d | 0d | TEAM_2Shift_Calendar-1 | Helper; SMAW Welder | 8h | 475 | 475 |
| 111 | 1.8.5.3 | Inspection | 1h | 2018-05-23 12:00 | 2018-05-23 13:00 | 110 | 2018-05-23 12:00 | 2018-05-23 13:00 | 1h | 193.72d |  | TEAM_2Shift_Calendar-1 | Helper; SMAW Welder | 2h | 118.75 | 118.75 |
| 112 | 1.8.6 | **Sh Noz Pipe Profile Marking** | 0.75d | 2018-05-23 13:00 | 2018-05-23 19:00 |  | 2018-05-23 13:00 | 2018-05-23 19:00 | 0.75d | 193.72d | 0d | TEAM_2Shift_Calendar-1 |  | 12h | 712.5 | 712.5 |
| 113 | 1.8.6.1 | 10"Nb- 2 Nos | 3h | 2018-05-23 13:00 | 2018-05-23 16:00 | 108 | 2018-05-23 13:00 | 2018-05-23 16:00 | 3h | 193.72d | 0d | TEAM_2Shift_Calendar-1 | Helper; Fitter | 6h | 356.25 | 356.25 |
| 114 | 1.8.6.2 | 1.5" Mp Con - 2 Nos | 2h | 2018-05-23 16:00 | 2018-05-23 18:00 | 113 | 2018-05-23 16:00 | 2018-05-23 18:00 | 2h | 193.72d | 0d | TEAM_2Shift_Calendar-1 | Helper; Fitter | 4h | 237.5 | 237.5 |
| 115 | 1.8.6.3 | Inspection | 1h | 2018-05-23 18:00 | 2018-05-23 19:00 | 114 | 2018-05-23 18:00 | 2018-05-23 19:00 | 1h | 193.72d |  | TEAM_2Shift_Calendar-1 | Helper; Fitter | 2h | 118.75 | 118.75 |
| 116 | 1.8.7 | **Sh Nozzle Pipe Profile Cutting** | 0.5d | 2018-05-23 19:00 | 2018-05-24 07:00 |  | 2018-05-23 19:00 | 2018-05-24 07:00 | 0.5d | 193.72d | 0d | TEAM_2Shift_Calendar-1 |  | 8h | 425 | 425 |
| 117 | 1.8.7.1 | 10"Nb- 2 Nos | 2h | 2018-05-23 19:00 | 2018-05-23 21:00 | 112 | 2018-05-23 19:00 | 2018-05-23 21:00 | 2h | 193.72d | 0d | TEAM_2Shift_Calendar-1 | Helper; Grinder | 4h | 212.5 | 212.5 |
| 118 | 1.8.7.2 | 1.5" Mp Con - 2 Nos | 1h | 2018-05-23 21:00 | 2018-05-23 22:00 | 117 | 2018-05-23 21:00 | 2018-05-23 22:00 | 1h | 193.72d | 0d | TEAM_2Shift_Calendar-1 | Helper; Grinder | 2h | 106.25 | 106.25 |
| 119 | 1.8.7.3 | Inspection | 1h | 2018-05-24 06:00 | 2018-05-24 07:00 | 118 | 2018-05-24 06:00 | 2018-05-24 07:00 | 1h | 193.72d |  | TEAM_2Shift_Calendar-1 | Helper; Grinder | 2h | 106.25 | 106.25 |
| 120 | 1.8.8 | **Sh Nozzle Pipe Profile Ep** | 0.62d | 2018-05-24 07:00 | 2018-05-24 12:00 |  | 2018-05-24 07:00 | 2018-05-24 12:00 | 0.62d | 193.72d | 0d | TEAM_2Shift_Calendar-1 |  | 10h | 531.25 | 531.25 |
| 121 | 1.8.8.1 | 10"Nb- 2 Nos | 2h | 2018-05-24 07:00 | 2018-05-24 09:00 | 116 | 2018-05-24 07:00 | 2018-05-24 09:00 | 2h | 193.72d | 0d | TEAM_2Shift_Calendar-1 | Helper; Grinder | 4h | 212.5 | 212.5 |
| 122 | 1.8.8.2 | 1.5" Mp Con - 2 Nos | 2h | 2018-05-24 09:00 | 2018-05-24 11:00 | 121 | 2018-05-24 09:00 | 2018-05-24 11:00 | 2h | 193.72d | 0d | TEAM_2Shift_Calendar-1 | Helper; Grinder | 4h | 212.5 | 212.5 |
| 123 | 1.8.8.3 | Inspection | 1h | 2018-05-24 11:00 | 2018-05-24 12:00 | 122 | 2018-05-24 11:00 | 2018-05-24 12:00 | 1h | 193.72d |  | TEAM_2Shift_Calendar-1 | Helper; Grinder | 2h | 106.25 | 106.25 |
| 124 | 1.8.9 | **Ch Noz Pipe Marking** | 0.44d | 2018-05-24 12:00 | 2018-05-24 15:30 |  | 2018-05-24 12:00 | 2018-05-24 15:30 | 0.44d | 193.72d | 0d | TEAM_2Shift_Calendar-1 |  | 7h | 415.62 | 415.62 |
| 125 | 1.8.9.1 | 12"Nb- 2 Nos | 2h | 2018-05-24 12:00 | 2018-05-24 14:00 | 120 | 2018-05-24 12:00 | 2018-05-24 14:00 | 2h | 193.72d | 0d | TEAM_2Shift_Calendar-1 | Helper; Fitter | 4h | 237.5 | 237.5 |
| 126 | 1.8.9.2 | 1.5" Mp Con - 2 Nos | 0.5h | 2018-05-24 14:00 | 2018-05-24 14:30 | 125 | 2018-05-24 14:00 | 2018-05-24 14:30 | 0.5h | 193.72d | 0d | TEAM_2Shift_Calendar-1 | Helper; Fitter | 1h | 59.38 | 59.38 |
| 127 | 1.8.9.3 | Inspection | 1h | 2018-05-24 14:30 | 2018-05-24 15:30 | 126 | 2018-05-24 14:30 | 2018-05-24 15:30 | 1h | 193.72d |  | TEAM_2Shift_Calendar-1 | Helper; Fitter | 2h | 118.75 | 118.75 |
| 128 | 1.8.10 | **Ch Noz Pipe Cutting** | 0.5d | 2018-05-24 15:30 | 2018-05-24 19:30 |  | 2018-05-24 15:30 | 2018-05-24 19:30 | 0.5d | 193.72d | 0d | TEAM_2Shift_Calendar-1 |  | 8h | 475 | 475 |
| 129 | 1.8.10.1 | 12"Nb- 2 Nos | 2h | 2018-05-24 15:30 | 2018-05-24 17:30 | 124 | 2018-05-24 15:30 | 2018-05-24 17:30 | 2h | 193.72d | 0d | TEAM_2Shift_Calendar-1 | Helper; Gas Cutter | 4h | 237.5 | 237.5 |
| 130 | 1.8.10.2 | 1.5" Mp Con - 2 Nos | 1h | 2018-05-24 17:30 | 2018-05-24 18:30 | 129 | 2018-05-24 17:30 | 2018-05-24 18:30 | 1h | 193.72d | 0d | TEAM_2Shift_Calendar-1 | Helper; Gas Cutter | 2h | 118.75 | 118.75 |
| 131 | 1.8.10.3 | Inspection | 1h | 2018-05-24 18:30 | 2018-05-24 19:30 | 130 | 2018-05-24 18:30 | 2018-05-24 19:30 | 1h | 193.72d |  | TEAM_2Shift_Calendar-1 | Helper; Gas Cutter | 2h | 118.75 | 118.75 |

| ID | WBS | Task | Duration | Start | Finish | Predecessors | Baseline start | Baseline finish | Baseline duration | Total slack | Free slack | Calendar | Resources | Work | Cost | Baseline cost |
| --- | --- | --- | --- | --- | --- | --- | --- | --- | --- | --- | --- | --- | --- | --- | --- | --- |
| 132 | 1.8.11 | **Ch Noz Pipe Ep** | 0.75d | 2018-05-24 19:30 | 2018-05-25 09:30 |  | 2018-05-24 19:30 | 2018-05-25 09:30 | 0.75d | 193.72d | 0d | TEAM_2Shift_Calendar-1 |  | 12h | 637.5 | 637.5 |
| 133 | 1.8.11.1 | 12"Nb- 2 Nos | 4h | 2018-05-24 19:30 | 2018-05-25 07:30 | 128 | 2018-05-24 19:30 | 2018-05-25 07:30 | 4h | 193.72d | 0d | TEAM_2Shift_Calendar-1 | Helper; Grinder | 8h | 425 | 425 |
| 134 | 1.8.11.2 | 1.5" Mp Con - 2 Nos | 1h | 2018-05-25 07:30 | 2018-05-25 08:30 | 133 | 2018-05-25 07:30 | 2018-05-25 08:30 | 1h | 193.72d | 0d | TEAM_2Shift_Calendar-1 | Helper; Grinder | 2h | 106.25 | 106.25 |
| 135 | 1.8.11.3 | Inspection | 1h | 2018-05-25 08:30 | 2018-05-25 09:30 | 134 | 2018-05-25 08:30 | 2018-05-25 09:30 | 1h | 193.72d |  | TEAM_2Shift_Calendar-1 | Helper; Grinder | 2h | 106.25 | 106.25 |
| 136 | 1.8.12 | **Ch Noz+Flg Fit Up** | 0.75d | 2018-05-25 09:30 | 2018-05-25 15:30 |  | 2018-05-25 09:30 | 2018-05-25 15:30 | 0.75d | 193.72d | 0d | TEAM_2Shift_Calendar-1 |  | 24h | 1,537.5 | 1,537.5 |
| 137 | 1.8.12.1 | 12"Nb- 2 Nos | 4h | 2018-05-25 09:30 | 2018-05-25 13:30 | 132 | 2018-05-25 09:30 | 2018-05-25 13:30 | 4h | 193.72d | 0d | TEAM_2Shift_Calendar-1 | SMAW Welder; Helper; Fitter [200%] | 16h | 1,025 | 1,025 |
| 138 | 1.8.12.2 | 1.5" Mp Con - 2 Nos | 1h | 2018-05-25 13:30 | 2018-05-25 14:30 | 137 | 2018-05-25 13:30 | 2018-05-25 14:30 | 1h | 193.72d | 0d | TEAM_2Shift_Calendar-1 | SMAW Welder; Helper; Fitter [200%] | 4h | 256.25 | 256.25 |
| 139 | 1.8.12.3 | Inspection | 1h | 2018-05-25 14:30 | 2018-05-25 15:30 | 138 | 2018-05-25 14:30 | 2018-05-25 15:30 | 1h | 193.72d |  | TEAM_2Shift_Calendar-1 | SMAW Welder; Helper; Fitter [200%] | 4h | 256.25 | 256.25 |
| 140 | 1.8.13 | **Ch Noz Pipe+Flg Welding** | 1.12d | 2018-05-25 15:30 | 2018-05-28 08:30 |  | 2018-05-25 15:30 | 2018-05-28 08:30 | 1.12d | 193.72d | 0d | TEAM_2Shift_Calendar-1 |  | 18h | 1,068.75 | 1,068.75 |
| 141 | 1.8.13.1 | 12"Nb- 2 Nos | 6h | 2018-05-25 15:30 | 2018-05-25 21:30 | 136 | 2018-05-25 15:30 | 2018-05-25 21:30 | 6h | 193.72d | 0d | TEAM_2Shift_Calendar-1 | Helper; SMAW Welder | 12h | 712.5 | 712.5 |
| 142 | 1.8.13.2 | 1.5" Mp Con - 2 Nos | 2h | 2018-05-25 21:30 | 2018-05-28 07:30 | 141 | 2018-05-25 21:30 | 2018-05-28 07:30 | 2h | 193.72d | 0d | TEAM_2Shift_Calendar-1 | Helper; SMAW Welder | 4h | 237.5 | 237.5 |
| 143 | 1.8.13.3 | Inspection | 1h | 2018-05-28 07:30 | 2018-05-28 08:30 | 142 | 2018-05-28 07:30 | 2018-05-28 08:30 | 1h | 193.72d |  | TEAM_2Shift_Calendar-1 | Helper; SMAW Welder | 2h | 118.75 | 118.75 |
| 144 | 1.8.14 | **Ch Noz Pipe Profile Marking** | 0.5d | 2018-05-28 08:30 | 2018-05-28 12:30 |  | 2018-05-28 08:30 | 2018-05-28 12:30 | 0.5d | 193.72d | 0d | TEAM_2Shift_Calendar-1 |  | 8h | 475 | 475 |
| 145 | 1.8.14.1 | 12"Nb- 2 Nos | 2h | 2018-05-28 08:30 | 2018-05-28 10:30 | 140 | 2018-05-28 08:30 | 2018-05-28 10:30 | 2h | 193.72d | 0d | TEAM_2Shift_Calendar-1 | Helper; Fitter | 4h | 237.5 | 237.5 |
| 146 | 1.8.14.2 | 1.5" Mp Con - 2 Nos | 1h | 2018-05-28 10:30 | 2018-05-28 11:30 | 145 | 2018-05-28 10:30 | 2018-05-28 11:30 | 1h | 193.72d | 0d | TEAM_2Shift_Calendar-1 | Helper; Fitter | 2h | 118.75 | 118.75 |
| 147 | 1.8.14.3 | Inspection | 1h | 2018-05-28 11:30 | 2018-05-28 12:30 | 146 | 2018-05-28 11:30 | 2018-05-28 12:30 | 1h | 193.72d |  | TEAM_2Shift_Calendar-1 | Helper; Fitter | 2h | 118.75 | 118.75 |
| 148 | 1.8.15 | **Ch Nozzle Pipe Profile Cutting** | 0.5d | 2018-05-28 12:30 | 2018-05-28 16:30 |  | 2018-05-28 12:30 | 2018-05-28 16:30 | 0.5d | 193.72d | 0d | TEAM_2Shift_Calendar-1 |  | 8h | 475 | 475 |
| 149 | 1.8.15.1 | 12"Nb- 2 Nos | 2h | 2018-05-28 12:30 | 2018-05-28 14:30 | 144 | 2018-05-28 12:30 | 2018-05-28 14:30 | 2h | 193.72d | 0d | TEAM_2Shift_Calendar-1 | Helper; Fitter | 4h | 237.5 | 237.5 |
| 150 | 1.8.15.2 | 1.5" Mp Con - 2 Nos | 1h | 2018-05-28 14:30 | 2018-05-28 15:30 | 149 | 2018-05-28 14:30 | 2018-05-28 15:30 | 1h | 193.72d | 0d | TEAM_2Shift_Calendar-1 | Helper; Fitter | 2h | 118.75 | 118.75 |
| 151 | 1.8.15.3 | Inspection | 1h | 2018-05-28 15:30 | 2018-05-28 16:30 | 150 | 2018-05-28 15:30 | 2018-05-28 16:30 | 1h | 193.72d |  | TEAM_2Shift_Calendar-1 | Helper; Fitter | 2h | 118.75 | 118.75 |
| 152 | 1.8.16 | **Ch Nozzle Pipe Profile Ep** | 0.44d | 2018-05-28 16:30 | 2018-05-28 20:00 |  | 2018-05-28 16:30 | 2018-05-28 20:00 | 0.44d | 193.72d |  | TEAM_2Shift_Calendar-1 |  | 7h | 371.88 | 371.88 |
| 153 | 1.8.16.1 | 12"Nb- 2 Nos | 2h | 2018-05-28 16:30 | 2018-05-28 18:30 | 148 | 2018-05-28 16:30 | 2018-05-28 18:30 | 2h | 193.72d | 0d | TEAM_2Shift_Calendar-1 | Helper; Grinder | 4h | 212.5 | 212.5 |
| 154 | 1.8.16.2 | 1.5" Mp Con - 2 Nos | 1h | 2018-05-28 18:30 | 2018-05-28 19:30 | 153 | 2018-05-28 18:30 | 2018-05-28 19:30 | 1h | 193.72d | 0d | TEAM_2Shift_Calendar-1 | Helper; Grinder | 2h | 106.25 | 106.25 |
| 155 | 1.8.16.3 | Inspection | 0.5h | 2018-05-28 19:30 | 2018-05-28 20:00 | 154 | 2018-05-28 19:30 | 2018-05-28 20:00 | 0.5h | 193.72d |  | TEAM_2Shift_Calendar-1 | Helper; Grinder | 1h | 53.12 | 53.12 |

| ID | WBS | Task | Duration | Start | Finish | Predecessors | Baseline start | Baseline finish | Baseline duration | Total slack | Free slack | Calendar | Resources | Work | Cost | Baseline cost |
| --- | --- | --- | --- | --- | --- | --- | --- | --- | --- | --- | --- | --- | --- | --- | --- | --- |
| 156 | 1.9 | **Saddle & Other** | 28.06d | 2018-06-06 09:00 | 2018-06-25 09:30 |  | 2018-06-02 18:30 | 2018-06-20 19:00 | 28.06d | 151.03d |  | TEAM_2Shift_Calendar-1 |  | 716.75h | 42,318.75 | 42,318.75 |
| 157 | 1.9.1 | **Saddle Fabrrication** | 1.25d | 2018-06-06 09:00 | 2018-06-06 19:00 |  | 2018-06-02 18:30 | 2018-06-04 12:30 | 1.25d | 151.03d | 0d | TEAM_2Shift_Calendar-1 |  | 24h | 1,312.5 | 1,312.5 |
| 158 | 1.9.1.1 | Plate Issuence | 4h | 2018-06-06 09:00 | 2018-06-06 13:00 | 53 | 2018-06-02 18:30 | 2018-06-04 06:30 | 4h | 151.03d | 0d | TEAM_2Shift_Calendar-1 | Plate (Cost) [0.1%]; Helper [300%] | 12h | 600 | 600 |
| 159 | 1.9.1.2 | Base Marking | 2h | 2018-06-06 13:00 | 2018-06-06 15:00 | 158 | 2018-06-04 06:30 | 2018-06-04 08:30 | 2h | 151.03d | 0d | TEAM_2Shift_Calendar-1 | Helper; Fitter | 4h | 237.5 | 237.5 |
| 160 | 1.9.1.3 | Web Pl Marking | 2h | 2018-06-06 15:00 | 2018-06-06 17:00 | 159 | 2018-06-04 08:30 | 2018-06-04 10:30 | 2h | 151.03d | 0d | TEAM_2Shift_Calendar-1 | Helper; Fitter | 4h | 237.5 | 237.5 |
| 161 | 1.9.1.4 | Ribs Marking | 2h | 2018-06-06 17:00 | 2018-06-06 19:00 | 160 | 2018-06-04 10:30 | 2018-06-04 12:30 | 2h | 151.03d |  | TEAM_2Shift_Calendar-1 | Helper; Fitter | 4h | 237.5 | 237.5 |
| 162 | 1.9.2 | **Sadlle Plate Cutting** | 1.62d | 2018-06-06 19:00 | 2018-06-07 16:00 |  | 2018-06-04 12:30 | 2018-06-05 09:30 | 1.62d | 151.03d | 0d | TEAM_2Shift_Calendar-1 |  | 26h | 1,512.5 | 1,512.5 |
| 163 | 1.9.2.1 | Base Cutting | 4h | 2018-06-06 19:00 | 2018-06-07 07:00 | 157 | 2018-06-04 12:30 | 2018-06-04 16:30 | 4h | 151.03d | 0d | TEAM_2Shift_Calendar-1 | Helper; Gas Cutter | 8h | 475 | 475 |
| 164 | 1.9.2.2 | Web Pl Cutting | 2h | 2018-06-07 07:00 | 2018-06-07 09:00 | 163 | 2018-06-04 16:30 | 2018-06-04 18:30 | 2h | 151.03d | 0d | TEAM_2Shift_Calendar-1 | Helper; Gas Cutter | 4h | 237.5 | 237.5 |
| 165 | 1.9.2.3 | Ribs Cutting | 2h | 2018-06-07 09:00 | 2018-06-07 11:00 | 164 | 2018-06-04 18:30 | 2018-06-04 20:30 | 2h | 151.03d | 0d | TEAM_2Shift_Calendar-1 | Helper; Gas Cutter | 4h | 237.5 | 237.5 |
| 166 | 1.9.2.4 | Grinding Of Above | 5h | 2018-06-07 11:00 | 2018-06-07 16:00 | 165 | 2018-06-04 20:30 | 2018-06-05 09:30 | 5h | 151.03d |  | TEAM_2Shift_Calendar-1 | Grinder [200%] | 10h | 562.5 | 562.5 |
| 167 | 1.9.3 | **Saddle Fit Up & Welding** | 18.75d | 2018-06-07 16:00 | 2018-06-19 22:00 |  | 2018-06-05 09:30 | 2018-06-16 15:30 | 18.75d | 151.03d |  | TEAM_2Shift_Calendar-1 |  | 560h | 33,250 | 33,250 |
| 168 | 1.9.3.1 | Base + Web Fit Up | 10h | 2018-06-07 16:00 | 2018-06-08 10:00 | 162 | 2018-06-05 09:30 | 2018-06-05 19:30 | 10h | 151.03d | 0d | TEAM_2Shift_Calendar-1 | Helper [200%]; SMAW Welder; Fitter | 40h | 2,375 | 2,375 |
| 169 | 1.9.3.2 | Base + Web Welding | 20h | 2018-06-08 10:00 | 2018-06-11 14:00 | 168 | 2018-06-05 19:30 | 2018-06-07 07:30 | 20h | 151.03d | 0d | TEAM_2Shift_Calendar-1 | Helper; SMAW Welder | 40h | 2,375 | 2,375 |
| 170 | 1.9.3.3 | Ribs+Web Fit Up | 30h | 2018-06-11 14:00 | 2018-06-13 12:00 | 169 | 2018-06-07 07:30 | 2018-06-08 21:30 | 30h | 151.03d | 0d | TEAM_2Shift_Calendar-1 | Helper [200%]; SMAW Welder; Fitter | 120h | 7,125 | 7,125 |
| 171 | 1.9.3.4 | Ribs+Web Welding | 90h | 2018-06-13 12:00 | 2018-06-19 22:00 | 170 | 2018-06-08 21:30 | 2018-06-16 15:30 | 90h | 151.03d | 0d | TEAM_2Shift_Calendar-1 | Helper [200%]; SMAW Welder [200%] | 360h | 21,375 | 21,375 |
| 172 | 1.9.4 | **Davit Pipe Fabrication** | 4.62d | 2018-06-20 06:00 | 2018-06-22 11:00 |  | 2018-06-16 15:30 | 2018-06-19 20:30 | 4.62d | 151.03d | 0d | TEAM_2Shift_Calendar-1 |  | 76.75h | 4,540.62 | 4,540.62 |
| 173 | 1.9.4.1 | Pipe Transfere | 1h | 2018-06-20 06:00 | 2018-06-20 07:00 | 171 | 2018-06-16 15:30 | 2018-06-16 16:30 | 1h | 151.03d | 0d | TEAM_2Shift_Calendar-1 | Pipe (Cost) [0.1%]; Helper [400%] | 4h | 200 | 200 |
| 174 | 1.9.4.2 | Pipe Marking | 3h | 2018-06-20 07:00 | 2018-06-20 10:00 | 173 | 2018-06-16 16:30 | 2018-06-16 19:30 | 3h | 151.03d | 0d | TEAM_2Shift_Calendar-1 | Helper; Fitter | 6h | 356.25 | 356.25 |
| 175 | 1.9.4.3 | Support Pl Marking | 1h | 2018-06-20 10:00 | 2018-06-20 11:00 | 174 | 2018-06-16 19:30 | 2018-06-16 20:30 | 1h | 151.03d | 0d | TEAM_2Shift_Calendar-1 | Helper; Fitter | 2h | 118.75 | 118.75 |
| 176 | 1.9.4.4 | Gusset Pl Marking | 1h | 2018-06-20 11:00 | 2018-06-20 12:00 | 175 | 2018-06-16 20:30 | 2018-06-16 21:30 | 1h | 151.03d | 0d | TEAM_2Shift_Calendar-1 | Helper; Fitter | 2h | 118.75 | 118.75 |
| 177 | 1.9.4.5 | Base Hub Marking | 0.5h | 2018-06-20 12:00 | 2018-06-20 12:30 | 176 | 2018-06-16 21:30 | 2018-06-16 22:00 | 0.5h | 151.03d | 0d | TEAM_2Shift_Calendar-1 | Helper; Fitter | 1h | 59.38 | 59.38 |
| 178 | 1.9.4.6 | Pipe Cutting | 3.5h | 2018-06-20 12:30 | 2018-06-20 16:00 | 177 | 2018-06-18 06:00 | 2018-06-18 09:30 | 3.5h | 151.03d | 0d | TEAM_2Shift_Calendar-1 | Helper; Gas Cutter | 7h | 415.62 | 415.62 |
| 179 | 1.9.4.7 | Support Pl Cutting | 0.75h | 2018-06-20 16:00 | 2018-06-20 16:45 | 178 | 2018-06-18 09:30 | 2018-06-18 10:15 | 0.75h | 151.03d | 0d | TEAM_2Shift_Calendar-1 | Helper; Gas Cutter | 1.5h | 89.06 | 89.06 |
| 180 | 1.9.4.8 | Pipe Grinding | 7h | 2018-06-20 16:45 | 2018-06-21 07:45 | 179 | 2018-06-18 10:15 | 2018-06-18 17:15 | 7h | 151.03d | 0d | TEAM_2Shift_Calendar-1 | Helper; Fitter | 14h | 831.25 | 831.25 |
| 181 | 1.9.4.9 | Support Pl Grinding | 1.25h | 2018-06-21 07:45 | 2018-06-21 09:00 | 180 | 2018-06-18 17:15 | 2018-06-18 18:30 | 1.25h | 151.03d | 0d | TEAM_2Shift_Calendar-1 | Grinder | 1.25h | 70.31 | 70.31 |
| 182 | 1.9.4.10 | Pivot Pl Grinding | 1h | 2018-06-21 09:00 | 2018-06-21 10:00 | 181 | 2018-06-18 18:30 | 2018-06-18 19:30 | 1h | 151.03d | 0d | TEAM_2Shift_Calendar-1 | Grinder | 1h | 56.25 | 56.25 |
| 183 | 1.9.4.11 | Pipe Fit Up | 3h | 2018-06-21 10:00 | 2018-06-21 13:00 | 182 | 2018-06-18 19:30 | 2018-06-19 06:30 | 3h | 151.03d | 0d | TEAM_2Shift_Calendar-1 | Helper; SMAW Welder; Fitter | 9h | 562.5 | 562.5 |
| 184 | 1.9.4.12 | Pipe Welding | 8h | 2018-06-21 13:00 | 2018-06-21 21:00 | 183 | 2018-06-19 06:30 | 2018-06-19 14:30 | 8h | 151.03d | 0d | TEAM_2Shift_Calendar-1 | Helper; SMAW Welder | 16h | 950 | 950 |
| 185 | 1.9.4.13 | Pivot Pl Welding | 2h | 2018-06-21 21:00 | 2018-06-22 07:00 | 184 | 2018-06-19 14:30 | 2018-06-19 16:30 | 2h | 151.03d | 0d | TEAM_2Shift_Calendar-1 | Helper; SMAW Welder | 4h | 237.5 | 237.5 |
| 186 | 1.9.4.14 | Support Pl Welding | 4h | 2018-06-22 07:00 | 2018-06-22 11:00 | 185 | 2018-06-19 16:30 | 2018-06-19 20:30 | 4h | 151.03d |  | TEAM_2Shift_Calendar-1 | Helper; Fitter | 8h | 475 | 475 |

| ID | WBS | Task | Duration | Start | Finish | Predecessors | Baseline start | Baseline finish | Baseline duration | Total slack | Free slack | Calendar | Resources | Work | Cost | Baseline cost |
| --- | --- | --- | --- | --- | --- | --- | --- | --- | --- | --- | --- | --- | --- | --- | --- | --- |
| 187 | 1.9.5 | **Lifting Lug Pad** | 0.44d | 2018-06-22 11:00 | 2018-06-22 14:30 |  | 2018-06-19 20:30 | 2018-06-20 08:00 | 0.44d | 151.03d | 0d | TEAM_2Shift_Calendar-1 |  | 8h | 434.38 | 434.38 |
| 188 | 1.9.5.1 | Plate Issuence | 1h | 2018-06-22 11:00 | 2018-06-22 12:00 | 172 | 2018-06-19 20:30 | 2018-06-19 21:30 | 1h | 151.03d | 0d | TEAM_2Shift_Calendar-1 | Helper [300%] | 3h | 150 | 150 |
| 189 | 1.9.5.2 | Lifting Lug Pad Marking | 0.5h | 2018-06-22 12:00 | 2018-06-22 12:30 | 188 | 2018-06-19 21:30 | 2018-06-19 22:00 | 0.5h | 151.03d | 0d | TEAM_2Shift_Calendar-1 | Helper; Fitter | 1h | 59.38 | 59.38 |
| 190 | 1.9.5.3 | Lifting Lug Pad Cutting | 1h | 2018-06-22 12:30 | 2018-06-22 13:30 | 189 | 2018-06-20 06:00 | 2018-06-20 07:00 | 1h | 151.03d | 0d | TEAM_2Shift_Calendar-1 | Helper; Gas Cutter | 2h | 118.75 | 118.75 |
| 191 | 1.9.5.4 | Lifting Lugs Pad Grinding | 1h | 2018-06-22 13:30 | 2018-06-22 14:30 | 190 | 2018-06-20 07:00 | 2018-06-20 08:00 | 1h | 151.03d |  | TEAM_2Shift_Calendar-1 | Helper; Grinder | 2h | 106.25 | 106.25 |
| 192 | 1.9.6 | **Lifting Lug Preparation** | 0.69d | 2018-06-22 14:30 | 2018-06-22 20:00 |  | 2018-06-20 08:00 | 2018-06-20 13:30 | 0.69d | 151.03d | 0d | TEAM_2Shift_Calendar-1 |  | 11h | 615.62 | 615.62 |
| 193 | 1.9.6.1 | Lifting Lugs Marking | 0.5h | 2018-06-22 14:30 | 2018-06-22 15:00 | 187 | 2018-06-20 08:00 | 2018-06-20 08:30 | 0.5h | 151.03d | 0d | TEAM_2Shift_Calendar-1 | Helper; Fitter | 1h | 59.38 | 59.38 |
| 194 | 1.9.6.2 | Lifting Lugs Cutting | 1h | 2018-06-22 15:00 | 2018-06-22 16:00 | 193 | 2018-06-20 08:30 | 2018-06-20 09:30 | 1h | 151.03d | 0d | TEAM_2Shift_Calendar-1 | Helper; Gas Cutter | 2h | 118.75 | 118.75 |
| 195 | 1.9.6.3 | Lifting Lugs Grinding | 3h | 2018-06-22 16:00 | 2018-06-22 19:00 | 194 | 2018-06-20 09:30 | 2018-06-20 12:30 | 3h | 151.03d | 0d | TEAM_2Shift_Calendar-1 | Helper; Grinder | 6h | 318.75 | 318.75 |
| 196 | 1.9.6.4 | Lifting Lug Drilling | 1h | 2018-06-22 19:00 | 2018-06-22 20:00 | 195 | 2018-06-20 12:30 | 2018-06-20 13:30 | 1h | 151.03d |  | TEAM_2Shift_Calendar-1 | Helper; Fitter | 2h | 118.75 | 118.75 |
| 197 | 1.9.7 | **Channel Cover Handle Prepataion** | 0.19d | 2018-06-22 20:00 | 2018-06-22 21:30 |  | 2018-06-20 13:30 | 2018-06-20 15:00 | 0.19d | 151.03d | 0d | TEAM_2Shift_Calendar-1 |  | 3h | 178.12 | 178.12 |
| 198 | 1.9.7.1 | Ch Cover Ring Forming | 1h | 2018-06-22 20:00 | 2018-06-22 21:00 | 192 | 2018-06-20 13:30 | 2018-06-20 14:30 | 1h | 151.03d | 0d | TEAM_2Shift_Calendar-1 | Helper; Fitter | 2h | 118.75 | 118.75 |
| 199 | 1.9.7.2 | Sliding Sling Forming | 0.5h | 2018-06-22 21:00 | 2018-06-22 21:30 | 198 | 2018-06-20 14:30 | 2018-06-20 15:00 | 0.5h | 151.03d |  | TEAM_2Shift_Calendar-1 | Helper; Fitter | 1h | 59.38 | 59.38 |
| 200 | 1.9.8 | **Insulation Ring Prparation** | 0.5d | 2018-06-22 21:30 | 2018-06-25 09:30 |  | 2018-06-20 15:00 | 2018-06-20 19:00 | 0.5d | 151.03d |  | TEAM_2Shift_Calendar-1 |  | 8h | 475 | 475 |
| 201 | 1.9.8.1 | Insulaion Ring Marking | 1h | 2018-06-22 21:30 | 2018-06-25 06:30 | 197 | 2018-06-20 15:00 | 2018-06-20 16:00 | 1h | 151.03d | 0d | TEAM_2Shift_Calendar-1 | Helper; Plate (Cost) [0.1%]; Fitter | 2h | 118.75 | 118.75 |
| 202 | 1.9.8.2 | Insulaion Ring Cutting | 1h | 2018-06-25 06:30 | 2018-06-25 07:30 | 201 | 2018-06-20 16:00 | 2018-06-20 17:00 | 1h | 151.03d | 0d | TEAM_2Shift_Calendar-1 | Helper; Gas Cutter | 2h | 118.75 | 118.75 |
| 203 | 1.9.8.3 | Insulaion Ring Hole Marking | 1h | 2018-06-25 07:30 | 2018-06-25 08:30 | 202 | 2018-06-20 17:00 | 2018-06-20 18:00 | 1h | 151.03d | 0d | TEAM_2Shift_Calendar-1 | Helper; Fitter | 2h | 118.75 | 118.75 |
| 204 | 1.9.8.4 | Insulaion Ring Hole Drilling | 1h | 2018-06-25 08:30 | 2018-06-25 09:30 | 203 | 2018-06-20 18:00 | 2018-06-20 19:00 | 1h | 151.03d |  | TEAM_2Shift_Calendar-1 | Helper; Fitter | 2h | 118.75 | 118.75 |
| 205 | 1.10 | **Baffle & Tb Items Fab** | 44.31d | 2018-05-21 09:30 | 2018-06-18 12:00 |  | 2018-05-14 17:00 | 2018-06-14 07:00 | 48.75d | 92.62d |  | TEAM_2Shift_Calendar-1 |  | 449h | 21,911.88 | 21,911.88 |
| 206 | 1.10.1 | **Baffle Preparation** | 1.25d | 2018-06-04 17:00 | 2018-06-05 11:00 |  | 2018-05-14 17:00 | 2018-05-15 11:00 | 1.25d | 92.62d | 0d | TEAM_2Shift_Calendar-1 |  | 28h | 1,512.5 | 1,512.5 |
| 207 | 1.10.1.1 | Baffle Plate Transfer | 4h | 2018-06-04 17:00 | 2018-06-04 21:00 | 43 | 2018-05-14 17:00 | 2018-05-14 21:00 | 4h | 92.62d | 0d | TEAM_2Shift_Calendar-1 | Plate (Cost) [0.1%]; Helper [400%] | 16h | 800 | 800 |
| 208 | 1.10.1.2 | Baffle Marking | 2h | 2018-06-04 21:00 | 2018-06-05 07:00 | 207 | 2018-05-14 21:00 | 2018-05-15 07:00 | 2h | 92.62d | 0d | TEAM_2Shift_Calendar-1 | Helper; Fitter | 4h | 237.5 | 237.5 |
| 209 | 1.10.1.3 | Baffle Profile Cutting | 4h | 2018-06-05 07:00 | 2018-06-05 11:00 | 208 | 2018-05-15 07:00 | 2018-05-15 11:00 | 4h | 92.62d |  | TEAM_2Shift_Calendar-1 | Helper; Gas Cutter | 8h | 475 | 475 |
| 210 | 1.10.2 | **Baffle Bend Removal & Stacking** | 1.31d | 2018-06-05 11:00 | 2018-06-05 21:30 |  | 2018-05-15 11:00 | 2018-05-15 21:30 | 1.31d | 92.62d | 0d | TEAM_2Shift_Calendar-1 |  | 31h | 1,746.88 | 1,746.88 |
| 211 | 1.10.2.1 | Baffle Pl Bend Removal | 10h | 2018-06-05 11:00 | 2018-06-05 21:00 | 206 | 2018-05-15 11:00 | 2018-05-15 21:00 | 10h | 92.62d | 0d | TEAM_2Shift_Calendar-1 | Helper [200%]; Fitter | 30h | 1,687.5 | 1,687.5 |
| 212 | 1.10.2.2 | Baffle Pl Stacking Per 100mm | 0.5h | 2018-06-05 21:00 | 2018-06-05 21:30 | 211 | 2018-05-15 21:00 | 2018-05-15 21:30 | 0.5h | 92.62d |  | TEAM_2Shift_Calendar-1 | Helper; Fitter | 1h | 59.38 | 59.38 |

| ID | WBS | Task | Duration | Start | Finish | Predecessors | Baseline start | Baseline finish | Baseline duration | Total slack | Free slack | Calendar | Resources | Work | Cost | Baseline cost |
| --- | --- | --- | --- | --- | --- | --- | --- | --- | --- | --- | --- | --- | --- | --- | --- | --- |
| 213 | 1.10.3 | **Baffle Drilling** | 6d | 2018-06-05 21:30 | 2018-06-08 21:30 |  | 2018-05-15 21:30 | 2018-05-18 21:30 | 6d | 92.62d | 0d | TEAM_2Shift_Calendar-1 |  | 48h |  |  |
| 214 | 1.10.3.1 | Baffle Drilling | 6d | 2018-06-05 21:30 | 2018-06-08 21:30 | 210 | 2018-05-15 21:30 | 2018-05-18 21:30 | 6d | 92.62d |  | TEAM_2Shift_Calendar-1 | SC (Work) | 48h |  |  |
| 215 | 1.10.4 | **Baffle De Stacking & Chamfering** | 1.81d | 2018-06-08 21:30 | 2018-06-11 20:00 |  | 2018-05-18 21:30 | 2018-05-19 20:00 | 1.81d | 92.62d | 0d | TEAM_2Shift_Calendar-1 |  | 15h | 1,021.88 | 1,021.88 |
| 216 | 1.10.4.1 | Baffle De Stacking | 0.5h | 2018-06-08 21:30 | 2018-06-08 22:00 | 213 | 2018-05-18 21:30 | 2018-05-18 22:00 | 0.5h | 92.62d | 0d | TEAM_2Shift_Calendar-1 | Helper; Fitter | 1h | 59.38 | 59.38 |
| 217 | 1.10.4.2 | Baffle Chamfering (70% of TS Holes*No of Baffles) | 14h | 2018-06-11 06:00 | 2018-06-11 20:00 | 216 | 2018-05-19 06:00 | 2018-05-19 20:00 | 14h | 92.62d |  | TEAM_2Shift_Calendar-1 | Fitter | 14h | 962.5 | 962.5 |
| 218 | 1.10.5 | **Baffle Stacking & Thro Hole Check** | 5.75d | 2018-06-11 20:00 | 2018-06-14 18:00 |  | 2018-05-19 20:00 | 2018-05-23 18:00 | 5.75d | 92.62d | 0d | TEAM_2Shift_Calendar-1 |  | 68h | 2,087.5 | 2,087.5 |
| 219 | 1.10.5.1 | Stacking | 4h | 2018-06-11 20:00 | 2018-06-12 08:00 | 215 | 2018-05-19 20:00 | 2018-05-21 08:00 | 4h | 92.62d | 0d | TEAM_2Shift_Calendar-1 | Helper; Fitter | 8h | 475 | 475 |
| 220 | 1.10.5.2 | Baffle Hole Alingment | 6h | 2018-06-12 08:00 | 2018-06-12 14:00 | 219 | 2018-05-21 08:00 | 2018-05-21 14:00 | 6h | 92.62d | 0d | TEAM_2Shift_Calendar-1 | Helper; Fitter | 12h | 712.5 | 712.5 |
| 221 | 1.10.5.3 | Baffle Hole Re Drill (Use 40% of Holes in Qty) | 14h | 2018-06-12 14:00 | 2018-06-13 12:00 | 220 | 2018-05-21 14:00 | 2018-05-22 12:00 | 14h | 92.62d | 0d | TEAM_2Shift_Calendar-1 | SC (Work) | 14h |  |  |
| 222 | 1.10.5.4 | Baffle Od Machining (100mm L * 700Ø = 3hrs) | 2d | 2018-06-13 12:00 | 2018-06-14 12:00 | 221 | 2018-05-22 12:00 | 2018-05-23 12:00 | 2d | 92.62d | 0d | TEAM_2Shift_Calendar-1 | SC (Work) | 16h |  |  |
| 223 | 1.10.5.5 | Baffle Cleaning (100mm L * 700Ø = 3hrs) | 6h | 2018-06-14 12:00 | 2018-06-14 18:00 | 222 | 2018-05-23 12:00 | 2018-05-23 18:00 | 6h | 92.62d |  | TEAM_2Shift_Calendar-1 | Helper [300%] | 18h | 900 | 900 |
| 224 | 1.10.6 | **Support Plate Marking** | 0.75d | 2018-06-14 18:00 | 2018-06-15 08:00 |  | 2018-05-23 18:00 | 2018-05-24 08:00 | 0.75d | 92.62d | 0d | TEAM_2Shift_Calendar-1 |  | 8h | 200 | 200 |
| 225 | 1.10.6.1 | Support Plate Transfer | 2h | 2018-06-14 18:00 | 2018-06-14 20:00 | 218 | 2018-05-23 18:00 | 2018-05-23 20:00 | 2h | 92.62d | 0d | TEAM_2Shift_Calendar-1 | Plate (Cost) [0.1%]; Helper [200%] | 4h | 200 | 200 |
| 226 | 1.10.6.2 | Support Marking | 2h | 2018-06-14 20:00 | 2018-06-14 22:00 | 225 | 2018-05-23 20:00 | 2018-05-23 22:00 | 2h | 92.62d | 0d | TEAM_2Shift_Calendar-1 | SC (Work) | 2h |  |  |
| 227 | 1.10.6.3 | Support Profile Cutting | 2h | 2018-06-15 06:00 | 2018-06-15 08:00 | 226 | 2018-05-24 06:00 | 2018-05-24 08:00 | 2h | 92.62d |  | TEAM_2Shift_Calendar-1 | SC (Work) | 2h |  |  |
| 228 | 1.10.7 | **Support Plate Bend Removal** | 0.75d | 2018-06-15 08:00 | 2018-06-15 14:00 |  | 2018-05-24 08:00 | 2018-05-24 14:00 | 0.75d | 92.62d | 0d | TEAM_2Shift_Calendar-1 |  | 20h | 1,112.5 | 1,112.5 |
| 229 | 1.10.7.1 | Support Pl Bend Removal | 4h | 2018-06-15 08:00 | 2018-06-15 12:00 | 224 | 2018-05-24 08:00 | 2018-05-24 12:00 | 4h | 92.62d | 0d | TEAM_2Shift_Calendar-1 | Helper [300%]; Fitter | 16h | 875 | 875 |
| 230 | 1.10.7.2 | Support Pl Stacking | 2h | 2018-06-15 12:00 | 2018-06-15 14:00 | 229 | 2018-05-24 12:00 | 2018-05-24 14:00 | 2h | 92.62d |  | TEAM_2Shift_Calendar-1 | Helper; Fitter | 4h | 237.5 | 237.5 |
| 231 | 1.10.8 | **Support Plate Drlinng** | 2d | 2018-06-15 14:00 | 2018-06-16 14:00 |  | 2018-05-24 14:00 | 2018-05-25 14:00 | 2d | 92.62d | 0d | TEAM_2Shift_Calendar-1 |  | 16h |  |  |
| 232 | 1.10.8.1 | Support Drilling | 2d | 2018-06-15 14:00 | 2018-06-16 14:00 | 228 | 2018-05-24 14:00 | 2018-05-25 14:00 | 2d | 92.62d |  | TEAM_2Shift_Calendar-1 | SC (Work) | 16h |  |  |
| 233 | 1.10.9 | **Sup Plate De Stacking & Chamfering** | 1.75d | 2018-06-16 14:00 | 2018-06-18 12:00 |  | 2018-05-25 14:00 | 2018-05-28 12:00 | 1.75d | 92.62d |  | TEAM_2Shift_Calendar-1 |  | 18h | 1,162.5 | 1,162.5 |
| 234 | 1.10.9.1 | Support De Stacking | 4h | 2018-06-16 14:00 | 2018-06-16 18:00 | 231 | 2018-05-25 14:00 | 2018-05-25 18:00 | 4h | 92.62d | 0d | TEAM_2Shift_Calendar-1 | Helper; Fitter | 8h | 475 | 475 |
| 235 | 1.10.9.2 | Support Hole Chamfering | 10h | 2018-06-16 18:00 | 2018-06-18 12:00 | 234 | 2018-05-25 18:00 | 2018-05-28 12:00 | 10h | 92.62d |  | TEAM_2Shift_Calendar-1 | Fitter | 10h | 687.5 | 687.5 |
| 236 | 1.10.10 | **Tie Rod Preparation** | 2.94d | 2018-05-21 09:30 | 2018-05-22 17:00 |  | 2018-05-21 09:30 | 2018-05-22 17:00 | 2.94d | 130.75d | 0d | TEAM_2Shift_Calendar-1 |  | 36.5h | 3,188.75 | 3,188.75 |
| 237 | 1.10.10.1 | Tie Rod Matl Transfere | 0.5h | 2018-05-21 09:30 | 2018-05-21 10:00 | 50 | 2018-05-21 09:30 | 2018-05-21 10:00 | 0.5h | 130.75d | 0d | TEAM_2Shift_Calendar-1 | Rod (Cost) [0.1%]; Helper | 0.5h | 25 | 25 |
| 238 | 1.10.10.2 | Rod Cutting | 1h | 2018-05-21 10:00 | 2018-05-21 11:00 | 237 | 2018-05-21 10:00 | 2018-05-21 11:00 | 1h | 130.75d | 0d | TEAM_2Shift_Calendar-1 | Helper; Fitter | 2h | 118.75 | 118.75 |
| 239 | 1.10.10.3 | Thread Machining. | 2d | 2018-05-21 11:00 | 2018-05-22 11:00 | 238 | 2018-05-21 11:00 | 2018-05-22 11:00 | 2d | 130.75d | 0d | TEAM_2Shift_Calendar-1 | Lathe Operator | 16h | 1,920 | 1,920 |
| 240 | 1.10.10.4 | Joining | 6h | 2018-05-22 11:00 | 2018-05-22 17:00 | 239 | 2018-05-22 11:00 | 2018-05-22 17:00 | 6h | 130.75d |  | TEAM_2Shift_Calendar-1 | Fitter; Helper; SMAW Welder | 18h | 1,125 | 1,125 |

| ID | WBS | Task | Duration | Start | Finish | Predecessors | Baseline start | Baseline finish | Baseline duration | Total slack | Free slack | Calendar | Resources | Work | Cost | Baseline cost |
| --- | --- | --- | --- | --- | --- | --- | --- | --- | --- | --- | --- | --- | --- | --- | --- | --- |
| 241 | 1.10.11 | **Spacer Tube Preparation** | 3.25d | 2018-05-22 17:00 | 2018-05-24 11:00 |  | 2018-05-22 17:00 | 2018-05-24 11:00 | 3.25d | 130.75d |  | TEAM_2Shift_Calendar-1 |  | 36h | 3,070 | 3,070 |
| 242 | 1.10.11.1 | Spacer Tube Transfere | 1h | 2018-05-22 17:00 | 2018-05-22 18:00 | 236 | 2018-05-22 17:00 | 2018-05-22 18:00 | 1h | 130.75d | 0d | TEAM_2Shift_Calendar-1 | Tube (Cost) [0.1%]; Helper | 1h | 50 | 50 |
| 243 | 1.10.11.2 | Length Cutting 237 Nos | 8h | 2018-05-22 18:00 | 2018-05-23 10:00 | 242 | 2018-05-22 18:00 | 2018-05-23 10:00 | 8h | 130.75d | 0d | TEAM_2Shift_Calendar-1 | Helper; Fitter | 16h | 950 | 950 |
| 244 | 1.10.11.3 | Length Machining | 2d | 2018-05-23 10:00 | 2018-05-24 10:00 | 243 | 2018-05-23 10:00 | 2018-05-24 10:00 | 2d | 130.75d | 0d | TEAM_2Shift_Calendar-1 | Lathe Operator | 16h | 1,920 | 1,920 |
| 245 | 1.10.11.4 | Cleaninng | 1h | 2018-05-24 10:00 | 2018-05-24 11:00 | 244 | 2018-05-24 10:00 | 2018-05-24 11:00 | 1h | 130.75d |  | TEAM_2Shift_Calendar-1 | Helper [300%] | 3h | 150 | 150 |
| 246 | 1.10.12 | **Sealing Strip Preparation** | 3.06d | 2018-06-04 17:00 | 2018-06-06 09:30 |  | 2018-05-14 17:00 | 2018-05-16 09:30 | 3.06d | 110.94d |  | TEAM_2Shift_Calendar-1 |  | 56h | 3,259.38 | 3,259.38 |
| 247 | 1.10.12.1 | Sealing Strip Marking | 4.25h | 2018-06-04 17:00 | 2018-06-04 21:15 | 44 | 2018-05-14 17:00 | 2018-05-14 21:15 | 4.25h | 110.94d | 0d | TEAM_2Shift_Calendar-1 | Helper; Plate (Cost) [0.1%]; Fitter | 8.5h | 504.69 | 504.69 |
| 248 | 1.10.12.2 | Sealing Strip Cutting | 7.25h | 2018-06-04 21:15 | 2018-06-05 12:30 | 247 | 2018-05-14 21:15 | 2018-05-15 12:30 | 7.25h | 110.94d | 0d | TEAM_2Shift_Calendar-1 | Helper; Gas Cutter | 14.5h | 860.94 | 860.94 |
| 249 | 1.10.12.3 | Sealing Strip Bend Removal | 8h | 2018-06-05 12:30 | 2018-06-05 20:30 | 248 | 2018-05-15 12:30 | 2018-05-15 20:30 | 8h | 110.94d | 0d | TEAM_2Shift_Calendar-1 | Helper [200%]; Fitter | 24h | 1,350 | 1,350 |
| 250 | 1.10.12.4 | Sealing Strip Grinding | 1h | 2018-06-05 20:30 | 2018-06-05 21:30 | 249 | 2018-05-15 20:30 | 2018-05-15 21:30 | 1h | 110.94d | 0d | TEAM_2Shift_Calendar-1 | Grinder | 1h | 56.25 | 56.25 |
| 251 | 1.10.12.5 | Sealing Strip Joining | 2h | 2018-06-05 21:30 | 2018-06-06 07:30 | 250 | 2018-05-15 21:30 | 2018-05-16 07:30 | 2h | 110.94d | 0d | TEAM_2Shift_Calendar-1 | Fitter; Helper; SMAW Welder | 6h | 375 | 375 |
| 252 | 1.10.12.6 | Sealing Strip Dress Up | 2h | 2018-06-06 07:30 | 2018-06-06 09:30 | 251 | 2018-05-16 07:30 | 2018-05-16 09:30 | 2h | 110.94d |  | TEAM_2Shift_Calendar-1 | Grinder | 2h | 112.5 | 112.5 |
| 253 | 1.10.13 | **Sliding Strip Preparation** | 1.25d | 2018-06-04 17:00 | 2018-06-05 11:00 |  | 2018-05-14 17:00 | 2018-05-15 11:00 | 1.25d | 112.75d |  | TEAM_2Shift_Calendar-1 |  | 24.5h | 1,487.5 | 1,487.5 |
| 254 | 1.10.13.1 | Sliding Strip Marking | 1h | 2018-06-04 17:00 | 2018-06-04 18:00 | 45 | 2018-05-14 17:00 | 2018-05-14 18:00 | 1h | 112.75d | 0d | TEAM_2Shift_Calendar-1 | Helper; Plate (Cost) [0.1%]; Fitter | 2h | 118.75 | 118.75 |
| 255 | 1.10.13.2 | Sliding Strip Cutting | 1.5h | 2018-06-04 18:00 | 2018-06-04 19:30 | 254 | 2018-05-14 18:00 | 2018-05-14 19:30 | 1.5h | 112.75d | 0d | TEAM_2Shift_Calendar-1 | Helper; Gas Cutter | 3h | 178.12 | 178.12 |
| 256 | 1.10.13.3 | Sliding Strip Bend Removal | 1h | 2018-06-04 19:30 | 2018-06-04 20:30 | 255 | 2018-05-14 19:30 | 2018-05-14 20:30 | 1h | 112.75d | 0d | TEAM_2Shift_Calendar-1 | Helper [200%]; Fitter | 3h | 168.75 | 168.75 |
| 257 | 1.10.13.4 | Sliding Strip Grinding | 0.5h | 2018-06-04 20:30 | 2018-06-04 21:00 | 256 | 2018-05-14 20:30 | 2018-05-14 21:00 | 0.5h | 112.75d | 0d | TEAM_2Shift_Calendar-1 | Grinder | 0.5h | 28.12 | 28.12 |
| 258 | 1.10.13.5 | Sliding Strip Joining | 5h | 2018-06-04 21:00 | 2018-06-05 10:00 | 257 | 2018-05-14 21:00 | 2018-05-15 10:00 | 5h | 112.75d | 0d | TEAM_2Shift_Calendar-1 | Fitter; Helper; SMAW Welder | 15h | 937.5 | 937.5 |
| 259 | 1.10.13.6 | Sliding Strip Dress Up | 1h | 2018-06-05 10:00 | 2018-06-05 11:00 | 258 | 2018-05-15 10:00 | 2018-05-15 11:00 | 1h | 112.75d |  | TEAM_2Shift_Calendar-1 | Grinder | 1h | 56.25 | 56.25 |
| 260 | 1.10.14 | **Seal Rod Preparation** | 2.75d | 2018-06-12 17:00 | 2018-06-14 07:00 |  | 2018-06-12 17:00 | 2018-06-14 07:00 | 2.75d | 99.25d |  | TEAM_2Shift_Calendar-1 |  | 44h | 2,062.5 | 2,062.5 |
| 261 | 1.10.14.1 | Seal Rod Issuenece | 8h | 2018-06-12 17:00 | 2018-06-13 09:00 | 46FS+190d | 2018-06-12 17:00 | 2018-06-13 09:00 | 8h | 99.25d | 0d | TEAM_2Shift_Calendar-1 | Rod (Cost) [0.1%]; Store | 8h |  |  |
| 262 | 1.10.14.2 | Seal Rod Marking | 2h | 2018-06-13 09:00 | 2018-06-13 11:00 | 261 | 2018-06-13 09:00 | 2018-06-13 11:00 | 2h | 99.25d | 0d | TEAM_2Shift_Calendar-1 | Helper; Fitter | 4h | 237.5 | 237.5 |
| 263 | 1.10.14.3 | Seal Rod Cutting | 4h | 2018-06-13 11:00 | 2018-06-13 15:00 | 262 | 2018-06-13 11:00 | 2018-06-13 15:00 | 4h | 99.25d | 0d | TEAM_2Shift_Calendar-1 | Helper; Fitter | 8h | 475 | 475 |
| 264 | 1.10.14.4 | Seal Rod Bend Removal | 8h | 2018-06-13 15:00 | 2018-06-14 07:00 | 263 | 2018-06-13 15:00 | 2018-06-14 07:00 | 8h | 99.25d |  | TEAM_2Shift_Calendar-1 | Helper [200%]; Fitter | 24h | 1,350 | 1,350 |

| ID | WBS | Task | Duration | Start | Finish | Predecessors | Baseline start | Baseline finish | Baseline duration | Total slack | Free slack | Calendar | Resources | Work | Cost | Baseline cost |
| --- | --- | --- | --- | --- | --- | --- | --- | --- | --- | --- | --- | --- | --- | --- | --- | --- |
| 265 | 1.11 | **Shell Fabrication** | 45.53d | 2018-06-04 17:00 | 2018-07-03 13:15 |  | 2018-05-14 17:00 | 2018-06-20 19:00 | 60.25d | 77.91d | 0d | TEAM_2Shift_Calendar-1 |  | 879h | 51,376.56 | 51,376.56 |
| 266 | 1.11.1 | **Shell Marking & Cutting** | 0.88d | 2018-06-04 17:00 | 2018-06-05 08:00 |  | 2018-05-14 17:00 | 2018-05-15 08:00 | 0.88d | 77.91d | 0d | TEAM_2Shift_Calendar-1 |  | 13h | 506.25 | 506.25 |
| 267 | 1.11.1.1 | Sh Plate Trnasfer | 4h | 2018-06-04 17:00 | 2018-06-04 21:00 | 31 | 2018-05-14 17:00 | 2018-05-14 21:00 | 4h | 77.91d | 0d | TEAM_2Shift_Calendar-1 | Plate (Cost) [0.1%]; Store | 4h |  |  |
| 268 | 1.11.1.2 | Sh-Marking | 3h | 2018-06-04 21:00 | 2018-06-05 08:00 | 267 | 2018-05-14 21:00 | 2018-05-15 08:00 | 3h | 77.91d |  | TEAM_2Shift_Calendar-1 | Helper [200%]; Fitter | 9h | 506.25 | 506.25 |
| 269 | 1.11.2 | **Shell Plate Cutting** | 0.5d | 2018-06-05 08:00 | 2018-06-05 12:00 |  | 2018-05-15 08:00 | 2018-05-15 12:00 | 0.5d | 77.91d |  | TEAM_2Shift_Calendar-1 |  | 12h | 675 | 675 |
| 270 | 1.11.2.1 | Sh-Cutting | 4h | 2018-06-05 08:00 | 2018-06-05 12:00 | 266 | 2018-05-15 08:00 | 2018-05-15 12:00 | 4h | 77.91d | 0d | TEAM_2Shift_Calendar-1 | Helper [200%]; Gas Cutter | 12h | 675 | 675 |
| 271 | 1.11.3 | **Sh Pl Side Grinding** | 0.38d | 2018-06-05 12:00 | 2018-06-05 15:00 |  | 2018-05-15 12:00 | 2018-05-15 15:00 | 0.38d | 77.91d | 0d | TEAM_2Shift_Calendar-1 |  | 12h | 656.25 | 656.25 |
| 272 | 1.11.3.1 | Sh Pl Side Bevel Cutting | 1h | 2018-06-05 12:00 | 2018-06-05 13:00 | 270 | 2018-05-15 12:00 | 2018-05-15 13:00 | 1h | 77.91d | 0d | TEAM_2Shift_Calendar-1 | Helper [300%]; Fitter | 4h | 218.75 | 218.75 |
| 273 | 1.11.3.2 | Sh Pl Side Bevel Cutting | 1h | 2018-06-05 13:00 | 2018-06-05 14:00 | 272 | 2018-05-15 13:00 | 2018-05-15 14:00 | 1h | 77.91d | 0d | TEAM_2Shift_Calendar-1 | Helper [300%]; Fitter | 4h | 218.75 | 218.75 |
| 274 | 1.11.3.3 | Sh Pl Side Bevel Cutting | 1h | 2018-06-05 14:00 | 2018-06-05 15:00 | 273 | 2018-05-15 14:00 | 2018-05-15 15:00 | 1h | 77.91d |  | TEAM_2Shift_Calendar-1 | Helper [300%]; Fitter | 4h | 218.75 | 218.75 |
| 275 | 1.11.4 | **Shell Plate Edge Preparation** | 0.75d | 2018-06-05 15:00 | 2018-06-05 21:00 |  | 2018-05-15 15:00 | 2018-05-15 21:00 | 0.75d | 77.91d | 0d | TEAM_2Shift_Calendar-1 |  | 12h | 637.5 | 637.5 |
| 276 | 1.11.4.1 | Sh-Bevel Grinding | 2h | 2018-06-05 15:00 | 2018-06-05 17:00 | 271 | 2018-05-15 15:00 | 2018-05-15 17:00 | 2h | 77.91d | 0d | TEAM_2Shift_Calendar-1 | Helper; Grinder | 4h | 212.5 | 212.5 |
| 277 | 1.11.4.2 | Sh-Bevel Grinding | 2h | 2018-06-05 17:00 | 2018-06-05 19:00 | 276 | 2018-05-15 17:00 | 2018-05-15 19:00 | 2h | 77.91d | 0d | TEAM_2Shift_Calendar-1 | Helper; Grinder | 4h | 212.5 | 212.5 |
| 278 | 1.11.4.3 | Sh-Bevel Grinding | 2h | 2018-06-05 19:00 | 2018-06-05 21:00 | 277 | 2018-05-15 19:00 | 2018-05-15 21:00 | 2h | 77.91d |  | TEAM_2Shift_Calendar-1 | Helper; Grinder | 4h | 212.5 | 212.5 |
| 279 | 1.11.5 | **Shell Pre Bending** | 0.75d | 2018-06-05 21:00 | 2018-06-06 11:00 |  | 2018-05-15 21:00 | 2018-05-16 11:00 | 0.75d | 77.91d | 0d | TEAM_2Shift_Calendar-1 |  | 18h | 1,125 | 1,125 |
| 280 | 1.11.5.1 | Sh-Pre Bend | 2h | 2018-06-05 21:00 | 2018-06-06 07:00 | 275 | 2018-05-15 21:00 | 2018-05-16 07:00 | 2h | 77.91d | 0d | TEAM_2Shift_Calendar-1 | Helper; Fitter [200%] | 6h | 375 | 375 |
| 281 | 1.11.5.2 | Sh-Pre Bend | 2h | 2018-06-06 07:00 | 2018-06-06 09:00 | 280 | 2018-05-16 07:00 | 2018-05-16 09:00 | 2h | 77.91d | 0d | TEAM_2Shift_Calendar-1 | Helper; Fitter [200%] | 6h | 375 | 375 |
| 282 | 1.11.5.3 | Sh-Pre Bend | 2h | 2018-06-06 09:00 | 2018-06-06 11:00 | 281 | 2018-05-16 09:00 | 2018-05-16 11:00 | 2h | 77.91d |  | TEAM_2Shift_Calendar-1 | Helper; Fitter [200%] | 6h | 375 | 375 |
| 283 | 1.11.6 | **Shell Pl Pre Bend Cut Off** | 0.38d | 2018-06-06 11:00 | 2018-06-06 14:00 |  | 2018-05-16 11:00 | 2018-05-16 14:00 | 0.38d | 77.91d | 0d | TEAM_2Shift_Calendar-1 |  | 12h | 768.75 | 768.75 |
| 284 | 1.11.6.1 | Sh-Pre Bend Cut Off | 1h | 2018-06-06 11:00 | 2018-06-06 12:00 | 279 | 2018-05-16 11:00 | 2018-05-16 12:00 | 1h | 77.91d | 0d | TEAM_2Shift_Calendar-1 | Helper; Gas Cutter; Fitter [200%] | 4h | 256.25 | 256.25 |
| 285 | 1.11.6.2 | Sh-Pre Bend Cut Off | 1h | 2018-06-06 12:00 | 2018-06-06 13:00 | 284 | 2018-05-16 12:00 | 2018-05-16 13:00 | 1h | 77.91d | 0d | TEAM_2Shift_Calendar-1 | Helper; Gas Cutter; Fitter [200%] | 4h | 256.25 | 256.25 |
| 286 | 1.11.6.3 | Sh-Pre Bend Cut Off | 1h | 2018-06-06 13:00 | 2018-06-06 14:00 | 285 | 2018-05-16 13:00 | 2018-05-16 14:00 | 1h | 77.91d |  | TEAM_2Shift_Calendar-1 | Helper; Gas Cutter; Fitter [200%] | 4h | 256.25 | 256.25 |
| 287 | 1.11.7 | **Shell Plate Ls Ep** | 1.5d | 2018-06-06 14:00 | 2018-06-07 10:00 |  | 2018-05-16 14:00 | 2018-05-17 10:00 | 1.5d | 77.91d | 0d | TEAM_2Shift_Calendar-1 |  | 24h | 1,425 | 1,425 |
| 288 | 1.11.7.1 | Sh-Pre Bend Ls Ep | 4h | 2018-06-06 14:00 | 2018-06-06 18:00 | 283 | 2018-05-16 14:00 | 2018-05-16 18:00 | 4h | 77.91d | 0d | TEAM_2Shift_Calendar-1 | Helper; Fitter | 8h | 475 | 475 |
| 289 | 1.11.7.2 | Sh-Pre Bend Ls Ep | 4h | 2018-06-06 18:00 | 2018-06-06 22:00 | 288 | 2018-05-16 18:00 | 2018-05-16 22:00 | 4h | 77.91d | 0d | TEAM_2Shift_Calendar-1 | Helper; Fitter | 8h | 475 | 475 |
| 290 | 1.11.7.3 | Sh-Pre Bend Ls Ep | 4h | 2018-06-07 06:00 | 2018-06-07 10:00 | 289 | 2018-05-17 06:00 | 2018-05-17 10:00 | 4h | 77.91d |  | TEAM_2Shift_Calendar-1 | Helper; Fitter | 8h | 475 | 475 |

| ID | WBS | Task | Duration | Start | Finish | Predecessors | Baseline start | Baseline finish | Baseline duration | Total slack | Free slack | Calendar | Resources | Work | Cost | Baseline cost |
| --- | --- | --- | --- | --- | --- | --- | --- | --- | --- | --- | --- | --- | --- | --- | --- | --- |
| 291 | 1.11.8 | **Shell Rolling** | 1.5d | 2018-06-07 10:00 | 2018-06-07 22:00 |  | 2018-05-17 10:00 | 2018-05-17 22:00 | 1.5d | 77.91d | 0d | TEAM_2Shift_Calendar-1 |  | 36h | 2,250 | 2,250 |
| 292 | 1.11.8.1 | Sh-Rolling 1/4 | 4h | 2018-06-07 10:00 | 2018-06-07 14:00 | 287 | 2018-05-17 10:00 | 2018-05-17 14:00 | 4h | 77.91d | 0d | TEAM_2Shift_Calendar-1 | Helper; Fitter [200%] | 12h | 750 | 750 |
| 293 | 1.11.8.2 | Sh-Rolling | 4h | 2018-06-07 14:00 | 2018-06-07 18:00 | 292 | 2018-05-17 14:00 | 2018-05-17 18:00 | 4h | 77.91d | 0d | TEAM_2Shift_Calendar-1 | Helper; Fitter [200%] | 12h | 750 | 750 |
| 294 | 1.11.8.3 | Sh-Rolling | 4h | 2018-06-07 18:00 | 2018-06-07 22:00 | 293 | 2018-05-17 18:00 | 2018-05-17 22:00 | 4h | 77.91d |  | TEAM_2Shift_Calendar-1 | Helper; Fitter [200%] | 12h | 750 | 750 |
| 295 | 1.11.9 | **Shell Cir Length & Ep Correction** | 1.12d | 2018-06-08 06:00 | 2018-06-08 15:00 |  | 2018-05-18 06:00 | 2018-05-18 15:00 | 1.12d | 77.91d | 0d | TEAM_2Shift_Calendar-1 |  | 27h | 1,518.75 | 1,518.75 |
| 296 | 1.11.9.1 | Sh-Ls Correction | 3h | 2018-06-08 06:00 | 2018-06-08 09:00 | 291 | 2018-05-18 06:00 | 2018-05-18 09:00 | 3h | 77.91d | 0d | TEAM_2Shift_Calendar-1 | Helper [200%]; Fitter | 9h | 506.25 | 506.25 |
| 297 | 1.11.9.2 | Sh-Ls Correction | 3h | 2018-06-08 09:00 | 2018-06-08 12:00 | 296 | 2018-05-18 09:00 | 2018-05-18 12:00 | 3h | 77.91d | 0d | TEAM_2Shift_Calendar-1 | Helper [200%]; Fitter | 9h | 506.25 | 506.25 |
| 298 | 1.11.9.3 | Sh-Ls Correction | 3h | 2018-06-08 12:00 | 2018-06-08 15:00 | 297 | 2018-05-18 12:00 | 2018-05-18 15:00 | 3h | 77.91d |  | TEAM_2Shift_Calendar-1 | Helper [200%]; Fitter | 9h | 506.25 | 506.25 |
| 299 | 1.11.10 | **Shell Ls Seams Fit Up** | 1.5d | 2018-06-08 15:00 | 2018-06-11 11:00 |  | 2018-05-18 15:00 | 2018-05-19 11:00 | 1.5d | 77.91d | 0d | TEAM_2Shift_Calendar-1 |  | 32h | 2,050 | 2,050 |
| 300 | 1.11.10.1 | Sh-Ls Fit Up | 4h | 2018-06-08 15:00 | 2018-06-08 19:00 | 295 | 2018-05-18 15:00 | 2018-05-18 19:00 | 4h | 77.91d | 0d | TEAM_2Shift_Calendar-1 |  |  |  |  |
| 301 | 1.11.10.2 | Sh-Ls Fit Up | 4h | 2018-06-08 19:00 | 2018-06-11 07:00 | 300 | 2018-05-18 19:00 | 2018-05-19 07:00 | 4h | 77.91d | 0d | TEAM_2Shift_Calendar-1 | Helper; SMAW Welder; Fitter [200%] | 16h | 1,025 | 1,025 |
| 302 | 1.11.10.3 | Sh-Ls Fit Up | 4h | 2018-06-11 07:00 | 2018-06-11 11:00 | 301 | 2018-05-19 07:00 | 2018-05-19 11:00 | 4h | 77.91d |  | TEAM_2Shift_Calendar-1 | Helper; SMAW Welder; Fitter [200%] | 16h | 1,025 | 1,025 |
| 303 | 1.11.11 | **Sh Ls Welding Arrangement** | 0.75d | 2018-06-11 11:00 | 2018-06-11 17:00 |  | 2018-05-19 11:00 | 2018-05-19 17:00 | 0.75d | 77.91d | 0d | TEAM_2Shift_Calendar-1 |  | 12h | 712.5 | 712.5 |
| 304 | 1.11.11.1 | Sh-Ls Weld Arrangement | 2h | 2018-06-11 11:00 | 2018-06-11 13:00 | 299 | 2018-05-19 11:00 | 2018-05-19 13:00 | 2h | 77.91d | 0d | TEAM_2Shift_Calendar-1 | Helper; Fitter | 4h | 237.5 | 237.5 |
| 305 | 1.11.11.2 | Sh-Ls Weld Arrangement | 2h | 2018-06-11 13:00 | 2018-06-11 15:00 | 304 | 2018-05-19 13:00 | 2018-05-19 15:00 | 2h | 77.91d | 0d | TEAM_2Shift_Calendar-1 | Helper; Fitter | 4h | 237.5 | 237.5 |
| 306 | 1.11.11.3 | Sh-Ls Weld Arrangement | 2h | 2018-06-11 15:00 | 2018-06-11 17:00 | 305 | 2018-05-19 15:00 | 2018-05-19 17:00 | 2h | 77.91d |  | TEAM_2Shift_Calendar-1 | Helper; Fitter | 4h | 237.5 | 237.5 |
| 307 | 1.11.12 | **Shell Long Seam Outer Welding** | 2.25d | 2018-06-11 17:00 | 2018-06-12 19:00 |  | 2018-05-19 17:00 | 2018-05-21 19:00 | 2.25d | 77.91d | 0d | TEAM_2Shift_Calendar-1 |  | 36h | 2,137.5 | 2,137.5 |
| 308 | 1.11.12.1 | Sh-Ls Welding- Top Side | 6h | 2018-06-11 17:00 | 2018-06-12 07:00 | 303 | 2018-05-19 17:00 | 2018-05-21 07:00 | 6h | 77.91d | 0d | TEAM_2Shift_Calendar-1 | Helper; SMAW Welder | 12h | 712.5 | 712.5 |
| 309 | 1.11.12.2 | Sh-Ls Welding- Top Side | 6h | 2018-06-12 07:00 | 2018-06-12 13:00 | 308 | 2018-05-21 07:00 | 2018-05-21 13:00 | 6h | 77.91d | 0d | TEAM_2Shift_Calendar-1 | Helper; SMAW Welder | 12h | 712.5 | 712.5 |
| 310 | 1.11.12.3 | Sh-Ls Welding- Top Side | 6h | 2018-06-12 13:00 | 2018-06-12 19:00 | 309 | 2018-05-21 13:00 | 2018-05-21 19:00 | 6h | 77.91d |  | TEAM_2Shift_Calendar-1 | Helper; SMAW Welder | 12h | 712.5 | 712.5 |
| 311 | 1.11.13 | **Sh Ls Back Chip** | 0.75d | 2018-06-12 19:00 | 2018-06-13 09:00 |  | 2018-05-21 19:00 | 2018-05-22 09:00 | 0.75d | 77.91d | 0d | TEAM_2Shift_Calendar-1 |  | 6h | 337.5 | 337.5 |
| 312 | 1.11.13.1 | Sh-Ls Welding- Back Chip | 2h | 2018-06-12 19:00 | 2018-06-12 21:00 | 307 | 2018-05-21 19:00 | 2018-05-21 21:00 | 2h | 77.91d | 0d | TEAM_2Shift_Calendar-1 | Grinder | 2h | 112.5 | 112.5 |
| 313 | 1.11.13.2 | Sh-Ls Welding- Back Chip | 2h | 2018-06-12 21:00 | 2018-06-13 07:00 | 312 | 2018-05-21 21:00 | 2018-05-22 07:00 | 2h | 77.91d | 0d | TEAM_2Shift_Calendar-1 | Grinder | 2h | 112.5 | 112.5 |
| 314 | 1.11.13.3 | Sh-Ls Welding- Back Chip | 2h | 2018-06-13 07:00 | 2018-06-13 09:00 | 313 | 2018-05-22 07:00 | 2018-05-22 09:00 | 2h | 77.91d |  | TEAM_2Shift_Calendar-1 | Grinder | 2h | 112.5 | 112.5 |

| ID | WBS | Task | Duration | Start | Finish | Predecessors | Baseline start | Baseline finish | Baseline duration | Total slack | Free slack | Calendar | Resources | Work | Cost | Baseline cost |
| --- | --- | --- | --- | --- | --- | --- | --- | --- | --- | --- | --- | --- | --- | --- | --- | --- |
| 315 | 1.11.14 | **Sh Ls Inner Welding** | 1.78d | 2018-06-13 09:00 | 2018-06-14 07:15 |  | 2018-05-22 09:00 | 2018-05-23 07:15 | 1.78d | 77.91d | 0d | TEAM_2Shift_Calendar-1 |  | 28.5h | 1,692.19 | 1,692.19 |
| 316 | 1.11.14.1 | Sh-Ls Inner Welding | 4.75h | 2018-06-13 09:00 | 2018-06-13 13:45 | 311 | 2018-05-22 09:00 | 2018-05-22 13:45 | 4.75h | 77.91d | 0d | TEAM_2Shift_Calendar-1 | Helper; SMAW Welder | 9.5h | 564.06 | 564.06 |
| 317 | 1.11.14.2 | Sh-Ls Inner Welding | 4.75h | 2018-06-13 13:45 | 2018-06-13 18:30 | 316 | 2018-05-22 13:45 | 2018-05-22 18:30 | 4.75h | 77.91d | 0d | TEAM_2Shift_Calendar-1 | Helper; SMAW Welder | 9.5h | 564.06 | 564.06 |
| 318 | 1.11.14.3 | Sh-Ls Inner Welding | 4.75h | 2018-06-13 18:30 | 2018-06-14 07:15 | 317 | 2018-05-22 18:30 | 2018-05-23 07:15 | 4.75h | 77.91d |  | TEAM_2Shift_Calendar-1 | Helper; SMAW Welder | 9.5h | 564.06 | 564.06 |
| 319 | 1.11.15 | **Sh Inner Ls Flush Grinding** | 0.38d | 2018-06-14 07:15 | 2018-06-14 10:15 |  | 2018-05-23 07:15 | 2018-05-23 10:15 | 0.38d | 77.91d | 0d | TEAM_2Shift_Calendar-1 |  | 3h | 168.75 | 168.75 |
| 320 | 1.11.15.1 | Sh Inner Flush Grinding | 1h | 2018-06-14 07:15 | 2018-06-14 08:15 | 315 | 2018-05-23 07:15 | 2018-05-23 08:15 | 1h | 77.91d | 0d | TEAM_2Shift_Calendar-1 | Grinder | 1h | 56.25 | 56.25 |
| 321 | 1.11.15.2 | Sh Inner Flush Grinding | 1h | 2018-06-14 08:15 | 2018-06-14 09:15 | 320 | 2018-05-23 08:15 | 2018-05-23 09:15 | 1h | 77.91d | 0d | TEAM_2Shift_Calendar-1 | Grinder | 1h | 56.25 | 56.25 |
| 322 | 1.11.15.3 | Sh Inner Flush Grinding | 1h | 2018-06-14 09:15 | 2018-06-14 10:15 | 321 | 2018-05-23 09:15 | 2018-05-23 10:15 | 1h | 77.91d |  | TEAM_2Shift_Calendar-1 | Grinder | 1h | 56.25 | 56.25 |
| 323 | 1.11.16 | **Sh Ls Radiography** | 3d | 2018-06-14 10:15 | 2018-06-15 18:15 |  | 2018-05-23 10:15 | 2018-05-24 18:15 | 3d | 77.91d | 0d | TEAM_2Shift_Calendar-1 |  | 24h |  |  |
| 324 | 1.11.16.1 | Sh Ls Welding Rt | 1d | 2018-06-14 10:15 | 2018-06-14 18:15 | 319 | 2018-05-23 10:15 | 2018-05-23 18:15 | 1d | 77.91d | 0d | TEAM_2Shift_Calendar-1 | SC Radiography (Work) | 8h |  |  |
| 325 | 1.11.16.2 | Sh Ls Welding Rt | 1d | 2018-06-14 18:15 | 2018-06-15 10:15 | 324 | 2018-05-23 18:15 | 2018-05-24 10:15 | 1d | 77.91d | 0d | TEAM_2Shift_Calendar-1 | SC Radiography (Work) | 8h |  |  |
| 326 | 1.11.16.3 | Sh Ls Welding Rt | 1d | 2018-06-15 10:15 | 2018-06-15 18:15 | 325 | 2018-05-24 10:15 | 2018-05-24 18:15 | 1d | 77.91d |  | TEAM_2Shift_Calendar-1 | SC Radiography (Work) | 8h |  |  |
| 327 | 1.11.17 | **Shell Re Rolling** | 1.12d | 2018-06-15 18:15 | 2018-06-16 11:15 |  | 2018-05-24 18:15 | 2018-05-25 11:15 | 1.12d | 77.91d | 0d | TEAM_2Shift_Calendar-1 |  | 27h | 1,687.5 | 1,687.5 |
| 328 | 1.11.17.1 | Sh Re Rolling | 3h | 2018-06-15 18:15 | 2018-06-15 21:15 | 323 | 2018-05-24 18:15 | 2018-05-24 21:15 | 3h | 77.91d | 0d | TEAM_2Shift_Calendar-1 | Helper; Fitter [200%] | 9h | 562.5 | 562.5 |
| 329 | 1.11.17.2 | Sh Re Rolling | 3h | 2018-06-15 21:15 | 2018-06-16 08:15 | 328 | 2018-05-24 21:15 | 2018-05-25 08:15 | 3h | 77.91d | 0d | TEAM_2Shift_Calendar-1 | Helper; Fitter [200%] | 9h | 562.5 | 562.5 |
| 330 | 1.11.17.3 | Sh Re Rolling | 3h | 2018-06-16 08:15 | 2018-06-16 11:15 | 329 | 2018-05-25 08:15 | 2018-05-25 11:15 | 3h | 77.91d |  | TEAM_2Shift_Calendar-1 | Helper; Fitter [200%] | 9h | 562.5 | 562.5 |
| 331 | 1.11.18 | **Sh Plate Cs Ep Correction** | 0.75d | 2018-06-16 11:15 | 2018-06-16 17:15 |  | 2018-05-25 11:15 | 2018-05-25 17:15 | 0.75d | 77.91d | 0d | TEAM_2Shift_Calendar-1 |  | 12h | 712.5 | 712.5 |
| 332 | 1.11.18.1 | Sh Cir Ep Correction | 2h | 2018-06-16 11:15 | 2018-06-16 13:15 | 327 | 2018-05-25 11:15 | 2018-05-25 13:15 | 2h | 77.91d | 0d | TEAM_2Shift_Calendar-1 | Helper; Fitter | 4h | 237.5 | 237.5 |
| 333 | 1.11.18.2 | Sh Cir Ep Correction | 2h | 2018-06-16 13:15 | 2018-06-16 15:15 | 332 | 2018-05-25 13:15 | 2018-05-25 15:15 | 2h | 77.91d | 0d | TEAM_2Shift_Calendar-1 | Helper; Fitter | 4h | 237.5 | 237.5 |
| 334 | 1.11.18.3 | Sh Cir Ep Correction | 2h | 2018-06-16 15:15 | 2018-06-16 17:15 | 333 | 2018-05-25 15:15 | 2018-05-25 17:15 | 2h | 77.91d |  | TEAM_2Shift_Calendar-1 | Helper; Fitter | 4h | 237.5 | 237.5 |
| 335 | 1.11.19 | **Sh Cir Seam First Fit Up** | 0.62d | 2018-06-16 17:15 | 2018-06-18 06:15 |  | 2018-05-25 17:15 | 2018-05-28 06:15 | 0.62d | 77.91d | 0d | TEAM_2Shift_Calendar-1 |  | 18h | 1,143.75 | 1,143.75 |
| 336 | 1.11.19.1 | Sh Cs Fit Up [LS1+LS2] | 4h | 2018-06-16 17:15 | 2018-06-16 21:15 | 331 | 2018-05-25 17:15 | 2018-05-25 21:15 | 4h | 77.91d | 0d | TEAM_2Shift_Calendar-1 | Helper; SMAW Welder; Fitter [200%] | 16h | 1,025 | 1,025 |
| 337 | 1.11.19.2 | Sh Cs Tack Dp Check [LS1+LS2] | 1h | 2018-06-16 21:15 | 2018-06-18 06:15 | 336 | 2018-05-25 21:15 | 2018-05-28 06:15 | 1h | 77.91d |  | TEAM_2Shift_Calendar-1 | Helper; Fitter | 2h | 118.75 | 118.75 |
| 338 | 1.11.20 | **Sh Cir Seam First Welding** | 1.94d | 2018-06-18 06:15 | 2018-06-18 21:45 |  | 2018-05-28 06:15 | 2018-05-28 21:45 | 1.94d | 77.91d | 0d | TEAM_2Shift_Calendar-1 |  | 27h | 1,590.62 | 1,590.62 |
| 339 | 1.11.20.1 | Sh Cs Welding Transfere | 2h | 2018-06-18 06:15 | 2018-06-18 08:15 | 335 | 2018-05-28 06:15 | 2018-05-28 08:15 | 2h | 77.91d | 0d | TEAM_2Shift_Calendar-1 | Helper; Fitter | 4h | 237.5 | 237.5 |
| 340 | 1.11.20.2 | Sh Cs Welding Outer [LS1+LS2] | 4.75h | 2018-06-18 08:15 | 2018-06-18 13:00 | 339 | 2018-05-28 08:15 | 2018-05-28 13:00 | 4.75h | 77.91d | 0d | TEAM_2Shift_Calendar-1 | Helper; SMAW Welder | 9.5h | 564.06 | 564.06 |
| 341 | 1.11.20.3 | Sh Cs Welding Back Chip [LS1+LS2] | 2h | 2018-06-18 13:00 | 2018-06-18 15:00 | 340 | 2018-05-28 13:00 | 2018-05-28 15:00 | 2h | 77.91d | 0d | TEAM_2Shift_Calendar-1 | Grinder | 2h | 112.5 | 112.5 |
| 342 | 1.11.20.4 | Sh Cs Inner Welding [LS1+LS2] | 4.75h | 2018-06-18 15:00 | 2018-06-18 19:45 | 341 | 2018-05-28 15:00 | 2018-05-28 19:45 | 4.75h | 77.91d | 0d | TEAM_2Shift_Calendar-1 | Helper; SMAW Welder | 9.5h | 564.06 | 564.06 |
| 343 | 1.11.20.5 | Sh Cs Flush Grinding [LS1+LS2] | 2h | 2018-06-18 19:45 | 2018-06-18 21:45 | 342 | 2018-05-28 19:45 | 2018-05-28 21:45 | 2h | 77.91d |  | TEAM_2Shift_Calendar-1 | Grinder | 2h | 112.5 | 112.5 |

| ID | WBS | Task | Duration | Start | Finish | Predecessors | Baseline start | Baseline finish | Baseline duration | Total slack | Free slack | Calendar | Resources | Work | Cost | Baseline cost |
| --- | --- | --- | --- | --- | --- | --- | --- | --- | --- | --- | --- | --- | --- | --- | --- | --- |
| 344 | 1.11.21 | **Sh Cir Seam Second Fitup** | 0.62d | 2018-06-18 21:45 | 2018-06-19 10:45 |  | 2018-05-28 21:45 | 2018-05-29 10:45 | 0.62d | 77.91d | 0d | TEAM_2Shift_Calendar-1 |  | 18h | 1,143.75 | 1,143.75 |
| 345 | 1.11.21.1 | Sh Cs Fit Up [LS2+LS3] | 4h | 2018-06-18 21:45 | 2018-06-19 09:45 | 338 | 2018-05-28 21:45 | 2018-05-29 09:45 | 4h | 77.91d | 0d | TEAM_2Shift_Calendar-1 | Helper; SMAW Welder; Fitter [200%] | 16h | 1,025 | 1,025 |
| 346 | 1.11.21.2 | Sh Cs Tack Dp Check [LS2+LS3] | 1h | 2018-06-19 09:45 | 2018-06-19 10:45 | 345 | 2018-05-29 09:45 | 2018-05-29 10:45 | 1h | 77.91d |  | TEAM_2Shift_Calendar-1 | Helper; Fitter | 2h | 118.75 | 118.75 |
| 347 | 1.11.22 | **Sh Cir Seam Second Welding** | 1.81d | 2018-06-19 10:45 | 2018-06-20 09:15 |  | 2018-05-29 10:45 | 2018-05-30 09:15 | 1.81d | 77.91d | 0d | TEAM_2Shift_Calendar-1 |  | 25h | 1,471.88 | 1,471.88 |
| 348 | 1.11.22.1 | Sh Cs Welding Transfere [LS2+LS3] | 1h | 2018-06-19 10:45 | 2018-06-19 11:45 | 344 | 2018-05-29 10:45 | 2018-05-29 11:45 | 1h | 77.91d | 0d | TEAM_2Shift_Calendar-1 | Helper; Fitter | 2h | 118.75 | 118.75 |
| 349 | 1.11.22.2 | Sh Cs Welding Outer [LS2+LS3] | 4.75h | 2018-06-19 11:45 | 2018-06-19 16:30 | 348 | 2018-05-29 11:45 | 2018-05-29 16:30 | 4.75h | 77.91d | 0d | TEAM_2Shift_Calendar-1 | Helper; SMAW Welder | 9.5h | 564.06 | 564.06 |
| 350 | 1.11.22.3 | Sh Cs Welding Back Chip [LS2+LS3] | 2h | 2018-06-19 16:30 | 2018-06-19 18:30 | 349 | 2018-05-29 16:30 | 2018-05-29 18:30 | 2h | 77.91d | 0d | TEAM_2Shift_Calendar-1 | Grinder | 2h | 112.5 | 112.5 |
| 351 | 1.11.22.4 | Sh Cs Inner Welding [LS2+LS3] | 4.75h | 2018-06-19 18:30 | 2018-06-20 07:15 | 350 | 2018-05-29 18:30 | 2018-05-30 07:15 | 4.75h | 77.91d | 0d | TEAM_2Shift_Calendar-1 | Helper; SMAW Welder | 9.5h | 564.06 | 564.06 |
| 352 | 1.11.22.5 | Sh Cs Flush Grinding [LS2+LS3] | 2h | 2018-06-20 07:15 | 2018-06-20 09:15 | 351 | 2018-05-30 07:15 | 2018-05-30 09:15 | 2h | 77.91d |  | TEAM_2Shift_Calendar-1 | Grinder | 2h | 112.5 | 112.5 |
| 353 | 1.11.23 | **Sh Final Length Correction** | 1.25d | 2018-06-20 09:15 | 2018-06-20 19:15 |  | 2018-05-30 09:15 | 2018-05-30 19:15 | 1.25d | 77.91d | 0d | TEAM_2Shift_Calendar-1 |  | 20h | 1,193.75 | 1,193.75 |
| 354 | 1.11.23.1 | Sh Length Marking | 3h | 2018-06-20 09:15 | 2018-06-20 12:15 | 347 | 2018-05-30 09:15 | 2018-05-30 12:15 | 3h | 77.91d | 0d | TEAM_2Shift_Calendar-1 | Fitter [200%] | 6h | 412.5 | 412.5 |
| 355 | 1.11.23.2 | Length Cutting | 3h | 2018-06-20 12:15 | 2018-06-20 15:15 | 354 | 2018-05-30 12:15 | 2018-05-30 15:15 | 3h | 77.91d | 0d | TEAM_2Shift_Calendar-1 | Helper; Gas Cutter | 6h | 356.25 | 356.25 |
| 356 | 1.11.23.3 | Grinding & Ep | 4h | 2018-06-20 15:15 | 2018-06-20 19:15 | 355 | 2018-05-30 15:15 | 2018-05-30 19:15 | 4h | 77.91d |  | TEAM_2Shift_Calendar-1 | Helper; Grinder | 8h | 425 | 425 |
| 357 | 1.11.24 | **Sh Cir Seam Fitup Flg1** | 0.62d | 2018-06-20 19:15 | 2018-06-21 08:15 |  | 2018-06-08 09:00 | 2018-06-08 14:00 | 0.62d | 77.91d | 0d | TEAM_2Shift_Calendar-1 |  | 18h | 1,143.75 | 1,143.75 |
| 358 | 1.11.24.1 | Sh Cs Fit Up Flg CS1 | 4h | 2018-06-20 19:15 | 2018-06-21 07:15 | 353, 32 | 2018-06-08 09:00 | 2018-06-08 13:00 | 4h | 77.91d | 0d | TEAM_2Shift_Calendar-1 | Helper; SMAW Welder; Forging Non-Std (Cost) [0.1%]; Fitter [200%] | 16h | 1,025 | 1,025 |
| 359 | 1.11.24.2 | Sh Cs Tack Dp Check Flg CS1 | 1h | 2018-06-21 07:15 | 2018-06-21 08:15 | 358 | 2018-06-08 13:00 | 2018-06-08 14:00 | 1h | 77.91d |  | TEAM_2Shift_Calendar-1 | Helper; Fitter | 2h | 118.75 | 118.75 |
| 360 | 1.11.25 | **Sh Cir Seam Welding Flg1** | 1.94d | 2018-06-21 08:15 | 2018-06-22 07:45 |  | 2018-06-08 14:00 | 2018-06-11 13:30 | 1.94d | 77.91d | 0d | TEAM_2Shift_Calendar-1 |  | 27h | 1,590.62 | 1,590.62 |
| 361 | 1.11.25.1 | Sh Cs Welding Transfere | 2h | 2018-06-21 08:15 | 2018-06-21 10:15 | 357 | 2018-06-08 14:00 | 2018-06-08 16:00 | 2h | 77.91d | 0d | TEAM_2Shift_Calendar-1 | Helper; Fitter | 4h | 237.5 | 237.5 |
| 362 | 1.11.25.2 | Sh Cs Welding Outer Flg1 | 4.75h | 2018-06-21 10:15 | 2018-06-21 15:00 | 361 | 2018-06-08 16:00 | 2018-06-08 20:45 | 4.75h | 77.91d | 0d | TEAM_2Shift_Calendar-1 | Helper; SMAW Welder | 9.5h | 564.06 | 564.06 |
| 363 | 1.11.25.3 | Sh Cs Welding Back Chip Flg1 | 2h | 2018-06-21 15:00 | 2018-06-21 17:00 | 362 | 2018-06-08 20:45 | 2018-06-11 06:45 | 2h | 77.91d | 0d | TEAM_2Shift_Calendar-1 | Grinder | 2h | 112.5 | 112.5 |
| 364 | 1.11.25.4 | Sh Cs Inner Welding Flg1 | 4.75h | 2018-06-21 17:00 | 2018-06-21 21:45 | 363 | 2018-06-11 06:45 | 2018-06-11 11:30 | 4.75h | 77.91d | 0d | TEAM_2Shift_Calendar-1 | Helper; SMAW Welder | 9.5h | 564.06 | 564.06 |
| 365 | 1.11.25.5 | Sh Cs Flush Grinding Flg1 | 2h | 2018-06-21 21:45 | 2018-06-22 07:45 | 364 | 2018-06-11 11:30 | 2018-06-11 13:30 | 2h | 77.91d |  | TEAM_2Shift_Calendar-1 | Grinder | 2h | 112.5 | 112.5 |
| 366 | 1.11.26 | **Sh Cs Fit Up Flg2** | 0.38d | 2018-06-22 07:45 | 2018-06-22 10:45 |  | 2018-06-11 13:30 | 2018-06-11 16:30 | 0.38d | 77.91d | 0d | TEAM_2Shift_Calendar-1 |  | 10h | 631.25 | 631.25 |
| 367 | 1.11.26.1 | Sh Cs Fit Up Flg2 | 2h | 2018-06-22 07:45 | 2018-06-22 09:45 | 360, 32 | 2018-06-11 13:30 | 2018-06-11 15:30 | 2h | 77.91d | 0d | TEAM_2Shift_Calendar-1 | Helper; SMAW Welder; Forging Non-Std (Cost) [0.1%]; Fitter [200%] | 8h | 512.5 | 512.5 |
| 368 | 1.11.26.2 | Sh Cs Tack Dp Check Flg2 | 1h | 2018-06-22 09:45 | 2018-06-22 10:45 | 367 | 2018-06-11 15:30 | 2018-06-11 16:30 | 1h | 77.91d |  | TEAM_2Shift_Calendar-1 | Helper; Fitter | 2h | 118.75 | 118.75 |

| ID | WBS | Task | Duration | Start | Finish | Predecessors | Baseline start | Baseline finish | Baseline duration | Total slack | Free slack | Calendar | Resources | Work | Cost | Baseline cost |
| --- | --- | --- | --- | --- | --- | --- | --- | --- | --- | --- | --- | --- | --- | --- | --- | --- |
| 369 | 1.11.27 | **Sh Cs Welding Flg2** | 1.69d | 2018-06-22 10:45 | 2018-06-25 08:15 |  | 2018-06-11 16:30 | 2018-06-12 14:00 | 1.69d | 77.91d | 0d | TEAM_2Shift_Calendar-1 |  | 25h | 1,478.12 | 1,478.12 |
| 370 | 1.11.27.1 | Sh Cs Welding Transfere Flg2 | 2h | 2018-06-22 10:45 | 2018-06-22 12:45 | 366 | 2018-06-11 16:30 | 2018-06-11 18:30 | 2h | 77.91d | 0d | TEAM_2Shift_Calendar-1 | Helper; Fitter | 4h | 237.5 | 237.5 |
| 371 | 1.11.27.2 | Sh Cs Welding Outer Flg2 | 4.75h | 2018-06-22 12:45 | 2018-06-22 17:30 | 370 | 2018-06-11 18:30 | 2018-06-12 07:15 | 4.75h | 77.91d | 0d | TEAM_2Shift_Calendar-1 | Helper; SMAW Welder | 9.5h | 564.06 | 564.06 |
| 372 | 1.11.27.3 | Sh Cs Welding Back Chip Flg2 | 1h | 2018-06-22 17:30 | 2018-06-22 18:30 | 371 | 2018-06-12 07:15 | 2018-06-12 08:15 | 1h | 77.91d | 0d | TEAM_2Shift_Calendar-1 | Grinder | 1h | 56.25 | 56.25 |
| 373 | 1.11.27.4 | Sh Cs Inner Welding Flg2 | 4.75h | 2018-06-22 18:30 | 2018-06-25 07:15 | 372 | 2018-06-12 08:15 | 2018-06-12 13:00 | 4.75h | 77.91d | 0d | TEAM_2Shift_Calendar-1 | Helper; SMAW Welder | 9.5h | 564.06 | 564.06 |
| 374 | 1.11.27.5 | Sh Cs Flush Grinding Flg2 | 1h | 2018-06-25 07:15 | 2018-06-25 08:15 | 373 | 2018-06-12 13:00 | 2018-06-12 14:00 | 1h | 77.91d |  | TEAM_2Shift_Calendar-1 | Grinder | 1h | 56.25 | 56.25 |
| 375 | 1.11.28 | **Nozzle Orientation Marking** | 0.5d | 2018-06-25 08:15 | 2018-06-25 12:15 |  | 2018-06-12 14:00 | 2018-06-12 18:00 | 0.5d | 77.91d | 0d | TEAM_2Shift_Calendar-1 |  | 8h | 550 | 550 |
| 376 | 1.11.28.1 | Sh-Noz Orientaion Marking | 2h | 2018-06-25 08:15 | 2018-06-25 10:15 | 369 | 2018-06-12 14:00 | 2018-06-12 16:00 | 2h | 77.91d | 0d | TEAM_2Shift_Calendar-1 | Fitter [200%] | 4h | 275 | 275 |
| 377 | 1.11.28.2 | Sh-Noz Marking N1 10" | 1h | 2018-06-25 10:15 | 2018-06-25 11:15 | 376 | 2018-06-12 16:00 | 2018-06-12 17:00 | 1h | 77.91d | 0d | TEAM_2Shift_Calendar-1 | Fitter [200%] | 2h | 137.5 | 137.5 |
| 378 | 1.11.28.3 | Sh-Noz Marking | 1h | 2018-06-25 11:15 | 2018-06-25 12:15 | 377 | 2018-06-12 17:00 | 2018-06-12 18:00 | 1h | 77.91d |  | TEAM_2Shift_Calendar-1 | Fitter [200%] | 2h | 137.5 | 137.5 |
| 379 | 1.11.29 | **Sh Nozzle Openning** | 0.75d | 2018-06-25 12:15 | 2018-06-25 18:15 |  | 2018-06-12 18:00 | 2018-06-13 08:00 | 0.75d | 77.91d | 0d | TEAM_2Shift_Calendar-1 |  | 12h | 712.5 | 712.5 |
| 380 | 1.11.29.1 | 250 NB NOZ N1 - 1 NO | 2h | 2018-06-25 12:15 | 2018-06-25 14:15 | 375 | 2018-06-12 18:00 | 2018-06-12 20:00 | 2h | 77.91d | 0d | TEAM_2Shift_Calendar-1 | Helper; Gas Cutter | 4h | 237.5 | 237.5 |
| 381 | 1.11.29.2 | 250 NB NOZ N2 - 1 NO | 2h | 2018-06-25 14:15 | 2018-06-25 16:15 | 380 | 2018-06-12 20:00 | 2018-06-12 22:00 | 2h | 77.91d | 0d | TEAM_2Shift_Calendar-1 | Helper; Gas Cutter | 4h | 237.5 | 237.5 |
| 382 | 1.11.29.3 | Inspection | 2h | 2018-06-25 16:15 | 2018-06-25 18:15 | 381 | 2018-06-13 06:00 | 2018-06-13 08:00 | 2h | 77.91d |  | TEAM_2Shift_Calendar-1 | Helper; Gas Cutter | 4h | 237.5 | 237.5 |
| 383 | 1.11.30 | **Sh Nozzle Ep** | 0.38d | 2018-06-25 18:15 | 2018-06-25 21:15 |  | 2018-06-13 08:00 | 2018-06-13 11:00 | 0.38d | 77.91d | 0d | TEAM_2Shift_Calendar-1 |  | 4h | 231.25 | 231.25 |
| 384 | 1.11.30.1 | 250 NB NOZ N1 - 1 NO | 1h | 2018-06-25 18:15 | 2018-06-25 19:15 | 379 | 2018-06-13 08:00 | 2018-06-13 09:00 | 1h | 77.91d | 0d | TEAM_2Shift_Calendar-1 | Grinder | 1h | 56.25 | 56.25 |
| 385 | 1.11.30.2 | 250 NB NOZ N2 - 1 NO | 1h | 2018-06-25 19:15 | 2018-06-25 20:15 | 384 | 2018-06-13 09:00 | 2018-06-13 10:00 | 1h | 77.91d | 0d | TEAM_2Shift_Calendar-1 | Grinder | 1h | 56.25 | 56.25 |
| 386 | 1.11.30.3 | Inspection | 1h | 2018-06-25 20:15 | 2018-06-25 21:15 | 385 | 2018-06-13 10:00 | 2018-06-13 11:00 | 1h | 77.91d |  | TEAM_2Shift_Calendar-1 | Helper; Fitter | 2h | 118.75 | 118.75 |
| 387 | 1.11.31 | **Sh Nozzzle Fit Up** | 0.62d | 2018-06-25 21:15 | 2018-06-26 10:15 |  | 2018-06-13 11:00 | 2018-06-13 16:00 | 0.62d | 77.91d | 0d | TEAM_2Shift_Calendar-1 |  | 17h | 1,093.75 | 1,093.75 |
| 388 | 1.11.31.1 | 250 NB NOZ N1 - 1 NO | 2h | 2018-06-25 21:15 | 2018-06-26 07:15 | 383 | 2018-06-13 11:00 | 2018-06-13 13:00 | 2h | 77.91d | 0d | TEAM_2Shift_Calendar-1 | Helper; SMAW Welder; Fitter [200%] | 8h | 512.5 | 512.5 |
| 389 | 1.11.31.2 | 250 NB NOZ N2 - 1 NO | 2h | 2018-06-26 07:15 | 2018-06-26 09:15 | 388 | 2018-06-13 13:00 | 2018-06-13 15:00 | 2h | 77.91d | 0d | TEAM_2Shift_Calendar-1 | Helper; SMAW Welder; Fitter [200%] | 8h | 512.5 | 512.5 |
| 390 | 1.11.31.3 | Dp Check | 1h | 2018-06-26 09:15 | 2018-06-26 10:15 | 389 | 2018-06-13 15:00 | 2018-06-13 16:00 | 1h | 77.91d |  | TEAM_2Shift_Calendar-1 | Fitter | 1h | 68.75 | 68.75 |
| 391 | 1.11.32 | **Sh Nozzle Fit Up Inspection** | 0.56d | 2018-06-26 10:15 | 2018-06-26 14:45 |  | 2018-06-13 16:00 | 2018-06-13 20:30 | 0.56d | 77.91d | 0d | TEAM_2Shift_Calendar-1 |  | 9h | 534.38 | 534.38 |
| 392 | 1.11.32.1 | 250 NB NOZ N1 - 1 NO | 2h | 2018-06-26 10:15 | 2018-06-26 12:15 | 387 | 2018-06-13 16:00 | 2018-06-13 18:00 | 2h | 77.91d | 0d | TEAM_2Shift_Calendar-1 | Helper; Fitter | 4h | 237.5 | 237.5 |
| 393 | 1.11.32.2 | 250 NB NOZ N2 - 1 NO | 2h | 2018-06-26 12:15 | 2018-06-26 14:15 | 392 | 2018-06-13 18:00 | 2018-06-13 20:00 | 2h | 77.91d | 0d | TEAM_2Shift_Calendar-1 | Helper; Fitter | 4h | 237.5 | 237.5 |
| 394 | 1.11.32.3 | Dp Check | 0.5h | 2018-06-26 14:15 | 2018-06-26 14:45 | 393 | 2018-06-13 20:00 | 2018-06-13 20:30 | 0.5h | 77.91d |  | TEAM_2Shift_Calendar-1 | Helper; Fitter | 1h | 59.38 | 59.38 |

| ID | WBS | Task | Duration | Start | Finish | Predecessors | Baseline start | Baseline finish | Baseline duration | Total slack | Free slack | Calendar | Resources | Work | Cost | Baseline cost |
| --- | --- | --- | --- | --- | --- | --- | --- | --- | --- | --- | --- | --- | --- | --- | --- | --- |
| 395 | 1.11.33 | **Sh Nozzle Welding** | 2.12d | 2018-06-26 14:45 | 2018-06-27 15:45 |  | 2018-06-13 20:30 | 2018-06-14 21:30 | 2.12d | 77.91d | 0d | TEAM_2Shift_Calendar-1 |  | 32h | 1,781.25 | 1,781.25 |
| 396 | 1.11.33.1 | Sh Noz Welding Arrangement | 2h | 2018-06-26 14:45 | 2018-06-26 16:45 | 391 | 2018-06-13 20:30 | 2018-06-14 06:30 | 2h | 77.91d | 0d | TEAM_2Shift_Calendar-1 | Store | 2h |  |  |
| 397 | 1.11.33.2 | Sh-Noz Welding N1 | 4h | 2018-06-26 16:45 | 2018-06-26 20:45 | 396 | 2018-06-14 06:30 | 2018-06-14 10:30 | 4h | 77.91d | 0d | TEAM_2Shift_Calendar-1 | Helper; SMAW Welder | 8h | 475 | 475 |
| 398 | 1.11.33.3 | Sh-Noz Welding N2 | 4h | 2018-06-26 20:45 | 2018-06-27 08:45 | 397 | 2018-06-14 10:30 | 2018-06-14 14:30 | 4h | 77.91d | 0d | TEAM_2Shift_Calendar-1 | Helper; SMAW Welder | 8h | 475 | 475 |
| 399 | 1.11.33.4 | Sh Noz Root Dp Check | 1h | 2018-06-27 08:45 | 2018-06-27 09:45 | 398 | 2018-06-14 14:30 | 2018-06-14 15:30 | 1h | 77.91d | 0d | TEAM_2Shift_Calendar-1 | Helper; Fitter | 2h | 118.75 | 118.75 |
| 400 | 1.11.33.5 | Sh-Noz Inner Weld N1 | 3h | 2018-06-27 09:45 | 2018-06-27 12:45 | 399 | 2018-06-14 15:30 | 2018-06-14 18:30 | 3h | 77.91d | 0d | TEAM_2Shift_Calendar-1 | SMAW Welder; Helper | 6h | 356.25 | 356.25 |
| 401 | 1.11.33.6 | Sh-Noz Inner Weld N2 | 3h | 2018-06-27 12:45 | 2018-06-27 15:45 | 400 | 2018-06-14 18:30 | 2018-06-14 21:30 | 3h | 77.91d |  | TEAM_2Shift_Calendar-1 | SMAW Welder; Helper | 6h | 356.25 | 356.25 |
| 402 | 1.11.34 | **Sh Saddle Welding** | 7.12d | 2018-06-27 15:45 | 2018-07-02 08:45 |  | 2018-06-14 21:30 | 2018-06-19 14:30 | 7.12d | 77.91d | 0d | TEAM_2Shift_Calendar-1 |  | 218h | 13,337.5 | 13,337.5 |
| 403 | 1.11.34.1 | Sh-Saddle Pad Fit Up | 8h | 2018-06-27 15:45 | 2018-06-28 07:45 | 395 | 2018-06-14 21:30 | 2018-06-15 13:30 | 8h | 77.91d | 0d | TEAM_2Shift_Calendar-1 | SMAW Welder; Helper; Fitter [200%] | 32h | 2,050 | 2,050 |
| 404 | 1.11.34.2 | Sh-Saddle Pad Welding | 13h | 2018-06-28 07:45 | 2018-06-28 20:45 | 403 | 2018-06-15 13:30 | 2018-06-16 10:30 | 13h | 77.91d | 0d | TEAM_2Shift_Calendar-1 | Helper [200%]; SMAW Welder [200%] | 52h | 3,087.5 | 3,087.5 |
| 405 | 1.11.34.3 | Sh-Saddle Matching | 4h | 2018-06-28 20:45 | 2018-06-29 08:45 | 404 | 2018-06-16 10:30 | 2018-06-16 14:30 | 4h | 77.91d | 0d | TEAM_2Shift_Calendar-1 | Grinder [200%]; Fitter [200%] | 16h | 1,000 | 1,000 |
| 406 | 1.11.34.4 | Sh-Saddle Fit Up | 12h | 2018-06-29 08:45 | 2018-06-29 20:45 | 405 | 2018-06-16 14:30 | 2018-06-18 10:30 | 12h | 77.91d | 0d | TEAM_2Shift_Calendar-1 | Fitter [200%]; Helper; SMAW Welder | 48h | 3,075 | 3,075 |
| 407 | 1.11.34.5 | Sh-Saddle Welding | 15h | 2018-06-29 20:45 | 2018-06-30 19:45 | 406 | 2018-06-18 10:30 | 2018-06-19 09:30 | 15h | 77.91d | 0d | TEAM_2Shift_Calendar-1 | Helper [200%]; SMAW Welder [200%] | 60h | 3,562.5 | 3,562.5 |
| 408 | 1.11.34.6 | Sh-Saddle Dress Up | 5h | 2018-06-30 19:45 | 2018-07-02 08:45 | 407 | 2018-06-19 09:30 | 2018-06-19 14:30 | 5h | 77.91d |  | TEAM_2Shift_Calendar-1 | Grinder [200%] | 10h | 562.5 | 562.5 |
| 409 | 1.11.35 | **Sh Davit Arm Welding** | 1.44d | 2018-07-02 08:45 | 2018-07-02 20:15 |  | 2018-06-19 14:30 | 2018-06-20 10:00 | 1.44d | 77.91d | 0d | TEAM_2Shift_Calendar-1 |  | 26.5h | 1,618.74 | 1,618.74 |
| 410 | 1.11.35.1 | Sh-Davit Arm Arm Match | 2h | 2018-07-02 08:45 | 2018-07-02 10:45 | 402 | 2018-06-19 14:30 | 2018-06-19 16:30 | 2h | 77.91d | 0d | TEAM_2Shift_Calendar-1 | Grinder; Pipe (Cost) [0.1%]; Fitter | 4h | 250 | 250 |
| 411 | 1.11.35.2 | Sh-Davit Arm Fit Up | 3.5h | 2018-07-02 10:45 | 2018-07-02 14:15 | 410 | 2018-06-19 16:30 | 2018-06-19 20:00 | 3.5h | 77.91d | 0d | TEAM_2Shift_Calendar-1 | Helper; SMAW Welder; Fitter | 10.5h | 656.25 | 656.25 |
| 412 | 1.11.35.3 | Sh-Davit Arm Welding | 6h | 2018-07-02 14:15 | 2018-07-02 20:15 | 411 | 2018-06-19 20:00 | 2018-06-20 10:00 | 6h | 77.91d |  | TEAM_2Shift_Calendar-1 | Helper; SMAW Welder | 12h | 712.5 | 712.5 |
| 413 | 1.11.36 | **Sh Nde Clearence** | 1.12d | 2018-07-02 20:15 | 2018-07-03 13:15 |  | 2018-06-20 10:00 | 2018-06-20 19:00 | 1.12d | 77.91d |  | TEAM_2Shift_Calendar-1 |  | 18h | 1,068.75 | 1,068.75 |
| 414 | 1.11.36.1 | Sh-Sh Nde Clearence | 5h | 2018-07-02 20:15 | 2018-07-03 09:15 | 409 | 2018-06-20 10:00 | 2018-06-20 15:00 | 5h | 77.91d | 0d | TEAM_2Shift_Calendar-1 | Helper; Fitter | 10h | 593.75 | 593.75 |
| 415 | 1.11.36.2 | Tpi Inspection | 4h | 2018-07-03 09:15 | 2018-07-03 13:15 | 414 | 2018-06-20 15:00 | 2018-06-20 19:00 | 4h | 77.91d |  | TEAM_2Shift_Calendar-1 | Helper; Fitter | 8h | 475 | 475 |
| 416 | 1.12 | **Channel Fabrication** | 25.56d | 2018-06-04 17:00 | 2018-06-20 13:30 |  | 2018-05-14 17:00 | 2018-05-30 13:30 | 25.56d | 97.88d | 0d | TEAM_2Shift_Calendar-1 |  | 440h | 25,396.88 | 25,396.88 |
| 417 | 1.12.1 | **Channel Shell Ls Welding** | 1.5d | 2018-06-04 17:00 | 2018-06-05 13:00 |  | 2018-05-14 17:00 | 2018-05-15 13:00 | 1.5d | 97.88d | 0d | TEAM_2Shift_Calendar-1 |  | 24h | 1,181.25 | 1,181.25 |
| 418 | 1.12.1.1 | Ch Plate Trasnfer | 3h | 2018-06-04 17:00 | 2018-06-04 20:00 | 33 | 2018-05-14 17:00 | 2018-05-14 20:00 | 3h | 97.88d | 0d | TEAM_2Shift_Calendar-1 | Plate (Cost) [0.1%]; Store | 3h |  |  |
| 419 | 1.12.1.2 | Ch-Marking | 2h | 2018-06-04 20:00 | 2018-06-04 22:00 | 418 | 2018-05-14 20:00 | 2018-05-14 22:00 | 2h | 97.88d | 0d | TEAM_2Shift_Calendar-1 | Helper [200%]; Fitter | 6h | 337.5 | 337.5 |
| 420 | 1.12.1.3 | Ch-Cutting | 2h | 2018-06-05 06:00 | 2018-06-05 08:00 | 419 | 2018-05-15 06:00 | 2018-05-15 08:00 | 2h | 97.88d | 0d | TEAM_2Shift_Calendar-1 | Helper; Gas Cutter | 4h | 237.5 | 237.5 |
| 421 | 1.12.1.4 | Ch Pl Side Grinding | 2h | 2018-06-05 08:00 | 2018-06-05 10:00 | 420 | 2018-05-15 08:00 | 2018-05-15 10:00 | 2h | 97.88d | 0d | TEAM_2Shift_Calendar-1 | Grinder | 2h | 112.5 | 112.5 |
| 422 | 1.12.1.5 | Ch-Bevelling Cir Side | 2h | 2018-06-05 10:00 | 2018-06-05 12:00 | 421 | 2018-05-15 10:00 | 2018-05-15 12:00 | 2h | 97.88d | 0d | TEAM_2Shift_Calendar-1 | Helper [300%]; Fitter | 8h | 437.5 | 437.5 |
| 423 | 1.12.1.6 | Ch Ep Grinding | 1h | 2018-06-05 12:00 | 2018-06-05 13:00 | 422 | 2018-05-15 12:00 | 2018-05-15 13:00 | 1h | 97.88d |  | TEAM_2Shift_Calendar-1 | Grinder | 1h | 56.25 | 56.25 |

| ID | WBS | Task | Duration | Start | Finish | Predecessors | Baseline start | Baseline finish | Baseline duration | Total slack | Free slack | Calendar | Resources | Work | Cost | Baseline cost |
| --- | --- | --- | --- | --- | --- | --- | --- | --- | --- | --- | --- | --- | --- | --- | --- | --- |
| 424 | 1.12.2 | **Channel Sh Rolling** | 1.25d | 2018-06-05 13:00 | 2018-06-06 07:00 |  | 2018-05-15 13:00 | 2018-05-16 07:00 | 1.25d | 97.88d | 0d | TEAM_2Shift_Calendar-1 |  | 28h | 1,831.25 | 1,831.25 |
| 425 | 1.12.2.1 | Ch-Pre Bend | 2h | 2018-06-05 13:00 | 2018-06-05 15:00 | 417 | 2018-05-15 13:00 | 2018-05-15 15:00 | 2h | 97.88d | 0d | TEAM_2Shift_Calendar-1 | Helper; Fitter [200%] | 6h | 375 | 375 |
| 426 | 1.12.2.2 | Ch-Pre Bend Cut Off | 3h | 2018-06-05 15:00 | 2018-06-05 18:00 | 425 | 2018-05-15 15:00 | 2018-05-15 18:00 | 3h | 97.88d | 0d | TEAM_2Shift_Calendar-1 | Gas Cutter; Fitter [200%] | 9h | 618.75 | 618.75 |
| 427 | 1.12.2.3 | Ch Ls Beveling | 2h | 2018-06-05 18:00 | 2018-06-05 20:00 | 426 | 2018-05-15 18:00 | 2018-05-15 20:00 | 2h | 97.88d | 0d | TEAM_2Shift_Calendar-1 | Fitter [200%] | 4h | 275 | 275 |
| 428 | 1.12.2.4 | Ch-Rolling | 3h | 2018-06-05 20:00 | 2018-06-06 07:00 | 427 | 2018-05-15 20:00 | 2018-05-16 07:00 | 3h | 97.88d |  | TEAM_2Shift_Calendar-1 | Helper; Fitter [200%] | 9h | 562.5 | 562.5 |
| 429 | 1.12.3 | **Ch Shell Ls Fit Up** | 0.75d | 2018-06-06 07:00 | 2018-06-06 13:00 |  | 2018-05-16 07:00 | 2018-05-16 13:00 | 0.75d | 97.88d | 0d | TEAM_2Shift_Calendar-1 |  | 20h | 1,300 | 1,300 |
| 430 | 1.12.3.1 | Ch-Ls Correction | 2h | 2018-06-06 07:00 | 2018-06-06 09:00 | 424 | 2018-05-16 07:00 | 2018-05-16 09:00 | 2h | 97.88d | 0d | TEAM_2Shift_Calendar-1 | Fitter [200%] | 4h | 275 | 275 |
| 431 | 1.12.3.2 | Ch-Ls Fit Up | 4h | 2018-06-06 09:00 | 2018-06-06 13:00 | 430 | 2018-05-16 09:00 | 2018-05-16 13:00 | 4h | 97.88d |  | TEAM_2Shift_Calendar-1 | SMAW Welder; Helper; Fitter [200%] | 16h | 1,025 | 1,025 |
| 432 | 1.12.4 | **Ch Shell Ls Welding** | 1.88d | 2018-06-06 13:00 | 2018-06-07 12:00 |  | 2018-05-16 13:00 | 2018-05-17 12:00 | 1.88d | 97.88d | 0d | TEAM_2Shift_Calendar-1 |  | 33h | 1,937.5 | 1,937.5 |
| 433 | 1.12.4.1 | Ch-Ls Weld Arrangement | 2h | 2018-06-06 13:00 | 2018-06-06 15:00 | 429 | 2018-05-16 13:00 | 2018-05-16 15:00 | 2h | 97.88d | 0d | TEAM_2Shift_Calendar-1 | Helper [200%]; Fitter | 6h | 337.5 | 337.5 |
| 434 | 1.12.4.2 | Ch-Ls Welding- Top Side | 3h | 2018-06-06 15:00 | 2018-06-06 18:00 | 433 | 2018-05-16 15:00 | 2018-05-16 18:00 | 3h | 97.88d | 0d | TEAM_2Shift_Calendar-1 | Helper; SMAW Welder | 6h | 356.25 | 356.25 |
| 435 | 1.12.4.3 | Ch-Ls Welding- Back Chip | 2h | 2018-06-06 18:00 | 2018-06-06 20:00 | 434 | 2018-05-16 18:00 | 2018-05-16 20:00 | 2h | 97.88d | 0d | TEAM_2Shift_Calendar-1 | Helper; Grinder | 4h | 212.5 | 212.5 |
| 436 | 1.12.4.4 | Ch-Ls Inner Welding | 3h | 2018-06-06 20:00 | 2018-06-07 07:00 | 435 | 2018-05-16 20:00 | 2018-05-17 07:00 | 3h | 97.88d | 0d | TEAM_2Shift_Calendar-1 | Helper; SMAW Welder | 6h | 356.25 | 356.25 |
| 437 | 1.12.4.5 | Ch-Ls Innner Flush Grind | 2h | 2018-06-07 07:00 | 2018-06-07 09:00 | 436 | 2018-05-17 07:00 | 2018-05-17 09:00 | 2h | 97.88d | 0d | TEAM_2Shift_Calendar-1 | Grinder | 2h | 112.5 | 112.5 |
| 438 | 1.12.4.6 | Ch Re Rolling | 3h | 2018-06-07 09:00 | 2018-06-07 12:00 | 437 | 2018-05-17 09:00 | 2018-05-17 12:00 | 3h | 97.88d |  | TEAM_2Shift_Calendar-1 | Helper; Fitter [200%] | 9h | 562.5 | 562.5 |
| 439 | 1.12.5 | **Ch Ls Welding Radiography** | 1d | 2018-06-07 12:00 | 2018-06-07 20:00 |  | 2018-05-17 12:00 | 2018-05-17 20:00 | 1d | 97.88d | 0d | TEAM_2Shift_Calendar-1 |  | 8h |  |  |
| 440 | 1.12.5.1 | Ch Ls Welding Rt | 1d | 2018-06-07 12:00 | 2018-06-07 20:00 | 432 | 2018-05-17 12:00 | 2018-05-17 20:00 | 1d | 97.88d |  | TEAM_2Shift_Calendar-1 | SC Radiography (Work) | 8h |  |  |
| 441 | 1.12.6 | **Ch Cs Fit Up Flg1** | 0.88d | 2018-06-07 20:00 | 2018-06-08 11:00 |  | 2018-05-17 20:00 | 2018-05-18 11:00 | 0.88d | 97.88d | 0d | TEAM_2Shift_Calendar-1 |  | 20h | 1,300 | 1,300 |
| 442 | 1.12.6.1 | Ch Cir Ep Correction | 3h | 2018-06-07 20:00 | 2018-06-08 07:00 | 439 | 2018-05-17 20:00 | 2018-05-18 07:00 | 3h | 97.88d | 0d | TEAM_2Shift_Calendar-1 | Forging Non-Std (Cost) [0.1%]; Fitter [200%] | 6h | 412.5 | 412.5 |
| 443 | 1.12.6.2 | Ch Cs Fit Up Flg1 | 3h | 2018-06-08 07:00 | 2018-06-08 10:00 | 442 | 2018-05-18 07:00 | 2018-05-18 10:00 | 3h | 97.88d | 0d | TEAM_2Shift_Calendar-1 | SMAW Welder; Helper; Fitter [200%] | 12h | 768.75 | 768.75 |
| 444 | 1.12.6.3 | Ch Cs Tack Dp Check Flg1 | 1h | 2018-06-08 10:00 | 2018-06-08 11:00 | 443 | 2018-05-18 10:00 | 2018-05-18 11:00 | 1h | 97.88d |  | TEAM_2Shift_Calendar-1 | Helper; Fitter | 2h | 118.75 | 118.75 |
| 445 | 1.12.7 | **Ch Cs Welding Flg1** | 2.25d | 2018-06-08 11:00 | 2018-06-11 13:00 |  | 2018-05-18 11:00 | 2018-05-19 13:00 | 2.25d | 97.88d | 0d | TEAM_2Shift_Calendar-1 |  | 34h | 1,987.5 | 1,987.5 |
| 446 | 1.12.7.1 | Ch Cs Welding Transfere | 2h | 2018-06-08 11:00 | 2018-06-08 13:00 | 441 | 2018-05-18 11:00 | 2018-05-18 13:00 | 2h | 97.88d | 0d | TEAM_2Shift_Calendar-1 | Helper [200%]; Fitter | 6h | 337.5 | 337.5 |
| 447 | 1.12.7.2 | Ch Cs Welding Outer Flg1 | 6h | 2018-06-08 13:00 | 2018-06-08 19:00 | 446 | 2018-05-18 13:00 | 2018-05-18 19:00 | 6h | 97.88d | 0d | TEAM_2Shift_Calendar-1 | Helper; SMAW Welder | 12h | 712.5 | 712.5 |
| 448 | 1.12.7.3 | Ch Cs Welding Back Chip Flg1 | 2h | 2018-06-08 19:00 | 2018-06-08 21:00 | 447 | 2018-05-18 19:00 | 2018-05-18 21:00 | 2h | 97.88d | 0d | TEAM_2Shift_Calendar-1 | Grinder | 2h | 112.5 | 112.5 |
| 449 | 1.12.7.4 | Ch Cs Inner Welding Flg1 | 6h | 2018-06-08 21:00 | 2018-06-11 11:00 | 448 | 2018-05-18 21:00 | 2018-05-19 11:00 | 6h | 97.88d | 0d | TEAM_2Shift_Calendar-1 | Helper; SMAW Welder | 12h | 712.5 | 712.5 |
| 450 | 1.12.7.5 | Ch Cs Flush Grinding Flg1 | 2h | 2018-06-11 11:00 | 2018-06-11 13:00 | 449 | 2018-05-19 11:00 | 2018-05-19 13:00 | 2h | 97.88d |  | TEAM_2Shift_Calendar-1 | Grinder | 2h | 112.5 | 112.5 |

| ID | WBS | Task | Duration | Start | Finish | Predecessors | Baseline start | Baseline finish | Baseline duration | Total slack | Free slack | Calendar | Resources | Work | Cost | Baseline cost |
| --- | --- | --- | --- | --- | --- | --- | --- | --- | --- | --- | --- | --- | --- | --- | --- | --- |
| 451 | 1.12.8 | **Ch Cs Fit Up Flg2** | 1.25d | 2018-06-11 13:00 | 2018-06-12 07:00 |  | 2018-05-19 13:00 | 2018-05-21 07:00 | 1.25d | 97.88d | 0d | TEAM_2Shift_Calendar-1 |  | 27h | 1,687.5 | 1,687.5 |
| 452 | 1.12.8.1 | Ch Length Cutting | 2h | 2018-06-11 13:00 | 2018-06-11 15:00 | 445 | 2018-05-19 13:00 | 2018-05-19 15:00 | 2h | 97.88d | 0d | TEAM_2Shift_Calendar-1 | Helper; Gas Cutter | 4h | 237.5 | 237.5 |
| 453 | 1.12.8.2 | Ch Cir Ep Correction | 3h | 2018-06-11 15:00 | 2018-06-11 18:00 | 452 | 2018-05-19 15:00 | 2018-05-19 18:00 | 3h | 97.88d | 0d | TEAM_2Shift_Calendar-1 | Helper; Fitter | 6h | 356.25 | 356.25 |
| 454 | 1.12.8.3 | Ch Cs Fit Up Flg2 | 4h | 2018-06-11 18:00 | 2018-06-11 22:00 | 453 | 2018-05-19 18:00 | 2018-05-19 22:00 | 4h | 97.88d | 0d | TEAM_2Shift_Calendar-1 | SMAW Welder; Helper; Fitter [200%] | 16h | 1,025 | 1,025 |
| 455 | 1.12.8.4 | Ch Cs Tack Dp Check Flg2 | 1h | 2018-06-12 06:00 | 2018-06-12 07:00 | 454 | 2018-05-21 06:00 | 2018-05-21 07:00 | 1h | 97.88d |  | TEAM_2Shift_Calendar-1 | Fitter | 1h | 68.75 | 68.75 |
| 456 | 1.12.9 | **Ch Cs Flg 2 Welding** | 2.12d | 2018-06-12 07:00 | 2018-06-13 08:00 |  | 2018-05-21 07:00 | 2018-05-22 08:00 | 2.12d | 97.88d | 0d | TEAM_2Shift_Calendar-1 |  | 29h | 1,681.25 | 1,681.25 |
| 457 | 1.12.9.1 | Ch Cs Welding Transfere Flg2 | 2h | 2018-06-12 07:00 | 2018-06-12 09:00 | 451 | 2018-05-21 07:00 | 2018-05-21 09:00 | 2h | 97.88d | 0d | TEAM_2Shift_Calendar-1 | Helper [200%]; Fitter | 6h | 337.5 | 337.5 |
| 458 | 1.12.9.2 | Ch Cs Welding Outer Flg2 | 4h | 2018-06-12 09:00 | 2018-06-12 13:00 | 457 | 2018-05-21 09:00 | 2018-05-21 13:00 | 4h | 97.88d | 0d | TEAM_2Shift_Calendar-1 | Helper; SMAW Welder | 8h | 475 | 475 |
| 459 | 1.12.9.3 | Ch Cs Welding Back Chip Flg2 | 4h | 2018-06-12 13:00 | 2018-06-12 17:00 | 458 | 2018-05-21 13:00 | 2018-05-21 17:00 | 4h | 97.88d | 0d | TEAM_2Shift_Calendar-1 | Grinder | 4h | 225 | 225 |
| 460 | 1.12.9.4 | Ch Cs Inner Welding Flg2 | 4h | 2018-06-12 17:00 | 2018-06-12 21:00 | 459 | 2018-05-21 17:00 | 2018-05-21 21:00 | 4h | 97.88d | 0d | TEAM_2Shift_Calendar-1 | Helper; SMAW Welder | 8h | 475 | 475 |
| 461 | 1.12.9.5 | Ch Cs Flush Grinding Flg2 | 3h | 2018-06-12 21:00 | 2018-06-13 08:00 | 460 | 2018-05-21 21:00 | 2018-05-22 08:00 | 3h | 97.88d |  | TEAM_2Shift_Calendar-1 | Grinder | 3h | 168.75 | 168.75 |
| 462 | 1.12.10 | **Ch Cs Welding Rt Flg1 & 2** | 1d | 2018-06-13 08:00 | 2018-06-13 16:00 |  | 2018-05-22 08:00 | 2018-05-22 16:00 | 1d | 97.88d | 0d | TEAM_2Shift_Calendar-1 |  | 8h |  |  |
| 463 | 1.12.10.1 | Ch Cs Welding Rt | 1d | 2018-06-13 08:00 | 2018-06-13 16:00 | 456 | 2018-05-22 08:00 | 2018-05-22 16:00 | 1d | 97.88d |  | TEAM_2Shift_Calendar-1 | SC Radiography (Work) | 8h |  |  |
| 464 | 1.12.11 | **Channel Noz Marking** | 0.38d | 2018-06-13 16:00 | 2018-06-13 19:00 |  | 2018-05-22 16:00 | 2018-05-22 19:00 | 0.38d | 97.88d | 0d | TEAM_2Shift_Calendar-1 |  | 6h | 356.25 | 356.25 |
| 465 | 1.12.11.1 | Ch- Noz orientation | 1h | 2018-06-13 16:00 | 2018-06-13 17:00 | 462 | 2018-05-22 16:00 | 2018-05-22 17:00 | 1h | 97.88d | 0d | TEAM_2Shift_Calendar-1 | Helper; Fitter | 2h | 118.75 | 118.75 |
| 466 | 1.12.11.2 | Ch-Noz Marking 12''Nb - 2 Nos | 2h | 2018-06-13 17:00 | 2018-06-13 19:00 | 465 | 2018-05-22 17:00 | 2018-05-22 19:00 | 2h | 97.88d |  | TEAM_2Shift_Calendar-1 | Helper; Fitter | 4h | 237.5 | 237.5 |
| 467 | 1.12.12 | **Ch Noz Opening** | 0.5d | 2018-06-13 19:00 | 2018-06-14 07:00 |  | 2018-05-22 19:00 | 2018-05-23 07:00 | 0.5d | 97.88d | 0d | TEAM_2Shift_Calendar-1 |  | 8h | 475 | 475 |
| 468 | 1.12.12.1 | Ch-Noz Openning-Top N4 | 2h | 2018-06-13 19:00 | 2018-06-13 21:00 | 464 | 2018-05-22 19:00 | 2018-05-22 21:00 | 2h | 97.88d | 0d | TEAM_2Shift_Calendar-1 | Helper; Gas Cutter | 4h | 237.5 | 237.5 |
| 469 | 1.12.12.2 | Ch-Noz Openning-Bottom N3 | 2h | 2018-06-13 21:00 | 2018-06-14 07:00 | 468 | 2018-05-22 21:00 | 2018-05-23 07:00 | 2h | 97.88d |  | TEAM_2Shift_Calendar-1 | Helper; Gas Cutter | 4h | 237.5 | 237.5 |
| 470 | 1.12.13 | **Ch Noz Open Ep** | 0.75d | 2018-06-14 07:00 | 2018-06-14 13:00 |  | 2018-05-23 07:00 | 2018-05-23 13:00 | 0.75d | 97.88d | 0d | TEAM_2Shift_Calendar-1 |  | 12h | 637.5 | 637.5 |
| 471 | 1.12.13.1 | Ch-Noz Ep N4 | 3h | 2018-06-14 07:00 | 2018-06-14 10:00 | 467 | 2018-05-23 07:00 | 2018-05-23 10:00 | 3h | 97.88d | 0d | TEAM_2Shift_Calendar-1 | Helper; Grinder | 6h | 318.75 | 318.75 |
| 472 | 1.12.13.2 | Ch-Noz Ep N3 | 3h | 2018-06-14 10:00 | 2018-06-14 13:00 | 471 | 2018-05-23 10:00 | 2018-05-23 13:00 | 3h | 97.88d |  | TEAM_2Shift_Calendar-1 | Helper; Grinder | 6h | 318.75 | 318.75 |
| 473 | 1.12.14 | **Ch Noz Fit Up** | 0.75d | 2018-06-14 13:00 | 2018-06-14 19:00 |  | 2018-05-23 13:00 | 2018-05-23 19:00 | 0.75d | 97.88d | 0d | TEAM_2Shift_Calendar-1 |  | 24h | 1,537.5 | 1,537.5 |
| 474 | 1.12.14.1 | Ch-Noz Fit Up N4 | 3h | 2018-06-14 13:00 | 2018-06-14 16:00 | 470 | 2018-05-23 13:00 | 2018-05-23 16:00 | 3h | 97.88d | 0d | TEAM_2Shift_Calendar-1 | SMAW Welder; Helper; Fitter [200%] | 12h | 768.75 | 768.75 |
| 475 | 1.12.14.2 | Ch-Noz Fit Up N3 | 3h | 2018-06-14 16:00 | 2018-06-14 19:00 | 474 | 2018-05-23 16:00 | 2018-05-23 19:00 | 3h | 97.88d |  | TEAM_2Shift_Calendar-1 | SMAW Welder; Helper; Fitter [200%] | 12h | 768.75 | 768.75 |

| ID | WBS | Task | Duration | Start | Finish | Predecessors | Baseline start | Baseline finish | Baseline duration | Total slack | Free slack | Calendar | Resources | Work | Cost | Baseline cost |
| --- | --- | --- | --- | --- | --- | --- | --- | --- | --- | --- | --- | --- | --- | --- | --- | --- |
| 476 | 1.12.15 | **Ch Noz Fit Up Insp** | 0.25d | 2018-06-14 19:00 | 2018-06-14 21:00 |  | 2018-05-23 19:00 | 2018-05-23 21:00 | 0.25d | 97.88d | 0d | TEAM_2Shift_Calendar-1 |  | 4h | 237.5 | 237.5 |
| 477 | 1.12.15.1 | Ch-Noz Inspn N4 | 1h | 2018-06-14 19:00 | 2018-06-14 20:00 | 473 | 2018-05-23 19:00 | 2018-05-23 20:00 | 1h | 97.88d | 0d | TEAM_2Shift_Calendar-1 | Helper; Fitter | 2h | 118.75 | 118.75 |
| 478 | 1.12.15.2 | Ch-Noz Inspn N3 | 1h | 2018-06-14 20:00 | 2018-06-14 21:00 | 477 | 2018-05-23 20:00 | 2018-05-23 21:00 | 1h | 97.88d |  | TEAM_2Shift_Calendar-1 | Helper; Fitter | 2h | 118.75 | 118.75 |
| 479 | 1.12.16 | **Ch Noz Welding** | 3.31d | 2018-06-14 21:00 | 2018-06-16 15:30 |  | 2018-05-23 21:00 | 2018-05-25 15:30 | 3.31d | 97.88d | 0d | TEAM_2Shift_Calendar-1 |  | 52h | 3,009.38 | 3,009.38 |
| 480 | 1.12.16.1 | Ch Noz Welding Arrangement | 1h | 2018-06-14 21:00 | 2018-06-14 22:00 | 476 | 2018-05-23 21:00 | 2018-05-23 22:00 | 1h | 97.88d | 0d | TEAM_2Shift_Calendar-1 | Helper [200%]; Fitter | 3h | 168.75 | 168.75 |
| 481 | 1.12.16.2 | Ch-Noz Welding N4 | 4h | 2018-06-15 06:00 | 2018-06-15 10:00 | 480 | 2018-05-24 06:00 | 2018-05-24 10:00 | 4h | 97.88d | 0d | TEAM_2Shift_Calendar-1 | Helper; SMAW Welder | 8h | 475 | 475 |
| 482 | 1.12.16.3 | Ch-Noz Welding N3 | 4h | 2018-06-15 10:00 | 2018-06-15 14:00 | 481 | 2018-05-24 10:00 | 2018-05-24 14:00 | 4h | 97.88d | 0d | TEAM_2Shift_Calendar-1 | Helper; SMAW Welder | 8h | 475 | 475 |
| 483 | 1.12.16.4 | Ch Noz Root Dp Check | 0.5h | 2018-06-15 14:00 | 2018-06-15 14:30 | 482 | 2018-05-24 14:00 | 2018-05-24 14:30 | 0.5h | 97.88d | 0d | TEAM_2Shift_Calendar-1 | Helper; SMAW Welder | 1h | 59.38 | 59.38 |
| 484 | 1.12.16.5 | Ch-Noz Inner Weld N4 | 3h | 2018-06-15 14:30 | 2018-06-15 17:30 | 483 | 2018-05-24 14:30 | 2018-05-24 17:30 | 3h | 97.88d | 0d | TEAM_2Shift_Calendar-1 | Helper; SMAW Welder | 6h | 356.25 | 356.25 |
| 485 | 1.12.16.6 | Ch-Noz Inner Weld N5 | 3h | 2018-06-15 17:30 | 2018-06-15 20:30 | 484 | 2018-05-24 17:30 | 2018-05-24 20:30 | 3h | 97.88d | 0d | TEAM_2Shift_Calendar-1 | Helper; SMAW Welder | 6h | 356.25 | 356.25 |
| 486 | 1.12.16.7 | Rf Pad Fit Up & Nozzle Fit Up | 4h | 2018-06-15 20:30 | 2018-06-16 08:30 | 485 | 2018-05-24 20:30 | 2018-05-25 08:30 | 4h | 97.88d | 0d | TEAM_2Shift_Calendar-1 | Helper; SMAW Welder | 8h | 475 | 475 |
| 487 | 1.12.16.8 | Rf Pad Fit Up Welding | 5h | 2018-06-16 08:30 | 2018-06-16 13:30 | 486 | 2018-05-25 08:30 | 2018-05-25 13:30 | 5h | 97.88d | 0d | TEAM_2Shift_Calendar-1 | Helper; Grinder | 10h | 531.25 | 531.25 |
| 488 | 1.12.16.9 | Noz Welding Flush Grind 12''NB | 2h | 2018-06-16 13:30 | 2018-06-16 15:30 | 487 | 2018-05-25 13:30 | 2018-05-25 15:30 | 2h | 97.88d |  | TEAM_2Shift_Calendar-1 | Grinder | 2h | 112.5 | 112.5 |
| 489 | 1.12.17 | **Channel Pp Plate Fit Up** | 0.88d | 2018-06-16 15:30 | 2018-06-18 06:30 |  | 2018-05-25 15:30 | 2018-05-28 06:30 | 0.88d | 97.88d | 0d | TEAM_2Shift_Calendar-1 |  | 26h | 1,656.25 | 1,656.25 |
| 490 | 1.12.17.1 | Ch- Pp Plate Fit Up | 6h | 2018-06-16 15:30 | 2018-06-16 21:30 | 479 | 2018-05-25 15:30 | 2018-05-25 21:30 | 6h | 97.88d | 0d | TEAM_2Shift_Calendar-1 | Helper; SMAW Welder; Fitter [200%] | 24h | 1,537.5 | 1,537.5 |
| 491 | 1.12.17.2 | Ch- Pp Plate Fit Up Insp | 1h | 2018-06-16 21:30 | 2018-06-18 06:30 | 490 | 2018-05-25 21:30 | 2018-05-28 06:30 | 1h | 97.88d |  | TEAM_2Shift_Calendar-1 | Helper; Fitter | 2h | 118.75 | 118.75 |
| 492 | 1.12.18 | **Ch Pp Plate Welding** | 1.62d | 2018-06-18 06:30 | 2018-06-18 19:30 |  | 2018-05-28 06:30 | 2018-05-28 19:30 | 1.62d | 97.88d | 0d | TEAM_2Shift_Calendar-1 |  | 26h | 1,506.25 | 1,506.25 |
| 493 | 1.12.18.1 | Ch- Pp Plate Welding | 10h | 2018-06-18 06:30 | 2018-06-18 16:30 | 489 | 2018-05-28 06:30 | 2018-05-28 16:30 | 10h | 97.88d | 0d | TEAM_2Shift_Calendar-1 | Helper; SMAW Welder | 20h | 1,187.5 | 1,187.5 |
| 494 | 1.12.18.2 | Ch- Pp Plate Face Grinding | 3h | 2018-06-18 16:30 | 2018-06-18 19:30 | 493 | 2018-05-28 16:30 | 2018-05-28 19:30 | 3h | 97.88d |  | TEAM_2Shift_Calendar-1 | Helper; Grinder | 6h | 318.75 | 318.75 |
| 495 | 1.12.19 | **Channel Davit Arm Welding** | 1.88d | 2018-06-18 19:30 | 2018-06-19 18:30 |  | 2018-05-28 19:30 | 2018-05-29 18:30 | 1.88d | 97.88d | 0d | TEAM_2Shift_Calendar-1 |  | 34h | 2,056.25 | 2,056.25 |
| 496 | 1.12.19.1 | Ch-Davit Arm Arm Match | 4h | 2018-06-18 19:30 | 2018-06-19 07:30 | 492 | 2018-05-28 19:30 | 2018-05-29 07:30 | 4h | 97.88d | 0d | TEAM_2Shift_Calendar-1 | Helper; Fitter | 8h | 475 | 475 |
| 497 | 1.12.19.2 | Ch-Davit Arm Fit Up | 4h | 2018-06-19 07:30 | 2018-06-19 11:30 | 496 | 2018-05-29 07:30 | 2018-05-29 11:30 | 4h | 97.88d | 0d | TEAM_2Shift_Calendar-1 | SMAW Welder; Helper; Fitter | 12h | 750 | 750 |
| 498 | 1.12.19.3 | Ch-Davit Arm Welding | 7h | 2018-06-19 11:30 | 2018-06-19 18:30 | 497 | 2018-05-29 11:30 | 2018-05-29 18:30 | 7h | 97.88d |  | TEAM_2Shift_Calendar-1 | Helper; SMAW Welder | 14h | 831.25 | 831.25 |
| 499 | 1.12.20 | **Channel Nde & Pwht** | 1.38d | 2018-06-19 18:30 | 2018-06-20 13:30 |  | 2018-05-29 18:30 | 2018-05-30 13:30 | 1.38d | 97.88d |  | TEAM_2Shift_Calendar-1 |  | 17h | 1,018.75 | 1,018.75 |
| 500 | 1.12.20.1 | Ch All Welding Dressup & Dp Check | 6h | 2018-06-19 18:30 | 2018-06-20 08:30 | 495 | 2018-05-29 18:30 | 2018-05-30 08:30 | 6h | 97.88d | 0d | TEAM_2Shift_Calendar-1 | Grinder [200%] | 12h | 675 | 675 |
| 501 | 1.12.20.2 | Ch-Ch Nde Clearence | 5h | 2018-06-20 08:30 | 2018-06-20 13:30 | 500 | 2018-05-30 08:30 | 2018-05-30 13:30 | 5h | 97.88d |  | TEAM_2Shift_Calendar-1 | Fitter | 5h | 343.75 | 343.75 |

| ID | WBS | Task | Duration | Start | Finish | Predecessors | Baseline start | Baseline finish | Baseline duration | Total slack | Free slack | Calendar | Resources | Work | Cost | Baseline cost |
| --- | --- | --- | --- | --- | --- | --- | --- | --- | --- | --- | --- | --- | --- | --- | --- | --- |
| 502 | 1.13 | **Barrel Fabrication** | 12.94d | 2018-06-04 17:00 | 2018-06-13 08:30 |  | 2018-05-14 17:00 | 2018-05-22 08:30 | 12.94d | 110.19d | 0d | TEAM_2Shift_Calendar-1 |  | 205.5h | 11,168.75 | 11,168.75 |
| 503 | 1.13.1 | **Barrel Sh Plate Cutting & Ep** | 1.62d | 2018-06-04 17:00 | 2018-06-05 14:00 |  | 2018-05-14 17:00 | 2018-05-15 14:00 | 1.62d | 110.19d | 0d | TEAM_2Shift_Calendar-1 |  | 28h | 1,456.25 | 1,456.25 |
| 504 | 1.13.1.1 | Barrel Plate Transfer | 2h | 2018-06-04 17:00 | 2018-06-04 19:00 | 35 | 2018-05-14 17:00 | 2018-05-14 19:00 | 2h | 110.19d | 0d | TEAM_2Shift_Calendar-1 | Plate (Cost) [0.1%]; Store | 2h |  |  |
| 505 | 1.13.1.2 | Barrel-Marking | 2h | 2018-06-04 19:00 | 2018-06-04 21:00 | 504 | 2018-05-14 19:00 | 2018-05-14 21:00 | 2h | 110.19d | 0d | TEAM_2Shift_Calendar-1 | Helper [200%]; Fitter | 6h | 337.5 | 337.5 |
| 506 | 1.13.1.3 | Barrel-Cutting | 2h | 2018-06-04 21:00 | 2018-06-05 07:00 | 505 | 2018-05-14 21:00 | 2018-05-15 07:00 | 2h | 110.19d | 0d | TEAM_2Shift_Calendar-1 | Helper; Gas Cutter | 4h | 237.5 | 237.5 |
| 507 | 1.13.1.4 | Barrel Pl Side Grinding | 2h | 2018-06-05 07:00 | 2018-06-05 09:00 | 506 | 2018-05-15 07:00 | 2018-05-15 09:00 | 2h | 110.19d | 0d | TEAM_2Shift_Calendar-1 | Grinder | 2h | 112.5 | 112.5 |
| 508 | 1.13.1.5 | Barrel-Bevelling Cir Side | 3h | 2018-06-05 09:00 | 2018-06-05 12:00 | 507 | 2018-05-15 09:00 | 2018-05-15 12:00 | 3h | 110.19d | 0d | TEAM_2Shift_Calendar-1 | Helper [300%]; Fitter | 12h | 656.25 | 656.25 |
| 509 | 1.13.1.6 | Ch Ep Grinding | 2h | 2018-06-05 12:00 | 2018-06-05 14:00 | 508 | 2018-05-15 12:00 | 2018-05-15 14:00 | 2h | 110.19d |  | TEAM_2Shift_Calendar-1 | Grinder | 2h | 112.5 | 112.5 |
| 510 | 1.13.2 | **Bar Shell Rolling** | 0.94d | 2018-06-05 14:00 | 2018-06-05 21:30 |  | 2018-05-15 14:00 | 2018-05-15 21:30 | 0.94d | 110.19d | 0d | TEAM_2Shift_Calendar-1 |  | 22h | 1,418.75 | 1,418.75 |
| 511 | 1.13.2.1 | Barrel-Pre Bend | 2h | 2018-06-05 14:00 | 2018-06-05 16:00 | 503 | 2018-05-15 14:00 | 2018-05-15 16:00 | 2h | 110.19d | 0d | TEAM_2Shift_Calendar-1 | Helper; Fitter [200%] | 6h | 375 | 375 |
| 512 | 1.13.2.2 | Barrel-Pre Bend Cut Off | 2h | 2018-06-05 16:00 | 2018-06-05 18:00 | 511 | 2018-05-15 16:00 | 2018-05-15 18:00 | 2h | 110.19d | 0d | TEAM_2Shift_Calendar-1 | Gas Cutter; Fitter [200%] | 6h | 412.5 | 412.5 |
| 513 | 1.13.2.3 | Barrel -Pre Ls Ep | 0.5h | 2018-06-05 18:00 | 2018-06-05 18:30 | 512 | 2018-05-15 18:00 | 2018-05-15 18:30 | 0.5h | 110.19d | 0d | TEAM_2Shift_Calendar-1 | Fitter [200%] | 1h | 68.75 | 68.75 |
| 514 | 1.13.2.4 | Barrel-Rolling | 3h | 2018-06-05 18:30 | 2018-06-05 21:30 | 513 | 2018-05-15 18:30 | 2018-05-15 21:30 | 3h | 110.19d |  | TEAM_2Shift_Calendar-1 | Helper; Fitter [200%] | 9h | 562.5 | 562.5 |
| 515 | 1.13.3 | **Barrel Shell Ls Fit Up** | 0.25d | 2018-06-05 21:30 | 2018-06-06 07:30 |  | 2018-05-15 21:30 | 2018-05-16 07:30 | 0.25d | 110.19d | 0d | TEAM_2Shift_Calendar-1 |  | 6h | 393.75 | 393.75 |
| 516 | 1.13.3.1 | Barrel-Ls Correction | 1h | 2018-06-05 21:30 | 2018-06-06 06:30 | 510 | 2018-05-15 21:30 | 2018-05-16 06:30 | 1h | 110.19d | 0d | TEAM_2Shift_Calendar-1 | Fitter [200%] | 2h | 137.5 | 137.5 |
| 517 | 1.13.3.2 | Barrel-Ls Fit Up | 1h | 2018-06-06 06:30 | 2018-06-06 07:30 | 516 | 2018-05-16 06:30 | 2018-05-16 07:30 | 1h | 110.19d |  | TEAM_2Shift_Calendar-1 | SMAW Welder; Helper; Fitter [200%] | 4h | 256.25 | 256.25 |
| 518 | 1.13.4 | **Barrel Shell Ls Welding** | 1.94d | 2018-06-06 07:30 | 2018-06-07 07:00 |  | 2018-05-16 07:30 | 2018-05-17 07:00 | 1.94d | 110.19d | 0d | TEAM_2Shift_Calendar-1 |  | 34h | 2,021.88 | 2,021.88 |
| 519 | 1.13.4.1 | Barrel-Ls Weld Arrangement | 1h | 2018-06-06 07:30 | 2018-06-06 08:30 | 515 | 2018-05-16 07:30 | 2018-05-16 08:30 | 1h | 110.19d | 0d | TEAM_2Shift_Calendar-1 | Helper [200%]; Fitter | 3h | 168.75 | 168.75 |
| 520 | 1.13.4.2 | Barrel-Ls Welding- Top Side | 4.75h | 2018-06-06 08:30 | 2018-06-06 13:15 | 519 | 2018-05-16 08:30 | 2018-05-16 13:15 | 4.75h | 110.19d | 0d | TEAM_2Shift_Calendar-1 | Helper; SMAW Welder | 9.5h | 564.06 | 564.06 |
| 521 | 1.13.4.3 | Barrel-Ls Welding- Back Chip | 1h | 2018-06-06 13:15 | 2018-06-06 14:15 | 520 | 2018-05-16 13:15 | 2018-05-16 14:15 | 1h | 110.19d | 0d | TEAM_2Shift_Calendar-1 | Helper; Grinder | 2h | 106.25 | 106.25 |
| 522 | 1.13.4.4 | Barrel-Ls Inner Welding | 4.75h | 2018-06-06 14:15 | 2018-06-06 19:00 | 521 | 2018-05-16 14:15 | 2018-05-16 19:00 | 4.75h | 110.19d | 0d | TEAM_2Shift_Calendar-1 | Helper; SMAW Welder | 9.5h | 564.06 | 564.06 |
| 523 | 1.13.4.5 | Barrel-Ls Innner Flush Grind | 1h | 2018-06-06 19:00 | 2018-06-06 20:00 | 522 | 2018-05-16 19:00 | 2018-05-16 20:00 | 1h | 110.19d | 0d | TEAM_2Shift_Calendar-1 | Grinder | 1h | 56.25 | 56.25 |
| 524 | 1.13.4.6 | Barrel Re Rolling | 3h | 2018-06-06 20:00 | 2018-06-07 07:00 | 523 | 2018-05-16 20:00 | 2018-05-17 07:00 | 3h | 110.19d |  | TEAM_2Shift_Calendar-1 | Helper; Fitter [200%] | 9h | 562.5 | 562.5 |
| 525 | 1.13.5 | **Barrel Ls Welding Rt** | 1d | 2018-06-07 07:00 | 2018-06-07 15:00 |  | 2018-05-17 07:00 | 2018-05-17 15:00 | 1d | 110.19d | 0d | TEAM_2Shift_Calendar-1 |  | 8h |  |  |
| 526 | 1.13.5.1 | Bar Ls Welding Rt | 1d | 2018-06-07 07:00 | 2018-06-07 15:00 | 518 | 2018-05-17 07:00 | 2018-05-17 15:00 | 1d | 110.19d |  | TEAM_2Shift_Calendar-1 | SC Radiography (Work) | 8h |  |  |

| ID | WBS | Task | Duration | Start | Finish | Predecessors | Baseline start | Baseline finish | Baseline duration | Total slack | Free slack | Calendar | Resources | Work | Cost | Baseline cost |
| --- | --- | --- | --- | --- | --- | --- | --- | --- | --- | --- | --- | --- | --- | --- | --- | --- |
| 527 | 1.13.6 | **Barrel Shell Cs Flg 1 Fit Up** | 0.31d | 2018-06-07 15:00 | 2018-06-07 17:30 |  | 2018-05-17 15:00 | 2018-05-17 17:30 | 0.31d | 110.19d | 0d | TEAM_2Shift_Calendar-1 |  | 7h | 443.75 | 443.75 |
| 528 | 1.13.6.1 | Barrel Cir Ep Correction | 0.5h | 2018-06-07 15:00 | 2018-06-07 15:30 | 525 | 2018-05-17 15:00 | 2018-05-17 15:30 | 0.5h | 110.19d | 0d | TEAM_2Shift_Calendar-1 | Fitter [200%] | 1h | 68.75 | 68.75 |
| 529 | 1.13.6.2 | Barrel Cs Fit Up Flg1 | 1h | 2018-06-07 15:30 | 2018-06-07 16:30 | 528 | 2018-05-17 15:30 | 2018-05-17 16:30 | 1h | 110.19d | 0d | TEAM_2Shift_Calendar-1 | SMAW Welder; Helper; Fitter [200%] | 4h | 256.25 | 256.25 |
| 530 | 1.13.6.3 | Barrel Cs Tack Dp Check Flg1 | 1h | 2018-06-07 16:30 | 2018-06-07 17:30 | 529 | 2018-05-17 16:30 | 2018-05-17 17:30 | 1h | 110.19d |  | TEAM_2Shift_Calendar-1 | Helper; Fitter | 2h | 118.75 | 118.75 |
| 531 | 1.13.7 | **Barrel Sh Cs Flg1 Welding** | 1.56d | 2018-06-07 17:30 | 2018-06-08 14:00 |  | 2018-05-17 17:30 | 2018-05-18 14:00 | 1.56d | 110.19d | 0d | TEAM_2Shift_Calendar-1 |  | 24h | 1,409.38 | 1,409.38 |
| 532 | 1.13.7.1 | Barrel Cs Welding Transfere | 1h | 2018-06-07 17:30 | 2018-06-07 18:30 | 527 | 2018-05-17 17:30 | 2018-05-17 18:30 | 1h | 110.19d | 0d | TEAM_2Shift_Calendar-1 | Helper [200%]; Fitter | 3h | 168.75 | 168.75 |
| 533 | 1.13.7.2 | Barrel Cs Welding Outer Flg1 | 4.75h | 2018-06-07 18:30 | 2018-06-08 07:15 | 532 | 2018-05-17 18:30 | 2018-05-18 07:15 | 4.75h | 110.19d | 0d | TEAM_2Shift_Calendar-1 | Helper; SMAW Welder | 9.5h | 564.06 | 564.06 |
| 534 | 1.13.7.3 | Barrel Cs Welding Back Chip Flg1 | 1h | 2018-06-08 07:15 | 2018-06-08 08:15 | 533 | 2018-05-18 07:15 | 2018-05-18 08:15 | 1h | 110.19d | 0d | TEAM_2Shift_Calendar-1 | Grinder | 1h | 56.25 | 56.25 |
| 535 | 1.13.7.4 | Barrel Cs Inner Welding Flg1 | 4.75h | 2018-06-08 08:15 | 2018-06-08 13:00 | 534 | 2018-05-18 08:15 | 2018-05-18 13:00 | 4.75h | 110.19d | 0d | TEAM_2Shift_Calendar-1 | Helper; SMAW Welder | 9.5h | 564.06 | 564.06 |
| 536 | 1.13.7.5 | Barrel Cs Flush Grinding Flg1 | 1h | 2018-06-08 13:00 | 2018-06-08 14:00 | 535 | 2018-05-18 13:00 | 2018-05-18 14:00 | 1h | 110.19d |  | TEAM_2Shift_Calendar-1 | Grinder | 1h | 56.25 | 56.25 |
| 537 | 1.13.8 | **Barrel Cs Fit Up With Dish** | 0.56d | 2018-06-08 14:00 | 2018-06-08 18:30 |  | 2018-05-18 14:00 | 2018-05-18 18:30 | 0.56d | 110.19d | 0d | TEAM_2Shift_Calendar-1 |  | 10h | 621.88 | 621.88 |
| 538 | 1.13.8.1 | Barrel Length Cutting | 2h | 2018-06-08 14:00 | 2018-06-08 16:00 | 531 | 2018-05-18 14:00 | 2018-05-18 16:00 | 2h | 110.19d | 0d | TEAM_2Shift_Calendar-1 | Helper; Gas Cutter | 4h | 237.5 | 237.5 |
| 539 | 1.13.8.2 | Barrel Ep | 0.5h | 2018-06-08 16:00 | 2018-06-08 16:30 | 538 | 2018-05-18 16:00 | 2018-05-18 16:30 | 0.5h | 110.19d | 0d | TEAM_2Shift_Calendar-1 | Helper; Fitter | 1h | 59.38 | 59.38 |
| 540 | 1.13.8.3 | Barrel Cs Fit Up Dish | 1h | 2018-06-08 16:30 | 2018-06-08 17:30 | 539 | 2018-05-18 16:30 | 2018-05-18 17:30 | 1h | 110.19d | 0d | TEAM_2Shift_Calendar-1 | SMAW Welder; Helper; Fitter [200%] | 4h | 256.25 | 256.25 |
| 541 | 1.13.8.4 | Barrel Cs Tack Dp Check Dish | 1h | 2018-06-08 17:30 | 2018-06-08 18:30 | 540 | 2018-05-18 17:30 | 2018-05-18 18:30 | 1h | 110.19d |  | TEAM_2Shift_Calendar-1 | Fitter | 1h | 68.75 | 68.75 |
| 542 | 1.13.9 | **Barrel Cs Welding With Dish** | 1.81d | 2018-06-08 18:30 | 2018-06-11 17:00 |  | 2018-05-18 18:30 | 2018-05-19 17:00 | 1.81d | 110.19d | 0d | TEAM_2Shift_Calendar-1 |  | 28h | 1,646.88 | 1,646.88 |
| 543 | 1.13.9.1 | Barrel Cs Welding Transfere Dish | 1h | 2018-06-08 18:30 | 2018-06-08 19:30 | 537 | 2018-05-18 18:30 | 2018-05-18 19:30 | 1h | 110.19d | 0d | TEAM_2Shift_Calendar-1 | Helper [200%]; Fitter | 3h | 168.75 | 168.75 |
| 544 | 1.13.9.2 | Barrel Cs Welding Outer Dish | 5.75h | 2018-06-08 19:30 | 2018-06-11 09:15 | 543 | 2018-05-18 19:30 | 2018-05-19 09:15 | 5.75h | 110.19d | 0d | TEAM_2Shift_Calendar-1 | Helper; SMAW Welder | 11.5h | 682.81 | 682.81 |
| 545 | 1.13.9.3 | Barrel Cs Welding Back Chip Dish | 1h | 2018-06-11 09:15 | 2018-06-11 10:15 | 544 | 2018-05-19 09:15 | 2018-05-19 10:15 | 1h | 110.19d | 0d | TEAM_2Shift_Calendar-1 | Grinder | 1h | 56.25 | 56.25 |
| 546 | 1.13.9.4 | Barrel Cs Inner Welding Dish | 5.75h | 2018-06-11 10:15 | 2018-06-11 16:00 | 545 | 2018-05-19 10:15 | 2018-05-19 16:00 | 5.75h | 110.19d | 0d | TEAM_2Shift_Calendar-1 | Helper; SMAW Welder | 11.5h | 682.81 | 682.81 |
| 547 | 1.13.9.5 | Barrel Cs Flush Grinding Dish | 1h | 2018-06-11 16:00 | 2018-06-11 17:00 | 546 | 2018-05-19 16:00 | 2018-05-19 17:00 | 1h | 110.19d |  | TEAM_2Shift_Calendar-1 | Grinder | 1h | 56.25 | 56.25 |
| 548 | 1.13.10 | **Barrel Cs & Dish Welding Rt Flg1** | 1d | 2018-06-11 17:00 | 2018-06-12 09:00 |  | 2018-05-19 17:00 | 2018-05-21 09:00 | 1d | 110.19d | 0d | TEAM_2Shift_Calendar-1 |  | 8h |  |  |
| 549 | 1.13.10.1 | Barrel Cs Welding Rt | 1d | 2018-06-11 17:00 | 2018-06-12 09:00 | 542 | 2018-05-19 17:00 | 2018-05-21 09:00 | 1d | 110.19d |  | TEAM_2Shift_Calendar-1 | SC Radiography (Work) | 8h |  |  |
| 550 | 1.13.11 | **Barrel Noz Oreination Marking** | 0.25d | 2018-06-12 09:00 | 2018-06-12 11:00 |  | 2018-05-21 09:00 | 2018-05-21 11:00 | 0.25d | 110.19d | 0d | TEAM_2Shift_Calendar-1 |  | 4h | 237.5 | 237.5 |
| 551 | 1.13.11.1 | Barrel- Noz Orientation Mkg | 1h | 2018-06-12 09:00 | 2018-06-12 10:00 | 548 | 2018-05-21 09:00 | 2018-05-21 10:00 | 1h | 110.19d | 0d | TEAM_2Shift_Calendar-1 | Helper; Fitter | 2h | 118.75 | 118.75 |
| 552 | 1.13.11.2 | Barrel-Noz Marking 2 Nos | 1h | 2018-06-12 10:00 | 2018-06-12 11:00 | 551 | 2018-05-21 10:00 | 2018-05-21 11:00 | 1h | 110.19d |  | TEAM_2Shift_Calendar-1 | Helper; Fitter | 2h | 118.75 | 118.75 |

| ID | WBS | Task | Type | Duration | Start | Finish | Predecessors | Baseline start | Baseline finish | Baseline duration | Total slack | Free slack | Calendar | Resources | Work | Cost | Baseline cost |
| --- | --- | --- | --- | --- | --- | --- | --- | --- | --- | --- | --- | --- | --- | --- | --- | --- | --- |
| 553 | 1.13.12 | **Barrel Nozzle Oppening** |  | 0.12d | 2018-06-12 11:00 | 2018-06-12 12:00 |  | 2018-05-21 11:00 | 2018-05-21 12:00 | 0.12d | 110.19d | 0d | TEAM_2Shift_Calendar-1 |  | 2h | 118.75 | 118.75 |
| 554 | 1.13.12.1 | Barrel-Noz Openning 40 Nb - WN |  | 0.5h | 2018-06-12 11:00 | 2018-06-12 11:30 | 550 | 2018-05-21 11:00 | 2018-05-21 11:30 | 0.5h | 110.19d | 0d | TEAM_2Shift_Calendar-1 | Helper; Gas Cutter | 1h | 59.38 | 59.38 |
| 555 | 1.13.12.2 | Barrel-Noz Openning 40 Nb - WN |  | 0.5h | 2018-06-12 11:30 | 2018-06-12 12:00 | 554 | 2018-05-21 11:30 | 2018-05-21 12:00 | 0.5h | 110.19d |  | TEAM_2Shift_Calendar-1 | Helper; Gas Cutter | 1h | 59.38 | 59.38 |
| 556 | 1.13.13 | **Barrel Noz Edge Preparation** |  | 0.12d | 2018-06-12 12:00 | 2018-06-12 13:00 |  | 2018-05-21 12:00 | 2018-05-21 13:00 | 0.12d | 110.19d | 0d | TEAM_2Shift_Calendar-1 |  | 2h | 106.25 | 106.25 |
| 557 | 1.13.13.1 | Barrel-Noz Openning 40 Nb - WN |  | 0.5h | 2018-06-12 12:00 | 2018-06-12 12:30 | 553 | 2018-05-21 12:00 | 2018-05-21 12:30 | 0.5h | 110.19d | 0d | TEAM_2Shift_Calendar-1 | Helper; Grinder | 1h | 53.12 | 53.12 |
| 558 | 1.13.13.2 | Barrel-Noz Openning 40 Nb - WN |  | 0.5h | 2018-06-12 12:30 | 2018-06-12 13:00 | 557 | 2018-05-21 12:30 | 2018-05-21 13:00 | 0.5h | 110.19d |  | TEAM_2Shift_Calendar-1 | Helper; Grinder | 1h | 53.12 | 53.12 |
| 559 | 1.13.14 | **Barrel Nozzzle Fit Up** |  | 0.25d | 2018-06-12 13:00 | 2018-06-12 15:00 |  | 2018-05-21 13:00 | 2018-05-21 15:00 | 0.25d | 110.19d | 0d | TEAM_2Shift_Calendar-1 |  | 8h | 512.5 | 512.5 |
| 560 | 1.13.14.1 | Barrel-Noz Fit Up N5 |  | 1h | 2018-06-12 13:00 | 2018-06-12 14:00 | 556 | 2018-05-21 13:00 | 2018-05-21 14:00 | 1h | 110.19d | 0d | TEAM_2Shift_Calendar-1 | SMAW Welder; Helper; Fitter [200%] | 4h | 256.25 | 256.25 |
| 561 | 1.13.14.2 | Barrel-Noz Fit Up N6 |  | 1h | 2018-06-12 14:00 | 2018-06-12 15:00 | 560 | 2018-05-21 14:00 | 2018-05-21 15:00 | 1h | 110.19d |  | TEAM_2Shift_Calendar-1 | SMAW Welder; Helper; Fitter [200%] | 4h | 256.25 | 256.25 |
| 562 | 1.13.15 | **Barrel Noz Fit Up Inspection** |  | 0.12d | 2018-06-12 15:00 | 2018-06-12 16:00 |  | 2018-05-21 15:00 | 2018-05-21 16:00 | 0.12d | 110.19d | 0d | TEAM_2Shift_Calendar-1 |  | 1h |  |  |
| 563 | 1.13.15.1 | Barrel-Noz Inspn N5 |  | 0.5h | 2018-06-12 15:00 | 2018-06-12 15:30 | 559 | 2018-05-21 15:00 | 2018-05-21 15:30 | 0.5h | 110.19d | 0d | TEAM_2Shift_Calendar-1 | QC Engineer | 0.5h |  |  |
| 564 | 1.13.15.2 | Barrel-Noz Inspn N6 |  | 0.5h | 2018-06-12 15:30 | 2018-06-12 16:00 | 563 | 2018-05-21 15:30 | 2018-05-21 16:00 | 0.5h | 110.19d |  | TEAM_2Shift_Calendar-1 | QC Engineer | 0.5h |  |  |
| 565 | 1.13.16 | **Barrel Nozzle Welding** |  | 0.31d | 2018-06-12 16:00 | 2018-06-12 18:30 |  | 2018-05-21 16:00 | 2018-05-21 18:30 | 0.31d | 110.5d | 0d | TEAM_2Shift_Calendar-1 |  | 4.5h | 237.5 | 237.5 |
| 566 | 1.13.16.1 | Barrel Noz Welding Arrangement |  | 0.5h | 2018-06-12 16:00 | 2018-06-12 16:30 | 562 | 2018-05-21 16:00 | 2018-05-21 16:30 | 0.5h | 110.5d | 0d | TEAM_2Shift_Calendar-1 | Store | 0.5h |  |  |
| 567 | 1.13.16.2 | Barrel-Noz Welding N5 |  | 0.5h | 2018-06-12 16:30 | 2018-06-12 17:00 | 566 | 2018-05-21 16:30 | 2018-05-21 17:00 | 0.5h | 110.5d | 0d | TEAM_2Shift_Calendar-1 | Helper; SMAW Welder | 1h | 59.38 | 59.38 |
| 568 | 1.13.16.3 | Barrel-Noz Welding N6 |  | 0.5h | 2018-06-12 17:00 | 2018-06-12 17:30 | 567 | 2018-05-21 17:00 | 2018-05-21 17:30 | 0.5h | 110.5d | 0d | TEAM_2Shift_Calendar-1 | Helper; SMAW Welder | 1h | 59.38 | 59.38 |
| 569 | 1.13.16.4 | Barrel Noz Root Dp | milestone | 0h | 2018-06-12 17:30 | 2018-06-12 17:30 | 568 | 2018-05-21 17:30 | 2018-05-21 17:30 | 0h | 110.5d | 0d | TEAM_2Shift_Calendar-1 | Helper; Fitter |  |  |  |
| 570 | 1.13.16.5 | Barrel-Noz Inner Welding N5 |  | 0.5h | 2018-06-12 17:30 | 2018-06-12 18:00 | 569 | 2018-05-21 17:30 | 2018-05-21 18:00 | 0.5h | 110.5d | 0d | TEAM_2Shift_Calendar-1 | Helper; SMAW Welder | 1h | 59.38 | 59.38 |
| 571 | 1.13.16.6 | Barrel-Noz Inner Welding N6 |  | 0.5h | 2018-06-12 18:00 | 2018-06-12 18:30 | 570 | 2018-05-21 18:00 | 2018-05-21 18:30 | 0.5h | 110.5d |  | TEAM_2Shift_Calendar-1 | Helper; SMAW Welder | 1h | 59.38 | 59.38 |
| 572 | 1.13.17 | **Barrel Noz Inner Weld Flush Grind** |  | 0.75d | 2018-06-12 18:30 | 2018-06-13 08:30 |  | 2018-05-21 18:30 | 2018-05-22 08:30 | 0.75d | 110.5d |  | TEAM_2Shift_Calendar-1 |  | 9h | 543.75 | 543.75 |
| 573 | 1.13.17.1 | Barrel All Welding Dressup & Dp |  | 3h | 2018-06-12 18:30 | 2018-06-12 21:30 | 565 | 2018-05-21 18:30 | 2018-05-21 21:30 | 3h | 110.5d | 0d | TEAM_2Shift_Calendar-1 | Grinder [200%] | 6h | 337.5 | 337.5 |
| 574 | 1.13.17.2 | Barrel-Barrel Nde Clearence |  | 3h | 2018-06-12 21:30 | 2018-06-13 08:30 | 573 | 2018-05-21 21:30 | 2018-05-22 08:30 | 3h | 110.5d |  | TEAM_2Shift_Calendar-1 | Fitter | 3h | 206.25 | 206.25 |
| 575 | 1.14 | **Fl Head Fabrication** |  | 20.81d | 2018-06-21 09:00 | 2018-07-17 16:30 |  | 2018-06-21 09:00 | 2018-07-17 16:30 | 20.81d | 23.06d |  |  |  | 245h | 6,243.75 | 6,243.75 |
| 576 | 1.14.1 | **Flaoting Head Dish Forming** |  | 1.38d | 2018-07-06 09:00 | 2018-07-06 20:00 |  | 2018-07-06 09:00 | 2018-07-06 20:00 | 1.38d | 46.62d | 0.56d | TEAM_2Shift_Calendar-1 |  | 16h | 706.25 | 706.25 |
| 577 | 1.14.1.1 | Fl Head Dish Pl Issue |  | 4h | 2018-07-06 09:00 | 2018-07-06 13:00 | 41 | 2018-07-06 09:00 | 2018-07-06 13:00 | 4h | 46.62d | 0d | TEAM_2Shift_Calendar-1 | Plate (Cost) [0.1%]; Store | 4h |  |  |
| 578 | 1.14.1.2 | Fl Head Pl Marking |  | 1h | 2018-07-06 13:00 | 2018-07-06 14:00 | 577 | 2018-07-06 13:00 | 2018-07-06 14:00 | 1h | 46.62d | 0d | TEAM_2Shift_Calendar-1 | Helper; Fitter | 2h | 118.75 | 118.75 |
| 579 | 1.14.1.3 | Fl Head Pl Stamping |  | 2h | 2018-07-06 14:00 | 2018-07-06 16:00 | 578 | 2018-07-06 14:00 | 2018-07-06 16:00 | 2h | 46.62d | 0d | TEAM_2Shift_Calendar-1 | Helper; Fitter | 4h | 237.5 | 237.5 |
| 580 | 1.14.1.4 | Fl Head Pl Cutting |  | 2h | 2018-07-06 16:00 | 2018-07-06 18:00 | 579 | 2018-07-06 16:00 | 2018-07-06 18:00 | 2h | 46.62d | 0d | TEAM_2Shift_Calendar-1 | Helper; Gas Cutter | 4h | 237.5 | 237.5 |
| 581 | 1.14.1.5 | Fl Head Pl Grinding |  | 2h | 2018-07-06 18:00 | 2018-07-06 20:00 | 580 | 2018-07-06 18:00 | 2018-07-06 20:00 | 2h | 46.62d |  | TEAM_2Shift_Calendar-1 | Grinder | 2h | 112.5 | 112.5 |

| ID | WBS | Task | Duration | Start | Finish | Predecessors | Baseline start | Baseline finish | Baseline duration | Total slack | Free slack | Calendar | Resources | Work | Cost | Baseline cost |
| --- | --- | --- | --- | --- | --- | --- | --- | --- | --- | --- | --- | --- | --- | --- | --- | --- |
| 582 | 1.14.2 | **Fl Head Formig** | 7.38d | 2018-07-07 08:30 | 2018-07-17 11:30 |  | 2018-07-07 08:30 | 2018-07-17 11:30 | 7.38d | 23.06d | 0d |  |  | 62h | 356.25 | 356.25 |
| 583 | 1.14.2.1 | Fl Head Forming | 7d | 2018-07-07 08:30 | 2018-07-16 17:30 | 576 | 2018-07-07 08:30 | 2018-07-16 17:30 | 7d | 23.06d | 0d |  | SC (Work) | 56h |  |  |
| 584 | 1.14.2.2 | Fl Head Profile Check | 3h | 2018-07-17 08:30 | 2018-07-17 11:30 | 583 | 2018-07-17 08:30 | 2018-07-17 11:30 | 3h | 23.06d |  |  | Helper; Fitter | 6h | 356.25 | 356.25 |
| 585 | 1.14.3 | **Fl Head Cutting** | 0.25d | 2018-07-17 11:30 | 2018-07-17 14:30 |  | 2018-07-17 11:30 | 2018-07-17 14:30 | 0.25d | 23.06d | 0d |  |  | 4h | 237.5 | 237.5 |
| 586 | 1.14.3.1 | Fl Head Marking | 1h | 2018-07-17 11:30 | 2018-07-17 12:30 | 582 | 2018-07-17 11:30 | 2018-07-17 12:30 | 1h | 23.06d | 0d |  | Helper; Fitter | 2h | 118.75 | 118.75 |
| 587 | 1.14.3.2 | Fl Head Cutting | 1h | 2018-07-17 13:30 | 2018-07-17 14:30 | 586 | 2018-07-17 13:30 | 2018-07-17 14:30 | 1h | 23.06d |  |  | Helper; Gas Cutter | 2h | 118.75 | 118.75 |
| 588 | 1.14.4 | **Fl Head Ep** | 0.25d | 2018-07-17 14:30 | 2018-07-17 16:30 |  | 2018-07-17 14:30 | 2018-07-17 16:30 | 0.25d | 46.06d |  | TEAM_2Shift_Calendar-1 |  | 4h | 212.5 | 212.5 |
| 589 | 1.14.4.1 | Fl Head Grinding | 2h | 2018-07-17 14:30 | 2018-07-17 16:30 | 585 | 2018-07-17 14:30 | 2018-07-17 16:30 | 2h | 46.06d |  | TEAM_2Shift_Calendar-1 | Helper; Grinder | 4h | 212.5 | 212.5 |
| 590 | 1.14.5 | **Fl Head Fit Up** | 0.5d | 2018-06-21 09:00 | 2018-06-21 13:00 |  | 2018-06-21 09:00 | 2018-06-21 13:00 | 0.5d | 62.5d |  | TEAM_2Shift_Calendar-1 |  | 16h | 1,025 | 1,025 |
| 591 | 1.14.5.1 | Fl Head Fit Up | 4h | 2018-06-21 09:00 | 2018-06-21 13:00 | 40 | 2018-06-21 09:00 | 2018-06-21 13:00 | 4h | 62.5d | 0d | TEAM_2Shift_Calendar-1 | SMAW Welder; Helper; Fitter [200%] | 16h | 1,025 | 1,025 |
| 592 | 1.14.6 | **Fl Head Welding** | 3.12d | 2018-06-21 13:00 | 2018-06-22 22:00 |  | 2018-06-21 13:00 | 2018-06-22 22:00 | 3.12d | 62.5d | 0.31d | TEAM_2Shift_Calendar-1 |  | 53h | 3,231.25 | 3,231.25 |
| 593 | 1.14.6.1 | Fl Head Welding | 8h | 2018-06-21 13:00 | 2018-06-21 21:00 | 591 | 2018-06-21 13:00 | 2018-06-21 21:00 | 8h | 62.5d | 0d | TEAM_2Shift_Calendar-1 | Helper; Forging Non-Std (Cost) [0.1%]; SMAW Welder | 16h | 950 | 950 |
| 594 | 1.14.6.2 | Fl Head Pp Plate Fit Up | 3h | 2018-06-21 21:00 | 2018-06-22 08:00 | 593 | 2018-06-21 21:00 | 2018-06-22 08:00 | 3h | 62.5d | 0d | TEAM_2Shift_Calendar-1 | Helper; SMAW Welder; Fitter [200%] | 12h | 768.75 | 768.75 |
| 595 | 1.14.6.3 | Fl Head Pp Pl Welding | 8h | 2018-06-22 08:00 | 2018-06-22 16:00 | 594 | 2018-06-22 08:00 | 2018-06-22 16:00 | 8h | 62.5d | 0d | TEAM_2Shift_Calendar-1 | Helper; SMAW Welder | 16h | 950 | 950 |
| 596 | 1.14.6.4 | Fl Head Pp Pl Level Grinding | 3h | 2018-06-22 16:00 | 2018-06-22 19:00 | 595 | 2018-06-22 16:00 | 2018-06-22 19:00 | 3h | 62.5d | 0d | TEAM_2Shift_Calendar-1 | Helper; Fitter | 6h | 356.25 | 356.25 |
| 597 | 1.14.6.5 | Fl Head Inspection | 3h | 2018-06-22 19:00 | 2018-06-22 22:00 | 596 | 2018-06-22 19:00 | 2018-06-22 22:00 | 3h | 62.5d |  | TEAM_2Shift_Calendar-1 | Fitter | 3h | 206.25 | 206.25 |
| 598 | 1.14.7 | **Fl Head Sr & Machining** | 10.75d | 2018-06-25 08:30 | 2018-07-06 15:30 |  | 2018-06-25 08:30 | 2018-07-06 15:30 | 10.75d | 31.19d |  |  |  | 90h | 475 | 475 |
| 599 | 1.14.7.1 | Fl Head Sr | 6d | 2018-06-25 08:30 | 2018-06-30 17:30 | 592 | 2018-06-25 08:30 | 2018-06-30 17:30 | 6d | 31.19d | 0d |  | SC (Work) | 48h |  |  |
| 600 | 1.14.7.2 | Fl Head Final Machining | 4d | 2018-07-02 08:30 | 2018-07-05 17:30 | 599 | 2018-07-02 08:30 | 2018-07-05 17:30 | 4d | 31.19d | 0d |  | SC (Work) | 32h |  |  |
| 601 | 1.14.7.3 | Fl Head Hole Marking | 1h | 2018-07-06 08:30 | 2018-07-06 09:30 | 600 | 2018-07-06 08:30 | 2018-07-06 09:30 | 1h | 31.19d | 0d |  | Helper; Fitter | 2h | 118.75 | 118.75 |
| 602 | 1.14.7.4 | Fl Head Hole Drilling | 2h | 2018-07-06 09:30 | 2018-07-06 11:30 | 601 | 2018-07-06 09:30 | 2018-07-06 11:30 | 2h | 31.19d | 0d |  | SC (Work) | 2h |  |  |
| 603 | 1.14.7.5 | Fl Head Final Inspection | 3h | 2018-07-06 11:30 | 2018-07-06 15:30 | 602 | 2018-07-06 11:30 | 2018-07-06 15:30 | 3h | 31.19d |  |  | Helper; Fitter | 6h | 356.25 | 356.25 |
| 604 | 1.15 | **Tube Bundle Fabrication** | 68.09d | 2018-08-16 17:00 | 2018-09-29 17:45 |  | 2018-08-16 17:00 | 2018-09-29 17:45 | 68.09d | 0d |  | TEAM_2Shift_Calendar-1 |  | 1667h | 108,926.56 | 108,926.56 |
| 605 | 1.15.1 | **Tube Bundle Assy** | 2d | 2018-08-16 17:00 | 2018-08-17 17:00 |  | 2018-08-16 17:00 | 2018-08-17 17:00 | 2d | 0d |  | TEAM_2Shift_Calendar-1 |  | 56h | 3,625 | 3,625 |
| 606 | 1.15.1.1 | Frame Set Up & Tube Sht Set Up | 12h | 2018-08-16 17:00 | 2018-08-17 13:00 | 575, 70, 205, 48 | 2018-08-16 17:00 | 2018-08-17 13:00 | 12h | 0d |  | TEAM_2Shift_Calendar-1 | SMAW Welder; Tube (Cost) [0.1%]; Fitter [200%] | 36h | 2,475 | 2,475 |
| 607 | 1.15.1.2 | Skeliton Assy 19 Baffles | 4h | 2018-08-17 13:00 | 2018-08-17 17:00 | 606 | 2018-08-17 13:00 | 2018-08-17 17:00 | 4h | 0d |  | TEAM_2Shift_Calendar-1 | Helper [300%]; Fitter [200%] | 20h | 1,150 | 1,150 |

| ID | WBS | Task | Type | Duration | Start | Finish | Predecessors | Baseline start | Baseline finish | Baseline duration | Total slack | Calendar | Resources | Work | Cost | Baseline cost |
| --- | --- | --- | --- | --- | --- | --- | --- | --- | --- | --- | --- | --- | --- | --- | --- | --- |
| 608 | 1.15.2 | **Tube Insert** |  | 11.56d | 2018-08-17 17:00 | 2018-08-24 13:30 |  | 2018-08-17 17:00 | 2018-08-24 13:30 | 11.56d | 0d | TEAM_2Shift_Calendar-1 |  | 462.5h | 24,859.38 | 24,859.38 |
| 609 | 1.15.2.1 | Tube Insert |  | 80.5h | 2018-08-17 17:00 | 2018-08-23 17:30 | 605 | 2018-08-17 17:00 | 2018-08-23 17:30 | 80.5h | 0d | TEAM_2Shift_Calendar-1 | Helper [400%]; Fitter | 402.5h | 21,634.38 | 21,634.38 |
| 610 | 1.15.2.2 | Seal Rod Insert & Weld | milestone | 0h | 2018-08-23 17:30 | 2018-08-23 17:30 | 609 | 2018-08-23 17:30 | 2018-08-23 17:30 | 0h | 0d | TEAM_2Shift_Calendar-1 | SMAW Welder; Helper [200%]; Fitter [200%] |  |  |  |
| 611 | 1.15.2.3 | Tube Insert |  | 12h | 2018-08-23 17:30 | 2018-08-24 13:30 | 610 | 2018-08-23 17:30 | 2018-08-24 13:30 | 12h | 0d | TEAM_2Shift_Calendar-1 | Helper [400%]; Fitter | 60h | 3,225 | 3,225 |
| 612 | 1.15.3 | **Sliding Strip Fit Up Welding** |  | 3.75d | 2018-08-24 13:30 | 2018-08-28 11:30 |  | 2018-08-24 13:30 | 2018-08-28 11:30 | 3.75d | 0d | TEAM_2Shift_Calendar-1 |  | 50h | 2,937.5 | 2,937.5 |
| 613 | 1.15.3.1 | Sealing Strip Fit Up |  | 16h | 2018-08-24 13:30 | 2018-08-27 13:30 | 608 | 2018-08-24 13:30 | 2018-08-27 13:30 | 16h | 0d | TEAM_2Shift_Calendar-1 | Helper; Fitter | 32h | 1,900 | 1,900 |
| 614 | 1.15.3.2 | Sliding Strip Welding |  | 4h | 2018-08-27 13:30 | 2018-08-27 17:30 | 613 | 2018-08-27 13:30 | 2018-08-27 17:30 | 4h | 0d | TEAM_2Shift_Calendar-1 | Helper; SMAW Welder | 8h | 475 | 475 |
| 615 | 1.15.3.3 | Seal/Slid Trip Weld Grind |  | 10h | 2018-08-27 17:30 | 2018-08-28 11:30 | 614 | 2018-08-27 17:30 | 2018-08-28 11:30 | 10h | 0d | TEAM_2Shift_Calendar-1 | Grinder | 10h | 562.5 | 562.5 |
| 616 | 1.15.4 | **Tube Bundle Insert** |  | 3d | 2018-08-28 11:30 | 2018-08-29 19:30 |  | 2018-08-28 11:30 | 2018-08-29 19:30 | 3d | 0d | TEAM_2Shift_Calendar-1 |  | 236h | 13,075 | 13,075 |
| 617 | 1.15.4.1 | Tube Bundle Insert In Shell |  | 16h | 2018-08-28 11:30 | 2018-08-29 11:30 | 612 | 2018-08-28 11:30 | 2018-08-29 11:30 | 16h | 0d | TEAM_2Shift_Calendar-1 | Helper [800%]; Fitter [300%] | 176h | 9,700 | 9,700 |
| 618 | 1.15.4.2 | Fl Head Tube Sht Fixing |  | 4h | 2018-08-29 11:30 | 2018-08-29 15:30 | 617 | 2018-08-29 11:30 | 2018-08-29 15:30 | 4h | 0d | TEAM_2Shift_Calendar-1 | Helper [400%]; Fitter [200%] | 24h | 1,350 | 1,350 |
| 619 | 1.15.4.3 | Test Flg & Gland Assy |  | 4h | 2018-08-29 15:30 | 2018-08-29 19:30 | 618 | 2018-08-29 15:30 | 2018-08-29 19:30 | 4h | 0d | TEAM_2Shift_Calendar-1 | Helper [600%]; Fitter [300%] | 36h | 2,025 | 2,025 |
| 620 | 1.15.5 | **Tube Expansion In Grooves** |  | 12.03d | 2018-08-29 19:30 | 2018-09-05 19:45 |  | 2018-08-29 19:30 | 2018-09-05 19:45 | 12.03d | 0d | TEAM_2Shift_Calendar-1 |  | 256.5h | 14,929.69 | 14,929.69 |
| 621 | 1.15.5.1 | Tube Exp - St Side 1 Stage |  | 16h | 2018-08-29 19:30 | 2018-08-30 19:30 | 616 | 2018-08-29 19:30 | 2018-08-30 19:30 | 16h | 0d | TEAM_2Shift_Calendar-1 | Helper [200%]; Fitter | 48h | 2,700 | 2,700 |
| 622 | 1.15.5.2 | Tube Exp - Fl Side 1 Stage |  | 16h | 2018-08-30 19:30 | 2018-08-31 19:30 | 621 | 2018-08-30 19:30 | 2018-08-31 19:30 | 16h | 0d | TEAM_2Shift_Calendar-1 | Helper [200%]; Fitter | 48h | 2,700 | 2,700 |
| 623 | 1.15.5.3 | Tube Trimming Fl Side |  | 48.25h | 2018-08-31 19:30 | 2018-09-04 19:45 | 622 | 2018-08-31 19:30 | 2018-09-04 19:45 | 48.25h | 0d | TEAM_2Shift_Calendar-1 | Helper; Fitter | 96.5h | 5,729.69 | 5,729.69 |
| 624 | 1.15.5.4 | Tube Exp Both Side 4 Stage |  | 16h | 2018-09-04 19:45 | 2018-09-05 19:45 | 623 | 2018-09-04 19:45 | 2018-09-05 19:45 | 16h | 0d | TEAM_2Shift_Calendar-1 | Helper [200%]; Fitter [200%] | 64h | 3,800 | 3,800 |
| 625 | 1.15.6 | **Tube Exp- Pnuematic Test** |  | 2.5d | 2018-09-05 19:45 | 2018-09-07 07:45 |  | 2018-09-05 19:45 | 2018-09-07 07:45 | 2.5d | 0d | TEAM_2Shift_Calendar-1 |  | 74h | 4,300 | 4,300 |
| 626 | 1.15.6.1 | Tube Exp Pnuematic Test |  | 12h | 2018-09-05 19:45 | 2018-09-06 15:45 | 620 | 2018-09-05 19:45 | 2018-09-06 15:45 | 12h | 0d | TEAM_2Shift_Calendar-1 | Helper [200%]; Fitter [200%] | 48h | 2,850 | 2,850 |
| 627 | 1.15.6.2 | Pnuematic Test Tpi Witness |  | 3h | 2018-09-06 15:45 | 2018-09-06 18:45 | 626 | 2018-09-06 15:45 | 2018-09-06 18:45 | 3h | 0d | TEAM_2Shift_Calendar-1 | Helper; Fitter | 6h | 356.25 | 356.25 |
| 628 | 1.15.6.3 | Cleaning |  | 5h | 2018-09-06 18:45 | 2018-09-07 07:45 | 627 | 2018-09-06 18:45 | 2018-09-07 07:45 | 5h | 0d | TEAM_2Shift_Calendar-1 | Helper [300%]; Fitter | 20h | 1,093.75 | 1,093.75 |
| 629 | 1.15.7 | **Tube Tube Sheet Welding- Ft Side** |  | 16.62d | 2018-09-07 07:45 | 2018-09-19 12:45 |  | 2018-09-07 07:45 | 2018-09-19 12:45 | 16.62d | 0d | TEAM_2Shift_Calendar-1 |  | 266h | 22,600 | 22,600 |
| 630 | 1.15.7.1 | Tube Welding - St Side Root |  | 40.5h | 2018-09-07 07:45 | 2018-09-11 16:15 | 625 | 2018-09-07 07:45 | 2018-09-11 16:15 | 40.5h | 0d | TEAM_2Shift_Calendar-1 | Helper; TIG Welder | 81h | 7,087.5 | 7,087.5 |
| 631 | 1.15.7.2 | Tube Welding - St Side Root Dp |  | 4h | 2018-09-11 16:15 | 2018-09-11 20:15 | 630 | 2018-09-11 16:15 | 2018-09-11 20:15 | 4h | 0d | TEAM_2Shift_Calendar-1 | Helper; Fitter | 8h | 475 | 475 |
| 632 | 1.15.7.3 | Tube Welding - St Side Final Weld |  | 80.5h | 2018-09-11 20:15 | 2018-09-18 20:45 | 631 | 2018-09-11 20:15 | 2018-09-18 20:45 | 80.5h | 0d | TEAM_2Shift_Calendar-1 | Helper; TIG Welder | 161h | 14,087.5 | 14,087.5 |
| 633 | 1.15.7.4 | Tube Welding - St Side Final Dp |  | 8h | 2018-09-18 20:45 | 2018-09-19 12:45 | 632 | 2018-09-18 20:45 | 2018-09-19 12:45 | 8h | 0d | TEAM_2Shift_Calendar-1 | Helper; Fitter | 16h | 950 | 950 |

| ID | WBS | Task | Duration | Start | Finish | Predecessors | Baseline start | Baseline finish | Baseline duration | Total slack | Free slack | Calendar | Resources | Work | Cost | Baseline cost |
| --- | --- | --- | --- | --- | --- | --- | --- | --- | --- | --- | --- | --- | --- | --- | --- | --- |
| 634 | 1.15.8 | **Tube To Tube Sheet Welding - Fl Head Side** | 16.62d | 2018-09-19 12:45 | 2018-09-29 17:45 |  | 2018-09-19 12:45 | 2018-09-29 17:45 | 16.62d | 0d |  | TEAM_2Shift_Calendar-1 |  | 266h | 22,600 | 22,600 |
| 635 | 1.15.8.1 | Tube Welding - Flh Side Root | 40.5h | 2018-09-19 12:45 | 2018-09-21 21:15 | 629 | 2018-09-19 12:45 | 2018-09-21 21:15 | 40.5h | 0d |  | TEAM_2Shift_Calendar-1 | Helper; TIG Welder | 81h | 7,087.5 | 7,087.5 |
| 636 | 1.15.8.2 | Tube Welding - Flh Side Root Dp | 4h | 2018-09-21 21:15 | 2018-09-24 09:15 | 635 | 2018-09-21 21:15 | 2018-09-24 09:15 | 4h | 0d |  | TEAM_2Shift_Calendar-1 | Helper; Fitter | 8h | 475 | 475 |
| 637 | 1.15.8.3 | Tube Welding - Flh Side Final Weld | 80.5h | 2018-09-24 09:15 | 2018-09-29 09:45 | 636 | 2018-09-24 09:15 | 2018-09-29 09:45 | 80.5h | 0d |  | TEAM_2Shift_Calendar-1 | Helper; TIG Welder | 161h | 14,087.5 | 14,087.5 |
| 638 | 1.15.8.4 | Tube Welding - Flh Side Final Dp | 8h | 2018-09-29 09:45 | 2018-09-29 17:45 | 637 | 2018-09-29 09:45 | 2018-09-29 17:45 | 8h | 0d |  | TEAM_2Shift_Calendar-1 | Helper; Fitter | 16h | 950 | 950 |
| 639 | 1.16 | **Hydro Test** | 35.09d | 2018-06-13 08:30 | 2018-07-04 17:15 |  | 2018-05-22 08:30 | 2018-06-22 07:00 | 49.81d | 77.91d |  | TEAM_2Shift_Calendar-1 |  | 240h | 14,250 | 14,250 |
| 640 | 1.16.1 | **Shell Side Hydro** | 2.5d | 2018-07-03 13:15 | 2018-07-04 17:15 |  | 2018-06-20 19:00 | 2018-06-22 07:00 | 2.5d | 77.91d | 0d | TEAM_2Shift_Calendar-1 |  | 80h | 4,750 | 4,750 |
| 641 | 1.16.1.1 | Shell Side Hydro | 12h | 2018-07-03 13:15 | 2018-07-04 09:15 | 265 | 2018-06-20 19:00 | 2018-06-21 15:00 | 12h | 77.91d | 0d | TEAM_2Shift_Calendar-1 | Helper [200%]; Fitter [200%] | 48h | 2,850 | 2,850 |
| 642 | 1.16.1.2 | Shell Side Tpi Witness | 4h | 2018-07-04 09:15 | 2018-07-04 13:15 | 641 | 2018-06-21 15:00 | 2018-06-21 19:00 | 4h | 77.91d | 0d | TEAM_2Shift_Calendar-1 | Fitter [200%] | 8h | 550 | 550 |
| 643 | 1.16.1.3 | De Watering & Dismantle Of Gland | 4h | 2018-07-04 13:15 | 2018-07-04 17:15 | 642 | 2018-06-21 19:00 | 2018-06-22 07:00 | 4h | 77.91d |  | TEAM_2Shift_Calendar-1 | Helper [400%]; Fitter [200%] | 24h | 1,350 | 1,350 |
| 644 | 1.16.2 | **Channel Side Hydro** | 2.5d | 2018-06-20 13:30 | 2018-06-21 17:30 |  | 2018-05-30 13:30 | 2018-05-31 17:30 | 2.5d | 97.88d | 19.97d | TEAM_2Shift_Calendar-1 |  | 80h | 4,750 | 4,750 |
| 645 | 1.16.2.1 | Shell Side Hydro | 12h | 2018-06-20 13:30 | 2018-06-21 09:30 | 416 | 2018-05-30 13:30 | 2018-05-31 09:30 | 12h | 97.88d | 0d | TEAM_2Shift_Calendar-1 | Helper [200%]; Fitter [200%] | 48h | 2,850 | 2,850 |
| 646 | 1.16.2.2 | Shell Side Tpi Witness | 4h | 2018-06-21 09:30 | 2018-06-21 13:30 | 645 | 2018-05-31 09:30 | 2018-05-31 13:30 | 4h | 97.88d | 0d | TEAM_2Shift_Calendar-1 | Fitter [200%] | 8h | 550 | 550 |
| 647 | 1.16.2.3 | De Watering & Dismantle Of Gland | 4h | 2018-06-21 13:30 | 2018-06-21 17:30 | 646 | 2018-05-31 13:30 | 2018-05-31 17:30 | 4h | 97.88d |  | TEAM_2Shift_Calendar-1 | Helper [400%]; Fitter [200%] | 24h | 1,350 | 1,350 |
| 648 | 1.16.3 | **Barrel Side Hydro** | 2.5d | 2018-06-13 08:30 | 2018-06-14 12:30 |  | 2018-05-22 08:30 | 2018-05-23 12:30 | 2.5d | 110.5d | 32.59d | TEAM_2Shift_Calendar-1 |  | 80h | 4,750 | 4,750 |
| 649 | 1.16.3.1 | Shell Side Hydro | 12h | 2018-06-13 08:30 | 2018-06-13 20:30 | 502 | 2018-05-22 08:30 | 2018-05-22 20:30 | 12h | 110.5d | 0d | TEAM_2Shift_Calendar-1 | Helper [200%]; Fitter [200%] | 48h | 2,850 | 2,850 |
| 650 | 1.16.3.2 | Shell Side Tpi Witness | 4h | 2018-06-13 20:30 | 2018-06-14 08:30 | 649 | 2018-05-22 20:30 | 2018-05-23 08:30 | 4h | 110.5d | 0d | TEAM_2Shift_Calendar-1 | Fitter [200%] | 8h | 550 | 550 |
| 651 | 1.16.3.3 | De Watering & Dismantle Of Gland | 4h | 2018-06-14 08:30 | 2018-06-14 12:30 | 650 | 2018-05-23 08:30 | 2018-05-23 12:30 | 4h | 110.5d |  | TEAM_2Shift_Calendar-1 | Helper [400%]; Fitter [200%] | 24h | 1,350 | 1,350 |
| 652 | 1.17 | **Nitrogen Purging** | 0.87d | 2018-07-04 17:15 | 2018-07-05 08:14 |  | 2018-06-22 07:00 | 2018-06-22 13:59 | 0.87d | 77.91d | 0d | TEAM_2Shift_Calendar-1 |  | 20.95h | 1,178.43 | 1,178.43 |
| 653 | 1.17.1 | Blind & Nitrogen Purging | 0.87d | 2018-07-04 17:15 | 2018-07-05 08:14 | 640, 644, 648 | 2018-06-22 07:00 | 2018-06-22 13:59 | 0.87d | 77.91d |  | TEAM_2Shift_Calendar-1 | Helper [200%]; Fitter | 20.95h | 1,178.43 | 1,178.43 |
| 654 | 1.18 | **Painting** | 3d | 2018-07-05 08:14 | 2018-07-06 16:14 |  | 2018-06-22 13:59 | 2018-06-25 21:59 | 3d | 77.91d | 0d | TEAM_2Shift_Calendar-1 |  | 72h |  |  |
| 655 | 1.18.1 | Primer | 1d | 2018-07-05 08:14 | 2018-07-05 16:14 | 652 | 2018-06-22 13:59 | 2018-06-22 21:59 | 1d | 77.91d | 0d | TEAM_2Shift_Calendar-1 | Painter [300%] | 24h |  |  |
| 656 | 1.18.2 | Top Coat 1 | 1d | 2018-07-05 16:14 | 2018-07-06 08:14 | 655 | 2018-06-22 21:59 | 2018-06-25 13:59 | 1d | 77.91d | 0d | TEAM_2Shift_Calendar-1 | Painter [300%] | 24h |  |  |
| 657 | 1.18.3 | Top Coat 2 | 1d | 2018-07-06 08:14 | 2018-07-06 16:14 | 656 | 2018-06-25 13:59 | 2018-06-25 21:59 | 1d | 77.91d |  | TEAM_2Shift_Calendar-1 | Painter [300%] | 24h |  |  |

| ID | WBS | Task | Duration | Start | Finish | Predecessors | Baseline start | Baseline finish | Baseline duration | Total slack | Free slack | Resources | Work | Cost | Baseline cost |
| --- | --- | --- | --- | --- | --- | --- | --- | --- | --- | --- | --- | --- | --- | --- | --- |
| 658 | 1.19 | **100-EE-1011 Closure** | 26.25d | 2018-07-06 16:14 | 2018-08-09 09:14 |  | 2018-06-26 08:30 | 2018-07-27 10:30 | 26.25d | 38.91d |  |  | 430h | 1,600 | 1,600 |
| 659 | 1.19.1 | Store Handover | 1d | 2018-07-06 16:14 | 2018-07-07 16:14 | 654 | 2018-06-26 08:30 | 2018-06-26 17:30 | 1d | 38.91d | 0d | Helper [400%]; Foreman [50%]; Store | 44h | 1,600 | 1,600 |
| 660 | 1.19.2 | Transport Equipment to Delivery Location | 5d | 2018-07-13 16:14 | 2018-07-20 16:14 | 659FS+5d | 2018-07-03 08:30 | 2018-07-07 17:30 | 5d | 38.91d | 0d |  |  |  |  |
| 661 | 1.19.3 | Final Documentation Preperation & Review | 15d | 2018-07-20 16:14 | 2018-08-08 16:14 | 660 | 2018-07-09 08:30 | 2018-07-26 17:30 | 15d | 38.91d | 0d | QC Engineer [200%] | 240h |  |  |
| 662 | 1.19.4 | Final Documentation Submission | 2h | 2018-08-08 16:14 | 2018-08-09 09:14 | 661 | 2018-07-27 08:30 | 2018-07-27 10:30 | 2h | 38.91d |  | Marketing | 2h |  |  |
| 663 | 1.19.5 | Warranty guarantee Submission | 8d | 2018-07-20 16:14 | 2018-07-31 16:14 | 660 | 2018-07-09 08:30 | 2018-07-18 17:30 | 8d | 46.16d |  | Marketing; Finance | 128h |  |  |
| 664 | 1.19.6 | Invoice Submission | 2d | 2018-07-20 16:14 | 2018-07-23 16:14 | 660 | 2018-07-09 08:30 | 2018-07-10 17:30 | 2d | 52.16d |  | Marketing | 16h |  |  |
