# 4220-DANGOTE

Schedule from MS Project, 2017-10-03 to 2019-03-26, costs in Rs., A marks actual dates.

## Calendars

- TEAM_Stand_Calendar: Mon-Sat 08:30-12:30, 13:30-17:30; Sun off. Exceptions (off unless hours are given): 2017-01-13 to 2023-08-12 (2nd Sat, recurring), 2017-01-26 to 2036-01-26 (Republic Day, recurring), 2017-01-27 to 2023-08-26 (4th Sat, recurring), 2017-05-01 to 2036-05-01 (May Day, recurring), 2017-08-15 to 2036-08-15 (Independence Day, recurring), 2017-10-02 to 2036-10-02 (Gandhi Jayanti, recurring), 2017-10-18 (Deepavali'2017), 2018-01-15 (Thiruvalluvar Day'2018), 2018-09-13 (Vinakaya Chaturthi'2018), 2018-10-18 (Ayudha Pooja'2018), 2018-11-06 to 2018-11-07 (Deepavali'2018).

## Resources

| Resource |
| --- |
| Marketing |
| PMO Head |
| Draftman |
| Client |
| PPC Engineer |
| QC Engineer |
| Store |
| PM |
| Production Department |
| Crane |
| Design Engineer |
| Purchase Engineer |
| Finance |

## Schedule

| ID | Task | Duration | Start | Finish | Complete | Remaining | Baseline start | Baseline finish | Baseline duration | Total slack | Constraint | Work | Actual work | Cost | Baseline cost |
| --- | --- | --- | --- | --- | --- | --- | --- | --- | --- | --- | --- | --- | --- | --- | --- |
| 1 | 4220-0 | 277.94d | 2017-10-03 A | 2018-09-26 | 71% | 81.45d | 2017-10-03 | 2019-05-27 | 464.94d | 138.38d |  | 18326.7h | 12817.2h |  |  |
| 2 | 4220-A1001 | 364.75d | 2017-10-03 A | 2019-01-18 | 1% | 361.11d | 2017-10-03 | 2019-01-18 | 364.75d | 51.57d |  | 59793h | 338h | 2,600,712.33 | 2,600,712.33 |
| 3 | 4220-B1003 | 175.75d | 2018-05-31 | 2019-01-15 |  |  | 2018-05-31 | 2019-01-15 | 175.75d | 54.56d |  | 25389.5h |  | 1,079,492.03 | 1,079,492.03 |
| 4 | 4220-D1006 | 398.25d | 2017-10-03 A | 2019-03-02 | 5% | 379.19d | 2017-10-03 | 2019-03-02 | 398.25d | 18.06d |  | 20520.1h |  | 835,128.42 | 835,128.42 |
| 5 | 4220-E1007 | 347.33d | 2017-10-03 A | 2018-12-28 | 1% | 345.19d | 2017-10-03 | 2018-12-28 | 347.33d | 68.98d |  | 15999h |  | 858,712.69 | 858,712.69 |
| 6 | 4220-F1008 | 272.22d | 2017-10-03 A | 2018-09-19 | 36% | 174.46d | 2017-10-03 | 2018-09-19 | 272.22d | 144.09d |  | 5733.67h | 6h | 296,577.37 | 296,577.37 |
| 7 | 4220-G1009 | 331.44d | 2017-10-03 A | 2018-12-07 | 9% | 302.62d | 2017-10-03 | 2018-12-07 | 331.44d | 84.88d |  | 21423.5h |  | 991,372.5 | 991,372.5 |
| 8 | 4220-H1010 | 349.39d | 2017-10-03 A | 2018-12-31 | 11% | 309.52d | 2017-10-03 | 2018-12-31 | 349.39d | 66.92d |  | 10858.2h |  | 561,647.74 | 561,647.74 |
| 9 | 4220-I1011 | 385.44d | 2017-10-03 A | 2019-02-14 | 1% | 381.78d | 2017-10-03 | 2019-02-14 | 385.44d | 30.88d |  | 64811h |  | 3,745,918.75 | 3,745,918.75 |
| 10 | 4220-J2012 | 349.12d | 2017-10-03 A | 2019-02-04 |  | 348.67d | 2017-10-03 | 2019-02-04 | 349.12d | 39.25d |  | 54938h |  | 2,572,476.25 | 2,572,476.25 |
| 11 | 4220-K1013 | 385.38d | 2017-10-03 A | 2019-03-26 |  | 384.4d | 2017-10-03 | 2019-03-26 | 385.38d | 0d |  | 18324.5h |  | 928,561.25 | 928,561.25 |
| 12 | 4220-L1014 | 290.25d | 2017-10-03 A | 2018-10-12 | 25% | 218.8d | 2017-10-03 | 2018-10-12 | 290.25d | 126.06d |  | 1910.94h |  | 88,358.87 | 88,358.87 |
| 13 | 4220-N1011 | 281d | 2017-10-03 A | 2018-09-29 | 13% | 244.18d | 2017-10-03 | 2018-09-29 | 281d | 135.31d |  | 6468.2h |  | 302,184.05 | 302,184.05 |
| 14 | Other Tags | 276d | 2017-10-03 | 2018-09-24 |  |  | 2017-10-03 | 2018-09-24 | 276d | 140.31d | start no earlier than 2017-10-03 | 18300h |  |  |  |
