# 4221-2403

Schedule from MS Project, 2017-11-02 to 2018-10-23, costs in ₹, A marks actual dates.

## Calendars

- TEAM_2Shift_Calendar-1: Mon-Sat 06:00-22:00; Sun off. Exceptions (off unless hours are given): 2017-01-13 to 2023-02-11 (2nd Sat, recurring), 2017-01-26 to 2036-01-26 (Republic Day, recurring), 2017-01-27 to 2023-08-26 (4th Sat, recurring), 2017-05-01 to 2036-05-01 (May Day, recurring), 2017-08-15 to 2036-08-15 (Indepdence Day, recurring), 2017-10-02 to 2036-10-02 (Gandhi Jayanti, recurring), 2018-01-15 (Thiruvalluvar Day'2018), 2018-09-13 (Vinakya Chaturthi'2018), 2018-10-18 (Ayudha Pooja'2018).
- TEAM_Stand_Calendar: Mon-Sat 08:30-12:30, 13:30-17:30; Sun off. Exceptions (off unless hours are given): 2017-01-13 to 2023-08-12 (2nd Sat, recurring), 2017-01-26 to 2036-01-26 (Republic Day, recurring), 2017-01-27 to 2023-08-26 (4th Sat, recurring), 2017-05-01 to 2036-05-01 (May Day, recurring), 2017-08-15 to 2036-08-15 (Independence Day, recurring), 2017-10-02 to 2036-10-02 (Gandhi Jayanti, recurring), 2018-01-15 (Thiruvalluvar Day'2018), 2018-09-13 (Vinakaya Chaturthi'2018), 2018-10-18 (Ayudha Pooja'2018).

## Resources

| Resource | Rate |
| --- | --- |
| Marketing |  |
| PPC Engineer |  |
| QC Engineer |  |
| Purchase Engineer |  |
| PMO Support |  |
| Draftman |  |
| Client |  |
| Crane |  |
| Helper | 50 |
| Store |  |
| SC Radiography (Cost) |  |
| Cutting Machine |  |
| SC (Work) |  |
| Driller | 68.75 |
| Fitter | 68.75 |
| Gas Cutter | 68.75 |
| Grinder | 56.25 |
| Grinding Machine |  |
| OAGM |  |
| Painter |  |
| Radial Drilling Machine |  |
| SMAW Welder | 68.75 |
| TIG Welding Machine |  |
| TIG Welder | 125 |
| SMAW Welding Machine |  |
| TPI (Cost) |  |
| Vehicle |  |
| Lathe Operator | 120 |
| Lathe |  |
| Expanding Machine |  |
| Rolling Machine |  |
| SAW Welder | 68.75 |
| Milling Operator | 120 |
| Forging Non-Std (Cost) |  |
| Forging Std (Cost) |  |
| Pipe (Cost) |  |
| Plate (Cost) |  |
| Rod (Cost) |  |
| Tube (Cost) |  |
| Tube Sheet (Cost) |  |
| Design Engineer |  |

## Schedule

| ID | WBS | Task | Type | Duration | Start | Finish | Predecessors | Complete | Remaining | Baseline start | Baseline finish | Baseline duration | Total slack | Free slack | Constraint | Resources | Work | Actual work |
| --- | --- | --- | --- | --- | --- | --- | --- | --- | --- | --- | --- | --- | --- | --- | --- | --- | --- | --- |
| 1 | 1 | Drawing Approval | milestone | 1d | 2018-05-21 08:30 | 2018-05-21 17:30 |  |  |  | 2018-04-27 08:00 | 2018-04-27 17:30 | 1d | 0d |  | start no earlier than 2018-05-21 08:00 | Client | 2h |  |
| 2 | 2 | **Preliminary Details For Enquiry** |  | 72d | 2017-11-02 08:30 A | 2018-02-02 17:30 A |  | 100% |  | 2017-11-02 08:30 | 2018-02-02 17:30 | 72d |  |  |  |  | 40h | 40h |
| 3 | 2.1 | Tubes SA 179 |  | 3d | 2017-11-02 08:30 A | 2017-11-04 17:30 A |  | 100% |  | 2017-11-02 08:30 | 2017-11-04 17:30 | 3d |  |  |  | PPC Engineer; Design Engineer | 24h | 24h |
| 4 | 2.2 | Forgings SA 266 Gr.4 |  | 2d | 2018-02-01 08:30 A | 2018-02-02 17:30 A |  | 100% |  | 2018-02-01 08:30 | 2018-02-02 17:30 | 2d |  |  |  | PPC Engineer; Design Engineer | 16h | 16h |
| 5 | 3 | **PR Issue** |  | 126d | 2017-12-21 08:30 A | 2018-06-01 17:30 |  | 3% | 122.45d | 2017-12-21 08:30 | 2018-05-10 17:30 | 109d | 103d |  |  |  | 55h | 8h |
| 6 | 3.1 | Plates |  | 7d | 2018-05-22 08:30 | 2018-05-30 17:30 | 1 |  |  | 2018-04-30 08:30 | 2018-05-08 17:30 | 7d | 0d |  |  | Plate (Cost) [0.1%]; PPC Engineer | 8h |  |
| 7 | 3.2 | Pipes |  | 7d | 2018-05-22 08:30 | 2018-05-30 17:30 | 1 |  |  | 2018-04-30 08:30 | 2018-05-08 17:30 | 7d | 29.12d | 0d |  | Pipe (Cost) [0.1%]; PPC Engineer | 6h |  |
| 8 | 3.3 | Rods |  | 9d | 2018-05-22 08:30 | 2018-06-01 17:30 | 1 |  |  | 2018-04-30 08:30 | 2018-05-10 17:30 | 9d | 103d | 0d |  | Rod (Cost) [0.1%]; PPC Engineer | 2h |  |
| 9 | 3.4 | Tubes |  | 2d | 2017-12-21 08:30 A | 2017-12-22 17:30 A | 3 | 100% |  | 2017-12-21 08:30 | 2017-12-22 17:30 | 2d |  |  |  | Tube (Cost) [0.1%]; PPC Engineer | 8h | 8h |
| 10 | 3.5 | Forgings(std,Non-std,Blank) |  | 4d | 2018-05-22 08:30 | 2018-05-25 17:30 | 1 |  |  | 2018-04-30 08:30 | 2018-05-04 17:30 | 4d | 20.62d | 0d |  | Forging Non-Std (Cost) [0.1%]; Forging Std (Cost) [0.1%]; Tube Sheet (Cost) [0.1%]; PPC Engineer | 8h |  |
| 11 | 3.6 | 180 Deg return radius bend |  | 7d | 2018-05-22 08:30 | 2018-05-30 17:30 | 1 |  |  | 2018-04-30 08:30 | 2018-05-08 17:30 | 7d | 42.62d | 0d |  | PPC Engineer | 8h |  |
| 12 | 3.7 | Gaskets |  | 7d | 2018-05-22 08:30 | 2018-05-30 17:30 | 1 |  |  | 2018-04-30 08:30 | 2018-05-08 17:30 | 7d | 24.75d | 0d |  | PPC Engineer | 3h |  |
| 13 | 3.8 | Cosumbales |  | 7d | 2018-05-22 08:30 | 2018-05-30 17:30 | 1 |  |  | 2018-04-30 08:30 | 2018-05-08 17:30 | 7d | 54.75d | 0d |  | PPC Engineer | 4h |  |
| 14 | 3.9 | Fastners |  | 7d | 2018-05-22 08:30 | 2018-05-30 17:30 | 1 |  |  | 2018-04-30 08:30 | 2018-05-08 17:30 | 7d | 24.88d | 0d |  | PPC Engineer | 3h |  |
| 15 | 3.10 | Paint |  | 7d | 2018-05-22 08:30 | 2018-05-30 17:30 | 1 |  |  | 2018-04-30 08:30 | 2018-05-08 17:30 | 7d | 24.75d | 0d |  | PPC Engineer | 3h |  |
| 16 | 3.11 | N2 Purgings |  | 7d | 2018-05-22 08:30 | 2018-05-30 17:30 | 1 |  |  | 2018-04-30 08:30 | 2018-05-08 17:30 | 7d | 105d | 0d |  | PPC Engineer | 2h |  |
| 17 | 4 | **Material Ordering** |  | 121d | 2018-01-05 08:30 A | 2018-06-11 17:30 |  | 3% | 117.64d | 2018-01-05 08:30 | 2018-05-19 17:30 | 104d | 103d |  |  |  | 39.5h | 8h |
| 18 | 4.1 | Plates |  | 7d | 2018-05-31 08:30 | 2018-06-07 17:30 | 6 |  |  | 2018-05-09 08:30 | 2018-05-17 17:30 | 7d | 0d |  |  | Plate (Cost) [0.1%]; Purchase Engineer | 5h |  |
| 19 | 4.2 | Pipes |  | 7d | 2018-05-31 08:30 | 2018-06-07 17:30 | 7 |  |  | 2018-05-09 08:30 | 2018-05-17 17:30 | 7d | 29.12d | 0d |  | Pipe (Cost) [0.1%]; Purchase Engineer | 3h |  |
| 20 | 4.3 | Rods |  | 7d | 2018-06-02 08:30 | 2018-06-11 17:30 | 8 |  |  | 2018-05-11 08:30 | 2018-05-19 17:30 | 7d | 103d |  |  | Rod (Cost) [0.1%]; Purchase Engineer | 1h |  |
| 21 | 4.4 | Tubes |  | 2d | 2018-01-05 08:30 A | 2018-01-06 17:30 A | 9 | 100% |  | 2018-01-05 08:30 | 2018-01-06 17:30 | 2d |  |  |  | Tube (Cost) [0.1%]; Purchase Engineer | 8h | 8h |
| 22 | 4.5 | Forgings(std,Non-std,Blank) |  | 7d | 2018-05-28 08:30 | 2018-06-04 17:30 | 10 |  |  | 2018-05-05 08:30 | 2018-05-14 17:30 | 7d | 20.62d | 0d |  | Forging Non-Std (Cost) [0.1%]; Forging Std (Cost) [0.1%]; Tube Sheet (Cost) [0.1%]; Purchase Engineer | 8h |  |
| 23 | 4.6 | 180 Deg return radius bend |  | 7d | 2018-05-31 08:30 | 2018-06-07 17:30 | 11 |  |  | 2018-05-09 08:30 | 2018-05-17 17:30 | 7d | 42.62d | 0d |  | Purchase Engineer | 8h |  |
| 24 | 4.7 | Gaskets |  | 7d | 2018-05-31 08:30 | 2018-06-07 17:30 | 12 |  |  | 2018-05-09 08:30 | 2018-05-17 17:30 | 7d | 24.75d | 0d |  | Purchase Engineer | 2h |  |
| 25 | 4.8 | Cosumbales |  | 7d | 2018-05-31 08:30 | 2018-06-07 17:30 | 13 |  |  | 2018-05-09 08:30 | 2018-05-17 17:30 | 7d | 54.75d | 0d |  | Purchase Engineer | 2h |  |
| 26 | 4.9 | Fastners |  | 7d | 2018-05-31 08:30 | 2018-06-07 17:30 | 14 |  |  | 2018-05-09 08:30 | 2018-05-17 17:30 | 7d | 24.88d | 0d |  | Purchase Engineer | 1h |  |
| 27 | 4.10 | Paint |  | 7d | 2018-05-31 08:30 | 2018-06-07 17:30 | 15 |  |  | 2018-05-09 08:30 | 2018-05-17 17:30 | 7d | 24.75d | 0d |  | Purchase Engineer | 0.5h |  |
| 28 | 4.11 | N2 Purgings |  | 7d | 2018-05-31 08:30 | 2018-06-07 17:30 | 16 |  |  | 2018-05-09 08:30 | 2018-05-17 17:30 | 7d | 105d |  |  | Purchase Engineer | 1h |  |

| ID | WBS | Task | Duration | Start | Finish | Predecessors | Baseline start | Baseline finish | Baseline duration | Total slack | Free slack | Calendar | Resources | Work | Cost | Baseline cost |
| --- | --- | --- | --- | --- | --- | --- | --- | --- | --- | --- | --- | --- | --- | --- | --- | --- |
| 29 | 5 | **Material Receipt- Double Pipe Exchanger(171-EE-2403)** | 35.25d | 2018-08-04 08:30 | 2018-09-20 10:30 |  | 2018-07-13 08:30 | 2018-08-29 10:30 | 35.25d | 15d |  |  |  | 80h | 2,100 | 2,100 |
| 30 | 5.1 | Inner Pipe SA 106Gr.B - 4 Nos | 3h | 2018-08-04 08:30 | 2018-08-04 11:30 | 19FS+45d | 2018-07-13 08:30 | 2018-07-13 11:30 | 3h | 32.62d | 12d |  | Store; Pipe (Cost) [0.1%]; Helper [200%] | 9h | 300 | 300 |
| 31 | 5.2 | Pipe SA 106 Gr.B- 3 NOS | 2h | 2018-08-04 08:30 | 2018-08-04 10:30 | 19FS+45d | 2018-07-13 08:30 | 2018-07-13 10:30 | 2h | 59.75d |  |  | Store; Pipe (Cost) [0.1%]; Helper [200%] | 6h | 200 | 200 |
| 32 | 5.3 | Outer Pipe SA 106 Gr.B-4 NOS | 2h | 2018-08-04 08:30 | 2018-08-04 10:30 | 19FS+45d | 2018-07-13 08:30 | 2018-07-13 10:30 | 2h | 32.75d | 12.12d |  | Store; Pipe (Cost) [0.1%]; Helper [200%] | 6h | 200 | 200 |
| 33 | 5.4 | Cap for Outer Pipe SA 234 GR WPB | 2h | 2018-08-04 08:30 | 2018-08-04 10:30 | 19FS+45d | 2018-07-13 08:30 | 2018-07-13 10:30 | 2h | 48.75d | 13.62d |  | Store; Helper | 4h | 100 | 100 |
| 34 | 5.5 | Inner Pipe Flange SA 105 - 14 NOS | 3h | 2018-08-21 08:30 | 2018-08-21 11:30 | 22FS+60d | 2018-07-30 08:30 | 2018-07-30 11:30 | 3h | 20.62d | 0d |  | Store; Forging Std (Cost) [0.1%]; Helper | 6h | 150 | 150 |
| 35 | 5.6 | Flange for S1 SA 105- 1 NOS | 1h | 2018-08-21 08:30 | 2018-08-21 09:30 | 22FS+60d | 2018-07-30 08:30 | 2018-07-30 09:30 | 1h | 42.38d | 13.25d |  | Store; Forging Std (Cost) [0.1%]; Helper | 2h | 50 | 50 |
| 36 | 5.7 | Flange for S2 SA 105- 1 NOS | 1h | 2018-08-21 08:30 | 2018-08-21 09:30 | 22FS+60d | 2018-07-30 08:30 | 2018-07-30 09:30 | 1h | 42.38d | 13.25d |  | Store; Forging Std (Cost) [0.1%]; Helper | 2h | 50 | 50 |
| 37 | 5.8 | Flange for S3- S8 SA 105- 6 NOS | 3h | 2018-08-21 08:30 | 2018-08-21 11:30 | 22FS+60d | 2018-07-30 08:30 | 2018-07-30 11:30 | 3h | 42.12d | 13d |  | Store; Forging Std (Cost) [0.1%]; Helper | 6h | 150 | 150 |
| 38 | 5.9 | 180 Deg return radius bend | 3h | 2018-08-24 08:30 | 2018-08-24 11:30 | 23FS+60d | 2018-08-02 08:30 | 2018-08-02 11:30 | 3h | 42.62d | 0d |  | Store; Helper | 6h | 150 | 150 |
| 39 | 5.10 | Nozzle Pipe SA 106 Gr.B- 8 NOS | 3h | 2018-09-06 08:30 | 2018-09-06 11:30 | 19FS+70d | 2018-08-16 08:30 | 2018-08-16 11:30 | 3h | 29.12d | 0d |  | Store; Pipe (Cost) [0.1%]; Helper | 6h | 150 | 150 |
| 40 | 5.11 | Saddle plate(12T,16T,10T)- IS 2062 Gr.B | 2h | 2018-08-24 08:30 | 2018-08-24 10:30 | 18FS+60d | 2018-08-02 08:30 | 2018-08-02 10:30 | 2h | 0d |  |  | Helper; Store; Plate (Cost) [0.1%]; Crane | 6h | 100 | 100 |
| 41 | 5.12 | CS plate(12T,10T,6T)_ SA 516 Gr.60 | 1h | 2018-08-24 08:30 | 2018-08-24 09:30 | 18FS+60d | 2018-08-02 08:30 | 2018-08-02 09:30 | 1h | 21.88d | 0d |  | Helper; Store; Plate (Cost) [0.1%]; Crane | 3h | 50 | 50 |
| 42 | 5.13 | Lifting lug plate (12T)- SA 516 Gr.70 | 2h | 2018-08-24 08:30 | 2018-08-24 10:30 | 18FS+60d | 2018-08-02 08:30 | 2018-08-02 10:30 | 2h | 6.75d | 0d |  | Store; Plate (Cost) [0.1%]; Helper | 4h | 100 | 100 |
| 43 | 5.14 | Gaskets | 2h | 2018-09-20 08:30 | 2018-09-20 10:30 | 24FS+80d | 2018-08-29 08:30 | 2018-08-29 10:30 | 2h | 24.75d |  |  | Store; Helper | 4h | 100 | 100 |
| 44 | 5.15 | Consumables | 2h | 2018-08-10 08:30 | 2018-08-10 10:30 | 25FS+50d | 2018-07-20 08:30 | 2018-07-20 10:30 | 2h | 54.75d |  |  | Store; Helper | 4h | 100 | 100 |
| 45 | 5.16 | Fastners | 1h | 2018-09-20 08:30 | 2018-09-20 09:30 | 26FS+80d | 2018-08-29 08:30 | 2018-08-29 09:30 | 1h | 24.88d |  |  | Store; Helper | 2h | 50 | 50 |
| 46 | 5.17 | Paint | 2h | 2018-09-20 08:30 | 2018-09-20 10:30 | 27FS+80d | 2018-08-29 08:30 | 2018-08-29 10:30 | 2h | 24.75d |  |  | Store; Helper | 4h | 100 | 100 |
| 47 | 6 | **Fabrication Double pipe Exchanger(171-EE-2403)** | 94.75d | 2018-08-21 11:30 | 2018-10-23 17:30 |  | 2018-07-30 11:30 | 2018-09-29 17:30 | 94.75d | 0d |  | TEAM_2Shift_Calendar-1 |  | 1830h | 84,000.9 | 84,000.9 |
| 48 | 6.1 | **Nozzle Fabrication** | 10.5d | 2018-09-06 11:30 | 2018-09-14 15:30 |  | 2018-08-16 11:30 | 2018-08-22 15:30 | 10.5d | 58.12d |  | TEAM_2Shift_Calendar-1 |  | 175h | 8,650 | 8,650 |
| 49 | 6.1.1 | Nozzle Pipe Receipt | 1h | 2018-09-06 11:30 | 2018-09-06 12:30 | 39, 35, 36, 37 | 2018-08-16 11:30 | 2018-08-16 12:30 | 1h | 58.12d | 0d | TEAM_2Shift_Calendar-1 | Forging Std (Cost) [0.1%]; Pipe (Cost) [0.1%]; Helper | 1h | 50 | 50 |
| 50 | 6.1.2 | **Nozzle Prep** | 7.88d | 2018-09-06 12:30 | 2018-09-12 11:30 |  | 2018-08-16 12:30 | 2018-08-21 11:30 | 7.88d | 58.12d |  | TEAM_2Shift_Calendar-1 |  | 142h | 7,287.5 | 7,287.5 |
| 51 | 6.1.2.1 | Nozzle Pipe Marking | 4h | 2018-09-06 12:30 | 2018-09-06 16:30 | 49 | 2018-08-16 12:30 | 2018-08-16 16:30 | 4h | 58.12d | 0d | TEAM_2Shift_Calendar-1 | Helper; Fitter | 8h | 475 | 475 |
| 52 | 6.1.2.2 | Nozzle Pipe Stamping | 1h | 2018-09-07 08:30 | 2018-09-07 09:30 | 51FS+1d | 2018-08-17 08:30 | 2018-08-17 09:30 | 1h | 58.12d | 0d | TEAM_2Shift_Calendar-1 | QC Engineer | 1h |  |  |
| 53 | 6.1.2.3 | Nozzle Pipe Cutting | 5h | 2018-09-07 09:30 | 2018-09-07 14:30 | 52 | 2018-08-17 09:30 | 2018-08-17 14:30 | 5h | 58.12d | 0d | TEAM_2Shift_Calendar-1 | Cutting Machine; Helper | 8h | 200 | 200 |
| 54 | 6.1.2.4 | Nozzle Pipe EP | 5h | 2018-09-07 14:30 | 2018-09-07 19:30 | 53 | 2018-08-17 14:30 | 2018-08-17 19:30 | 5h | 58.12d | 0d | TEAM_2Shift_Calendar-1 | Grinding Machine; Grinder | 10h | 281.25 | 281.25 |
| 55 | 6.1.2.5 | Nozzle Flange +Pipe Fitup | 6h | 2018-09-07 19:30 | 2018-09-10 09:30 | 54 | 2018-08-17 19:30 | 2018-08-18 09:30 | 6h | 58.12d | 0d | TEAM_2Shift_Calendar-1 | Helper; SMAW Welder; SMAW Welding Machine; Fitter | 24h | 1,125 | 1,125 |
| 56 | 6.1.2.6 | Nozzle Flange +Pipe Fitup Inspection | 3h | 2018-09-10 09:30 | 2018-09-10 12:30 | 55 | 2018-08-18 09:30 | 2018-08-18 12:30 | 3h | 58.12d | 0d | TEAM_2Shift_Calendar-1 | QC Engineer; Helper | 4h | 100 | 100 |
| 57 | 6.1.2.7 | Nozzle Flange +Pipe Root Tig Welding | 14h | 2018-09-10 12:30 | 2018-09-11 10:30 | 56 | 2018-08-18 12:30 | 2018-08-20 10:30 | 14h | 58.25d | 0d | TEAM_2Shift_Calendar-1 | TIG Welding Machine; TIG Welder; Helper | 42h | 2,450 | 2,450 |
| 58 | 6.1.2.8 | Nozzle Flange +Pipe Filler Pass Welding | 14h | 2018-09-11 10:30 | 2018-09-12 08:30 | 57 | 2018-08-20 10:30 | 2018-08-21 08:30 | 14h | 58.25d | 0d | TEAM_2Shift_Calendar-1 | TIG Welding Machine; TIG Welder; Helper | 42h | 2,450 | 2,450 |
| 59 | 6.1.2.9 | DP Check | 3h | 2018-09-12 08:30 | 2018-09-12 11:30 | 58 | 2018-08-21 08:30 | 2018-08-21 11:30 | 3h | 58.25d | 0d | TEAM_2Shift_Calendar-1 | Fitter | 3h | 206.25 | 206.25 |

Notes:
- 48: Nozzle S3-S8 - 2''- 6 nos / S2- 1'' - 1 no / S1- 3'' - 1 no

| ID | WBS | Task | Duration | Start | Finish | Predecessors | Baseline start | Baseline finish | Baseline duration | Total slack | Free slack | Calendar | Resources | Work | Cost | Baseline cost |
| --- | --- | --- | --- | --- | --- | --- | --- | --- | --- | --- | --- | --- | --- | --- | --- | --- |
| 60 | 6.1.3 | **Stiffner** | 1.5d | 2018-09-12 11:30 | 2018-09-14 07:30 |  | 2018-08-21 11:30 | 2018-08-22 07:30 | 1.5d | 58.25d |  | TEAM_2Shift_Calendar-1 |  | 24h | 912.5 | 912.5 |
| 61 | 6.1.3.1 | Stiffner Marking | 3h | 2018-09-12 11:30 | 2018-09-12 14:30 | 41, 59 | 2018-08-21 11:30 | 2018-08-21 14:30 | 3h | 58.25d | 0d | TEAM_2Shift_Calendar-1 | Helper; Plate (Cost) [0.1%]; Fitter | 6h | 356.25 | 356.25 |
| 62 | 6.1.3.2 | Cutting | 4h | 2018-09-12 14:30 | 2018-09-12 18:30 | 61 | 2018-08-21 14:30 | 2018-08-21 18:30 | 4h | 58.25d | 0d | TEAM_2Shift_Calendar-1 | OAGM; Gas Cutter | 8h | 275 | 275 |
| 63 | 6.1.3.3 | Grinding | 5h | 2018-09-12 18:30 | 2018-09-14 07:30 | 62 | 2018-08-21 18:30 | 2018-08-22 07:30 | 5h | 58.25d | 0d | TEAM_2Shift_Calendar-1 | Grinding Machine; Grinder | 10h | 281.25 | 281.25 |
| 64 | 6.1.4 | Radiography | 1d | 2018-09-14 07:30 | 2018-09-14 15:30 | 63 | 2018-08-22 07:30 | 2018-08-22 15:30 | 1d | 58.25d |  | TEAM_2Shift_Calendar-1 | Helper | 8h | 400 | 400 |
| 65 | 6.2 | **Saddle Fabrication(RHS)** | 10.88d | 2018-09-14 10:30 | 2018-09-20 17:30 |  | 2018-08-22 10:30 | 2018-08-29 17:30 | 10.88d | 0d |  | TEAM_2Shift_Calendar-1 |  | 181h | 7,793.75 | 7,793.75 |
| 66 | 6.2.1 | Plate Receipt | 3h | 2018-09-14 10:30 | 2018-09-14 13:30 | 40FS+30d | 2018-08-22 10:30 | 2018-08-22 13:30 | 3h | 0d |  | TEAM_2Shift_Calendar-1 | Plate (Cost) [0.1%]; Helper [200%] | 6h | 300 | 300 |
| 67 | 6.2.2 | Saddle Pl Marking | 4h | 2018-09-14 13:30 | 2018-09-14 17:30 | 66 | 2018-08-22 13:30 | 2018-08-22 17:30 | 4h | 0d |  | TEAM_2Shift_Calendar-1 | Helper; Fitter | 8h | 475 | 475 |
| 68 | 6.2.3 | Saddle Pl Mkg Inspection | 2h | 2018-09-14 17:30 | 2018-09-14 19:30 | 67 | 2018-08-22 17:30 | 2018-08-22 19:30 | 2h | 0d |  | TEAM_2Shift_Calendar-1 | Fitter | 2h | 137.5 | 137.5 |
| 69 | 6.2.4 | Saddle Pl Mkg Cutting | 6h | 2018-09-14 19:30 | 2018-09-15 09:30 | 68 | 2018-08-22 19:30 | 2018-08-23 09:30 | 6h | 0d |  | TEAM_2Shift_Calendar-1 | Gas Cutter; OAGM; Helper | 18h | 712.5 | 712.5 |
| 70 | 6.2.5 | Grinding | 8h | 2018-09-15 09:30 | 2018-09-15 17:30 | 69 | 2018-08-23 09:30 | 2018-08-23 17:30 | 8h | 0d |  | TEAM_2Shift_Calendar-1 | Grinding Machine; Grinder | 16h | 450 | 450 |
| 71 | 6.2.6 | Saddle Base Hole Marking | 1h | 2018-09-15 17:30 | 2018-09-15 18:30 | 70 | 2018-08-23 17:30 | 2018-08-23 18:30 | 1h | 0d |  | TEAM_2Shift_Calendar-1 | Helper; Fitter | 2h | 118.75 | 118.75 |
| 72 | 6.2.7 | Saddle Base Hole Drilling | 4h | 2018-09-15 18:30 | 2018-09-17 06:30 | 71 | 2018-08-23 18:30 | 2018-08-24 06:30 | 4h | 0d |  | TEAM_2Shift_Calendar-1 | Radial Drilling Machine; Driller | 8h | 275 | 275 |
| 73 | 6.2.8 | Saddle Pad Forming | 1d | 2018-09-17 06:30 | 2018-09-17 14:30 | 72 | 2018-08-24 06:30 | 2018-08-24 14:30 | 1d | 0d |  | TEAM_2Shift_Calendar-1 | Helper; Fitter | 16h | 950 | 950 |
| 74 | 6.2.9 | Saddle Fitup | 1d | 2018-09-17 14:30 | 2018-09-18 06:30 | 73 | 2018-08-24 14:30 | 2018-08-27 06:30 | 1d | 0d |  | TEAM_2Shift_Calendar-1 | Helper; SMAW Welder; SMAW Welding Machine; Fitter | 32h | 1,500 | 1,500 |
| 75 | 6.2.10 | Saddle Fitup Inspection | 8h | 2018-09-18 06:30 | 2018-09-18 14:30 | 74 | 2018-08-27 06:30 | 2018-08-27 14:30 | 8h | 0d |  | TEAM_2Shift_Calendar-1 | QC Engineer; Fitter | 10h | 343.75 | 343.75 |
| 76 | 6.2.11 | Saddle Welding | 15h | 2018-09-18 14:30 | 2018-09-19 13:30 | 75 | 2018-08-27 14:30 | 2018-08-28 13:30 | 15h | 0d |  | TEAM_2Shift_Calendar-1 | SMAW Welder; SMAW Welding Machine; Helper | 45h | 1,781.25 | 1,781.25 |
| 77 | 6.2.12 | Saddle Profile Grinding | 6h | 2018-09-19 13:30 | 2018-09-19 19:30 | 76 | 2018-08-28 13:30 | 2018-08-28 19:30 | 6h | 0d |  | TEAM_2Shift_Calendar-1 | Grinding Machine; Grinder | 12h | 337.5 | 337.5 |
| 78 | 6.2.13 | DP Check | 6h | 2018-09-19 19:30 | 2018-09-20 09:30 | 77 | 2018-08-28 19:30 | 2018-08-29 09:30 | 6h | 0d |  | TEAM_2Shift_Calendar-1 | Fitter | 6h | 412.5 | 412.5 |
| 79 | 6.2.14 | Radiography | 1d | 2018-09-20 09:30 | 2018-09-20 17:30 | 78 | 2018-08-29 09:30 | 2018-08-29 17:30 | 1d | 0d |  | TEAM_2Shift_Calendar-1 |  |  |  |  |
| 80 | 6.3 | **Saddle Fabrication(LHS)** | 10.88d | 2018-09-14 10:30 | 2018-09-20 17:30 |  | 2018-08-22 10:30 | 2018-08-29 17:30 | 10.88d | 2.62d |  | TEAM_2Shift_Calendar-1 |  | 181h | 7,793.75 | 7,793.75 |
| 81 | 6.3.1 | Plate Receipt | 3h | 2018-09-14 10:30 | 2018-09-14 13:30 | 40FS+30d | 2018-08-22 10:30 | 2018-08-22 13:30 | 3h | 2.62d | 0d | TEAM_2Shift_Calendar-1 | Plate (Cost) [0.1%]; Helper [200%] | 6h | 300 | 300 |
| 82 | 6.3.2 | Saddle Pl Marking | 4h | 2018-09-14 13:30 | 2018-09-14 17:30 | 81 | 2018-08-22 13:30 | 2018-08-22 17:30 | 4h | 2.62d | 0d | TEAM_2Shift_Calendar-1 | Helper; Fitter | 8h | 475 | 475 |
| 83 | 6.3.3 | Saddle Pl Mkg Inspection | 2h | 2018-09-14 17:30 | 2018-09-14 19:30 | 82 | 2018-08-22 17:30 | 2018-08-22 19:30 | 2h | 2.62d | 0d | TEAM_2Shift_Calendar-1 | Fitter | 2h | 137.5 | 137.5 |
| 84 | 6.3.4 | Saddle Pl Mkg Cutting | 6h | 2018-09-14 19:30 | 2018-09-15 09:30 | 83 | 2018-08-22 19:30 | 2018-08-23 09:30 | 6h | 2.62d | 0d | TEAM_2Shift_Calendar-1 | Gas Cutter; OAGM; Helper | 18h | 712.5 | 712.5 |
| 85 | 6.3.5 | Grinding | 8h | 2018-09-15 09:30 | 2018-09-15 17:30 | 84 | 2018-08-23 09:30 | 2018-08-23 17:30 | 8h | 2.62d | 0d | TEAM_2Shift_Calendar-1 | Grinding Machine; Grinder | 16h | 450 | 450 |
| 86 | 6.3.6 | Saddle Base Hole Marking | 1h | 2018-09-15 17:30 | 2018-09-15 18:30 | 85 | 2018-08-23 17:30 | 2018-08-23 18:30 | 1h | 2.62d | 0d | TEAM_2Shift_Calendar-1 | Helper; Fitter | 2h | 118.75 | 118.75 |
| 87 | 6.3.7 | Saddle Base Hole Drilling | 4h | 2018-09-15 18:30 | 2018-09-17 06:30 | 86 | 2018-08-23 18:30 | 2018-08-24 06:30 | 4h | 2.62d | 0d | TEAM_2Shift_Calendar-1 | Radial Drilling Machine; Driller | 8h | 275 | 275 |
| 88 | 6.3.8 | Saddle Pad Forming | 1d | 2018-09-17 06:30 | 2018-09-17 14:30 | 87 | 2018-08-24 06:30 | 2018-08-24 14:30 | 1d | 2.62d | 0d | TEAM_2Shift_Calendar-1 | Helper; Fitter | 16h | 950 | 950 |
| 89 | 6.3.9 | Saddle Fitup | 1d | 2018-09-17 14:30 | 2018-09-18 06:30 | 88 | 2018-08-24 14:30 | 2018-08-27 06:30 | 1d | 2.62d | 0d | TEAM_2Shift_Calendar-1 | Helper; SMAW Welder; SMAW Welding Machine; Fitter | 32h | 1,500 | 1,500 |
| 90 | 6.3.10 | Saddle Fitup Inspection | 8h | 2018-09-18 06:30 | 2018-09-18 14:30 | 89 | 2018-08-27 06:30 | 2018-08-27 14:30 | 8h | 2.62d | 0d | TEAM_2Shift_Calendar-1 | QC Engineer; Fitter | 10h | 343.75 | 343.75 |
| 91 | 6.3.11 | Saddle Welding | 15h | 2018-09-18 14:30 | 2018-09-19 13:30 | 90 | 2018-08-27 14:30 | 2018-08-28 13:30 | 15h | 2.62d | 0d | TEAM_2Shift_Calendar-1 | SMAW Welder; SMAW Welding Machine; Helper | 45h | 1,781.25 | 1,781.25 |
| 92 | 6.3.12 | Saddle Profile Grinding | 6h | 2018-09-19 13:30 | 2018-09-19 19:30 | 91 | 2018-08-28 13:30 | 2018-08-28 19:30 | 6h | 2.62d | 0d | TEAM_2Shift_Calendar-1 | Grinding Machine; Grinder | 12h | 337.5 | 337.5 |
| 93 | 6.3.13 | DP Check | 6h | 2018-09-19 19:30 | 2018-09-20 09:30 | 92 | 2018-08-28 19:30 | 2018-08-29 09:30 | 6h | 2.62d | 0d | TEAM_2Shift_Calendar-1 | Fitter | 6h | 412.5 | 412.5 |
| 94 | 6.3.14 | Radiography | 1d | 2018-09-20 09:30 | 2018-09-20 17:30 | 93 | 2018-08-29 09:30 | 2018-08-29 17:30 | 1d | 2.62d |  | TEAM_2Shift_Calendar-1 |  |  |  |  |

| ID | WBS | Task | Duration | Start | Finish | Predecessors | Baseline start | Baseline finish | Baseline duration | Total slack | Free slack | Calendar | Resources | Work | Cost | Baseline cost |
| --- | --- | --- | --- | --- | --- | --- | --- | --- | --- | --- | --- | --- | --- | --- | --- | --- |
| 95 | 6.4 | **Other Components** | 32d | 2018-08-24 19:30 | 2018-09-15 19:30 |  | 2018-08-02 19:30 | 2018-08-23 19:30 | 32d | 41.88d |  | TEAM_2Shift_Calendar-1 |  | 127h | 5,431.24 | 5,431.24 |
| 96 | 6.4.1 | **Lifting Lug** | 3.12d | 2018-09-14 10:30 | 2018-09-15 19:30 |  | 2018-08-22 10:30 | 2018-08-23 19:30 | 3.12d | 13d | 12.75d | TEAM_2Shift_Calendar-1 |  | 50h | 2,243.75 | 2,243.75 |
| 97 | 6.4.1.1 | Lifting Lug Marking (8 Nos) | 2h | 2018-09-14 10:30 | 2018-09-14 12:30 | 42FS+30d | 2018-08-22 10:30 | 2018-08-22 12:30 | 2h | 13d | 0d | TEAM_2Shift_Calendar-1 | Helper; Plate (Cost) [0.1%]; Fitter | 4h | 237.5 | 237.5 |
| 98 | 6.4.1.2 | Lifting Lug Cutting | 3h | 2018-09-14 12:30 | 2018-09-14 15:30 | 97 | 2018-08-22 12:30 | 2018-08-22 15:30 | 3h | 13d | 0d | TEAM_2Shift_Calendar-1 | OAGM; Gas Cutter | 6h | 206.25 | 206.25 |
| 99 | 6.4.1.3 | Lifting Lug Pad Marking | 2h | 2018-09-14 15:30 | 2018-09-14 17:30 | 98, 41 | 2018-08-22 15:30 | 2018-08-22 17:30 | 2h | 13d | 0d | TEAM_2Shift_Calendar-1 | Helper; Fitter | 4h | 237.5 | 237.5 |
| 100 | 6.4.1.4 | Lifting Lug Pad Cutting | 4h | 2018-09-14 17:30 | 2018-09-14 21:30 | 99 | 2018-08-22 17:30 | 2018-08-22 21:30 | 4h | 13d | 0d | TEAM_2Shift_Calendar-1 | OAGM; Gas Cutter | 8h | 275 | 275 |
| 101 | 6.4.1.5 | Lifting Lug Pad Grinding | 6h | 2018-09-14 21:30 | 2018-09-15 11:30 | 100 | 2018-08-22 21:30 | 2018-08-23 11:30 | 6h | 13d | 0d | TEAM_2Shift_Calendar-1 | Grinding Machine; Grinder | 12h | 337.5 | 337.5 |
| 102 | 6.4.1.6 | Lifting Lug Pad Forming | 8h | 2018-09-15 11:30 | 2018-09-15 19:30 | 101 | 2018-08-23 11:30 | 2018-08-23 19:30 | 8h | 13d |  | TEAM_2Shift_Calendar-1 | Helper; Fitter | 16h | 950 | 950 |
| 103 | 6.4.2 | **Insulation Cleat** | 1d | 2018-09-14 09:30 | 2018-09-14 17:30 |  | 2018-08-22 09:30 | 2018-08-22 17:30 | 1d | 58d |  | TEAM_2Shift_Calendar-1 |  | 16h | 525 | 525 |
| 104 | 6.4.2.1 | Insulation Cleat Marking | 1h | 2018-09-14 09:30 | 2018-09-14 10:30 | 41FS+30d | 2018-08-22 09:30 | 2018-08-22 10:30 | 1h | 58d | 0d | TEAM_2Shift_Calendar-1 | Helper; Plate (Cost) [0.1%]; Fitter | 2h | 118.75 | 118.75 |
| 105 | 6.4.2.2 | Insulation Cleat Cutting | 2h | 2018-09-14 10:30 | 2018-09-14 12:30 | 104 | 2018-08-22 10:30 | 2018-08-22 12:30 | 2h | 58d | 0d | TEAM_2Shift_Calendar-1 | Helper; Cutting Machine | 4h | 100 | 100 |
| 106 | 6.4.2.3 | Insulation Cleat Grinding | 3h | 2018-09-14 12:30 | 2018-09-14 15:30 | 105 | 2018-08-22 12:30 | 2018-08-22 15:30 | 3h | 58d | 0d | TEAM_2Shift_Calendar-1 | Grinding Machine; Grinder | 6h | 168.75 | 168.75 |
| 107 | 6.4.2.4 | Insulation Cleat Drilling | 2h | 2018-09-14 15:30 | 2018-09-14 17:30 | 106 | 2018-08-22 15:30 | 2018-08-22 17:30 | 2h | 58d |  | TEAM_2Shift_Calendar-1 | Radial Drilling Machine; Driller | 4h | 137.5 | 137.5 |
| 108 | 6.4.3 | **Bend with flange fabrication** | 2.62d | 2018-08-24 19:30 | 2018-08-28 08:30 |  | 2018-08-02 19:30 | 2018-08-04 08:30 | 2.62d | 85.12d |  | TEAM_2Shift_Calendar-1 |  | 61h | 2,662.49 | 2,662.49 |
| 109 | 6.4.3.1 | Bottom 180 Deg return radius bend with flange fit up | 2h | 2018-08-24 19:30 | 2018-08-24 21:30 | 38FS+1d, 34FS+1d | 2018-08-02 19:30 | 2018-08-02 21:30 | 2h | 85.12d | 0d | TEAM_2Shift_Calendar-1 | Helper; SMAW Welder; SMAW Welding Machine; Forging Std (Cost) [0.1%]; Fitter | 8h | 375 | 375 |
| 110 | 6.4.3.2 | welding | 4h | 2018-08-24 21:30 | 2018-08-27 09:30 | 109 | 2018-08-02 21:30 | 2018-08-03 09:30 | 4h | 85.12d | 0d | TEAM_2Shift_Calendar-1 | SMAW Welder; SMAW Welding Machine; Helper | 12h | 475 | 475 |
| 111 | 6.4.3.3 | Dp check | 1h | 2018-08-27 09:30 | 2018-08-27 10:30 | 110 | 2018-08-03 09:30 | 2018-08-03 10:30 | 1h | 85.12d | 0d | TEAM_2Shift_Calendar-1 | Fitter | 1h | 68.75 | 68.75 |
| 112 | 6.4.3.4 | Middle 180 Deg return radius bend with flange fit up | 2h | 2018-08-27 10:30 | 2018-08-27 12:30 | 111 | 2018-08-03 10:30 | 2018-08-03 12:30 | 2h | 85.12d | 0d | TEAM_2Shift_Calendar-1 | Helper; SMAW Welder; SMAW Welding Machine; Fitter | 8h | 375 | 375 |
| 113 | 6.4.3.5 | welding | 4h | 2018-08-27 12:30 | 2018-08-27 16:30 | 112 | 2018-08-03 12:30 | 2018-08-03 16:30 | 4h | 85.12d | 0d | TEAM_2Shift_Calendar-1 | SMAW Welder; SMAW Welding Machine; Helper | 12h | 475 | 475 |
| 114 | 6.4.3.6 | Dp check | 1h | 2018-08-27 16:30 | 2018-08-27 17:30 | 113 | 2018-08-03 16:30 | 2018-08-03 17:30 | 1h | 85.12d | 0d | TEAM_2Shift_Calendar-1 | Fitter | 1h | 68.75 | 68.75 |
| 115 | 6.4.3.7 | Top 180 Deg return radius bend with flange fit up | 2h | 2018-08-27 17:30 | 2018-08-27 19:30 | 114 | 2018-08-03 17:30 | 2018-08-03 19:30 | 2h | 85.12d | 0d | TEAM_2Shift_Calendar-1 | Helper; SMAW Welder; SMAW Welding Machine; Fitter | 6h | 281.24 | 281.24 |
| 116 | 6.4.3.8 | welding | 4h | 2018-08-27 19:30 | 2018-08-28 07:30 | 115 | 2018-08-03 19:30 | 2018-08-04 07:30 | 4h | 85.12d | 0d | TEAM_2Shift_Calendar-1 | SMAW Welder; SMAW Welding Machine; Helper | 12h | 475 | 475 |
| 117 | 6.4.3.9 | Dp check | 1h | 2018-08-28 07:30 | 2018-08-28 08:30 | 116 | 2018-08-04 07:30 | 2018-08-04 08:30 | 1h | 85.12d |  | TEAM_2Shift_Calendar-1 | Fitter | 1h | 68.75 | 68.75 |
| 118 | 6.5 | **Shell fabrication** | 53.62d | 2018-08-21 11:30 | 2018-09-26 08:30 |  | 2018-07-30 11:30 | 2018-09-03 08:30 | 53.62d | 20d |  | TEAM_2Shift_Calendar-1 |  | 228h | 10,383.04 | 10,383.04 |
| 119 | 6.5.1 | Marking | 1h | 2018-08-21 11:30 | 2018-08-21 12:30 | 30, 32, 34 | 2018-07-30 11:30 | 2018-07-30 12:30 | 1h | 61.38d | 0d | TEAM_2Shift_Calendar-1 | Helper; Forging Std (Cost) [0.1%]; Pipe (Cost) [0.1%]; Fitter | 2h | 118.75 | 118.75 |
| 120 | 6.5.2 | stamping | 4h | 2018-08-21 12:30 | 2018-08-21 16:30 | 119 | 2018-07-30 12:30 | 2018-07-30 16:30 | 4h | 61.38d | 0d | TEAM_2Shift_Calendar-1 | Helper; QC Engineer | 4h | 114.29 | 114.29 |
| 121 | 6.5.3 | Inner Shell Pipe edge preparation | 4h | 2018-08-22 08:30 | 2018-08-22 12:30 | 120FS+1d | 2018-07-31 08:30 | 2018-07-31 12:30 | 4h | 61.38d | 0d | TEAM_2Shift_Calendar-1 | Grinding Machine; Grinder | 8h | 225 | 225 |
| 122 | 6.5.4 | Outer shell Pipe edge preparation | 4h | 2018-08-22 12:30 | 2018-08-22 16:30 | 121 | 2018-07-31 12:30 | 2018-07-31 16:30 | 4h | 61.38d | 0d | TEAM_2Shift_Calendar-1 | Grinding Machine; Grinder | 8h | 225 | 225 |
| 123 | 6.5.5 | Pipe Cap marking & cutting | 2h | 2018-08-22 16:30 | 2018-08-22 18:30 | 33, 122 | 2018-07-31 16:30 | 2018-07-31 18:30 | 2h | 70.75d |  | TEAM_2Shift_Calendar-1 | Helper; OAGM; Gas Cutter; Fitter | 8h | 375 | 375 |
| 124 | 6.5.6 | Inner pipe outer pipe insertion | 2h | 2018-08-22 16:30 | 2018-08-22 18:30 | 121, 122 | 2018-07-31 16:30 | 2018-07-31 18:30 | 2h | 61.38d | 0d | TEAM_2Shift_Calendar-1 | Fitter; Helper [200%] | 6h | 337.5 | 337.5 |
| 125 | 6.5.7 | Pipe cap fitup with inner and outer pipe | 2h | 2018-08-22 18:30 | 2018-08-22 20:30 | 124 | 2018-07-31 18:30 | 2018-07-31 20:30 | 2h | 61.38d | 0.5d | TEAM_2Shift_Calendar-1 | Helper; SMAW Welder; SMAW Welding Machine; Fitter | 8h | 375 | 375 |
| 126 | 6.5.8 | Fitup inspection | 2h | 2018-08-23 08:30 | 2018-08-23 10:30 | 125 | 2018-08-01 08:30 | 2018-08-01 10:30 | 2h | 60.88d | 0d | TEAM_2Shift_Calendar-1 | QC Engineer | 2h |  |  |
| 127 | 6.5.9 | welding | 4h | 2018-08-23 10:30 | 2018-08-23 14:30 | 126 | 2018-08-01 10:30 | 2018-08-01 14:30 | 4h | 60.88d | 0d | TEAM_2Shift_Calendar-1 | SMAW Welder; SMAW Welding Machine; Helper | 12h | 475 | 475 |
| 128 | 6.5.10 | Inner pipe with flange fitup(RHS) | 2h | 2018-08-23 14:30 | 2018-08-23 16:30 | 127 | 2018-08-01 14:30 | 2018-08-01 16:30 | 2h | 60.88d | 0d | TEAM_2Shift_Calendar-1 | Helper; SMAW Welder; SMAW Welding Machine; Fitter | 8h | 375 | 375 |
| 129 | 6.5.11 | welding | 4h | 2018-08-23 16:30 | 2018-08-23 20:30 | 128 | 2018-08-01 16:30 | 2018-08-01 20:30 | 4h | 60.88d | 0d | TEAM_2Shift_Calendar-1 | SMAW Welder; SMAW Welding Machine; Helper | 12h | 475 | 475 |
| 130 | 6.5.12 | Inner pipe with flange fitup(LHS) | 2h | 2018-08-23 20:30 | 2018-08-24 06:30 | 129 | 2018-08-01 20:30 | 2018-08-02 06:30 | 2h | 60.88d | 0d | TEAM_2Shift_Calendar-1 | Helper; SMAW Welder; SMAW Welding Machine; Fitter | 8h | 375 | 375 |
| 131 | 6.5.13 | welding | 4h | 2018-08-24 06:30 | 2018-08-24 10:30 | 130 | 2018-08-02 06:30 | 2018-08-02 10:30 | 4h | 60.88d | 40.88d | TEAM_2Shift_Calendar-1 | SMAW Welder; SMAW Welding Machine; Helper | 12h | 475 | 475 |
| 132 | 6.5.14 | Outer pipe with saddle fit up(RHS) | 3h | 2018-09-20 17:30 | 2018-09-20 20:30 | 65, 131 | 2018-08-29 17:30 | 2018-08-29 20:30 | 3h | 20d | 0d | TEAM_2Shift_Calendar-1 | Helper; SMAW Welder; SMAW Welding Machine; Fitter | 12h | 562.5 | 562.5 |
| 133 | 6.5.15 | Fitup inspection | 14h | 2018-09-20 20:30 | 2018-09-21 18:30 | 132 | 2018-08-29 20:30 | 2018-08-30 18:30 | 14h | 20d | 0d | TEAM_2Shift_Calendar-1 | QC Engineer | 2h |  |  |
| 134 | 6.5.16 | welding | 4h | 2018-09-21 18:30 | 2018-09-24 06:30 | 133 | 2018-08-30 18:30 | 2018-08-31 06:30 | 4h | 20d | 0d | TEAM_2Shift_Calendar-1 | SMAW Welder; SMAW Welding Machine; Helper | 12h | 475 | 475 |
| 135 | 6.5.17 | Outer pipe with saddle fit up(LHS) | 3h | 2018-09-24 06:30 | 2018-09-24 09:30 | 80, 134 | 2018-08-31 06:30 | 2018-08-31 09:30 | 3h | 20d | 0d | TEAM_2Shift_Calendar-1 | Helper; SMAW Welder; SMAW Welding Machine; Fitter | 12h | 562.5 | 562.5 |
| 136 | 6.5.18 | Fitup inspection | 2h | 2018-09-24 09:30 | 2018-09-24 11:30 | 135 | 2018-08-31 09:30 | 2018-08-31 11:30 | 2h | 20d | 0d | TEAM_2Shift_Calendar-1 | QC Engineer | 2h |  |  |
| 137 | 6.5.19 | welding | 4h | 2018-09-24 11:30 | 2018-09-24 15:30 | 136 | 2018-08-31 11:30 | 2018-08-31 15:30 | 4h | 20d | 0d | TEAM_2Shift_Calendar-1 | SMAW Welder; SMAW Welding Machine; Helper | 12h | 475 | 475 |
| 138 | 6.5.20 | RF pad forming | 3h | 2018-09-24 15:30 | 2018-09-24 18:30 | 41, 137 | 2018-08-31 15:30 | 2018-08-31 18:30 | 3h | 22d | 0d | TEAM_2Shift_Calendar-1 | Helper; Fitter | 6h | 356.25 | 356.25 |
| 139 | 6.5.21 | RF pad fit up with outer pipe | 2h | 2018-09-24 18:30 | 2018-09-24 20:30 | 138, 137 | 2018-08-31 18:30 | 2018-08-31 20:30 | 2h | 22d | 0d | TEAM_2Shift_Calendar-1 | SMAW Welder; SMAW Welding Machine; Fitter | 6h | 275 | 275 |
| 140 | 6.5.22 | Welding | 4h | 2018-09-24 20:30 | 2018-09-25 08:30 | 139 | 2018-08-31 20:30 | 2018-09-01 08:30 | 4h | 22d |  | TEAM_2Shift_Calendar-1 | SMAW Welding Machine; SMAW Welder | 8h | 275 | 275 |
| 141 | 6.5.23 | Outer pipe with nozzle fit up | 3h | 2018-09-24 15:30 | 2018-09-24 18:30 | 137 | 2018-08-31 15:30 | 2018-08-31 18:30 | 3h | 20d | 0d | TEAM_2Shift_Calendar-1 | Helper; TIG Welding Machine; TIG Welder; Fitter | 12h | 731.25 | 731.25 |
| 142 | 6.5.24 | Outer pipe with nozzle welding | 5h | 2018-09-24 18:30 | 2018-09-25 07:30 | 141 | 2018-08-31 18:30 | 2018-09-01 07:30 | 5h | 20d | 0d | TEAM_2Shift_Calendar-1 | TIG Welding Machine; TIG Welder; Helper | 15h | 875 | 875 |
| 143 | 6.5.25 | Insulation cleat fit up | 2h | 2018-09-25 07:30 | 2018-09-25 09:30 | 142 | 2018-09-01 07:30 | 2018-09-01 09:30 | 2h | 20d | 0d | TEAM_2Shift_Calendar-1 | Helper; TIG Welding Machine; TIG Welder; Fitter | 8h | 487.5 | 487.5 |
| 144 | 6.5.26 | welding | 2h | 2018-09-25 09:30 | 2018-09-25 11:30 | 143 | 2018-09-01 09:30 | 2018-09-01 11:30 | 2h | 20d | 0d | TEAM_2Shift_Calendar-1 | TIG Welding Machine; TIG Welder; Helper | 6h | 350 | 350 |
| 145 | 6.5.27 | Lifting Lug fit up | 2h | 2018-09-25 11:30 | 2018-09-25 13:30 | 96, 144 | 2018-09-01 11:30 | 2018-09-01 13:30 | 2h | 20d | 0d | TEAM_2Shift_Calendar-1 | Helper; TIG Welding Machine; TIG Welder; Fitter | 8h | 487.5 | 487.5 |
| 146 | 6.5.28 | welding | 3h | 2018-09-25 13:30 | 2018-09-25 16:30 | 145 | 2018-09-01 13:30 | 2018-09-01 16:30 | 3h | 20d | 0d | TEAM_2Shift_Calendar-1 | TIG Welding Machine; TIG Welder; Helper | 9h | 525 | 525 |
| 147 | 6.5.29 | Radiography | 1d | 2018-09-25 16:30 | 2018-09-26 08:30 | 146 | 2018-09-01 16:30 | 2018-09-03 08:30 | 1d | 20d |  | TEAM_2Shift_Calendar-1 | SC Radiography (Cost) [0.1%] |  |  |  |

| ID | WBS | Task | Duration | Start | Finish | Predecessors | Baseline start | Baseline finish | Baseline duration | Total slack | Free slack | Calendar | Resources | Work | Cost | Baseline cost |
| --- | --- | --- | --- | --- | --- | --- | --- | --- | --- | --- | --- | --- | --- | --- | --- | --- |
| 148 | 6.6 | **Shell fabrication** | 53.62d | 2018-08-21 11:30 | 2018-09-26 08:30 |  | 2018-07-30 11:30 | 2018-09-03 08:30 | 53.62d | 20d |  | TEAM_2Shift_Calendar-1 |  | 228h | 10,383.04 | 10,383.04 |
| 149 | 6.6.1 | Marking | 1h | 2018-08-21 11:30 | 2018-08-21 12:30 | 30, 32, 34 | 2018-07-30 11:30 | 2018-07-30 12:30 | 1h | 61.38d | 0d | TEAM_2Shift_Calendar-1 | Helper; Forging Std (Cost) [0.1%]; Pipe (Cost) [0.1%]; Fitter | 2h | 118.75 | 118.75 |
| 150 | 6.6.2 | stamping | 4h | 2018-08-21 12:30 | 2018-08-21 16:30 | 149 | 2018-07-30 12:30 | 2018-07-30 16:30 | 4h | 61.38d | 0d | TEAM_2Shift_Calendar-1 | Helper; QC Engineer | 4h | 114.29 | 114.29 |
| 151 | 6.6.3 | Inner Shell Pipe edge preparation | 4h | 2018-08-22 08:30 | 2018-08-22 12:30 | 150FS+1d | 2018-07-31 08:30 | 2018-07-31 12:30 | 4h | 61.38d | 0d | TEAM_2Shift_Calendar-1 | Grinding Machine; Grinder | 8h | 225 | 225 |
| 152 | 6.6.4 | Outer shell Pipe edge preparation | 4h | 2018-08-22 12:30 | 2018-08-22 16:30 | 151 | 2018-07-31 12:30 | 2018-07-31 16:30 | 4h | 61.38d | 0d | TEAM_2Shift_Calendar-1 | Grinding Machine; Grinder | 8h | 225 | 225 |
| 153 | 6.6.5 | Pipe Cap marking & cutting | 2h | 2018-08-22 16:30 | 2018-08-22 18:30 | 33, 152 | 2018-07-31 16:30 | 2018-07-31 18:30 | 2h | 70.75d |  | TEAM_2Shift_Calendar-1 | Helper; OAGM; Gas Cutter; Fitter | 8h | 375 | 375 |
| 154 | 6.6.6 | Inner pipe outer pipe insertion | 2h | 2018-08-22 16:30 | 2018-08-22 18:30 | 151, 152 | 2018-07-31 16:30 | 2018-07-31 18:30 | 2h | 61.38d | 0d | TEAM_2Shift_Calendar-1 | Fitter; Helper [200%] | 6h | 337.5 | 337.5 |
| 155 | 6.6.7 | Pipe cap fitup with inner and outer pipe | 2h | 2018-08-22 18:30 | 2018-08-22 20:30 | 154 | 2018-07-31 18:30 | 2018-07-31 20:30 | 2h | 61.38d | 0.5d | TEAM_2Shift_Calendar-1 | Helper; SMAW Welder; SMAW Welding Machine; Fitter | 8h | 375 | 375 |
| 156 | 6.6.8 | Fitup inspection | 2h | 2018-08-23 08:30 | 2018-08-23 10:30 | 155 | 2018-08-01 08:30 | 2018-08-01 10:30 | 2h | 60.88d | 0d | TEAM_2Shift_Calendar-1 | QC Engineer | 2h |  |  |
| 157 | 6.6.9 | welding | 4h | 2018-08-23 10:30 | 2018-08-23 14:30 | 156 | 2018-08-01 10:30 | 2018-08-01 14:30 | 4h | 60.88d | 0d | TEAM_2Shift_Calendar-1 | SMAW Welder; SMAW Welding Machine; Helper | 12h | 475 | 475 |
| 158 | 6.6.10 | Inner pipe with flange fitup(RHS) | 2h | 2018-08-23 14:30 | 2018-08-23 16:30 | 157 | 2018-08-01 14:30 | 2018-08-01 16:30 | 2h | 60.88d | 0d | TEAM_2Shift_Calendar-1 | Helper; SMAW Welder; SMAW Welding Machine; Fitter | 8h | 375 | 375 |
| 159 | 6.6.11 | welding | 4h | 2018-08-23 16:30 | 2018-08-23 20:30 | 158 | 2018-08-01 16:30 | 2018-08-01 20:30 | 4h | 60.88d | 0d | TEAM_2Shift_Calendar-1 | SMAW Welder; SMAW Welding Machine; Helper | 12h | 475 | 475 |
| 160 | 6.6.12 | Inner pipe with flange fitup(LHS) | 2h | 2018-08-23 20:30 | 2018-08-24 06:30 | 159 | 2018-08-01 20:30 | 2018-08-02 06:30 | 2h | 60.88d | 0d | TEAM_2Shift_Calendar-1 | Helper; SMAW Welder; SMAW Welding Machine; Fitter | 8h | 375 | 375 |
| 161 | 6.6.13 | welding | 4h | 2018-08-24 06:30 | 2018-08-24 10:30 | 160 | 2018-08-02 06:30 | 2018-08-02 10:30 | 4h | 60.88d | 40.88d | TEAM_2Shift_Calendar-1 | SMAW Welder; SMAW Welding Machine; Helper | 12h | 475 | 475 |
| 162 | 6.6.14 | Outer pipe with saddle fit up(RHS) | 3h | 2018-09-20 17:30 | 2018-09-20 20:30 | 161, 65 | 2018-08-29 17:30 | 2018-08-29 20:30 | 3h | 20d | 0d | TEAM_2Shift_Calendar-1 | Helper; SMAW Welder; SMAW Welding Machine; Fitter | 12h | 562.5 | 562.5 |
| 163 | 6.6.15 | Fitup inspection | 14h | 2018-09-20 20:30 | 2018-09-21 18:30 | 162 | 2018-08-29 20:30 | 2018-08-30 18:30 | 14h | 20d | 0d | TEAM_2Shift_Calendar-1 | QC Engineer | 2h |  |  |
| 164 | 6.6.16 | welding | 4h | 2018-09-21 18:30 | 2018-09-24 06:30 | 163 | 2018-08-30 18:30 | 2018-08-31 06:30 | 4h | 20d | 0d | TEAM_2Shift_Calendar-1 | SMAW Welder; SMAW Welding Machine; Helper | 12h | 475 | 475 |
| 165 | 6.6.17 | Outer pipe with saddle fit up(LHS) | 3h | 2018-09-24 06:30 | 2018-09-24 09:30 | 164, 80 | 2018-08-31 06:30 | 2018-08-31 09:30 | 3h | 20d | 0d | TEAM_2Shift_Calendar-1 | Helper; SMAW Welder; SMAW Welding Machine; Fitter | 12h | 562.5 | 562.5 |
| 166 | 6.6.18 | Fitup inspection | 2h | 2018-09-24 09:30 | 2018-09-24 11:30 | 165 | 2018-08-31 09:30 | 2018-08-31 11:30 | 2h | 20d | 0d | TEAM_2Shift_Calendar-1 | QC Engineer | 2h |  |  |
| 167 | 6.6.19 | welding | 4h | 2018-09-24 11:30 | 2018-09-24 15:30 | 166 | 2018-08-31 11:30 | 2018-08-31 15:30 | 4h | 20d | 0d | TEAM_2Shift_Calendar-1 | SMAW Welder; SMAW Welding Machine; Helper | 12h | 475 | 475 |
| 168 | 6.6.20 | RF pad forming | 3h | 2018-09-24 15:30 | 2018-09-24 18:30 | 41, 167 | 2018-08-31 15:30 | 2018-08-31 18:30 | 3h | 22d | 0d | TEAM_2Shift_Calendar-1 | Helper; Fitter | 6h | 356.25 | 356.25 |
| 169 | 6.6.21 | RF pad fit up with outer pipe | 2h | 2018-09-24 18:30 | 2018-09-24 20:30 | 167, 168 | 2018-08-31 18:30 | 2018-08-31 20:30 | 2h | 22d | 0d | TEAM_2Shift_Calendar-1 | SMAW Welder; SMAW Welding Machine; Fitter | 6h | 275 | 275 |
| 170 | 6.6.22 | Welding | 4h | 2018-09-24 20:30 | 2018-09-25 08:30 | 169 | 2018-08-31 20:30 | 2018-09-01 08:30 | 4h | 22d |  | TEAM_2Shift_Calendar-1 | SMAW Welding Machine; SMAW Welder | 8h | 275 | 275 |
| 171 | 6.6.23 | Outer pipe with nozzle fit up | 3h | 2018-09-24 15:30 | 2018-09-24 18:30 | 167 | 2018-08-31 15:30 | 2018-08-31 18:30 | 3h | 20d | 0d | TEAM_2Shift_Calendar-1 | Helper; TIG Welding Machine; TIG Welder; Fitter | 12h | 731.25 | 731.25 |
| 172 | 6.6.24 | Outer pipe with nozzle welding | 5h | 2018-09-24 18:30 | 2018-09-25 07:30 | 171 | 2018-08-31 18:30 | 2018-09-01 07:30 | 5h | 20d | 0d | TEAM_2Shift_Calendar-1 | TIG Welding Machine; TIG Welder; Helper | 15h | 875 | 875 |
| 173 | 6.6.25 | Insulation cleat fit up | 2h | 2018-09-25 07:30 | 2018-09-25 09:30 | 172 | 2018-09-01 07:30 | 2018-09-01 09:30 | 2h | 20d | 0d | TEAM_2Shift_Calendar-1 | Helper; TIG Welding Machine; TIG Welder; Fitter | 8h | 487.5 | 487.5 |
| 174 | 6.6.26 | welding | 2h | 2018-09-25 09:30 | 2018-09-25 11:30 | 173 | 2018-09-01 09:30 | 2018-09-01 11:30 | 2h | 20d | 0d | TEAM_2Shift_Calendar-1 | TIG Welding Machine; TIG Welder; Helper | 6h | 350 | 350 |
| 175 | 6.6.27 | Lifting Lug fit up | 2h | 2018-09-25 11:30 | 2018-09-25 13:30 | 96, 174 | 2018-09-01 11:30 | 2018-09-01 13:30 | 2h | 20d | 0d | TEAM_2Shift_Calendar-1 | Helper; TIG Welding Machine; TIG Welder; Fitter | 8h | 487.5 | 487.5 |
| 176 | 6.6.28 | welding | 3h | 2018-09-25 13:30 | 2018-09-25 16:30 | 175 | 2018-09-01 13:30 | 2018-09-01 16:30 | 3h | 20d | 0d | TEAM_2Shift_Calendar-1 | TIG Welding Machine; TIG Welder; Helper | 9h | 525 | 525 |
| 177 | 6.6.29 | Radiography | 1d | 2018-09-25 16:30 | 2018-09-26 08:30 | 176 | 2018-09-01 16:30 | 2018-09-03 08:30 | 1d | 20d |  | TEAM_2Shift_Calendar-1 | SC Radiography (Cost) [0.1%] |  |  |  |

| ID | WBS | Task | Duration | Start | Finish | Predecessors | Baseline start | Baseline finish | Baseline duration | Total slack | Free slack | Calendar | Resources | Work | Cost | Baseline cost |
| --- | --- | --- | --- | --- | --- | --- | --- | --- | --- | --- | --- | --- | --- | --- | --- | --- |
| 178 | 6.7 | **Shell fabrication** | 53.38d | 2018-08-21 11:30 | 2018-09-26 06:30 |  | 2018-07-30 11:30 | 2018-09-03 06:30 | 53.38d | 20.25d |  | TEAM_2Shift_Calendar-1 |  | 228h | 10,383.04 | 10,383.04 |
| 179 | 6.7.1 | Marking | 1h | 2018-08-21 11:30 | 2018-08-21 12:30 | 30, 32, 34 | 2018-07-30 11:30 | 2018-07-30 12:30 | 1h | 61.38d | 0d | TEAM_2Shift_Calendar-1 | Helper; Forging Std (Cost) [0.1%]; Pipe (Cost) [0.1%]; Fitter | 2h | 118.75 | 118.75 |
| 180 | 6.7.2 | stamping | 4h | 2018-08-21 12:30 | 2018-08-21 16:30 | 179 | 2018-07-30 12:30 | 2018-07-30 16:30 | 4h | 61.38d | 0d | TEAM_2Shift_Calendar-1 | Helper; QC Engineer | 4h | 114.29 | 114.29 |
| 181 | 6.7.3 | Inner Shell Pipe edge preparation | 4h | 2018-08-22 08:30 | 2018-08-22 12:30 | 180FS+1d | 2018-07-31 08:30 | 2018-07-31 12:30 | 4h | 61.38d | 0d | TEAM_2Shift_Calendar-1 | Grinding Machine; Grinder | 8h | 225 | 225 |
| 182 | 6.7.4 | Outer shell Pipe edge preparation | 4h | 2018-08-22 12:30 | 2018-08-22 16:30 | 181 | 2018-07-31 12:30 | 2018-07-31 16:30 | 4h | 61.38d | 0d | TEAM_2Shift_Calendar-1 | Grinding Machine; Grinder | 8h | 225 | 225 |
| 183 | 6.7.5 | Pipe Cap marking & cutting | 2h | 2018-08-22 16:30 | 2018-08-22 18:30 | 33, 182 | 2018-07-31 16:30 | 2018-07-31 18:30 | 2h | 70.75d |  | TEAM_2Shift_Calendar-1 | Helper; OAGM; Gas Cutter; Fitter | 8h | 375 | 375 |
| 184 | 6.7.6 | Inner pipe outer pipe insertion | 2h | 2018-08-22 16:30 | 2018-08-22 18:30 | 181, 182 | 2018-07-31 16:30 | 2018-07-31 18:30 | 2h | 61.38d | 0d | TEAM_2Shift_Calendar-1 | Fitter; Helper [200%] | 6h | 337.5 | 337.5 |
| 185 | 6.7.7 | Pipe cap fitup with inner and outer pipe | 2h | 2018-08-22 18:30 | 2018-08-22 20:30 | 184 | 2018-07-31 18:30 | 2018-07-31 20:30 | 2h | 61.38d | 0.5d | TEAM_2Shift_Calendar-1 | Helper; SMAW Welder; SMAW Welding Machine; Fitter | 8h | 375 | 375 |
| 186 | 6.7.8 | Fitup inspection | 2h | 2018-08-23 08:30 | 2018-08-23 10:30 | 185 | 2018-08-01 08:30 | 2018-08-01 10:30 | 2h | 60.88d | 0d | TEAM_2Shift_Calendar-1 | QC Engineer | 2h |  |  |
| 187 | 6.7.9 | welding | 4h | 2018-08-23 10:30 | 2018-08-23 14:30 | 186 | 2018-08-01 10:30 | 2018-08-01 14:30 | 4h | 61d | 0d | TEAM_2Shift_Calendar-1 | SMAW Welder; SMAW Welding Machine; Helper | 12h | 475 | 475 |
| 188 | 6.7.10 | Inner pipe with flange fitup(RHS) | 2h | 2018-08-23 14:30 | 2018-08-23 16:30 | 187 | 2018-08-01 14:30 | 2018-08-01 16:30 | 2h | 61d | 0d | TEAM_2Shift_Calendar-1 | Helper; SMAW Welder; SMAW Welding Machine; Fitter | 8h | 375 | 375 |
| 189 | 6.7.11 | welding | 4h | 2018-08-23 16:30 | 2018-08-23 20:30 | 188 | 2018-08-01 16:30 | 2018-08-01 20:30 | 4h | 61d | 0d | TEAM_2Shift_Calendar-1 | SMAW Welder; SMAW Welding Machine; Helper | 12h | 475 | 475 |
| 190 | 6.7.12 | Inner pipe with flange fitup(LHS) | 2h | 2018-08-23 20:30 | 2018-08-24 06:30 | 189 | 2018-08-01 20:30 | 2018-08-02 06:30 | 2h | 61d | 0d | TEAM_2Shift_Calendar-1 | Helper; SMAW Welder; SMAW Welding Machine; Fitter | 8h | 375 | 375 |
| 191 | 6.7.13 | welding | 4h | 2018-08-24 06:30 | 2018-08-24 10:30 | 190 | 2018-08-02 06:30 | 2018-08-02 10:30 | 4h | 61d | 40.88d | TEAM_2Shift_Calendar-1 | SMAW Welder; SMAW Welding Machine; Helper | 12h | 475 | 475 |
| 192 | 6.7.14 | Outer pipe with saddle fit up(RHS) | 3h | 2018-09-20 17:30 | 2018-09-20 20:30 | 191, 65 | 2018-08-29 17:30 | 2018-08-29 20:30 | 3h | 20.12d | 0d | TEAM_2Shift_Calendar-1 | Helper; SMAW Welder; SMAW Welding Machine; Fitter | 12h | 562.5 | 562.5 |
| 193 | 6.7.15 | Fitup inspection | 14h | 2018-09-20 20:30 | 2018-09-21 18:30 | 192 | 2018-08-29 20:30 | 2018-08-30 18:30 | 14h | 20.12d | 0d | TEAM_2Shift_Calendar-1 | QC Engineer | 2h |  |  |
| 194 | 6.7.16 | welding | 4h | 2018-09-21 18:30 | 2018-09-24 06:30 | 193 | 2018-08-30 18:30 | 2018-08-31 06:30 | 4h | 20.12d | 0d | TEAM_2Shift_Calendar-1 | SMAW Welder; SMAW Welding Machine; Helper | 12h | 475 | 475 |
| 195 | 6.7.17 | Outer pipe with saddle fit up(LHS) | 3h | 2018-09-24 06:30 | 2018-09-24 09:30 | 194, 80 | 2018-08-31 06:30 | 2018-08-31 09:30 | 3h | 20.12d | 0d | TEAM_2Shift_Calendar-1 | Helper; SMAW Welder; SMAW Welding Machine; Fitter | 12h | 562.5 | 562.5 |
| 196 | 6.7.18 | Fitup inspection | 2h | 2018-09-24 09:30 | 2018-09-24 11:30 | 195 | 2018-08-31 09:30 | 2018-08-31 11:30 | 2h | 20.12d | 0d | TEAM_2Shift_Calendar-1 | QC Engineer | 2h |  |  |
| 197 | 6.7.19 | welding | 4h | 2018-09-24 11:30 | 2018-09-24 15:30 | 196 | 2018-08-31 11:30 | 2018-08-31 15:30 | 4h | 20.25d | 0d | TEAM_2Shift_Calendar-1 | SMAW Welder; SMAW Welding Machine; Helper | 12h | 475 | 475 |
| 198 | 6.7.20 | RF pad forming | 3h | 2018-09-24 15:30 | 2018-09-24 18:30 | 41, 197 | 2018-08-31 15:30 | 2018-08-31 18:30 | 3h | 22d | 0d | TEAM_2Shift_Calendar-1 | Helper; Fitter | 6h | 356.25 | 356.25 |
| 199 | 6.7.21 | RF pad fit up with outer pipe | 2h | 2018-09-24 18:30 | 2018-09-24 20:30 | 197, 198 | 2018-08-31 18:30 | 2018-08-31 20:30 | 2h | 22d | 0d | TEAM_2Shift_Calendar-1 | SMAW Welder; SMAW Welding Machine; Fitter | 6h | 275 | 275 |
| 200 | 6.7.22 | Welding | 4h | 2018-09-24 20:30 | 2018-09-25 08:30 | 199 | 2018-08-31 20:30 | 2018-09-01 08:30 | 4h | 22d |  | TEAM_2Shift_Calendar-1 | SMAW Welding Machine; SMAW Welder | 8h | 275 | 275 |
| 201 | 6.7.23 | Outer pipe with nozzle fit up | 3h | 2018-09-24 15:30 | 2018-09-24 18:30 | 197 | 2018-08-31 15:30 | 2018-08-31 18:30 | 3h | 20.25d | 0d | TEAM_2Shift_Calendar-1 | Helper; TIG Welding Machine; TIG Welder; Fitter | 12h | 731.25 | 731.25 |
| 202 | 6.7.24 | Outer pipe with nozzle welding | 5h | 2018-09-24 18:30 | 2018-09-25 07:30 | 201 | 2018-08-31 18:30 | 2018-09-01 07:30 | 5h | 20.25d | 0d | TEAM_2Shift_Calendar-1 | TIG Welding Machine; TIG Welder; Helper | 15h | 875 | 875 |
| 203 | 6.7.25 | Insulation cleat fit up | 2h | 2018-09-25 07:30 | 2018-09-25 09:30 | 202 | 2018-09-01 07:30 | 2018-09-01 09:30 | 2h | 20.25d | 0d | TEAM_2Shift_Calendar-1 | Helper; TIG Welding Machine; TIG Welder; Fitter | 8h | 487.5 | 487.5 |
| 204 | 6.7.26 | welding | 2h | 2018-09-25 09:30 | 2018-09-25 11:30 | 203 | 2018-09-01 09:30 | 2018-09-01 11:30 | 2h | 21.62d |  | TEAM_2Shift_Calendar-1 | TIG Welding Machine; TIG Welder; Helper | 6h | 350 | 350 |
| 205 | 6.7.27 | Lifting Lug fit up | 2h | 2018-09-25 09:30 | 2018-09-25 11:30 | 96, 203 | 2018-09-01 09:30 | 2018-09-01 11:30 | 2h | 20.25d | 0d | TEAM_2Shift_Calendar-1 | Helper; TIG Welding Machine; TIG Welder; Fitter | 8h | 487.5 | 487.5 |
| 206 | 6.7.28 | welding | 3h | 2018-09-25 11:30 | 2018-09-25 14:30 | 205 | 2018-09-01 11:30 | 2018-09-01 14:30 | 3h | 20.25d | 0d | TEAM_2Shift_Calendar-1 | TIG Welding Machine; TIG Welder; Helper | 9h | 525 | 525 |
| 207 | 6.7.29 | Radiography | 1d | 2018-09-25 14:30 | 2018-09-26 06:30 | 206 | 2018-09-01 14:30 | 2018-09-03 06:30 | 1d | 20.25d |  | TEAM_2Shift_Calendar-1 | SC Radiography (Cost) [0.1%] |  |  |  |

| ID | WBS | Task | Duration | Start | Finish | Predecessors | Baseline start | Baseline finish | Baseline duration | Total slack | Free slack | Calendar | Resources | Work | Cost | Baseline cost |
| --- | --- | --- | --- | --- | --- | --- | --- | --- | --- | --- | --- | --- | --- | --- | --- | --- |
| 208 | 6.8 | **Shell fabrication** | 73.62d | 2018-08-21 11:30 | 2018-10-09 08:30 |  | 2018-07-30 11:30 | 2018-09-17 08:30 | 73.62d | 0d |  | TEAM_2Shift_Calendar-1 |  | 228h | 10,383.04 | 10,383.04 |
| 209 | 6.8.1 | Marking | 1h | 2018-08-21 11:30 | 2018-08-21 12:30 | 30, 32, 34 | 2018-07-30 11:30 | 2018-07-30 12:30 | 1h | 41.38d | 0d | TEAM_2Shift_Calendar-1 | Helper; Forging Std (Cost) [0.1%]; Pipe (Cost) [0.1%]; Fitter | 2h | 118.75 | 118.75 |
| 210 | 6.8.2 | stamping | 4h | 2018-08-21 12:30 | 2018-08-21 16:30 | 209 | 2018-07-30 12:30 | 2018-07-30 16:30 | 4h | 41.38d | 0d | TEAM_2Shift_Calendar-1 | Helper; QC Engineer | 4h | 114.29 | 114.29 |
| 211 | 6.8.3 | Inner Shell Pipe edge preparation | 4h | 2018-08-22 08:30 | 2018-08-22 12:30 | 210FS+1d | 2018-07-31 08:30 | 2018-07-31 12:30 | 4h | 41.38d | 0d | TEAM_2Shift_Calendar-1 | Grinding Machine; Grinder | 8h | 225 | 225 |
| 212 | 6.8.4 | Outer shell Pipe edge preparation | 4h | 2018-08-22 12:30 | 2018-08-22 16:30 | 211 | 2018-07-31 12:30 | 2018-07-31 16:30 | 4h | 41.38d | 0d | TEAM_2Shift_Calendar-1 | Grinding Machine; Grinder | 8h | 225 | 225 |
| 213 | 6.8.5 | Pipe Cap marking & cutting | 2h | 2018-08-22 16:30 | 2018-08-22 18:30 | 33, 212 | 2018-07-31 16:30 | 2018-07-31 18:30 | 2h | 70.75d |  | TEAM_2Shift_Calendar-1 | Helper; OAGM; Gas Cutter; Fitter | 8h | 375 | 375 |
| 214 | 6.8.6 | Inner pipe outer pipe insertion | 2h | 2018-08-22 16:30 | 2018-08-22 18:30 | 211, 212 | 2018-07-31 16:30 | 2018-07-31 18:30 | 2h | 41.38d | 0d | TEAM_2Shift_Calendar-1 | Fitter; Helper [200%] | 6h | 337.5 | 337.5 |
| 215 | 6.8.7 | Pipe cap fitup with inner and outer pipe | 2h | 2018-08-22 18:30 | 2018-08-22 20:30 | 214 | 2018-07-31 18:30 | 2018-07-31 20:30 | 2h | 41.38d | 0.5d | TEAM_2Shift_Calendar-1 | Helper; SMAW Welder; SMAW Welding Machine; Fitter | 8h | 375 | 375 |
| 216 | 6.8.8 | Fitup inspection | 2h | 2018-08-23 08:30 | 2018-08-23 10:30 | 215 | 2018-08-01 08:30 | 2018-08-01 10:30 | 2h | 40.88d | 0d | TEAM_2Shift_Calendar-1 | QC Engineer | 2h |  |  |
| 217 | 6.8.9 | welding | 4h | 2018-08-23 10:30 | 2018-08-23 14:30 | 216 | 2018-08-01 10:30 | 2018-08-01 14:30 | 4h | 40.88d | 0d | TEAM_2Shift_Calendar-1 | SMAW Welder; SMAW Welding Machine; Helper | 12h | 475 | 475 |
| 218 | 6.8.10 | Inner pipe with flange fitup(RHS) | 2h | 2018-08-23 14:30 | 2018-08-23 16:30 | 217 | 2018-08-01 14:30 | 2018-08-01 16:30 | 2h | 40.88d | 0d | TEAM_2Shift_Calendar-1 | Helper; SMAW Welder; SMAW Welding Machine; Fitter | 8h | 375 | 375 |
| 219 | 6.8.11 | welding | 4h | 2018-08-23 16:30 | 2018-08-23 20:30 | 218 | 2018-08-01 16:30 | 2018-08-01 20:30 | 4h | 40.88d | 0d | TEAM_2Shift_Calendar-1 | SMAW Welder; SMAW Welding Machine; Helper | 12h | 475 | 475 |
| 220 | 6.8.12 | Inner pipe with flange fitup(LHS) | 2h | 2018-08-23 20:30 | 2018-08-24 06:30 | 219 | 2018-08-01 20:30 | 2018-08-02 06:30 | 2h | 40.88d | 0d | TEAM_2Shift_Calendar-1 | Helper; SMAW Welder; SMAW Welding Machine; Fitter | 8h | 375 | 375 |
| 221 | 6.8.13 | welding | 4h | 2018-08-24 06:30 | 2018-08-24 10:30 | 220 | 2018-08-02 06:30 | 2018-08-02 10:30 | 4h | 40.88d |  | TEAM_2Shift_Calendar-1 | SMAW Welder; SMAW Welding Machine; Helper | 12h | 475 | 475 |
| 222 | 6.8.14 | Outer pipe with saddle fit up(RHS) | 3h | 2018-09-20 17:30 | 2018-09-20 20:30 | 221, 65 | 2018-08-29 17:30 | 2018-08-29 20:30 | 3h | 0d |  | TEAM_2Shift_Calendar-1 | Helper; SMAW Welder; SMAW Welding Machine; Fitter | 12h | 562.5 | 562.5 |
| 223 | 6.8.15 | Fitup inspection | 14h | 2018-09-20 20:30 | 2018-09-21 18:30 | 222 | 2018-08-29 20:30 | 2018-08-30 18:30 | 14h | 0d |  | TEAM_2Shift_Calendar-1 | QC Engineer | 2h |  |  |
| 224 | 6.8.16 | welding | 4h | 2018-09-21 18:30 | 2018-09-24 06:30 | 223 | 2018-08-30 18:30 | 2018-08-31 06:30 | 4h | 0d |  | TEAM_2Shift_Calendar-1 | SMAW Welder; SMAW Welding Machine; Helper | 12h | 475 | 475 |
| 225 | 6.8.17 | Outer pipe with saddle fit up(LHS) | 3h | 2018-09-24 06:30 | 2018-09-24 09:30 | 224, 80 | 2018-08-31 06:30 | 2018-08-31 09:30 | 3h | 0d |  | TEAM_2Shift_Calendar-1 | Helper; SMAW Welder; SMAW Welding Machine; Fitter | 12h | 562.5 | 562.5 |
| 226 | 6.8.18 | Fitup inspection | 2h | 2018-09-24 09:30 | 2018-09-24 11:30 | 225 | 2018-08-31 09:30 | 2018-08-31 11:30 | 2h | 0d |  | TEAM_2Shift_Calendar-1 | QC Engineer | 2h |  |  |
| 227 | 6.8.19 | welding | 4h | 2018-09-24 11:30 | 2018-09-24 15:30 | 226 | 2018-08-31 11:30 | 2018-08-31 15:30 | 4h | 0d |  | TEAM_2Shift_Calendar-1 | SMAW Welder; SMAW Welding Machine; Helper | 12h | 475 | 475 |
| 228 | 6.8.20 | RF pad forming | 3h | 2018-09-24 15:30 | 2018-09-24 18:30 | 41, 227 | 2018-08-31 15:30 | 2018-08-31 18:30 | 3h | 22d | 0d | TEAM_2Shift_Calendar-1 | Helper; Fitter | 6h | 356.25 | 356.25 |
| 229 | 6.8.21 | RF pad fit up with outer pipe | 2h | 2018-09-24 18:30 | 2018-09-24 20:30 | 227, 228 | 2018-08-31 18:30 | 2018-08-31 20:30 | 2h | 22d | 0d | TEAM_2Shift_Calendar-1 | SMAW Welder; SMAW Welding Machine; Fitter | 6h | 275 | 275 |
| 230 | 6.8.22 | Welding | 4h | 2018-09-24 20:30 | 2018-09-25 08:30 | 229 | 2018-08-31 20:30 | 2018-09-01 08:30 | 4h | 22d |  | TEAM_2Shift_Calendar-1 | SMAW Welding Machine; SMAW Welder | 8h | 275 | 275 |
| 231 | 6.8.23 | Outer pipe with nozzle fit up | 3h | 2018-09-24 15:30 | 2018-09-24 18:30 | 227 | 2018-08-31 15:30 | 2018-08-31 18:30 | 3h | 0d |  | TEAM_2Shift_Calendar-1 | Helper; TIG Welding Machine; TIG Welder; Fitter | 12h | 731.25 | 731.25 |
| 232 | 6.8.24 | Outer pipe with nozzle welding | 5h | 2018-09-24 18:30 | 2018-09-25 07:30 | 231 | 2018-08-31 18:30 | 2018-09-01 07:30 | 5h | 0d |  | TEAM_2Shift_Calendar-1 | TIG Welding Machine; TIG Welder; Helper | 15h | 875 | 875 |
| 233 | 6.8.25 | Insulation cleat fit up | 2h | 2018-09-25 07:30 | 2018-09-25 09:30 | 232 | 2018-09-01 07:30 | 2018-09-01 09:30 | 2h | 0d |  | TEAM_2Shift_Calendar-1 | Helper; TIG Welding Machine; TIG Welder; Fitter | 8h | 487.5 | 487.5 |
| 234 | 6.8.26 | welding | 2h | 2018-09-25 09:30 | 2018-09-25 11:30 | 233 | 2018-09-01 09:30 | 2018-09-01 11:30 | 2h | 0d |  | TEAM_2Shift_Calendar-1 | TIG Welding Machine; TIG Welder; Helper | 6h | 350 | 350 |
| 235 | 6.8.27 | Lifting Lug fit up | 2h | 2018-09-25 11:30 | 2018-09-25 13:30 | 96, 234 | 2018-09-01 11:30 | 2018-09-01 13:30 | 2h | 0d |  | TEAM_2Shift_Calendar-1 | Helper; TIG Welding Machine; TIG Welder; Fitter | 8h | 487.5 | 487.5 |
| 236 | 6.8.28 | welding | 3h | 2018-09-25 13:30 | 2018-09-25 16:30 | 235 | 2018-09-01 13:30 | 2018-09-01 16:30 | 3h | 0d |  | TEAM_2Shift_Calendar-1 | TIG Welding Machine; TIG Welder; Helper | 9h | 525 | 525 |
| 237 | 6.8.29 | Dummy Activity | 10d | 2018-09-25 16:30 | 2018-10-08 16:30 | 236 | 2018-09-01 16:30 | 2018-09-15 16:30 | 10d | 0d |  |  |  |  |  |  |
| 238 | 6.8.30 | Radiography | 1d | 2018-10-08 16:30 | 2018-10-09 08:30 | 237 | 2018-09-15 16:30 | 2018-09-17 08:30 | 1d | 0d |  | TEAM_2Shift_Calendar-1 | SC Radiography (Cost) [0.1%] |  |  |  |

| ID | WBS | Task | Duration | Start | Finish | Predecessors | Baseline start | Baseline finish | Baseline duration | Total slack | Calendar | Resources | Work | Cost | Baseline cost |
| --- | --- | --- | --- | --- | --- | --- | --- | --- | --- | --- | --- | --- | --- | --- | --- |
| 239 | 6.9 | **Final assembly & Testing** | 20.12d | 2018-10-09 16:30 | 2018-10-23 17:30 |  | 2018-09-17 16:30 | 2018-09-29 17:30 | 20.12d | 0d | TEAM_2Shift_Calendar-1 |  | 254h | 12,800 | 12,800 |
| 240 | 6.9.1 | Saddle assembly | 2d | 2018-10-09 16:30 | 2018-10-10 16:30 | 118FS+1d, 148FS+1d, 178FS+1d, 208FS+1d | 2018-09-17 16:30 | 2018-09-18 16:30 | 2d | 0d | TEAM_2Shift_Calendar-1 | Helper [300%]; Fitter [300%] | 96h | 5,700 | 5,700 |
| 241 | 6.9.2 | U bend assembly with shell | 2d | 2018-10-10 16:30 | 2018-10-11 16:30 | 240 | 2018-09-18 16:30 | 2018-09-19 16:30 | 2d | 0d | TEAM_2Shift_Calendar-1 | Helper [200%]; Fitter [200%] | 34h | 2,018.75 | 2,018.75 |
| 242 | 6.9.3 | Hydro test preparation | 1d | 2018-10-16 08:30 | 2018-10-16 16:30 | 241FS+5d | 2018-09-24 08:30 | 2018-09-24 16:30 | 1d | 0d | TEAM_2Shift_Calendar-1 | Helper | 8h | 400 | 400 |
| 243 | 6.9.4 | Hydro test | 2d | 2018-10-16 16:30 | 2018-10-17 16:30 | 242 | 2018-09-24 16:30 | 2018-09-25 16:30 | 2d | 0d | TEAM_2Shift_Calendar-1 | Helper [300%]; Fitter [300%] | 30h | 1,781.25 | 1,781.25 |
| 244 | 6.9.5 | Testing inspection | 9h | 2018-10-17 16:30 | 2018-10-19 09:30 | 243 | 2018-09-25 16:30 | 2018-09-26 09:30 | 9h | 0d | TEAM_2Shift_Calendar-1 | TPI (Cost) [0.1%]; QC Engineer | 4h |  |  |
| 245 | 6.9.6 | water drying | 5h | 2018-10-19 09:30 | 2018-10-19 14:30 | 244 | 2018-09-26 09:30 | 2018-09-26 14:30 | 5h | 6.38d | TEAM_2Shift_Calendar-1 | Helper [200%] | 10h | 500 | 500 |
| 246 | 6.9.7 | Pickling and pasivation | 3d | 2018-10-19 09:30 | 2018-10-20 17:30 | 244 | 2018-09-26 09:30 | 2018-09-27 17:30 | 3d | 0d | TEAM_2Shift_Calendar-1 | Helper [200%] | 48h | 2,400 | 2,400 |
| 247 | 6.9.8 | Primer painting | 2d | 2018-10-20 17:30 | 2018-10-22 17:30 | 246 | 2018-09-27 17:30 | 2018-09-28 17:30 | 2d | 0d | TEAM_2Shift_Calendar-1 | Painter | 16h |  |  |
| 248 | 6.9.9 | Finish painting | 1d | 2018-10-23 09:30 | 2018-10-23 17:30 | 247FS+1d | 2018-09-29 09:30 | 2018-09-29 17:30 | 1d | 0d | TEAM_2Shift_Calendar-1 | Painter | 8h |  |  |
