# 4221-7001

Schedule from MS Project, 2017-10-04 to 2018-10-20, costs in ₹, A marks actual dates.

## Calendars

- TEAM_2Shift_Calendar-1: Mon-Sat 06:00-22:00; Sun off. Exceptions (off unless hours are given): 2017-01-13 to 2023-02-11 (2nd Sat, recurring), 2017-01-26 to 2036-01-26 (Republic Day, recurring), 2017-01-27 to 2023-08-26 (4th Sat, recurring), 2017-05-01 to 2036-05-01 (May Day, recurring), 2017-08-15 to 2036-08-15 (Indepdence Day, recurring), 2017-10-02 to 2036-10-02 (Gandhi Jayanti, recurring), 2017-10-19 (Deepavali'2017), 2018-01-15 (Thiruvalluvar Day'2018), 2018-09-13 (Vinakya Chaturthi'2018), 2018-10-18 (Ayudha Pooja'2018).
- TEAM_Stand_Calendar: Mon-Sat 08:30-12:30, 13:30-17:30; Sun off. Exceptions (off unless hours are given): 2017-01-13 to 2023-08-12 (2nd Sat, recurring), 2017-01-26 to 2036-01-26 (Republic Day, recurring), 2017-01-27 to 2023-08-26 (4th Sat, recurring), 2017-05-01 to 2036-05-01 (May Day, recurring), 2017-08-15 to 2036-08-15 (Independence Day, recurring), 2017-10-02 to 2036-10-02 (Gandhi Jayanti, recurring), 2017-10-18 (Deepavali'2017), 2018-01-15 (Thiruvalluvar Day'2018), 2018-09-13 (Vinakaya Chaturthi'2018), 2018-10-18 (Ayudha Pooja'2018).

## Resources

| Resource | Rate |
| --- | --- |
| Marketing |  |
| PM |  |
| PMO Head |  |
| PPC Engineer |  |
| QC Engineer |  |
| Purchase Engineer |  |
| PMO Support |  |
| Draftman |  |
| Client |  |
| Crane |  |
| Helper | 50 |
| Store |  |
| SC Radiography (Cost) |  |
| Cutting Machine |  |
| SC (Work) |  |
| Driller | 68.75 |
| Fitter | 68.75 |
| Gas Cutter | 68.75 |
| Grinder | 56.25 |
| Grinding Machine |  |
| OAGM |  |
| Painter |  |
| Radial Drilling Machine |  |
| SMAW Welder | 68.75 |
| TIG Welding Machine |  |
| TIG Welder | 125 |
| SMAW Welding Machine |  |
| TPI (Cost) |  |
| Vehicle |  |
| Lathe Operator | 120 |
| Lathe |  |
| Expanding Machine |  |
| Plate Bending Machine |  |
| Rolling Machine |  |
| SAW Welder | 68.75 |
| Milling Operator | 120 |
| Forging Non-Std (Cost) |  |
| Forging Std (Cost) |  |
| Pipe (Cost) |  |
| Plate (Cost) |  |
| Rod (Cost) |  |
| Tube (Cost) |  |
| Tube Sheet (Cost) |  |
| Finance |  |
| Design Engineer |  |

## Schedule

| ID | WBS | Task | Type | Duration | Start | Finish | Predecessors | Complete | Remaining | Baseline start | Baseline finish | Baseline duration | Total slack | Free slack | Resources | Work | Actual work |
| --- | --- | --- | --- | --- | --- | --- | --- | --- | --- | --- | --- | --- | --- | --- | --- | --- | --- |
| 1 | 1 | **Project Initiation** |  | 4.12d | 2017-10-04 08:30 A | 2017-10-09 09:30 A |  | 100% |  | 2017-10-04 08:30 | 2017-10-09 09:30 | 4.12d |  |  |  | 20h | 20h |
| 2 | 1.1 | PO Receipt |  | 1d | 2017-10-04 08:30 A | 2017-10-04 17:30 A |  | 100% |  | 2017-10-04 08:30 | 2017-10-04 17:30 | 1d |  |  | Marketing | 2h | 2h |
| 3 | 1.2 | Work Order |  | 1d | 2017-10-05 08:30 A | 2017-10-05 17:30 A | 2 | 100% |  | 2017-10-05 08:30 | 2017-10-05 17:30 | 1d |  |  | Marketing | 3h | 3h |
| 4 | 1.3 | CRM | milestone | 9h | 2017-10-07 08:30 A | 2017-10-09 09:30 A | 3FS+1d | 100% |  | 2017-10-07 08:30 | 2017-10-09 09:30 | 9h |  |  | PMO Head; PPC Engineer; QC Engineer; Purchase Engineer; PM; Finance | 15h | 15h |
| 5 | 2 | **Design** |  | 177d | 2017-10-06 08:30 A | 2018-05-22 17:30 |  | 99% | 0.8d | 2017-10-06 08:30 | 2018-04-27 17:30 | 159d | 1.88d | 0d |  | 709.33h | 707.33h |
| 6 | 2.1 | Document Review |  | 68d | 2017-10-06 08:30 A | 2018-01-01 17:30 A | 3 | 100% |  | 2017-10-06 08:30 | 2018-01-01 17:30 | 68d |  |  | Design Engineer | 544h | 544h |
| 7 | 2.2 | Design |  | 2d | 2018-01-02 08:30 A | 2018-01-03 17:30 A | 6 | 100% |  | 2018-01-02 08:30 | 2018-01-03 17:30 | 2d |  |  | Design Engineer | 16h | 16h |
| 8 | 2.3 | Drafting |  | 9d | 2018-01-04 08:30 A | 2018-01-16 17:30 A | 7 | 100% |  | 2018-01-04 08:30 | 2018-01-16 17:30 | 9d |  |  | Draftman | 60h | 60h |
| 9 | 2.4 | DCI Creation |  | 65.75d | 2017-10-25 08:30 A | 2018-01-17 15:30 A | 8 | 100% |  | 2017-10-25 08:30 | 2018-01-17 15:30 | 65.75d |  |  | Design Engineer | 8h | 8h |
| 10 | 2.5 | DCI Approval |  | 64.5d | 2018-01-12 08:30 A | 2018-04-06 12:30 A | 9FS+61d | 100% |  | 2018-01-12 08:30 | 2018-04-06 12:30 | 64.5d |  |  | Design Engineer | 8h | 8h |
| 11 | 2.6 | Draftman Review |  | 1d | 2018-01-16 08:30 A | 2018-01-16 17:30 A | 10 | 100% |  | 2018-01-16 08:30 | 2018-01-16 17:30 | 1d |  |  | Draftman | 6h | 6h |
| 12 | 2.7 | Design Engineer Review |  | 1.25d | 2018-01-17 08:30 A | 2018-01-18 10:30 A | 11 | 100% |  | 2018-01-17 08:30 | 2018-01-18 10:30 | 1.25d |  |  | Design Engineer | 10h | 10h |
| 13 | 2.8 | Design Head Review |  | 2d | 2018-01-18 08:30 A | 2018-01-19 17:30 A | 12 | 100% |  | 2018-01-18 08:30 | 2018-01-19 17:30 | 2d |  |  | Design Engineer | 16h | 16h |
| 14 | 2.9 | Drawing Review meeting |  | 1d | 2018-01-20 08:30 A | 2018-01-20 17:30 A | 13 | 100% |  | 2018-01-20 08:30 | 2018-01-20 17:30 | 1d |  |  | PPC Engineer; Purchase Engineer; PM; PMO Head; QC Engineer; Design Engineer | 5.33h | 5.33h |
| 15 | 2.10 | Nozzle load clearnce |  | 1d | 2018-01-16 08:30 A | 2018-01-16 17:30 A | 11SS | 100% |  | 2018-01-16 08:30 | 2018-01-16 17:30 | 1d |  |  | Client | 8h | 8h |
| 16 | 2.11 | Drawing Submission to client |  | 6d | 2018-01-18 08:30 A | 2018-01-24 17:30 A | 14 | 100% |  | 2018-01-18 08:30 | 2018-01-24 17:30 | 6d |  |  | Design Engineer | 26h | 26h |
| 17 | 2.12 | Drawing Approval | milestone | 1d | 2018-05-22 08:30 | 2018-05-22 17:30 | 16FS+90d |  |  | 2018-04-27 08:30 | 2018-04-27 17:30 | 1d | 1.88d | 0d | Client | 2h |  |
| 18 | 3 | QAP submission |  | 5d | 2018-05-23 08:30 | 2018-05-29 17:30 | 5 |  |  | 2018-04-30 08:30 | 2018-05-05 17:30 | 5d | 113d |  | QC Engineer | 40h |  |
| 19 | 4 | **PBG** |  | 13d | 2018-05-23 08:30 | 2018-06-07 17:30 |  |  |  | 2018-04-30 08:30 | 2018-05-16 17:30 | 13d | 105d |  |  | 26h |  |
| 20 | 4.1 | PBG Submission |  | 3d | 2018-05-23 08:30 | 2018-05-25 17:30 | 17 |  |  | 2018-04-30 08:30 | 2018-05-03 17:30 | 3d | 105d | 0d | Finance | 16h |  |
| 21 | 4.2 | PBG Approval | milestone | 5d | 2018-06-02 08:30 | 2018-06-07 17:30 | 20FS+5d |  |  | 2018-05-10 08:30 | 2018-05-16 17:30 | 5d | 105d |  | Client; Finance | 10h |  |
| 22 | 5 | **Preliminary Details For Enquiry** |  | 72d | 2017-11-02 08:30 A | 2018-02-02 17:30 A |  | 100% |  | 2017-11-02 08:30 | 2018-02-02 17:30 | 72d |  |  |  | 15h | 15h |
| 23 | 5.1 | Tubes SA 179 |  | 3d | 2017-11-02 08:30 A | 2017-11-04 17:30 A | 3FS+20d | 100% |  | 2017-11-02 08:30 | 2017-11-04 17:30 | 3d |  |  | PPC Engineer; Design Engineer | 7.5h | 7.5h |
| 24 | 5.2 | Forgings SA 266 Gr.4 |  | 2d | 2018-02-01 08:30 A | 2018-02-02 17:30 A | 3FS+90d | 100% |  | 2018-02-01 08:30 | 2018-02-02 17:30 | 2d |  |  | PPC Engineer; Design Engineer | 7.5h | 7.5h |

| ID | WBS | Task | Duration | Start | Finish | Predecessors | Complete | Remaining | Baseline start | Baseline finish | Baseline duration | Total slack | Free slack | Resources | Work | Actual work |
| --- | --- | --- | --- | --- | --- | --- | --- | --- | --- | --- | --- | --- | --- | --- | --- | --- |
| 25 | 6 | **PR Issue** | 127d | 2017-12-21 08:30 A | 2018-06-02 17:30 |  | 3% | 123.42d | 2017-12-21 08:30 | 2018-05-10 17:30 | 109d | 102d |  |  | 55h | 8h |
| 26 | 6.1 | Plates | 7d | 2018-05-23 08:30 | 2018-05-31 17:30 | 17 |  |  | 2018-04-30 08:30 | 2018-05-08 17:30 | 7d | 28.94d | 0d | Plate (Cost) [0.1%]; PPC Engineer | 8h |  |
| 27 | 6.2 | Pipes | 7d | 2018-05-23 08:30 | 2018-05-31 17:30 | 17 |  |  | 2018-04-30 08:30 | 2018-05-08 17:30 | 7d | 47.25d | 0d | Pipe (Cost) [0.1%]; PPC Engineer | 6h |  |
| 28 | 6.3 | Rods | 9d | 2018-05-23 08:30 | 2018-06-02 17:30 | 17 |  |  | 2018-04-30 08:30 | 2018-05-10 17:30 | 9d | 102d | 0d | Rod (Cost) [0.1%]; PPC Engineer | 2h |  |
| 29 | 6.4 | Tubes | 2d | 2017-12-21 08:30 A | 2017-12-22 17:30 A | 23 | 100% |  | 2017-12-21 08:30 | 2017-12-22 17:30 | 2d |  |  | Tube (Cost) [0.1%]; PPC Engineer | 8h | 8h |
| 30 | 6.5 | Forgings(std,Non-std,Blank) | 4d | 2018-05-23 08:30 | 2018-05-28 17:30 | 17 |  |  | 2018-04-30 08:30 | 2018-05-04 17:30 | 4d | 27.5d | 0d | Forging Non-Std (Cost) [0.1%]; Forging Std (Cost) [0.1%]; Tube Sheet (Cost) [0.1%]; PPC Engineer | 8h |  |
| 31 | 6.6 | 180 Deg return radius bend | 7d | 2018-05-23 08:30 | 2018-05-31 17:30 | 17 |  |  | 2018-04-30 08:30 | 2018-05-08 17:30 | 7d | 61.62d | 0d | PPC Engineer | 8h |  |
| 32 | 6.7 | Gaskets | 7d | 2018-05-23 08:30 | 2018-05-31 17:30 | 17 |  |  | 2018-04-30 08:30 | 2018-05-08 17:30 | 7d | 18.12d | 0d | PPC Engineer | 3h |  |
| 33 | 6.8 | Cosumbales | 7d | 2018-05-23 08:30 | 2018-05-31 17:30 | 17 |  |  | 2018-04-30 08:30 | 2018-05-08 17:30 | 7d | 58.75d | 0d | PPC Engineer | 4h |  |
| 34 | 6.9 | Fastners | 7d | 2018-05-23 08:30 | 2018-05-31 17:30 | 17 |  |  | 2018-04-30 08:30 | 2018-05-08 17:30 | 7d | 18.12d | 0d | PPC Engineer | 3h |  |
| 35 | 6.10 | Paint | 7d | 2018-05-23 08:30 | 2018-05-31 17:30 | 17 |  |  | 2018-04-30 08:30 | 2018-05-08 17:30 | 7d | 1.88d | 0d | PPC Engineer | 3h |  |
| 36 | 6.11 | N2 Purgings | 7d | 2018-05-23 08:30 | 2018-05-31 17:30 | 17 |  |  | 2018-04-30 08:30 | 2018-05-08 17:30 | 7d | 104d | 0d | PPC Engineer | 2h |  |
| 37 | 7 | **Material Ordering** | 122d | 2018-01-05 08:30 A | 2018-06-12 17:30 |  | 3% | 118.61d | 2018-01-05 08:30 | 2018-05-19 17:30 | 104d | 102d |  |  | 39.5h | 8h |
| 38 | 7.1 | Plates | 7d | 2018-06-01 08:30 | 2018-06-08 17:30 | 26 |  |  | 2018-05-09 08:30 | 2018-05-17 17:30 | 7d | 28.94d | 0d | Plate (Cost) [0.1%]; Purchase Engineer | 5h |  |
| 39 | 7.2 | Pipes | 7d | 2018-06-01 08:30 | 2018-06-08 17:30 | 27 |  |  | 2018-05-09 08:30 | 2018-05-17 17:30 | 7d | 47.25d | 0d | Pipe (Cost) [0.1%]; Purchase Engineer | 3h |  |
| 40 | 7.3 | Rods | 7d | 2018-06-04 08:30 | 2018-06-12 17:30 | 28 |  |  | 2018-05-11 08:30 | 2018-05-19 17:30 | 7d | 102d |  | Rod (Cost) [0.1%]; Purchase Engineer | 1h |  |
| 41 | 7.4 | Tubes | 2d | 2018-01-05 08:30 A | 2018-01-06 17:30 A | 29 | 100% |  | 2018-01-05 08:30 | 2018-01-06 17:30 | 2d |  |  | Tube (Cost) [0.1%]; Purchase Engineer | 8h | 8h |
| 42 | 7.5 | Forgings(std,Non-std,Blank) | 7d | 2018-05-29 08:30 | 2018-06-05 17:30 | 30 |  |  | 2018-05-05 08:30 | 2018-05-14 17:30 | 7d | 27.5d | 0d | Forging Non-Std (Cost) [0.1%]; Forging Std (Cost) [0.1%]; Tube Sheet (Cost) [0.1%]; Purchase Engineer | 8h |  |
| 43 | 7.6 | 180 Deg return radius bend | 7d | 2018-06-01 08:30 | 2018-06-08 17:30 | 31 |  |  | 2018-05-09 08:30 | 2018-05-17 17:30 | 7d | 61.62d | 0d | Purchase Engineer | 8h |  |
| 44 | 7.7 | Gaskets | 7d | 2018-06-01 08:30 | 2018-06-08 17:30 | 32 |  |  | 2018-05-09 08:30 | 2018-05-17 17:30 | 7d | 18.12d | 0d | Purchase Engineer | 2h |  |
| 45 | 7.8 | Cosumbales | 7d | 2018-06-01 08:30 | 2018-06-08 17:30 | 33 |  |  | 2018-05-09 08:30 | 2018-05-17 17:30 | 7d | 58.75d | 0d | Purchase Engineer | 2h |  |
| 46 | 7.9 | Fastners | 7d | 2018-06-01 08:30 | 2018-06-08 17:30 | 34 |  |  | 2018-05-09 08:30 | 2018-05-17 17:30 | 7d | 18.12d | 0d | Purchase Engineer | 1h |  |
| 47 | 7.10 | Paint | 7d | 2018-06-01 08:30 | 2018-06-08 17:30 | 35 |  |  | 2018-05-09 08:30 | 2018-05-17 17:30 | 7d | 1.88d | 0d | Purchase Engineer | 0.5h |  |
| 48 | 7.11 | N2 Purgings | 7d | 2018-06-01 08:30 | 2018-06-08 17:30 | 36 |  |  | 2018-05-09 08:30 | 2018-05-17 17:30 | 7d | 104d |  | Purchase Engineer | 1h |  |

| ID | WBS | Task | Duration | Start | Finish | Predecessors | Baseline start | Baseline finish | Baseline duration | Total slack | Free slack | Calendar | Resources | Work | Cost | Baseline cost |
| --- | --- | --- | --- | --- | --- | --- | --- | --- | --- | --- | --- | --- | --- | --- | --- | --- |
| 49 | 8 | **Materail Receipt - Double Pipe Exchanger (170-EE-7001)** | 60.25d | 2018-07-31 08:30 | 2018-10-19 10:30 |  | 2018-07-07 08:30 | 2018-09-25 10:30 | 60.25d | 3.75d |  |  |  | 86h | 1,800 | 1,800 |
| 50 | 8.1 | Inner Pipe SA 312 TP 316 - 4 Nos | 3h | 2018-08-06 08:30 | 2018-08-06 11:30 | 39FS+45d | 2018-07-13 08:30 | 2018-07-13 11:30 | 3h | 47.25d | 0d |  | Helper; Store; Pipe (Cost) [0.1%]; Crane | 9h | 150 | 150 |
| 51 | 8.2 | Pipe SA 312 TP 316 - 6 Nos | 3h | 2018-08-06 08:30 | 2018-08-06 11:30 | 39FS+45d | 2018-07-13 08:30 | 2018-07-13 11:30 | 3h | 54.12d | 0d |  | Store; Pipe (Cost) [0.1%]; Helper | 6h | 150 | 150 |
| 52 | 8.3 | Outer Pipe SA 312 TP 316 - 4 Nos | 3h | 2018-08-06 08:30 | 2018-08-06 11:30 | 39FS+45d | 2018-07-13 08:30 | 2018-07-13 11:30 | 3h | 47.25d | 0d |  | Helper; Store; Pipe (Cost) [0.1%]; Crane | 9h | 150 | 150 |
| 53 | 8.4 | Cap for outer pipe SA 403 Gr.316 - 8 Nos | 2h | 2018-08-06 08:30 | 2018-08-06 10:30 | 39FS+45d | 2018-07-13 08:30 | 2018-07-13 10:30 | 2h | 52.75d | 0d |  | Store; Helper | 4h | 100 | 100 |
| 54 | 8.5 | 180 Deg return radius bend | 3h | 2018-07-31 08:30 | 2018-07-31 11:30 | 43FS+40d | 2018-07-07 08:30 | 2018-07-07 11:30 | 3h | 61.62d | 27d |  | Store; Helper | 6h | 150 | 150 |
| 55 | 8.6 | Inner Pipe FLG SA 182 F 316 - 14 Nos | 3h | 2018-09-04 08:30 | 2018-09-04 11:30 | 42FS+70d | 2018-08-10 08:30 | 2018-08-10 11:30 | 3h | 27.5d | 0d |  | Helper; Store; Forging Std (Cost) [0.1%]; Crane | 9h | 150 | 150 |
| 56 | 8.7 | Std flanges (S1,S2,S3) SA 182 F 316 - 8 Nos | 2h | 2018-09-04 08:30 | 2018-09-04 10:30 | 42FS+70d | 2018-08-10 08:30 | 2018-08-10 10:30 | 2h | 36.75d |  |  | Store; Forging Std (Cost) [0.1%]; Helper | 4h | 100 | 100 |
| 57 | 8.8 | Nozzle Pipe SA 312 TP 316 - 8 Nos | 2h | 2018-08-06 08:30 | 2018-08-06 10:30 | 38FS+45d | 2018-07-13 08:30 | 2018-07-13 10:30 | 2h | 54.25d | 0.12d |  | Store; Pipe (Cost) [0.1%]; Helper | 4h | 100 | 100 |
| 58 | 8.9 | Stiffner SA 240 Gr.316 - 14 Nos | 2h | 2018-08-06 08:30 | 2018-08-06 10:30 | 38FS+45d | 2018-07-13 08:30 | 2018-07-13 10:30 | 2h | 58.75d |  |  | Store; Plate (Cost) [0.1%]; Helper | 4h | 100 | 100 |
| 59 | 8.10 | Saddle plate(16T,10T,12T) IS 2062 GR.B | 2h | 2018-08-27 08:30 | 2018-08-27 10:30 | 38FS+60d | 2018-08-02 08:30 | 2018-08-02 10:30 | 2h | 28.94d | 0d |  | Helper; Store; Plate (Cost) [0.1%]; Crane | 6h | 100 | 100 |
| 60 | 8.11 | SS plates(6T,10T) SA 240 GR.316 | 2h | 2018-08-27 08:30 | 2018-08-27 10:30 | 38FS+60d | 2018-08-02 08:30 | 2018-08-02 10:30 | 2h | 35.75d | 0d |  | Helper; Store; Plate (Cost) [0.1%]; Crane | 6h | 100 | 100 |
| 61 | 8.12 | CS plates (12T) SA 516 GR.70 | 1h | 2018-08-27 08:30 | 2018-08-27 09:30 | 38FS+60d | 2018-08-02 08:30 | 2018-08-02 09:30 | 1h | 35.38d | 0d |  | Helper; Store; Plate (Cost) [0.1%]; Crane | 3h | 50 | 50 |
| 62 | 8.13 | Cosumables | 2h | 2018-08-06 08:30 | 2018-08-06 10:30 | 45FS+45d | 2018-07-13 08:30 | 2018-07-13 10:30 | 2h | 58.75d |  |  | Store; Helper | 4h | 100 | 100 |
| 63 | 8.14 | Gaskets | 2h | 2018-09-21 08:30 | 2018-09-21 10:30 | 44FS+80d | 2018-08-29 08:30 | 2018-08-29 10:30 | 2h | 18.12d | 0d |  | Store; Helper | 4h | 100 | 100 |
| 64 | 8.15 | Fastners | 2h | 2018-09-21 08:30 | 2018-09-21 10:30 | 46FS+80d | 2018-08-29 08:30 | 2018-08-29 10:30 | 2h | 18.12d | 0d |  | Store; Helper | 4h | 100 | 100 |
| 65 | 8.16 | Paint | 2h | 2018-10-19 08:30 | 2018-10-19 10:30 | 47FS+100d | 2018-09-25 08:30 | 2018-09-25 10:30 | 2h | 1.88d | 0d |  | Store; Helper | 4h | 100 | 100 |
| 66 | 9 | **Fabrication Double Pipe Exchanger(170-EE-7001)** | 113d | 2018-08-06 10:30 | 2018-10-20 18:30 |  | 2018-07-13 10:30 | 2018-09-26 18:30 | 113d | 3.88d |  | TEAM_2Shift_Calendar-1 |  | 1662h | 75,489.15 | 75,489.15 |
| 67 | 9.1 | **Nozzle Fabrication** | 32.38d | 2018-08-06 11:30 | 2018-08-28 14:30 |  | 2018-07-13 11:30 | 2018-08-03 14:30 | 32.38d | 84.38d |  | TEAM_2Shift_Calendar-1 |  | 145h | 6,851.44 | 6,851.44 |
| 68 | 9.1.1 | Nozzle Pipe Receipt | 1h | 2018-08-06 11:30 | 2018-08-06 12:30 | 57, 51 | 2018-07-13 11:30 | 2018-07-13 12:30 | 1h | 108.25d | 0d | TEAM_2Shift_Calendar-1 | Forging Std (Cost) [0.1%]; Pipe (Cost) [0.1%]; Helper | 1h | 50 | 50 |
| 69 | 9.1.2 | **Nozzle Prep** | 8.38d | 2018-08-06 12:30 | 2018-08-10 15:30 |  | 2018-07-13 12:30 | 2018-07-19 15:30 | 8.38d | 108.25d |  | TEAM_2Shift_Calendar-1 |  | 112h | 5,488.94 | 5,488.94 |
| 70 | 9.1.2.1 | Nozzle Pipe Marking | 4h | 2018-08-06 12:30 | 2018-08-06 16:30 | 68 | 2018-07-13 12:30 | 2018-07-13 16:30 | 4h | 108.25d | 0d | TEAM_2Shift_Calendar-1 | Helper; Fitter | 8h | 475 | 475 |
| 71 | 9.1.2.2 | Nozzle Pipe Stamping | 3h | 2018-08-07 08:30 | 2018-08-07 11:30 | 70FS+1d | 2018-07-16 08:30 | 2018-07-16 11:30 | 3h | 108.25d | 0d | TEAM_2Shift_Calendar-1 | QC Engineer | 1h |  |  |
| 72 | 9.1.2.3 | Nozzle Pipe Cutting | 5h | 2018-08-07 11:30 | 2018-08-07 16:30 | 71 | 2018-07-16 11:30 | 2018-07-16 16:30 | 5h | 108.25d | 0d | TEAM_2Shift_Calendar-1 | Cutting Machine; Helper | 8h | 200 | 200 |
| 73 | 9.1.2.4 | Nozzle Pipe EP | 6h | 2018-08-07 16:30 | 2018-08-08 06:30 | 72 | 2018-07-16 16:30 | 2018-07-17 06:30 | 6h | 108.25d | 0d | TEAM_2Shift_Calendar-1 | Grinding Machine; Grinder | 12h | 337.5 | 337.5 |
| 74 | 9.1.2.5 | Nozzle Flange +Pipe Fitup | 5h | 2018-08-08 06:30 | 2018-08-08 11:30 | 73 | 2018-07-17 06:30 | 2018-07-17 11:30 | 5h | 108.25d | 0d | TEAM_2Shift_Calendar-1 | Helper; TIG Welding Machine; Fitter | 15h | 593.75 | 593.75 |
| 75 | 9.1.2.6 | Nozzle Flange +Pipe Fitup Inspection | 14h | 2018-08-08 11:30 | 2018-08-09 09:30 | 74 | 2018-07-17 11:30 | 2018-07-18 09:30 | 14h | 108.25d | 0d | TEAM_2Shift_Calendar-1 | QC Engineer; Helper | 4h | 107.69 | 107.69 |
| 76 | 9.1.2.7 | Nozzle Flange +Pipe Root Tig Welding | 10h | 2018-08-09 09:30 | 2018-08-09 19:30 | 75 | 2018-07-18 09:30 | 2018-07-18 19:30 | 10h | 108.25d | 0d | TEAM_2Shift_Calendar-1 | TIG Welding Machine; TIG Welder; Helper | 30h | 1,750 | 1,750 |
| 77 | 9.1.2.8 | Nozzle Flange +Pipe Filler Pass Welding | 10h | 2018-08-09 19:30 | 2018-08-10 13:30 | 76 | 2018-07-18 19:30 | 2018-07-19 13:30 | 10h | 108.25d | 0d | TEAM_2Shift_Calendar-1 | TIG Welding Machine; TIG Welder; Helper | 30h | 1,750 | 1,750 |
| 78 | 9.1.2.9 | DP Check | 2h | 2018-08-10 13:30 | 2018-08-10 15:30 | 77 | 2018-07-19 13:30 | 2018-07-19 15:30 | 2h | 108.25d |  | TEAM_2Shift_Calendar-1 | Fitter | 4h | 275 | 275 |

Notes:
- 67: Nozzle S3-S8 - 2''- 6 nos / S2- 1'' - 1 no / S1- 3'' - 1 no

| ID | WBS | Task | Duration | Start | Finish | Predecessors | Baseline start | Baseline finish | Baseline duration | Total slack | Free slack | Calendar | Resources | Work | Cost | Baseline cost |
| --- | --- | --- | --- | --- | --- | --- | --- | --- | --- | --- | --- | --- | --- | --- | --- | --- |
| 79 | 9.1.3 | **Stiffner** | 1.5d | 2018-08-27 10:30 | 2018-08-28 06:30 |  | 2018-08-02 10:30 | 2018-08-03 06:30 | 1.5d | 84.38d |  | TEAM_2Shift_Calendar-1 |  | 24h | 912.5 | 912.5 |
| 80 | 9.1.3.1 | Stiffner Marking | 3h | 2018-08-27 10:30 | 2018-08-27 13:30 | 60 | 2018-08-02 10:30 | 2018-08-02 13:30 | 3h | 84.38d | 0d | TEAM_2Shift_Calendar-1 | Helper; Plate (Cost) [0.1%]; Fitter | 6h | 356.25 | 356.25 |
| 81 | 9.1.3.2 | Cutting | 4h | 2018-08-27 13:30 | 2018-08-27 17:30 | 80 | 2018-08-02 13:30 | 2018-08-02 17:30 | 4h | 84.38d | 0d | TEAM_2Shift_Calendar-1 | OAGM; Gas Cutter | 8h | 275 | 275 |
| 82 | 9.1.3.3 | Grinding | 5h | 2018-08-27 17:30 | 2018-08-28 06:30 | 81 | 2018-08-02 17:30 | 2018-08-03 06:30 | 5h | 84.38d | 0d | TEAM_2Shift_Calendar-1 | Grinding Machine; Grinder | 10h | 281.25 | 281.25 |
| 83 | 9.1.4 | Radiography | 1d | 2018-08-28 06:30 | 2018-08-28 14:30 | 82 | 2018-08-03 06:30 | 2018-08-03 14:30 | 1d | 84.38d |  | TEAM_2Shift_Calendar-1 | Helper | 8h | 400 | 400 |
| 84 | 9.2 | **Saddle Fabrication(RHS)** | 12.31d | 2018-08-27 10:30 | 2018-09-03 13:00 |  | 2018-08-02 10:30 | 2018-08-09 13:00 | 12.31d | 57.94d | 3.31d | TEAM_2Shift_Calendar-1 |  | 195h | 8,546.36 | 8,546.36 |
| 85 | 9.2.1 | Plate Receipt | 4h | 2018-08-27 10:30 | 2018-08-27 14:30 | 59 | 2018-08-02 10:30 | 2018-08-02 14:30 | 4h | 57.94d | 0d | TEAM_2Shift_Calendar-1 | Plate (Cost) [0.1%]; Helper [200%] | 8h | 400 | 400 |
| 86 | 9.2.2 | Saddle Pl Marking | 5h | 2018-08-27 14:30 | 2018-08-27 19:30 | 85 | 2018-08-02 14:30 | 2018-08-02 19:30 | 5h | 57.94d | 0d | TEAM_2Shift_Calendar-1 | Helper; Fitter | 10h | 593.75 | 593.75 |
| 87 | 9.2.3 | Saddle Pl Mkg Inspection | 3h | 2018-08-27 19:30 | 2018-08-28 06:30 | 86 | 2018-08-02 19:30 | 2018-08-03 06:30 | 3h | 57.94d | 0d | TEAM_2Shift_Calendar-1 | Fitter | 3h | 206.25 | 206.25 |
| 88 | 9.2.4 | Saddle Pl Mkg Cutting | 1d | 2018-08-28 06:30 | 2018-08-28 14:30 | 87 | 2018-08-03 06:30 | 2018-08-03 14:30 | 1d | 57.94d | 0d | TEAM_2Shift_Calendar-1 | Gas Cutter; OAGM; Helper | 24h | 950 | 950 |
| 89 | 9.2.5 | Grinding | 12h | 2018-08-28 14:30 | 2018-08-29 10:30 | 88 | 2018-08-03 14:30 | 2018-08-04 10:30 | 12h | 57.94d | 0d | TEAM_2Shift_Calendar-1 | Grinding Machine; Grinder | 24h | 675 | 675 |
| 90 | 9.2.6 | Saddle Base Hole Marking | 1h | 2018-08-29 10:30 | 2018-08-29 11:30 | 89 | 2018-08-04 10:30 | 2018-08-04 11:30 | 1h | 57.94d | 0d | TEAM_2Shift_Calendar-1 | Helper; Fitter | 2h | 118.75 | 118.75 |
| 91 | 9.2.7 | Saddle Base Hole Drilling | 4h | 2018-08-29 11:30 | 2018-08-29 15:30 | 90 | 2018-08-04 11:30 | 2018-08-04 15:30 | 4h | 57.94d | 0d | TEAM_2Shift_Calendar-1 | Radial Drilling Machine; Driller | 8h | 275 | 275 |
| 92 | 9.2.8 | Saddle Pad Forming | 1d | 2018-08-29 15:30 | 2018-08-30 07:30 | 91 | 2018-08-04 15:30 | 2018-08-06 07:30 | 1d | 57.94d | 0d | TEAM_2Shift_Calendar-1 | Helper; Fitter | 16h | 950 | 950 |
| 93 | 9.2.9 | Saddle Fitup | 1d | 2018-08-30 07:30 | 2018-08-30 15:30 | 92 | 2018-08-06 07:30 | 2018-08-06 15:30 | 1d | 57.94d | 0d | TEAM_2Shift_Calendar-1 | Helper; SMAW Welder; SMAW Welding Machine; Fitter | 32h | 1,500 | 1,500 |
| 94 | 9.2.10 | Saddle Fitup Inspection | 9.5h | 2018-08-30 15:30 | 2018-08-31 09:00 | 93 | 2018-08-06 15:30 | 2018-08-07 09:00 | 9.5h | 57.94d | 0d | TEAM_2Shift_Calendar-1 | QC Engineer; Fitter | 10h | 544.27 | 544.27 |
| 95 | 9.2.11 | Saddle Welding | 2d | 2018-08-31 09:00 | 2018-09-01 09:00 | 94 | 2018-08-07 09:00 | 2018-08-08 09:00 | 2d | 57.94d | 0d | TEAM_2Shift_Calendar-1 | SMAW Welder; SMAW Welding Machine; Helper | 40h | 1,583.34 | 1,583.34 |
| 96 | 9.2.12 | Saddle Profile Grinding | 6h | 2018-09-01 09:00 | 2018-09-01 15:00 | 95 | 2018-08-08 09:00 | 2018-08-08 15:00 | 6h | 57.94d | 0d | TEAM_2Shift_Calendar-1 | Grinding Machine; Grinder | 12h | 337.5 | 337.5 |
| 97 | 9.2.13 | DP Check | 6h | 2018-09-01 15:00 | 2018-09-01 21:00 | 96 | 2018-08-08 15:00 | 2018-08-08 21:00 | 6h | 57.94d | 0d | TEAM_2Shift_Calendar-1 | Fitter | 6h | 412.5 | 412.5 |
| 98 | 9.2.14 | Radiography | 1d | 2018-09-01 21:00 | 2018-09-03 13:00 | 97 | 2018-08-08 21:00 | 2018-08-09 13:00 | 1d | 57.94d |  | TEAM_2Shift_Calendar-1 |  |  |  |  |
| 99 | 9.3 | **Saddle Fabrication(LHS)** | 12.31d | 2018-08-27 10:30 | 2018-09-03 13:00 |  | 2018-08-02 10:30 | 2018-08-09 13:00 | 12.31d | 59.94d | 5.31d | TEAM_2Shift_Calendar-1 |  | 195h | 8,546.36 | 8,546.36 |
| 100 | 9.3.1 | Plate Receipt | 4h | 2018-08-27 10:30 | 2018-08-27 14:30 | 59 | 2018-08-02 10:30 | 2018-08-02 14:30 | 4h | 71.75d |  | TEAM_2Shift_Calendar-1 | Plate (Cost) [0.1%]; Helper [200%] | 8h | 400 | 400 |
| 101 | 9.3.2 | Saddle Pl Marking | 5h | 2018-08-27 14:30 | 2018-08-27 19:30 | 85 | 2018-08-02 14:30 | 2018-08-02 19:30 | 5h | 71.12d |  | TEAM_2Shift_Calendar-1 | Helper; Fitter | 10h | 593.75 | 593.75 |
| 102 | 9.3.3 | Saddle Pl Mkg Inspection | 3h | 2018-08-27 19:30 | 2018-08-28 06:30 | 86 | 2018-08-02 19:30 | 2018-08-03 06:30 | 3h | 70.75d |  | TEAM_2Shift_Calendar-1 | Fitter | 3h | 206.25 | 206.25 |
| 103 | 9.3.4 | Saddle Pl Mkg Cutting | 1d | 2018-08-28 06:30 | 2018-08-28 14:30 | 87 | 2018-08-03 06:30 | 2018-08-03 14:30 | 1d | 69.75d |  | TEAM_2Shift_Calendar-1 | Gas Cutter; OAGM; Helper | 24h | 950 | 950 |
| 104 | 9.3.5 | Grinding | 12h | 2018-08-28 14:30 | 2018-08-29 10:30 | 88 | 2018-08-03 14:30 | 2018-08-04 10:30 | 12h | 68.25d |  | TEAM_2Shift_Calendar-1 | Grinding Machine; Grinder | 24h | 675 | 675 |
| 105 | 9.3.6 | Saddle Base Hole Marking | 1h | 2018-08-29 10:30 | 2018-08-29 11:30 | 89 | 2018-08-04 10:30 | 2018-08-04 11:30 | 1h | 68.12d |  | TEAM_2Shift_Calendar-1 | Helper; Fitter | 2h | 118.75 | 118.75 |
| 106 | 9.3.7 | Saddle Base Hole Drilling | 4h | 2018-08-29 11:30 | 2018-08-29 15:30 | 90 | 2018-08-04 11:30 | 2018-08-04 15:30 | 4h | 67.62d |  | TEAM_2Shift_Calendar-1 | Radial Drilling Machine; Driller | 8h | 275 | 275 |
| 107 | 9.3.8 | Saddle Pad Forming | 1d | 2018-08-29 15:30 | 2018-08-30 07:30 | 91 | 2018-08-04 15:30 | 2018-08-06 07:30 | 1d | 66.62d |  | TEAM_2Shift_Calendar-1 | Helper; Fitter | 16h | 950 | 950 |
| 108 | 9.3.9 | Saddle Fitup | 1d | 2018-08-30 07:30 | 2018-08-30 15:30 | 92 | 2018-08-06 07:30 | 2018-08-06 15:30 | 1d | 65.62d |  | TEAM_2Shift_Calendar-1 | Helper; SMAW Welder; SMAW Welding Machine; Fitter | 32h | 1,500 | 1,500 |
| 109 | 9.3.10 | Saddle Fitup Inspection | 9.5h | 2018-08-30 15:30 | 2018-08-31 09:00 | 93 | 2018-08-06 15:30 | 2018-08-07 09:00 | 9.5h | 64.44d |  | TEAM_2Shift_Calendar-1 | QC Engineer; Fitter | 10h | 544.27 | 544.27 |
| 110 | 9.3.11 | Saddle Welding | 2d | 2018-08-31 09:00 | 2018-09-01 09:00 | 94 | 2018-08-07 09:00 | 2018-08-08 09:00 | 2d | 62.44d |  | TEAM_2Shift_Calendar-1 | SMAW Welder; SMAW Welding Machine; Helper | 40h | 1,583.34 | 1,583.34 |
| 111 | 9.3.12 | Saddle Profile Grinding | 6h | 2018-09-01 09:00 | 2018-09-01 15:00 | 95 | 2018-08-08 09:00 | 2018-08-08 15:00 | 6h | 61.69d |  | TEAM_2Shift_Calendar-1 | Grinding Machine; Grinder | 12h | 337.5 | 337.5 |
| 112 | 9.3.13 | DP Check | 6h | 2018-09-01 15:00 | 2018-09-01 21:00 | 96 | 2018-08-08 15:00 | 2018-08-08 21:00 | 6h | 59.94d | 0d | TEAM_2Shift_Calendar-1 | Fitter | 6h | 412.5 | 412.5 |
| 113 | 9.3.14 | Radiography | 1d | 2018-09-01 21:00 | 2018-09-03 13:00 | 112 | 2018-08-08 21:00 | 2018-08-09 13:00 | 1d | 59.94d |  | TEAM_2Shift_Calendar-1 |  |  |  |  |

| ID | WBS | Task | Duration | Start | Finish | Predecessors | Baseline start | Baseline finish | Baseline duration | Total slack | Free slack | Calendar | Resources | Work | Cost | Baseline cost |
| --- | --- | --- | --- | --- | --- | --- | --- | --- | --- | --- | --- | --- | --- | --- | --- | --- |
| 114 | 9.4 | **Other Components** | 17.88d | 2018-08-27 09:30 | 2018-09-06 08:30 |  | 2018-08-02 09:30 | 2018-08-14 08:30 | 17.88d | 69.12d |  | TEAM_2Shift_Calendar-1 |  | 125h | 5,374.99 | 5,374.99 |
| 115 | 9.4.1 | **Lifting Lug** | 3.12d | 2018-08-27 09:30 | 2018-08-28 18:30 |  | 2018-08-02 09:30 | 2018-08-03 18:30 | 3.12d | 70.5d | 0d | TEAM_2Shift_Calendar-1 |  | 50h | 2,243.75 | 2,243.75 |
| 116 | 9.4.1.1 | Lifting Lug Marking (8 Nos) | 2h | 2018-08-27 09:30 | 2018-08-27 11:30 | 61 | 2018-08-02 09:30 | 2018-08-02 11:30 | 2h | 70.5d | 0d | TEAM_2Shift_Calendar-1 | Helper; Plate (Cost) [0.1%]; Fitter | 4h | 237.5 | 237.5 |
| 117 | 9.4.1.2 | Lifting Lug Cutting | 3h | 2018-08-27 11:30 | 2018-08-27 14:30 | 116 | 2018-08-02 11:30 | 2018-08-02 14:30 | 3h | 70.5d | 0d | TEAM_2Shift_Calendar-1 | OAGM; Gas Cutter | 6h | 206.25 | 206.25 |
| 118 | 9.4.1.3 | Lifting Lug Pad Marking | 2h | 2018-08-27 14:30 | 2018-08-27 16:30 | 117, 60 | 2018-08-02 14:30 | 2018-08-02 16:30 | 2h | 70.5d | 0d | TEAM_2Shift_Calendar-1 | Helper; Fitter | 4h | 237.5 | 237.5 |
| 119 | 9.4.1.4 | Lifting Lug Pad Cutting | 4h | 2018-08-27 16:30 | 2018-08-27 20:30 | 118 | 2018-08-02 16:30 | 2018-08-02 20:30 | 4h | 70.5d | 0d | TEAM_2Shift_Calendar-1 | OAGM; Gas Cutter | 8h | 275 | 275 |
| 120 | 9.4.1.5 | Lifting Lug Pad Grinding | 6h | 2018-08-27 20:30 | 2018-08-28 10:30 | 119 | 2018-08-02 20:30 | 2018-08-03 10:30 | 6h | 70.5d | 0d | TEAM_2Shift_Calendar-1 | Grinding Machine; Grinder | 12h | 337.5 | 337.5 |
| 121 | 9.4.1.6 | Lifting Lug Pad Forming | 8h | 2018-08-28 10:30 | 2018-08-28 18:30 | 120 | 2018-08-03 10:30 | 2018-08-03 18:30 | 8h | 70.5d |  | TEAM_2Shift_Calendar-1 | Helper; Fitter | 16h | 950 | 950 |
| 122 | 9.4.2 | **Insulation Cleat** | 0.88d | 2018-08-28 10:30 | 2018-08-28 17:30 |  | 2018-08-03 10:30 | 2018-08-03 17:30 | 0.88d | 84d |  | TEAM_2Shift_Calendar-1 |  | 14h | 468.75 | 468.75 |
| 123 | 9.4.2.1 | Insulation Cleat Marking | 1h | 2018-08-28 10:30 | 2018-08-28 11:30 | 60FS+2d | 2018-08-03 10:30 | 2018-08-03 11:30 | 1h | 84d | 0d | TEAM_2Shift_Calendar-1 | Helper; Plate (Cost) [0.1%]; Fitter | 2h | 118.75 | 118.75 |
| 124 | 9.4.2.2 | Insulation Cleat Cutting | 2h | 2018-08-28 11:30 | 2018-08-28 13:30 | 123 | 2018-08-03 11:30 | 2018-08-03 13:30 | 2h | 84d | 0d | TEAM_2Shift_Calendar-1 | Helper; Cutting Machine | 4h | 100 | 100 |
| 125 | 9.4.2.3 | Insulation Cleat Grinding | 2h | 2018-08-28 13:30 | 2018-08-28 15:30 | 124 | 2018-08-03 13:30 | 2018-08-03 15:30 | 2h | 84d | 0d | TEAM_2Shift_Calendar-1 | Grinding Machine; Grinder | 4h | 112.5 | 112.5 |
| 126 | 9.4.2.4 | Insulation Cleat Drilling | 2h | 2018-08-28 15:30 | 2018-08-28 17:30 | 125 | 2018-08-03 15:30 | 2018-08-03 17:30 | 2h | 84d |  | TEAM_2Shift_Calendar-1 | Radial Drilling Machine; Driller | 4h | 137.5 | 137.5 |
| 127 | 9.4.3 | **Bend with flange fabrication** | 2.62d | 2018-09-04 19:30 | 2018-09-06 08:30 |  | 2018-08-10 19:30 | 2018-08-14 08:30 | 2.62d | 69.12d |  | TEAM_2Shift_Calendar-1 |  | 61h | 2,662.49 | 2,662.49 |
| 128 | 9.4.3.1 | Bottom 180 Deg return radius bend with flange fit up | 2h | 2018-09-04 19:30 | 2018-09-04 21:30 | 54FS+1d, 55FS+1d | 2018-08-10 19:30 | 2018-08-10 21:30 | 2h | 69.12d | 0d | TEAM_2Shift_Calendar-1 | Helper; SMAW Welder; SMAW Welding Machine; Forging Std (Cost) [0.1%]; Fitter | 8h | 375 | 375 |
| 129 | 9.4.3.2 | welding | 4h | 2018-09-04 21:30 | 2018-09-05 09:30 | 128 | 2018-08-10 21:30 | 2018-08-13 09:30 | 4h | 69.12d | 0d | TEAM_2Shift_Calendar-1 | SMAW Welder; SMAW Welding Machine; Helper | 12h | 475 | 475 |
| 130 | 9.4.3.3 | Dp check | 1h | 2018-09-05 09:30 | 2018-09-05 10:30 | 129 | 2018-08-13 09:30 | 2018-08-13 10:30 | 1h | 69.12d | 0d | TEAM_2Shift_Calendar-1 | Fitter | 1h | 68.75 | 68.75 |
| 131 | 9.4.3.4 | Middle 180 Deg return radius bend with flange fit up | 2h | 2018-09-05 10:30 | 2018-09-05 12:30 | 130 | 2018-08-13 10:30 | 2018-08-13 12:30 | 2h | 69.12d | 0d | TEAM_2Shift_Calendar-1 | Helper; SMAW Welder; SMAW Welding Machine; Fitter | 8h | 375 | 375 |
| 132 | 9.4.3.5 | welding | 4h | 2018-09-05 12:30 | 2018-09-05 16:30 | 131 | 2018-08-13 12:30 | 2018-08-13 16:30 | 4h | 69.12d | 0d | TEAM_2Shift_Calendar-1 | SMAW Welder; SMAW Welding Machine; Helper | 12h | 475 | 475 |
| 133 | 9.4.3.6 | Dp check | 1h | 2018-09-05 16:30 | 2018-09-05 17:30 | 132 | 2018-08-13 16:30 | 2018-08-13 17:30 | 1h | 69.12d | 0d | TEAM_2Shift_Calendar-1 | Fitter | 1h | 68.75 | 68.75 |
| 134 | 9.4.3.7 | Top 180 Deg return radius bend with flange fit up | 2h | 2018-09-05 17:30 | 2018-09-05 19:30 | 133 | 2018-08-13 17:30 | 2018-08-13 19:30 | 2h | 69.12d | 0d | TEAM_2Shift_Calendar-1 | Helper; SMAW Welder; SMAW Welding Machine; Fitter | 6h | 281.24 | 281.24 |
| 135 | 9.4.3.8 | welding | 4h | 2018-09-05 19:30 | 2018-09-06 07:30 | 134 | 2018-08-13 19:30 | 2018-08-14 07:30 | 4h | 69.12d | 0d | TEAM_2Shift_Calendar-1 | SMAW Welder; SMAW Welding Machine; Helper | 12h | 475 | 475 |
| 136 | 9.4.3.9 | Dp check | 1h | 2018-09-06 07:30 | 2018-09-06 08:30 | 135 | 2018-08-14 07:30 | 2018-08-14 08:30 | 1h | 69.12d |  | TEAM_2Shift_Calendar-1 | Fitter | 1h | 68.75 | 68.75 |
| 137 | 9.5 | **Shell fabrication** | 50.25d | 2018-08-06 10:30 | 2018-09-07 12:30 |  | 2018-07-13 10:30 | 2018-08-16 12:30 | 50.25d | 54.88d | 18.75d | TEAM_2Shift_Calendar-1 |  | 210h | 9,542.5 | 9,542.5 |
| 138 | 9.5.1 | Marking | 1h | 2018-08-06 11:30 | 2018-08-06 12:30 | 50, 52 | 2018-07-13 11:30 | 2018-07-13 12:30 | 1h | 94.38d | 0d | TEAM_2Shift_Calendar-1 | Helper; Pipe (Cost) [0.1%]; Forging Std (Cost) [0.1%]; Fitter | 2h | 118.75 | 118.75 |
| 139 | 9.5.2 | stamping | 3h | 2018-08-06 12:30 | 2018-08-06 15:30 | 138 | 2018-07-13 12:30 | 2018-07-13 15:30 | 3h | 94.38d | 0d | TEAM_2Shift_Calendar-1 | Helper; QC Engineer | 6h | 180 | 180 |
| 140 | 9.5.3 | Inner Shell Pipe edge preparation | 4h | 2018-08-07 07:30 | 2018-08-07 11:30 | 139FS+1d | 2018-07-16 07:30 | 2018-07-16 11:30 | 4h | 94.88d | 0d | TEAM_2Shift_Calendar-1 | Grinding Machine; Grinder | 8h | 225 | 225 |
| 141 | 9.5.4 | Outer shell Pipe edge preparation | 4h | 2018-08-07 11:30 | 2018-08-07 15:30 | 140 | 2018-07-16 11:30 | 2018-07-16 15:30 | 4h | 94.88d | 0d | TEAM_2Shift_Calendar-1 | Grinding Machine; Grinder | 8h | 225 | 225 |
| 142 | 9.5.5 | Pipe Cap marking & cutting | 2h | 2018-08-06 10:30 | 2018-08-06 12:30 | 53 | 2018-07-13 10:30 | 2018-07-13 12:30 | 2h | 104.88d |  | TEAM_2Shift_Calendar-1 | Helper; OAGM; Gas Cutter; Fitter | 8h | 375 | 375 |
| 143 | 9.5.6 | Inner pipe outer pipe insertion | 2h | 2018-08-07 15:30 | 2018-08-07 17:30 | 140, 141 | 2018-07-16 15:30 | 2018-07-16 17:30 | 2h | 94.88d | 0d | TEAM_2Shift_Calendar-1 | Fitter; Helper [200%] | 6h | 337.5 | 337.5 |
| 144 | 9.5.7 | Pipe cap fitup with inner and outer pipe | 2h | 2018-08-07 17:30 | 2018-08-07 19:30 | 143 | 2018-07-16 17:30 | 2018-07-16 19:30 | 2h | 94.88d | 0.62d | TEAM_2Shift_Calendar-1 | Helper; SMAW Welder; SMAW Welding Machine; Fitter | 8h | 375 | 375 |
| 145 | 9.5.8 | Fitup inspection | 2h | 2018-08-08 08:30 | 2018-08-08 10:30 | 144 | 2018-07-17 08:30 | 2018-07-17 10:30 | 2h | 94.25d | 0d | TEAM_2Shift_Calendar-1 | QC Engineer | 2h |  |  |
| 146 | 9.5.9 | welding | 4h | 2018-08-08 10:30 | 2018-08-08 14:30 | 145 | 2018-07-17 10:30 | 2018-07-17 14:30 | 4h | 94.25d | 39.62d | TEAM_2Shift_Calendar-1 | SMAW Welder; SMAW Welding Machine; Helper | 12h | 475 | 475 |
| 147 | 9.5.10 | Inner pipe with flange fitup(RHS) | 2h | 2018-09-04 11:30 | 2018-09-04 13:30 | 146, 55 | 2018-08-10 11:30 | 2018-08-10 13:30 | 2h | 54.62d | 0d | TEAM_2Shift_Calendar-1 | Helper; SMAW Welder; SMAW Welding Machine; Fitter | 8h | 375 | 375 |
| 148 | 9.5.11 | welding | 4h | 2018-09-04 13:30 | 2018-09-04 17:30 | 147 | 2018-08-10 13:30 | 2018-08-10 17:30 | 4h | 54.62d | 0d | TEAM_2Shift_Calendar-1 | SMAW Welder; SMAW Welding Machine; Helper | 12h | 475 | 475 |
| 149 | 9.5.12 | Inner pipe with flange fitup(LHS) | 2h | 2018-09-04 17:30 | 2018-09-04 19:30 | 148 | 2018-08-10 17:30 | 2018-08-10 19:30 | 2h | 54.62d | 0d | TEAM_2Shift_Calendar-1 | Helper; SMAW Welder; SMAW Welding Machine; Fitter | 8h | 375 | 375 |
| 150 | 9.5.13 | welding | 4h | 2018-09-04 19:30 | 2018-09-05 07:30 | 149 | 2018-08-10 19:30 | 2018-08-13 07:30 | 4h | 54.62d | 0d | TEAM_2Shift_Calendar-1 | SMAW Welder; SMAW Welding Machine; Helper | 12h | 475 | 475 |
| 151 | 9.5.14 | Outer pipe with saddle fit up(RHS) | 3h | 2018-09-05 07:30 | 2018-09-05 10:30 | 150, 84 | 2018-08-13 07:30 | 2018-08-13 10:30 | 3h | 54.62d | 0d | TEAM_2Shift_Calendar-1 | Helper; SMAW Welder; SMAW Welding Machine; Fitter | 12h | 562.5 | 562.5 |
| 152 | 9.5.15 | Fitup inspection | 9h | 2018-09-05 10:30 | 2018-09-05 19:30 | 151 | 2018-08-13 10:30 | 2018-08-13 19:30 | 9h | 54.62d | 0d | TEAM_2Shift_Calendar-1 | QC Engineer | 2h |  |  |
| 153 | 9.5.16 | welding | 4h | 2018-09-05 19:30 | 2018-09-06 07:30 | 152 | 2018-08-13 19:30 | 2018-08-14 07:30 | 4h | 54.62d | 0d | TEAM_2Shift_Calendar-1 | SMAW Welder; SMAW Welding Machine; Helper | 12h | 475 | 475 |
| 154 | 9.5.17 | Outer pipe with saddle fit up(LHS) | 3h | 2018-09-06 07:30 | 2018-09-06 10:30 | 153, 99 | 2018-08-14 07:30 | 2018-08-14 10:30 | 3h | 54.62d | 0d | TEAM_2Shift_Calendar-1 | Helper; SMAW Welder; SMAW Welding Machine; Fitter | 12h | 562.5 | 562.5 |
| 155 | 9.5.18 | Fitup inspection | 2h | 2018-09-06 10:30 | 2018-09-06 12:30 | 154 | 2018-08-14 10:30 | 2018-08-14 12:30 | 2h | 54.62d | 0d | TEAM_2Shift_Calendar-1 | QC Engineer | 2h |  |  |
| 156 | 9.5.19 | welding | 4h | 2018-09-06 12:30 | 2018-09-06 16:30 | 155 | 2018-08-14 12:30 | 2018-08-14 16:30 | 4h | 54.88d | 0d | TEAM_2Shift_Calendar-1 | SMAW Welder; SMAW Welding Machine; Helper | 12h | 475 | 475 |
| 157 | 9.5.20 | Outer pipe with nozzle fit up | 3h | 2018-09-06 16:30 | 2018-09-06 19:30 | 156 | 2018-08-14 16:30 | 2018-08-14 19:30 | 3h | 54.88d | 0d | TEAM_2Shift_Calendar-1 | Helper; TIG Welding Machine; TIG Welder; Fitter | 12h | 731.25 | 731.25 |
| 158 | 9.5.21 | Outer pipe with nozzle welding | 5h | 2018-09-06 19:30 | 2018-09-07 08:30 | 157 | 2018-08-14 19:30 | 2018-08-16 08:30 | 5h | 54.88d | 0d | TEAM_2Shift_Calendar-1 | TIG Welding Machine; TIG Welder; Helper | 15h | 875 | 875 |
| 159 | 9.5.22 | Insulation cleat fit up | 2h | 2018-09-07 08:30 | 2018-09-07 10:30 | 158 | 2018-08-16 08:30 | 2018-08-16 10:30 | 2h | 54.88d | 0d | TEAM_2Shift_Calendar-1 | Helper; TIG Welding Machine; TIG Welder; Fitter | 8h | 487.5 | 487.5 |
| 160 | 9.5.23 | welding | 2h | 2018-09-07 10:30 | 2018-09-07 12:30 | 159 | 2018-08-16 10:30 | 2018-08-16 12:30 | 2h | 54.88d |  | TEAM_2Shift_Calendar-1 | TIG Welding Machine; TIG Welder; Helper | 6h | 350 | 350 |
| 161 | 9.5.24 | Lifting Lug fit up | 2h | 2018-08-28 18:30 | 2018-08-28 20:30 | 115 | 2018-08-03 18:30 | 2018-08-03 20:30 | 2h | 70.5d | 0d | TEAM_2Shift_Calendar-1 | Helper; TIG Welding Machine; TIG Welder; Fitter | 8h | 487.5 | 487.5 |
| 162 | 9.5.25 | welding | 3h | 2018-08-28 20:30 | 2018-08-29 07:30 | 161 | 2018-08-03 20:30 | 2018-08-04 07:30 | 3h | 70.5d | 0d | TEAM_2Shift_Calendar-1 | TIG Welding Machine; TIG Welder; Helper | 9h | 525 | 525 |
| 163 | 9.5.26 | Radiography | 1d | 2018-08-29 07:30 | 2018-08-29 15:30 | 162 | 2018-08-04 07:30 | 2018-08-04 15:30 | 1d | 70.5d |  | TEAM_2Shift_Calendar-1 | SC Radiography (Cost) [0.1%] |  |  |  |

| ID | WBS | Task | Duration | Start | Finish | Predecessors | Baseline start | Baseline finish | Baseline duration | Total slack | Free slack | Calendar | Resources | Work | Cost | Baseline cost |
| --- | --- | --- | --- | --- | --- | --- | --- | --- | --- | --- | --- | --- | --- | --- | --- | --- |
| 164 | 9.6 | **Shell fabrication** | 50.25d | 2018-08-06 10:30 | 2018-09-07 12:30 |  | 2018-07-13 10:30 | 2018-08-16 12:30 | 50.25d | 54.88d | 18.75d | TEAM_2Shift_Calendar-1 |  | 210h | 9,542.5 | 9,542.5 |
| 165 | 9.6.1 | Marking | 1h | 2018-08-06 11:30 | 2018-08-06 12:30 | 50, 52 | 2018-07-13 11:30 | 2018-07-13 12:30 | 1h | 94.38d | 0d | TEAM_2Shift_Calendar-1 | Helper; Forging Std (Cost) [0.1%]; Pipe (Cost) [0.1%]; Fitter | 2h | 118.75 | 118.75 |
| 166 | 9.6.2 | stamping | 3h | 2018-08-06 12:30 | 2018-08-06 15:30 | 165 | 2018-07-13 12:30 | 2018-07-13 15:30 | 3h | 94.38d | 0d | TEAM_2Shift_Calendar-1 | Helper; QC Engineer | 6h | 180 | 180 |
| 167 | 9.6.3 | Inner Shell Pipe edge preparation | 4h | 2018-08-07 07:30 | 2018-08-07 11:30 | 166FS+1d | 2018-07-16 07:30 | 2018-07-16 11:30 | 4h | 94.88d | 0d | TEAM_2Shift_Calendar-1 | Grinding Machine; Grinder | 8h | 225 | 225 |
| 168 | 9.6.4 | Outer shell Pipe edge preparation | 4h | 2018-08-07 11:30 | 2018-08-07 15:30 | 167 | 2018-07-16 11:30 | 2018-07-16 15:30 | 4h | 94.88d | 0d | TEAM_2Shift_Calendar-1 | Grinding Machine; Grinder | 8h | 225 | 225 |
| 169 | 9.6.5 | Pipe Cap marking & cutting | 2h | 2018-08-06 10:30 | 2018-08-06 12:30 | 53 | 2018-07-13 10:30 | 2018-07-13 12:30 | 2h | 104.88d |  | TEAM_2Shift_Calendar-1 | Helper; OAGM; Gas Cutter; Fitter | 8h | 375 | 375 |
| 170 | 9.6.6 | Inner pipe outer pipe insertion | 2h | 2018-08-07 15:30 | 2018-08-07 17:30 | 167, 168 | 2018-07-16 15:30 | 2018-07-16 17:30 | 2h | 94.88d | 0d | TEAM_2Shift_Calendar-1 | Fitter; Helper [200%] | 6h | 337.5 | 337.5 |
| 171 | 9.6.7 | Pipe cap fitup with inner and outer pipe | 2h | 2018-08-07 17:30 | 2018-08-07 19:30 | 170 | 2018-07-16 17:30 | 2018-07-16 19:30 | 2h | 94.88d | 0.62d | TEAM_2Shift_Calendar-1 | Helper; SMAW Welder; SMAW Welding Machine; Fitter | 8h | 375 | 375 |
| 172 | 9.6.8 | Fitup inspection | 2h | 2018-08-08 08:30 | 2018-08-08 10:30 | 171 | 2018-07-17 08:30 | 2018-07-17 10:30 | 2h | 94.25d | 0d | TEAM_2Shift_Calendar-1 | QC Engineer | 2h |  |  |
| 173 | 9.6.9 | welding | 4h | 2018-08-08 10:30 | 2018-08-08 14:30 | 172 | 2018-07-17 10:30 | 2018-07-17 14:30 | 4h | 94.25d | 39.62d | TEAM_2Shift_Calendar-1 | SMAW Welder; SMAW Welding Machine; Helper | 12h | 475 | 475 |
| 174 | 9.6.10 | Inner pipe with flange fitup(RHS) | 2h | 2018-09-04 11:30 | 2018-09-04 13:30 | 173, 55 | 2018-08-10 11:30 | 2018-08-10 13:30 | 2h | 54.62d | 0d | TEAM_2Shift_Calendar-1 | Helper; SMAW Welder; SMAW Welding Machine; Fitter | 8h | 375 | 375 |
| 175 | 9.6.11 | welding | 4h | 2018-09-04 13:30 | 2018-09-04 17:30 | 174 | 2018-08-10 13:30 | 2018-08-10 17:30 | 4h | 54.62d | 0d | TEAM_2Shift_Calendar-1 | SMAW Welder; SMAW Welding Machine; Helper | 12h | 475 | 475 |
| 176 | 9.6.12 | Inner pipe with flange fitup(LHS) | 2h | 2018-09-04 17:30 | 2018-09-04 19:30 | 175 | 2018-08-10 17:30 | 2018-08-10 19:30 | 2h | 54.62d | 0d | TEAM_2Shift_Calendar-1 | Helper; SMAW Welder; SMAW Welding Machine; Fitter | 8h | 375 | 375 |
| 177 | 9.6.13 | welding | 4h | 2018-09-04 19:30 | 2018-09-05 07:30 | 176 | 2018-08-10 19:30 | 2018-08-13 07:30 | 4h | 54.62d | 0d | TEAM_2Shift_Calendar-1 | SMAW Welder; SMAW Welding Machine; Helper | 12h | 475 | 475 |
| 178 | 9.6.14 | Outer pipe with saddle fit up(RHS) | 3h | 2018-09-05 07:30 | 2018-09-05 10:30 | 177, 84 | 2018-08-13 07:30 | 2018-08-13 10:30 | 3h | 54.62d | 0d | TEAM_2Shift_Calendar-1 | Helper; SMAW Welder; SMAW Welding Machine; Fitter | 12h | 562.5 | 562.5 |
| 179 | 9.6.15 | Fitup inspection | 9h | 2018-09-05 10:30 | 2018-09-05 19:30 | 178 | 2018-08-13 10:30 | 2018-08-13 19:30 | 9h | 54.62d | 0d | TEAM_2Shift_Calendar-1 | QC Engineer | 2h |  |  |
| 180 | 9.6.16 | welding | 4h | 2018-09-05 19:30 | 2018-09-06 07:30 | 179 | 2018-08-13 19:30 | 2018-08-14 07:30 | 4h | 54.62d | 0d | TEAM_2Shift_Calendar-1 | SMAW Welder; SMAW Welding Machine; Helper | 12h | 475 | 475 |
| 181 | 9.6.17 | Outer pipe with saddle fit up(LHS) | 3h | 2018-09-06 07:30 | 2018-09-06 10:30 | 180, 99 | 2018-08-14 07:30 | 2018-08-14 10:30 | 3h | 54.62d | 0d | TEAM_2Shift_Calendar-1 | Helper; SMAW Welder; SMAW Welding Machine; Fitter | 12h | 562.5 | 562.5 |
| 182 | 9.6.18 | Fitup inspection | 2h | 2018-09-06 10:30 | 2018-09-06 12:30 | 181 | 2018-08-14 10:30 | 2018-08-14 12:30 | 2h | 54.62d | 0d | TEAM_2Shift_Calendar-1 | QC Engineer | 2h |  |  |
| 183 | 9.6.19 | welding | 4h | 2018-09-06 12:30 | 2018-09-06 16:30 | 182 | 2018-08-14 12:30 | 2018-08-14 16:30 | 4h | 54.88d | 0d | TEAM_2Shift_Calendar-1 | SMAW Welder; SMAW Welding Machine; Helper | 12h | 475 | 475 |
| 184 | 9.6.20 | Outer pipe with nozzle fit up | 3h | 2018-09-06 16:30 | 2018-09-06 19:30 | 183 | 2018-08-14 16:30 | 2018-08-14 19:30 | 3h | 54.88d | 0d | TEAM_2Shift_Calendar-1 | Helper; TIG Welding Machine; TIG Welder; Fitter | 12h | 731.25 | 731.25 |
| 185 | 9.6.21 | Outer pipe with nozzle welding | 5h | 2018-09-06 19:30 | 2018-09-07 08:30 | 184 | 2018-08-14 19:30 | 2018-08-16 08:30 | 5h | 54.88d | 0d | TEAM_2Shift_Calendar-1 | TIG Welding Machine; TIG Welder; Helper | 15h | 875 | 875 |
| 186 | 9.6.22 | Insulation cleat fit up | 2h | 2018-09-07 08:30 | 2018-09-07 10:30 | 185 | 2018-08-16 08:30 | 2018-08-16 10:30 | 2h | 54.88d | 0d | TEAM_2Shift_Calendar-1 | Helper; TIG Welding Machine; TIG Welder; Fitter | 8h | 487.5 | 487.5 |
| 187 | 9.6.23 | welding | 2h | 2018-09-07 10:30 | 2018-09-07 12:30 | 186 | 2018-08-16 10:30 | 2018-08-16 12:30 | 2h | 54.88d |  | TEAM_2Shift_Calendar-1 | TIG Welding Machine; TIG Welder; Helper | 6h | 350 | 350 |
| 188 | 9.6.24 | Lifting Lug fit up | 2h | 2018-08-28 18:30 | 2018-08-28 20:30 | 115 | 2018-08-03 18:30 | 2018-08-03 20:30 | 2h | 70.5d | 0d | TEAM_2Shift_Calendar-1 | Helper; TIG Welding Machine; TIG Welder; Fitter | 8h | 487.5 | 487.5 |
| 189 | 9.6.25 | welding | 3h | 2018-08-28 20:30 | 2018-08-29 07:30 | 188 | 2018-08-03 20:30 | 2018-08-04 07:30 | 3h | 70.5d | 0d | TEAM_2Shift_Calendar-1 | TIG Welding Machine; TIG Welder; Helper | 9h | 525 | 525 |
| 190 | 9.6.26 | Radiography | 1d | 2018-08-29 07:30 | 2018-08-29 15:30 | 189 | 2018-08-04 07:30 | 2018-08-04 15:30 | 1d | 70.5d |  | TEAM_2Shift_Calendar-1 | SC Radiography (Cost) [0.1%] |  |  |  |

| ID | WBS | Task | Duration | Start | Finish | Predecessors | Baseline start | Baseline finish | Baseline duration | Total slack | Free slack | Calendar | Resources | Work | Cost | Baseline cost |
| --- | --- | --- | --- | --- | --- | --- | --- | --- | --- | --- | --- | --- | --- | --- | --- | --- |
| 191 | 9.7 | **Shell fabrication** | 50.25d | 2018-08-06 10:30 | 2018-09-07 12:30 |  | 2018-07-13 10:30 | 2018-08-16 12:30 | 50.25d | 54.88d | 18.75d | TEAM_2Shift_Calendar-1 |  | 210h | 9,542.5 | 9,542.5 |
| 192 | 9.7.1 | Marking | 1h | 2018-08-06 11:30 | 2018-08-06 12:30 | 50, 52 | 2018-07-13 11:30 | 2018-07-13 12:30 | 1h | 94.38d | 0d | TEAM_2Shift_Calendar-1 | Helper; Forging Std (Cost) [0.1%]; Pipe (Cost) [0.1%]; Fitter | 2h | 118.75 | 118.75 |
| 193 | 9.7.2 | stamping | 3h | 2018-08-06 12:30 | 2018-08-06 15:30 | 192 | 2018-07-13 12:30 | 2018-07-13 15:30 | 3h | 94.38d | 0d | TEAM_2Shift_Calendar-1 | Helper; QC Engineer | 6h | 180 | 180 |
| 194 | 9.7.3 | Inner Shell Pipe edge preparation | 4h | 2018-08-07 07:30 | 2018-08-07 11:30 | 193FS+1d | 2018-07-16 07:30 | 2018-07-16 11:30 | 4h | 94.88d | 0d | TEAM_2Shift_Calendar-1 | Grinding Machine; Grinder | 8h | 225 | 225 |
| 195 | 9.7.4 | Outer shell Pipe edge preparation | 4h | 2018-08-07 11:30 | 2018-08-07 15:30 | 194 | 2018-07-16 11:30 | 2018-07-16 15:30 | 4h | 94.88d | 0d | TEAM_2Shift_Calendar-1 | Grinding Machine; Grinder | 8h | 225 | 225 |
| 196 | 9.7.5 | Pipe Cap marking & cutting | 2h | 2018-08-06 10:30 | 2018-08-06 12:30 | 53 | 2018-07-13 10:30 | 2018-07-13 12:30 | 2h | 104.88d |  | TEAM_2Shift_Calendar-1 | Helper; OAGM; Gas Cutter; Fitter | 8h | 375 | 375 |
| 197 | 9.7.6 | Inner pipe outer pipe insertion | 2h | 2018-08-07 15:30 | 2018-08-07 17:30 | 194, 195 | 2018-07-16 15:30 | 2018-07-16 17:30 | 2h | 94.88d | 0d | TEAM_2Shift_Calendar-1 | Fitter; Helper [200%] | 6h | 337.5 | 337.5 |
| 198 | 9.7.7 | Pipe cap fitup with inner and outer pipe | 2h | 2018-08-07 17:30 | 2018-08-07 19:30 | 197 | 2018-07-16 17:30 | 2018-07-16 19:30 | 2h | 94.88d | 0.62d | TEAM_2Shift_Calendar-1 | Helper; SMAW Welder; SMAW Welding Machine; Fitter | 8h | 375 | 375 |
| 199 | 9.7.8 | Fitup inspection | 2h | 2018-08-08 08:30 | 2018-08-08 10:30 | 198 | 2018-07-17 08:30 | 2018-07-17 10:30 | 2h | 94.25d | 0d | TEAM_2Shift_Calendar-1 | QC Engineer | 2h |  |  |
| 200 | 9.7.9 | welding | 4h | 2018-08-08 10:30 | 2018-08-08 14:30 | 199 | 2018-07-17 10:30 | 2018-07-17 14:30 | 4h | 94.25d | 39.62d | TEAM_2Shift_Calendar-1 | SMAW Welder; SMAW Welding Machine; Helper | 12h | 475 | 475 |
| 201 | 9.7.10 | Inner pipe with flange fitup(RHS) | 2h | 2018-09-04 11:30 | 2018-09-04 13:30 | 200, 55 | 2018-08-10 11:30 | 2018-08-10 13:30 | 2h | 54.62d | 0d | TEAM_2Shift_Calendar-1 | Helper; SMAW Welder; SMAW Welding Machine; Fitter | 8h | 375 | 375 |
| 202 | 9.7.11 | welding | 4h | 2018-09-04 13:30 | 2018-09-04 17:30 | 201 | 2018-08-10 13:30 | 2018-08-10 17:30 | 4h | 54.62d | 0d | TEAM_2Shift_Calendar-1 | SMAW Welder; SMAW Welding Machine; Helper | 12h | 475 | 475 |
| 203 | 9.7.12 | Inner pipe with flange fitup(LHS) | 2h | 2018-09-04 17:30 | 2018-09-04 19:30 | 202 | 2018-08-10 17:30 | 2018-08-10 19:30 | 2h | 54.62d | 0d | TEAM_2Shift_Calendar-1 | Helper; SMAW Welder; SMAW Welding Machine; Fitter | 8h | 375 | 375 |
| 204 | 9.7.13 | welding | 4h | 2018-09-04 19:30 | 2018-09-05 07:30 | 203 | 2018-08-10 19:30 | 2018-08-13 07:30 | 4h | 54.62d | 0d | TEAM_2Shift_Calendar-1 | SMAW Welder; SMAW Welding Machine; Helper | 12h | 475 | 475 |
| 205 | 9.7.14 | Outer pipe with saddle fit up(RHS) | 3h | 2018-09-05 07:30 | 2018-09-05 10:30 | 204, 84 | 2018-08-13 07:30 | 2018-08-13 10:30 | 3h | 54.62d | 0d | TEAM_2Shift_Calendar-1 | Helper; SMAW Welder; SMAW Welding Machine; Fitter | 12h | 562.5 | 562.5 |
| 206 | 9.7.15 | Fitup inspection | 9h | 2018-09-05 10:30 | 2018-09-05 19:30 | 205 | 2018-08-13 10:30 | 2018-08-13 19:30 | 9h | 54.62d | 0d | TEAM_2Shift_Calendar-1 | QC Engineer | 2h |  |  |
| 207 | 9.7.16 | welding | 4h | 2018-09-05 19:30 | 2018-09-06 07:30 | 206 | 2018-08-13 19:30 | 2018-08-14 07:30 | 4h | 54.62d | 0d | TEAM_2Shift_Calendar-1 | SMAW Welder; SMAW Welding Machine; Helper | 12h | 475 | 475 |
| 208 | 9.7.17 | Outer pipe with saddle fit up(LHS) | 3h | 2018-09-06 07:30 | 2018-09-06 10:30 | 207, 99 | 2018-08-14 07:30 | 2018-08-14 10:30 | 3h | 54.62d | 0d | TEAM_2Shift_Calendar-1 | Helper; SMAW Welder; SMAW Welding Machine; Fitter | 12h | 562.5 | 562.5 |
| 209 | 9.7.18 | Fitup inspection | 2h | 2018-09-06 10:30 | 2018-09-06 12:30 | 208 | 2018-08-14 10:30 | 2018-08-14 12:30 | 2h | 54.62d | 0d | TEAM_2Shift_Calendar-1 | QC Engineer | 2h |  |  |
| 210 | 9.7.19 | welding | 4h | 2018-09-06 12:30 | 2018-09-06 16:30 | 209 | 2018-08-14 12:30 | 2018-08-14 16:30 | 4h | 54.88d | 0d | TEAM_2Shift_Calendar-1 | SMAW Welder; SMAW Welding Machine; Helper | 12h | 475 | 475 |
| 211 | 9.7.20 | Outer pipe with nozzle fit up | 3h | 2018-09-06 16:30 | 2018-09-06 19:30 | 210 | 2018-08-14 16:30 | 2018-08-14 19:30 | 3h | 54.88d | 0d | TEAM_2Shift_Calendar-1 | Helper; TIG Welding Machine; TIG Welder; Fitter | 12h | 731.25 | 731.25 |
| 212 | 9.7.21 | Outer pipe with nozzle welding | 5h | 2018-09-06 19:30 | 2018-09-07 08:30 | 211 | 2018-08-14 19:30 | 2018-08-16 08:30 | 5h | 54.88d | 0d | TEAM_2Shift_Calendar-1 | TIG Welding Machine; TIG Welder; Helper | 15h | 875 | 875 |
| 213 | 9.7.22 | Insulation cleat fit up | 2h | 2018-09-07 08:30 | 2018-09-07 10:30 | 212 | 2018-08-16 08:30 | 2018-08-16 10:30 | 2h | 54.88d | 0d | TEAM_2Shift_Calendar-1 | Helper; TIG Welding Machine; TIG Welder; Fitter | 8h | 487.5 | 487.5 |
| 214 | 9.7.23 | welding | 2h | 2018-09-07 10:30 | 2018-09-07 12:30 | 213 | 2018-08-16 10:30 | 2018-08-16 12:30 | 2h | 54.88d |  | TEAM_2Shift_Calendar-1 | TIG Welding Machine; TIG Welder; Helper | 6h | 350 | 350 |
| 215 | 9.7.24 | Lifting Lug fit up | 2h | 2018-08-28 18:30 | 2018-08-28 20:30 | 115 | 2018-08-03 18:30 | 2018-08-03 20:30 | 2h | 70.5d | 0d | TEAM_2Shift_Calendar-1 | Helper; TIG Welding Machine; TIG Welder; Fitter | 8h | 487.5 | 487.5 |
| 216 | 9.7.25 | welding | 3h | 2018-08-28 20:30 | 2018-08-29 07:30 | 215 | 2018-08-03 20:30 | 2018-08-04 07:30 | 3h | 70.5d | 0d | TEAM_2Shift_Calendar-1 | TIG Welding Machine; TIG Welder; Helper | 9h | 525 | 525 |
| 217 | 9.7.26 | Radiography | 1d | 2018-08-29 07:30 | 2018-08-29 15:30 | 216 | 2018-08-04 07:30 | 2018-08-04 15:30 | 1d | 70.5d |  | TEAM_2Shift_Calendar-1 | SC Radiography (Cost) [0.1%] |  |  |  |

| ID | WBS | Task | Duration | Start | Finish | Predecessors | Baseline start | Baseline finish | Baseline duration | Total slack | Free slack | Calendar | Resources | Work | Cost | Baseline cost |
| --- | --- | --- | --- | --- | --- | --- | --- | --- | --- | --- | --- | --- | --- | --- | --- | --- |
| 218 | 9.8 | **Shell fabrication** | 50.25d | 2018-08-06 10:30 | 2018-09-07 12:30 |  | 2018-07-13 10:30 | 2018-08-16 12:30 | 50.25d | 54.88d | 18.75d | TEAM_2Shift_Calendar-1 |  | 210h | 9,542.5 | 9,542.5 |
| 219 | 9.8.1 | Marking | 1h | 2018-08-06 11:30 | 2018-08-06 12:30 | 50, 52 | 2018-07-13 11:30 | 2018-07-13 12:30 | 1h | 94.38d | 0d | TEAM_2Shift_Calendar-1 | Helper; Forging Std (Cost) [0.1%]; Pipe (Cost) [0.1%]; Fitter | 2h | 118.75 | 118.75 |
| 220 | 9.8.2 | stamping | 3h | 2018-08-06 12:30 | 2018-08-06 15:30 | 219 | 2018-07-13 12:30 | 2018-07-13 15:30 | 3h | 94.38d | 0d | TEAM_2Shift_Calendar-1 | Helper; QC Engineer | 6h | 180 | 180 |
| 221 | 9.8.3 | Inner Shell Pipe edge preparation | 4h | 2018-08-07 07:30 | 2018-08-07 11:30 | 220FS+1d | 2018-07-16 07:30 | 2018-07-16 11:30 | 4h | 94.88d | 0d | TEAM_2Shift_Calendar-1 | Grinding Machine; Grinder | 8h | 225 | 225 |
| 222 | 9.8.4 | Outer shell Pipe edge preparation | 4h | 2018-08-07 11:30 | 2018-08-07 15:30 | 221 | 2018-07-16 11:30 | 2018-07-16 15:30 | 4h | 94.88d | 0d | TEAM_2Shift_Calendar-1 | Grinding Machine; Grinder | 8h | 225 | 225 |
| 223 | 9.8.5 | Pipe Cap marking & cutting | 2h | 2018-08-06 10:30 | 2018-08-06 12:30 | 53 | 2018-07-13 10:30 | 2018-07-13 12:30 | 2h | 104.88d |  | TEAM_2Shift_Calendar-1 | Helper; OAGM; Gas Cutter; Fitter | 8h | 375 | 375 |
| 224 | 9.8.6 | Inner pipe outer pipe insertion | 2h | 2018-08-07 15:30 | 2018-08-07 17:30 | 221, 222 | 2018-07-16 15:30 | 2018-07-16 17:30 | 2h | 94.88d | 0d | TEAM_2Shift_Calendar-1 | Fitter; Helper [200%] | 6h | 337.5 | 337.5 |
| 225 | 9.8.7 | Pipe cap fitup with inner and outer pipe | 2h | 2018-08-07 17:30 | 2018-08-07 19:30 | 224 | 2018-07-16 17:30 | 2018-07-16 19:30 | 2h | 94.88d | 0.62d | TEAM_2Shift_Calendar-1 | Helper; SMAW Welder; SMAW Welding Machine; Fitter | 8h | 375 | 375 |
| 226 | 9.8.8 | Fitup inspection | 2h | 2018-08-08 08:30 | 2018-08-08 10:30 | 225 | 2018-07-17 08:30 | 2018-07-17 10:30 | 2h | 94.25d | 0d | TEAM_2Shift_Calendar-1 | QC Engineer | 2h |  |  |
| 227 | 9.8.9 | welding | 4h | 2018-08-08 10:30 | 2018-08-08 14:30 | 226 | 2018-07-17 10:30 | 2018-07-17 14:30 | 4h | 94.25d | 39.62d | TEAM_2Shift_Calendar-1 | SMAW Welder; SMAW Welding Machine; Helper | 12h | 475 | 475 |
| 228 | 9.8.10 | Inner pipe with flange fitup(RHS) | 2h | 2018-09-04 11:30 | 2018-09-04 13:30 | 227, 55 | 2018-08-10 11:30 | 2018-08-10 13:30 | 2h | 54.62d | 0d | TEAM_2Shift_Calendar-1 | Helper; SMAW Welder; SMAW Welding Machine; Fitter | 8h | 375 | 375 |
| 229 | 9.8.11 | welding | 4h | 2018-09-04 13:30 | 2018-09-04 17:30 | 228 | 2018-08-10 13:30 | 2018-08-10 17:30 | 4h | 54.62d | 0d | TEAM_2Shift_Calendar-1 | SMAW Welder; SMAW Welding Machine; Helper | 12h | 475 | 475 |
| 230 | 9.8.12 | Inner pipe with flange fitup(LHS) | 2h | 2018-09-04 17:30 | 2018-09-04 19:30 | 229 | 2018-08-10 17:30 | 2018-08-10 19:30 | 2h | 54.62d | 0d | TEAM_2Shift_Calendar-1 | Helper; SMAW Welder; SMAW Welding Machine; Fitter | 8h | 375 | 375 |
| 231 | 9.8.13 | welding | 4h | 2018-09-04 19:30 | 2018-09-05 07:30 | 230 | 2018-08-10 19:30 | 2018-08-13 07:30 | 4h | 54.62d | 0d | TEAM_2Shift_Calendar-1 | SMAW Welder; SMAW Welding Machine; Helper | 12h | 475 | 475 |
| 232 | 9.8.14 | Outer pipe with saddle fit up(RHS) | 3h | 2018-09-05 07:30 | 2018-09-05 10:30 | 231, 84 | 2018-08-13 07:30 | 2018-08-13 10:30 | 3h | 54.62d | 0d | TEAM_2Shift_Calendar-1 | Helper; SMAW Welder; SMAW Welding Machine; Fitter | 12h | 562.5 | 562.5 |
| 233 | 9.8.15 | Fitup inspection | 9h | 2018-09-05 10:30 | 2018-09-05 19:30 | 232 | 2018-08-13 10:30 | 2018-08-13 19:30 | 9h | 54.62d | 0d | TEAM_2Shift_Calendar-1 | QC Engineer | 2h |  |  |
| 234 | 9.8.16 | welding | 4h | 2018-09-05 19:30 | 2018-09-06 07:30 | 233 | 2018-08-13 19:30 | 2018-08-14 07:30 | 4h | 54.62d | 0d | TEAM_2Shift_Calendar-1 | SMAW Welder; SMAW Welding Machine; Helper | 12h | 475 | 475 |
| 235 | 9.8.17 | Outer pipe with saddle fit up(LHS) | 3h | 2018-09-06 07:30 | 2018-09-06 10:30 | 234, 99 | 2018-08-14 07:30 | 2018-08-14 10:30 | 3h | 54.62d | 0d | TEAM_2Shift_Calendar-1 | Helper; SMAW Welder; SMAW Welding Machine; Fitter | 12h | 562.5 | 562.5 |
| 236 | 9.8.18 | Fitup inspection | 2h | 2018-09-06 10:30 | 2018-09-06 12:30 | 235 | 2018-08-14 10:30 | 2018-08-14 12:30 | 2h | 54.62d | 0d | TEAM_2Shift_Calendar-1 | QC Engineer | 2h |  |  |
| 237 | 9.8.19 | welding | 4h | 2018-09-06 12:30 | 2018-09-06 16:30 | 236 | 2018-08-14 12:30 | 2018-08-14 16:30 | 4h | 54.88d | 0d | TEAM_2Shift_Calendar-1 | SMAW Welder; SMAW Welding Machine; Helper | 12h | 475 | 475 |
| 238 | 9.8.20 | Outer pipe with nozzle fit up | 3h | 2018-09-06 16:30 | 2018-09-06 19:30 | 237 | 2018-08-14 16:30 | 2018-08-14 19:30 | 3h | 54.88d | 0d | TEAM_2Shift_Calendar-1 | Helper; TIG Welding Machine; TIG Welder; Fitter | 12h | 731.25 | 731.25 |
| 239 | 9.8.21 | Outer pipe with nozzle welding | 5h | 2018-09-06 19:30 | 2018-09-07 08:30 | 238 | 2018-08-14 19:30 | 2018-08-16 08:30 | 5h | 54.88d | 0d | TEAM_2Shift_Calendar-1 | TIG Welding Machine; TIG Welder; Helper | 15h | 875 | 875 |
| 240 | 9.8.22 | Insulation cleat fit up | 2h | 2018-09-07 08:30 | 2018-09-07 10:30 | 239 | 2018-08-16 08:30 | 2018-08-16 10:30 | 2h | 54.88d | 0d | TEAM_2Shift_Calendar-1 | Helper; TIG Welding Machine; TIG Welder; Fitter | 8h | 487.5 | 487.5 |
| 241 | 9.8.23 | welding | 2h | 2018-09-07 10:30 | 2018-09-07 12:30 | 240 | 2018-08-16 10:30 | 2018-08-16 12:30 | 2h | 54.88d |  | TEAM_2Shift_Calendar-1 | TIG Welding Machine; TIG Welder; Helper | 6h | 350 | 350 |
| 242 | 9.8.24 | Lifting Lug fit up | 2h | 2018-08-28 18:30 | 2018-08-28 20:30 | 115 | 2018-08-03 18:30 | 2018-08-03 20:30 | 2h | 70.5d | 0d | TEAM_2Shift_Calendar-1 | Helper; TIG Welding Machine; TIG Welder; Fitter | 8h | 487.5 | 487.5 |
| 243 | 9.8.25 | welding | 3h | 2018-08-28 20:30 | 2018-08-29 07:30 | 242 | 2018-08-03 20:30 | 2018-08-04 07:30 | 3h | 70.5d | 0d | TEAM_2Shift_Calendar-1 | TIG Welding Machine; TIG Welder; Helper | 9h | 525 | 525 |
| 244 | 9.8.26 | Radiography | 1d | 2018-08-29 07:30 | 2018-08-29 15:30 | 243 | 2018-08-04 07:30 | 2018-08-04 15:30 | 1d | 70.5d |  | TEAM_2Shift_Calendar-1 | SC Radiography (Cost) [0.1%] |  |  |  |

| ID | WBS | Task | Duration | Start | Finish | Predecessors | Baseline start | Baseline finish | Baseline duration | Total slack | Free slack | Calendar | Resources | Work | Cost | Baseline cost |
| --- | --- | --- | --- | --- | --- | --- | --- | --- | --- | --- | --- | --- | --- | --- | --- | --- |
| 245 | 9.9 | **Final assembly & Testing** | 43d | 2018-09-21 10:30 | 2018-10-20 18:30 |  | 2018-08-29 10:30 | 2018-09-26 18:30 | 43d | 3.88d |  | TEAM_2Shift_Calendar-1 |  | 162h | 8,000 | 8,000 |
| 246 | 9.9.1 | Saddle assembly | 1d | 2018-09-21 10:30 | 2018-09-21 18:30 | 137FS+1d, 164FS+1d, 191FS+1d, 218FS+1d, 63, 64 | 2018-08-29 10:30 | 2018-08-29 18:30 | 1d | 36.12d | 0d | TEAM_2Shift_Calendar-1 | Helper [300%]; Fitter [300%] | 48h | 2,850 | 2,850 |
| 247 | 9.9.2 | U bend assembly with shell | 1d | 2018-09-21 18:30 | 2018-09-24 10:30 | 246 | 2018-08-29 18:30 | 2018-08-30 10:30 | 1d | 36.12d | 0d | TEAM_2Shift_Calendar-1 | Helper [200%]; Fitter [200%] | 18h | 1,068.75 | 1,068.75 |
| 248 | 9.9.3 | Hydro test preparation | 4h | 2018-09-24 10:30 | 2018-09-24 14:30 | 247 | 2018-08-30 10:30 | 2018-08-30 14:30 | 4h | 36.12d | 0d | TEAM_2Shift_Calendar-1 | Helper | 4h | 200 | 200 |
| 249 | 9.9.4 | Hydro test | 2d | 2018-09-24 14:30 | 2018-09-25 14:30 | 248 | 2018-08-30 14:30 | 2018-08-31 14:30 | 2d | 36.12d | 0d | TEAM_2Shift_Calendar-1 | Helper [300%]; Fitter [300%] | 30h | 1,781.25 | 1,781.25 |
| 250 | 9.9.5 | Testing inspection | 6h | 2018-09-25 14:30 | 2018-09-25 20:30 | 249 | 2018-08-31 14:30 | 2018-08-31 20:30 | 6h | 36.12d | 0d | TEAM_2Shift_Calendar-1 | TPI (Cost) [0.1%]; QC Engineer | 4h |  |  |
| 251 | 9.9.6 | water drying | 5h | 2018-09-25 20:30 | 2018-09-26 09:30 | 250 | 2018-08-31 20:30 | 2018-09-01 09:30 | 5h | 41d |  | TEAM_2Shift_Calendar-1 | Helper [200%] | 10h | 500 | 500 |
| 252 | 9.9.7 | Pickling and pasivation | 2d | 2018-09-25 20:30 | 2018-09-26 20:30 | 250 | 2018-08-31 20:30 | 2018-09-01 20:30 | 2d | 36.62d | 32.75d | TEAM_2Shift_Calendar-1 | Helper [200%] | 32h | 1,600 | 1,600 |
| 253 | 9.9.8 | Primer painting | 1d | 2018-10-19 10:30 | 2018-10-19 18:30 | 252, 65 | 2018-09-25 10:30 | 2018-09-25 18:30 | 1d | 3.88d | 0d | TEAM_2Shift_Calendar-1 | Painter | 8h |  |  |
| 254 | 9.9.9 | Finish painting | 1d | 2018-10-20 10:30 | 2018-10-20 18:30 | 253FS+1d | 2018-09-26 10:30 | 2018-09-26 18:30 | 1d | 3.88d |  | TEAM_2Shift_Calendar-1 | Painter | 8h |  |  |
