# 4221-9101

Schedule from MS Project, 2017-11-02 to 2018-10-30, costs in ₹, A marks actual dates.

## Calendars

- TEAM_2Shift_Calendar-1: Mon-Sat 06:00-22:00; Sun off. Exceptions (off unless hours are given): 2017-01-13 to 2023-02-11 (2nd Sat, recurring), 2017-01-26 to 2036-01-26 (Republic Day, recurring), 2017-01-27 to 2023-08-26 (4th Sat, recurring), 2017-05-01 to 2036-05-01 (May Day, recurring), 2017-08-15 to 2036-08-15 (Indepdence Day, recurring), 2017-10-02 to 2036-10-02 (Gandhi Jayanti, recurring), 2018-01-15 (Thiruvalluvar Day'2018), 2018-09-13 (Vinakya Chaturthi'2018), 2018-10-18 (Ayudha Pooja'2018).
- TEAM_Stand_Calendar: Mon-Sat 08:30-12:30, 13:30-17:30; Sun off. Exceptions (off unless hours are given): 2017-01-13 to 2023-08-12 (2nd Sat, recurring), 2017-01-26 to 2036-01-26 (Republic Day, recurring), 2017-01-27 to 2023-08-26 (4th Sat, recurring), 2017-05-01 to 2036-05-01 (May Day, recurring), 2017-08-15 to 2036-08-15 (Independence Day, recurring), 2017-10-02 to 2036-10-02 (Gandhi Jayanti, recurring), 2018-01-15 (Thiruvalluvar Day'2018), 2018-09-13 (Vinakaya Chaturthi'2018), 2018-10-18 (Ayudha Pooja'2018).

## Resources

| Resource | Rate |
| --- | --- |
| Marketing |  |
| PM |  |
| PMO Head |  |
| PPC Engineer |  |
| QC Engineer |  |
| Purchase Engineer |  |
| PMO Support |  |
| Draftman |  |
| Client |  |
| Crane |  |
| Helper | 50 |
| Store |  |
| SC Radiography (Cost) |  |
| Cutting Machine |  |
| SC (Work) |  |
| Driller | 68.75 |
| Fitter | 68.75 |
| Gas Cutter | 68.75 |
| Grinder | 56.25 |
| Grinding Machine |  |
| OAGM |  |
| Painter |  |
| Radial Drilling Machine |  |
| SMAW Welder | 68.75 |
| TIG Welding Machine |  |
| TIG Welder | 125 |
| SMAW Welding Machine |  |
| TPI (Cost) |  |
| Vehicle |  |
| Lathe Operator | 120 |
| Lathe |  |
| Expanding Machine |  |
| Plate Bending Machine |  |
| Rolling Machine |  |
| SAW Welder | 68.75 |
| Milling Operator | 120 |
| Forging Non-Std (Cost) |  |
| Forging Std (Cost) |  |
| Pipe (Cost) |  |
| Plate (Cost) |  |
| Rod (Cost) |  |
| Tube (Cost) |  |
| Tube Sheet (Cost) |  |
| Finance |  |
| Design Engineer |  |

## Schedule

| ID | WBS | Task | Type | Duration | Start | Finish | Predecessors | Complete | Remaining | Baseline start | Baseline finish | Baseline duration | Total slack | Free slack | Constraint | Resources | Work | Actual work |
| --- | --- | --- | --- | --- | --- | --- | --- | --- | --- | --- | --- | --- | --- | --- | --- | --- | --- | --- |
| 1 | 1 | Drawing Approval | milestone | 1d | 2018-05-21 08:30 | 2018-05-21 17:30 |  |  |  | 2018-04-27 08:30 | 2018-04-27 17:30 | 1d | 0d |  | start no earlier than 2018-05-21 08:00 | Client | 2h |  |
| 2 | 2 | **Preliminary Details For Enquiry** |  | 72d | 2017-11-02 08:30 A | 2018-02-02 17:30 A |  | 100% |  | 2017-11-02 08:30 | 2018-02-02 17:30 | 72d |  |  |  |  | 30h | 30h |
| 3 | 2.1 | Tubes SA 179 |  | 3d | 2017-11-02 08:30 A | 2017-11-04 17:30 A |  | 100% |  | 2017-11-02 08:30 | 2017-11-04 17:30 | 3d |  |  |  | PPC Engineer; Design Engineer | 15h | 15h |
| 4 | 2.2 | Forgings SA 266 Gr.4 |  | 2d | 2018-02-01 08:30 A | 2018-02-02 17:30 A |  | 100% |  | 2018-02-01 08:30 | 2018-02-02 17:30 | 2d |  |  |  | PPC Engineer; Design Engineer | 15h | 15h |
| 5 | 3 | **PR Issue** |  | 126d | 2017-12-21 08:30 A | 2018-06-01 17:30 |  | 3% | 122.45d | 2017-12-21 08:30 | 2018-05-10 17:30 | 109d | 107.18d |  |  |  | 55h | 8h |
| 6 | 3.1 | Plates |  | 7d | 2018-05-22 08:30 | 2018-05-30 17:30 | 1 |  |  | 2018-04-30 08:30 | 2018-05-08 17:30 | 7d | 28d | 0d |  | Plate (Cost) [0.1%]; PPC Engineer | 8h |  |
| 7 | 3.2 | Pipes |  | 7d | 2018-05-22 08:30 | 2018-05-30 17:30 | 1 |  |  | 2018-04-30 08:30 | 2018-05-08 17:30 | 7d | 40d | 0d |  | Pipe (Cost) [0.1%]; PPC Engineer | 6h |  |
| 8 | 3.3 | Rods |  | 9d | 2018-05-22 08:30 | 2018-06-01 17:30 | 1 |  |  | 2018-04-30 08:30 | 2018-05-10 17:30 | 9d | 39.75d | 0d |  | Rod (Cost) [0.1%]; PPC Engineer | 2h |  |
| 9 | 3.4 | Tubes |  | 2d | 2017-12-21 08:30 A | 2017-12-22 17:30 A | 3 | 100% |  | 2017-12-21 08:30 | 2017-12-22 17:30 | 2d |  |  |  | Tube (Cost) [0.1%]; PPC Engineer | 8h | 8h |
| 10 | 3.5 | Forgings(std,Non-std,Blank) |  | 4d | 2018-05-22 08:30 | 2018-05-25 17:30 | 1 |  |  | 2018-04-30 08:30 | 2018-05-04 17:30 | 4d | 0d |  |  | Forging Non-Std (Cost) [0.1%]; Forging Std (Cost) [0.1%]; Tube Sheet (Cost) [0.1%]; PPC Engineer | 8h |  |
| 11 | 3.6 | 180 Deg return radius bend |  | 7d | 2018-05-22 08:30 | 2018-05-30 17:30 | 1 |  |  | 2018-04-30 08:30 | 2018-05-08 17:30 | 7d | 109.18d | 0d |  | PPC Engineer | 8h |  |
| 12 | 3.7 | Gaskets |  | 7d | 2018-05-22 08:30 | 2018-05-30 17:30 | 1 |  |  | 2018-04-30 08:30 | 2018-05-08 17:30 | 7d | 49.06d | 0d |  | PPC Engineer | 3h |  |
| 13 | 3.8 | Cosumbales |  | 7d | 2018-05-22 08:30 | 2018-05-30 17:30 | 1 |  |  | 2018-04-30 08:30 | 2018-05-08 17:30 | 7d | 63.93d | 0d |  | PPC Engineer | 4h |  |
| 14 | 3.9 | Fastners |  | 7d | 2018-05-22 08:30 | 2018-05-30 17:30 | 1 |  |  | 2018-04-30 08:30 | 2018-05-08 17:30 | 7d | 48.93d | 0d |  | PPC Engineer | 3h |  |
| 15 | 3.10 | Paint |  | 7d | 2018-05-22 08:30 | 2018-05-30 17:30 | 1 |  |  | 2018-04-30 08:30 | 2018-05-08 17:30 | 7d | 8.93d | 0d |  | PPC Engineer | 3h |  |
| 16 | 3.11 | N2 Purgings |  | 7d | 2018-05-22 08:30 | 2018-05-30 17:30 | 1 |  |  | 2018-04-30 08:30 | 2018-05-08 17:30 | 7d | 48.93d | 0d |  | PPC Engineer | 2h |  |
| 17 | 4 | **Material Ordering** |  | 121d | 2018-01-05 08:30 A | 2018-06-11 17:30 |  | 3% | 117.64d | 2018-01-05 08:30 | 2018-05-19 17:30 | 104d | 107.18d |  |  |  | 39.5h | 8h |
| 18 | 4.1 | Plates |  | 7d | 2018-05-31 08:30 | 2018-06-07 17:30 | 6 |  |  | 2018-05-09 08:30 | 2018-05-17 17:30 | 7d | 28d | 0d |  | Plate (Cost) [0.1%]; Purchase Engineer | 5h |  |
| 19 | 4.2 | Pipes |  | 7d | 2018-05-31 08:30 | 2018-06-07 17:30 | 7 |  |  | 2018-05-09 08:30 | 2018-05-17 17:30 | 7d | 40d | 0d |  | Pipe (Cost) [0.1%]; Purchase Engineer | 3h |  |
| 20 | 4.3 | Rods |  | 7d | 2018-06-02 08:30 | 2018-06-11 17:30 | 8 |  |  | 2018-05-11 08:30 | 2018-05-19 17:30 | 7d | 39.75d | 0d |  | Rod (Cost) [0.1%]; Purchase Engineer | 1h |  |
| 21 | 4.4 | Tubes |  | 2d | 2018-01-05 08:30 A | 2018-01-06 17:30 A | 9 | 100% |  | 2018-01-05 08:30 | 2018-01-06 17:30 | 2d |  |  |  | Tube (Cost) [0.1%]; Purchase Engineer | 8h | 8h |
| 22 | 4.5 | Forgings(std,Non-std,Blank) |  | 7d | 2018-05-28 08:30 | 2018-06-04 17:30 | 10 |  |  | 2018-05-05 08:30 | 2018-05-14 17:30 | 7d | 0d |  |  | Forging Non-Std (Cost) [0.1%]; Forging Std (Cost) [0.1%]; Tube Sheet (Cost) [0.1%]; Purchase Engineer | 8h |  |
| 23 | 4.6 | 180 Deg return radius bend |  | 7d | 2018-05-31 08:30 | 2018-06-07 17:30 | 11 |  |  | 2018-05-09 08:30 | 2018-05-17 17:30 | 7d | 109.18d |  |  | Purchase Engineer | 8h |  |
| 24 | 4.7 | Gaskets |  | 7d | 2018-05-31 08:30 | 2018-06-07 17:30 | 12 |  |  | 2018-05-09 08:30 | 2018-05-17 17:30 | 7d | 49.06d | 0d |  | Purchase Engineer | 2h |  |
| 25 | 4.8 | Cosumbales |  | 7d | 2018-05-31 08:30 | 2018-06-07 17:30 | 13 |  |  | 2018-05-09 08:30 | 2018-05-17 17:30 | 7d | 63.93d | 0d |  | Purchase Engineer | 2h |  |
| 26 | 4.9 | Fastners |  | 7d | 2018-05-31 08:30 | 2018-06-07 17:30 | 14 |  |  | 2018-05-09 08:30 | 2018-05-17 17:30 | 7d | 48.93d | 0d |  | Purchase Engineer | 1h |  |
| 27 | 4.10 | Paint |  | 7d | 2018-05-31 08:30 | 2018-06-07 17:30 | 15 |  |  | 2018-05-09 08:30 | 2018-05-17 17:30 | 7d | 8.93d | 0d |  | Purchase Engineer | 0.5h |  |
| 28 | 4.11 | N2 Purgings |  | 7d | 2018-05-31 08:30 | 2018-06-07 17:30 | 16 |  |  | 2018-05-09 08:30 | 2018-05-17 17:30 | 7d | 48.93d | 0d |  | Purchase Engineer | 1h |  |

| ID | WBS | Task | Duration | Start | Finish | Predecessors | Baseline start | Baseline finish | Baseline duration | Total slack | Free slack | Calendar | Resources | Work | Cost | Baseline cost |
| --- | --- | --- | --- | --- | --- | --- | --- | --- | --- | --- | --- | --- | --- | --- | --- | --- |
| 29 | 5 | **Material Receipt- Hair pin type Exchanger(170-EEE-9101)** | 127.25d | 2018-05-05 08:30 | 2018-10-17 10:30 |  | 2018-05-05 08:30 | 2018-09-25 10:30 | 110.25d | 8.93d |  |  |  | 101h | 2,000.19 | 2,000.19 |
| 30 | 5.1 | Plates SA 516 GR.60(12T,8T,6T,10T) | 3h | 2018-08-04 08:30 | 2018-08-04 11:30 | 18FS+45d | 2018-07-13 08:30 | 2018-07-13 11:30 | 3h | 28d | 0d |  | Helper; Store; Plate (Cost) [0.1%]; Crane | 9h | 150 | 150 |
| 31 | 5.2 | Plates Is 2062 Gr.B (12T,6T) | 3h | 2018-08-04 08:30 | 2018-08-04 11:30 | 18FS+45d | 2018-07-13 08:30 | 2018-07-13 11:30 | 3h | 41.5d | 0d |  | Helper; Store; Plate (Cost) [0.1%]; Crane | 9h | 150 | 150 |
| 32 | 5.3 | Non std Forgings SA 266 Gr.4(121T,82T,45T,62T) | 3h | 2018-09-03 08:30 | 2018-09-03 11:30 | 22FS+70d | 2018-08-10 08:30 | 2018-08-10 11:30 | 3h | 18d | 0d |  | Helper; Store; Forging Non-Std (Cost) [0.1%]; Crane | 9h | 150 | 150 |
| 33 | 5.4 | Shell cover Bonnet(forging) SA 266 Gr.4 | 2h | 2018-09-03 08:30 | 2018-09-03 10:30 | 22FS+70d | 2018-08-10 08:30 | 2018-08-10 10:30 | 2h | 26.75d | 0.62d |  | Helper; Store; Forging Non-Std (Cost) [0.1%]; Crane | 6h | 100 | 100 |
| 34 | 5.5 | Nozzle pipe SA 106 Gr.B (6"NB XSCH .120) | 3h | 2018-08-04 08:30 | 2018-08-04 11:30 | 19FS+45d | 2018-07-13 08:30 | 2018-07-13 11:30 | 3h | 40d | 0d |  | Store; Pipe (Cost) [0.1%]; Helper | 6h | 150 | 150 |
| 35 | 5.6 | Standard Forgings- SA 105 | 3h | 2018-09-03 08:30 | 2018-09-03 11:30 | 22FS+70d | 2018-08-10 08:30 | 2018-08-10 11:30 | 3h | 19.62d | 0d |  | Store; Forging Std (Cost) [0.1%]; Helper | 6h | 150 | 150 |
| 36 | 5.7 | O ring - Viton | 1h | 2018-08-04 08:30 | 2018-08-04 09:30 | 24FS+45d | 2018-07-13 08:30 | 2018-07-13 09:30 | 1h | 64.06d |  |  | Store; Helper | 2h | 50 | 50 |
| 37 | 5.8 | Split Ring SA 516 Gr.60 | 2h | 2018-08-28 08:30 | 2018-08-28 10:30 | 20FS+60d | 2018-08-04 08:30 | 2018-08-04 10:30 | 2h | 46.93d |  |  | Helper; Store; Crane | 6h | 100 | 100 |
| 38 | 5.9 | Tube sheet SA 266 Gr.4 | 3h | 2018-09-17 08:30 | 2018-09-17 11:30 | 22FS+80d | 2018-08-24 08:30 | 2018-08-24 11:30 | 3h | 0d |  |  | Helper; Store; Tube Sheet (Cost) [0.1%]; Crane | 9h | 150 | 150 |
| 39 | 5.10 | U tube SA 179 (OD 25.4X2.77T) | 6h | 2018-05-05 08:30 | 2018-05-05 15:30 | 21FS+90d | 2018-05-05 08:30 | 2018-05-05 15:30 | 6h | 135.43d |  |  | Helper; Store; Tube (Cost) [0.1%]; Crane | 15h | 250.19 | 250.19 |
| 40 | 5.11 | Tie Rod SA 36 (Ø10) | 1h | 2018-08-01 08:30 | 2018-08-01 09:30 | 20FS+40d | 2018-07-10 08:30 | 2018-07-10 09:30 | 1h | 40.88d | 0d |  | Store; Rod (Cost) [0.1%]; Helper | 2h | 50 | 50 |
| 41 | 5.12 | Spacer SA 179 ( OD 17.5X2.35T) | 2h | 2018-08-01 08:30 | 2018-08-01 10:30 | 20FS+40d | 2018-07-10 08:30 | 2018-07-10 10:30 | 2h | 39.75d | 0d |  | Store; Tube (Cost) [0.1%]; Helper | 2h | 50 | 50 |
| 42 | 5.13 | Saddlle Shim plate 13T- SS | 2h | 2018-08-24 08:30 | 2018-08-24 10:30 | 18FS+60d | 2018-08-02 08:30 | 2018-08-02 10:30 | 2h | 48.93d |  |  | Store; Plate (Cost) [0.1%]; Helper | 2h | 50 | 50 |
| 43 | 5.14 | Gaskets | 1h | 2018-08-24 08:30 | 2018-08-24 09:30 | 24FS+60d | 2018-08-02 08:30 | 2018-08-02 09:30 | 1h | 49.06d |  |  | Store; Helper | 2h | 50 | 50 |
| 44 | 5.15 | Consumables | 2h | 2018-08-04 08:30 | 2018-08-04 10:30 | 25FS+45d | 2018-07-13 08:30 | 2018-07-13 10:30 | 2h | 63.93d |  |  | Store; Helper | 4h | 100 | 100 |
| 45 | 5.16 | Fastners | 2h | 2018-08-24 08:30 | 2018-08-24 10:30 | 26FS+60d | 2018-08-02 08:30 | 2018-08-02 10:30 | 2h | 48.93d |  |  | Store; Helper | 4h | 100 | 100 |
| 46 | 5.17 | Paint | 2h | 2018-10-17 08:30 | 2018-10-17 10:30 | 27FS+100d | 2018-09-25 08:30 | 2018-09-25 10:30 | 2h | 8.93d |  |  | Store; Helper | 4h | 100 | 100 |
| 47 | 5.18 | N2 Purgings | 2h | 2018-08-24 08:30 | 2018-08-24 10:30 | 28FS+60d | 2018-08-02 08:30 | 2018-08-02 10:30 | 2h | 48.93d |  |  | Store; Helper | 4h | 100 | 100 |
| 48 | 6 | **Fabrication of Hair pin type Exchanger(170-EEE-9101)** | 66.06d | 2018-08-01 09:30 | 2018-10-29 09:58 |  | 2018-07-10 09:30 | 2018-10-05 09:58 | 66.06d | 1d |  |  |  | 3736.71h | 163,961.86 | 163,961.86 |
| 49 | 6.1 | **Dish Forming** | 26.06d | 2018-08-04 11:30 | 2018-08-22 12:00 |  | 2018-07-13 11:30 | 2018-07-31 12:00 | 26.06d | 64.75d | 0d | TEAM_2Shift_Calendar-1 |  | 117h | 3,740 | 3,740 |
| 50 | 6.1.1 | Dish Blank Marking | 2h | 2018-08-04 11:30 | 2018-08-04 13:30 | 30 | 2018-07-13 11:30 | 2018-07-13 13:30 | 2h | 64.75d | 0d | TEAM_2Shift_Calendar-1 | Helper; Plate (Cost) [0.1%]; Fitter | 4h | 237.5 | 237.5 |
| 51 | 6.1.2 | Dish Blank Mkg Inspection | 1h | 2018-08-04 13:30 | 2018-08-04 14:30 | 50 | 2018-07-13 13:30 | 2018-07-13 14:30 | 1h | 64.75d | 0d | TEAM_2Shift_Calendar-1 | Fitter | 1h | 68.75 | 68.75 |
| 52 | 6.1.3 | Dish Blank Mkg Stamping | 4h | 2018-08-06 06:30 | 2018-08-06 10:30 | 51FS+1d | 2018-07-16 06:30 | 2018-07-16 10:30 | 4h | 64.75d | 0d | TEAM_2Shift_Calendar-1 | Fitter; QC Engineer | 2h | 96.25 | 96.25 |
| 53 | 6.1.4 | Transfer For Cutting | 3h | 2018-08-06 10:30 | 2018-08-06 13:30 | 52 | 2018-07-16 10:30 | 2018-07-16 13:30 | 3h | 64.75d | 0d | TEAM_2Shift_Calendar-1 | Helper [300%] | 9h | 450 | 450 |
| 54 | 6.1.5 | Dish Blank Cutting | 3h | 2018-08-06 21:30 | 2018-08-07 08:30 | 53FS+1d | 2018-07-16 21:30 | 2018-07-17 08:30 | 3h | 64.75d | 0d | TEAM_2Shift_Calendar-1 | Gas Cutter; OAGM; Helper | 9h | 356.25 | 356.25 |
| 55 | 6.1.6 | DishBlank OD Grinding | 4h | 2018-08-07 08:30 | 2018-08-07 12:30 | 54 | 2018-07-17 08:30 | 2018-07-17 12:30 | 4h | 64.75d | 0d | TEAM_2Shift_Calendar-1 | Grinding Machine; Grinder | 8h | 225 | 225 |
| 56 | 6.1.7 | Dish Blank Offloading For Forming | 2h | 2018-08-07 12:30 | 2018-08-07 14:30 | 55 | 2018-07-17 12:30 | 2018-07-17 14:30 | 2h | 64.75d | 0d | TEAM_2Shift_Calendar-1 | Vehicle; Helper | 4h | 100 | 100 |
| 57 | 6.1.8 | Dish Forming | 15d | 2018-08-07 14:30 | 2018-08-18 06:30 | 56 | 2018-07-17 14:30 | 2018-07-26 06:30 | 15d | 64.75d | 0d | TEAM_2Shift_Calendar-1 |  |  |  |  |
| 58 | 6.1.9 | Receipt After Forming | 2h | 2018-08-18 06:30 | 2018-08-18 08:30 | 57 | 2018-07-26 06:30 | 2018-07-26 08:30 | 2h | 64.75d | 0d | TEAM_2Shift_Calendar-1 | Vehicle; Helper | 2h | 50 | 50 |
| 59 | 6.1.10 | Inward Inspection | 2.5h | 2018-08-18 08:30 | 2018-08-18 11:00 | 58 | 2018-07-26 08:30 | 2018-07-26 11:00 | 2.5h | 64.75d | 0d | TEAM_2Shift_Calendar-1 | QC Engineer; Fitter | 4h | 137.5 | 137.5 |
| 60 | 6.1.11 | Surface Grinding | 5h | 2018-08-18 11:00 | 2018-08-18 16:00 | 59 | 2018-07-26 11:00 | 2018-07-26 16:00 | 5h | 64.75d | 0d | TEAM_2Shift_Calendar-1 | Grinding Machine; Grinder | 10h | 281.25 | 281.25 |
| 61 | 6.1.12 | Surface Dp Check | 2h | 2018-08-18 16:00 | 2018-08-18 18:00 | 60 | 2018-07-26 16:00 | 2018-07-26 18:00 | 2h | 64.75d | 0d | TEAM_2Shift_Calendar-1 | Helper; Fitter | 4h | 237.5 | 237.5 |
| 62 | 6.1.13 | Spider Set Up For SR | 2h | 2018-08-18 18:00 | 2018-08-18 20:00 | 61 | 2018-07-26 18:00 | 2018-07-26 20:00 | 2h | 64.75d | 0d | TEAM_2Shift_Calendar-1 | Helper [200%]; Fitter | 6h | 337.5 | 337.5 |
| 63 | 6.1.14 | Dish SR | 3d | 2018-08-18 20:00 | 2018-08-21 12:00 | 62 | 2018-07-26 20:00 | 2018-07-30 12:00 | 3d | 64.75d | 0d | TEAM_2Shift_Calendar-1 | SC (Work) | 24h |  |  |
| 64 | 6.1.15 | Remove Spider | 2h | 2018-08-21 12:00 | 2018-08-21 14:00 | 63 | 2018-07-30 12:00 | 2018-07-30 14:00 | 2h | 64.75d | 0d | TEAM_2Shift_Calendar-1 | Grinding Machine; Grinder | 4h | 112.5 | 112.5 |
| 65 | 6.1.16 | Surface Cleaning | 3h | 2018-08-21 14:00 | 2018-08-21 17:00 | 64 | 2018-07-30 14:00 | 2018-07-30 17:00 | 3h | 64.75d | 0d | TEAM_2Shift_Calendar-1 | Helper | 3h | 150 | 150 |
| 66 | 6.1.17 | SF Marking | 2h | 2018-08-21 17:00 | 2018-08-21 19:00 | 65 | 2018-07-30 17:00 | 2018-07-30 19:00 | 2h | 64.75d | 0d | TEAM_2Shift_Calendar-1 | Helper; Fitter | 4h | 237.5 | 237.5 |
| 67 | 6.1.18 | SF Cutting | 3h | 2018-08-21 19:00 | 2018-08-21 22:00 | 66 | 2018-07-30 19:00 | 2018-07-30 22:00 | 3h | 64.75d | 0d | TEAM_2Shift_Calendar-1 | Gas Cutter; OAGM; Helper | 9h | 356.25 | 356.25 |
| 68 | 6.1.19 | Dish Edge Preparation | 3h | 2018-08-22 06:00 | 2018-08-22 09:00 | 67 | 2018-07-31 06:00 | 2018-07-31 09:00 | 3h | 64.75d | 0d | TEAM_2Shift_Calendar-1 | Grinding Machine; Grinder | 6h | 168.75 | 168.75 |
| 69 | 6.1.20 | Final Inspection | 3h | 2018-08-22 09:00 | 2018-08-22 12:00 | 68 | 2018-07-31 09:00 | 2018-07-31 12:00 | 3h | 64.75d |  | TEAM_2Shift_Calendar-1 | QC Engineer; Fitter | 4h | 137.5 | 137.5 |

| ID | WBS | Task | Duration | Start | Finish | Predecessors | Baseline start | Baseline finish | Baseline duration | Total slack | Free slack | Calendar | Resources | Work | Cost | Baseline cost |
| --- | --- | --- | --- | --- | --- | --- | --- | --- | --- | --- | --- | --- | --- | --- | --- | --- |
| 70 | 6.2 | **Dish Forming** | 26.06d | 2018-08-04 11:30 | 2018-08-22 12:00 |  | 2018-07-13 11:30 | 2018-07-31 12:00 | 26.06d | 100.87d |  | TEAM_2Shift_Calendar-1 |  | 117h | 3,740 | 3,740 |
| 71 | 6.2.1 | Dish Blank Marking | 2h | 2018-08-04 11:30 | 2018-08-04 13:30 | 30 | 2018-07-13 11:30 | 2018-07-13 13:30 | 2h | 100.87d | 0d | TEAM_2Shift_Calendar-1 | Helper; Plate (Cost) [0.1%]; Fitter | 4h | 237.5 | 237.5 |
| 72 | 6.2.2 | Dish Blank Mkg Inspection | 1h | 2018-08-04 13:30 | 2018-08-04 14:30 | 71 | 2018-07-13 13:30 | 2018-07-13 14:30 | 1h | 100.87d | 0d | TEAM_2Shift_Calendar-1 | Fitter | 1h | 68.75 | 68.75 |
| 73 | 6.2.3 | Dish Blank Mkg Stamping | 4h | 2018-08-06 06:30 | 2018-08-06 10:30 | 72FS+1d | 2018-07-16 06:30 | 2018-07-16 10:30 | 4h | 100.87d | 0d | TEAM_2Shift_Calendar-1 | Fitter; QC Engineer | 2h | 96.25 | 96.25 |
| 74 | 6.2.4 | Transfer For Cutting | 3h | 2018-08-06 10:30 | 2018-08-06 13:30 | 73 | 2018-07-16 10:30 | 2018-07-16 13:30 | 3h | 100.87d | 0d | TEAM_2Shift_Calendar-1 | Helper [300%] | 9h | 450 | 450 |
| 75 | 6.2.5 | Dish Blank Cutting | 3h | 2018-08-06 21:30 | 2018-08-07 08:30 | 74FS+1d | 2018-07-16 21:30 | 2018-07-17 08:30 | 3h | 100.87d | 0d | TEAM_2Shift_Calendar-1 | Gas Cutter; OAGM; Helper | 9h | 356.25 | 356.25 |
| 76 | 6.2.6 | DishBlank OD Grinding | 4h | 2018-08-07 08:30 | 2018-08-07 12:30 | 75 | 2018-07-17 08:30 | 2018-07-17 12:30 | 4h | 100.87d | 0d | TEAM_2Shift_Calendar-1 | Grinding Machine; Grinder | 8h | 225 | 225 |
| 77 | 6.2.7 | Dish Blank Offloading For Forming | 2h | 2018-08-07 12:30 | 2018-08-07 14:30 | 76 | 2018-07-17 12:30 | 2018-07-17 14:30 | 2h | 100.87d | 0d | TEAM_2Shift_Calendar-1 | Vehicle; Helper | 4h | 100 | 100 |
| 78 | 6.2.8 | Dish Forming | 15d | 2018-08-07 14:30 | 2018-08-18 06:30 | 77 | 2018-07-17 14:30 | 2018-07-26 06:30 | 15d | 100.87d | 0d | TEAM_2Shift_Calendar-1 |  |  |  |  |
| 79 | 6.2.9 | Receipt After Forming | 2h | 2018-08-18 06:30 | 2018-08-18 08:30 | 78 | 2018-07-26 06:30 | 2018-07-26 08:30 | 2h | 100.87d | 0d | TEAM_2Shift_Calendar-1 | Vehicle; Helper | 2h | 50 | 50 |
| 80 | 6.2.10 | Inward Inspection | 2.5h | 2018-08-18 08:30 | 2018-08-18 11:00 | 79 | 2018-07-26 08:30 | 2018-07-26 11:00 | 2.5h | 100.87d | 0d | TEAM_2Shift_Calendar-1 | QC Engineer; Fitter | 4h | 137.5 | 137.5 |
| 81 | 6.2.11 | Surface Grinding | 5h | 2018-08-18 11:00 | 2018-08-18 16:00 | 80 | 2018-07-26 11:00 | 2018-07-26 16:00 | 5h | 100.87d | 0d | TEAM_2Shift_Calendar-1 | Grinding Machine; Grinder | 10h | 281.25 | 281.25 |
| 82 | 6.2.12 | Surface Dp Check | 2h | 2018-08-18 16:00 | 2018-08-18 18:00 | 81 | 2018-07-26 16:00 | 2018-07-26 18:00 | 2h | 100.87d | 0d | TEAM_2Shift_Calendar-1 | Helper; Fitter | 4h | 237.5 | 237.5 |
| 83 | 6.2.13 | Spider Set Up For SR | 2h | 2018-08-18 18:00 | 2018-08-18 20:00 | 82 | 2018-07-26 18:00 | 2018-07-26 20:00 | 2h | 100.87d | 0d | TEAM_2Shift_Calendar-1 | Helper [200%]; Fitter | 6h | 337.5 | 337.5 |
| 84 | 6.2.14 | Dish SR | 3d | 2018-08-18 20:00 | 2018-08-21 12:00 | 83 | 2018-07-26 20:00 | 2018-07-30 12:00 | 3d | 100.87d | 0d | TEAM_2Shift_Calendar-1 | SC (Work) | 24h |  |  |
| 85 | 6.2.15 | Remove Spider | 2h | 2018-08-21 12:00 | 2018-08-21 14:00 | 84 | 2018-07-30 12:00 | 2018-07-30 14:00 | 2h | 100.87d | 0d | TEAM_2Shift_Calendar-1 | Grinding Machine; Grinder | 4h | 112.5 | 112.5 |
| 86 | 6.2.16 | Surface Cleaning | 3h | 2018-08-21 14:00 | 2018-08-21 17:00 | 85 | 2018-07-30 14:00 | 2018-07-30 17:00 | 3h | 100.87d | 0d | TEAM_2Shift_Calendar-1 | Helper | 3h | 150 | 150 |
| 87 | 6.2.17 | SF Marking | 2h | 2018-08-21 17:00 | 2018-08-21 19:00 | 86 | 2018-07-30 17:00 | 2018-07-30 19:00 | 2h | 100.87d | 0d | TEAM_2Shift_Calendar-1 | Helper; Fitter | 4h | 237.5 | 237.5 |
| 88 | 6.2.18 | SF Cutting | 3h | 2018-08-21 19:00 | 2018-08-21 22:00 | 87 | 2018-07-30 19:00 | 2018-07-30 22:00 | 3h | 100.87d | 0d | TEAM_2Shift_Calendar-1 | Gas Cutter; OAGM; Helper | 9h | 356.25 | 356.25 |
| 89 | 6.2.19 | Dish Edge Preparation | 3h | 2018-08-22 06:00 | 2018-08-22 09:00 | 88 | 2018-07-31 06:00 | 2018-07-31 09:00 | 3h | 100.87d | 0d | TEAM_2Shift_Calendar-1 | Grinding Machine; Grinder | 6h | 168.75 | 168.75 |
| 90 | 6.2.20 | Final Inspection | 3h | 2018-08-22 09:00 | 2018-08-22 12:00 | 89 | 2018-07-31 09:00 | 2018-07-31 12:00 | 3h | 100.87d |  | TEAM_2Shift_Calendar-1 | QC Engineer; Fitter | 4h | 137.5 | 137.5 |
| 91 | 6.3 | **Nozzle Fabrication** | 47.62d | 2018-08-04 11:30 | 2018-09-05 08:30 |  | 2018-07-13 11:30 | 2018-08-14 08:30 | 47.62d | 39.5d | 3.5d | TEAM_2Shift_Calendar-1 |  | 111h | 5,300 | 5,300 |
| 92 | 6.3.1 | Noz PipeMarking | 3h | 2018-08-04 11:30 | 2018-08-04 14:30 | 34 | 2018-07-13 11:30 | 2018-07-13 14:30 | 3h | 80d | 0d | TEAM_2Shift_Calendar-1 | Helper; Forging Std (Cost) [0.1%]; Pipe (Cost) [0.1%]; Fitter | 6h | 356.25 | 356.25 |
| 93 | 6.3.2 | Noz Pipe Stamping | 3h | 2018-08-04 14:30 | 2018-08-04 17:30 | 92 | 2018-07-13 14:30 | 2018-07-13 17:30 | 3h | 80d | 0d | TEAM_2Shift_Calendar-1 | TPI (Cost) [0.1%]; QC Engineer | 3h |  |  |
| 94 | 6.3.3 | Noz Pipe Cutting | 3h | 2018-08-06 09:30 | 2018-08-06 12:30 | 93FS+1d | 2018-07-16 09:30 | 2018-07-16 12:30 | 3h | 80.88d | 0d | TEAM_2Shift_Calendar-1 | Gas Cutter; OAGM; Helper | 9h | 356.25 | 356.25 |
| 95 | 6.3.4 | Noz Pipe Ep | 3h | 2018-08-06 12:30 | 2018-08-06 15:30 | 94 | 2018-07-16 12:30 | 2018-07-16 15:30 | 3h | 80.88d | 41.5d | TEAM_2Shift_Calendar-1 | Grinding Machine; Grinder | 6h | 168.75 | 168.75 |
| 96 | 6.3.5 | Noz Flange+Pipe FitUp | 4h | 2018-09-03 11:30 | 2018-09-03 15:30 | 95, 35 | 2018-08-10 11:30 | 2018-08-10 15:30 | 4h | 39.38d | 0d | TEAM_2Shift_Calendar-1 | Helper; SMAW Welder; SMAW Welding Machine; Fitter | 16h | 750 | 750 |
| 97 | 6.3.6 | Noz Flange+PipeFitUp Inspection | 2h | 2018-09-03 15:30 | 2018-09-03 17:30 | 96 | 2018-08-10 15:30 | 2018-08-10 17:30 | 2h | 39.38d | 0d | TEAM_2Shift_Calendar-1 | Fitter; QC Engineer | 4h | 137.5 | 137.5 |
| 98 | 6.3.7 | Noz Flange+PipeRoot TigWelding | 4h | 2018-09-03 17:30 | 2018-09-03 21:30 | 97 | 2018-08-10 17:30 | 2018-08-10 21:30 | 4h | 39.5d | 0d | TEAM_2Shift_Calendar-1 | TIG Welder; TIG Welding Machine; Helper | 12h | 700 | 700 |
| 99 | 6.3.8 | Noz Flange+Pipe FillerPassWelding | 4h | 2018-09-03 21:30 | 2018-09-04 09:30 | 98 | 2018-08-10 21:30 | 2018-08-13 09:30 | 4h | 39.5d | 0d | TEAM_2Shift_Calendar-1 | TIG Welder; TIG Welding Machine; Helper | 12h | 700 | 700 |
| 100 | 6.3.9 | Mp ConMarking | 1h | 2018-09-04 09:30 | 2018-09-04 10:30 | 99 | 2018-08-13 09:30 | 2018-08-13 10:30 | 1h | 39.5d | 0d | TEAM_2Shift_Calendar-1 | Helper; Fitter | 2h | 118.75 | 118.75 |
| 101 | 6.3.10 | Mp ConOpenning | 3h | 2018-09-04 10:30 | 2018-09-04 13:30 | 100 | 2018-08-13 10:30 | 2018-08-13 13:30 | 3h | 39.5d | 0d | TEAM_2Shift_Calendar-1 | Gas Cutter; OAGM; Helper | 9h | 356.25 | 356.25 |
| 102 | 6.3.11 | Mp ConEp | 2h | 2018-09-04 13:30 | 2018-09-04 15:30 | 101 | 2018-08-13 13:30 | 2018-08-13 15:30 | 2h | 39.5d | 0d | TEAM_2Shift_Calendar-1 | Grinding Machine; Grinder | 4h | 112.5 | 112.5 |
| 103 | 6.3.12 | Mp Con Noz FitUp | 3h | 2018-09-04 15:30 | 2018-09-04 18:30 | 102 | 2018-08-13 15:30 | 2018-08-13 18:30 | 3h | 39.5d | 0d | TEAM_2Shift_Calendar-1 | Helper; TIG Welder; TIG Welding Machine; Fitter | 12h | 731.25 | 731.25 |
| 104 | 6.3.13 | Mp Con Noz Welding | 4h | 2018-09-04 18:30 | 2018-09-05 06:30 | 103 | 2018-08-13 18:30 | 2018-08-14 06:30 | 4h | 39.5d | 0d | TEAM_2Shift_Calendar-1 | TIG Welder; TIG Welding Machine; Helper | 12h | 700 | 700 |
| 105 | 6.3.14 | Mp Con Noz Welding FlushGrind | 2h | 2018-09-05 06:30 | 2018-09-05 08:30 | 104 | 2018-08-14 06:30 | 2018-08-14 08:30 | 2h | 39.5d |  | TEAM_2Shift_Calendar-1 | Grinding Machine; Grinder | 4h | 112.5 | 112.5 |

| ID | WBS | Task | Duration | Start | Finish | Predecessors | Baseline start | Baseline finish | Baseline duration | Total slack | Free slack | Calendar | Resources | Work | Cost | Baseline cost |
| --- | --- | --- | --- | --- | --- | --- | --- | --- | --- | --- | --- | --- | --- | --- | --- | --- |
| 106 | 6.4 | **Saddle Fabrication(LHS)** | 8.62d | 2018-08-04 11:30 | 2018-08-09 16:30 |  | 2018-07-13 11:30 | 2018-07-19 16:30 | 8.62d | 82.62d | 46.5d | TEAM_2Shift_Calendar-1 |  | 173h | 7,737.5 | 7,737.5 |
| 107 | 6.4.1 | Saddle Pl Marking | 6h | 2018-08-04 11:30 | 2018-08-04 17:30 | 31 | 2018-07-13 11:30 | 2018-07-13 17:30 | 6h | 82.62d | 0d | TEAM_2Shift_Calendar-1 | Helper; Plate (Cost) [0.1%]; Fitter | 12h | 712.5 | 712.5 |
| 108 | 6.4.2 | Saddle Pl Mkg Inspection | 9h | 2018-08-04 17:30 | 2018-08-06 10:30 | 107 | 2018-07-13 17:30 | 2018-07-16 10:30 | 9h | 82.62d | 0d | TEAM_2Shift_Calendar-1 | QC Engineer; Fitter | 2h | 68.75 | 68.75 |
| 109 | 6.4.3 | Saddle Pl Mkg Cutting | 8h | 2018-08-06 10:30 | 2018-08-06 18:30 | 108 | 2018-07-16 10:30 | 2018-07-16 18:30 | 8h | 82.62d | 0d | TEAM_2Shift_Calendar-1 | Gas Cutter; OAGM; Helper | 24h | 950 | 950 |
| 110 | 6.4.4 | Grinding | 7h | 2018-08-06 18:30 | 2018-08-07 09:30 | 109 | 2018-07-16 18:30 | 2018-07-17 09:30 | 7h | 82.62d | 0d | TEAM_2Shift_Calendar-1 | Grinding Machine; Grinder | 14h | 393.75 | 393.75 |
| 111 | 6.4.5 | Saddle Base Hole Marking | 2h | 2018-08-07 09:30 | 2018-08-07 11:30 | 110 | 2018-07-17 09:30 | 2018-07-17 11:30 | 2h | 82.62d | 0d | TEAM_2Shift_Calendar-1 | Helper; Fitter | 4h | 237.5 | 237.5 |
| 112 | 6.4.6 | Saddle BaseHole Drilling | 4h | 2018-08-07 11:30 | 2018-08-07 15:30 | 111 | 2018-07-17 11:30 | 2018-07-17 15:30 | 4h | 82.62d | 0d | TEAM_2Shift_Calendar-1 | Radial Drilling Machine; Driller | 8h | 275 | 275 |
| 113 | 6.4.7 | Saddle Pad Forming | 1d | 2018-08-07 15:30 | 2018-08-08 07:30 | 112 | 2018-07-17 15:30 | 2018-07-18 07:30 | 1d | 82.62d | 0d | TEAM_2Shift_Calendar-1 | Helper; Fitter [200%] | 24h | 1,500 | 1,500 |
| 114 | 6.4.8 | Saddle FitUp | 7h | 2018-08-08 07:30 | 2018-08-08 14:30 | 113 | 2018-07-18 07:30 | 2018-07-18 14:30 | 7h | 82.62d | 0d | TEAM_2Shift_Calendar-1 | Helper [200%]; SMAW Welder; SMAW Welding Machine; Fitter | 35h | 1,662.5 | 1,662.5 |
| 115 | 6.4.9 | Saddle FitUp Inspection | 2h | 2018-08-08 14:30 | 2018-08-08 16:30 | 114 | 2018-07-18 14:30 | 2018-07-18 16:30 | 2h | 82.62d | 0d | TEAM_2Shift_Calendar-1 | Fitter | 2h | 137.5 | 137.5 |
| 116 | 6.4.10 | Saddle Welding | 1d | 2018-08-08 16:30 | 2018-08-09 08:30 | 115 | 2018-07-18 16:30 | 2018-07-19 08:30 | 1d | 82.62d | 0d | TEAM_2Shift_Calendar-1 | SMAW Welder; SMAW Welding Machine; Helper [200%] | 32h | 1,350 | 1,350 |
| 117 | 6.4.11 | Saddle Profile Grinding | 8h | 2018-08-09 08:30 | 2018-08-09 16:30 | 116 | 2018-07-19 08:30 | 2018-07-19 16:30 | 8h | 82.62d |  | TEAM_2Shift_Calendar-1 | Grinding Machine; Grinder | 16h | 450 | 450 |
| 118 | 6.5 | **Saddle Fabrication(LHS)** | 8.62d | 2018-08-04 11:30 | 2018-08-09 16:30 |  | 2018-07-13 11:30 | 2018-07-19 16:30 | 8.62d | 82.62d | 46.5d | TEAM_2Shift_Calendar-1 |  | 173h | 7,737.5 | 7,737.5 |
| 119 | 6.5.1 | Saddle Pl Marking | 6h | 2018-08-04 11:30 | 2018-08-04 17:30 | 31 | 2018-07-13 11:30 | 2018-07-13 17:30 | 6h | 82.62d | 0d | TEAM_2Shift_Calendar-1 | Helper; Plate (Cost) [0.1%]; Fitter | 12h | 712.5 | 712.5 |
| 120 | 6.5.2 | Saddle Pl Mkg Inspection | 9h | 2018-08-04 17:30 | 2018-08-06 10:30 | 119 | 2018-07-13 17:30 | 2018-07-16 10:30 | 9h | 82.62d | 0d | TEAM_2Shift_Calendar-1 | QC Engineer; Fitter | 2h | 68.75 | 68.75 |
| 121 | 6.5.3 | Saddle Pl Mkg Cutting | 8h | 2018-08-06 10:30 | 2018-08-06 18:30 | 120 | 2018-07-16 10:30 | 2018-07-16 18:30 | 8h | 82.62d | 0d | TEAM_2Shift_Calendar-1 | Gas Cutter; OAGM; Helper | 24h | 950 | 950 |
| 122 | 6.5.4 | Grinding | 7h | 2018-08-06 18:30 | 2018-08-07 09:30 | 121 | 2018-07-16 18:30 | 2018-07-17 09:30 | 7h | 82.62d | 0d | TEAM_2Shift_Calendar-1 | Grinding Machine; Grinder | 14h | 393.75 | 393.75 |
| 123 | 6.5.5 | Saddle Base Hole Marking | 2h | 2018-08-07 09:30 | 2018-08-07 11:30 | 122 | 2018-07-17 09:30 | 2018-07-17 11:30 | 2h | 82.62d | 0d | TEAM_2Shift_Calendar-1 | Helper; Fitter | 4h | 237.5 | 237.5 |
| 124 | 6.5.6 | Saddle BaseHole Drilling | 4h | 2018-08-07 11:30 | 2018-08-07 15:30 | 123 | 2018-07-17 11:30 | 2018-07-17 15:30 | 4h | 82.62d | 0d | TEAM_2Shift_Calendar-1 | Radial Drilling Machine; Driller | 8h | 275 | 275 |
| 125 | 6.5.7 | Saddle Pad Forming | 1d | 2018-08-07 15:30 | 2018-08-08 07:30 | 124 | 2018-07-17 15:30 | 2018-07-18 07:30 | 1d | 82.62d | 0d | TEAM_2Shift_Calendar-1 | Helper; Fitter [200%] | 24h | 1,500 | 1,500 |
| 126 | 6.5.8 | Saddle FitUp | 7h | 2018-08-08 07:30 | 2018-08-08 14:30 | 125 | 2018-07-18 07:30 | 2018-07-18 14:30 | 7h | 82.62d | 0d | TEAM_2Shift_Calendar-1 | Helper [200%]; SMAW Welder; SMAW Welding Machine; Fitter | 35h | 1,662.5 | 1,662.5 |
| 127 | 6.5.9 | Saddle FitUp Inspection | 2h | 2018-08-08 14:30 | 2018-08-08 16:30 | 126 | 2018-07-18 14:30 | 2018-07-18 16:30 | 2h | 82.62d | 0d | TEAM_2Shift_Calendar-1 | Fitter | 2h | 137.5 | 137.5 |
| 128 | 6.5.10 | Saddle Welding | 1d | 2018-08-08 16:30 | 2018-08-09 08:30 | 127 | 2018-07-18 16:30 | 2018-07-19 08:30 | 1d | 82.62d | 0d | TEAM_2Shift_Calendar-1 | SMAW Welder; SMAW Welding Machine; Helper [200%] | 32h | 1,350 | 1,350 |
| 129 | 6.5.11 | Saddle Profile Grinding | 8h | 2018-08-09 08:30 | 2018-08-09 16:30 | 128 | 2018-07-19 08:30 | 2018-07-19 16:30 | 8h | 82.62d |  | TEAM_2Shift_Calendar-1 | Grinding Machine; Grinder | 16h | 450 | 450 |

| ID | WBS | Task | Type | Duration | Start | Finish | Predecessors | Baseline start | Baseline finish | Baseline duration | Total slack | Free slack | Calendar | Resources | Work | Cost | Baseline cost |
| --- | --- | --- | --- | --- | --- | --- | --- | --- | --- | --- | --- | --- | --- | --- | --- | --- | --- |
| 130 | 6.6 | **TubeSheet** |  | 14.38d | 2018-09-17 11:30 | 2018-09-26 14:30 |  | 2018-08-24 11:30 | 2018-09-03 14:30 | 14.38d | 0d |  | TEAM_2Shift_Calendar-1 |  | 82.71h | 2,268.75 | 2,268.75 |
| 131 | 6.6.1 | Receipt Of Forging |  | 4h | 2018-09-17 11:30 | 2018-09-17 15:30 | 38 | 2018-08-24 11:30 | 2018-08-24 15:30 | 4h | 0d |  | TEAM_2Shift_Calendar-1 | Tube Sheet (Cost) [0.1%]; Helper [200%] | 8h | 400 | 400 |
| 132 | 6.6.2 | Inward Inspection |  | 1d | 2018-09-18 15:30 | 2018-09-19 07:30 | 131FS+2d | 2018-08-27 15:30 | 2018-08-28 07:30 | 1d | 0d |  | TEAM_2Shift_Calendar-1 | QC Engineer; Fitter | 4.71h | 206.25 | 206.25 |
| 133 | 6.6.3 | Off Load For Drilling |  | 4h | 2018-09-19 07:30 | 2018-09-19 11:30 | 132 | 2018-08-28 07:30 | 2018-08-28 11:30 | 4h | 0d |  | TEAM_2Shift_Calendar-1 | Helper [200%] | 8h | 400 | 400 |
| 134 | 6.6.4 | Drilling Of Tube Holes |  | 7d | 2018-09-19 11:30 | 2018-09-24 19:30 | 133 | 2018-08-28 11:30 | 2018-08-31 19:30 | 7d | 0d |  | TEAM_2Shift_Calendar-1 | SC (Work) | 24h |  |  |
| 135 | 6.6.5 | Drilling Of TieRod Holes |  | 6h | 2018-09-24 19:30 | 2018-09-25 09:30 | 134 | 2018-08-31 19:30 | 2018-09-01 09:30 | 6h | 0d |  | TEAM_2Shift_Calendar-1 | Radial Drilling Machine; Driller | 12h | 412.5 | 412.5 |
| 136 | 6.6.6 | M/C of groove for oring assembly |  | 6h | 2018-09-25 09:30 | 2018-09-25 15:30 | 135 | 2018-09-01 09:30 | 2018-09-01 15:30 | 6h | 0d |  | TEAM_2Shift_Calendar-1 | SC (Work) | 6h |  |  |
| 137 | 6.6.7 | TubeSheet Receipt After Drilling |  | 4h | 2018-09-25 15:30 | 2018-09-25 19:30 | 136 | 2018-09-01 15:30 | 2018-09-01 19:30 | 4h | 0d |  | TEAM_2Shift_Calendar-1 | Helper [200%] | 8h | 400 | 400 |
| 138 | 6.6.8 | Tube Sheet Inspection |  | 1d | 2018-09-25 19:30 | 2018-09-26 11:30 | 137 | 2018-09-01 19:30 | 2018-09-03 11:30 | 1d | 0d |  | TEAM_2Shift_Calendar-1 | QC Engineer | 3h |  |  |
| 139 | 6.6.9 | Tube Sheet Cleaning |  | 3h | 2018-09-26 11:30 | 2018-09-26 14:30 | 138 | 2018-09-03 11:30 | 2018-09-03 14:30 | 3h | 0d |  | TEAM_2Shift_Calendar-1 | Helper [300%] | 9h | 450 | 450 |
| 140 | 6.7 | **SpacerTube** |  | 5.38d | 2018-08-01 10:30 | 2018-08-03 21:30 |  | 2018-07-10 10:30 | 2018-07-12 21:30 | 5.38d | 79.12d |  | TEAM_2Shift_Calendar-1 |  | 46h | 3,042.5 | 3,042.5 |
| 141 | 6.7.1 | SpacerTubeMarking |  | 6h | 2018-08-01 10:30 | 2018-08-01 16:30 | 41 | 2018-07-10 10:30 | 2018-07-10 16:30 | 6h | 79.12d | 0d | TEAM_2Shift_Calendar-1 | Helper; Tube (Cost) [0.1%]; Fitter | 12h | 712.5 | 712.5 |
| 142 | 6.7.2 | SpacerTubeCutting |  | 7h | 2018-08-01 16:30 | 2018-08-02 07:30 | 141 | 2018-07-10 16:30 | 2018-07-11 07:30 | 7h | 79.12d | 0d | TEAM_2Shift_Calendar-1 | Helper; Cutting Machine | 14h | 350 | 350 |
| 143 | 6.7.3 | SpacerTubeM/C |  | 3d | 2018-08-02 07:30 | 2018-08-03 15:30 | 142 | 2018-07-11 07:30 | 2018-07-12 15:30 | 3d | 79.12d | 0d | TEAM_2Shift_Calendar-1 | Lathe Operator | 14h | 1,680 | 1,680 |
| 144 | 6.7.4 | SpacerCleaning |  | 6h | 2018-08-03 15:30 | 2018-08-03 21:30 | 143 | 2018-07-12 15:30 | 2018-07-12 21:30 | 6h | 79.12d |  | TEAM_2Shift_Calendar-1 | Helper | 6h | 300 | 300 |
| 145 | 6.8 | **Baffle Fabrication** |  | 17.88d | 2018-08-04 11:30 | 2018-08-17 10:30 |  | 2018-07-13 11:30 | 2018-07-25 10:30 | 17.88d | 60.5d |  | TEAM_2Shift_Calendar-1 |  | 160h | 6,931.25 | 6,931.25 |
| 146 | 6.8.1 | Marking |  | 8h | 2018-08-04 11:30 | 2018-08-04 19:30 | 30 | 2018-07-13 11:30 | 2018-07-13 19:30 | 8h | 60.5d | 0d | TEAM_2Shift_Calendar-1 | Helper; Plate (Cost) [0.1%]; Fitter | 16h | 950 | 950 |
| 147 | 6.8.2 | Cutting |  | 8h | 2018-08-04 19:30 | 2018-08-06 11:30 | 146 | 2018-07-13 19:30 | 2018-07-16 11:30 | 8h | 60.5d | 0d | TEAM_2Shift_Calendar-1 | Gas Cutter; OAGM; Helper | 24h | 950 | 950 |
| 148 | 6.8.3 | Grinding |  | 8h | 2018-08-06 11:30 | 2018-08-06 19:30 | 147 | 2018-07-16 11:30 | 2018-07-16 19:30 | 8h | 60.5d | 0d | TEAM_2Shift_Calendar-1 | Grinding Machine; Grinder | 16h | 450 | 450 |
| 149 | 6.8.4 | Stacking |  | 4h | 2018-08-06 19:30 | 2018-08-07 07:30 | 148 | 2018-07-16 19:30 | 2018-07-17 07:30 | 4h | 60.5d | 0d | TEAM_2Shift_Calendar-1 | Helper | 4h | 200 | 200 |
| 150 | 6.8.5 | Centre LineMarking |  | 4h | 2018-08-07 07:30 | 2018-08-07 11:30 | 149 | 2018-07-17 07:30 | 2018-07-17 11:30 | 4h | 60.5d | 0d | TEAM_2Shift_Calendar-1 | Helper; Fitter | 8h | 475 | 475 |
| 151 | 6.8.6 | Drilling |  | 7d | 2018-08-07 11:30 | 2018-08-10 19:30 | 150 | 2018-07-17 11:30 | 2018-07-20 19:30 | 7d | 60.5d | 0d | TEAM_2Shift_Calendar-1 |  |  |  |  |
| 152 | 6.8.7 | De Stacking |  | 4h | 2018-08-10 19:30 | 2018-08-13 07:30 | 151 | 2018-07-20 19:30 | 2018-07-21 07:30 | 4h | 60.5d | 0d | TEAM_2Shift_Calendar-1 | Helper | 4h | 200 | 200 |
| 153 | 6.8.8 | Hole Chamfering |  | 4h | 2018-08-13 07:30 | 2018-08-13 11:30 | 152 | 2018-07-21 07:30 | 2018-07-21 11:30 | 4h | 60.5d | 0d | TEAM_2Shift_Calendar-1 | Driller | 4h | 275 | 275 |
| 154 | 6.8.9 | EdgeTrimming |  | 5h | 2018-08-13 11:30 | 2018-08-13 16:30 | 153 | 2018-07-21 11:30 | 2018-07-21 16:30 | 5h | 60.5d | 0d | TEAM_2Shift_Calendar-1 | Grinding Machine; Grinder | 10h | 281.25 | 281.25 |
| 155 | 6.8.10 | Grinding |  | 4h | 2018-08-13 16:30 | 2018-08-13 20:30 | 154 | 2018-07-21 16:30 | 2018-07-21 20:30 | 4h | 60.5d | 0d | TEAM_2Shift_Calendar-1 | Grinding Machine; Grinder | 8h | 225 | 225 |
| 156 | 6.8.11 | Stacking TypeA&B |  | 5h | 2018-08-13 20:30 | 2018-08-14 09:30 | 155 | 2018-07-21 20:30 | 2018-07-23 09:30 | 5h | 60.5d | 0d | TEAM_2Shift_Calendar-1 | Helper | 5h | 250 | 250 |
| 157 | 6.8.12 | Through Hole Check |  | 6h | 2018-08-14 09:30 | 2018-08-14 15:30 | 156 | 2018-07-23 09:30 | 2018-07-23 15:30 | 6h | 60.5d | 0d | TEAM_2Shift_Calendar-1 | Helper; Fitter [200%] | 18h | 1,125 | 1,125 |
| 158 | 6.8.13 | ReDrill If Required |  | 1d | 2018-08-14 15:30 | 2018-08-16 07:30 | 157 | 2018-07-23 15:30 | 2018-07-24 07:30 | 1d | 60.5d | 0d | TEAM_2Shift_Calendar-1 | Radial Drilling Machine; Driller | 16h | 550 | 550 |
| 159 | 6.8.14 | OD Machining |  | 1d | 2018-08-16 07:30 | 2018-08-16 15:30 | 158 | 2018-07-24 07:30 | 2018-07-24 15:30 | 1d | 60.5d | 0d | TEAM_2Shift_Calendar-1 | Grinding Machine; Grinder | 16h | 450 | 450 |
| 160 | 6.8.15 | De Stacking |  | 6h | 2018-08-16 15:30 | 2018-08-16 21:30 | 159 | 2018-07-24 15:30 | 2018-07-24 21:30 | 6h | 60.5d | 0d | TEAM_2Shift_Calendar-1 | Helper | 6h | 300 | 300 |
| 161 | 6.8.16 | Cleaning |  | 5h | 2018-08-16 21:30 | 2018-08-17 10:30 | 160 | 2018-07-24 21:30 | 2018-07-25 10:30 | 5h | 60.5d | 0d | TEAM_2Shift_Calendar-1 | Helper | 5h | 250 | 250 |
| 162 | 6.8.17 | Ready For Assy | milestone | 0d | 2018-08-17 10:30 | 2018-08-17 10:30 | 161 | 2018-07-25 10:30 | 2018-07-25 10:30 | 0d | 60.5d |  | TEAM_2Shift_Calendar-1 |  |  |  |  |

| ID | WBS | Task | Duration | Start | Finish | Predecessors | Baseline start | Baseline finish | Baseline duration | Total slack | Free slack | Calendar | Resources | Work | Cost | Baseline cost |
| --- | --- | --- | --- | --- | --- | --- | --- | --- | --- | --- | --- | --- | --- | --- | --- | --- |
| 163 | 6.9 | **TieRod** | 2.75d | 2018-08-01 09:30 | 2018-08-02 15:30 |  | 2018-07-10 09:30 | 2018-07-11 15:30 | 2.75d | 81.88d |  | TEAM_2Shift_Calendar-1 |  | 20h | 1,055 | 1,055 |
| 164 | 6.9.1 | Marking | 4h | 2018-08-01 09:30 | 2018-08-01 13:30 | 40 | 2018-07-10 09:30 | 2018-07-10 13:30 | 4h | 81.88d | 0d | TEAM_2Shift_Calendar-1 | Helper; Rod (Cost) [0.1%]; Fitter | 8h | 475 | 475 |
| 165 | 6.9.2 | Cutting | 2h | 2018-08-01 13:30 | 2018-08-01 15:30 | 164 | 2018-07-10 13:30 | 2018-07-10 15:30 | 2h | 81.88d | 0d | TEAM_2Shift_Calendar-1 | Helper; Cutting Machine | 4h | 100 | 100 |
| 166 | 6.9.3 | Thread Machining | 2d | 2018-08-01 15:30 | 2018-08-02 15:30 | 165 | 2018-07-10 15:30 | 2018-07-11 15:30 | 2d | 81.88d |  | TEAM_2Shift_Calendar-1 | Lathe; Lathe Operator | 8h | 480 | 480 |
| 167 | 6.10 | **Other Components** | 5.12d | 2018-08-24 11:30 | 2018-08-28 20:30 |  | 2018-08-02 11:30 | 2018-08-04 20:30 | 5.12d | 56d | 0d | TEAM_2Shift_Calendar-1 |  | 88h | 3,893.75 | 3,893.75 |
| 168 | 6.10.1 | LiftingLug Marking | 3h | 2018-08-24 11:30 | 2018-08-24 14:30 | 30FS+30d | 2018-08-02 11:30 | 2018-08-02 14:30 | 3h | 56d | 0d | TEAM_2Shift_Calendar-1 | Helper; Plate (Cost) [0.1%]; Fitter | 6h | 356.25 | 356.25 |
| 169 | 6.10.2 | LiftingLug Cutting | 3h | 2018-08-24 14:30 | 2018-08-24 17:30 | 168 | 2018-08-02 14:30 | 2018-08-02 17:30 | 3h | 56d | 0d | TEAM_2Shift_Calendar-1 | OAGM; Gas Cutter | 6h | 206.25 | 206.25 |
| 170 | 6.10.3 | Lifting LugPad Marking | 2h | 2018-08-24 17:30 | 2018-08-24 19:30 | 169 | 2018-08-02 17:30 | 2018-08-02 19:30 | 2h | 56d | 0d | TEAM_2Shift_Calendar-1 | Helper; Fitter | 4h | 237.5 | 237.5 |
| 171 | 6.10.4 | Lifting LugPad Cutting | 3h | 2018-08-24 19:30 | 2018-08-27 06:30 | 170 | 2018-08-02 19:30 | 2018-08-03 06:30 | 3h | 56d | 0d | TEAM_2Shift_Calendar-1 | OAGM; Gas Cutter | 6h | 206.25 | 206.25 |
| 172 | 6.10.5 | Lifting LugPad Grinding | 7h | 2018-08-27 06:30 | 2018-08-27 13:30 | 171 | 2018-08-03 06:30 | 2018-08-03 13:30 | 7h | 56d | 0d | TEAM_2Shift_Calendar-1 | Grinding Machine; Grinder | 14h | 393.75 | 393.75 |
| 173 | 6.10.6 | LiftingLugPadForming | 6h | 2018-08-27 13:30 | 2018-08-27 19:30 | 172 | 2018-08-03 13:30 | 2018-08-03 19:30 | 6h | 56d | 0d | TEAM_2Shift_Calendar-1 | Helper; Fitter [200%] | 18h | 1,125 | 1,125 |
| 174 | 6.10.7 | Ins Cleat Marking | 5h | 2018-08-27 19:30 | 2018-08-28 08:30 | 173 | 2018-08-03 19:30 | 2018-08-04 08:30 | 5h | 56d | 0d | TEAM_2Shift_Calendar-1 | Helper; Fitter | 10h | 593.75 | 593.75 |
| 175 | 6.10.8 | Ins Cleat Cutting | 5h | 2018-08-28 08:30 | 2018-08-28 13:30 | 174 | 2018-08-04 08:30 | 2018-08-04 13:30 | 5h | 56d | 0d | TEAM_2Shift_Calendar-1 | OAGM; Gas Cutter | 10h | 343.75 | 343.75 |
| 176 | 6.10.9 | Ins Cleat Grinding | 4h | 2018-08-28 13:30 | 2018-08-28 17:30 | 175 | 2018-08-04 13:30 | 2018-08-04 17:30 | 4h | 56d | 0d | TEAM_2Shift_Calendar-1 | Grinding Machine; Grinder | 8h | 225 | 225 |
| 177 | 6.10.10 | Ins Cleat Drilling | 3h | 2018-08-28 17:30 | 2018-08-28 20:30 | 176 | 2018-08-04 17:30 | 2018-08-04 20:30 | 3h | 56d |  | TEAM_2Shift_Calendar-1 | Radial Drilling Machine; Driller | 6h | 206.25 | 206.25 |
| 178 | 6.11 | **Fabrication of Shell(TOP)** | 55.94d | 2018-08-10 11:30 | 2018-09-18 11:01 |  | 2018-07-20 11:30 | 2018-08-27 11:01 | 55.94d | 36.12d |  | TEAM_2Shift_Calendar-1 |  | 503h | 21,349.99 | 21,349.99 |
| 179 | 6.11.1 | **Initial Preparation** | 9.56d | 2018-08-10 11:30 | 2018-08-18 08:00 |  | 2018-07-20 11:30 | 2018-07-26 08:00 | 9.56d | 56.44d |  | TEAM_2Shift_Calendar-1 |  | 69h | 2,762.5 | 2,762.5 |
| 180 | 6.11.1.1 | Marking | 3h | 2018-08-10 11:30 | 2018-08-10 14:30 | 30FS+10d | 2018-07-20 11:30 | 2018-07-20 14:30 | 3h | 56.44d | 0d | TEAM_2Shift_Calendar-1 | Helper; Plate (Cost) [0.1%]; Fitter | 6h | 356.25 | 356.25 |
| 181 | 6.11.1.2 | Stamping | 5.5h | 2018-08-14 06:30 | 2018-08-14 12:00 | 180FS+3d | 2018-07-23 06:30 | 2018-07-23 12:00 | 5.5h | 56.44d | 0d | TEAM_2Shift_Calendar-1 | QC Engineer; TPI (Cost) [0.1%]; Fitter | 6h | 206.25 | 206.25 |
| 182 | 6.11.1.3 | Sh LS Cutting | 3h | 2018-08-16 20:00 | 2018-08-17 07:00 | 181FS+3d | 2018-07-24 20:00 | 2018-07-25 07:00 | 3h | 56.44d | 0d | TEAM_2Shift_Calendar-1 | Gas Cutter; OAGM; Helper | 9h | 356.25 | 356.25 |
| 183 | 6.11.1.4 | Sh LS EP | 4h | 2018-08-17 07:00 | 2018-08-17 11:00 | 182 | 2018-07-25 07:00 | 2018-07-25 11:00 | 4h | 56.44d | 0d | TEAM_2Shift_Calendar-1 | Grinding Machine; Grinder | 8h | 225 | 225 |
| 184 | 6.11.1.5 | Sh LS Pre Bending | 4h | 2018-08-17 11:00 | 2018-08-17 15:00 | 183 | 2018-07-25 11:00 | 2018-07-25 15:00 | 4h | 56.44d | 0d | TEAM_2Shift_Calendar-1 | Helper; Plate Bending Machine; Fitter [200%] | 16h | 750 | 750 |
| 185 | 6.11.1.6 | Sh LS Pre Bend Cut Off | 2h | 2018-08-17 15:00 | 2018-08-17 17:00 | 184 | 2018-07-25 15:00 | 2018-07-25 17:00 | 2h | 56.44d | 0d | TEAM_2Shift_Calendar-1 | OAGM; Gas Cutter | 4h | 137.5 | 137.5 |
| 186 | 6.11.1.7 | Sh LS EP | 4h | 2018-08-17 17:00 | 2018-08-17 21:00 | 185 | 2018-07-25 17:00 | 2018-07-25 21:00 | 4h | 56.44d | 0d | TEAM_2Shift_Calendar-1 | Grinding Machine; Grinder | 8h | 225 | 225 |
| 187 | 6.11.1.8 | Sh LS Rolling | 3h | 2018-08-17 21:00 | 2018-08-18 08:00 | 186 | 2018-07-25 21:00 | 2018-07-26 08:00 | 3h | 56.44d | 0d | TEAM_2Shift_Calendar-1 | Helper [200%]; Rolling Machine; Fitter | 12h | 506.25 | 506.25 |

| ID | WBS | Task | Duration | Start | Finish | Predecessors | Baseline start | Baseline finish | Baseline duration | Total slack | Free slack | Calendar | Resources | Work | Cost | Baseline cost |
| --- | --- | --- | --- | --- | --- | --- | --- | --- | --- | --- | --- | --- | --- | --- | --- | --- |
| 188 | 6.11.2 | **Fitup & Welding** | 4d | 2018-08-18 08:00 | 2018-08-21 08:00 |  | 2018-07-26 08:00 | 2018-07-30 08:00 | 4d | 56.44d |  | TEAM_2Shift_Calendar-1 |  | 63h | 2,993.75 | 2,993.75 |
| 189 | 6.11.2.1 | Sh LS Fitup | 4h | 2018-08-18 08:00 | 2018-08-18 12:00 | 187 | 2018-07-26 08:00 | 2018-07-26 12:00 | 4h | 56.44d | 0d | TEAM_2Shift_Calendar-1 | Helper; SAW Welder; Fitter | 12h | 750 | 750 |
| 190 | 6.11.2.2 | Sh LS Inspection | 2h | 2018-08-18 12:00 | 2018-08-18 14:00 | 189 | 2018-07-26 12:00 | 2018-07-26 14:00 | 2h | 56.44d | 0d | TEAM_2Shift_Calendar-1 | Fitter; QC Engineer | 2h | 68.75 | 68.75 |
| 191 | 6.11.2.3 | Sh LS Welding Arrangement | 2h | 2018-08-18 14:00 | 2018-08-18 16:00 | 190 | 2018-07-26 14:00 | 2018-07-26 16:00 | 2h | 56.44d | 0d | TEAM_2Shift_Calendar-1 | Helper; Fitter | 4h | 237.5 | 237.5 |
| 192 | 6.11.2.4 | Sh LS Welding | 6h | 2018-08-18 16:00 | 2018-08-18 22:00 | 191 | 2018-07-26 16:00 | 2018-07-26 22:00 | 6h | 56.44d | 0d | TEAM_2Shift_Calendar-1 | SAW Welder; SMAW Welding Machine; Helper [200%] | 24h | 1,012.5 | 1,012.5 |
| 193 | 6.11.2.5 | Sh LS Back Chip | 3h | 2018-08-20 06:00 | 2018-08-20 09:00 | 192 | 2018-07-27 06:00 | 2018-07-27 09:00 | 3h | 56.44d | 0d | TEAM_2Shift_Calendar-1 | Grinding Machine; Grinder | 6h | 168.75 | 168.75 |
| 194 | 6.11.2.6 | Sh LS Inner Flush Grind | 2h | 2018-08-20 09:00 | 2018-08-20 11:00 | 193 | 2018-07-27 09:00 | 2018-07-27 11:00 | 2h | 56.44d | 0d | TEAM_2Shift_Calendar-1 | Grinding Machine; Grinder | 4h | 112.5 | 112.5 |
| 195 | 6.11.2.7 | Sh LS DP Check | 2h | 2018-08-20 11:00 | 2018-08-20 13:00 | 194 | 2018-07-27 11:00 | 2018-07-27 13:00 | 2h | 56.44d | 0d | TEAM_2Shift_Calendar-1 | Fitter | 2h | 137.5 | 137.5 |
| 196 | 6.11.2.8 | Sh LS Re Rolling | 3h | 2018-08-20 13:00 | 2018-08-20 16:00 | 195 | 2018-07-27 13:00 | 2018-07-27 16:00 | 3h | 56.44d | 0d | TEAM_2Shift_Calendar-1 | Helper [200%]; Fitter | 9h | 506.25 | 506.25 |
| 197 | 6.11.2.9 | Sh LS Radiography | 1d | 2018-08-20 16:00 | 2018-08-21 08:00 | 196 | 2018-07-27 16:00 | 2018-07-30 08:00 | 1d | 56.44d | 20.44d | TEAM_2Shift_Calendar-1 | SC Radiography (Cost) [0.1%] |  |  |  |
| 198 | 6.11.3 | **Shell to Front Flg Welding** | 3.5d | 2018-09-03 11:30 | 2018-09-05 07:30 |  | 2018-08-10 11:30 | 2018-08-14 07:30 | 3.5d | 36d | 3.62d | TEAM_2Shift_Calendar-1 |  | 66h | 2,787.5 | 2,787.5 |
| 199 | 6.11.3.1 | Sh front flange Fitup | 4h | 2018-09-03 11:30 | 2018-09-03 15:30 | 32, 197 | 2018-08-10 11:30 | 2018-08-10 15:30 | 4h | 36d | 0d | TEAM_2Shift_Calendar-1 | Helper [200%]; SAW Welder; SMAW Welding Machine; Forging Non-Std (Cost) [0.1%]; Fitter | 20h | 950 | 950 |
| 200 | 6.11.3.2 | Fitup Inspection | 2h | 2018-09-03 15:30 | 2018-09-03 17:30 | 199 | 2018-08-10 15:30 | 2018-08-10 17:30 | 2h | 36d | 0d | TEAM_2Shift_Calendar-1 | QC Engineer; Fitter | 4h | 137.5 | 137.5 |
| 201 | 6.11.3.3 | Welding | 7h | 2018-09-03 17:30 | 2018-09-04 08:30 | 200 | 2018-08-10 17:30 | 2018-08-13 08:30 | 7h | 36d | 0d | TEAM_2Shift_Calendar-1 | SAW Welder; SMAW Welding Machine; Helper [200%] | 28h | 1,181.25 | 1,181.25 |
| 202 | 6.11.3.4 | Back Chip | 3h | 2018-09-04 08:30 | 2018-09-04 11:30 | 201 | 2018-08-13 08:30 | 2018-08-13 11:30 | 3h | 36d | 0d | TEAM_2Shift_Calendar-1 | Grinding Machine; Grinder | 6h | 168.75 | 168.75 |
| 203 | 6.11.3.5 | Inner Flush Grind | 2h | 2018-09-04 11:30 | 2018-09-04 13:30 | 202 | 2018-08-13 11:30 | 2018-08-13 13:30 | 2h | 36d | 0d | TEAM_2Shift_Calendar-1 | Grinding Machine; Grinder | 4h | 112.5 | 112.5 |
| 204 | 6.11.3.6 | DP Check | 2h | 2018-09-04 13:30 | 2018-09-04 15:30 | 203 | 2018-08-13 13:30 | 2018-08-13 15:30 | 2h | 36d | 0d | TEAM_2Shift_Calendar-1 | Helper; Fitter | 4h | 237.5 | 237.5 |
| 205 | 6.11.3.7 | Radiography | 1d | 2018-09-04 15:30 | 2018-09-05 07:30 | 204 | 2018-08-13 15:30 | 2018-08-14 07:30 | 1d | 36d | 0d | TEAM_2Shift_Calendar-1 | SC Radiography (Cost) [0.1%] |  |  |  |
| 206 | 6.11.4 | **Shell to Rear Flg Welding** | 3.62d | 2018-09-05 07:30 | 2018-09-06 20:30 |  | 2018-08-14 07:30 | 2018-08-16 20:30 | 3.62d | 36d | 0d | TEAM_2Shift_Calendar-1 |  | 65h | 2,753.12 | 2,753.12 |
| 207 | 6.11.4.1 | Sh front flange Fitup | 4h | 2018-09-05 07:30 | 2018-09-05 11:30 | 205, 32 | 2018-08-14 07:30 | 2018-08-14 11:30 | 4h | 36d | 0d | TEAM_2Shift_Calendar-1 | Helper [200%]; SAW Welder; SMAW Welding Machine; Forging Non-Std (Cost) [0.1%]; Fitter | 20h | 950 | 950 |
| 208 | 6.11.4.2 | Fitup Inspection | 3h | 2018-09-05 11:30 | 2018-09-05 14:30 | 207 | 2018-08-14 11:30 | 2018-08-14 14:30 | 3h | 36d | 0d | TEAM_2Shift_Calendar-1 | QC Engineer; Fitter | 3h | 103.12 | 103.12 |
| 209 | 6.11.4.3 | Welding | 7h | 2018-09-05 14:30 | 2018-09-05 21:30 | 208 | 2018-08-14 14:30 | 2018-08-14 21:30 | 7h | 36d | 0d | TEAM_2Shift_Calendar-1 | SAW Welder; SMAW Welding Machine; Helper [200%] | 28h | 1,181.25 | 1,181.25 |
| 210 | 6.11.4.4 | Back Chip | 3h | 2018-09-05 21:30 | 2018-09-06 08:30 | 209 | 2018-08-14 21:30 | 2018-08-16 08:30 | 3h | 36d | 0d | TEAM_2Shift_Calendar-1 | Grinding Machine; Grinder | 6h | 168.75 | 168.75 |
| 211 | 6.11.4.5 | Inner Flush Grind | 2h | 2018-09-06 08:30 | 2018-09-06 10:30 | 210 | 2018-08-16 08:30 | 2018-08-16 10:30 | 2h | 36d | 0d | TEAM_2Shift_Calendar-1 | Grinding Machine; Grinder | 4h | 112.5 | 112.5 |
| 212 | 6.11.4.6 | DP Check | 2h | 2018-09-06 10:30 | 2018-09-06 12:30 | 211 | 2018-08-16 10:30 | 2018-08-16 12:30 | 2h | 36d | 0d | TEAM_2Shift_Calendar-1 | Helper; Fitter | 4h | 237.5 | 237.5 |
| 213 | 6.11.4.7 | Radiography | 1d | 2018-09-06 12:30 | 2018-09-06 20:30 | 212 | 2018-08-16 12:30 | 2018-08-16 20:30 | 1d | 36d |  | TEAM_2Shift_Calendar-1 | SC Radiography (Cost) [0.1%] |  |  |  |

| ID | WBS | Task | Duration | Start | Finish | Predecessors | Baseline start | Baseline finish | Baseline duration | Total slack | Free slack | Calendar | Resources | Work | Cost | Baseline cost |
| --- | --- | --- | --- | --- | --- | --- | --- | --- | --- | --- | --- | --- | --- | --- | --- | --- |
| 214 | 6.11.5 | **Nozzle Welding** | 4d | 2018-09-06 20:30 | 2018-09-10 20:30 |  | 2018-08-16 20:30 | 2018-08-18 20:30 | 4d | 36d |  | TEAM_2Shift_Calendar-1 |  | 84h | 3,553.12 | 3,553.12 |
| 215 | 6.11.5.1 | Sh Nozzle Opening- S1 | 3h | 2018-09-06 20:30 | 2018-09-07 07:30 | 91, 206, 198 | 2018-08-16 20:30 | 2018-08-17 07:30 | 3h | 36d | 0d | TEAM_2Shift_Calendar-1 | Gas Cutter; OAGM; Helper | 9h | 356.25 | 356.25 |
| 216 | 6.11.5.2 | Sh Nozzle Opening- S1 EP | 3h | 2018-09-07 07:30 | 2018-09-07 10:30 | 215 | 2018-08-17 07:30 | 2018-08-17 10:30 | 3h | 36d | 0d | TEAM_2Shift_Calendar-1 | Grinding Machine; Grinder | 6h | 168.75 | 168.75 |
| 217 | 6.11.5.3 | Sh Nozzle RF Pad Fitup-1 Nos | 4h | 2018-09-07 10:30 | 2018-09-07 14:30 | 216 | 2018-08-17 10:30 | 2018-08-17 14:30 | 4h | 36d | 0d | TEAM_2Shift_Calendar-1 | Helper; SAW Welder; SMAW Welding Machine; Fitter | 16h | 750 | 750 |
| 218 | 6.11.5.4 | Sh Nozzle RF Pad Fitup Inspection | 3h | 2018-09-07 14:30 | 2018-09-07 17:30 | 217 | 2018-08-17 14:30 | 2018-08-17 17:30 | 3h | 36d | 0d | TEAM_2Shift_Calendar-1 | QC Engineer; Fitter | 3h | 103.12 | 103.12 |
| 219 | 6.11.5.5 | Sh Nozzle RF Pad Welding - 1No | 5h | 2018-09-07 17:30 | 2018-09-10 06:30 | 218 | 2018-08-17 17:30 | 2018-08-18 06:30 | 5h | 36.12d | 0d | TEAM_2Shift_Calendar-1 | SAW Welder; SMAW Welding Machine; Helper | 15h | 593.75 | 593.75 |
| 220 | 6.11.5.6 | Sh Nozzle RF Pad Air Leak Test | 3h | 2018-09-10 06:30 | 2018-09-10 09:30 | 219 | 2018-08-18 06:30 | 2018-08-18 09:30 | 3h | 36.12d | 0d | TEAM_2Shift_Calendar-1 | Helper; Fitter | 6h | 356.25 | 356.25 |
| 221 | 6.11.5.7 | Sh Nozzle Fitup(S1-6'') | 2h | 2018-09-10 09:30 | 2018-09-10 11:30 | 220 | 2018-08-18 09:30 | 2018-08-18 11:30 | 2h | 36.12d | 0d | TEAM_2Shift_Calendar-1 | Helper; SAW Welder; SMAW Welding Machine; Fitter | 8h | 375 | 375 |
| 222 | 6.11.5.8 | Sh Nozzle Fitup Inspection | 3h | 2018-09-10 11:30 | 2018-09-10 14:30 | 221 | 2018-08-18 11:30 | 2018-08-18 14:30 | 3h | 36.12d | 0d | TEAM_2Shift_Calendar-1 | QC Engineer; Fitter | 4h | 137.5 | 137.5 |
| 223 | 6.11.5.9 | Sh Nozzle Welding Arrangement | 1h | 2018-09-10 14:30 | 2018-09-10 15:30 | 222 | 2018-08-18 14:30 | 2018-08-18 15:30 | 1h | 36.12d | 0d | TEAM_2Shift_Calendar-1 | Helper; Fitter | 2h | 118.75 | 118.75 |
| 224 | 6.11.5.10 | Sh Nozzle Welding | 5h | 2018-09-10 15:30 | 2018-09-10 20:30 | 223 | 2018-08-18 15:30 | 2018-08-18 20:30 | 5h | 36.12d | 0d | TEAM_2Shift_Calendar-1 | SAW Welder; SMAW Welding Machine; Helper | 15h | 593.75 | 593.75 |
| 225 | 6.11.6 | **Other Components Welding** | 4.12d | 2018-09-10 20:30 | 2018-09-12 21:30 |  | 2018-08-18 20:30 | 2018-08-21 21:30 | 4.12d | 36.12d |  | TEAM_2Shift_Calendar-1 |  | 119h | 5,262.5 | 5,262.5 |
| 226 | 6.11.6.1 | Sh+Saddle Pad Fitup | 6h | 2018-09-10 20:30 | 2018-09-11 10:30 | 106, 118, 224 | 2018-08-18 20:30 | 2018-08-20 10:30 | 6h | 36.12d | 0d | TEAM_2Shift_Calendar-1 | Helper [200%]; SAW Welder; SMAW Welding Machine; Fitter | 30h | 1,425 | 1,425 |
| 227 | 6.11.6.2 | Sh+Saddle Pad Welding Arrangement | 3h | 2018-09-11 10:30 | 2018-09-11 13:30 | 226 | 2018-08-20 10:30 | 2018-08-20 13:30 | 3h | 36.12d | 0d | TEAM_2Shift_Calendar-1 | Helper; Fitter | 6h | 356.25 | 356.25 |
| 228 | 6.11.6.3 | Sh+Saddle Pad Welding | 10h | 2018-09-11 13:30 | 2018-09-12 07:30 | 227 | 2018-08-20 13:30 | 2018-08-21 07:30 | 10h | 36.12d | 0d | TEAM_2Shift_Calendar-1 | SAW Welder; SMAW Welding Machine; Helper [200%] | 40h | 1,687.5 | 1,687.5 |
| 229 | 6.11.6.4 | Sh Insulation Cleat Marking | 2h | 2018-09-12 07:30 | 2018-09-12 09:30 | 228 | 2018-08-21 07:30 | 2018-08-21 09:30 | 2h | 36.12d | 0d | TEAM_2Shift_Calendar-1 | Helper; Fitter | 4h | 237.5 | 237.5 |
| 230 | 6.11.6.5 | Sh Insulation Cleat Fitup | 3h | 2018-09-12 09:30 | 2018-09-12 12:30 | 229 | 2018-08-21 09:30 | 2018-08-21 12:30 | 3h | 36.12d | 0d | TEAM_2Shift_Calendar-1 | Helper [200%]; SAW Welder; SMAW Welding Machine; Fitter | 15h | 712.5 | 712.5 |
| 231 | 6.11.6.6 | Sh Insulation Cleat welding | 3h | 2018-09-12 12:30 | 2018-09-12 15:30 | 230 | 2018-08-21 12:30 | 2018-08-21 15:30 | 3h | 36.12d | 0d | TEAM_2Shift_Calendar-1 | SAW Welder; SMAW Welding Machine; Helper [200%] | 12h | 506.25 | 506.25 |
| 232 | 6.11.6.7 | Sh Final Dress Up | 6h | 2018-09-12 15:30 | 2018-09-12 21:30 | 231 | 2018-08-21 15:30 | 2018-08-21 21:30 | 6h | 36.12d | 0d | TEAM_2Shift_Calendar-1 | Grinding Machine; Grinder | 12h | 337.5 | 337.5 |
| 233 | 6.11.7 | **Final Works & Inspection** | 6.69d | 2018-09-12 21:30 | 2018-09-18 11:01 |  | 2018-08-21 21:30 | 2018-08-27 11:01 | 6.69d | 36.12d |  | TEAM_2Shift_Calendar-1 |  | 37h | 1,237.5 | 1,237.5 |
| 234 | 6.11.7.1 | Sh Dimensional Inspection | 0.5d | 2018-09-12 21:30 | 2018-09-14 09:31 | 232 | 2018-08-21 21:30 | 2018-08-22 09:31 | 0.5d | 36.12d | 0d | TEAM_2Shift_Calendar-1 | Fitter [200%] | 8h | 550 | 550 |
| 235 | 6.11.7.2 | Sh Clearance By TPI | 1d | 2018-09-14 09:31 | 2018-09-14 17:31 | 234 | 2018-08-22 09:31 | 2018-08-22 17:31 | 1d | 36.12d | 0d | TEAM_2Shift_Calendar-1 | TPI (Cost) [0.1%]; QC Engineer | 4h |  |  |
| 236 | 6.11.7.3 | Sh PWHT | 3d | 2018-09-14 17:31 | 2018-09-17 09:31 | 235 | 2018-08-22 17:31 | 2018-08-24 09:31 | 3d | 36.12d | 0d | TEAM_2Shift_Calendar-1 |  |  |  |  |
| 237 | 6.11.7.4 | Sh Receipt After PWHT | 3h | 2018-09-17 09:31 | 2018-09-17 12:31 | 236 | 2018-08-24 09:31 | 2018-08-24 12:31 | 3h | 36.12d | 0d | TEAM_2Shift_Calendar-1 | Helper; Crane; Store | 3h | 50 | 50 |
| 238 | 6.11.7.5 | Sh Sufrace Cleaning and DP check | 6h | 2018-09-17 12:31 | 2018-09-17 18:31 | 237 | 2018-08-24 12:31 | 2018-08-24 18:31 | 6h | 36.12d | 0d | TEAM_2Shift_Calendar-1 | Grinder; Grinding Machine; Helper | 18h | 637.5 | 637.5 |
| 239 | 6.11.7.6 | Sh NDE- TPI | 1.06d | 2018-09-17 18:31 | 2018-09-18 11:01 | 238 | 2018-08-24 18:31 | 2018-08-27 11:01 | 1.06d | 36.12d |  | TEAM_2Shift_Calendar-1 | TPI (Cost) [0.1%]; QC Engineer | 4h |  |  |

| ID | WBS | Task | Duration | Start | Finish | Predecessors | Baseline start | Baseline finish | Baseline duration | Total slack | Free slack | Calendar | Resources | Work | Cost | Baseline cost |
| --- | --- | --- | --- | --- | --- | --- | --- | --- | --- | --- | --- | --- | --- | --- | --- | --- |
| 240 | 6.12 | **Fabrication of Shell(Bottom)** | 55.94d | 2018-08-10 11:30 | 2018-09-18 11:01 |  | 2018-07-20 11:30 | 2018-08-27 11:01 | 55.94d | 36.12d |  | TEAM_2Shift_Calendar-1 |  | 460h | 19,428.12 | 19,428.12 |
| 241 | 6.12.1 | **Initial Preparation** | 9.56d | 2018-08-10 11:30 | 2018-08-18 08:00 |  | 2018-07-20 11:30 | 2018-07-26 08:00 | 9.56d | 70.44d |  | TEAM_2Shift_Calendar-1 |  | 69h | 2,762.5 | 2,762.5 |
| 242 | 6.12.1.1 | Marking | 3h | 2018-08-10 11:30 | 2018-08-10 14:30 | 30FS+10d | 2018-07-20 11:30 | 2018-07-20 14:30 | 3h | 70.44d | 0d | TEAM_2Shift_Calendar-1 | Helper; Plate (Cost) [0.1%]; Fitter | 6h | 356.25 | 356.25 |
| 243 | 6.12.1.2 | Stamping | 5.5h | 2018-08-14 06:30 | 2018-08-14 12:00 | 242FS+3d | 2018-07-23 06:30 | 2018-07-23 12:00 | 5.5h | 70.44d | 0d | TEAM_2Shift_Calendar-1 | QC Engineer; TPI (Cost) [0.1%]; Fitter | 6h | 206.25 | 206.25 |
| 244 | 6.12.1.3 | Sh LS Cutting | 3h | 2018-08-16 20:00 | 2018-08-17 07:00 | 243FS+3d | 2018-07-24 20:00 | 2018-07-25 07:00 | 3h | 70.44d | 0d | TEAM_2Shift_Calendar-1 | Gas Cutter; OAGM; Helper | 9h | 356.25 | 356.25 |
| 245 | 6.12.1.4 | Sh LS EP | 4h | 2018-08-17 07:00 | 2018-08-17 11:00 | 244 | 2018-07-25 07:00 | 2018-07-25 11:00 | 4h | 70.44d | 0d | TEAM_2Shift_Calendar-1 | Grinding Machine; Grinder | 8h | 225 | 225 |
| 246 | 6.12.1.5 | Sh LS Pre Bending | 4h | 2018-08-17 11:00 | 2018-08-17 15:00 | 245 | 2018-07-25 11:00 | 2018-07-25 15:00 | 4h | 70.44d | 0d | TEAM_2Shift_Calendar-1 | Helper; Plate Bending Machine; Fitter [200%] | 16h | 750 | 750 |
| 247 | 6.12.1.6 | Sh LS Pre Bend Cut Off | 2h | 2018-08-17 15:00 | 2018-08-17 17:00 | 246 | 2018-07-25 15:00 | 2018-07-25 17:00 | 2h | 70.44d | 0d | TEAM_2Shift_Calendar-1 | OAGM; Gas Cutter | 4h | 137.5 | 137.5 |
| 248 | 6.12.1.7 | Sh LS EP | 4h | 2018-08-17 17:00 | 2018-08-17 21:00 | 247 | 2018-07-25 17:00 | 2018-07-25 21:00 | 4h | 70.44d | 0d | TEAM_2Shift_Calendar-1 | Grinding Machine; Grinder | 8h | 225 | 225 |
| 249 | 6.12.1.8 | Sh LS Rolling | 3h | 2018-08-17 21:00 | 2018-08-18 08:00 | 248 | 2018-07-25 21:00 | 2018-07-26 08:00 | 3h | 70.44d | 0d | TEAM_2Shift_Calendar-1 | Helper [200%]; Rolling Machine; Fitter | 12h | 506.25 | 506.25 |
| 250 | 6.12.2 | **Fitup & Welding** | 4d | 2018-08-18 08:00 | 2018-08-21 08:00 |  | 2018-07-26 08:00 | 2018-07-30 08:00 | 4d | 70.44d |  | TEAM_2Shift_Calendar-1 |  | 63h | 2,993.75 | 2,993.75 |
| 251 | 6.12.2.1 | Sh LS Fitup | 4h | 2018-08-18 08:00 | 2018-08-18 12:00 | 249 | 2018-07-26 08:00 | 2018-07-26 12:00 | 4h | 70.44d | 0d | TEAM_2Shift_Calendar-1 | Helper; SAW Welder; Fitter | 12h | 750 | 750 |
| 252 | 6.12.2.2 | Sh LS Inspection | 2h | 2018-08-18 12:00 | 2018-08-18 14:00 | 251 | 2018-07-26 12:00 | 2018-07-26 14:00 | 2h | 70.44d | 0d | TEAM_2Shift_Calendar-1 | Fitter; QC Engineer | 2h | 68.75 | 68.75 |
| 253 | 6.12.2.3 | Sh LS Welding Arrangement | 2h | 2018-08-18 14:00 | 2018-08-18 16:00 | 252 | 2018-07-26 14:00 | 2018-07-26 16:00 | 2h | 70.44d | 0d | TEAM_2Shift_Calendar-1 | Helper; Fitter | 4h | 237.5 | 237.5 |
| 254 | 6.12.2.4 | Sh LS Welding | 6h | 2018-08-18 16:00 | 2018-08-18 22:00 | 253 | 2018-07-26 16:00 | 2018-07-26 22:00 | 6h | 70.44d | 0d | TEAM_2Shift_Calendar-1 | SAW Welder; SMAW Welding Machine; Helper [200%] | 24h | 1,012.5 | 1,012.5 |
| 255 | 6.12.2.5 | Sh LS Back Chip | 3h | 2018-08-20 06:00 | 2018-08-20 09:00 | 254 | 2018-07-27 06:00 | 2018-07-27 09:00 | 3h | 70.44d | 0d | TEAM_2Shift_Calendar-1 | Grinding Machine; Grinder | 6h | 168.75 | 168.75 |
| 256 | 6.12.2.6 | Sh LS Inner Flush Grind | 2h | 2018-08-20 09:00 | 2018-08-20 11:00 | 255 | 2018-07-27 09:00 | 2018-07-27 11:00 | 2h | 70.44d | 0d | TEAM_2Shift_Calendar-1 | Grinding Machine; Grinder | 4h | 112.5 | 112.5 |
| 257 | 6.12.2.7 | Sh LS DP Check | 2h | 2018-08-20 11:00 | 2018-08-20 13:00 | 256 | 2018-07-27 11:00 | 2018-07-27 13:00 | 2h | 70.44d | 0d | TEAM_2Shift_Calendar-1 | Fitter | 2h | 137.5 | 137.5 |
| 258 | 6.12.2.8 | Sh LS Re Rolling | 3h | 2018-08-20 13:00 | 2018-08-20 16:00 | 257 | 2018-07-27 13:00 | 2018-07-27 16:00 | 3h | 70.44d | 0d | TEAM_2Shift_Calendar-1 | Helper [200%]; Fitter | 9h | 506.25 | 506.25 |
| 259 | 6.12.2.9 | Sh LS Radiography | 1d | 2018-08-20 16:00 | 2018-08-21 08:00 | 258 | 2018-07-27 16:00 | 2018-07-30 08:00 | 1d | 70.44d | 20.44d | TEAM_2Shift_Calendar-1 | SC Radiography (Cost) [0.1%] |  |  |  |
| 260 | 6.12.3 | **Shell to Front Flg Welding** | 3.5d | 2018-09-03 11:30 | 2018-09-05 07:30 |  | 2018-08-10 11:30 | 2018-08-14 07:30 | 3.5d | 50d |  | TEAM_2Shift_Calendar-1 |  | 66h | 2,787.5 | 2,787.5 |
| 261 | 6.12.3.1 | Sh front flange Fitup | 4h | 2018-09-03 11:30 | 2018-09-03 15:30 | 259, 32 | 2018-08-10 11:30 | 2018-08-10 15:30 | 4h | 50d | 0d | TEAM_2Shift_Calendar-1 | Helper [200%]; SAW Welder; SMAW Welding Machine; Forging Non-Std (Cost) [0.1%]; Fitter | 20h | 950 | 950 |
| 262 | 6.12.3.2 | Fitup Inspection | 2h | 2018-09-03 15:30 | 2018-09-03 17:30 | 261 | 2018-08-10 15:30 | 2018-08-10 17:30 | 2h | 50d | 0d | TEAM_2Shift_Calendar-1 | QC Engineer; Fitter | 4h | 137.5 | 137.5 |
| 263 | 6.12.3.3 | Welding | 7h | 2018-09-03 17:30 | 2018-09-04 08:30 | 262 | 2018-08-10 17:30 | 2018-08-13 08:30 | 7h | 50.5d | 0d | TEAM_2Shift_Calendar-1 | SAW Welder; SMAW Welding Machine; Helper [200%] | 28h | 1,181.25 | 1,181.25 |
| 264 | 6.12.3.4 | Back Chip | 3h | 2018-09-04 08:30 | 2018-09-04 11:30 | 263 | 2018-08-13 08:30 | 2018-08-13 11:30 | 3h | 50.5d | 0d | TEAM_2Shift_Calendar-1 | Grinding Machine; Grinder | 6h | 168.75 | 168.75 |
| 265 | 6.12.3.5 | Inner Flush Grind | 2h | 2018-09-04 11:30 | 2018-09-04 13:30 | 264 | 2018-08-13 11:30 | 2018-08-13 13:30 | 2h | 50.5d | 0d | TEAM_2Shift_Calendar-1 | Grinding Machine; Grinder | 4h | 112.5 | 112.5 |
| 266 | 6.12.3.6 | DP Check | 2h | 2018-09-04 13:30 | 2018-09-04 15:30 | 265 | 2018-08-13 13:30 | 2018-08-13 15:30 | 2h | 50.5d | 0d | TEAM_2Shift_Calendar-1 | Helper; Fitter | 4h | 237.5 | 237.5 |
| 267 | 6.12.3.7 | Radiography | 1d | 2018-09-04 15:30 | 2018-09-05 07:30 | 266 | 2018-08-13 15:30 | 2018-08-14 07:30 | 1d | 50.5d | 0d | TEAM_2Shift_Calendar-1 | SC Radiography (Cost) [0.1%] |  |  |  |

| ID | WBS | Task | Duration | Start | Finish | Predecessors | Baseline start | Baseline finish | Baseline duration | Total slack | Free slack | Calendar | Resources | Work | Cost | Baseline cost |
| --- | --- | --- | --- | --- | --- | --- | --- | --- | --- | --- | --- | --- | --- | --- | --- | --- |
| 268 | 6.12.4 | **Shell to Rear Flg Welding** | 3.62d | 2018-09-05 07:30 | 2018-09-06 20:30 |  | 2018-08-14 07:30 | 2018-08-16 20:30 | 3.62d | 50.5d |  | TEAM_2Shift_Calendar-1 |  | 65h | 2,753.12 | 2,753.12 |
| 269 | 6.12.4.1 | Sh front flange Fitup | 4h | 2018-09-05 07:30 | 2018-09-05 11:30 | 267, 32 | 2018-08-14 07:30 | 2018-08-14 11:30 | 4h | 50.5d | 0d | TEAM_2Shift_Calendar-1 | Helper [200%]; SAW Welder; SMAW Welding Machine; Forging Non-Std (Cost) [0.1%]; Fitter | 20h | 950 | 950 |
| 270 | 6.12.4.2 | Fitup Inspection | 3h | 2018-09-05 11:30 | 2018-09-05 14:30 | 269 | 2018-08-14 11:30 | 2018-08-14 14:30 | 3h | 50.5d | 0d | TEAM_2Shift_Calendar-1 | QC Engineer; Fitter | 3h | 103.12 | 103.12 |
| 271 | 6.12.4.3 | Welding | 7h | 2018-09-05 14:30 | 2018-09-05 21:30 | 270 | 2018-08-14 14:30 | 2018-08-14 21:30 | 7h | 50.94d | 0d | TEAM_2Shift_Calendar-1 | SAW Welder; SMAW Welding Machine; Helper [200%] | 28h | 1,181.25 | 1,181.25 |
| 272 | 6.12.4.4 | Back Chip | 3h | 2018-09-05 21:30 | 2018-09-06 08:30 | 271 | 2018-08-14 21:30 | 2018-08-16 08:30 | 3h | 50.94d | 0d | TEAM_2Shift_Calendar-1 | Grinding Machine; Grinder | 6h | 168.75 | 168.75 |
| 273 | 6.12.4.5 | Inner Flush Grind | 2h | 2018-09-06 08:30 | 2018-09-06 10:30 | 272 | 2018-08-16 08:30 | 2018-08-16 10:30 | 2h | 50.94d | 0d | TEAM_2Shift_Calendar-1 | Grinding Machine; Grinder | 4h | 112.5 | 112.5 |
| 274 | 6.12.4.6 | DP Check | 2h | 2018-09-06 10:30 | 2018-09-06 12:30 | 273 | 2018-08-16 10:30 | 2018-08-16 12:30 | 2h | 50.94d | 0d | TEAM_2Shift_Calendar-1 | Helper; Fitter | 4h | 237.5 | 237.5 |
| 275 | 6.12.4.7 | Radiography | 1d | 2018-09-06 12:30 | 2018-09-06 20:30 | 274 | 2018-08-16 12:30 | 2018-08-16 20:30 | 1d | 50.94d |  | TEAM_2Shift_Calendar-1 | SC Radiography (Cost) [0.1%] |  |  |  |
| 276 | 6.12.5 | **Nozzle Welding** | 2.12d | 2018-09-06 20:30 | 2018-09-07 21:30 |  | 2018-08-16 20:30 | 2018-08-17 21:30 | 2.12d | 48.25d |  | TEAM_2Shift_Calendar-1 |  | 41h | 1,631.25 | 1,631.25 |
| 277 | 6.12.5.1 | Sh Nozzle Opening- S1 | 3h | 2018-09-06 20:30 | 2018-09-07 07:30 | 91, 206, 198 | 2018-08-16 20:30 | 2018-08-17 07:30 | 3h | 48.25d | 0d | TEAM_2Shift_Calendar-1 | Gas Cutter; OAGM; Helper | 9h | 356.25 | 356.25 |
| 278 | 6.12.5.2 | Sh Nozzle Opening- S1 EP | 3h | 2018-09-07 07:30 | 2018-09-07 10:30 | 277 | 2018-08-17 07:30 | 2018-08-17 10:30 | 3h | 48.25d | 0d | TEAM_2Shift_Calendar-1 | Grinding Machine; Grinder | 6h | 168.75 | 168.75 |
| 279 | 6.12.5.3 | Sh Nozzle Fitup(S1-6'') | 2h | 2018-09-07 10:30 | 2018-09-07 12:30 | 278 | 2018-08-17 10:30 | 2018-08-17 12:30 | 2h | 48.25d | 0d | TEAM_2Shift_Calendar-1 | Helper; SAW Welder; SMAW Welding Machine; Fitter | 8h | 375 | 375 |
| 280 | 6.12.5.4 | Sh Nozzle Fitup Inspection | 4h | 2018-09-07 12:30 | 2018-09-07 16:30 | 279 | 2018-08-17 12:30 | 2018-08-17 16:30 | 4h | 48.25d | 0d | TEAM_2Shift_Calendar-1 | QC Engineer; Fitter | 4h | 137.5 | 137.5 |
| 281 | 6.12.5.5 | Sh Nozzle Welding Arrangement | 1h | 2018-09-07 16:30 | 2018-09-07 17:30 | 280 | 2018-08-17 16:30 | 2018-08-17 17:30 | 1h | 48.81d | 0d | TEAM_2Shift_Calendar-1 | Helper; Fitter | 2h | 118.75 | 118.75 |
| 282 | 6.12.5.6 | Sh Nozzle Welding | 4h | 2018-09-07 17:30 | 2018-09-07 21:30 | 281 | 2018-08-17 17:30 | 2018-08-17 21:30 | 4h | 48.81d |  | TEAM_2Shift_Calendar-1 | SAW Welder; SMAW Welding Machine; Helper | 12h | 475 | 475 |
| 283 | 6.12.6 | **Other Components Welding** | 4.12d | 2018-09-10 20:30 | 2018-09-12 21:30 |  | 2018-08-18 20:30 | 2018-08-21 21:30 | 4.12d | 36.12d |  | TEAM_2Shift_Calendar-1 |  | 119h | 5,262.5 | 5,262.5 |
| 284 | 6.12.6.1 | Sh+Saddle Pad Fitup | 6h | 2018-09-10 20:30 | 2018-09-11 10:30 | 106, 118, 224 | 2018-08-18 20:30 | 2018-08-20 10:30 | 6h | 36.12d | 0d | TEAM_2Shift_Calendar-1 | Helper [200%]; SAW Welder; SMAW Welding Machine; Fitter | 30h | 1,425 | 1,425 |
| 285 | 6.12.6.2 | Sh+Saddle Pad Welding Arrangement | 3h | 2018-09-11 10:30 | 2018-09-11 13:30 | 284 | 2018-08-20 10:30 | 2018-08-20 13:30 | 3h | 36.12d | 0d | TEAM_2Shift_Calendar-1 | Helper; Fitter | 6h | 356.25 | 356.25 |
| 286 | 6.12.6.3 | Sh+Saddle Pad Welding | 10h | 2018-09-11 13:30 | 2018-09-12 07:30 | 285 | 2018-08-20 13:30 | 2018-08-21 07:30 | 10h | 36.12d | 0d | TEAM_2Shift_Calendar-1 | SAW Welder; SMAW Welding Machine; Helper [200%] | 40h | 1,687.5 | 1,687.5 |
| 287 | 6.12.6.4 | Sh Insulation Cleat Marking | 2h | 2018-09-12 07:30 | 2018-09-12 09:30 | 286 | 2018-08-21 07:30 | 2018-08-21 09:30 | 2h | 36.12d | 0d | TEAM_2Shift_Calendar-1 | Helper; Fitter | 4h | 237.5 | 237.5 |
| 288 | 6.12.6.5 | Sh Insulation Cleat Fitup | 3h | 2018-09-12 09:30 | 2018-09-12 12:30 | 287 | 2018-08-21 09:30 | 2018-08-21 12:30 | 3h | 36.12d | 0d | TEAM_2Shift_Calendar-1 | Helper [200%]; SAW Welder; SMAW Welding Machine; Fitter | 15h | 712.5 | 712.5 |
| 289 | 6.12.6.6 | Sh Insulation Cleat welding | 3h | 2018-09-12 12:30 | 2018-09-12 15:30 | 288 | 2018-08-21 12:30 | 2018-08-21 15:30 | 3h | 36.12d | 0d | TEAM_2Shift_Calendar-1 | SAW Welder; SMAW Welding Machine; Helper [200%] | 12h | 506.25 | 506.25 |
| 290 | 6.12.6.7 | Sh Final Dress Up | 6h | 2018-09-12 15:30 | 2018-09-12 21:30 | 289 | 2018-08-21 15:30 | 2018-08-21 21:30 | 6h | 36.12d | 0d | TEAM_2Shift_Calendar-1 | Grinding Machine; Grinder | 12h | 337.5 | 337.5 |
| 291 | 6.12.7 | **Final Works & Inspection** | 6.69d | 2018-09-12 21:30 | 2018-09-18 11:01 |  | 2018-08-21 21:30 | 2018-08-27 11:01 | 6.69d | 36.12d |  | TEAM_2Shift_Calendar-1 |  | 37h | 1,237.5 | 1,237.5 |
| 292 | 6.12.7.1 | Sh Dimensional Inspection | 0.5d | 2018-09-12 21:30 | 2018-09-14 09:31 | 290 | 2018-08-21 21:30 | 2018-08-22 09:31 | 0.5d | 36.12d | 0d | TEAM_2Shift_Calendar-1 | Fitter [200%] | 8h | 550 | 550 |
| 293 | 6.12.7.2 | Sh Clearance By TPI | 1d | 2018-09-14 09:31 | 2018-09-14 17:31 | 292 | 2018-08-22 09:31 | 2018-08-22 17:31 | 1d | 36.12d | 0d | TEAM_2Shift_Calendar-1 | TPI (Cost) [0.1%]; QC Engineer | 4h |  |  |
| 294 | 6.12.7.3 | Sh PWHT | 3d | 2018-09-14 17:31 | 2018-09-17 09:31 | 293 | 2018-08-22 17:31 | 2018-08-24 09:31 | 3d | 36.12d | 0d | TEAM_2Shift_Calendar-1 |  |  |  |  |
| 295 | 6.12.7.4 | Sh Receipt After PWHT | 3h | 2018-09-17 09:31 | 2018-09-17 12:31 | 294 | 2018-08-24 09:31 | 2018-08-24 12:31 | 3h | 36.12d | 0d | TEAM_2Shift_Calendar-1 | Helper; Crane; Store | 3h | 50 | 50 |
| 296 | 6.12.7.5 | Sh Sufrace Cleaning and DP check | 6h | 2018-09-17 12:31 | 2018-09-17 18:31 | 295 | 2018-08-24 12:31 | 2018-08-24 18:31 | 6h | 36.12d | 0d | TEAM_2Shift_Calendar-1 | Grinder; Grinding Machine; Helper | 18h | 637.5 | 637.5 |
| 297 | 6.12.7.6 | Sh NDE- TPI | 1.06d | 2018-09-17 18:31 | 2018-09-18 11:01 | 296 | 2018-08-24 18:31 | 2018-08-27 11:01 | 1.06d | 36.12d |  | TEAM_2Shift_Calendar-1 | TPI (Cost) [0.1%]; QC Engineer | 4h |  |  |

| ID | WBS | Task | Duration | Start | Finish | Predecessors | Baseline start | Baseline finish | Baseline duration | Total slack | Free slack | Calendar | Resources | Work | Cost | Baseline cost |
| --- | --- | --- | --- | --- | --- | --- | --- | --- | --- | --- | --- | --- | --- | --- | --- | --- |
| 298 | 6.13 | **Channel Fabrication(TOP)** | 44.88d | 2018-08-04 11:30 | 2018-09-03 18:32 |  | 2018-07-13 11:30 | 2018-08-10 18:32 | 44.88d | 57.18d |  | TEAM_2Shift_Calendar-1 |  | 398h | 16,531.25 | 16,531.25 |
| 299 | 6.13.1 | **Channel LS** | 14.19d | 2018-08-04 11:30 | 2018-08-14 13:00 |  | 2018-07-13 11:30 | 2018-07-23 13:00 | 14.19d | 77.38d | 11.88d | TEAM_2Shift_Calendar-1 |  | 92h | 3,693.75 | 3,693.75 |
| 300 | 6.13.1.1 | Ch Pl Marking | 3h | 2018-08-04 11:30 | 2018-08-04 14:30 | 30 | 2018-07-13 11:30 | 2018-07-13 14:30 | 3h | 77.38d | 0d | TEAM_2Shift_Calendar-1 | Helper; Plate (Cost) [0.1%]; Fitter | 6h | 356.25 | 356.25 |
| 301 | 6.13.1.2 | Ch Pl Stamping | 2h | 2018-08-06 14:30 | 2018-08-06 16:30 | 300FS+2d | 2018-07-16 14:30 | 2018-07-16 16:30 | 2h | 77.38d | 0d | TEAM_2Shift_Calendar-1 | TPI (Cost) [0.1%]; QC Engineer | 2h |  |  |
| 302 | 6.13.1.3 | Ch Pl Cutting | 2h | 2018-08-09 16:30 | 2018-08-09 18:30 | 301FS+6d | 2018-07-19 16:30 | 2018-07-19 18:30 | 2h | 77.38d | 0d | TEAM_2Shift_Calendar-1 | Gas Cutter; OAGM; Helper | 6h | 237.5 | 237.5 |
| 303 | 6.13.1.4 | Ch Pl EP | 3h | 2018-08-09 18:30 | 2018-08-09 21:30 | 302 | 2018-07-19 18:30 | 2018-07-19 21:30 | 3h | 77.38d | 0d | TEAM_2Shift_Calendar-1 | Grinding Machine; Grinder | 6h | 168.75 | 168.75 |
| 304 | 6.13.1.5 | Ch Pl Pre Bending | 4h | 2018-08-09 21:30 | 2018-08-10 09:30 | 303 | 2018-07-19 21:30 | 2018-07-20 09:30 | 4h | 77.38d | 0d | TEAM_2Shift_Calendar-1 | Helper [200%]; Plate Bending Machine; Fitter | 16h | 675 | 675 |
| 305 | 6.13.1.6 | Ch Pl Pre Bend Cut Off | 2h | 2018-08-10 09:30 | 2018-08-10 11:30 | 304 | 2018-07-20 09:30 | 2018-07-20 11:30 | 2h | 77.38d | 0d | TEAM_2Shift_Calendar-1 | OAGM; Gas Cutter | 4h | 137.5 | 137.5 |
| 306 | 6.13.1.7 | Ch Pl LS EP | 2h | 2018-08-10 11:30 | 2018-08-10 13:30 | 305 | 2018-07-20 11:30 | 2018-07-20 13:30 | 2h | 77.38d | 0d | TEAM_2Shift_Calendar-1 | Grinding Machine; Grinder | 4h | 112.5 | 112.5 |
| 307 | 6.13.1.8 | Ch Pl LS Rolling | 3h | 2018-08-10 13:30 | 2018-08-10 16:30 | 306 | 2018-07-20 13:30 | 2018-07-20 16:30 | 3h | 77.38d | 0d | TEAM_2Shift_Calendar-1 | Helper; Rolling Machine; Fitter | 9h | 356.25 | 356.25 |
| 308 | 6.13.1.9 | Ch Pl LS Fitup | 3h | 2018-08-10 16:30 | 2018-08-10 19:30 | 307 | 2018-07-20 16:30 | 2018-07-20 19:30 | 3h | 77.38d | 0d | TEAM_2Shift_Calendar-1 | Helper; SAW Welder; SMAW Welding Machine; Fitter | 12h | 562.5 | 562.5 |
| 309 | 6.13.1.10 | Ch Pl LS Fitup Inspection | 8.5h | 2018-08-10 19:30 | 2018-08-13 12:00 | 308 | 2018-07-20 19:30 | 2018-07-21 12:00 | 8.5h | 77.38d | 0d | TEAM_2Shift_Calendar-1 | QC Engineer; Fitter | 6h | 206.25 | 206.25 |
| 310 | 6.13.1.11 | Ch Pl LS Welding | 3h | 2018-08-13 12:00 | 2018-08-13 15:00 | 309 | 2018-07-21 12:00 | 2018-07-21 15:00 | 3h | 77.5d | 0d | TEAM_2Shift_Calendar-1 | SAW Welder; SMAW Welding Machine; Helper | 9h | 356.25 | 356.25 |
| 311 | 6.13.1.12 | Ch Pl LS Back Chip | 2h | 2018-08-13 15:00 | 2018-08-13 17:00 | 310 | 2018-07-21 15:00 | 2018-07-21 17:00 | 2h | 77.5d | 0d | TEAM_2Shift_Calendar-1 | Grinding Machine; Grinder | 4h | 112.5 | 112.5 |
| 312 | 6.13.1.13 | Ch Sh Inner Flush Grind | 1h | 2018-08-13 17:00 | 2018-08-13 18:00 | 311 | 2018-07-21 17:00 | 2018-07-21 18:00 | 1h | 77.5d | 0d | TEAM_2Shift_Calendar-1 | Grinding Machine; Grinder | 2h | 56.25 | 56.25 |
| 313 | 6.13.1.14 | Ch Sh Rerolling | 3h | 2018-08-13 18:00 | 2018-08-13 21:00 | 312 | 2018-07-21 18:00 | 2018-07-21 21:00 | 3h | 77.5d | 0d | TEAM_2Shift_Calendar-1 | Helper; Fitter | 6h | 356.25 | 356.25 |
| 314 | 6.13.1.15 | Ch Sh Radiography | 1d | 2018-08-13 21:00 | 2018-08-14 13:00 | 313 | 2018-07-21 21:00 | 2018-07-23 13:00 | 1d | 77.5d |  | TEAM_2Shift_Calendar-1 | SC Radiography (Cost) [0.1%] |  |  |  |
| 315 | 6.13.2 | **Channel to dish welding** | 1.25d | 2018-08-22 12:00 | 2018-08-23 15:00 |  | 2018-07-31 12:00 | 2018-08-01 15:00 | 1.25d | 32.62d |  |  |  | 33h | 1,481.25 | 1,481.25 |
| 316 | 6.13.2.1 | Ch to dish fit up | 4h | 2018-08-22 12:00 | 2018-08-22 16:00 | 299, 49 | 2018-07-31 12:00 | 2018-07-31 16:00 | 4h | 65.62d | 0d | TEAM_2Shift_Calendar-1 | Helper; SMAW Welder; SMAW Welding Machine; Fitter | 16h | 750 | 750 |
| 317 | 6.13.2.2 | Dp check | 2h | 2018-08-22 16:00 | 2018-08-22 18:00 | 316 | 2018-07-31 16:00 | 2018-07-31 18:00 | 2h | 65.62d | 0d | TEAM_2Shift_Calendar-1 | Fitter | 2h | 137.5 | 137.5 |
| 318 | 6.13.2.3 | welding | 5h | 2018-08-22 18:00 | 2018-08-23 07:00 | 317 | 2018-07-31 18:00 | 2018-08-01 07:00 | 5h | 65.62d | 0d | TEAM_2Shift_Calendar-1 | SMAW Welder; SMAW Welding Machine; Helper | 15h | 593.75 | 593.75 |
| 319 | 6.13.2.4 | Radiography | 1d | 2018-08-23 07:00 | 2018-08-23 15:00 | 318 | 2018-08-01 07:00 | 2018-08-01 15:00 | 1d | 65.62d | 0d | TEAM_2Shift_Calendar-1 | SC Radiography (Cost) [0.1%] |  |  |  |
| 320 | 6.13.3 | **Channel to flange Welding** | 7d | 2018-08-24 07:00 | 2018-08-29 15:01 |  | 2018-08-02 07:00 | 2018-08-06 15:01 | 7d | 65.62d |  | TEAM_2Shift_Calendar-1 |  | 94h | 4,206.25 | 4,206.25 |
| 321 | 6.13.3.1 | Ch Sh Orientation Marking | 4h | 2018-08-24 07:00 | 2018-08-24 11:00 | 319FS+1d | 2018-08-02 07:00 | 2018-08-02 11:00 | 4h | 65.62d | 0d | TEAM_2Shift_Calendar-1 | Helper [200%]; Forging Non-Std (Cost) [0.1%]; Fitter | 12h | 675 | 675 |
| 322 | 6.13.3.2 | Sh Extra Length Cutting | 3h | 2018-08-24 11:00 | 2018-08-24 14:00 | 321 | 2018-08-02 11:00 | 2018-08-02 14:00 | 3h | 65.62d | 0d | TEAM_2Shift_Calendar-1 | OAGM; Gas Cutter | 6h | 206.25 | 206.25 |
| 323 | 6.13.3.3 | Sh EP of Cir Side | 4h | 2018-08-24 14:00 | 2018-08-24 18:00 | 322 | 2018-08-02 14:00 | 2018-08-02 18:00 | 4h | 65.62d | 0d | TEAM_2Shift_Calendar-1 | Grinding Machine; Grinder | 8h | 225 | 225 |
| 324 | 6.13.3.4 | Ch Flg Fitup | 5h | 2018-08-27 18:00 | 2018-08-28 07:00 | 323FS+2d | 2018-08-03 18:00 | 2018-08-04 07:00 | 5h | 65.62d | 0d | TEAM_2Shift_Calendar-1 | Helper [200%]; SAW Welder; SMAW Welding Machine; Fitter | 25h | 1,187.5 | 1,187.5 |
| 325 | 6.13.3.5 | Ch Flg Fitup Inspection | 0.5d | 2018-08-28 07:00 | 2018-08-28 11:01 | 324 | 2018-08-04 07:00 | 2018-08-04 11:01 | 0.5d | 65.62d | 0d | TEAM_2Shift_Calendar-1 | Fitter [200%] | 8h | 550 | 550 |
| 326 | 6.13.3.6 | Ch Flg Welding | 6h | 2018-08-28 11:01 | 2018-08-28 17:01 | 325 | 2018-08-04 11:01 | 2018-08-04 17:01 | 6h | 65.62d | 0d | TEAM_2Shift_Calendar-1 | SAW Welder; SMAW Welding Machine; Helper [200%] | 24h | 1,012.5 | 1,012.5 |
| 327 | 6.13.3.7 | Ch Flg Back Chip | 5h | 2018-08-28 17:01 | 2018-08-29 06:01 | 326 | 2018-08-04 17:01 | 2018-08-06 06:01 | 5h | 65.62d | 0d | TEAM_2Shift_Calendar-1 | Grinding Machine; Grinder | 10h | 281.25 | 281.25 |
| 328 | 6.13.3.8 | Ch Flg Fitup DP Check | 1h | 2018-08-29 06:01 | 2018-08-29 07:01 | 327 | 2018-08-06 06:01 | 2018-08-06 07:01 | 1h | 65.62d | 0d | TEAM_2Shift_Calendar-1 | Fitter | 1h | 68.75 | 68.75 |
| 329 | 6.13.3.9 | Radiography | 1d | 2018-08-29 07:01 | 2018-08-29 15:01 | 328 | 2018-08-06 07:01 | 2018-08-06 15:01 | 1d | 65.62d |  | TEAM_2Shift_Calendar-1 | SC Radiography (Cost) [0.1%] |  |  |  |

| ID | WBS | Task | Duration | Start | Finish | Predecessors | Baseline start | Baseline finish | Baseline duration | Total slack | Free slack | Calendar | Resources | Work | Cost | Baseline cost |
| --- | --- | --- | --- | --- | --- | --- | --- | --- | --- | --- | --- | --- | --- | --- | --- | --- |
| 330 | 6.13.4 | **Nozzle Welding** | 5.69d | 2018-08-04 11:30 | 2018-08-08 09:00 |  | 2018-07-13 11:30 | 2018-07-18 09:00 | 5.69d | 84.62d |  | TEAM_2Shift_Calendar-1 |  | 100h | 4,218.75 | 4,218.75 |
| 331 | 6.13.4.1 | Ch Nozzle Opening- T2 | 3h | 2018-08-04 11:30 | 2018-08-04 14:30 | 34 | 2018-07-13 11:30 | 2018-07-13 14:30 | 3h | 84.62d | 0d | TEAM_2Shift_Calendar-1 | Gas Cutter; OAGM; Helper | 9h | 356.25 | 356.25 |
| 332 | 6.13.4.2 | Ch Nozzle EP T2 | 4h | 2018-08-04 14:30 | 2018-08-04 18:30 | 331 | 2018-07-13 14:30 | 2018-07-13 18:30 | 4h | 84.62d | 0d | TEAM_2Shift_Calendar-1 | Grinding Machine; Grinder | 8h | 225 | 225 |
| 333 | 6.13.4.3 | Ch Nozzle RF Pad Fitup | 3h | 2018-08-04 18:30 | 2018-08-04 21:30 | 332 | 2018-07-13 18:30 | 2018-07-13 21:30 | 3h | 84.62d | 0d | TEAM_2Shift_Calendar-1 | Helper [200%]; SAW Welder; SMAW Welding Machine; Fitter | 15h | 712.5 | 712.5 |
| 334 | 6.13.4.4 | Ch Nozzle RF Pad Fitup Inspection | 9h | 2018-08-04 21:30 | 2018-08-06 14:30 | 333 | 2018-07-13 21:30 | 2018-07-16 14:30 | 9h | 84.62d | 0d | TEAM_2Shift_Calendar-1 | QC Engineer; Fitter | 6h | 206.25 | 206.25 |
| 335 | 6.13.4.5 | Ch Nozzle RF Pad Welding - 1 No | 4h | 2018-08-06 14:30 | 2018-08-06 18:30 | 334 | 2018-07-16 14:30 | 2018-07-16 18:30 | 4h | 84.62d | 0d | TEAM_2Shift_Calendar-1 | SAW Welder; SMAW Welding Machine; Helper | 12h | 475 | 475 |
| 336 | 6.13.4.6 | Ch Nozzle RF Pad Air Leak Test | 2h | 2018-08-06 18:30 | 2018-08-06 20:30 | 335 | 2018-07-16 18:30 | 2018-07-16 20:30 | 2h | 84.62d | 0d | TEAM_2Shift_Calendar-1 | Helper; Fitter | 4h | 237.5 | 237.5 |
| 337 | 6.13.4.7 | Ch Nozzle Fitup T2 | 4h | 2018-08-06 20:30 | 2018-08-07 08:30 | 336 | 2018-07-16 20:30 | 2018-07-17 08:30 | 4h | 84.62d | 0d | TEAM_2Shift_Calendar-1 | Helper; SAW Welder; SMAW Welding Machine; Fitter | 16h | 750 | 750 |
| 338 | 6.13.4.8 | Ch Nozzle Fitup Inspection | 0.56d | 2018-08-07 08:30 | 2018-08-07 13:00 | 337 | 2018-07-17 08:30 | 2018-07-17 13:00 | 0.56d | 84.62d | 0d | TEAM_2Shift_Calendar-1 | QC Engineer; Fitter | 4h | 137.5 | 137.5 |
| 339 | 6.13.4.9 | Ch Nozzle Welding Arragement | 2h | 2018-08-07 13:00 | 2018-08-07 15:00 | 338 | 2018-07-17 13:00 | 2018-07-17 15:00 | 2h | 85.44d | 0d | TEAM_2Shift_Calendar-1 | Helper; Fitter | 4h | 237.5 | 237.5 |
| 340 | 6.13.4.10 | Ch Nozzle Fitup Welding | 5h | 2018-08-07 15:00 | 2018-08-07 20:00 | 339 | 2018-07-17 15:00 | 2018-07-17 20:00 | 5h | 85.44d | 0d | TEAM_2Shift_Calendar-1 | SAW Welder; SMAW Welding Machine; Helper | 12h | 475 | 475 |
| 341 | 6.13.4.11 | Ch Nozzle Welding- Inner Grinding | 3h | 2018-08-07 20:00 | 2018-08-08 07:00 | 340 | 2018-07-17 20:00 | 2018-07-18 07:00 | 3h | 85.44d | 0d | TEAM_2Shift_Calendar-1 | Grinding Machine; Grinder | 6h | 168.75 | 168.75 |
| 342 | 6.13.4.12 | Ch Nozzle Welding- Inner DP Check | 2h | 2018-08-08 07:00 | 2018-08-08 09:00 | 341 | 2018-07-18 07:00 | 2018-07-18 09:00 | 2h | 85.44d | 29.44d | TEAM_2Shift_Calendar-1 | Helper; Fitter | 4h | 237.5 | 237.5 |
| 343 | 6.13.5 | **Other Components Welding** | 9.75d | 2018-08-28 20:30 | 2018-09-03 18:32 |  | 2018-08-04 20:30 | 2018-08-10 18:32 | 9.75d | 56d |  | TEAM_2Shift_Calendar-1 |  | 79h | 2,931.25 | 2,931.25 |
| 344 | 6.13.5.1 | Ch Lifting Lug Pad Fitup | 3h | 2018-08-28 20:30 | 2018-08-29 07:30 | 167, 342 | 2018-08-04 20:30 | 2018-08-06 07:30 | 3h | 56d | 0d | TEAM_2Shift_Calendar-1 | Helper; SAW Welder; SMAW Welding Machine; Fitter | 12h | 562.5 | 562.5 |
| 345 | 6.13.5.2 | Ch Lifting Lug Pad Weld Arrangement | 1h | 2018-08-29 07:30 | 2018-08-29 08:30 | 344 | 2018-08-06 07:30 | 2018-08-06 08:30 | 1h | 56d | 0d | TEAM_2Shift_Calendar-1 | Helper; Fitter | 2h | 118.75 | 118.75 |
| 346 | 6.13.5.3 | Ch Lifting Lug Pad Welding | 3h | 2018-08-29 08:30 | 2018-08-29 11:30 | 345 | 2018-08-06 08:30 | 2018-08-06 11:30 | 3h | 56d | 0d | TEAM_2Shift_Calendar-1 | SAW Welder; SMAW Welding Machine; Helper | 9h | 356.25 | 356.25 |
| 347 | 6.13.5.4 | Ch Lifting Lug Fitup | 3h | 2018-08-29 11:30 | 2018-08-29 14:30 | 346 | 2018-08-06 11:30 | 2018-08-06 14:30 | 3h | 56d | 0d | TEAM_2Shift_Calendar-1 | Helper; SAW Welder; SMAW Welding Machine; Fitter | 12h | 562.5 | 562.5 |
| 348 | 6.13.5.5 | Ch Lifting Lug Welding | 3h | 2018-08-29 14:30 | 2018-08-29 17:30 | 347 | 2018-08-06 14:30 | 2018-08-06 17:30 | 3h | 56d | 0d | TEAM_2Shift_Calendar-1 | SAW Welder; SMAW Welding Machine; Helper | 9h | 356.25 | 356.25 |
| 349 | 6.13.5.6 | Ch Final Dress Up | 5h | 2018-08-29 17:30 | 2018-08-30 06:30 | 348 | 2018-08-06 17:30 | 2018-08-07 06:30 | 5h | 56d | 0d | TEAM_2Shift_Calendar-1 | Grinding Machine; Grinder | 10h | 281.25 | 281.25 |
| 350 | 6.13.5.7 | Ch Dimesional Inspection | 0.5d | 2018-08-30 06:30 | 2018-08-30 10:31 | 349 | 2018-08-07 06:30 | 2018-08-07 10:31 | 0.5d | 56d | 0d | TEAM_2Shift_Calendar-1 | Fitter | 4h | 275 | 275 |
| 351 | 6.13.5.8 | Ch Clearenec By TPI | 1d | 2018-08-30 10:31 | 2018-08-30 18:31 | 350 | 2018-08-07 10:31 | 2018-08-07 18:31 | 1d | 56d | 0d | TEAM_2Shift_Calendar-1 | TPI (Cost) [0.1%]; QC Engineer | 4h |  |  |
| 352 | 6.13.5.9 | Ch PWHT | 3d | 2018-08-30 18:31 | 2018-09-01 10:31 | 351 | 2018-08-07 18:31 | 2018-08-09 10:31 | 3d | 56.56d | 0d | TEAM_2Shift_Calendar-1 |  |  |  |  |
| 353 | 6.13.5.10 | Ch Receipt After PWHT | 1d | 2018-09-01 10:31 | 2018-09-01 18:31 | 352 | 2018-08-09 10:31 | 2018-08-09 18:31 | 1d | 56.56d | 0d | TEAM_2Shift_Calendar-1 | Helper; Crane | 4h | 100 | 100 |
| 354 | 6.13.5.11 | Ch Sufrace Cleaning and DP check | 1d | 2018-09-01 18:31 | 2018-09-03 10:32 | 353 | 2018-08-09 18:31 | 2018-08-10 10:32 | 1d | 56.56d | 0d | TEAM_2Shift_Calendar-1 | Grinder; Grinding Machine; Helper | 9h | 318.75 | 318.75 |
| 355 | 6.13.5.12 | Ch NDE- TPI | 1d | 2018-09-03 10:32 | 2018-09-03 18:32 | 354 | 2018-08-10 10:32 | 2018-08-10 18:32 | 1d | 56.56d |  | TEAM_2Shift_Calendar-1 | TPI (Cost) [0.1%]; QC Engineer | 4h |  |  |

| ID | WBS | Task | Duration | Start | Finish | Predecessors | Baseline start | Baseline finish | Baseline duration | Total slack | Free slack | Calendar | Resources | Work | Cost | Baseline cost |
| --- | --- | --- | --- | --- | --- | --- | --- | --- | --- | --- | --- | --- | --- | --- | --- | --- |
| 356 | 6.14 | **Channel Fabrication(Bottom)** | 44.88d | 2018-08-04 11:30 | 2018-09-03 18:32 |  | 2018-07-13 11:30 | 2018-08-10 18:32 | 44.88d | 57.18d |  | TEAM_2Shift_Calendar-1 |  | 398h | 16,531.25 | 16,531.25 |
| 357 | 6.14.1 | **Channel LS** | 14.19d | 2018-08-04 11:30 | 2018-08-14 13:00 |  | 2018-07-13 11:30 | 2018-07-23 13:00 | 14.19d | 77.38d | 11.88d | TEAM_2Shift_Calendar-1 |  | 92h | 3,693.75 | 3,693.75 |
| 358 | 6.14.1.1 | Ch Pl Marking | 3h | 2018-08-04 11:30 | 2018-08-04 14:30 | 30 | 2018-07-13 11:30 | 2018-07-13 14:30 | 3h | 77.38d | 0d | TEAM_2Shift_Calendar-1 | Helper; Fitter | 6h | 356.25 | 356.25 |
| 359 | 6.14.1.2 | Ch Pl Stamping | 2h | 2018-08-06 14:30 | 2018-08-06 16:30 | 358FS+2d | 2018-07-16 14:30 | 2018-07-16 16:30 | 2h | 77.38d | 0d | TEAM_2Shift_Calendar-1 | TPI (Cost) [0.1%]; QC Engineer | 2h |  |  |
| 360 | 6.14.1.3 | Ch Pl Cutting | 2h | 2018-08-09 16:30 | 2018-08-09 18:30 | 359FS+6d | 2018-07-19 16:30 | 2018-07-19 18:30 | 2h | 77.38d | 0d | TEAM_2Shift_Calendar-1 | Gas Cutter; OAGM; Helper | 6h | 237.5 | 237.5 |
| 361 | 6.14.1.4 | Ch Pl EP | 3h | 2018-08-09 18:30 | 2018-08-09 21:30 | 360 | 2018-07-19 18:30 | 2018-07-19 21:30 | 3h | 77.38d | 0d | TEAM_2Shift_Calendar-1 | Grinding Machine; Grinder | 6h | 168.75 | 168.75 |
| 362 | 6.14.1.5 | Ch Pl Pre Bending | 4h | 2018-08-09 21:30 | 2018-08-10 09:30 | 361 | 2018-07-19 21:30 | 2018-07-20 09:30 | 4h | 77.38d | 0d | TEAM_2Shift_Calendar-1 | Helper [200%]; Plate Bending Machine; Fitter | 16h | 675 | 675 |
| 363 | 6.14.1.6 | Ch Pl Pre Bend Cut Off | 2h | 2018-08-10 09:30 | 2018-08-10 11:30 | 362 | 2018-07-20 09:30 | 2018-07-20 11:30 | 2h | 77.38d | 0d | TEAM_2Shift_Calendar-1 | OAGM; Gas Cutter | 4h | 137.5 | 137.5 |
| 364 | 6.14.1.7 | Ch Pl LS EP | 2h | 2018-08-10 11:30 | 2018-08-10 13:30 | 363 | 2018-07-20 11:30 | 2018-07-20 13:30 | 2h | 77.38d | 0d | TEAM_2Shift_Calendar-1 | Grinding Machine; Grinder | 4h | 112.5 | 112.5 |
| 365 | 6.14.1.8 | Ch Pl LS Rolling | 3h | 2018-08-10 13:30 | 2018-08-10 16:30 | 364 | 2018-07-20 13:30 | 2018-07-20 16:30 | 3h | 77.38d | 0d | TEAM_2Shift_Calendar-1 | Helper; Rolling Machine; Fitter | 9h | 356.25 | 356.25 |
| 366 | 6.14.1.9 | Ch Pl LS Fitup | 3h | 2018-08-10 16:30 | 2018-08-10 19:30 | 365 | 2018-07-20 16:30 | 2018-07-20 19:30 | 3h | 77.38d | 0d | TEAM_2Shift_Calendar-1 | Helper; SAW Welder; SMAW Welding Machine; Fitter | 12h | 562.5 | 562.5 |
| 367 | 6.14.1.10 | Ch Pl LS Fitup Inspection | 8.5h | 2018-08-10 19:30 | 2018-08-13 12:00 | 366 | 2018-07-20 19:30 | 2018-07-21 12:00 | 8.5h | 77.38d | 0d | TEAM_2Shift_Calendar-1 | QC Engineer; Fitter | 6h | 206.25 | 206.25 |
| 368 | 6.14.1.11 | Ch Pl LS Welding | 3h | 2018-08-13 12:00 | 2018-08-13 15:00 | 367 | 2018-07-21 12:00 | 2018-07-21 15:00 | 3h | 77.5d | 0d | TEAM_2Shift_Calendar-1 | SAW Welder; SMAW Welding Machine; Helper | 9h | 356.25 | 356.25 |
| 369 | 6.14.1.12 | Ch Pl LS Back Chip | 2h | 2018-08-13 15:00 | 2018-08-13 17:00 | 368 | 2018-07-21 15:00 | 2018-07-21 17:00 | 2h | 77.5d | 0d | TEAM_2Shift_Calendar-1 | Grinding Machine; Grinder | 4h | 112.5 | 112.5 |
| 370 | 6.14.1.13 | Ch Sh Inner Flush Grind | 1h | 2018-08-13 17:00 | 2018-08-13 18:00 | 369 | 2018-07-21 17:00 | 2018-07-21 18:00 | 1h | 77.5d | 0d | TEAM_2Shift_Calendar-1 | Grinding Machine; Grinder | 2h | 56.25 | 56.25 |
| 371 | 6.14.1.14 | Ch Sh Rerolling | 3h | 2018-08-13 18:00 | 2018-08-13 21:00 | 370 | 2018-07-21 18:00 | 2018-07-21 21:00 | 3h | 77.5d | 0d | TEAM_2Shift_Calendar-1 | Helper; Fitter | 6h | 356.25 | 356.25 |
| 372 | 6.14.1.15 | Ch Sh Radiography | 1d | 2018-08-13 21:00 | 2018-08-14 13:00 | 371 | 2018-07-21 21:00 | 2018-07-23 13:00 | 1d | 77.5d |  | TEAM_2Shift_Calendar-1 | SC Radiography (Cost) [0.1%] |  |  |  |
| 373 | 6.14.2 | **Channel to dish welding** | 1.25d | 2018-08-22 12:00 | 2018-08-23 15:00 |  | 2018-07-31 12:00 | 2018-08-01 15:00 | 1.25d | 32.62d |  |  |  | 33h | 1,481.25 | 1,481.25 |
| 374 | 6.14.2.1 | Ch to dish fit up | 4h | 2018-08-22 12:00 | 2018-08-22 16:00 | 357, 49 | 2018-07-31 12:00 | 2018-07-31 16:00 | 4h | 65.62d | 0d | TEAM_2Shift_Calendar-1 | Helper; SMAW Welder; SMAW Welding Machine; Fitter | 16h | 750 | 750 |
| 375 | 6.14.2.2 | Dp check | 2h | 2018-08-22 16:00 | 2018-08-22 18:00 | 374 | 2018-07-31 16:00 | 2018-07-31 18:00 | 2h | 65.62d | 0d | TEAM_2Shift_Calendar-1 | Fitter | 2h | 137.5 | 137.5 |
| 376 | 6.14.2.3 | welding | 5h | 2018-08-22 18:00 | 2018-08-23 07:00 | 375 | 2018-07-31 18:00 | 2018-08-01 07:00 | 5h | 65.62d | 0d | TEAM_2Shift_Calendar-1 | SMAW Welder; SMAW Welding Machine; Helper | 15h | 593.75 | 593.75 |
| 377 | 6.14.2.4 | Radiography | 1d | 2018-08-23 07:00 | 2018-08-23 15:00 | 376 | 2018-08-01 07:00 | 2018-08-01 15:00 | 1d | 65.62d | 0d | TEAM_2Shift_Calendar-1 | SC Radiography (Cost) [0.1%] |  |  |  |
| 378 | 6.14.3 | **Channel to flange Welding** | 7d | 2018-08-24 07:00 | 2018-08-29 15:01 |  | 2018-08-02 07:00 | 2018-08-06 15:01 | 7d | 65.62d |  | TEAM_2Shift_Calendar-1 |  | 94h | 4,206.25 | 4,206.25 |
| 379 | 6.14.3.1 | Ch Sh Orientation Marking | 4h | 2018-08-24 07:00 | 2018-08-24 11:00 | 377FS+1d | 2018-08-02 07:00 | 2018-08-02 11:00 | 4h | 65.62d | 0d | TEAM_2Shift_Calendar-1 | Helper [200%]; Fitter | 12h | 675 | 675 |
| 380 | 6.14.3.2 | Sh Extra Length Cutting | 3h | 2018-08-24 11:00 | 2018-08-24 14:00 | 379 | 2018-08-02 11:00 | 2018-08-02 14:00 | 3h | 65.62d | 0d | TEAM_2Shift_Calendar-1 | OAGM; Gas Cutter | 6h | 206.25 | 206.25 |
| 381 | 6.14.3.3 | Sh EP of Cir Side | 4h | 2018-08-24 14:00 | 2018-08-24 18:00 | 380 | 2018-08-02 14:00 | 2018-08-02 18:00 | 4h | 65.62d | 0d | TEAM_2Shift_Calendar-1 | Grinding Machine; Grinder | 8h | 225 | 225 |
| 382 | 6.14.3.4 | Ch Flg Fitup | 5h | 2018-08-27 18:00 | 2018-08-28 07:00 | 381FS+2d | 2018-08-03 18:00 | 2018-08-04 07:00 | 5h | 65.62d | 0d | TEAM_2Shift_Calendar-1 | Helper [200%]; SAW Welder; SMAW Welding Machine; Fitter | 25h | 1,187.5 | 1,187.5 |
| 383 | 6.14.3.5 | Ch Flg Fitup Inspection | 0.5d | 2018-08-28 07:00 | 2018-08-28 11:01 | 382 | 2018-08-04 07:00 | 2018-08-04 11:01 | 0.5d | 65.62d | 0d | TEAM_2Shift_Calendar-1 | Fitter [200%] | 8h | 550 | 550 |
| 384 | 6.14.3.6 | Ch Flg Welding | 6h | 2018-08-28 11:01 | 2018-08-28 17:01 | 383 | 2018-08-04 11:01 | 2018-08-04 17:01 | 6h | 65.62d | 0d | TEAM_2Shift_Calendar-1 | SAW Welder; SMAW Welding Machine; Helper [200%] | 24h | 1,012.5 | 1,012.5 |
| 385 | 6.14.3.7 | Ch Flg Back Chip | 5h | 2018-08-28 17:01 | 2018-08-29 06:01 | 384 | 2018-08-04 17:01 | 2018-08-06 06:01 | 5h | 65.62d | 0d | TEAM_2Shift_Calendar-1 | Grinding Machine; Grinder | 10h | 281.25 | 281.25 |
| 386 | 6.14.3.8 | Ch Flg Fitup DP Check | 1h | 2018-08-29 06:01 | 2018-08-29 07:01 | 385 | 2018-08-06 06:01 | 2018-08-06 07:01 | 1h | 65.62d | 0d | TEAM_2Shift_Calendar-1 | Fitter | 1h | 68.75 | 68.75 |
| 387 | 6.14.3.9 | Radiography | 1d | 2018-08-29 07:01 | 2018-08-29 15:01 | 386 | 2018-08-06 07:01 | 2018-08-06 15:01 | 1d | 65.62d |  | TEAM_2Shift_Calendar-1 | SC Radiography (Cost) [0.1%] |  |  |  |

| ID | WBS | Task | Duration | Start | Finish | Predecessors | Baseline start | Baseline finish | Baseline duration | Total slack | Free slack | Calendar | Resources | Work | Cost | Baseline cost |
| --- | --- | --- | --- | --- | --- | --- | --- | --- | --- | --- | --- | --- | --- | --- | --- | --- |
| 388 | 6.14.4 | **Nozzle Welding** | 5.69d | 2018-08-04 11:30 | 2018-08-08 09:00 |  | 2018-07-13 11:30 | 2018-07-18 09:00 | 5.69d | 84.62d |  | TEAM_2Shift_Calendar-1 |  | 100h | 4,218.75 | 4,218.75 |
| 389 | 6.14.4.1 | Ch Nozzle Opening- T2 | 3h | 2018-08-04 11:30 | 2018-08-04 14:30 | 34 | 2018-07-13 11:30 | 2018-07-13 14:30 | 3h | 84.62d | 0d | TEAM_2Shift_Calendar-1 | Gas Cutter; OAGM; Helper | 9h | 356.25 | 356.25 |
| 390 | 6.14.4.2 | Ch Nozzle EP T2 | 4h | 2018-08-04 14:30 | 2018-08-04 18:30 | 389 | 2018-07-13 14:30 | 2018-07-13 18:30 | 4h | 84.62d | 0d | TEAM_2Shift_Calendar-1 | Grinding Machine; Grinder | 8h | 225 | 225 |
| 391 | 6.14.4.3 | Ch Nozzle RF Pad Fitup | 3h | 2018-08-04 18:30 | 2018-08-04 21:30 | 390 | 2018-07-13 18:30 | 2018-07-13 21:30 | 3h | 84.62d | 0d | TEAM_2Shift_Calendar-1 | Helper [200%]; SAW Welder; SMAW Welding Machine; Fitter | 15h | 712.5 | 712.5 |
| 392 | 6.14.4.4 | Ch Nozzle RF Pad Fitup Inspection | 9h | 2018-08-04 21:30 | 2018-08-06 14:30 | 391 | 2018-07-13 21:30 | 2018-07-16 14:30 | 9h | 84.62d | 0d | TEAM_2Shift_Calendar-1 | QC Engineer; Fitter | 6h | 206.25 | 206.25 |
| 393 | 6.14.4.5 | Ch Nozzle RF Pad Welding - 1 No | 4h | 2018-08-06 14:30 | 2018-08-06 18:30 | 392 | 2018-07-16 14:30 | 2018-07-16 18:30 | 4h | 84.62d | 0d | TEAM_2Shift_Calendar-1 | SAW Welder; SMAW Welding Machine; Helper | 12h | 475 | 475 |
| 394 | 6.14.4.6 | Ch Nozzle RF Pad Air Leak Test | 2h | 2018-08-06 18:30 | 2018-08-06 20:30 | 393 | 2018-07-16 18:30 | 2018-07-16 20:30 | 2h | 84.62d | 0d | TEAM_2Shift_Calendar-1 | Helper; Fitter | 4h | 237.5 | 237.5 |
| 395 | 6.14.4.7 | Ch Nozzle Fitup T2 | 4h | 2018-08-06 20:30 | 2018-08-07 08:30 | 394 | 2018-07-16 20:30 | 2018-07-17 08:30 | 4h | 84.62d | 0d | TEAM_2Shift_Calendar-1 | Helper; SAW Welder; SMAW Welding Machine; Fitter | 16h | 750 | 750 |
| 396 | 6.14.4.8 | Ch Nozzle Fitup Inspection | 0.56d | 2018-08-07 08:30 | 2018-08-07 13:00 | 395 | 2018-07-17 08:30 | 2018-07-17 13:00 | 0.56d | 84.62d | 0d | TEAM_2Shift_Calendar-1 | QC Engineer; Fitter | 4h | 137.5 | 137.5 |
| 397 | 6.14.4.9 | Ch Nozzle Welding Arragement | 2h | 2018-08-07 13:00 | 2018-08-07 15:00 | 396 | 2018-07-17 13:00 | 2018-07-17 15:00 | 2h | 85.44d | 0d | TEAM_2Shift_Calendar-1 | Helper; Fitter | 4h | 237.5 | 237.5 |
| 398 | 6.14.4.10 | Ch Nozzle Fitup Welding | 5h | 2018-08-07 15:00 | 2018-08-07 20:00 | 397 | 2018-07-17 15:00 | 2018-07-17 20:00 | 5h | 85.44d | 0d | TEAM_2Shift_Calendar-1 | SAW Welder; SMAW Welding Machine; Helper | 12h | 475 | 475 |
| 399 | 6.14.4.11 | Ch Nozzle Welding- Inner Grinding | 3h | 2018-08-07 20:00 | 2018-08-08 07:00 | 398 | 2018-07-17 20:00 | 2018-07-18 07:00 | 3h | 85.44d | 0d | TEAM_2Shift_Calendar-1 | Grinding Machine; Grinder | 6h | 168.75 | 168.75 |
| 400 | 6.14.4.12 | Ch Nozzle Welding- Inner DP Check | 2h | 2018-08-08 07:00 | 2018-08-08 09:00 | 399 | 2018-07-18 07:00 | 2018-07-18 09:00 | 2h | 85.44d | 29.44d | TEAM_2Shift_Calendar-1 | Helper; Fitter | 4h | 237.5 | 237.5 |
| 401 | 6.14.5 | **Other Components Welding** | 9.75d | 2018-08-28 20:30 | 2018-09-03 18:32 |  | 2018-08-04 20:30 | 2018-08-10 18:32 | 9.75d | 56d |  | TEAM_2Shift_Calendar-1 |  | 79h | 2,931.25 | 2,931.25 |
| 402 | 6.14.5.1 | Ch Lifting Lug Pad Fitup | 3h | 2018-08-28 20:30 | 2018-08-29 07:30 | 400, 167 | 2018-08-04 20:30 | 2018-08-06 07:30 | 3h | 56d | 0d | TEAM_2Shift_Calendar-1 | Helper; SAW Welder; SMAW Welding Machine; Fitter | 12h | 562.5 | 562.5 |
| 403 | 6.14.5.2 | Ch Lifting Lug Pad Weld Arrangement | 1h | 2018-08-29 07:30 | 2018-08-29 08:30 | 402 | 2018-08-06 07:30 | 2018-08-06 08:30 | 1h | 56d | 0d | TEAM_2Shift_Calendar-1 | Helper; Fitter | 2h | 118.75 | 118.75 |
| 404 | 6.14.5.3 | Ch Lifting Lug Pad Welding | 3h | 2018-08-29 08:30 | 2018-08-29 11:30 | 403 | 2018-08-06 08:30 | 2018-08-06 11:30 | 3h | 56d | 0d | TEAM_2Shift_Calendar-1 | SAW Welder; SMAW Welding Machine; Helper | 9h | 356.25 | 356.25 |
| 405 | 6.14.5.4 | Ch Lifting Lug Fitup | 3h | 2018-08-29 11:30 | 2018-08-29 14:30 | 404 | 2018-08-06 11:30 | 2018-08-06 14:30 | 3h | 56d | 0d | TEAM_2Shift_Calendar-1 | Helper; SAW Welder; SMAW Welding Machine; Fitter | 12h | 562.5 | 562.5 |
| 406 | 6.14.5.5 | Ch Lifting Lug Welding | 3h | 2018-08-29 14:30 | 2018-08-29 17:30 | 405 | 2018-08-06 14:30 | 2018-08-06 17:30 | 3h | 56d | 0d | TEAM_2Shift_Calendar-1 | SAW Welder; SMAW Welding Machine; Helper | 9h | 356.25 | 356.25 |
| 407 | 6.14.5.6 | Ch Final Dress Up | 5h | 2018-08-29 17:30 | 2018-08-30 06:30 | 406 | 2018-08-06 17:30 | 2018-08-07 06:30 | 5h | 56d | 0d | TEAM_2Shift_Calendar-1 | Grinding Machine; Grinder | 10h | 281.25 | 281.25 |
| 408 | 6.14.5.7 | Ch Dimesional Inspection | 0.5d | 2018-08-30 06:30 | 2018-08-30 10:31 | 407 | 2018-08-07 06:30 | 2018-08-07 10:31 | 0.5d | 56d | 0d | TEAM_2Shift_Calendar-1 | Fitter | 4h | 275 | 275 |
| 409 | 6.14.5.8 | Ch Clearenec By TPI | 1d | 2018-08-30 10:31 | 2018-08-30 18:31 | 408 | 2018-08-07 10:31 | 2018-08-07 18:31 | 1d | 56d | 0d | TEAM_2Shift_Calendar-1 | TPI (Cost) [0.1%]; QC Engineer | 4h |  |  |
| 410 | 6.14.5.9 | Ch PWHT | 3d | 2018-08-30 18:31 | 2018-09-01 10:31 | 409 | 2018-08-07 18:31 | 2018-08-09 10:31 | 3d | 56.56d | 0d | TEAM_2Shift_Calendar-1 |  |  |  |  |
| 411 | 6.14.5.10 | Ch Receipt After PWHT | 1d | 2018-09-01 10:31 | 2018-09-01 18:31 | 410 | 2018-08-09 10:31 | 2018-08-09 18:31 | 1d | 56.56d | 0d | TEAM_2Shift_Calendar-1 | Helper; Crane | 4h | 100 | 100 |
| 412 | 6.14.5.11 | Ch Sufrace Cleaning and DP check | 1d | 2018-09-01 18:31 | 2018-09-03 10:32 | 411 | 2018-08-09 18:31 | 2018-08-10 10:32 | 1d | 56.56d | 0d | TEAM_2Shift_Calendar-1 | Grinder; Grinding Machine; Helper | 9h | 318.75 | 318.75 |
| 413 | 6.14.5.12 | Ch NDE- TPI | 1d | 2018-09-03 10:32 | 2018-09-03 18:32 | 412 | 2018-08-10 10:32 | 2018-08-10 18:32 | 1d | 56.56d |  | TEAM_2Shift_Calendar-1 | TPI (Cost) [0.1%]; QC Engineer | 4h |  |  |

| ID | WBS | Task | Duration | Start | Finish | Predecessors | Baseline start | Baseline finish | Baseline duration | Total slack | Free slack | Calendar | Resources | Work | Cost | Baseline cost |
| --- | --- | --- | --- | --- | --- | --- | --- | --- | --- | --- | --- | --- | --- | --- | --- | --- |
| 414 | 6.15 | **Shell cover bonnet** | 5.5d | 2018-09-03 11:30 | 2018-09-06 07:30 |  | 2018-08-10 11:30 | 2018-08-16 07:30 | 5.5d | 52.56d |  | TEAM_2Shift_Calendar-1 |  | 132h | 6,743.75 | 6,743.75 |
| 415 | 6.15.1 | Edge preparation | 5h | 2018-09-03 11:30 | 2018-09-03 16:30 | 32 | 2018-08-10 11:30 | 2018-08-10 16:30 | 5h | 52.56d | 0d | TEAM_2Shift_Calendar-1 | Grinder; Forging Non-Std (Cost) [0.1%]; Grinding Machine | 10h | 281.25 | 281.25 |
| 416 | 6.15.2 | Flange fit up | 4h | 2018-09-03 16:30 | 2018-09-03 20:30 | 33, 415 | 2018-08-10 16:30 | 2018-08-10 20:30 | 4h | 52.56d | 0d | TEAM_2Shift_Calendar-1 | Helper; SMAW Welder; SMAW Welding Machine; Fitter | 16h | 750 | 750 |
| 417 | 6.15.3 | Inspection | 3h | 2018-09-03 20:30 | 2018-09-04 07:30 | 416 | 2018-08-10 20:30 | 2018-08-13 07:30 | 3h | 52.56d | 0d | TEAM_2Shift_Calendar-1 | Fitter; QC Engineer | 3h | 206.25 | 206.25 |
| 418 | 6.15.4 | Welding | 8h | 2018-09-04 07:30 | 2018-09-04 15:30 | 417 | 2018-08-13 07:30 | 2018-08-13 15:30 | 8h | 52.56d | 0d | TEAM_2Shift_Calendar-1 | SMAW Welder; SMAW Welding Machine; Helper | 24h | 950 | 950 |
| 419 | 6.15.5 | lifting lug pad fit up | 2h | 2018-09-04 15:30 | 2018-09-04 17:30 | 418, 167 | 2018-08-13 15:30 | 2018-08-13 17:30 | 2h | 52.56d | 0d | TEAM_2Shift_Calendar-1 | TIG Welding Machine; Helper; Fitter; TIG Welder | 8h | 487.5 | 487.5 |
| 420 | 6.15.6 | lifting lug pad welding | 3h | 2018-09-04 17:30 | 2018-09-04 20:30 | 419 | 2018-08-13 17:30 | 2018-08-13 20:30 | 3h | 52.56d | 0d | TEAM_2Shift_Calendar-1 | TIG Welding Machine; Helper; TIG Welder | 9h | 525 | 525 |
| 421 | 6.15.7 | lifting lug fit up | 2h | 2018-09-04 20:30 | 2018-09-05 06:30 | 420 | 2018-08-13 20:30 | 2018-08-14 06:30 | 2h | 52.56d | 0d | TEAM_2Shift_Calendar-1 | TIG Welding Machine; Helper; Fitter; TIG Welder | 8h | 487.5 | 487.5 |
| 422 | 6.15.8 | lifting lug welding | 4h | 2018-09-05 06:30 | 2018-09-05 10:30 | 421 | 2018-08-14 06:30 | 2018-08-14 10:30 | 4h | 52.56d | 0d | TEAM_2Shift_Calendar-1 | TIG Welding Machine; Helper; TIG Welder | 12h | 700 | 700 |
| 423 | 6.15.9 | Insulation cleat marking | 2h | 2018-09-05 10:30 | 2018-09-05 12:30 | 422 | 2018-08-14 10:30 | 2018-08-14 12:30 | 2h | 52.56d | 0d | TEAM_2Shift_Calendar-1 | Helper; Fitter | 4h | 237.5 | 237.5 |
| 424 | 6.15.10 | Insulation cleat Grinding | 3h | 2018-09-05 12:30 | 2018-09-05 15:30 | 423 | 2018-08-14 12:30 | 2018-08-14 15:30 | 3h | 52.56d | 0d | TEAM_2Shift_Calendar-1 | Grinding Machine; Grinder | 6h | 168.75 | 168.75 |
| 425 | 6.15.11 | Insulation cleat fit up | 3h | 2018-09-05 15:30 | 2018-09-05 18:30 | 424 | 2018-08-14 15:30 | 2018-08-14 18:30 | 3h | 52.56d | 0d | TEAM_2Shift_Calendar-1 | TIG Welding Machine; Helper; Fitter; TIG Welder | 12h | 731.25 | 731.25 |
| 426 | 6.15.12 | Insulation cleat welding | 5h | 2018-09-05 18:30 | 2018-09-06 07:30 | 425 | 2018-08-14 18:30 | 2018-08-16 07:30 | 5h | 52.56d |  | TEAM_2Shift_Calendar-1 | TIG Welding Machine; Helper; Fitter; TIG Welder | 20h | 1,218.75 | 1,218.75 |
| 427 | 6.16 | **Tube Bundle Assy** | 19.13d | 2018-09-26 14:30 | 2018-10-09 07:32 |  | 2018-09-03 14:30 | 2018-09-17 07:32 | 19.13d | 0d |  | TEAM_2Shift_Calendar-1 |  | 487h | 25,156.25 | 25,156.25 |
| 428 | 6.16.1 | **Preliminary Set up** | 5.88d | 2018-09-26 14:30 | 2018-09-29 13:30 |  | 2018-09-03 14:30 | 2018-09-06 13:30 | 5.88d | 0d |  | TEAM_2Shift_Calendar-1 |  | 197h | 10,906.25 | 10,906.25 |
| 429 | 6.16.1.1 | Assy Frame Set Up | 8h | 2018-09-26 14:30 | 2018-09-27 06:30 | 140, 145, 163, 130 | 2018-09-03 14:30 | 2018-09-04 06:30 | 8h | 0d |  | TEAM_2Shift_Calendar-1 | Helper [400%]; Fitter [200%] | 48h | 2,700 | 2,700 |
| 430 | 6.16.1.2 | Skeleton Assy | 12h | 2018-09-27 06:30 | 2018-09-27 18:30 | 429 | 2018-09-04 06:30 | 2018-09-04 18:30 | 12h | 0d |  | TEAM_2Shift_Calendar-1 | Helper [400%]; Fitter [200%] | 72h | 4,050 | 4,050 |
| 431 | 6.16.1.3 | Tie Rod Welding | 4h | 2018-09-27 18:30 | 2018-09-28 06:30 | 430 | 2018-09-04 18:30 | 2018-09-05 06:30 | 4h | 0d |  | TEAM_2Shift_Calendar-1 | SAW Welder; SMAW Welding Machine; Helper [200%] | 16h | 675 | 675 |
| 432 | 6.16.1.4 | Tube Insert | 15h | 2018-09-28 06:30 | 2018-09-28 21:30 | 431 | 2018-09-05 06:30 | 2018-09-05 21:30 | 15h | 0d |  | TEAM_2Shift_Calendar-1 | Helper [200%]; Fitter | 45h | 2,531.25 | 2,531.25 |
| 433 | 6.16.1.5 | Tube Allingment | 8h | 2018-09-28 21:30 | 2018-09-29 13:30 | 432 | 2018-09-05 21:30 | 2018-09-06 13:30 | 8h | 0d |  | TEAM_2Shift_Calendar-1 | Helper; Fitter | 16h | 950 | 950 |
| 434 | 6.16.2 | **Assy** | 3d | 2018-09-29 13:30 | 2018-10-01 21:30 |  | 2018-09-06 13:30 | 2018-09-07 21:30 | 3d | 0d |  | TEAM_2Shift_Calendar-1 |  | 86h | 4,462.5 | 4,462.5 |
| 435 | 6.16.2.1 | Sealing Strip fit up | 6h | 2018-09-29 13:30 | 2018-09-29 19:30 | 433 | 2018-09-06 13:30 | 2018-09-06 19:30 | 6h | 0d |  | TEAM_2Shift_Calendar-1 | Fitter; TIG Welder; TIG Welding Machine; Helper [200%] | 30h | 1,762.5 | 1,762.5 |
| 436 | 6.16.2.2 | Sealing Strip Welding | 10h | 2018-09-29 19:30 | 2018-10-01 13:30 | 435 | 2018-09-06 19:30 | 2018-09-07 13:30 | 10h | 0d |  | TEAM_2Shift_Calendar-1 | TIG Welder; TIG Welding Machine; Helper [200%] | 40h | 2,250 | 2,250 |
| 437 | 6.16.2.3 | Sealing Strip Grinding | 8h | 2018-10-01 13:30 | 2018-10-01 21:30 | 436 | 2018-09-07 13:30 | 2018-09-07 21:30 | 8h | 0d |  | TEAM_2Shift_Calendar-1 | Grinding Machine; Grinder | 16h | 450 | 450 |

| ID | WBS | Task | Duration | Start | Finish | Predecessors | Baseline start | Baseline finish | Baseline duration | Total slack | Calendar | Resources | Work | Cost | Baseline cost |
| --- | --- | --- | --- | --- | --- | --- | --- | --- | --- | --- | --- | --- | --- | --- | --- |
| 438 | 6.16.3 | **Tube Welding & other Works** | 10.25d | 2018-10-01 21:30 | 2018-10-09 07:32 |  | 2018-09-07 21:30 | 2018-09-17 07:32 | 10.25d | 0d | TEAM_2Shift_Calendar-1 |  | 204h | 9,787.5 | 9,787.5 |
| 439 | 6.16.3.1 | Tube /Tube Sheet Root Welding | 1d | 2018-10-01 21:30 | 2018-10-03 13:30 | 437 | 2018-09-07 21:30 | 2018-09-10 13:30 | 1d | 0d | TEAM_2Shift_Calendar-1 | TIG Welder; TIG Welding Machine; Helper [200%] | 32h | 1,800 | 1,800 |
| 440 | 6.16.3.2 | DP Check | 1d | 2018-10-03 13:30 | 2018-10-03 21:31 | 439 | 2018-09-10 13:30 | 2018-09-10 21:31 | 1d | 0d | TEAM_2Shift_Calendar-1 | Helper; Fitter | 6h | 356.25 | 356.25 |
| 441 | 6.16.3.3 | Tube /Tube Sheet Final Welding | 2d | 2018-10-03 21:31 | 2018-10-04 21:31 | 440 | 2018-09-10 21:31 | 2018-09-11 21:31 | 2d | 0d | TEAM_2Shift_Calendar-1 | TIG Welder; TIG Welding Machine; Helper [200%] | 64h | 3,600 | 3,600 |
| 442 | 6.16.3.4 | Tube Trimming | 10h | 2018-10-04 21:31 | 2018-10-05 15:31 | 441 | 2018-09-11 21:31 | 2018-09-12 15:31 | 10h | 0d | TEAM_2Shift_Calendar-1 | Grinding Machine; Grinder | 20h | 562.5 | 562.5 |
| 443 | 6.16.3.5 | DP Check | 1d | 2018-10-05 15:31 | 2018-10-06 07:32 | 442 | 2018-09-12 15:31 | 2018-09-14 07:32 | 1d | 0d | TEAM_2Shift_Calendar-1 | Helper; Fitter | 6h | 356.25 | 356.25 |
| 444 | 6.16.3.6 | Expansion | 2d | 2018-10-06 07:32 | 2018-10-08 07:32 | 443 | 2018-09-14 07:32 | 2018-09-15 07:32 | 2d | 0d | TEAM_2Shift_Calendar-1 | Helper [200%]; Expanding Machine; Fitter | 64h | 2,700 | 2,700 |
| 445 | 6.16.3.7 | Inspection | 2d | 2018-10-08 07:32 | 2018-10-09 07:32 | 444 | 2018-09-15 07:32 | 2018-09-17 07:32 | 2d | 0d | TEAM_2Shift_Calendar-1 | QC Engineer; Fitter | 12h | 412.5 | 412.5 |
| 446 | 6.17 | **FinalAssembly&Hydrotest** | 9.3d | 2018-10-10 07:32 | 2018-10-16 17:58 |  | 2018-09-18 07:32 | 2018-09-24 17:58 | 9.3d | 0d | TEAM_2Shift_Calendar-1 |  | 201h | 11,400 | 11,400 |
| 447 | 6.17.1 | OpenBundleHydrotest | 1d | 2018-10-10 07:32 | 2018-10-10 15:32 | 427FS+2d | 2018-09-18 07:32 | 2018-09-18 15:32 | 1d | 0d | TEAM_2Shift_Calendar-1 | Helper [400%]; Fitter [400%] | 32h | 1,900 | 1,900 |
| 448 | 6.17.2 | OpenBundleHydrotest-TPI Inspection | 1.56d | 2018-10-10 15:32 | 2018-10-11 12:00 | 447 | 2018-09-18 15:32 | 2018-09-19 12:00 | 1.56d | 0d | TEAM_2Shift_Calendar-1 | QC Engineer | 4h |  |  |
| 449 | 6.17.3 | Shell stacked assembly | 1d | 2018-10-11 20:00 | 2018-10-12 12:00 | 178FS+1d, 240FS+1d, 298FS+1d, 356FS+1d, 414FS+1d, 448FS+1d | 2018-09-19 20:00 | 2018-09-20 12:00 | 1d | 0d | TEAM_2Shift_Calendar-1 | Helper [400%]; Fitter [400%] | 32h | 1,900 | 1,900 |
| 450 | 6.17.4 | Tube bundle insertion | 1d | 2018-10-12 12:00 | 2018-10-12 20:00 | 449 | 2018-09-20 12:00 | 2018-09-20 20:00 | 1d | 0d | TEAM_2Shift_Calendar-1 | Helper [400%]; Fitter [400%] | 64h | 3,800 | 3,800 |
| 451 | 6.17.5 | shell cover bonnet assembly | 4h | 2018-10-12 20:00 | 2018-10-15 08:00 | 450 | 2018-09-20 20:00 | 2018-09-21 08:00 | 4h | 0d | TEAM_2Shift_Calendar-1 | Helper [200%]; Fitter [200%] | 16h | 950 | 950 |
| 452 | 6.17.6 | channel assembly | 4h | 2018-10-15 08:00 | 2018-10-15 12:00 | 451 | 2018-09-21 08:00 | 2018-09-21 12:00 | 4h | 0d | TEAM_2Shift_Calendar-1 | Helper [200%]; Fitter [200%] | 16h | 950 | 950 |
| 453 | 6.17.7 | Final hydro test | 1d | 2018-10-15 12:00 | 2018-10-15 20:00 | 452 | 2018-09-21 12:00 | 2018-09-21 20:00 | 1d | 0d | TEAM_2Shift_Calendar-1 | Helper [400%]; Fitter [400%] | 32h | 1,900 | 1,900 |
| 454 | 6.17.8 | Final hydro TPI inspection | 1.75d | 2018-10-15 20:00 | 2018-10-16 17:58 | 453 | 2018-09-21 20:00 | 2018-09-24 17:58 | 1.75d | 0d | TEAM_2Shift_Calendar-1 | TPI (Cost) [0.1%]; QC Engineer | 5h |  |  |
| 455 | 6.18 | **Cleaning&Painting** | 13d | 2018-10-19 17:58 | 2018-10-29 09:58 |  | 2018-09-26 17:58 | 2018-10-05 09:58 | 13d | 0d | TEAM_2Shift_Calendar-1 |  | 70h | 1,375 | 1,375 |
| 456 | 6.18.1 | BlastCleaningArrangement | 1d | 2018-10-19 17:58 | 2018-10-20 09:58 | 446FS+4d | 2018-09-26 17:58 | 2018-09-27 09:58 | 1d | 0d | TEAM_2Shift_Calendar-1 | Store | 8h |  |  |
| 457 | 6.18.2 | Transport for BlastCleaning | 4h | 2018-10-20 09:58 | 2018-10-20 13:58 | 456 | 2018-09-27 09:58 | 2018-09-27 13:58 | 4h | 0d | TEAM_2Shift_Calendar-1 | Helper [300%]; Fitter | 16h | 875 | 875 |
| 458 | 6.18.3 | BlastCleaning | 3d | 2018-10-20 13:58 | 2018-10-22 21:58 | 457 | 2018-09-27 13:58 | 2018-09-28 21:58 | 3d | 0d | TEAM_2Shift_Calendar-1 |  |  |  |  |
| 459 | 6.18.4 | Return from blast cleaning | 5h | 2018-10-22 21:58 | 2018-10-23 10:58 | 458 | 2018-09-28 21:58 | 2018-09-29 10:58 | 5h | 7.88d | TEAM_2Shift_Calendar-1 | Helper [200%] | 10h | 500 | 500 |
| 460 | 6.18.5 | PrimerPainting | 8h | 2018-10-23 21:58 | 2018-10-24 13:58 | 458FS+2d | 2018-09-29 21:58 | 2018-10-01 13:58 | 8h | 0d | TEAM_2Shift_Calendar-1 | Painter | 8h |  |  |
| 461 | 6.18.6 | Intermediate painting | 8h | 2018-10-24 21:58 | 2018-10-25 13:58 | 460FS+1d | 2018-10-01 21:58 | 2018-10-03 13:58 | 8h | 0d | TEAM_2Shift_Calendar-1 | Painter | 8h |  |  |
| 462 | 6.18.7 | Top CoatPainting | 2d | 2018-10-25 21:58 | 2018-10-26 21:58 | 461FS+1d | 2018-10-03 21:58 | 2018-10-04 21:58 | 2d | 0d | TEAM_2Shift_Calendar-1 | Painter | 16h |  |  |
| 463 | 6.18.8 | Painting Inspection | 0.5d | 2018-10-26 21:58 | 2018-10-29 09:58 | 462 | 2018-10-04 21:58 | 2018-10-05 09:58 | 0.5d | 0d | TEAM_2Shift_Calendar-1 | Painter | 4h |  |  |

| ID | WBS | Task | Duration | Start | Finish | Predecessors | Baseline start | Baseline finish | Baseline duration | Total slack | Calendar | Resources | Work | Cost | Baseline cost |
| --- | --- | --- | --- | --- | --- | --- | --- | --- | --- | --- | --- | --- | --- | --- | --- |
| 464 | 7 | **Project closure** | 2d | 2018-10-29 09:58 | 2018-10-30 09:58 |  | 2018-10-05 09:58 | 2018-10-10 17:58 | 9d | 0d | TEAM_2Shift_Calendar-1 |  | 20h | 445.31 | 445.31 |
| 465 | 7.1 | Despatch clearnce | 1d | 2018-10-29 09:58 | 2018-10-29 17:58 | 455 | 2018-10-05 09:58 | 2018-10-05 17:58 | 1d | 0d | TEAM_2Shift_Calendar-1 | TPI (Cost) [0.1%]; QC Engineer | 5h |  |  |
| 466 | 7.2 | Dispatch | 1d | 2018-10-29 17:58 | 2018-10-30 09:58 | 465 | 2018-10-05 17:58 | 2018-10-06 09:58 | 1d | 0d | TEAM_2Shift_Calendar-1 | Fitter; Helper; Crane; Store | 15h | 445.31 | 445.31 |
