# 4224-103

Schedule from MS Project, 2017-10-17 to 2018-06-15, costs in Rs., A marks actual dates.

## Calendars

- TEAM_Stand_Calendar: Mon-Sat 08:30-12:30, 13:30-17:30; Sun off. Exceptions (off unless hours are given): 2017-01-13 to 2023-08-12 (2nd Sat, recurring), 2017-01-26 to 2036-01-26 (Republic Day, recurring), 2017-01-27 to 2023-08-26 (4th Sat, recurring), 2017-05-01 to 2036-05-01 (May Day, recurring), 2017-08-15 to 2036-08-15 (Independence Day, recurring), 2017-10-02 to 2036-10-02 (Gandhi Jayanti, recurring), 2017-10-18 (Deepavali'2017), 2018-01-15 (Thiruvalluvar Day'2018).
- TEAM_2Shift_Calendar-1: Mon-Sat 06:00-22:00; Sun off. Exceptions (off unless hours are given): 2017-01-13 to 2023-02-11 (2nd Sat, recurring), 2017-01-26 to 2036-01-26 (Republic Day, recurring), 2017-01-27 to 2023-08-26 (4th Sat, recurring), 2017-05-01 to 2036-05-01 (May Day, recurring), 2017-08-15 to 2036-08-15 (Indepdence Day, recurring), 2017-10-02 to 2036-10-02 (Gandhi Jayanti, recurring), 2017-10-19 (Deepavali'2017), 2018-01-15 (Thiruvalluvar Day'2018).

## Resources

| Resource | Rate |
| --- | --- |
| Marketing |  |
| PMO Head |  |
| Client |  |
| PM |  |
| Store |  |
| QC Engineer |  |
| Draftman |  |
| TIG Welding Machine |  |
| TIG Welder | 125 |
| Rolling Machine |  |
| Radial Drilling Machine |  |
| PPC Engineer |  |
| Plate Bending Machine |  |
| Painter |  |
| OAGM |  |
| Lathe |  |
| Lathe Operator | 120 |
| Helper | 50 |
| Grinding Machine |  |
| Grinder | 56.25 |
| Gas Cutter | 68.75 |
| Fitter | 68.75 |
| Expanding Machine |  |
| Cutting Machine |  |
| Crane |  |
| SC (Work) |  |
| SMAW Welding Machine |  |
| SMAW Welder | 68.75 |
| SAW Welder | 68.75 |
| Production Department |  |
| Pedestal Grinder |  |
| Driller | 68.75 |
| Vehicle |  |
| Foreman |  |
| Purchase Engineer |  |
| Design Engineer |  |
| TPI (Cost) |  |
| SC Radiography (Cost) |  |
| SC (Cost) |  |
| Forging Non-Std (Cost) |  |
| Forging Std (Cost) |  |
| Pipe (Cost) |  |
| Plate (Cost) |  |
| Rod (Cost) |  |
| Tube (Cost) |  |
| Tube Sheet (Cost) |  |
| Consumables (Cost) |  |
| Finance |  |
| welder |  |

## Schedule

| ID | WBS | Task | Duration | Start | Finish | Predecessors | Complete | Baseline start | Baseline finish | Baseline duration | Resources | Work | Actual work |
| --- | --- | --- | --- | --- | --- | --- | --- | --- | --- | --- | --- | --- | --- |
| 1 | 1 | **Project Initiation** | 4.5d | 2017-10-17 08:30 A | 2017-10-23 12:30 A |  | 100% | 2017-10-17 08:30 | 2017-10-23 12:30 | 4.5d |  | 28h | 28h |
| 2 | 1.1 | Po Receipt | 1d | 2017-10-17 08:30 A | 2017-10-17 17:30 A |  | 100% | 2017-10-17 08:30 | 2017-10-17 17:30 | 1d | Marketing | 8h | 8h |
| 3 | 1.2 | Work Order | 1d | 2017-10-21 08:30 A | 2017-10-21 17:30 A | 2FS+2d | 100% | 2017-10-21 08:30 | 2017-10-21 17:30 | 1d | Marketing | 8h | 8h |
| 4 | 1.3 | CRM | 4h | 2017-10-23 08:30 A | 2017-10-23 12:30 A | 3 | 100% | 2017-10-23 08:30 | 2017-10-23 12:30 | 4h | PM; PMO Head; Marketing | 12h | 12h |
| 5 | 2 | **Design** | 57d | 2017-10-23 08:30 A | 2018-01-02 17:30 A |  | 100% | 2017-10-23 08:30 | 2018-01-02 17:30 | 57d |  | 160h | 160h |
| 6 | 2.1 | Drawing preparation | 22.5d | 2017-10-23 08:30 A | 2017-11-20 12:30 A | 4 | 100% | 2017-10-23 08:30 | 2017-11-20 12:30 | 22.5d | Design Engineer; Draftman | 144h | 144h |
| 7 | 2.2 | Drawing Submission | 1d | 2017-11-21 08:30 A | 2017-11-21 17:30 A | 6 | 100% | 2017-11-21 08:30 | 2017-11-21 17:30 | 1d | Design Engineer | 8h | 8h |
| 8 | 2.3 | Drawing Approval(A) | 1d | 2018-01-02 08:30 A | 2018-01-02 17:30 A | 7FS+14d | 100% | 2018-01-02 08:30 | 2018-01-02 17:30 | 1d | Client | 4h | 4h |
| 9 | 2.4 | Drawing Approval(B) | 1d | 2017-12-29 08:30 A | 2017-12-29 17:30 A | 7FS+14d | 100% | 2017-12-29 08:30 | 2017-12-29 17:30 | 1d | Client | 4h | 4h |
| 10 | 3 | **ABG** | 30d | 2018-01-05 08:30 A | 2018-02-14 17:30 A |  | 100% | 2018-01-05 08:30 | 2018-02-14 17:30 | 30d |  | 11h | 11h |
| 11 | 3.1 | ABG submission(5)% | 2d | 2018-01-05 08:30 A | 2018-01-06 17:30 A | 8 | 100% | 2018-01-05 08:30 | 2018-01-06 17:30 | 2d | Finance | 10h | 10h |
| 12 | 3.2 | ABG Approval | 1d | 2018-02-14 08:30 A | 2018-02-14 17:30 A | 11FS+5d | 100% | 2018-02-14 08:30 | 2018-02-14 17:30 | 1d | Finance; Client | 1h | 1h |
| 13 | 4 | Preliminary Details For Enquiry | 5d | 2017-10-27 08:30 A | 2017-11-02 17:30 A | 3FS+4d | 100% | 2017-10-27 08:30 | 2017-11-02 17:30 | 5d | PPC Engineer | 16h | 16h |
| 14 | 5 | **PR Issue** | 50d | 2017-11-09 08:30 A | 2018-01-10 17:30 A |  | 100% | 2017-11-09 08:30 | 2018-01-10 17:30 | 50d |  | 39h | 39h |
| 15 | 5.1 | Plates | 3d | 2017-12-20 08:30 A | 2017-12-22 17:30 A | 7 | 100% | 2017-12-20 08:30 | 2017-12-22 17:30 | 3d | Plate (Cost) [0.1%]; PPC Engineer | 4h | 4h |
| 16 | 5.2 | Pipe | 2d | 2017-11-21 08:30 A | 2017-11-22 17:30 A | 7 | 100% | 2017-11-21 08:30 | 2017-11-22 17:30 | 2d | Pipe (Cost) [0.1%]; PPC Engineer | 3h | 3h |
| 17 | 5.3 | Tube | 2d | 2017-11-09 08:30 A | 2017-11-10 17:30 A | 7 | 100% | 2017-11-09 08:30 | 2017-11-10 17:30 | 2d | Tube (Cost) [0.1%]; PPC Engineer | 8h | 8h |
| 18 | 5.4 | Forging-(Blank,Std,Non-std) | 2d | 2017-12-18 08:30 A | 2017-12-19 17:30 A | 7 | 100% | 2017-12-18 08:30 | 2017-12-19 17:30 | 2d | Forging Non-Std (Cost) [0.1%]; Forging Std (Cost) [0.1%]; Tube Sheet (Cost) [0.1%]; PPC Engineer | 8h | 8h |
| 19 | 5.5 | Spacer | 2d | 2017-12-21 08:30 A | 2017-12-22 17:30 A | 7 | 100% | 2017-12-21 08:30 | 2017-12-22 17:30 | 2d | Tube (Cost) [0.1%]; PPC Engineer | 3h | 3h |
| 20 | 5.6 | Rods | 2d | 2017-12-21 08:30 A | 2017-12-22 17:30 A | 7 | 100% | 2017-12-21 08:30 | 2017-12-22 17:30 | 2d | Rod (Cost) [0.1%]; PPC Engineer | 3h | 3h |
| 21 | 5.7 | Gasket | 2d | 2017-12-21 08:30 A | 2017-12-22 17:30 A | 7 | 100% | 2017-12-21 08:30 | 2017-12-22 17:30 | 2d | PPC Engineer | 3h | 3h |
| 22 | 5.8 | Fasteners | 3d | 2017-12-20 08:30 A | 2017-12-22 17:30 A | 7 | 100% | 2017-12-20 08:30 | 2017-12-22 17:30 | 3d | PPC Engineer [133.3%] | 3h | 3h |
| 23 | 5.9 | Consumables | 3d | 2018-01-08 08:30 A | 2018-01-10 17:30 A | 7 | 100% | 2018-01-08 08:30 | 2018-01-10 17:30 | 3d | PPC Engineer | 4h | 4h |
| 24 | 6 | **Material Ordering** | 86d | 2017-12-11 08:30 A | 2018-03-30 17:30 A |  | 100% | 2017-12-11 08:30 | 2018-03-30 17:30 | 86d |  | 55h | 55h |
| 25 | 6.1 | Plates | 24d | 2018-01-22 08:30 A | 2018-02-21 17:30 A | 15 | 100% | 2018-01-22 08:30 | 2018-02-21 17:30 | 24d | Plate (Cost) [0.1%]; Purchase Engineer [187.5%] | 5h | 5h |
| 26 | 6.2 | Pipe | 2d | 2018-01-29 08:30 A | 2018-01-30 17:30 A | 16 | 100% | 2018-01-29 08:30 | 2018-01-30 17:30 | 2d | Pipe (Cost) [0.1%]; Purchase Engineer | 6h | 6h |
| 27 | 6.3 | Tube(LAS) | 5d | 2017-12-11 08:30 A | 2017-12-15 17:30 A | 17 | 100% | 2017-12-11 08:30 | 2017-12-15 17:30 | 5d | Tube (Cost) [0.1%]; Purchase Engineer | 10h | 10h |
| 28 | 6.4 | Forging-(Blank,Std,Non-std) | 4d | 2017-12-18 08:30 A | 2017-12-21 17:30 A | 18 | 100% | 2017-12-18 08:30 | 2017-12-21 17:30 | 4d | Forging Non-Std (Cost) [0.1%]; Forging Std (Cost) [0.1%]; Tube Sheet (Cost) [0.1%]; Purchase Engineer | 17h | 17h |
| 29 | 6.5 | Spacer | 1d | 2017-12-15 08:30 A | 2017-12-15 17:30 A | 19 | 100% | 2017-12-15 08:30 | 2017-12-15 17:30 | 1d | Tube (Cost) [0.1%]; Purchase Engineer | 2h | 2h |
| 30 | 6.6 | Rods | 24d | 2018-02-02 08:30 A | 2018-03-03 17:30 A | 20 | 100% | 2018-02-02 08:30 | 2018-03-03 17:30 | 24d | Rod (Cost) [0.1%]; Purchase Engineer | 4h | 4h |
| 31 | 6.7 | Gasket | 2d | 2017-12-30 08:30 A | 2018-01-01 17:30 A | 21 | 100% | 2017-12-30 08:30 | 2018-01-01 17:30 | 2d | Purchase Engineer | 4h | 4h |
| 32 | 6.8 | Fasteners | 1d | 2018-02-02 08:30 A | 2018-02-02 17:30 A | 22 | 100% | 2018-02-02 08:30 | 2018-02-02 17:30 | 1d | Purchase Engineer | 4h | 4h |
| 33 | 6.9 | Consumables | 57d | 2018-01-17 08:30 A | 2018-03-30 17:30 A | 23 | 100% | 2018-01-17 08:30 | 2018-03-30 17:30 | 57d | Purchase Engineer | 3h | 3h |

Notes:
- 8: IBR approval delay
- 11: To bank
- 13: U tubes SA 213 T11 48 nos / Tube-SA 213 T11 (224 Nos) / Blank Forging-Sa 336 F11 Cl.2 (60T,115T) / Non Std Forging-Sa 336 F11 Cl.2(60T) / Non Std Forging-Sa 266 Gr.4 (90T) / Non Std Forging-Sa 336 F11 Cl.2 (90T,100T) / Std Forging-Sa 182 F11 Cl.2
- 14: Plates-SA 387 Gr.11 Cl.2 / Plates-SA 516 Gr.60 / Std Pipe SA 335 P11(10''NBX SCH30) / Tube-SA 213 T11 (224 Nos) / Plate(90T) - SA 266 Gr.4 / U tubes SA 213 T11 48 nos / Blank Forging-SA 336 F11 Cl.2 (115T,60T) / Spacer - SA 213T11(2.35T) / U Bend shell split type- SA 234 WP11 CL2 / Tie Rod-SA 739 B11 / pipe-SA 266 GR.4 / Pipe-SA 106 Gr.B / Pipe-SA 335 P11 / Std Forging-SA 182 F11 Cl.2 / Non Std Forging-SA 336 F11 Cl.2 (90T,87T,100T) / Non Std Forging-SA 336 F11 Cl.2(60T) / Non Std Forging-SA 266 Gr.4 (90T) / Gasket / Fasteners / Consumables weld over lay
- 24: Plates-SA 387 Gr.11 Cl.2 / Plates-SA 516 Gr.60 / Std Pipe SA 335 P11(10''NBX SCH30) / Tube-SA 213 T11 (224 Nos) / Plate(90T) - SA 266 Gr.4 / U tubes SA 213 T11 48 nos / Blank Forging-SA 336 F11 Cl.2 (115T,60T) / Spacer - SA 213T11(2.35T) / U Bend shell split type-SA 234 WP 11 CL.2 / Tie Rod-SA 739 B11 / pipe-SA 266 GR.4 / Pipe-SA 106 Gr.B / Pipe-SA 335 P11 / Std Forging-SA 182 F11 Cl.2 / Non Std Forging-SA 336 F11 Cl.2 (90T,87T,100T) / Non Std Forging-SA 336 F11 Cl.2(60T) / Non Std Forging-SA 266 Gr.4 (90T) / Gasket / Fasteners / Consumables weld over lay

| ID | WBS | Task | Duration | Start | Finish | Predecessors | Complete | Baseline start | Baseline finish | Baseline duration | Resources | Work | Actual work | Cost | Baseline cost | Actual cost |
| --- | --- | --- | --- | --- | --- | --- | --- | --- | --- | --- | --- | --- | --- | --- | --- | --- |
| 34 | 7 | **Material Receipt** | 81.25d | 2018-02-08 08:30 A | 2018-05-23 10:30 A |  | 100% | 2018-02-08 08:30 | 2018-04-27 12:30 | 62.5d |  | 115.5h | 115.5h | 3,199.67 | 3,199.67 | 3,199.67 |
| 35 | 7.1 | Plate (14T) SA 387 Gr.11 Cl.2 | 16h | 2018-02-08 08:30 A | 2018-02-09 17:30 A | 25SS+10d | 100% | 2018-02-08 08:30 | 2018-02-09 17:30 | 16h | Helper; Store; Plate (Cost) [0.1%]; Crane | 2h | 2h | 50 | 50 | 50 |
| 36 | 7.2 | Plate channel shell (14T)SA 516 Gr.60 | 2h | 2018-03-29 08:30 A | 2018-03-29 10:30 A | 25SS+51d | 100% | 2018-03-29 08:30 | 2018-03-29 10:30 | 2h | Helper; Store; Plate (Cost) [0.1%]; Crane | 2h | 2h | 50 | 50 | 50 |
| 37 | 7.3 | Plate Davit (16T)SA 516 Gr.60 | 2h | 2018-03-29 08:30 A | 2018-03-29 10:30 A | 25FS+27d | 100% | 2018-03-29 08:30 | 2018-03-29 10:30 | 2h | Helper; Store; Plate (Cost) [0.1%] | 2h | 2h | 75 | 75 | 75 |
| 38 | 7.4 | Shell cover Bonnet SA 387 Gr.11 Cl.2 | 1d | 2018-02-09 08:30 A | 2018-02-09 17:30 A | 25FS+20d | 100% | 2018-02-09 08:30 | 2018-02-09 17:30 | 1d | Helper; Store; Plate (Cost) [0.1%]; Crane | 3.5h | 3.5h | 100 | 100 | 100 |
| 39 | 7.5 | Non Std Forging (90T) SA 336 F11 cl.2 | 1d | 2018-03-06 08:30 A | 2018-03-06 17:30 A | 28FS+66d | 100% | 2018-03-06 08:30 | 2018-03-06 17:30 | 1d | Helper; Store; Forging Non-Std (Cost) [0.1%]; Crane | 2.5h | 2.5h | 75 | 75 | 75 |
| 40 | 7.6 | Non Std Forging (100T) SA 336 F11 cl.2 | 1d | 2018-03-06 08:30 A | 2018-03-06 17:30 A | 28FS+66d | 100% | 2018-03-06 08:30 | 2018-03-06 17:30 | 1d | Helper; Store; Forging Non-Std (Cost) [0.1%]; Crane | 3h | 3h | 100 | 100 | 100 |
| 41 | 7.7 | Channel Front FLG(90T) SA 266 Gr.4+1.25Cr.0.5Mo W.O | 1d | 2018-03-06 08:30 A | 2018-03-06 17:30 A | 28FS+66d | 100% | 2018-03-06 08:30 | 2018-03-06 17:30 | 1d | Helper; Store; Forging Non-Std (Cost) [0.1%]; Crane | 2h | 2h | 50 | 50 | 50 |
| 42 | 7.8 | Non Std Forging SA 266 Gr.4 (90T) | 1d | 2018-03-06 08:30 A | 2018-03-06 17:30 A | 28FS+66d | 100% | 2018-03-06 08:30 | 2018-03-06 17:30 | 1d | Helper; Store; Forging Non-Std (Cost) [0.1%]; Crane | 3.5h | 3.5h | 100 | 100 | 100 |
| 43 | 7.9 | Tubes SA 213T11 ( 224 Nos) | 4h | 2018-05-16 08:30 A | 2018-05-16 12:30 A | 27FS+116d | 100% | 2018-04-24 08:30 | 2018-04-24 12:30 | 4h | Helper; Store; Tube (Cost) [0.1%]; Crane | 12h | 12h | 200.19 | 200.19 | 200.19 |
| 44 | 7.10 | Blank Forging SA 335 F11 cl.2 | 1d | 2018-03-06 08:30 A | 2018-03-06 17:30 A | 28FS+66d | 100% | 2018-03-06 08:30 | 2018-03-06 17:30 | 1d | Helper; Store; Tube Sheet (Cost) [0.1%]; Crane | 2.5h | 2.5h | 50 | 50 | 50 |
| 45 | 7.11 | Baffle Plate (6T) SA 387 Gr.11 Cl.2 | 1d | 2018-02-09 08:30 A | 2018-02-09 17:30 A | 25FS+45d | 100% | 2018-02-09 08:30 | 2018-02-09 17:30 | 1d | Helper; Store; Plate (Cost) [0.1%]; Crane | 3h | 3h | 100 | 100 | 100 |
| 46 | 7.12 | Floating Head FLG (87T) SA 336F11 Cl.2 | 1d | 2018-03-06 08:30 A | 2018-03-06 17:30 A | 28FS+66d | 100% | 2018-03-06 08:30 | 2018-03-06 17:30 | 1d | Helper; Store; Forging Non-Std (Cost) [0.1%] | 2.5h | 2.5h | 100 | 100 | 100 |
| 47 | 7.13 | Backing Ring (split type) (132T) SA 336F11 Cl.2 | 1d | 2018-03-06 08:30 A | 2018-03-06 17:30 A | 28FS+66d | 100% | 2018-03-06 08:30 | 2018-03-06 17:30 | 1d | Helper; Store; Forging Non-Std (Cost) [0.1%] | 2.5h | 2.5h | 100 | 100 | 100 |
| 48 | 7.14 | Floating Head Dish SA 387 Gr.11 Cl.2 ( 34T NOM/30T min) | 2h | 2018-04-23 08:30 A | 2018-04-23 10:30 A | 25FS+47d | 100% | 2018-04-23 08:30 | 2018-04-23 10:30 | 2h | Helper [100.6%]; Store [100.6%]; Plate (Cost) [0.1%]; Crane | 6h | 6h | 100.19 | 100.19 | 100.19 |
| 49 | 7.15 | Tie Rod Ø10 SA 739 B11 | 2h | 2018-05-23 08:30 A | 2018-05-23 10:30 A | 30FS+62d | 100% | 2018-04-27 08:30 | 2018-04-27 10:30 | 2h | Store; Rod (Cost) [0.1%]; Helper | 2h | 2h | 50 | 50 | 50 |
| 50 | 7.16 | Spacer Ø17.5 SA 213 B11 | 2h | 2018-05-15 08:30 A | 2018-05-15 10:30 A | 29FS+115d | 100% | 2018-04-24 08:30 | 2018-04-24 10:30 | 2h | Helper [100.6%]; Store [100.6%]; Tube (Cost) [0.1%] | 4h | 4h | 100 | 100 | 100 |
| 51 | 7.17 | Sealing strip SA 387Gr.11 Cl.2 | 1.5h | 2018-03-07 08:30 A | 2018-03-07 10:00 A | 25FS+10d | 100% | 2018-03-07 08:30 | 2018-03-07 10:00 | 1.5h | Store; Plate (Cost) [0.1%]; Helper | 1.5h | 1.5h | 50 | 50 | 50 |
| 52 | 7.18 | Sliding Strip SA 387Gr.11 Cl.2 | 2h | 2018-03-07 08:30 A | 2018-03-07 10:30 A | 25FS+10d | 100% | 2018-03-07 08:30 | 2018-03-07 10:30 | 2h | Store; Plate (Cost) [0.1%]; Helper | 4h | 4h | 99.79 | 99.79 | 99.79 |
| 53 | 7.19 | Impingement Plate SA 387Gr.11 Cl.2 | 2h | 2018-03-07 08:30 A | 2018-03-07 10:30 A | 25FS+10d | 100% | 2018-03-07 08:30 | 2018-03-07 10:30 | 2h | Store; Plate (Cost) [0.1%]; Helper | 4h | 4h | 99.79 | 99.79 | 99.79 |
| 54 | 7.20 | Pass partition plate(14T) SA 516 Gr.60+ 1.25Cr.0.5Mo W.O | 2.5h | 2018-03-29 08:30 A | 2018-03-29 11:00 A | 25FS+27d | 100% | 2018-03-29 08:30 | 2018-03-29 11:00 | 2.5h | Store [100.6%]; Plate (Cost) [0.1%]; Helper | 2.5h | 2.5h | 100 | 100 | 100 |
| 55 | 7.21 | SH COV BON Lifting Lug (16T) Pad (14T) SA 387 Gr.11 Cl.2 | 2h | 2018-03-05 08:30 A | 2018-03-05 10:30 A | 25FS+8d | 100% | 2018-03-05 08:30 | 2018-03-05 10:30 | 2h | Store; Plate (Cost) [0.1%]; Helper | 4h | 4h | 100 | 100 | 100 |
| 56 | 7.22 | CH shell Lifting Lug (16T) Pad (14T) SA 516 Gr.60 | 1.5h | 2018-03-29 08:30 A | 2018-03-29 10:00 A | 25FS+27d | 100% | 2018-03-29 08:30 | 2018-03-29 10:00 | 1.5h | Store; Plate (Cost) [0.1%]; Helper | 1.5h | 1.5h | 50 | 50 | 50 |
| 57 | 7.23 | Insulation cleat (6T) SA 387Gr.11 Cl.2 | 1.5h | 2018-03-07 08:30 A | 2018-03-07 10:00 A | 25FS+10d | 100% | 2018-03-07 08:30 | 2018-03-07 10:00 | 1.5h | Store; Plate (Cost) [0.1%]; Helper | 1.5h | 1.5h | 50 | 50 | 50 |
| 58 | 7.24 | Saddle Plate SA 516 Gr.60 (12T,16T) | 4h | 2018-03-29 08:30 A | 2018-03-29 12:30 A | 25FS+27d | 100% | 2018-03-29 08:30 | 2018-03-29 12:30 | 4h | Helper; Store; Plate (Cost) [0.1%]; Crane | 4h | 4h | 150 | 150 | 150 |
| 59 | 7.25 | Saddle pad Plate (12T) SA 387Gr.11 Cl.2 | 1d | 2018-02-09 08:30 A | 2018-02-09 17:30 A | 25FS+50d | 100% | 2018-02-09 08:30 | 2018-02-09 17:30 | 1d | Helper; Store; Plate (Cost) [0.1%]; Crane | 3h | 3h | 100 | 100 | 100 |
| 60 | 7.26 | Standard Forging SA 105 | 3.5h | 2018-03-06 08:30 A | 2018-03-06 12:00 A | 28FS+67d | 100% | 2018-03-06 08:30 | 2018-03-06 12:00 | 3.5h | Store; Forging Std (Cost) [0.1%]; Helper | 3.5h | 3.5h | 150 | 150 | 150 |
| 61 | 7.27 | Standard Forging SA 182 F11 CL.2 | 2.5h | 2018-03-06 08:30 A | 2018-03-06 11:00 A | 28FS+67d | 100% | 2018-03-06 08:30 | 2018-03-06 11:00 | 2.5h | Store; Forging Std (Cost) [0.1%]; Helper | 2.5h | 2.5h | 100 | 100 | 100 |
| 62 | 7.28 | SRN Noz Pipe for N3/N4 SA 266 GR.4 | 2h | 2018-03-06 08:30 A | 2018-03-06 10:30 A | 26FS+27d | 100% | 2018-03-06 08:30 | 2018-03-06 10:30 | 2h | Store; Forging Non-Std (Cost) [0.1%]; Helper | 2.5h | 2.5h | 100 | 100 | 100 |
| 63 | 7.29 | Nozzle Neck N7 SA 335 P11 | 2h | 2018-03-29 08:30 A | 2018-03-29 10:30 A | 26FS+45d | 100% | 2018-03-29 08:30 | 2018-03-29 10:30 | 2h | Store [100.6%]; Pipe (Cost) [0.1%]; Helper | 4h | 4h | 99.72 | 99.72 | 99.72 |
| 64 | 7.30 | Gaskets | 3h | 2018-05-03 08:30 A | 2018-05-03 11:30 A | 31FS+93d | 100% | 2018-04-27 08:30 | 2018-04-27 11:30 | 3h | Store; Helper | 6h | 6h | 150 | 150 | 150 |
| 65 | 7.31 | Cosumbales CS,LAS | 4h | 2018-04-21 08:30 A | 2018-04-21 12:30 A | 33FS+17d | 100% | 2018-04-25 08:30 | 2018-04-25 12:30 | 4h | Store; Helper | 8h | 8h | 200 | 200 | 200 |
| 66 | 7.32 | Fastners | 4h | 2018-04-25 08:30 A | 2018-04-25 12:30 A | 32FS+64d | 100% | 2018-04-27 08:30 | 2018-04-27 12:30 | 4h | Store; Helper | 8h | 8h | 200 | 200 | 200 |

Notes:
- 38: Blank Dia~992x18T(NOM)/14T(MIN)
- 43: OD 25.0 x 2.50T(Min.) x 6000Lg. (SEAMLESS)
- 44: 2 Nos
- 45: 16Nos
- 49: 4NOS
- 50: 50 NOS
- 51: 51.2Wx8Tx5654Lg
- 52: 53.3Wx16Tx5654Lg
- 53: 228x120x6T
- 55: 4NOS
- 56: 4NOS
- 57: 19Nos
- 58: 10 Nos
- 59: 2 Nos
- 60: 6 Nos
- 61: 12 Nos
- 62: 2Nos
- 63: 1.5"NB x SCH.160 x ~167 Lg (closed based on Stock availablity)

| ID | WBS | Task | Duration | Start | Finish | Predecessors | Complete | Remaining | Baseline start | Baseline finish | Baseline duration | Total slack | Free slack | Calendar | Resources | Work | Actual work | Cost | Baseline cost | Actual cost |
| --- | --- | --- | --- | --- | --- | --- | --- | --- | --- | --- | --- | --- | --- | --- | --- | --- | --- | --- | --- | --- |
| 67 | 8 | **Fabrication** | 157.38d | 2018-03-06 17:30 A | 2018-06-15 12:30 |  | 74% | 40.14d | 2018-03-06 17:30 | 2018-06-04 12:30 | 139.38d | 0d |  | TEAM_2Shift_Calendar-1 |  | 4180.5h | 2914.5h | 194,968.88 | 203,458.95 | 133,333.33 |
| 68 | 8.1 | **Dish Forming (shellcover)** | 104d | 2018-03-14 09:30 A | 2018-05-19 09:30 |  | 95% | 4.73d | 2018-03-14 09:30 | 2018-04-30 17:30 | 75d | 42.38d |  | TEAM_2Shift_Calendar-1 |  | 178h | 174h | 7,501.48 | 7,507.03 | 7,257.03 |
| 69 | 8.1.1 | Dish Blank Marking | 4h | 2018-03-14 09:30 A | 2018-03-14 13:30 A | 38FS+49d | 100% |  | 2018-03-14 09:30 | 2018-03-14 13:30 | 4h |  |  | TEAM_2Shift_Calendar-1 | Helper; Plate (Cost) [0.1%]; Fitter | 8h | 8h | 475 | 475 | 475 |
| 70 | 8.1.2 | Dish Blank Mkg Inpection | 1h | 2018-03-14 13:30 A | 2018-03-14 14:30 A | 69 | 100% |  | 2018-03-14 13:30 | 2018-03-14 14:30 | 1h |  |  | TEAM_2Shift_Calendar-1 | Fitter | 1h | 1h | 68.75 | 68.75 | 68.75 |
| 71 | 8.1.3 | Dish Blank Mkg Stamping | 4h | 2018-04-09 06:30 A | 2018-04-09 10:30 A | 70FS+41d | 100% |  | 2018-04-09 06:30 | 2018-04-09 10:30 | 4h |  |  | TEAM_2Shift_Calendar-1 | TPI (Cost) [0.1%]; QC Engineer | 2h | 2h |  |  |  |
| 72 | 8.1.4 | Transfer For Cutting | 2h | 2018-04-09 10:30 A | 2018-04-09 12:30 A | 71 | 100% |  | 2018-04-09 10:30 | 2018-04-09 12:30 | 2h |  |  | TEAM_2Shift_Calendar-1 | Helper | 2h | 2h | 100 | 100 | 100 |
| 73 | 8.1.5 | Dish Blank Cutting | 3h | 2018-04-10 12:30 A | 2018-04-10 15:30 A | 72FS+2d | 100% |  | 2018-04-10 12:30 | 2018-04-10 15:30 | 3h |  |  | TEAM_2Shift_Calendar-1 | Gas Cutter; OAGM; Helper | 9h | 9h | 288.28 | 288.28 | 288.28 |
| 74 | 8.1.6 | DishBlank OD Grinding | 7h | 2018-04-11 07:30 A | 2018-04-11 14:30 A | 73FS+1d | 100% |  | 2018-04-11 07:30 | 2018-04-11 14:30 | 7h |  |  | TEAM_2Shift_Calendar-1 | Grinding Machine; Grinder | 14h | 14h | 393.75 | 393.75 | 393.75 |
| 75 | 8.1.7 | Dish Blank Off loading For Forming | 4h | 2018-04-12 06:30 A | 2018-04-12 10:30 A | 74FS+1d | 100% |  | 2018-04-12 06:30 | 2018-04-12 10:30 | 4h |  |  | TEAM_2Shift_Calendar-1 | Helper | 4h | 4h | 200 | 200 | 200 |
| 76 | 8.1.8 | Dish Forming | 5d | 2018-04-12 10:30 A | 2018-04-16 18:30 A | 75 | 100% |  | 2018-04-12 10:30 | 2018-04-16 18:30 | 5d |  |  | TEAM_2Shift_Calendar-1 | SC (Cost) [0.1%] |  |  |  |  |  |
| 77 | 8.1.9 | Receipt After Forming | 3h | 2018-04-17 10:30 A | 2018-04-17 13:30 A | 76FS+1d | 100% |  | 2018-04-17 10:30 | 2018-04-17 13:30 | 3h |  |  | TEAM_2Shift_Calendar-1 | Helper [300%] | 9h | 9h | 450 | 450 | 450 |
| 78 | 8.1.10 | Inward Inspection | 3h | 2018-04-17 13:30 A | 2018-04-17 16:30 A | 77 | 100% |  | 2018-04-17 13:30 | 2018-04-17 16:30 | 3h |  |  | TEAM_2Shift_Calendar-1 | QC Engineer; Fitter | 4h | 4h | 275 | 275 | 275 |
| 79 | 8.1.11 | Surface Grinding | 12h | 2018-04-17 16:30 A | 2018-04-18 12:30 A | 78 | 100% |  | 2018-04-17 16:30 | 2018-04-18 12:30 | 12h |  |  | TEAM_2Shift_Calendar-1 | Grinding Machine; Grinder | 24h | 24h | 675 | 675 | 675 |
| 80 | 8.1.12 | Surface Dp Check | 6h | 2018-04-18 12:30 A | 2018-04-18 18:30 A | 79 | 100% |  | 2018-04-18 12:30 | 2018-04-18 18:30 | 6h |  |  | TEAM_2Shift_Calendar-1 | Helper; Fitter | 12h | 12h | 712.5 | 712.5 | 712.5 |
| 81 | 8.1.13 | Spider Set Up For SR | 8h | 2018-05-03 10:30 A | 2018-05-03 18:30 A | 80FS+21d | 100% |  | 2018-04-23 10:30 | 2018-04-23 18:30 | 8h |  |  | TEAM_2Shift_Calendar-1 | Helper [200%]; Fitter | 24h | 24h | 1,350 | 1,350 | 1,350 |
| 82 | 8.1.14 | Dish SR | 5d | 2018-05-03 18:30 A | 2018-05-07 10:30 A | 81 | 100% |  | 2018-04-23 18:30 | 2018-04-26 10:30 | 5d |  |  | TEAM_2Shift_Calendar-1 | SC (Cost) [0.1%] |  |  |  |  |  |
| 83 | 8.1.15 | Remove Spider | 8h | 2018-05-07 10:30 A | 2018-05-07 18:30 A | 82 | 100% |  | 2018-04-26 10:30 | 2018-04-26 18:30 | 8h |  |  | TEAM_2Shift_Calendar-1 | Grinding Machine; Grinder | 16h | 16h | 450 | 450 | 450 |
| 84 | 8.1.16 | Surface Cleaning | 6h | 2018-05-07 18:30 A | 2018-05-08 08:30 A | 83 | 100% |  | 2018-04-26 18:30 | 2018-04-27 08:30 | 6h |  |  | TEAM_2Shift_Calendar-1 | Helper | 6h | 6h | 300 | 300 | 300 |
| 85 | 8.1.17 | SF Marking | 4h | 2018-05-08 08:30 A | 2018-05-08 12:30 A | 84 | 100% |  | 2018-04-27 08:30 | 2018-04-27 12:30 | 4h |  |  | TEAM_2Shift_Calendar-1 | Helper; Fitter | 8h | 8h | 475 | 475 | 475 |
| 86 | 8.1.18 | SF Cutting | 5h | 2018-05-08 12:30 A | 2018-05-08 17:30 A | 85 | 100% |  | 2018-04-27 12:30 | 2018-04-27 17:30 | 5h |  |  | TEAM_2Shift_Calendar-1 | Gas Cutter; OAGM; Helper | 15h | 15h | 593.75 | 593.75 | 593.75 |
| 87 | 8.1.19 | Dish Edge Preparation | 8h | 2018-05-08 17:30 A | 2018-05-09 09:30 A | 86 | 100% |  | 2018-04-27 17:30 | 2018-04-30 09:30 | 8h |  |  | TEAM_2Shift_Calendar-1 | Grinding Machine; Grinder | 16h | 16h | 450 | 450 | 450 |
| 88 | 8.1.20 | Final Inspection | 1d | 2018-05-18 17:30 | 2018-05-19 09:30 | 87FS+15d |  |  | 2018-04-30 09:30 | 2018-04-30 17:30 | 1d | 42.38d |  | TEAM_2Shift_Calendar-1 | QC Engineer; Fitter | 4h |  | 244.44 | 250 |  |
| 89 | 8.2 | **Dish Forming (floating dish)** | 32d | 2018-05-04 10:30 A | 2018-05-24 10:30 |  | 73% | 8.59d | 2018-04-30 10:30 | 2018-05-14 18:30 | 21d | 34.25d |  | TEAM_2Shift_Calendar-1 |  | 226h | 130h | 9,493.75 | 10,043.75 | 5,306.25 |
| 90 | 8.2.1 | Dish Blank Marking | 1h | 2018-05-04 10:30 A | 2018-05-04 11:30 A | 48FS+16d | 100% |  | 2018-04-30 10:30 | 2018-04-30 11:30 | 1h |  |  | TEAM_2Shift_Calendar-1 | Helper; Plate (Cost) [0.1%]; Fitter | 2h | 2h | 118.75 | 118.75 | 118.75 |
| 91 | 8.2.2 | Dish Blank Mkg Inpection | 2h | 2018-05-04 11:30 A | 2018-05-04 13:30 A | 90 | 100% |  | 2018-04-30 11:30 | 2018-04-30 13:30 | 2h |  |  | TEAM_2Shift_Calendar-1 | Fitter | 2h | 2h | 137.5 | 137.5 | 137.5 |
| 92 | 8.2.3 | Dish Blank Mkg Stamping | 4h | 2018-05-14 21:30 A | 2018-05-15 09:30 A | 91FS+15d | 100% |  | 2018-04-30 13:30 | 2018-04-30 17:30 | 4h |  |  | TEAM_2Shift_Calendar-1 | Fitter | 2h | 2h | 137.5 | 137.5 | 137.5 |
| 93 | 8.2.4 | Transfer For Cutting | 4h | 2018-05-07 21:30 A | 2018-05-08 09:30 A | 91FS+5d | 100% |  | 2018-04-30 17:30 | 2018-04-30 21:30 | 4h |  |  | TEAM_2Shift_Calendar-1 | Helper [300%] | 12h | 12h | 600 | 600 | 600 |
| 94 | 8.2.5 | Dish Blank Cutting | 2h | 2018-05-08 09:30 A | 2018-05-08 11:30 A | 93 | 100% |  | 2018-04-30 21:30 | 2018-05-02 07:30 | 2h |  |  | TEAM_2Shift_Calendar-1 | Gas Cutter; OAGM; Helper | 6h | 6h | 237.5 | 237.5 | 237.5 |
| 95 | 8.2.6 | DishBlank OD Grinding | 6h | 2018-05-08 11:30 A | 2018-05-08 17:30 A | 94 | 100% |  | 2018-05-02 07:30 | 2018-05-02 13:30 | 6h |  |  | TEAM_2Shift_Calendar-1 | Grinding Machine; Grinder | 12h | 12h | 337.5 | 337.5 | 337.5 |
| 96 | 8.2.7 | Dish Blank Offloading For Forming | 2h | 2018-05-09 09:30 A | 2018-05-09 11:30 A | 95FS+1d | 100% |  | 2018-05-02 13:30 | 2018-05-02 15:30 | 2h |  |  | TEAM_2Shift_Calendar-1 | Helper | 2h | 2h | 100 | 100 | 100 |
| 97 | 8.2.8 | Dish Forming | 6d | 2018-05-09 11:30 A | 2018-05-14 11:30 A | 96 | 100% |  | 2018-05-02 15:30 | 2018-05-05 07:30 | 5d |  |  | TEAM_2Shift_Calendar-1 | SC (Cost) [0.1%] |  |  |  |  |  |
| 98 | 8.2.9 | Receipt After Forming | 2h | 2018-05-14 11:30 A | 2018-05-14 13:30 A | 97 | 100% |  | 2018-05-05 07:30 | 2018-05-05 09:30 | 2h |  |  | TEAM_2Shift_Calendar-1 | Helper | 2h | 2h | 100 | 100 | 100 |
| 99 | 8.2.10 | Inward Inspection | 2h | 2018-05-14 13:30 A | 2018-05-14 15:30 A | 98 | 100% |  | 2018-05-05 09:30 | 2018-05-05 11:30 | 2h |  |  | TEAM_2Shift_Calendar-1 | QC Engineer; Fitter | 2h | 2h | 137.5 | 137.5 | 137.5 |
| 100 | 8.2.11 | Surface Grinding | 10h | 2018-05-14 15:30 A | 2018-05-15 09:30 A | 99 | 100% |  | 2018-05-05 11:30 | 2018-05-05 21:30 | 10h |  |  | TEAM_2Shift_Calendar-1 | Grinding Machine; Grinder | 20h | 20h | 562.5 | 562.5 | 562.5 |
| 101 | 8.2.12 | Surface Dp Check | 1h | 2018-05-15 09:30 A | 2018-05-15 10:30 A | 100 | 100% |  | 2018-05-05 21:30 | 2018-05-07 06:30 | 1h |  |  | TEAM_2Shift_Calendar-1 | Helper; Fitter | 2h | 2h | 118.75 | 118.75 | 118.75 |
| 102 | 8.2.13 | Spider Set Up For SR | 6h | 2018-05-15 10:30 A | 2018-05-15 16:30 A | 101 | 100% |  | 2018-05-07 06:30 | 2018-05-07 12:30 | 6h |  |  | TEAM_2Shift_Calendar-1 | Helper [200%]; Fitter | 18h | 18h | 1,012.5 | 1,012.5 | 1,012.5 |
| 103 | 8.2.14 | Dish SR | 1d | 2018-05-18 16:30 A | 2018-05-19 08:30 A | 102FS+6d | 100% |  | 2018-05-07 12:30 | 2018-05-08 12:30 | 2d |  |  | TEAM_2Shift_Calendar-1 | SC (Work) | 5h | 5h |  |  |  |
| 104 | 8.2.15 | Remove Spider | 6h | 2018-05-19 08:30 A | 2018-05-19 14:30 A | 103 | 100% |  | 2018-05-08 12:30 | 2018-05-08 18:30 | 6h |  |  | TEAM_2Shift_Calendar-1 | Grinding Machine; Grinder | 12h | 12h | 337.5 | 337.5 | 337.5 |
| 105 | 8.2.16 | Surface Cleaning | 5h | 2018-05-19 14:30 A | 2018-05-19 19:30 A | 104 | 100% |  | 2018-05-08 18:30 | 2018-05-09 07:30 | 5h |  |  | TEAM_2Shift_Calendar-1 | Helper | 5h | 5h | 250 | 250 | 250 |
| 106 | 8.2.17 | SF Marking | 4h | 2018-05-19 19:30 A | 2018-05-21 07:30 A | 105 | 100% |  | 2018-05-09 07:30 | 2018-05-09 11:30 | 4h |  |  | TEAM_2Shift_Calendar-1 | Helper; Fitter | 8h | 8h | 475 | 475 | 475 |
| 107 | 8.2.18 | SF Cutting | 4h | 2018-05-21 07:30 A | 2018-05-21 11:30 A | 106 | 100% |  | 2018-05-09 11:30 | 2018-05-09 15:30 | 4h |  |  | TEAM_2Shift_Calendar-1 | Gas Cutter; OAGM; Helper | 12h | 12h | 475 | 475 | 475 |
| 108 | 8.2.19 | Dish Edge Preparation | 3h | 2018-05-21 11:30 A | 2018-05-21 14:30 A | 107 | 100% |  | 2018-05-09 15:30 | 2018-05-09 18:30 | 3h |  |  | TEAM_2Shift_Calendar-1 | Grinding Machine; Grinder | 6h | 6h | 168.75 | 168.75 | 168.75 |
| 109 | 8.2.20 | Final Inspection | 4h | 2018-05-21 14:30 | 2018-05-21 18:30 | 108 |  |  | 2018-05-09 18:30 | 2018-05-10 10:30 | 1d | 34.25d | 0d | TEAM_2Shift_Calendar-1 | Fitter [200%] | 8h |  | 550 | 1,100 |  |
| 110 | 8.2.21 | FL Dish with flange fitup | 6h | 2018-05-21 18:30 | 2018-05-22 08:30 | 109, 46 |  |  | 2018-05-10 10:30 | 2018-05-10 16:30 | 6h | 34.25d | 0d | TEAM_2Shift_Calendar-1 | Helper; SMAW Welder; SMAW Welding Machine; Fitter | 24h |  | 1,125 | 1,125 |  |
| 111 | 8.2.22 | Inspection | 2h | 2018-05-22 08:30 | 2018-05-22 10:30 | 110 |  |  | 2018-05-10 16:30 | 2018-05-10 18:30 | 2h | 34.25d | 0d | TEAM_2Shift_Calendar-1 | Fitter | 2h |  | 137.5 | 137.5 |  |
| 112 | 8.2.23 | Welding | 10h | 2018-05-22 10:30 | 2018-05-22 20:30 | 111 |  |  | 2018-05-10 18:30 | 2018-05-11 12:30 | 10h | 34.25d | 0d | TEAM_2Shift_Calendar-1 | SMAW Welder; SMAW Welding Machine; Helper | 30h |  | 1,187.5 | 1,187.5 |  |
| 113 | 8.2.24 | Backchip Grinding | 3h | 2018-05-22 20:30 | 2018-05-23 07:30 | 112 |  |  | 2018-05-11 12:30 | 2018-05-11 15:30 | 3h | 34.25d | 0d | TEAM_2Shift_Calendar-1 | Grinding Machine; Grinder | 6h |  | 168.75 | 168.75 |  |
| 114 | 8.2.25 | Inside Welding | 6h | 2018-05-23 07:30 | 2018-05-23 13:30 | 113 |  |  | 2018-05-11 15:30 | 2018-05-11 21:30 | 6h | 34.25d | 0d | TEAM_2Shift_Calendar-1 | SMAW Welder; SMAW Welding Machine; Helper | 18h |  | 712.5 | 712.5 |  |
| 115 | 8.2.26 | Inside flush Grinding | 3h | 2018-05-23 13:30 | 2018-05-23 16:30 | 114 |  |  | 2018-05-11 21:30 | 2018-05-14 08:30 | 3h | 34.25d | 0d | TEAM_2Shift_Calendar-1 | Grinding Machine; Grinder | 6h |  | 168.75 | 168.75 |  |
| 116 | 8.2.27 | DP Check | 2h | 2018-05-23 16:30 | 2018-05-23 18:30 | 115 |  |  | 2018-05-14 08:30 | 2018-05-14 10:30 | 2h | 34.25d | 0d | TEAM_2Shift_Calendar-1 | Fitter | 2h |  | 137.5 | 137.5 |  |
| 117 | 8.2.28 | RT | 1d | 2018-05-23 18:30 | 2018-05-24 10:30 | 116 |  |  | 2018-05-14 10:30 | 2018-05-14 18:30 | 1d | 34.25d |  | TEAM_2Shift_Calendar-1 | SC Radiography (Cost) [0.1%] |  |  |  |  |  |

Notes:
- 68: Plate material were received 9.02.2018
- 76: OD 754
- 97: ID 595
- 110: 0D 711xID594x132T

| ID | WBS | Task | Duration | Start | Finish | Predecessors | Complete | Baseline start | Baseline finish | Baseline duration | Calendar | Resources | Work | Actual work | Cost | Baseline cost | Actual cost |
| --- | --- | --- | --- | --- | --- | --- | --- | --- | --- | --- | --- | --- | --- | --- | --- | --- | --- |
| 118 | 8.3 | **Nozzle Fabrication** | 71.56d | 2018-04-04 10:30 A | 2018-05-21 07:00 A |  | 100% | 2018-04-04 10:30 | 2018-04-24 09:00 | 31.81d | TEAM_2Shift_Calendar-1 |  | 110h | 110h | 5,871.88 | 6,303.12 | 5,871.88 |
| 119 | 8.3.1 | Noz Pipe Marking | 4h | 2018-04-04 10:30 A | 2018-04-04 14:30 A | 60, 61, 62, 63FS+10d | 100% | 2018-04-04 10:30 | 2018-04-04 14:30 | 4h | TEAM_2Shift_Calendar-1 | Helper; Forging Non-Std (Cost) [0.1%]; Forging Std (Cost) [0.1%]; Pipe (Cost) [0.1%]; Fitter | 8h | 8h | 475 | 475 | 475 |
| 120 | 8.3.2 | Noz Pipe Stamping | 14h | 2018-04-05 06:30 A | 2018-04-05 20:30 A | 119FS+1d | 100% | 2018-04-05 06:30 | 2018-04-05 20:30 | 14h | TEAM_2Shift_Calendar-1 | TPI (Cost) [0.1%]; QC Engineer | 3h | 3h |  |  |  |
| 121 | 8.3.3 | Noz Flange+PipeFitUp | 8h | 2018-04-09 12:30 A | 2018-04-09 20:30 A | 120FS+5d | 100% | 2018-04-09 12:30 | 2018-04-09 20:30 | 8h | TEAM_2Shift_Calendar-1 | Helper [200%]; Fitter; TIG Welder; TIG Welding Machine | 40h | 40h | 2,350 | 2,350 | 2,350 |
| 122 | 8.3.4 | Noz Flange+Pipe Fit Up Inspection | 5h | 2018-04-25 20:30 A | 2018-04-26 09:30 A | 121FS+26d | 100% | 2018-04-21 20:30 | 2018-04-23 07:30 | 3h | TEAM_2Shift_Calendar-1 | Fitter [200%] | 3h | 3h | 206.25 | 412.5 | 206.25 |
| 123 | 8.3.5 | Noz Flange+PipeRootTigWelding | 3d | 2018-05-03 09:30 A | 2018-05-04 17:30 A | 122FS+8d | 100% | 2018-04-23 07:30 | 2018-04-23 11:30 | 4h | TEAM_2Shift_Calendar-1 | TIG Welder; TIG Welding Machine; Helper [200%] | 12h | 12h | 675 | 900 | 675 |
| 124 | 8.3.6 | Noz Flange+PipeFillerPassWelding | 3d | 2018-05-03 13:30 A | 2018-05-04 21:30 A | 123 | 100% | 2018-04-23 11:30 | 2018-04-23 15:30 | 4h | TEAM_2Shift_Calendar-1 | TIG Welder; TIG Welding Machine; Helper [200%] | 16h | 16h | 900 | 900 | 900 |
| 125 | 8.3.7 | Mp Con Marking | 0.5h | 2018-05-15 13:30 A | 2018-05-15 14:00 A | 124FS+15d | 100% | 2018-04-23 15:30 | 2018-04-23 16:00 | 0.5h | TEAM_2Shift_Calendar-1 | Helper; Fitter | 1h | 1h | 59.38 | 59.38 | 59.38 |
| 126 | 8.3.8 | Mp Con Openning | 2h | 2018-05-19 14:00 A | 2018-05-19 16:00 A | 125FS+8d | 100% | 2018-04-23 16:00 | 2018-04-23 18:00 | 2h | TEAM_2Shift_Calendar-1 | Gas Cutter; OAGM; Helper | 6h | 6h | 237.5 | 237.5 | 237.5 |
| 127 | 8.3.9 | Mp Con Ep | 1h | 2018-05-19 16:00 A | 2018-05-19 17:00 A | 126 | 100% | 2018-04-23 18:00 | 2018-04-23 19:00 | 1h | TEAM_2Shift_Calendar-1 | Grinding Machine; Grinder | 2h | 2h | 56.25 | 56.25 | 56.25 |
| 128 | 8.3.10 | Mp Con Noz FitUp | 1h | 2018-05-19 17:00 A | 2018-05-19 18:00 A | 127 | 100% | 2018-04-23 19:00 | 2018-04-23 20:00 | 1h | TEAM_2Shift_Calendar-1 | Helper [200%]; TIG Welder; TIG Welding Machine; Fitter | 5h | 5h | 293.75 | 293.75 | 293.75 |
| 129 | 8.3.11 | Mp Con Noz Welding | 2h | 2018-05-19 18:00 A | 2018-05-19 20:00 A | 128 | 100% | 2018-04-23 20:00 | 2018-04-23 22:00 | 2h | TEAM_2Shift_Calendar-1 | TIG Welder; TIG Welding Machine; Helper [200%] | 8h | 8h | 450 | 450 | 450 |
| 130 | 8.3.12 | Mp Con Noz Welding FlushGrind | 3h | 2018-05-19 20:00 A | 2018-05-21 07:00 A | 129 | 100% | 2018-04-24 06:00 | 2018-04-24 09:00 | 3h | TEAM_2Shift_Calendar-1 | Grinding Machine; Grinder | 6h | 6h | 168.75 | 168.75 | 168.75 |
| 131 | 8.4 | **Saddle Fabrication** | 50.88d | 2018-04-04 12:30 A | 2018-05-07 19:30 A |  | 100% | 2018-04-04 12:30 | 2018-04-27 11:30 | 37.88d | TEAM_2Shift_Calendar-1 |  | 285h | 285h | 12,856.25 | 12,856.25 | 12,856.25 |
| 132 | 8.4.1 | Saddle Pl Marking | 1d | 2018-04-04 12:30 A | 2018-04-04 20:30 A | 58FS+10d | 100% | 2018-04-04 12:30 | 2018-04-04 20:30 | 1d | TEAM_2Shift_Calendar-1 | Helper; Plate (Cost) [0.1%]; Fitter | 16h | 16h | 950 | 950 | 950 |
| 133 | 8.4.2 | Saddle Pl Mkg Inspection | 4h | 2018-04-04 20:30 A | 2018-04-05 08:30 A | 132 | 100% | 2018-04-04 20:30 | 2018-04-05 08:30 | 4h | TEAM_2Shift_Calendar-1 | QC Engineer; Fitter | 8h | 8h | 550 | 550 | 550 |
| 134 | 8.4.3 | Saddle Pl Mkg Cutting | 1d | 2018-04-07 16:30 A | 2018-04-09 08:30 A | 133FS+5d | 100% | 2018-04-07 16:30 | 2018-04-09 08:30 | 1d | TEAM_2Shift_Calendar-1 | Gas Cutter; OAGM; Helper | 24h | 24h | 950 | 950 | 950 |
| 135 | 8.4.4 | Grinding | 8h | 2018-04-30 16:30 A | 2018-05-02 08:30 A | 134FS+33d | 100% | 2018-04-21 16:30 | 2018-04-23 08:30 | 8h | TEAM_2Shift_Calendar-1 | Grinding Machine; Grinder | 16h | 16h | 450 | 450 | 450 |
| 136 | 8.4.5 | Saddle Base Hole Marking | 3h | 2018-05-02 16:30 A | 2018-05-02 19:30 A | 135FS+1d | 100% | 2018-04-23 08:30 | 2018-04-23 11:30 | 3h | TEAM_2Shift_Calendar-1 | Helper; Fitter | 6h | 6h | 356.25 | 356.25 | 356.25 |
| 137 | 8.4.6 | Saddle BaseHole Drilling | 5h | 2018-05-02 19:30 A | 2018-05-03 08:30 A | 136 | 100% | 2018-04-23 11:30 | 2018-04-23 16:30 | 5h | TEAM_2Shift_Calendar-1 | Radial Drilling Machine; Driller | 10h | 10h | 343.75 | 343.75 | 343.75 |
| 138 | 8.4.7 | Saddle Pad Forming | 1d | 2018-05-03 08:30 A | 2018-05-03 16:30 A | 137 | 100% | 2018-04-23 16:30 | 2018-04-24 08:30 | 1d | TEAM_2Shift_Calendar-1 | Helper; Fitter [200%] | 24h | 24h | 1,500 | 1,500 | 1,500 |
| 139 | 8.4.8 | Saddle FitUp | 8h | 2018-05-03 16:30 A | 2018-05-04 08:30 A | 138 | 100% | 2018-04-24 08:30 | 2018-04-24 16:30 | 8h | TEAM_2Shift_Calendar-1 | Helper [200%]; SMAW Welder; SMAW Welding Machine; Fitter | 40h | 40h | 1,900 | 1,900 | 1,900 |
| 140 | 8.4.9 | Saddle FitUp Inspection | 5h | 2018-05-04 08:30 A | 2018-05-04 13:30 A | 139 | 100% | 2018-04-24 16:30 | 2018-04-24 21:30 | 5h | TEAM_2Shift_Calendar-1 | Fitter | 5h | 5h | 343.75 | 343.75 | 343.75 |
| 141 | 8.4.10 | Saddle Welding | 30h | 2018-05-04 13:30 A | 2018-05-07 11:30 A | 140 | 100% | 2018-04-24 21:30 | 2018-04-26 19:30 | 30h | TEAM_2Shift_Calendar-1 | SMAW Welder; SMAW Welding Machine; Helper [200%] | 120h | 120h | 5,062.5 | 5,062.5 | 5,062.5 |
| 142 | 8.4.11 | Saddle Profile Grinding | 8h | 2018-05-07 11:30 A | 2018-05-07 19:30 A | 141 | 100% | 2018-04-26 19:30 | 2018-04-27 11:30 | 8h | TEAM_2Shift_Calendar-1 | Grinding Machine; Grinder | 16h | 16h | 450 | 450 | 450 |

Notes:
- 125: 1.5''Xsch 160
- 138: SADDLE PAD PL ~585LGx150x12T 2 NOS

| ID | WBS | Task | Duration | Start | Finish | Predecessors | Complete | Remaining | Baseline start | Baseline finish | Baseline duration | Total slack | Calendar | Resources | Work | Actual work | Cost | Baseline cost | Actual cost |
| --- | --- | --- | --- | --- | --- | --- | --- | --- | --- | --- | --- | --- | --- | --- | --- | --- | --- | --- | --- |
| 143 | 8.5 | **Baffle Fabrication** | 62.12d | 2018-04-05 09:30 A | 2018-05-16 10:30 A |  | 100% |  | 2018-04-05 09:30 | 2018-05-02 10:30 | 40.12d |  | TEAM_2Shift_Calendar-1 |  | 248h | 248h | 10,106.25 | 10,106.25 | 10,106.25 |
| 144 | 8.5.1 | Marking | 6h | 2018-04-05 09:30 A | 2018-04-05 15:30 A | 45FS+85d | 100% |  | 2018-04-05 09:30 | 2018-04-05 15:30 | 6h |  | TEAM_2Shift_Calendar-1 | Helper; Plate (Cost) [0.1%]; Fitter | 12h | 12h | 712.5 | 712.5 | 712.5 |
| 145 | 8.5.2 | Cutting | 8h | 2018-04-05 15:30 A | 2018-04-06 07:30 A | 144 | 100% |  | 2018-04-05 15:30 | 2018-04-06 07:30 | 8h |  | TEAM_2Shift_Calendar-1 | Gas Cutter; OAGM; Helper | 24h | 24h | 950 | 950 | 950 |
| 146 | 8.5.3 | Grinding | 1d | 2018-04-18 07:30 A | 2018-04-18 15:30 A | 145FS+18d | 100% |  | 2018-04-18 07:30 | 2018-04-18 15:30 | 1d |  | TEAM_2Shift_Calendar-1 | Grinding Machine; Grinder | 16h | 16h | 450 | 450 | 450 |
| 147 | 8.5.4 | Stacking | 6h | 2018-04-18 15:30 A | 2018-04-18 21:30 A | 146 | 100% |  | 2018-04-18 15:30 | 2018-04-18 21:30 | 6h |  | TEAM_2Shift_Calendar-1 | Fitter; Helper | 12h | 12h | 712.5 | 712.5 | 712.5 |
| 148 | 8.5.5 | CentreLineMarking | 3h | 2018-04-18 21:30 A | 2018-04-19 08:30 A | 147 | 100% |  | 2018-04-18 21:30 | 2018-04-19 08:30 | 3h |  | TEAM_2Shift_Calendar-1 | Helper; Fitter | 6h | 6h | 356.25 | 356.25 | 356.25 |
| 149 | 8.5.6 | Drilling | 28d | 2018-04-19 08:30 A | 2018-05-08 08:30 A | 148 | 100% |  | 2018-04-19 08:30 | 2018-04-23 08:30 | 6d |  | TEAM_2Shift_Calendar-1 | SC (Cost) [0.1%] |  |  |  |  |  |
| 150 | 8.5.7 | De Stacking | 6h | 2018-05-08 08:30 A | 2018-05-08 14:30 A | 149 | 100% |  | 2018-04-23 08:30 | 2018-04-23 14:30 | 6h |  | TEAM_2Shift_Calendar-1 | Fitter; Helper | 12h | 12h | 712.5 | 712.5 | 712.5 |
| 151 | 8.5.8 | HoleChamfering | 2d | 2018-05-08 14:30 A | 2018-05-09 14:30 A | 150 | 100% |  | 2018-04-23 14:30 | 2018-04-24 14:30 | 2d |  | TEAM_2Shift_Calendar-1 | Radial Drilling Machine; Driller | 32h | 32h | 1,100 | 1,100 | 1,100 |
| 152 | 8.5.9 | EdgeTrimming | 7h | 2018-05-09 14:30 A | 2018-05-09 21:30 A | 151 | 100% |  | 2018-04-24 14:30 | 2018-04-24 21:30 | 7h |  | TEAM_2Shift_Calendar-1 | Grinding Machine; Grinder | 14h | 14h | 393.75 | 393.75 | 393.75 |
| 153 | 8.5.10 | Grinding | 10h | 2018-05-09 21:30 A | 2018-05-10 15:30 A | 152 | 100% |  | 2018-04-24 21:30 | 2018-04-25 15:30 | 10h |  | TEAM_2Shift_Calendar-1 | Grinding Machine; Grinder | 20h | 20h | 562.5 | 562.5 | 562.5 |
| 154 | 8.5.11 | StackingTypeA&B | 6h | 2018-05-10 15:30 A | 2018-05-10 21:30 A | 153 | 100% |  | 2018-04-25 15:30 | 2018-04-25 21:30 | 6h |  | TEAM_2Shift_Calendar-1 | Fitter; Helper | 12h | 12h | 712.5 | 712.5 | 712.5 |
| 155 | 8.5.12 | ThroughHoleCheck | 1d | 2018-05-10 21:30 A | 2018-05-11 13:30 A | 154 | 100% |  | 2018-04-25 21:30 | 2018-04-26 13:30 | 1d |  | TEAM_2Shift_Calendar-1 | Helper; Fitter [200%] | 24h | 24h | 1,500 | 1,500 | 1,500 |
| 156 | 8.5.13 | ReDrill If Required | 1d | 2018-05-11 13:30 A | 2018-05-11 21:30 A | 155 | 100% |  | 2018-04-26 13:30 | 2018-04-26 21:30 | 1d |  | TEAM_2Shift_Calendar-1 | Radial Drilling Machine; Driller | 16h | 16h | 550 | 550 | 550 |
| 157 | 8.5.14 | OD Machining | 2d | 2018-05-11 21:30 A | 2018-05-14 21:30 A | 156 | 100% |  | 2018-04-26 21:30 | 2018-04-27 21:30 | 2d |  | TEAM_2Shift_Calendar-1 | SC (Work) | 22h | 22h |  |  |  |
| 158 | 8.5.15 | DeStacking | 5h | 2018-05-14 21:30 A | 2018-05-15 10:30 A | 157 | 100% |  | 2018-04-27 21:30 | 2018-04-30 10:30 | 5h |  | TEAM_2Shift_Calendar-1 | Fitter; Helper | 10h | 10h | 593.75 | 593.75 | 593.75 |
| 159 | 8.5.16 | Cleaning | 8h | 2018-05-15 10:30 A | 2018-05-15 18:30 A | 158 | 100% |  | 2018-04-30 10:30 | 2018-04-30 18:30 | 8h |  | TEAM_2Shift_Calendar-1 | Helper [200%] | 16h | 16h | 800 | 800 | 800 |
| 160 | 8.5.17 | ReadyForAssy | 1d | 2018-05-15 18:30 A | 2018-05-16 10:30 A | 159 | 100% |  | 2018-04-30 18:30 | 2018-05-02 10:30 | 1d |  | TEAM_2Shift_Calendar-1 |  |  |  |  |  |  |
| 161 | 8.6 | **Tube Sheet(Floating and Stationary)** | 96.88d | 2018-03-06 17:30 A | 2018-05-08 08:30 |  | 98% | 1.9d | 2018-03-06 17:30 | 2018-04-27 08:30 | 82.88d | 26.62d | TEAM_2Shift_Calendar-1 |  | 383h | 383h | 21,534.88 | 21,534.88 | 21,534.88 |
| 162 | 8.6.1 | Receipt Of Forging | 1d | 2018-03-06 17:30 A | 2018-03-07 09:30 | 44 | 38% | 0.62d | 2018-03-06 17:30 | 2018-03-07 09:30 | 1d | 122.5d | TEAM_2Shift_Calendar-1 | Tube Sheet (Cost) [0.1%]; Helper [200%] | 6h | 6h | 300 | 300 | 300 |
| 163 | 8.6.2 | Inspection | 7h | 2018-04-03 09:30 A | 2018-04-03 16:30 A | 162FS+42d | 100% |  | 2018-04-03 09:30 | 2018-04-03 16:30 | 7h |  | TEAM_2Shift_Calendar-1 | QC Engineer; Fitter [200%] | 4h | 4h | 266.13 | 266.13 | 266.13 |
| 164 | 8.6.3 | Off Load For Drilling | 4h | 2018-04-06 16:30 A | 2018-04-06 20:30 A | 163FS+6d | 100% |  | 2018-04-06 16:30 | 2018-04-06 20:30 | 4h |  | TEAM_2Shift_Calendar-1 | Helper [200%] | 8h | 8h | 400 | 400 | 400 |
| 165 | 8.6.4 | Drilling Of Tube Holes | 22d | 2018-04-09 12:30 A | 2018-04-23 12:30 A | 164FS+3d | 100% |  | 2018-04-09 12:30 | 2018-04-23 12:30 | 22d |  | TEAM_2Shift_Calendar-1 | Lathe Operator; Radial Drilling Machine | 300h | 300h | 18,000 | 18,000 | 18,000 |
| 166 | 8.6.5 | Drilling Of Bolt Holes | 12h | 2018-04-26 20:30 A | 2018-04-27 16:30 A | 165FS+7d | 100% |  | 2018-04-23 12:30 | 2018-04-24 08:30 | 12h |  | TEAM_2Shift_Calendar-1 | Radial Drilling Machine; Driller | 24h | 24h | 825 | 825 | 825 |
| 167 | 8.6.6 | Drilling Of Tie Rod Holes | 5h | 2018-04-27 16:30 A | 2018-04-27 21:30 A | 166 | 100% |  | 2018-04-24 08:30 | 2018-04-24 13:30 | 5h |  | TEAM_2Shift_Calendar-1 | Radial Drilling Machine; Driller | 10h | 10h | 343.75 | 343.75 | 343.75 |
| 168 | 8.6.7 | Drilling Of Pulling EyeBolt | 2h | 2018-05-02 13:30 A | 2018-05-02 15:30 A | 167 | 100% |  | 2018-04-25 21:30 | 2018-04-26 07:30 | 2h |  | TEAM_2Shift_Calendar-1 | Radial Drilling Machine; Driller | 4h | 4h | 137.5 | 137.5 | 137.5 |
| 169 | 8.6.8 | Drilling Of Lifting Eye Bolt | 2h | 2018-05-02 15:30 A | 2018-05-02 17:30 A | 168 | 100% |  | 2018-04-26 07:30 | 2018-04-26 09:30 | 2h |  | TEAM_2Shift_Calendar-1 | Radial Drilling Machine; Driller | 4h | 4h | 137.5 | 137.5 | 137.5 |
| 170 | 8.6.9 | TubeSheet Receipt After Drilling | 4h | 2018-05-02 17:30 A | 2018-05-02 21:30 A | 169 | 100% |  | 2018-04-26 09:30 | 2018-04-26 13:30 | 4h |  | TEAM_2Shift_Calendar-1 | Helper [200%] | 8h | 8h | 400 | 400 | 400 |
| 171 | 8.6.10 | M/C Of PassPartion | 3d | 2018-05-04 21:30 A | 2018-05-07 13:30 A | 170FS+4d | 100% |  | 2018-04-24 13:30 | 2018-04-25 21:30 | 3d |  | TEAM_2Shift_Calendar-1 | SC (Cost) [0.1%] |  |  |  |  |  |
| 172 | 8.6.11 | Tube Sheet Inspection | 1d | 2018-05-07 13:30 A | 2018-05-07 21:30 A | 171 | 100% |  | 2018-04-26 13:30 | 2018-04-26 21:30 | 1d |  | TEAM_2Shift_Calendar-1 | QC Engineer; Fitter | 6h | 6h | 275 | 275 | 275 |
| 173 | 8.6.12 | Tube Sheet Cleaning | 3h | 2018-05-07 21:30 A | 2018-05-08 08:30 A | 172 | 100% |  | 2018-04-26 21:30 | 2018-04-27 08:30 | 3h |  | TEAM_2Shift_Calendar-1 | Helper [300%] | 9h | 9h | 450 | 450 | 450 |

Notes:
- 149: 224 NOS,Ø25.8
- 154: 16 NOS
- 162: FL TUB SHEET Ø632x115T ST TUBE SHEET Ø718x115T
- 165: 224NOS Xø25.25
- 167: 2NOSxØ10
- 168: 2NOSxM24x3Px45
- 169: 1NOXØ10

| ID | WBS | Task | Duration | Start | Finish | Predecessors | Complete | Remaining | Baseline start | Baseline finish | Baseline duration | Total slack | Free slack | Calendar | Resources | Work | Actual work | Cost | Baseline cost | Actual cost |
| --- | --- | --- | --- | --- | --- | --- | --- | --- | --- | --- | --- | --- | --- | --- | --- | --- | --- | --- | --- | --- |
| 174 | 8.7 | **Sealing&slidingStrip Fabrication** | 30.44d | 2018-04-23 18:30 A | 2018-05-14 22:00 |  | 45% | 16.6d | 2018-04-23 18:30 | 2018-04-25 14:00 | 3.44d | 16.94d |  | TEAM_2Shift_Calendar-1 |  | 61h | 29h | 2,609.38 | 2,609.38 | 1,140.62 |
| 175 | 8.7.1 | Sealing Strip Marking | 3h | 2018-04-23 18:30 A | 2018-04-23 21:30 A | 51, 52FS+75d | 100% |  | 2018-04-23 18:30 | 2018-04-23 21:30 | 3h |  |  | TEAM_2Shift_Calendar-1 | Helper; Plate (Cost) [0.1%]; Fitter | 6h | 6h | 356.25 | 356.25 | 356.25 |
| 176 | 8.7.2 | Sealing Strip Cutting | 4h | 2018-04-23 21:30 A | 2018-04-24 09:30 A | 175 | 100% |  | 2018-04-23 21:30 | 2018-04-24 09:30 | 4h |  |  | TEAM_2Shift_Calendar-1 | Gas Cutter; OAGM; Helper | 12h | 12h | 475 | 475 | 475 |
| 177 | 8.7.3 | Sealing Strip Grinding | 5.5h | 2018-05-09 09:30 A | 2018-05-09 15:00 A | 176FS+22d | 100% |  | 2018-04-24 09:30 | 2018-04-24 15:00 | 5.5h |  |  | TEAM_2Shift_Calendar-1 | Grinding Machine; Grinder | 11h | 11h | 309.38 | 309.38 | 309.38 |
| 178 | 8.7.4 | Sliding Strip Marking | 3h | 2018-05-14 07:00 | 2018-05-14 10:00 | 177FS+5d |  |  | 2018-04-24 15:00 | 2018-04-24 18:00 | 3h | 16.94d | 0d | TEAM_2Shift_Calendar-1 | Helper; Fitter | 6h |  | 356.25 | 356.25 |  |
| 179 | 8.7.5 | Sliding Strip Cutting | 3h | 2018-05-14 10:00 | 2018-05-14 13:00 | 178 |  |  | 2018-04-24 18:00 | 2018-04-24 21:00 | 3h | 16.94d | 0d | TEAM_2Shift_Calendar-1 | Gas Cutter; Helper | 6h |  | 356.25 | 356.25 |  |
| 180 | 8.7.6 | Slidind Strip Grinding | 5h | 2018-05-14 13:00 | 2018-05-14 18:00 | 179 |  |  | 2018-04-24 21:00 | 2018-04-25 10:00 | 5h | 16.94d | 0d | TEAM_2Shift_Calendar-1 | Grinding Machine; Grinder | 10h |  | 281.25 | 281.25 |  |
| 181 | 8.7.7 | Seal Rod Marking | 2h | 2018-05-14 18:00 | 2018-05-14 20:00 | 180 |  |  | 2018-04-25 10:00 | 2018-04-25 12:00 | 2h | 16.94d | 0d | TEAM_2Shift_Calendar-1 | Helper; Fitter | 4h |  | 237.5 | 237.5 |  |
| 182 | 8.7.8 | Seal Rod Cutting | 2h | 2018-05-14 20:00 | 2018-05-14 22:00 | 181 |  |  | 2018-04-25 12:00 | 2018-04-25 14:00 | 2h | 16.94d |  | TEAM_2Shift_Calendar-1 | Gas Cutter; OAGM; Helper | 6h |  | 237.5 | 237.5 |  |
| 183 | 8.8 | **Tie Rod** | 2.38d | 2018-05-23 10:30 A | 2018-05-24 13:30 |  | 16% | 2d | 2018-05-02 10:30 | 2018-05-03 13:30 | 2.38d | 0d |  | TEAM_2Shift_Calendar-1 |  | 38h | 6h | 2,207.5 | 2,207.5 | 287.5 |
| 184 | 8.8.1 | Marking | 2h | 2018-05-23 10:30 A | 2018-05-23 12:30 A | 49 | 100% |  | 2018-05-02 10:30 | 2018-05-02 12:30 | 2h |  |  | TEAM_2Shift_Calendar-1 | Helper; Rod (Cost) [0.1%]; Fitter | 4h | 4h | 237.5 | 237.5 | 237.5 |
| 185 | 8.8.2 | Cutting | 1h | 2018-05-23 12:30 A | 2018-05-23 13:30 A | 184 | 100% |  | 2018-05-02 12:30 | 2018-05-02 13:30 | 1h |  |  | TEAM_2Shift_Calendar-1 | Helper; Cutting Machine | 2h | 2h | 50 | 50 | 50 |
| 186 | 8.8.3 | Thread Machining | 2d | 2018-05-23 13:30 | 2018-05-24 13:30 | 185 |  |  | 2018-05-02 13:30 | 2018-05-03 13:30 | 2d | 0d |  | TEAM_2Shift_Calendar-1 | Lathe; Lathe Operator | 32h |  | 1,920 | 1,920 |  |
| 187 | 8.9 | **SpacerTube** | 3.75d | 2018-05-19 10:30 A | 2018-05-22 08:30 A |  | 100% |  | 2018-04-26 18:30 | 2018-04-30 16:30 | 3.75d |  |  | TEAM_2Shift_Calendar-1 |  | 55h | 55h | 2,929.38 | 2,929.38 | 2,929.38 |
| 188 | 8.9.1 | SpacerTubeMarking | 4.5h | 2018-05-19 10:30 A | 2018-05-19 15:00 A | 50FS+8d | 100% |  | 2018-04-26 18:30 | 2018-04-27 07:00 | 4.5h |  |  | TEAM_2Shift_Calendar-1 | Helper; Tube (Cost) [0.1%]; Fitter | 9h | 9h | 534.38 | 534.38 | 534.38 |
| 189 | 8.9.2 | SpacerTubeCutting | 4.5h | 2018-05-19 15:00 A | 2018-05-19 19:30 A | 188 | 100% |  | 2018-04-27 07:00 | 2018-04-27 11:30 | 4.5h |  |  | TEAM_2Shift_Calendar-1 | Helper; Cutting Machine | 9h | 9h | 225 | 225 | 225 |
| 190 | 8.9.3 | SpacerTubeM/C | 2d | 2018-05-19 19:30 A | 2018-05-21 19:30 A | 189 | 100% |  | 2018-04-27 11:30 | 2018-04-30 11:30 | 2d |  |  | TEAM_2Shift_Calendar-1 | Lathe; Lathe Operator | 32h | 32h | 1,920 | 1,920 | 1,920 |
| 191 | 8.9.4 | SpacerCleaning | 5h | 2018-05-21 19:30 A | 2018-05-22 08:30 A | 190 | 100% |  | 2018-04-30 11:30 | 2018-04-30 16:30 | 5h |  |  | TEAM_2Shift_Calendar-1 | Helper | 5h | 5h | 250 | 250 | 250 |
| 192 | 8.10 | **Impingement Plate** | 1.56d | 2018-05-23 10:30 A | 2018-05-24 07:00 A |  | 100% |  | 2018-04-30 18:30 | 2018-05-02 15:00 | 1.56d |  |  | TEAM_2Shift_Calendar-1 |  | 29h | 29h | 1,337.5 | 1,337.5 | 1,337.5 |
| 193 | 8.10.1 | ImpingementPL Marking | 2h | 2018-05-23 10:30 A | 2018-05-23 12:30 A | 53FS+120d | 100% |  | 2018-04-30 18:30 | 2018-04-30 20:30 | 2h |  |  | TEAM_2Shift_Calendar-1 | Helper; Plate (Cost) [0.1%]; Fitter | 4h | 4h | 237.5 | 237.5 | 237.5 |
| 194 | 8.10.2 | ImpingementPL Cutting | 2.5h | 2018-05-23 12:30 A | 2018-05-23 15:00 A | 193 | 100% |  | 2018-04-30 20:30 | 2018-05-02 07:00 | 2.5h |  |  | TEAM_2Shift_Calendar-1 | Helper; Cutting Machine | 5h | 5h | 125 | 125 | 125 |
| 195 | 8.10.3 | ImpingementPL Grinding | 4h | 2018-05-23 15:00 A | 2018-05-23 19:00 A | 194 | 100% |  | 2018-05-02 07:00 | 2018-05-02 11:00 | 4h |  |  | TEAM_2Shift_Calendar-1 | Grinding Machine; Grinder | 8h | 8h | 225 | 225 | 225 |
| 196 | 8.10.4 | ImpingementPL Forming | 0.5d | 2018-05-23 19:00 A | 2018-05-24 07:00 A | 195 | 100% |  | 2018-05-02 11:00 | 2018-05-02 15:00 | 0.5d |  |  | TEAM_2Shift_Calendar-1 | Helper; Fitter [200%] | 12h | 12h | 750 | 750 | 750 |
| 197 | 8.11 | **Other Components(P.P,Lifting lug)** | 61.5d | 2018-04-12 19:00 A | 2018-05-23 15:00 A |  | 100% |  | 2018-04-12 19:00 | 2018-04-30 07:00 | 24.5d |  |  | TEAM_2Shift_Calendar-1 |  | 134h | 134h | 6,781.25 | 6,781.25 | 6,781.25 |
| 198 | 8.11.1 | Pass Partion Plate Marking | 3h | 2018-04-12 19:00 A | 2018-04-12 22:00 A | 54FS+25d | 100% |  | 2018-04-12 19:00 | 2018-04-12 22:00 | 3h |  |  | TEAM_2Shift_Calendar-1 | Helper; Fitter; Plate (Cost) [0.1%] | 6h | 6h | 356.25 | 356.25 | 356.25 |
| 199 | 8.11.2 | Inspection | 3h | 2018-04-12 22:00 A | 2018-04-13 09:00 A | 198 | 100% |  | 2018-04-12 22:00 | 2018-04-13 09:00 | 3h |  |  | TEAM_2Shift_Calendar-1 | QC Engineer; Fitter | 6h | 6h | 412.5 | 412.5 | 412.5 |
| 200 | 8.11.3 | Cutting | 3h | 2018-04-13 09:00 A | 2018-04-13 12:00 A | 199 | 100% |  | 2018-04-13 09:00 | 2018-04-13 12:00 | 3h |  |  | TEAM_2Shift_Calendar-1 | OAGM; Gas Cutter | 6h | 6h | 206.25 | 206.25 | 206.25 |
| 201 | 8.11.4 | Grinding | 4h | 2018-04-13 12:00 A | 2018-04-13 16:00 A | 200 | 100% |  | 2018-04-13 12:00 | 2018-04-13 16:00 | 4h |  |  | TEAM_2Shift_Calendar-1 | Grinding Machine; Grinder | 8h | 8h | 225 | 225 | 225 |
| 202 | 8.11.5 | Pass partition plate weld overlay | 1d | 2018-05-18 16:00 A | 2018-05-19 08:00 A | 201FS+52d | 100% |  | 2018-04-24 08:00 | 2018-04-24 16:00 | 1d |  |  | TEAM_2Shift_Calendar-1 | SMAW Welder; Plate (Cost) [0.1%]; Consumables (Cost) [0.1%]; Helper | 16h | 16h | 950 | 950 | 950 |
| 203 | 8.11.6 | Pre-machinng | 3h | 2018-05-19 08:00 A | 2018-05-19 11:00 A | 202 | 100% |  | 2018-04-24 16:00 | 2018-04-24 19:00 | 3h |  |  | TEAM_2Shift_Calendar-1 | Grinding Machine; Grinder | 6h | 6h | 168.75 | 168.75 | 168.75 |
| 204 | 8.11.7 | weld overlay | 6h | 2018-05-19 11:00 A | 2018-05-19 17:00 A | 203 | 100% |  | 2018-04-24 19:00 | 2018-04-25 09:00 | 6h |  |  | TEAM_2Shift_Calendar-1 | SMAW Welder; Helper | 12h | 12h | 712.5 | 712.5 | 712.5 |
| 205 | 8.11.8 | Final maching | 3h | 2018-05-19 17:00 A | 2018-05-19 20:00 A | 204 | 100% |  | 2018-04-25 09:00 | 2018-04-25 12:00 | 3h |  |  | TEAM_2Shift_Calendar-1 | Grinder | 3h | 3h | 168.75 | 168.75 | 168.75 |
| 206 | 8.11.9 | LiftingLug Marking | 4h | 2018-05-19 20:00 A | 2018-05-21 08:00 A | 205 | 100% |  | 2018-04-25 12:00 | 2018-04-25 16:00 | 4h |  |  | TEAM_2Shift_Calendar-1 | Helper; Fitter | 8h | 8h | 475 | 475 | 475 |
| 207 | 8.11.10 | LiftingLug Cutting | 4h | 2018-05-21 08:00 A | 2018-05-21 12:00 A | 206 | 100% |  | 2018-04-25 16:00 | 2018-04-25 20:00 | 4h |  |  | TEAM_2Shift_Calendar-1 | OAGM; Gas Cutter | 8h | 8h | 275 | 275 | 275 |
| 208 | 8.11.11 | Lifting LugPad Marking | 3h | 2018-05-21 12:00 A | 2018-05-21 15:00 A | 207 | 100% |  | 2018-04-25 20:00 | 2018-04-26 07:00 | 3h |  |  | TEAM_2Shift_Calendar-1 | Helper; Fitter | 6h | 6h | 356.25 | 356.25 | 356.25 |
| 209 | 8.11.12 | Lifting LugPad Cutting | 2h | 2018-05-21 15:00 A | 2018-05-21 17:00 A | 208 | 100% |  | 2018-04-26 07:00 | 2018-04-26 09:00 | 2h |  |  | TEAM_2Shift_Calendar-1 | OAGM; Gas Cutter | 4h | 4h | 137.5 | 137.5 | 137.5 |
| 210 | 8.11.13 | Lifting LugPad Grinding | 7h | 2018-05-21 17:00 A | 2018-05-22 08:00 A | 209 | 100% |  | 2018-04-26 09:00 | 2018-04-26 16:00 | 7h |  |  | TEAM_2Shift_Calendar-1 | Grinder | 7h | 7h | 393.75 | 393.75 | 393.75 |
| 211 | 8.11.14 | LiftingLugPadForming | 1d | 2018-05-22 08:00 A | 2018-05-22 16:00 A | 210 | 100% |  | 2018-04-26 16:00 | 2018-04-27 08:00 | 1d |  |  | TEAM_2Shift_Calendar-1 | Helper; Fitter [200%] | 12h | 12h | 750 | 750 | 750 |
| 212 | 8.11.15 | Ins Cleat Marking | 4h | 2018-05-22 16:00 A | 2018-05-22 20:00 A | 211 | 100% |  | 2018-04-27 08:00 | 2018-04-27 12:00 | 4h |  |  | TEAM_2Shift_Calendar-1 | Helper; Fitter | 8h | 8h | 475 | 475 | 475 |
| 213 | 8.11.16 | Ins Cleat Cutting | 4h | 2018-05-22 20:00 A | 2018-05-23 08:00 A | 212 | 100% |  | 2018-04-27 12:00 | 2018-04-27 16:00 | 4h |  |  | TEAM_2Shift_Calendar-1 | OAGM; Gas Cutter | 8h | 8h | 275 | 275 | 275 |
| 214 | 8.11.17 | Ins Cleat Grinding | 3h | 2018-05-23 08:00 A | 2018-05-23 11:00 A | 213 | 100% |  | 2018-04-27 16:00 | 2018-04-27 19:00 | 3h |  |  | TEAM_2Shift_Calendar-1 | Grinding Machine; Grinder | 6h | 6h | 168.75 | 168.75 | 168.75 |
| 215 | 8.11.18 | Ins Cleat Drilling | 4h | 2018-05-23 11:00 A | 2018-05-23 15:00 A | 214 | 100% |  | 2018-04-27 19:00 | 2018-04-30 07:00 | 4h |  |  | TEAM_2Shift_Calendar-1 | Driller | 4h | 4h | 275 | 275 | 275 |

Notes:
- 175: 51.2Wx8Tx5654LG 2 Nos
- 178: 53.3Wx16Tx5654LG 2 Nos
- 188: OD 17.5x2.35T
- 189: 50Nos
- 193: 228x120x6T
- 198: 569x708.5x14T
- 202: SA 516GR.60+1.25Cr.0.5Mo W.O 5T(W.O)
- 206: 4nos
- 212: 11Nos

| ID | WBS | Task | Type | Duration | Start | Finish | Predecessors | Complete | Baseline start | Baseline finish | Baseline duration | Calendar | Resources | Work | Actual work | Cost | Baseline cost | Actual cost |
| --- | --- | --- | --- | --- | --- | --- | --- | --- | --- | --- | --- | --- | --- | --- | --- | --- | --- | --- |
| 216 | 8.12 | **Shell LS** |  | 92.12d | 2018-03-14 09:30 A | 2018-05-11 10:30 A |  | 100% | 2018-03-14 09:30 | 2018-04-25 16:30 | 68.88d | TEAM_2Shift_Calendar-1 |  | 323h | 323h | 12,143.75 | 12,012.5 | 12,143.75 |
| 217 | 8.12.1 | ShPl.Marking |  | 4h | 2018-03-14 09:30 A | 2018-03-14 13:30 A | 35FS+51d | 100% | 2018-03-14 09:30 | 2018-03-14 13:30 | 4h | TEAM_2Shift_Calendar-1 | Helper; Plate (Cost) [0.1%]; Fitter | 8h | 8h |  |  |  |
| 218 | 8.12.2 | ShPl.Stamping |  | 7h | 2018-03-20 13:30 A | 2018-03-20 20:30 A | 217FS+10d | 100% | 2018-03-20 13:30 | 2018-03-20 20:30 | 7h | TEAM_2Shift_Calendar-1 | TPI (Cost) [0.1%]; QC Engineer [50%] | 2h | 2h |  |  |  |
| 219 | 8.12.3 | Sh-LS1Cutting(2000MM) |  | 3h | 2018-03-23 12:30 A | 2018-03-23 15:30 A | 218FS+5d | 100% | 2018-03-23 12:30 | 2018-03-23 15:30 | 3h | TEAM_2Shift_Calendar-1 | Gas Cutter; OAGM; Helper | 9h | 9h |  |  |  |
| 220 | 8.12.4 | Sh-LS2Cutting(2000MM) |  | 3h | 2018-03-23 15:30 A | 2018-03-23 18:30 A | 219 | 100% | 2018-03-23 15:30 | 2018-03-23 18:30 | 3h | TEAM_2Shift_Calendar-1 | Gas Cutter; OAGM; Helper | 9h | 9h |  |  |  |
| 221 | 8.12.5 | Sh-LS3Cutting(1425MM) |  | 3h | 2018-03-26 10:30 A | 2018-03-26 13:30 A | 220FS+1d | 100% | 2018-03-26 10:30 | 2018-03-26 13:30 | 3h | TEAM_2Shift_Calendar-1 | Gas Cutter; OAGM; Helper | 9h | 9h |  |  |  |
| 222 | 8.12.6 | Sh-LS1E.P |  | 4h | 2018-04-02 13:30 A | 2018-04-02 17:30 A | 221FS+12d | 100% | 2018-04-02 13:30 | 2018-04-02 17:30 | 4h | TEAM_2Shift_Calendar-1 | Grinding Machine; Grinder | 8h | 8h | 225 | 225 | 225 |
| 223 | 8.12.7 | Sh-LS2E.P |  | 4h | 2018-04-03 09:30 A | 2018-04-03 13:30 A | 222FS+1d | 100% | 2018-04-03 09:30 | 2018-04-03 13:30 | 4h | TEAM_2Shift_Calendar-1 | Grinding Machine; Grinder | 8h | 8h | 225 | 225 | 225 |
| 224 | 8.12.8 | Sh-LS3E.P |  | 4h | 2018-04-03 13:30 A | 2018-04-03 17:30 A | 223 | 100% | 2018-04-03 13:30 | 2018-04-03 17:30 | 4h | TEAM_2Shift_Calendar-1 | Grinding Machine; Grinder | 12h | 12h | 337.5 | 337.5 | 337.5 |
| 225 | 8.12.9 | Send for Shell rolling |  | 1d | 2018-04-10 09:30 A | 2018-04-10 17:30 A | 224FS+11d | 100% | 2018-04-10 09:30 | 2018-04-10 17:30 | 1d | TEAM_2Shift_Calendar-1 | Helper [300%] | 9h | 9h | 450 | 450 | 450 |
| 226 | 8.12.10 | Receipt of shell after Rolling |  | 1d | 2018-04-16 09:30 A | 2018-04-16 17:30 A | 225FS+7d | 100% | 2018-04-16 09:30 | 2018-04-16 17:30 | 1d | TEAM_2Shift_Calendar-1 | Helper [300%] | 12h | 12h | 600 | 600 | 600 |
| 227 | 8.12.11 | Sh-LS1 Fitup |  | 4h | 2018-04-18 09:30 A | 2018-04-18 13:30 A | 226FS+3d | 100% | 2018-04-18 09:30 | 2018-04-18 13:30 | 4h | TEAM_2Shift_Calendar-1 | Helper [200%]; SMAW Welder; SMAW Welding Machine; Fitter | 20h | 20h | 950 | 950 | 950 |
| 228 | 8.12.12 | Sh-LS2 Fitup |  | 4h | 2018-04-18 13:30 A | 2018-04-18 17:30 A | 227 | 100% | 2018-04-18 13:30 | 2018-04-18 17:30 | 4h | TEAM_2Shift_Calendar-1 | Helper [200%]; SMAW Welder; SMAW Welding Machine; Fitter | 20h | 20h | 950 | 950 | 950 |
| 229 | 8.12.13 | Sh-LS3 Fitup |  | 4h | 2018-04-18 17:30 A | 2018-04-18 21:30 A | 228 | 100% | 2018-04-18 17:30 | 2018-04-18 21:30 | 4h | TEAM_2Shift_Calendar-1 | Helper [200%]; SMAW Welder; SMAW Welding Machine; Fitter | 20h | 20h | 950 | 950 | 950 |
| 230 | 8.12.14 | Sh-LS1,2,3 Inspection |  | 5h | 2018-04-19 13:30 A | 2018-04-19 18:30 A | 227FS+2d | 100% | 2018-04-19 13:30 | 2018-04-19 18:30 | 5h | TEAM_2Shift_Calendar-1 | Helper; Fitter | 10h | 10h | 593.75 | 593.75 | 593.75 |
| 231 | 8.12.15 | Sh-LS1 Welding Arrangement |  | 2h | 2018-04-30 10:30 A | 2018-04-30 12:30 A | 230FS+15d | 100% | 2018-04-23 18:30 | 2018-04-23 20:30 | 2h | TEAM_2Shift_Calendar-1 | Fitter | 2h | 2h | 137.5 | 137.5 | 137.5 |
| 232 | 8.12.16 | Sh-LS2 Welding Arrangement |  | 2h | 2018-04-30 10:30 A | 2018-04-30 12:30 A | 230FS+15d | 100% | 2018-04-23 18:30 | 2018-04-23 20:30 | 2h | TEAM_2Shift_Calendar-1 | Fitter | 2h | 2h | 137.5 | 137.5 | 137.5 |
| 233 | 8.12.17 | Sh-LS3 Welding Arrangement |  | 2h | 2018-04-30 10:30 A | 2018-04-30 12:30 A | 230FS+15d | 100% | 2018-04-23 18:30 | 2018-04-23 20:30 | 2h | TEAM_2Shift_Calendar-1 | Fitter | 2h | 2h | 137.5 | 137.5 | 137.5 |
| 234 | 8.12.18 | Sh-LS1 Welding |  | 6h | 2018-05-03 20:30 A | 2018-05-04 10:30 A | 231FS+5d | 100% | 2018-04-23 20:30 | 2018-04-24 10:30 | 6h | TEAM_2Shift_Calendar-1 | SMAW Welder; SMAW Welding Machine; Helper [200%] | 24h | 24h | 1,012.5 | 1,012.5 | 1,012.5 |
| 235 | 8.12.19 | Sh-LS2 Welding |  | 6h | 2018-05-03 20:30 A | 2018-05-04 10:30 A | 232FS+5d | 100% | 2018-04-23 20:30 | 2018-04-24 10:30 | 6h | TEAM_2Shift_Calendar-1 | SMAW Welder; SMAW Welding Machine; Helper [200%] | 24h | 24h | 1,012.5 | 1,012.5 | 1,012.5 |
| 236 | 8.12.20 | Sh-LS3 Welding |  | 5h | 2018-05-03 20:30 A | 2018-05-04 09:30 A | 233FS+5d | 100% | 2018-04-23 20:30 | 2018-04-24 09:30 | 5h | TEAM_2Shift_Calendar-1 | SMAW Welder; SMAW Welding Machine; Helper [200%] | 20h | 20h | 843.75 | 843.75 | 843.75 |
| 237 | 8.12.21 | Sh-LS1 Backchip Grinding |  | 4h | 2018-05-04 10:30 A | 2018-05-04 14:30 A | 234 | 100% | 2018-04-24 10:30 | 2018-04-24 14:30 | 4h | TEAM_2Shift_Calendar-1 | Grinding Machine; Grinder | 8h | 8h | 225 | 225 | 225 |
| 238 | 8.12.22 | Sh-LS2 Backchip Grinding |  | 4h | 2018-05-04 10:30 A | 2018-05-04 14:30 A | 235 | 100% | 2018-04-24 10:30 | 2018-04-24 14:30 | 4h | TEAM_2Shift_Calendar-1 | Grinding Machine; Grinder | 8h | 8h | 225 | 225 | 225 |
| 239 | 8.12.23 | Sh-LS3 Backchip Grinding |  | 4h | 2018-05-04 09:30 A | 2018-05-04 13:30 A | 236 | 100% | 2018-04-24 09:30 | 2018-04-24 13:30 | 4h | TEAM_2Shift_Calendar-1 | Grinding Machine; Grinder | 8h | 8h | 225 | 225 | 225 |
| 240 | 8.12.24 | Sh-LS1 Inside Welding | milestone | 0d | 2018-05-04 14:30 A | 2018-05-04 14:30 A | 237 | 100% | 2018-04-24 14:30 | 2018-04-24 14:30 | 0d | TEAM_2Shift_Calendar-1 | SMAW Welder; SMAW Welding Machine; Helper [200%] |  |  |  |  |  |
| 241 | 8.12.25 | Sh-LS2 Inside Welding | milestone | 0d | 2018-05-04 14:30 A | 2018-05-04 14:30 A | 238 | 100% | 2018-04-24 14:30 | 2018-04-24 14:30 | 0d | TEAM_2Shift_Calendar-1 | SMAW Welder; SMAW Welding Machine; Helper [200%] |  |  |  |  |  |
| 242 | 8.12.26 | Sh-LS3 InsideWelding | milestone | 0d | 2018-05-04 13:30 A | 2018-05-04 13:30 A | 239 | 100% | 2018-04-24 13:30 | 2018-04-24 13:30 | 0d | TEAM_2Shift_Calendar-1 | SMAW Welder; SMAW Welding Machine; Helper [200%] |  |  |  |  |  |
| 243 | 8.12.27 | Sh-LS1 Inside FlushGrinding | milestone | 0d | 2018-05-04 14:30 A | 2018-05-04 14:30 A | 240 | 100% | 2018-04-24 14:30 | 2018-04-24 14:30 | 0d | TEAM_2Shift_Calendar-1 | Grinding Machine; Grinder |  |  |  |  |  |
| 244 | 8.12.28 | Sh-LS2 Inside FlushGrinding | milestone | 0d | 2018-05-04 14:30 A | 2018-05-04 14:30 A | 241 | 100% | 2018-04-24 14:30 | 2018-04-24 14:30 | 0d | TEAM_2Shift_Calendar-1 | Grinding Machine; Grinder |  |  |  |  |  |
| 245 | 8.12.29 | Sh-LS3 Inside FlushGrinding | milestone | 0d | 2018-05-04 13:30 A | 2018-05-04 13:30 A | 242 | 100% | 2018-04-24 13:30 | 2018-04-24 13:30 | 0d | TEAM_2Shift_Calendar-1 | Grinding Machine; Grinder |  |  |  |  |  |
| 246 | 8.12.30 | Sh-LS1 DPCheck |  | 2h | 2018-05-04 14:30 A | 2018-05-04 16:30 A | 243 | 100% | 2018-04-24 14:30 | 2018-04-24 16:30 | 2h | TEAM_2Shift_Calendar-1 | Fitter | 2h | 2h | 137.5 | 137.5 | 137.5 |
| 247 | 8.12.31 | Sh-LS2 DPCheck |  | 2h | 2018-05-04 14:30 A | 2018-05-04 16:30 A | 244 | 100% | 2018-04-24 14:30 | 2018-04-24 16:30 | 2h | TEAM_2Shift_Calendar-1 | Fitter | 2h | 2h | 137.5 | 137.5 | 137.5 |
| 248 | 8.12.32 | Sh-LS3 DPCheck |  | 2h | 2018-05-04 13:30 A | 2018-05-04 15:30 A | 245 | 100% | 2018-04-24 13:30 | 2018-04-24 15:30 | 2h | TEAM_2Shift_Calendar-1 | Fitter | 2h | 2h | 137.5 | 137.5 | 137.5 |
| 249 | 8.12.33 | Shell send for Re-rolling |  | 2h | 2018-05-04 15:30 A | 2018-05-04 17:30 A | 248 | 100% |  |  |  |  | Helper [300%] | 6h | 6h | 300 |  | 300 |
| 250 | 8.12.34 | Shell receipt after Re-rolling |  | 2h | 2018-05-08 17:30 A | 2018-05-09 10:30 A | 249FS+3d | 100% |  |  |  |  | Helper [300%] | 27h | 27h | 1,350 |  | 1,350 |
| 251 | 8.12.35 | Sh-LS1 Radiography |  | 3h | 2018-05-09 10:30 A | 2018-05-09 13:30 A | 250 | 100% | 2018-04-24 19:30 | 2018-04-25 11:30 | 1d | TEAM_2Shift_Calendar-1 | SC Radiography (Cost) [0.1%] |  |  |  |  |  |
| 252 | 8.12.36 | Sh-LS2 Radiography |  | 3h | 2018-05-09 13:30 A | 2018-05-09 16:30 A | 251 | 100% | 2018-04-24 19:30 | 2018-04-25 11:30 | 1d | TEAM_2Shift_Calendar-1 | SC Radiography (Cost) [0.1%] |  |  |  |  |  |
| 253 | 8.12.37 | Sh-LS3 Radiography |  | 3h | 2018-05-09 16:30 A | 2018-05-09 19:30 A | 252 | 100% | 2018-04-24 18:30 | 2018-04-25 10:30 | 1d | TEAM_2Shift_Calendar-1 | SC Radiography (Cost) [0.1%] |  |  |  |  |  |
| 254 | 8.12.38 | Sh-LS1 E.P for Cir-Seam |  | 5h | 2018-05-10 11:30 A | 2018-05-10 16:30 A | 253FS+1d | 100% | 2018-04-25 11:30 | 2018-04-25 16:30 | 5h | TEAM_2Shift_Calendar-1 | Grinding Machine; Grinder | 10h | 10h | 281.25 | 281.25 | 281.25 |
| 255 | 8.12.39 | Sh-LS2 E.P for Cir-seam |  | 5h | 2018-05-10 16:30 A | 2018-05-10 21:30 A | 254 | 100% | 2018-04-25 11:30 | 2018-04-25 16:30 | 5h | TEAM_2Shift_Calendar-1 | Grinding Machine; Grinder | 10h | 10h | 281.25 | 281.25 | 281.25 |
| 256 | 8.12.40 | Sh-LS3 E.P for Cir-Seam |  | 5h | 2018-05-10 21:30 A | 2018-05-11 10:30 A | 255 | 100% | 2018-04-25 10:30 | 2018-04-25 15:30 | 5h | TEAM_2Shift_Calendar-1 | Grinding Machine; Grinder | 10h | 10h | 281.25 | 281.25 | 281.25 |

Notes:
- 217: OD 668
- 234: 1.64kg/m
- 235: 1.64kg/m
- 236: 1.64kg/m

| ID | WBS | Task | Type | Duration | Start | Finish | Predecessors | Complete | Baseline start | Baseline finish | Baseline duration | Calendar | Resources | Work | Actual work | Cost | Baseline cost | Actual cost |
| --- | --- | --- | --- | --- | --- | --- | --- | --- | --- | --- | --- | --- | --- | --- | --- | --- | --- | --- |
| 257 | 8.13 | **Shell CS** |  | 4.75d | 2018-05-11 10:30 A | 2018-05-17 21:00 A |  | 100% | 2018-04-25 16:30 | 2018-05-03 08:00 | 4.12d |  |  | 140h | 140h | 6,383.04 | 6,383.04 | 6,383.04 |
| 258 | 8.13.1 | Sh-CS1Fitup |  | 3h | 2018-05-11 10:30 A | 2018-05-11 13:30 A | 216 | 100% | 2018-04-25 16:30 | 2018-04-25 19:30 | 3h | TEAM_2Shift_Calendar-1 | Helper [200%]; SMAW Welder; SMAW Welding Machine; Fitter | 15h | 15h | 712.5 | 712.5 | 712.5 |
| 259 | 8.13.2 | Sh-CS1 Inspection |  | 4h | 2018-05-11 13:30 A | 2018-05-11 17:30 A | 258 | 100% | 2018-04-25 19:30 | 2018-04-26 12:30 | 9h | TEAM_2Shift_Calendar-1 | QC Engineer; Fitter | 8h | 8h | 314.29 | 314.29 | 314.29 |
| 260 | 8.13.3 | Sh-CS1 Welding |  | 3.5h | 2018-05-14 09:30 A | 2018-05-14 13:00 A | 259 | 100% | 2018-04-26 12:30 | 2018-04-26 16:00 | 3.5h | TEAM_2Shift_Calendar-1 | SMAW Welder; SMAW Welding Machine; Helper [200%] | 24h | 24h | 1,012.5 | 1,012.5 | 1,012.5 |
| 261 | 8.13.4 | Sh-CS1 BackchipGrinding |  | 4h | 2018-05-14 13:00 A | 2018-05-14 17:00 A | 260 | 100% | 2018-04-26 16:00 | 2018-04-26 20:00 | 4h | TEAM_2Shift_Calendar-1 | Grinding Machine; Grinder | 8h | 8h | 225 | 225 | 225 |
| 262 | 8.13.5 | Sh-CS1 DPCheck |  | 2h | 2018-05-14 17:00 A | 2018-05-14 19:00 A | 261 | 100% | 2018-04-26 20:00 | 2018-04-26 22:00 | 2h | TEAM_2Shift_Calendar-1 | Fitter | 2h | 2h | 137.5 | 137.5 | 137.5 |
| 263 | 8.13.6 | Sh-CS2 Fitup |  | 3h | 2018-05-15 11:00 A | 2018-05-15 14:00 A | 262 | 100% | 2018-04-27 14:00 | 2018-04-27 17:00 | 3h | TEAM_2Shift_Calendar-1 | Helper [200%]; SMAW Welder; SMAW Welding Machine; Fitter | 15h | 15h | 712.5 | 712.5 | 712.5 |
| 264 | 8.13.7 | Sh-CS2 Inspection |  | 4h | 2018-05-15 14:00 A | 2018-05-15 18:00 A | 263 | 100% | 2018-04-27 17:00 | 2018-04-27 21:00 | 4h | TEAM_2Shift_Calendar-1 | QC Engineer; Fitter | 8h | 8h | 550 | 550 | 550 |
| 265 | 8.13.8 | Sh-CS2 Welding |  | 6h | 2018-05-15 18:00 A | 2018-05-16 08:00 A | 264 | 100% | 2018-04-27 21:00 | 2018-04-30 11:00 | 6h | TEAM_2Shift_Calendar-1 | SMAW Welder; SMAW Welding Machine; Helper [200%] | 24h | 24h | 1,012.5 | 1,012.5 | 1,012.5 |
| 266 | 8.13.9 | Sh-CS2 Backchip Grinding |  | 3h | 2018-05-16 08:00 A | 2018-05-16 11:00 A | 265 | 100% | 2018-04-30 11:00 | 2018-04-30 14:00 | 3h | TEAM_2Shift_Calendar-1 | Grinding Machine; Grinder | 6h | 6h | 168.75 | 168.75 | 168.75 |
| 267 | 8.13.10 | Sh-CS2 DPCheck |  | 2h | 2018-05-16 11:00 A | 2018-05-16 13:00 A | 266 | 100% | 2018-04-30 14:00 | 2018-04-30 16:00 | 2h | TEAM_2Shift_Calendar-1 | Fitter | 2h | 2h | 137.5 | 137.5 | 137.5 |
| 268 | 8.13.11 | Sh-CS2& CS 1 Radiography |  | 1d | 2018-05-16 13:00 A | 2018-05-16 21:00 A | 267 | 100% | 2018-04-30 16:00 | 2018-05-02 08:00 | 1d | TEAM_2Shift_Calendar-1 | SC (Cost) [0.1%] |  |  |  |  |  |
| 269 | 8.13.12 | Sh Orientation Mkg |  | 4h | 2018-05-16 21:00 A | 2018-05-17 09:00 A | 268 | 100% | 2018-05-02 08:00 | 2018-05-02 12:00 | 4h | TEAM_2Shift_Calendar-1 | Helper; Fitter | 8h | 8h | 475 | 475 | 475 |
| 270 | 8.13.13 | Sh Extra Length Cutting |  | 4h | 2018-05-17 09:00 A | 2018-05-17 13:00 A | 269 | 100% | 2018-05-02 12:00 | 2018-05-02 16:00 | 4h | TEAM_2Shift_Calendar-1 | OAGM; Helper; Gas Cutter | 12h | 12h | 475 | 475 | 475 |
| 271 | 8.13.14 | Sh CS E.P |  | 1d | 2018-05-17 13:00 A | 2018-05-17 21:00 A | 270 | 100% | 2018-05-02 16:00 | 2018-05-03 08:00 | 1d | TEAM_2Shift_Calendar-1 | Grinder | 8h | 8h | 450 | 450 | 450 |
| 272 | 8.14 | **Shell- flange welding** |  | 6.12d | 2018-05-17 13:00 A | 2018-05-21 14:00 A |  | 100% | 2018-05-02 16:00 | 2018-05-07 09:00 | 7.12d | TEAM_2Shift_Calendar-1 |  | 119h | 119h | 4,944.08 | 4,941.67 | 4,944.08 |
| 273 | 8.14.1 | Sh-front FlangeFitup |  | 4h | 2018-05-17 13:00 A | 2018-05-17 17:00 A | 39, 270 | 100% | 2018-05-02 16:00 | 2018-05-02 20:00 | 4h | TEAM_2Shift_Calendar-1 | Helper [200%]; SMAW Welder; SMAW Welding Machine; Forging Non-Std (Cost) [0.1%]; Fitter | 20h | 20h | 950 | 950 | 950 |
| 274 | 8.14.2 | Sh-front Flange fit upInspection |  | 3h | 2018-05-17 17:00 A | 2018-05-17 20:00 A | 273 | 100% | 2018-05-02 20:00 | 2018-05-03 07:00 | 3h | TEAM_2Shift_Calendar-1 | Helper; Fitter | 6h | 6h | 356.25 | 356.25 | 356.25 |
| 275 | 8.14.3 | Sh-front FlangeWelding |  | 5h | 2018-05-17 20:00 A | 2018-05-18 09:00 A | 274 | 100% | 2018-05-03 07:00 | 2018-05-03 12:00 | 5h | TEAM_2Shift_Calendar-1 | SMAW Welder; SMAW Welding Machine; Helper [200%] | 20h | 20h | 843.75 | 843.75 | 843.75 |
| 276 | 8.14.4 | Sh-front FlangeBackchip |  | 4h | 2018-05-18 09:00 A | 2018-05-18 13:00 A | 275 | 100% | 2018-05-03 12:00 | 2018-05-03 16:00 | 4h | TEAM_2Shift_Calendar-1 | Grinding Machine; Grinder | 8h | 8h | 225 | 225 | 225 |
| 277 | 8.14.5 | Sh-front Flange InsideWelding | milestone | 0d | 2018-05-18 13:00 A | 2018-05-18 13:00 A | 276 | 100% | 2018-05-03 16:00 | 2018-05-03 16:00 | 0d | TEAM_2Shift_Calendar-1 | SMAW Welder; SMAW Welding Machine; Helper [200%] |  |  |  |  |  |
| 278 | 8.14.6 | Sh-front Flange Flush Grinding | milestone | 0d | 2018-05-18 13:00 A | 2018-05-18 13:00 A | 277 | 100% | 2018-05-03 16:00 | 2018-05-03 16:00 | 0d | TEAM_2Shift_Calendar-1 | Grinding Machine; Grinder |  |  |  |  |  |
| 279 | 8.14.7 | Sh-front Flange DP Check |  | 2h | 2018-05-18 13:00 A | 2018-05-18 15:00 A | 278 | 100% | 2018-05-03 16:00 | 2018-05-03 18:00 | 2h | TEAM_2Shift_Calendar-1 | Fitter | 2h | 2h | 137.5 | 137.5 | 137.5 |
| 280 | 8.14.8 | Sh-front Flange Radiography |  | 1d | 2018-05-18 15:00 A | 2018-05-19 07:00 A | 279 | 100% | 2018-05-03 18:00 | 2018-05-04 10:00 | 1d | TEAM_2Shift_Calendar-1 | SC (Work) | 8h | 8h |  |  |  |
| 281 | 8.14.9 | Sh-RearFlangeFitup |  | 3h | 2018-05-18 15:00 A | 2018-05-18 18:00 A | 40, 279 | 100% | 2018-05-04 10:00 | 2018-05-04 13:00 | 3h | TEAM_2Shift_Calendar-1 | Helper [200%]; SMAW Welder; SMAW Welding Machine; Fitter | 15h | 15h | 712.5 | 712.5 | 712.5 |
| 282 | 8.14.10 | Sh-Rear Flange Inspection |  | 1d | 2018-05-18 18:00 A | 2018-05-19 10:00 A | 281 | 100% | 2018-05-04 13:00 | 2018-05-04 21:00 | 1d | TEAM_2Shift_Calendar-1 | QC Engineer; Fitter | 4h | 4h | 231.58 | 229.17 | 231.58 |
| 283 | 8.14.11 | Sh-Rear Flange Welding |  | 7h | 2018-05-19 10:00 A | 2018-05-19 17:00 A | 282 | 100% | 2018-05-04 21:00 | 2018-05-05 12:00 | 7h | TEAM_2Shift_Calendar-1 | SMAW Welder; SMAW Welding Machine; Helper [200%] | 28h | 28h | 1,181.25 | 1,181.25 | 1,181.25 |
| 284 | 8.14.12 | Sh-Rear Flange Backchip |  | 3h | 2018-05-19 17:00 A | 2018-05-19 20:00 A | 283 | 100% | 2018-05-05 12:00 | 2018-05-05 15:00 | 3h | TEAM_2Shift_Calendar-1 | Grinding Machine; Grinder | 6h | 6h | 168.75 | 168.75 | 168.75 |
| 285 | 8.14.13 | Sh-Rear Flange Inside Welding | milestone | 0d | 2018-05-19 20:00 A | 2018-05-19 20:00 A | 284 | 100% | 2018-05-05 15:00 | 2018-05-05 15:00 | 0d | TEAM_2Shift_Calendar-1 | SMAW Welder; SMAW Welding Machine; Helper [200%] |  |  |  |  |  |
| 286 | 8.14.14 | Sh-Rear Flange Flush Grinding | milestone | 0d | 2018-05-19 20:00 A | 2018-05-19 20:00 A | 285 | 100% | 2018-05-05 15:00 | 2018-05-05 15:00 | 0d | TEAM_2Shift_Calendar-1 | Grinding Machine; Grinder |  |  |  |  |  |
| 287 | 8.14.15 | Sh-RearFlangeDPCheck |  | 2h | 2018-05-19 20:00 A | 2018-05-19 22:00 A | 286 | 100% | 2018-05-05 15:00 | 2018-05-05 17:00 | 2h | TEAM_2Shift_Calendar-1 | Fitter | 2h | 2h | 137.5 | 137.5 | 137.5 |
| 288 | 8.14.16 | Sh-RearFlangeRadiography |  | 1d | 2018-05-21 06:00 A | 2018-05-21 14:00 A | 287 | 100% | 2018-05-05 17:00 | 2018-05-07 09:00 | 1d | TEAM_2Shift_Calendar-1 | SC Radiography (Cost) [0.1%] |  |  |  |  |  |

Notes:
- 258: (OD668MM)
- 260: 1.64kg/m
- 265: 1.64kg/m
- 273: OD 812xID 640 x90T
- 281: OD 898xID 640 x100T

| ID | WBS | Task | Type | Duration | Start | Finish | Predecessors | Complete | Remaining | Baseline start | Baseline finish | Baseline duration | Total slack | Free slack | Calendar | Resources | Work | Actual work | Cost | Baseline cost | Actual cost |
| --- | --- | --- | --- | --- | --- | --- | --- | --- | --- | --- | --- | --- | --- | --- | --- | --- | --- | --- | --- | --- | --- |
| 289 | 8.15 | **Shell-Nozzle assembly** |  | 2.25d | 2018-05-21 14:00 A | 2018-05-23 16:00 |  | 76% | 0.53d | 2018-05-07 09:00 | 2018-05-10 12:30 | 3.44d | 17.69d |  |  |  | 101h | 78h | 4,793.75 | 6,015.63 | 3,806.25 |
| 290 | 8.15.1 | ShNozzleOpeningforN1&N2 |  | 2h | 2018-05-21 14:00 A | 2018-05-21 16:00 A | 118, 288 | 100% |  | 2018-05-07 09:00 | 2018-05-07 11:00 | 2h |  |  | TEAM_2Shift_Calendar-1 | Gas Cutter; OAGM; Helper | 6h | 6h | 237.5 | 237.5 | 237.5 |
| 291 | 8.15.2 | Sh Nozzle Opening E.P |  | 3h | 2018-05-21 16:00 A | 2018-05-21 19:00 A | 290 | 100% |  | 2018-05-07 11:00 | 2018-05-07 14:00 | 3h |  |  | TEAM_2Shift_Calendar-1 | Grinding Machine; Grinder | 6h | 6h | 168.75 | 168.75 | 168.75 |
| 292 | 8.15.3 | Sh Nozzle RFpadfitup N2 | milestone | 0h | 2018-05-21 19:00 A | 2018-05-21 19:00 A | 291 | 100% |  | 2018-05-07 14:00 | 2018-05-07 14:00 | 0h |  |  | TEAM_2Shift_Calendar-1 | Helper [200%]; SMAW Welder; SMAW Welding Machine; Fitter |  |  |  |  |  |
| 293 | 8.15.4 | Sh Nozzle RF padfitup INSPN |  | 3h | 2018-05-21 19:00 A | 2018-05-21 22:00 A | 292 | 100% |  | 2018-05-07 14:00 | 2018-05-07 17:00 | 3h |  |  | TEAM_2Shift_Calendar-1 | Fitter [200%] | 6h | 6h | 412.5 | 412.5 | 412.5 |
| 294 | 8.15.5 | Sh Nozzle RFpad Welding N2 |  | 2h | 2018-05-22 06:00 A | 2018-05-22 08:00 A | 293 | 100% |  | 2018-05-07 17:00 | 2018-05-07 19:00 | 2h |  |  | TEAM_2Shift_Calendar-1 | SMAW Welder; SMAW Welding Machine; Helper [200%] | 8h | 8h | 337.5 | 337.5 | 337.5 |
| 295 | 8.15.6 | Sh Nozzle RFpad Air leaktest |  | 5h | 2018-05-22 08:00 A | 2018-05-22 13:00 A | 294 | 100% |  | 2018-05-07 19:00 | 2018-05-08 08:00 | 5h |  |  | TEAM_2Shift_Calendar-1 | Helper; Fitter | 10h | 10h | 593.75 | 593.75 | 593.75 |
| 296 | 8.15.7 | Sh Nozzle (N1,N2) Fitup Inspection |  | 0.5d | 2018-05-22 13:00 A | 2018-05-22 17:00 A | 295 | 100% |  | 2018-05-08 08:00 | 2018-05-08 12:00 | 0.5d |  |  | TEAM_2Shift_Calendar-1 | Helper [200%]; SMAW Welder; SMAW Welding Machine; Fitter | 20h | 20h | 950 | 950 | 950 |
| 297 | 8.15.8 | Sh Nozzle Welding Arragement |  | 3h | 2018-05-22 17:00 A | 2018-05-22 20:00 A | 296 | 100% |  | 2018-05-08 12:00 | 2018-05-08 15:00 | 3h |  |  | TEAM_2Shift_Calendar-1 | Helper; Fitter | 6h | 6h | 356.25 | 356.25 | 356.25 |
| 298 | 8.15.9 | Sh Nozzle Welding |  | 4h | 2018-05-22 20:00 A | 2018-05-23 08:00 A | 297 | 100% |  | 2018-05-08 15:00 | 2018-05-08 19:00 | 4h |  |  | TEAM_2Shift_Calendar-1 | Helper; SMAW Welder; SMAW Welding Machine; Fitter | 16h | 16h | 750 | 750 | 750 |
| 299 | 8.15.10 | Sh Nozzle Inside Grinding |  | 3h | 2018-05-23 08:00 | 2018-05-23 11:00 | 298 |  |  | 2018-05-08 19:00 | 2018-05-08 22:00 | 3h | 35.56d | 0d | TEAM_2Shift_Calendar-1 | Grinding Machine; Grinder | 6h |  | 168.75 | 168.75 |  |
| 300 | 8.15.11 | Sh Nozzle Inside Welding |  | 4h | 2018-05-23 11:00 | 2018-05-23 15:00 | 299 |  |  | 2018-05-09 06:00 | 2018-05-09 10:00 | 4h | 35.56d | 0d | TEAM_2Shift_Calendar-1 | SMAW Welder; SMAW Welding Machine; Fitter; Helper | 16h |  | 750 | 750 |  |
| 301 | 8.15.12 | Sh Nozzle Inside DPcheck |  | 1h | 2018-05-23 15:00 | 2018-05-23 16:00 | 300 |  |  | 2018-05-09 10:00 | 2018-05-09 11:00 | 1h | 35.56d |  | TEAM_2Shift_Calendar-1 | Fitter | 1h |  | 68.75 | 68.75 |  |
| 302 | 8.16 | **Shell- saddle assembly and final works** |  | 9.81d | 2018-05-17 19:30 A | 2018-05-30 16:00 |  | 23% | 7.57d | 2018-05-10 12:30 | 2018-05-18 16:30 | 6.38d | 5.69d |  |  |  | 155h | 75h | 6,764.38 | 6,764.38 | 3,403.12 |
| 303 | 8.16.1 | Sh+SaddlePadFitup |  | 9h | 2018-05-17 19:30 A | 2018-05-18 12:30 A | 131FS+16d | 100% |  | 2018-05-10 12:30 | 2018-05-10 21:30 | 9h |  |  | TEAM_2Shift_Calendar-1 | SMAW Welder; SMAW Welding Machine; Fitter; Helper | 27h | 27h | 1,265.62 | 1,265.62 | 1,265.62 |
| 304 | 8.16.2 | Sh+SaddlePadWeldingArrangement |  | 3h | 2018-05-18 12:30 A | 2018-05-18 15:30 A | 303 | 100% |  | 2018-05-10 21:30 | 2018-05-11 08:30 | 3h |  |  | TEAM_2Shift_Calendar-1 | Helper; Fitter | 12h | 12h | 712.5 | 712.5 | 712.5 |
| 305 | 8.16.3 | Sh+SaddlePadWelding |  | 12h | 2018-05-18 15:30 A | 2018-05-19 11:30 A | 304 | 100% |  | 2018-05-11 08:30 | 2018-05-11 20:30 | 12h |  |  | TEAM_2Shift_Calendar-1 | SMAW Welder; SMAW Welding Machine; Helper | 36h | 36h | 1,425 | 1,425 | 1,425 |
| 306 | 8.16.4 | Sh+LiftingLugPadFitup | milestone | 0d | 2018-05-23 15:00 | 2018-05-23 15:00 | 197, 305FS+5d |  |  | 2018-05-11 20:30 | 2018-05-11 20:30 | 0d | 11.69d | 0d | TEAM_2Shift_Calendar-1 | SMAW Welder; SMAW Welding Machine; Fitter; Helper |  |  |  |  |  |
| 307 | 8.16.5 | Sh+LiftingLugPadWeldingArrangement | milestone | 0d | 2018-05-23 15:00 | 2018-05-23 15:00 | 306 |  |  | 2018-05-11 20:30 | 2018-05-11 20:30 | 0d | 11.69d | 0d | TEAM_2Shift_Calendar-1 | Helper; Fitter |  |  |  |  |  |
| 308 | 8.16.6 | Sh+LiftingLugPadWelding | milestone | 0d | 2018-05-23 15:00 | 2018-05-23 15:00 | 307 |  |  | 2018-05-11 20:30 | 2018-05-11 20:30 | 0d | 11.69d | 0d | TEAM_2Shift_Calendar-1 | SMAW Welder; SMAW Welding Machine; Helper |  |  |  |  |  |
| 309 | 8.16.7 | Sh+LiftingLugFitup | milestone | 0d | 2018-05-23 15:00 | 2018-05-23 15:00 | 308 |  |  | 2018-05-11 20:30 | 2018-05-11 20:30 | 0d | 11.69d | 0d | TEAM_2Shift_Calendar-1 | Fitter; SMAW Welder; SMAW Welding Machine; Helper |  |  |  |  |  |
| 310 | 8.16.8 | Sh+LiftingLugWelding | milestone | 0d | 2018-05-23 15:00 | 2018-05-23 15:00 | 309 |  |  | 2018-05-11 20:30 | 2018-05-11 20:30 | 0d | 11.69d | 0d | TEAM_2Shift_Calendar-1 | SMAW Welder; SMAW Welding Machine; Helper |  |  |  |  |  |
| 311 | 8.16.9 | Sh+InsulationCleatFitup |  | 3h | 2018-05-23 15:00 | 2018-05-23 18:00 | 310 |  |  | 2018-05-11 20:30 | 2018-05-14 07:30 | 3h | 11.69d | 0d | TEAM_2Shift_Calendar-1 | Fitter; SMAW Welder; SMAW Welding Machine; Helper | 12h |  | 562.5 | 562.5 |  |
| 312 | 8.16.10 | Sh+InsulationCleatwelding |  | 3h | 2018-05-23 18:00 | 2018-05-23 21:00 | 311 |  |  | 2018-05-14 07:30 | 2018-05-14 10:30 | 3h | 11.69d | 0d | TEAM_2Shift_Calendar-1 | SMAW Welder; SMAW Welding Machine; Helper | 9h |  | 356.25 | 356.25 |  |
| 313 | 8.16.11 | Sh Final Dress Up |  | 6h | 2018-05-23 21:00 | 2018-05-24 11:00 | 312 |  |  | 2018-05-14 10:30 | 2018-05-14 16:30 | 6h | 11.69d | 0d | TEAM_2Shift_Calendar-1 | Grinding Machine; Grinder | 12h |  | 337.5 | 337.5 |  |
| 314 | 8.16.12 | Sh Dimensional Inspection |  | 3h | 2018-05-24 11:00 | 2018-05-24 14:00 | 313 |  |  | 2018-05-14 16:30 | 2018-05-14 19:30 | 3h | 11.69d | 0d | TEAM_2Shift_Calendar-1 | Fitter [200%] | 12h |  | 825 | 825 |  |
| 315 | 8.16.13 | Sh Clearance by TPI |  | 1.25d | 2018-05-24 14:00 | 2018-05-25 08:00 | 314 |  |  | 2018-05-14 19:30 | 2018-05-15 11:30 | 1d | 11.69d | 0d | TEAM_2Shift_Calendar-1 | QC Engineer | 4h |  |  |  |  |
| 316 | 8.16.14 | Sh PWHT |  | 4d | 2018-05-25 08:00 | 2018-05-29 08:00 | 315 |  |  | 2018-05-15 11:30 | 2018-05-17 11:30 | 4d | 11.69d | 0d | TEAM_2Shift_Calendar-1 | SC (Cost) [0.1%] |  |  |  |  |  |
| 317 | 8.16.15 | Sh Receiptafter PWHT |  | 5h | 2018-05-29 08:00 | 2018-05-29 13:00 | 316 |  |  | 2018-05-17 11:30 | 2018-05-17 16:30 | 5h | 11.69d | 0d | TEAM_2Shift_Calendar-1 | Crane [50%]; Helper [200%] | 12h |  | 480 | 480 |  |
| 318 | 8.16.16 | Sh Surface Cleaning |  | 1d | 2018-05-29 13:00 | 2018-05-29 21:00 | 317 |  |  | 2018-05-17 16:30 | 2018-05-18 08:30 | 1d | 11.69d | 0d | TEAM_2Shift_Calendar-1 | Helper | 16h |  | 800 | 800 |  |
| 319 | 8.16.17 | Sh NDE by TPI |  | 1.38d | 2018-05-29 21:00 | 2018-05-30 16:00 | 318 |  |  | 2018-05-18 08:30 | 2018-05-18 16:30 | 1d | 11.69d |  | TEAM_2Shift_Calendar-1 | QC Engineer | 3h |  |  |  |  |

Notes:
- 290: N1(SRN)- 3''NB, N2- 2''NB
- 303: 2Nos
- 311: 4Nos

| ID | WBS | Task | Type | Duration | Start | Finish | Predecessors | Complete | Baseline start | Baseline finish | Baseline duration | Calendar | Resources | Work | Actual work | Cost | Baseline cost | Actual cost |
| --- | --- | --- | --- | --- | --- | --- | --- | --- | --- | --- | --- | --- | --- | --- | --- | --- | --- | --- |
| 320 | 8.17 | **Channel Fabrication** |  | 50.31d | 2018-04-05 10:30 A | 2018-05-08 13:00 A |  | 100% | 2018-04-05 10:30 | 2018-05-02 21:00 | 41.31d | TEAM_2Shift_Calendar-1 |  | 113.5h | 113.5h | 4,984.93 | 4,984.93 | 4,984.93 |
| 321 | 8.17.1 | Ch Pl Marking |  | 4.5h | 2018-04-05 10:30 A | 2018-04-05 15:00 A | 36FS+12d | 100% | 2018-04-05 10:30 | 2018-04-05 15:00 | 4.5h | TEAM_2Shift_Calendar-1 | Helper; Plate (Cost) [0.1%]; Fitter | 9h | 9h | 534.38 | 534.38 | 534.38 |
| 322 | 8.17.2 | Ch Pl Stamping |  | 1d | 2018-04-10 07:00 A | 2018-04-10 15:00 A | 321FS+7d | 100% | 2018-04-10 07:00 | 2018-04-10 15:00 | 1d | TEAM_2Shift_Calendar-1 | QC Engineer; Helper | 5h | 5h | 191.18 | 191.18 | 191.18 |
| 323 | 8.17.3 | Ch-LSCutting |  | 2.5h | 2018-04-11 07:00 A | 2018-04-11 09:30 A | 322FS+1d | 100% | 2018-04-11 07:00 | 2018-04-11 09:30 | 2.5h | TEAM_2Shift_Calendar-1 | OAGM; Helper; Gas Cutter | 7.5h | 7.5h | 296.88 | 296.88 | 296.88 |
| 324 | 8.17.4 | Ch-LS E.P |  | 3h | 2018-04-12 09:30 A | 2018-04-12 12:30 A | 323FS+2d | 100% | 2018-04-12 09:30 | 2018-04-12 12:30 | 3h | TEAM_2Shift_Calendar-1 | Grinding Machine; Grinder | 6h | 6h | 168.75 | 168.75 | 168.75 |
| 325 | 8.17.5 | Ch-Shell Send for Rolling |  | 3h | 2018-04-24 20:30 A | 2018-04-25 07:30 A | 324FS+19d | 100% | 2018-04-23 12:30 | 2018-04-23 15:30 | 3h | TEAM_2Shift_Calendar-1 | Helper | 3h | 3h | 150 | 150 | 150 |
| 326 | 8.17.6 | Ch-Shell Receipt after rolling |  | 3h | 2018-04-27 15:30 A | 2018-04-27 18:30 A | 325FS+5d | 100% | 2018-04-26 07:30 | 2018-04-26 10:30 | 3h | TEAM_2Shift_Calendar-1 | Helper | 3h | 3h | 150 | 150 | 150 |
| 327 | 8.17.7 | Ch-LS fit UP |  | 8h | 2018-04-30 18:30 A | 2018-05-02 10:30 A | 326FS+2d | 100% | 2018-04-27 10:30 | 2018-04-27 18:30 | 8h | TEAM_2Shift_Calendar-1 | Fitter; Helper; welder | 8h | 8h | 356.25 | 356.25 | 356.25 |
| 328 | 8.17.8 | Ch-LS Fitup Inspection |  | 0.5d | 2018-05-02 10:30 A | 2018-05-02 14:30 A | 327 | 100% | 2018-04-27 18:30 | 2018-04-30 06:30 | 0.5d | TEAM_2Shift_Calendar-1 | Helper; Fitter | 8h | 8h | 475 | 475 | 475 |
| 329 | 8.17.9 | Ch-LS WeldingArrangement |  | 3h | 2018-05-02 14:30 A | 2018-05-02 17:30 A | 328 | 100% | 2018-04-30 06:30 | 2018-04-30 09:30 | 3h | TEAM_2Shift_Calendar-1 | Helper; Fitter | 6h | 6h | 356.25 | 356.25 | 356.25 |
| 330 | 8.17.10 | Ch-LS Welding |  | 2h | 2018-05-02 17:30 A | 2018-05-02 19:30 A | 329 | 100% | 2018-04-30 09:30 | 2018-04-30 11:30 | 2h | TEAM_2Shift_Calendar-1 | SMAW Welder; SMAW Welding Machine; Helper | 6h | 6h | 237.5 | 237.5 | 237.5 |
| 331 | 8.17.11 | Ch-LS BackchipGrinding |  | 2h | 2018-05-03 19:30 A | 2018-05-03 21:30 A | 330FS+2d | 100% | 2018-04-30 11:30 | 2018-04-30 13:30 | 2h | TEAM_2Shift_Calendar-1 | Grinding Machine; Grinder | 4h | 4h | 112.5 | 112.5 | 112.5 |
| 332 | 8.17.12 | Ch-LS InsideWelding | milestone | 0d | 2018-05-03 21:30 A | 2018-05-03 21:30 A | 331 | 100% | 2018-04-30 13:30 | 2018-04-30 13:30 | 0d | TEAM_2Shift_Calendar-1 | SMAW Welder; SMAW Welding Machine; Helper |  |  |  |  |  |
| 333 | 8.17.13 | Ch-LS FlushGrinding | milestone | 0d | 2018-05-03 21:30 A | 2018-05-03 21:30 A | 332 | 100% | 2018-04-30 13:30 | 2018-04-30 13:30 | 0d | TEAM_2Shift_Calendar-1 | Grinding Machine; Grinder |  |  |  |  |  |
| 334 | 8.17.14 | Ch-LS DPCheck |  | 1h | 2018-05-03 21:30 A | 2018-05-04 06:30 A | 333 | 100% | 2018-04-30 13:30 | 2018-04-30 14:30 | 1h | TEAM_2Shift_Calendar-1 | Fitter | 1h | 1h | 68.75 | 68.75 | 68.75 |
| 335 | 8.17.15 | Ch-LS Re-rolling |  | 3.5h | 2018-05-07 06:30 A | 2018-05-07 10:00 A | 334FS+4d | 100% | 2018-04-30 14:30 | 2018-04-30 18:00 | 3.5h | TEAM_2Shift_Calendar-1 | Helper [200%]; Fitter [200%] | 14h | 14h | 831.25 | 831.25 | 831.25 |
| 336 | 8.17.16 | Ch Radiography |  | 1d | 2018-05-07 10:00 A | 2018-05-07 18:00 A | 335 | 100% | 2018-04-30 18:00 | 2018-05-02 10:00 | 1d | TEAM_2Shift_Calendar-1 | SC (Work) | 8h | 8h |  |  |  |
| 337 | 8.17.17 | Ch Orientation Mkg |  | 4h | 2018-05-07 18:00 A | 2018-05-07 22:00 A | 336 | 100% | 2018-05-02 10:00 | 2018-05-02 14:00 | 4h | TEAM_2Shift_Calendar-1 | Helper; Fitter | 8h | 8h | 475 | 475 | 475 |
| 338 | 8.17.18 | Ch ExtraLength Cutting |  | 3h | 2018-05-08 06:00 A | 2018-05-08 09:00 A | 337 | 100% | 2018-05-02 14:00 | 2018-05-02 17:00 | 3h | TEAM_2Shift_Calendar-1 | OAGM; Helper; Gas Cutter | 9h | 9h | 356.25 | 356.25 | 356.25 |
| 339 | 8.17.19 | Ch E.P of Cir SeamSide |  | 4h | 2018-05-08 09:00 A | 2018-05-08 13:00 A | 338 | 100% | 2018-05-02 17:00 | 2018-05-02 21:00 | 4h | TEAM_2Shift_Calendar-1 | Grinding Machine; Grinder | 8h | 8h | 225 | 225 | 225 |
| 340 | 8.18 | **Channel to flange welding** |  | 7.5d | 2018-05-07 20:30 A | 2018-05-17 12:30 A |  | 100% | 2018-04-25 12:30 | 2018-05-07 09:00 | 7.56d |  |  | 116h | 116h | 6,962.5 | 6,962.5 | 6,962.5 |
| 341 | 8.18.1 | Ch-front flange weld overlay |  | 1d | 2018-05-07 20:30 A | 2018-05-08 12:30 A | 41, 65FS+23d | 100% | 2018-04-25 12:30 | 2018-04-25 20:30 | 1d | TEAM_2Shift_Calendar-1 | SMAW Welder; Consumables (Cost) [0.1%]; Forging Non-Std (Cost) [0.1%]; Helper | 16h | 16h | 950 | 950 | 950 |
| 342 | 8.18.2 | pre-machinng |  | 6h | 2018-05-08 12:30 A | 2018-05-08 18:30 A | 341 | 100% | 2018-04-25 20:30 | 2018-04-26 10:30 | 6h | TEAM_2Shift_Calendar-1 | Grinder | 6h | 6h | 337.5 | 337.5 | 337.5 |
| 343 | 8.18.3 | wel overlay |  | 6h | 2018-05-08 18:30 A | 2018-05-09 08:30 A | 342 | 100% | 2018-04-26 10:30 | 2018-04-26 16:30 | 6h | TEAM_2Shift_Calendar-1 | SMAW Welder; Helper | 12h | 12h | 712.5 | 712.5 | 712.5 |
| 344 | 8.18.4 | Final maching |  | 4h | 2018-05-11 16:30 A | 2018-05-11 20:30 A | 343FS+5d | 100% | 2018-04-26 16:30 | 2018-04-26 20:30 | 4h | TEAM_2Shift_Calendar-1 | Grinder | 4h | 4h | 225 | 225 | 225 |
| 345 | 8.18.5 | Ch-frontFlangeFitup |  | 5h | 2018-05-11 20:30 A | 2018-05-14 09:30 A | 338, 344 | 100% | 2018-05-02 17:00 | 2018-05-02 22:00 | 5h | TEAM_2Shift_Calendar-1 | SMAW Welder; Fitter; Helper | 15h | 15h | 937.5 | 937.5 | 937.5 |
| 346 | 8.18.6 | Ch-frontFlangeInspection |  | 0.5d | 2018-05-14 09:30 A | 2018-05-14 13:30 A | 345 | 100% | 2018-05-03 06:00 | 2018-05-03 10:00 | 0.5d | TEAM_2Shift_Calendar-1 | Helper; Fitter | 8h | 8h | 475 | 475 | 475 |
| 347 | 8.18.7 | Ch-frontFlangeWelding |  | 5h | 2018-05-14 13:30 A | 2018-05-14 18:30 A | 346 | 100% | 2018-05-03 10:00 | 2018-05-03 15:00 | 5h | TEAM_2Shift_Calendar-1 | SMAW Welder; Helper | 10h | 10h | 593.75 | 593.75 | 593.75 |
| 348 | 8.18.8 | Ch-frontFlangeBackchip |  | 4h | 2018-05-14 18:30 A | 2018-05-15 06:30 A | 347 | 100% | 2018-05-03 15:00 | 2018-05-03 19:00 | 4h | TEAM_2Shift_Calendar-1 | Grinder | 4h | 4h | 225 | 225 | 225 |
| 349 | 8.18.9 | Ch-frontFlangeInsideWelding | milestone | 0d | 2018-05-15 06:30 A | 2018-05-15 06:30 A | 348 | 100% | 2018-05-03 19:00 | 2018-05-03 19:00 | 0d | TEAM_2Shift_Calendar-1 | SMAW Welder; Helper |  |  |  |  |  |
| 350 | 8.18.10 | Ch-frontFlangeFlushGrinding | milestone | 0d | 2018-05-15 06:30 A | 2018-05-15 06:30 A | 349 | 100% | 2018-05-03 19:00 | 2018-05-03 19:00 | 0d | TEAM_2Shift_Calendar-1 | Grinder |  |  |  |  |  |
| 351 | 8.18.11 | Ch-frontFlangeDPCheck |  | 1h | 2018-05-15 06:30 A | 2018-05-15 07:30 A | 350 | 100% | 2018-05-03 19:00 | 2018-05-03 20:00 | 1h | TEAM_2Shift_Calendar-1 | Fitter | 1h | 1h | 68.75 | 68.75 | 68.75 |
| 352 | 8.18.12 | Ch-frontFlangeRadiography |  | 1d | 2018-05-15 07:30 A | 2018-05-15 15:30 A | 351 | 100% | 2018-05-03 20:00 | 2018-05-04 12:00 | 1d | TEAM_2Shift_Calendar-1 | SC Radiography (Cost) [0.1%] |  |  |  |  |  |
| 353 | 8.18.13 | Ch-RearFlangeFitup |  | 5h | 2018-05-15 15:30 A | 2018-05-15 20:30 A | 352, 42 | 100% | 2018-05-04 12:00 | 2018-05-04 17:00 | 5h | TEAM_2Shift_Calendar-1 | SMAW Welder; Fitter; Helper | 15h | 15h | 937.5 | 937.5 | 937.5 |
| 354 | 8.18.14 | Ch-RearFlangeInspection |  | 0.5d | 2018-05-15 20:30 A | 2018-05-16 08:30 A | 353 | 100% | 2018-05-04 17:00 | 2018-05-04 21:00 | 0.5d | TEAM_2Shift_Calendar-1 | Helper; Fitter | 8h | 8h | 475 | 475 | 475 |
| 355 | 8.18.15 | Ch-RearFlangeWelding |  | 5h | 2018-05-16 08:30 A | 2018-05-16 13:30 A | 354 | 100% | 2018-05-04 21:00 | 2018-05-05 10:00 | 5h | TEAM_2Shift_Calendar-1 | SMAW Welder; Helper | 10h | 10h | 593.75 | 593.75 | 593.75 |
| 356 | 8.18.16 | Ch-RearFlangeBackChip |  | 4h | 2018-05-16 13:30 A | 2018-05-16 17:30 A | 355 | 100% | 2018-05-05 10:00 | 2018-05-05 14:00 | 4h | TEAM_2Shift_Calendar-1 | Grinder | 4h | 4h | 225 | 225 | 225 |
| 357 | 8.18.17 | Ch-RearFlangeInsideWelding | milestone | 0d | 2018-05-16 17:30 A | 2018-05-16 17:30 A | 356 | 100% | 2018-05-05 14:00 | 2018-05-05 14:00 | 0d | TEAM_2Shift_Calendar-1 | SMAW Welder; Helper |  |  |  |  |  |
| 358 | 8.18.18 | Ch-RearFlangeFlushGrinding | milestone | 0d | 2018-05-16 17:30 A | 2018-05-16 17:30 A | 357 | 100% | 2018-05-05 14:00 | 2018-05-05 14:00 | 0d | TEAM_2Shift_Calendar-1 | Grinder |  |  |  |  |  |
| 359 | 8.18.19 | Ch-RearFlangeDPCheck |  | 3h | 2018-05-16 17:30 A | 2018-05-16 20:30 A | 358 | 100% | 2018-05-05 14:00 | 2018-05-05 17:00 | 3h | TEAM_2Shift_Calendar-1 | Fitter | 3h | 3h | 206.25 | 206.25 | 206.25 |
| 360 | 8.18.20 | Ch-Rear FlangeRadiography |  | 1d | 2018-05-16 20:30 A | 2018-05-17 12:30 A | 359 | 100% | 2018-05-05 17:00 | 2018-05-07 09:00 | 1d | TEAM_2Shift_Calendar-1 | SC (Cost) [0.1%] |  |  |  |  |  |

Notes:
- 325: OD 668
- 330: 1.64kg/m
- 341: SA 266 Gr.4+1.25Cr.0.5Mo W.O
- 345: OD812xID640x90T
- 353: OD 812XID 640x90T

| ID | WBS | Task | Duration | Start | Finish | Predecessors | Complete | Remaining | Baseline start | Baseline finish | Baseline duration | Total slack | Free slack | Calendar | Resources | Work | Actual work | Cost | Baseline cost | Actual cost |
| --- | --- | --- | --- | --- | --- | --- | --- | --- | --- | --- | --- | --- | --- | --- | --- | --- | --- | --- | --- | --- |
| 361 | 8.19 | **Channel Nozzle and final assembly and Inspection** | 8.56d | 2018-05-17 12:30 A | 2018-05-29 09:00 |  | 37% | 5.42d | 2018-05-05 17:00 | 2018-05-18 16:00 | 9.88d | 7.44d |  |  |  | 240h | 119h | 10,643.75 | 10,893.75 | 4,931.25 |
| 362 | 8.19.1 | ChNozzle Opening-N3&N4 | 3h | 2018-05-17 12:30 A | 2018-05-17 15:30 A | 359FS+1d, 124FS+1d | 100% |  | 2018-05-05 17:00 | 2018-05-05 20:00 | 3h |  |  | TEAM_2Shift_Calendar-1 | OAGM; Helper; Gas Cutter | 9h | 9h | 356.25 | 356.25 | 356.25 |
| 363 | 8.19.2 | Ch Nozzle Opening E.P | 6h | 2018-05-17 15:30 A | 2018-05-17 21:30 A | 362 | 100% |  | 2018-05-05 20:00 | 2018-05-07 10:00 | 6h |  |  | TEAM_2Shift_Calendar-1 | Grinding Machine; Grinder | 12h | 12h | 337.5 | 337.5 | 337.5 |
| 364 | 8.19.3 | Ch Nozzle Fitup-N3&N4 | 5h | 2018-05-17 21:30 A | 2018-05-18 10:30 A | 363 | 100% |  | 2018-05-07 10:00 | 2018-05-07 15:00 | 5h |  |  | TEAM_2Shift_Calendar-1 | SMAW Welder; SMAW Welding Machine; Fitter; Helper | 20h | 20h | 937.5 | 937.5 | 937.5 |
| 365 | 8.19.4 | Ch Nozzle Fitup Inspection | 3h | 2018-05-18 10:30 A | 2018-05-18 13:30 A | 364 | 100% |  | 2018-05-07 15:00 | 2018-05-07 18:00 | 3h |  |  | TEAM_2Shift_Calendar-1 | Helper; Fitter | 6h | 6h | 356.25 | 356.25 | 356.25 |
| 366 | 8.19.5 | Ch Nozzle Welding Arragement | 2h | 2018-05-18 13:30 A | 2018-05-18 15:30 A | 365 | 100% |  | 2018-05-07 18:00 | 2018-05-07 20:00 | 2h |  |  | TEAM_2Shift_Calendar-1 | Helper; Fitter | 4h | 4h | 237.5 | 237.5 | 237.5 |
| 367 | 8.19.6 | Ch Nozzle Welding | 6h | 2018-05-18 15:30 A | 2018-05-18 21:30 A | 366 | 100% |  | 2018-05-07 20:00 | 2018-05-08 10:00 | 6h |  |  | TEAM_2Shift_Calendar-1 | SMAW Welder; SMAW Welding Machine; Helper | 18h | 18h | 712.5 | 712.5 | 712.5 |
| 368 | 8.19.7 | Ch Nozzle Inside Grinding | 4h | 2018-05-18 21:30 A | 2018-05-19 09:30 A | 367 | 100% |  | 2018-05-08 10:00 | 2018-05-08 14:00 | 4h |  |  | TEAM_2Shift_Calendar-1 | Grinding Machine; Grinder | 8h | 8h | 225 | 225 | 225 |
| 369 | 8.19.8 | Ch Nozzle Inside Welding | 3h | 2018-05-19 09:30 A | 2018-05-19 12:30 A | 368 | 100% |  | 2018-05-08 14:00 | 2018-05-08 17:00 | 3h |  |  | TEAM_2Shift_Calendar-1 | SMAW Welder; SMAW Welding Machine; Helper | 9h | 9h | 356.25 | 356.25 | 356.25 |
| 370 | 8.19.9 | Ch Nozzle Inside flushGrinding | 2h | 2018-05-19 12:30 A | 2018-05-19 14:30 A | 369 | 100% |  | 2018-05-08 17:00 | 2018-05-08 19:00 | 2h |  |  | TEAM_2Shift_Calendar-1 | Grinding Machine; Grinder | 4h | 4h | 112.5 | 112.5 | 112.5 |
| 371 | 8.19.10 | Dpcheck | 1h | 2018-05-19 14:30 A | 2018-05-19 15:30 A | 370 | 100% |  | 2018-05-08 19:00 | 2018-05-08 20:00 | 1h |  |  | TEAM_2Shift_Calendar-1 | Fitter | 1h | 1h | 68.75 | 68.75 | 68.75 |
| 372 | 8.19.11 | N9,N10MP connection marking | 1h | 2018-05-19 16:00 A | 2018-05-19 17:00 A | 371, 126 | 100% |  | 2018-05-08 20:00 | 2018-05-08 21:00 | 1h |  |  | TEAM_2Shift_Calendar-1 | Fitter | 1h | 1h | 68.75 | 68.75 | 68.75 |
| 373 | 8.19.12 | opening | 2h | 2018-05-19 17:00 A | 2018-05-19 19:00 A | 372 | 100% |  | 2018-05-08 21:00 | 2018-05-09 07:00 | 2h |  |  | TEAM_2Shift_Calendar-1 | OAGM; Helper; Gas Cutter | 6h | 6h | 237.5 | 237.5 | 237.5 |
| 374 | 8.19.13 | fitup | 2h | 2018-05-19 19:00 A | 2018-05-19 21:00 A | 373 | 100% |  | 2018-05-09 07:00 | 2018-05-09 09:00 | 2h |  |  | TEAM_2Shift_Calendar-1 | SMAW Welder; SMAW Welding Machine; Fitter; Helper | 8h | 8h | 375 | 375 | 375 |
| 375 | 8.19.14 | Inspection | 1h | 2018-05-19 21:00 A | 2018-05-19 22:00 A | 374 | 100% |  | 2018-05-09 09:00 | 2018-05-09 10:00 | 1h |  |  | TEAM_2Shift_Calendar-1 | Fitter | 1h | 1h | 68.75 | 68.75 | 68.75 |
| 376 | 8.19.15 | welding | 3h | 2018-05-21 06:00 A | 2018-05-21 09:00 A | 375 | 100% |  | 2018-05-09 10:00 | 2018-05-09 13:00 | 3h |  |  | TEAM_2Shift_Calendar-1 | SMAW Welder; SMAW Welding Machine; Helper | 9h | 9h | 356.25 | 356.25 | 356.25 |
| 377 | 8.19.16 | grinding | 1h | 2018-05-21 09:00 A | 2018-05-21 10:00 A | 376 | 100% |  | 2018-05-09 13:00 | 2018-05-09 14:00 | 1h |  |  | TEAM_2Shift_Calendar-1 | Grinding Machine; Grinder | 2h | 2h | 56.25 | 56.25 | 56.25 |
| 378 | 8.19.17 | Dpcheck | 1h | 2018-05-21 10:00 A | 2018-05-21 11:00 A | 377 | 100% |  | 2018-05-09 14:00 | 2018-05-09 15:00 | 1h |  |  | TEAM_2Shift_Calendar-1 | Fitter | 1h | 1h | 68.75 | 68.75 | 68.75 |
| 379 | 8.19.18 | Ch Nozzle Radiography | 1d | 2018-05-21 11:00 | 2018-05-21 19:00 | 378 |  |  | 2018-05-09 15:00 | 2018-05-10 07:00 | 1d | 14.69d | 0d | TEAM_2Shift_Calendar-1 | SC Radiography (Cost) [0.1%] |  |  |  |  |  |
| 380 | 8.19.19 | Pass Partition plate fit up | 1d | 2018-05-21 19:00 | 2018-05-22 17:30 | 205, 379 |  |  | 2018-05-10 07:00 | 2018-05-10 17:30 | 1d | 7d | 0d |  | Fitter; SMAW Welder | 19h |  | 1,306.25 | 1,306.25 |  |
| 381 | 8.19.20 | Pass partition plate welding | 1d | 2018-05-22 17:30 | 2018-05-23 17:30 | 380 |  |  | 2018-05-10 17:30 | 2018-05-11 17:30 | 1d | 7d | 0d |  | SMAW Welder | 9h |  | 618.75 | 618.75 |  |
| 382 | 8.19.21 | Ch LiftingLugPad Fitup | 3h | 2018-05-23 17:30 | 2018-05-23 20:30 | 197, 381 |  |  | 2018-05-11 17:30 | 2018-05-11 20:30 | 3h | 14.06d | 0d | TEAM_2Shift_Calendar-1 | Helper; SMAW Welder; SMAW Welding Machine; Fitter | 12h |  | 562.5 | 562.5 |  |
| 383 | 8.19.22 | Ch Lifting LugPadWeld Arrangement | 1h | 2018-05-23 20:30 | 2018-05-23 21:30 | 382 |  |  | 2018-05-11 20:30 | 2018-05-11 21:30 | 1h | 14.06d | 0d | TEAM_2Shift_Calendar-1 | Helper; Fitter | 2h |  | 118.75 | 118.75 |  |
| 384 | 8.19.23 | Ch Lifting LugPad Welding | 3h | 2018-05-23 21:30 | 2018-05-24 08:30 | 383 |  |  | 2018-05-11 21:30 | 2018-05-14 08:30 | 3h | 14.06d | 0d | TEAM_2Shift_Calendar-1 | SMAW Welding Machine; Helper | 6h |  | 150 | 150 |  |
| 385 | 8.19.24 | Ch LiftingLug Fitup | 3h | 2018-05-24 08:30 | 2018-05-24 11:30 | 384 |  |  | 2018-05-14 08:30 | 2018-05-14 11:30 | 3h | 14.06d | 0d | TEAM_2Shift_Calendar-1 | Helper; SMAW Welder; SMAW Welding Machine; Fitter | 12h |  | 562.5 | 562.5 |  |
| 386 | 8.19.25 | Ch LiftingLug Welding | 3h | 2018-05-24 11:30 | 2018-05-24 14:30 | 385 |  |  | 2018-05-14 11:30 | 2018-05-14 14:30 | 3h | 14.06d | 0d | TEAM_2Shift_Calendar-1 | SMAW Welder; SMAW Welding Machine; Helper | 9h |  | 356.25 | 356.25 |  |
| 387 | 8.19.26 | Ch InsulationCleat Marking | 2h | 2018-05-24 14:30 | 2018-05-24 16:30 | 386 |  |  | 2018-05-14 14:30 | 2018-05-14 16:30 | 2h | 14.06d | 0d | TEAM_2Shift_Calendar-1 | Helper; Fitter | 4h |  | 237.5 | 237.5 |  |
| 388 | 8.19.27 | Ch InsulationCleat Fitup | 2.5h | 2018-05-24 16:30 | 2018-05-24 19:00 | 387 |  |  | 2018-05-14 16:30 | 2018-05-14 19:00 | 2.5h | 14.06d | 0d | TEAM_2Shift_Calendar-1 | Helper; SMAW Welder; SMAW Welding Machine; Fitter | 10h |  | 468.75 | 468.75 |  |
| 389 | 8.19.28 | Ch Insulation Cleatwelding | 2h | 2018-05-24 19:00 | 2018-05-24 21:00 | 388 |  |  | 2018-05-14 19:00 | 2018-05-14 21:00 | 2h | 14.06d | 0d | TEAM_2Shift_Calendar-1 | SMAW Welder; SMAW Welding Machine; Helper | 6h |  | 237.5 | 237.5 |  |
| 390 | 8.19.29 | Ch Final DressUp | 7h | 2018-05-24 21:00 | 2018-05-25 12:00 | 389 |  |  | 2018-05-14 21:00 | 2018-05-15 12:00 | 7h | 14.06d | 0d | TEAM_2Shift_Calendar-1 | Grinding Machine; Grinder | 14h |  | 393.75 | 393.75 |  |
| 391 | 8.19.30 | Ch Dimensional Inspection | 4h | 2018-05-25 12:00 | 2018-05-25 16:00 | 390 |  |  | 2018-05-15 12:00 | 2018-05-15 16:00 | 4h | 14.06d | 0d | TEAM_2Shift_Calendar-1 | Fitter [200%] | 8h |  | 550 | 550 |  |
| 392 | 8.19.31 | Ch Clearanceby TPI | 2h | 2018-05-25 16:00 | 2018-05-25 18:00 | 391 |  |  | 2018-05-15 16:00 | 2018-05-16 08:00 | 1d | 14.06d | 0d | TEAM_2Shift_Calendar-1 | QC Engineer | 3h |  |  |  |  |
| 393 | 8.19.32 | Ch PWHT | 2d | 2018-05-25 18:00 | 2018-05-28 18:00 | 392 |  |  | 2018-05-16 08:00 | 2018-05-17 08:00 | 2d | 14.56d | 0d | TEAM_2Shift_Calendar-1 | SC (Cost) [0.1%] |  |  |  |  |  |
| 394 | 8.19.33 | Ch Receipt after PWHT | 2h | 2018-05-28 18:00 | 2018-05-28 20:00 | 393 |  |  | 2018-05-17 08:00 | 2018-05-17 16:00 | 1d | 14.56d | 0d | TEAM_2Shift_Calendar-1 | SC (Work) | 2h |  |  |  |  |
| 395 | 8.19.34 | Ch Surface Cleaning | 3h | 2018-05-28 20:00 | 2018-05-29 07:00 | 394 |  |  | 2018-05-17 16:00 | 2018-05-18 08:00 | 1d | 14.56d | 0d | TEAM_2Shift_Calendar-1 | Helper | 3h |  | 150 | 400 |  |
| 396 | 8.19.35 | Ch NDE by TPI | 2h | 2018-05-29 07:00 | 2018-05-29 09:00 | 395 |  |  | 2018-05-18 08:00 | 2018-05-18 16:00 | 1d | 14.56d |  | TEAM_2Shift_Calendar-1 | QC Engineer | 2h |  |  |  |  |

Notes:
- 362: N3,N4(SRN)-6'' SCH 120
- 372: 1.5''NB SCH 160
- 382: 2Nos
- 387: 4NOS

| ID | WBS | Task | Type | Duration | Start | Finish | Predecessors | Complete | Remaining | Baseline start | Baseline finish | Baseline duration | Total slack | Free slack | Calendar | Resources | Work | Actual work | Cost | Baseline cost | Actual cost |
| --- | --- | --- | --- | --- | --- | --- | --- | --- | --- | --- | --- | --- | --- | --- | --- | --- | --- | --- | --- | --- | --- |
| 397 | 8.20 | **Shell cover fabrication** |  | 117.06d | 2018-03-14 17:30 A | 2018-05-29 10:00 |  | 47% | 61.6d | 2018-03-14 17:30 | 2018-05-14 11:00 | 93.19d | 14.44d |  | TEAM_2Shift_Calendar-1 |  | 460h | 248h | 20,112.5 | 20,437.5 | 10,365.62 |
| 398 | 8.20.1 | Sh cover Pl Marking |  | 2h | 2018-03-14 17:30 A | 2018-03-14 19:30 A | 35FS+52d | 100% |  | 2018-03-14 17:30 | 2018-03-14 19:30 | 2h |  |  | TEAM_2Shift_Calendar-1 | Helper; Plate (Cost) [0.1%]; Fitter | 4h | 4h |  |  |  |
| 399 | 8.20.2 | Sh Cover Pl Stamping |  | 1d | 2018-03-20 11:30 A | 2018-03-20 19:30 | 398FS+9d | 63% | 0.38d | 2018-03-20 11:30 | 2018-03-20 19:30 | 1d | 121.25d |  | TEAM_2Shift_Calendar-1 | TPI (Cost) [0.1%]; QC Engineer | 4h | 4h |  |  |  |
| 400 | 8.20.3 | Sh cover-LSCutting |  | 2h | 2018-03-26 19:30 A | 2018-03-26 21:30 A | 399FS+8d | 100% |  | 2018-03-26 19:30 | 2018-03-26 21:30 | 2h |  |  | TEAM_2Shift_Calendar-1 | OAGM; Helper; Gas Cutter | 6h | 6h |  |  |  |
| 401 | 8.20.4 | Sh cover-LS E.P |  | 2h | 2018-04-02 21:30 A | 2018-04-03 07:30 A | 400FS+12d | 100% |  | 2018-04-02 21:30 | 2018-04-03 07:30 | 2h |  |  | TEAM_2Shift_Calendar-1 | Grinding Machine; Grinder | 4h | 4h | 112.5 | 112.5 | 112.5 |
| 402 | 8.20.5 | Sh cover-LS Pre-Bending |  | 4h | 2018-04-03 07:30 A | 2018-04-03 11:30 A | 401 | 100% |  | 2018-04-03 07:30 | 2018-04-03 11:30 | 4h |  |  | TEAM_2Shift_Calendar-1 | Helper; Plate Bending Machine; Fitter [200%] | 16h | 16h | 750 | 750 | 750 |
| 403 | 8.20.6 | Sh Cover-LS Pre-BendCut-off |  | 2h | 2018-04-03 11:30 A | 2018-04-03 13:30 A | 402 | 100% |  | 2018-04-03 11:30 | 2018-04-03 13:30 | 2h |  |  | TEAM_2Shift_Calendar-1 | OAGM; Helper; Gas Cutter | 6h | 6h | 237.5 | 237.5 | 237.5 |
| 404 | 8.20.7 | Sh Cover-LS E.P |  | 2.5h | 2018-04-03 13:30 A | 2018-04-03 16:00 A | 403 | 100% |  | 2018-04-03 13:30 | 2018-04-03 16:00 | 2.5h |  |  | TEAM_2Shift_Calendar-1 | Grinding Machine; Grinder | 5h | 5h | 140.62 | 140.62 | 140.62 |
| 405 | 8.20.8 | Sh Cover-LS Rolling Receipt |  | 3h | 2018-04-16 16:00 A | 2018-04-16 19:00 A | 404FS+20d | 100% |  | 2018-04-16 16:00 | 2018-04-16 19:00 | 3h |  |  | TEAM_2Shift_Calendar-1 | Helper [200%] | 6h | 6h | 300 | 300 | 300 |
| 406 | 8.20.9 | Sh Cover-LS Fitup |  | 5h | 2018-04-18 11:00 A | 2018-04-18 16:00 A | 405FS+3d | 100% |  | 2018-04-18 11:00 | 2018-04-18 16:00 | 5h |  |  | TEAM_2Shift_Calendar-1 | SMAW Welder; SMAW Welding Machine; Fitter; Helper | 20h | 20h | 937.5 | 937.5 | 937.5 |
| 407 | 8.20.10 | Sh Cover-LS Fitup Inspection |  | 3h | 2018-04-19 16:00 A | 2018-04-19 19:00 A | 406FS+2d | 100% |  | 2018-04-19 16:00 | 2018-04-19 19:00 | 3h |  |  | TEAM_2Shift_Calendar-1 | Helper; Fitter | 6h | 6h | 356.25 | 356.25 | 356.25 |
| 408 | 8.20.11 | Sh Cover-LS Welding Arrangement |  | 2h | 2018-04-30 11:00 A | 2018-04-30 13:00 A | 407FS+15d | 100% |  | 2018-04-23 19:00 | 2018-04-23 21:00 | 2h |  |  | TEAM_2Shift_Calendar-1 | Helper; Fitter | 4h | 4h | 237.5 | 237.5 | 237.5 |
| 409 | 8.20.12 | Sh Cover-LS Welding |  | 3h | 2018-05-03 13:00 A | 2018-05-03 16:00 A | 408FS+4d | 100% |  | 2018-04-23 21:00 | 2018-04-24 08:00 | 3h |  |  | TEAM_2Shift_Calendar-1 | SMAW Welder; SMAW Welding Machine; Helper | 9h | 9h | 356.25 | 356.25 | 356.25 |
| 410 | 8.20.13 | sh cover-LS Back chip Grinding |  | 2h | 2018-05-03 16:00 A | 2018-05-03 18:00 A | 409 | 100% |  | 2018-04-24 08:00 | 2018-04-24 10:00 | 2h |  |  | TEAM_2Shift_Calendar-1 | Grinding Machine; Grinder | 4h | 4h | 112.5 | 112.5 | 112.5 |
| 411 | 8.20.14 | sh cover-LS Inside Welding |  | 2h | 2018-05-03 18:00 A | 2018-05-03 20:00 A | 410 | 100% |  | 2018-04-24 10:00 | 2018-04-24 12:00 | 2h |  |  | TEAM_2Shift_Calendar-1 | SMAW Welder; SMAW Welding Machine; Helper | 6h | 6h | 237.5 | 237.5 | 237.5 |
| 412 | 8.20.15 | sh cover-LS Flush Grinding |  | 1h | 2018-05-03 20:00 A | 2018-05-03 21:00 A | 411 | 100% |  | 2018-04-24 12:00 | 2018-04-24 13:00 | 1h |  |  | TEAM_2Shift_Calendar-1 | Grinding Machine; Grinder | 2h | 2h | 56.25 | 56.25 | 56.25 |
| 413 | 8.20.16 | sh cover-LS DP check |  | 2h | 2018-05-03 21:00 A | 2018-05-04 07:00 A | 412 | 100% |  | 2018-04-24 13:00 | 2018-04-24 15:00 | 2h |  |  | TEAM_2Shift_Calendar-1 | Fitter | 2h | 2h | 137.5 | 137.5 | 137.5 |
| 414 | 8.20.17 | Sh cover-LS Re-rolling |  | 3.5h | 2018-05-07 07:00 A | 2018-05-07 10:30 A | 413FS+4d | 100% |  | 2018-04-24 15:00 | 2018-04-24 18:30 | 3.5h |  |  | TEAM_2Shift_Calendar-1 | Helper [200%]; Fitter [200%] | 14h | 14h | 831.25 | 831.25 | 831.25 |
| 415 | 8.20.18 | Sh cover Radiography |  | 1d | 2018-05-07 10:30 A | 2018-05-07 18:30 A | 414 | 100% |  | 2018-04-24 18:30 | 2018-04-25 10:30 | 1d |  |  | TEAM_2Shift_Calendar-1 | SC Radiography (Cost) [0.1%] |  |  |  |  |  |
| 416 | 8.20.19 | Sh cover OrientationMkg |  | 4h | 2018-05-07 18:30 A | 2018-05-08 06:30 A | 415 | 100% |  | 2018-04-25 10:30 | 2018-04-25 14:30 | 4h |  |  | TEAM_2Shift_Calendar-1 | Helper; Fitter | 8h | 8h | 475 | 475 | 475 |
| 417 | 8.20.20 | Sh cover Extra Length Cutting |  | 3h | 2018-05-08 06:30 A | 2018-05-08 09:30 A | 416 | 100% |  | 2018-04-25 14:30 | 2018-04-25 17:30 | 3h |  |  | TEAM_2Shift_Calendar-1 | OAGM; Helper; Gas Cutter | 9h | 9h | 356.25 | 356.25 | 356.25 |
| 418 | 8.20.21 | sh cover E.P of CirSeamSide |  | 4h | 2018-05-08 09:30 A | 2018-05-08 13:30 A | 417 | 100% |  | 2018-04-25 17:30 | 2018-04-25 21:30 | 4h |  |  | TEAM_2Shift_Calendar-1 | Grinding Machine; Grinder | 8h | 8h | 225 | 225 | 225 |
| 419 | 8.20.22 | Sh CoverFlangeFitup |  | 3h | 2018-05-08 13:30 A | 2018-05-08 16:30 A | 418, 39 | 100% |  | 2018-04-25 21:30 | 2018-04-26 08:30 | 3h |  |  | TEAM_2Shift_Calendar-1 | SMAW Welding Machine; Helper; Fitter; Forging Non-Std (Cost) [0.1%]; SMAW Welder | 12h | 12h | 562.5 | 562.5 | 562.5 |
| 420 | 8.20.23 | Sh Cover FlangeInspection |  | 0.5d | 2018-05-08 16:30 A | 2018-05-08 20:30 A | 419 | 100% |  | 2018-04-26 08:30 | 2018-04-26 12:30 | 0.5d |  |  | TEAM_2Shift_Calendar-1 | Helper; Fitter | 8h | 8h | 475 | 475 | 475 |
| 421 | 8.20.24 | Sh Cover FlangeWelding |  | 6h | 2018-05-08 20:30 A | 2018-05-09 10:30 A | 420 | 100% |  | 2018-04-26 12:30 | 2018-04-26 18:30 | 6h |  |  | TEAM_2Shift_Calendar-1 | SMAW Welder; SMAW Welding Machine; Helper | 18h | 18h | 712.5 | 712.5 | 712.5 |
| 422 | 8.20.25 | Sh Cover FlangeBackchip |  | 4h | 2018-05-09 10:30 A | 2018-05-09 14:30 A | 421 | 100% |  | 2018-04-26 18:30 | 2018-04-27 06:30 | 4h |  |  | TEAM_2Shift_Calendar-1 | Grinding Machine; Grinder | 8h | 8h | 225 | 225 | 225 |
| 423 | 8.20.26 | Sh Cover Flange Inside Welding | milestone | 0d | 2018-05-09 14:30 A | 2018-05-09 14:30 A | 422 | 100% |  | 2018-04-27 06:30 | 2018-04-27 06:30 | 0d |  |  | TEAM_2Shift_Calendar-1 | SMAW Welder; SMAW Welding Machine; Helper |  |  |  |  |  |
| 424 | 8.20.27 | Sh Cover Flange FlushGrinding | milestone | 0d | 2018-05-09 14:30 A | 2018-05-09 14:30 A | 423 | 100% |  | 2018-04-27 06:30 | 2018-04-27 06:30 | 0d |  |  | TEAM_2Shift_Calendar-1 | Grinding Machine; Grinder |  |  |  |  |  |
| 425 | 8.20.28 | Sh CoverFlangeDPCheck |  | 1h | 2018-05-09 14:30 A | 2018-05-09 15:30 A | 424 | 100% |  | 2018-04-27 06:30 | 2018-04-27 07:30 | 1h |  |  | TEAM_2Shift_Calendar-1 | Fitter | 1h | 1h | 68.75 | 68.75 | 68.75 |
| 426 | 8.20.29 | Sh CoverFlangeRadiography |  | 1d | 2018-05-09 15:30 A | 2018-05-10 07:30 A | 425 | 100% |  | 2018-04-27 07:30 | 2018-04-27 15:30 | 1d |  |  | TEAM_2Shift_Calendar-1 | SC (Cost) [0.1%] |  |  |  |  |  |
| 427 | 8.20.30 | Sh Cover DishFitup |  | 3h | 2018-05-23 07:30 | 2018-05-23 10:30 | 426FS+20d, 38 |  |  | 2018-04-27 15:30 | 2018-04-27 18:30 | 3h | 19d | 0d | TEAM_2Shift_Calendar-1 | SMAW Welder; SMAW Welding Machine; Fitter; Helper | 12h |  | 562.5 | 562.5 |  |
| 428 | 8.20.31 | Sh Cover Dish Fitup Inspection |  | 0.5d | 2018-05-23 10:30 | 2018-05-23 14:30 | 427 |  |  | 2018-04-27 18:30 | 2018-04-30 06:30 | 0.5d | 19d | 0d | TEAM_2Shift_Calendar-1 | Helper; Fitter | 8h |  | 475 | 475 |  |
| 429 | 8.20.32 | Sh CoverDishWelding |  | 6h | 2018-05-23 14:30 | 2018-05-23 20:30 | 428 |  |  | 2018-04-30 06:30 | 2018-04-30 12:30 | 6h | 19d | 0d | TEAM_2Shift_Calendar-1 | SMAW Welder; SMAW Welding Machine; Helper | 18h |  | 712.5 | 712.5 |  |
| 430 | 8.20.33 | Sh CoverDishBackchipGrinding |  | 4h | 2018-05-23 20:30 | 2018-05-24 08:30 | 429 |  |  | 2018-04-30 12:30 | 2018-04-30 16:30 | 4h | 19d | 0d | TEAM_2Shift_Calendar-1 | Grinding Machine; Grinder | 8h |  | 225 | 225 |  |
| 431 | 8.20.34 | Sh CoverDishInsideWelding | milestone | 0d | 2018-05-24 08:30 | 2018-05-24 08:30 | 430 |  |  | 2018-04-30 16:30 | 2018-04-30 16:30 | 0d | 19d | 0d | TEAM_2Shift_Calendar-1 | SMAW Welder; SMAW Welding Machine; Helper |  |  |  |  |  |
| 432 | 8.20.35 | Sh CoverDishFlushGrinding | milestone | 0d | 2018-05-24 08:30 | 2018-05-24 08:30 | 431 |  |  | 2018-04-30 16:30 | 2018-04-30 16:30 | 0d | 19d | 0d | TEAM_2Shift_Calendar-1 | Grinding Machine; Grinder |  |  |  |  |  |
| 433 | 8.20.36 | Sh CoverDishDPCheck |  | 2h | 2018-05-24 08:30 | 2018-05-24 10:30 | 432 |  |  | 2018-04-30 16:30 | 2018-04-30 18:30 | 2h | 19d | 0d | TEAM_2Shift_Calendar-1 | Fitter | 2h |  | 137.5 | 137.5 |  |
| 434 | 8.20.37 | Sh CoverDishRadiography |  | 1d | 2018-05-24 10:30 | 2018-05-24 18:30 | 433 |  |  | 2018-04-30 18:30 | 2018-05-02 10:30 | 1d | 19d | 0d | TEAM_2Shift_Calendar-1 | SC (Cost) [0.1%] |  |  |  |  |  |
| 435 | 8.20.38 | ShNozzleOpening-N5,N6 |  | 3h | 2018-05-24 18:30 | 2018-05-24 21:30 | 434 |  |  | 2018-05-02 10:30 | 2018-05-02 13:30 | 3h | 19d |  | TEAM_2Shift_Calendar-1 | Gas Cutter; OAGM; Helper | 9h |  | 356.25 | 356.25 |  |
| 436 | 8.20.39 | Sh Nozzle OpeningE.P |  | 3h | 2018-05-18 07:30 A | 2018-05-18 10:30 A | 425FS+13d | 100% |  | 2018-05-02 13:30 | 2018-05-02 16:30 | 3h |  |  | TEAM_2Shift_Calendar-1 | Grinding Machine; Grinder | 6h | 6h | 168.75 | 168.75 | 168.75 |
| 437 | 8.20.40 | Sh Nozzle Fitup |  | 4h | 2018-05-19 10:30 A | 2018-05-19 14:30 A | 436FS+2d | 100% |  | 2018-05-02 16:30 | 2018-05-02 20:30 | 4h |  |  | TEAM_2Shift_Calendar-1 | Helper; SMAW Welder; SMAW Welding Machine; Fitter | 16h | 16h | 750 | 750 | 750 |
| 438 | 8.20.41 | Sh NozzleFitupInspection |  | 3h | 2018-05-19 14:30 A | 2018-05-19 17:30 A | 437 | 100% |  | 2018-05-02 20:30 | 2018-05-03 07:30 | 3h |  |  | TEAM_2Shift_Calendar-1 | Helper; Fitter | 6h | 6h | 356.25 | 356.25 | 356.25 |
| 439 | 8.20.42 | Sh Nozzle Welding Arragement |  | 1h | 2018-05-19 17:30 A | 2018-05-19 18:30 A | 438 | 100% |  | 2018-05-03 07:30 | 2018-05-03 08:30 | 1h |  |  | TEAM_2Shift_Calendar-1 | Fitter; Helper | 2h | 2h | 118.75 | 118.75 | 118.75 |
| 440 | 8.20.43 | Sh Nozzle Welding |  | 4h | 2018-05-19 18:30 A | 2018-05-21 06:30 A | 439 | 100% |  | 2018-05-03 08:30 | 2018-05-03 12:30 | 4h |  |  | TEAM_2Shift_Calendar-1 | SMAW Welder; SMAW Welding Machine; Helper | 12h | 12h | 475 | 475 | 475 |
| 441 | 8.20.44 | Sh Nozzle Backchip Grinding |  | 3h | 2018-05-21 06:30 A | 2018-05-21 09:30 A | 440 | 100% |  | 2018-05-03 12:30 | 2018-05-03 15:30 | 3h |  |  | TEAM_2Shift_Calendar-1 | Grinding Machine; Grinder | 6h | 6h | 168.75 | 168.75 | 168.75 |
| 442 | 8.20.45 | Sh NozzleInside welding |  | 3h | 2018-05-21 09:30 A | 2018-05-21 12:30 A | 441 | 100% |  | 2018-05-03 15:30 | 2018-05-03 18:30 | 3h |  |  | TEAM_2Shift_Calendar-1 | SMAW Welder; SMAW Welding Machine; Helper | 9h | 9h | 356.25 | 356.25 | 356.25 |
| 443 | 8.20.46 | Sh Nozzle DP check |  | 1h | 2018-05-21 12:30 A | 2018-05-21 13:30 A | 442 | 100% |  | 2018-05-03 18:30 | 2018-05-03 19:30 | 1h |  |  | TEAM_2Shift_Calendar-1 | Fitter | 1h | 1h | 68.75 | 68.75 | 68.75 |
| 444 | 8.20.47 | Sh Cover LiftingLug Pad Fitup |  | 4h | 2018-05-21 13:30 | 2018-05-21 17:30 | 443 |  |  | 2018-05-03 19:30 | 2018-05-04 07:30 | 4h | 14.44d | 0d | TEAM_2Shift_Calendar-1 | SMAW Welder; SMAW Welding Machine; Fitter; Helper | 16h |  | 750 | 750 |  |
| 445 | 8.20.48 | Sh Cover Lifting LugPad Weld Arrangement |  | 1h | 2018-05-21 17:30 | 2018-05-21 18:30 | 444 |  |  | 2018-05-04 07:30 | 2018-05-04 08:30 | 1h | 14.44d | 0d | TEAM_2Shift_Calendar-1 | Fitter | 1h |  | 68.75 | 68.75 |  |
| 446 | 8.20.49 | Sh Cover LiftingLug Pad Welding |  | 3h | 2018-05-21 18:30 | 2018-05-21 21:30 | 445 |  |  | 2018-05-04 08:30 | 2018-05-04 11:30 | 3h | 14.44d | 0d | TEAM_2Shift_Calendar-1 | SMAW Welder; SMAW Welding Machine; Helper | 9h |  | 356.25 | 356.25 |  |
| 447 | 8.20.50 | Sh Cover LiftingLug Fitup |  | 3h | 2018-05-21 21:30 | 2018-05-22 08:30 | 446 |  |  | 2018-05-04 11:30 | 2018-05-04 14:30 | 3h | 14.44d | 0d | TEAM_2Shift_Calendar-1 | SMAW Welder; SMAW Welding Machine; Fitter; Helper | 12h |  | 562.5 | 562.5 |  |
| 448 | 8.20.51 | Sh CoverLiftingLugWelding |  | 3h | 2018-05-22 08:30 | 2018-05-22 11:30 | 447 |  |  | 2018-05-04 14:30 | 2018-05-04 17:30 | 3h | 14.44d | 0d | TEAM_2Shift_Calendar-1 | SMAW Welder; SMAW Welding Machine; Helper | 9h |  | 356.25 | 356.25 |  |
| 449 | 8.20.52 | Sh CoverInsulationCleatMarking |  | 2h | 2018-05-22 11:30 | 2018-05-22 13:30 | 448 |  |  | 2018-05-04 17:30 | 2018-05-04 19:30 | 2h | 14.44d | 0d | TEAM_2Shift_Calendar-1 | Fitter | 2h |  | 137.5 | 137.5 |  |
| 450 | 8.20.53 | Sh CoverInsulationCleatFitup |  | 2h | 2018-05-22 13:30 | 2018-05-22 15:30 | 449 |  |  | 2018-05-04 19:30 | 2018-05-04 21:30 | 2h | 14.44d | 0d | TEAM_2Shift_Calendar-1 | Fitter; SMAW Welder; SMAW Welding Machine; Helper | 8h |  | 375 | 375 |  |
| 451 | 8.20.54 | Sh CoverInsulationCleatwelding |  | 2h | 2018-05-22 15:30 | 2018-05-22 17:30 | 450 |  |  | 2018-05-04 21:30 | 2018-05-05 07:30 | 2h | 14.44d | 0d | TEAM_2Shift_Calendar-1 | SMAW Welder; SMAW Welding Machine; Helper | 6h |  | 237.5 | 237.5 |  |
| 452 | 8.20.55 | Sh CoverFinalDressUp |  | 6h | 2018-05-22 17:30 | 2018-05-23 07:30 | 451 |  |  | 2018-05-05 07:30 | 2018-05-05 13:30 | 6h | 14.44d | 0d | TEAM_2Shift_Calendar-1 | Helper | 6h |  | 300 | 300 |  |
| 453 | 8.20.56 | Sh Cover Dimensional Inspection |  | 3h | 2018-05-23 07:30 | 2018-05-23 10:30 | 452 |  |  | 2018-05-05 13:30 | 2018-05-05 16:30 | 3h | 14.44d | 0d | TEAM_2Shift_Calendar-1 | Fitter | 3h |  | 206.25 | 206.25 |  |
| 454 | 8.20.57 | Sh CoverClearancebyTPI |  | 1d | 2018-05-23 10:30 | 2018-05-23 18:30 | 453 |  |  | 2018-05-05 16:30 | 2018-05-07 08:30 | 1d | 14.44d | 0d | TEAM_2Shift_Calendar-1 | TPI (Cost) [0.1%]; QC Engineer | 4h |  |  |  |  |
| 455 | 8.20.58 | Sh CoverPWHT |  | 2d | 2018-05-23 18:30 | 2018-05-24 18:30 | 454 |  |  | 2018-05-07 08:30 | 2018-05-08 16:30 | 3d | 14.44d | 0d | TEAM_2Shift_Calendar-1 | SC (Cost) [0.1%] |  |  |  |  |  |
| 456 | 8.20.59 | Sh CoverReceipt afterPWHT |  | 2h | 2018-05-24 18:30 | 2018-05-24 20:30 | 455 |  |  | 2018-05-08 16:30 | 2018-05-09 13:30 | 13h | 14.44d | 0d | TEAM_2Shift_Calendar-1 | Helper | 2h |  | 100 |  |  |
| 457 | 8.20.60 | Sh CoverSurfaceCleaning |  | 4h | 2018-05-24 20:30 | 2018-05-25 08:30 | 456 |  |  | 2018-05-09 13:30 | 2018-05-09 21:30 | 1d | 14.44d | 0d | TEAM_2Shift_Calendar-1 | Grinder; Grinding Machine; Helper | 12h |  | 425 | 850 |  |
| 458 | 8.20.61 | Sh Cover NDEbyTPI |  | 4h | 2018-05-25 08:30 | 2018-05-25 12:30 | 457 |  |  | 2018-05-09 21:30 | 2018-05-10 13:30 | 1d | 14.44d | 0d | TEAM_2Shift_Calendar-1 | QC Engineer | 4h |  |  |  |  |
| 459 | 8.20.62 | FloatingDish+flangefitup |  | 4h | 2018-05-25 12:30 | 2018-05-25 16:30 | 458 |  |  | 2018-05-10 13:30 | 2018-05-10 17:30 | 4h | 14.44d | 0d | TEAM_2Shift_Calendar-1 | Fitter; TIG Welder; TIG Welding Machine; Helper | 16h |  | 975 | 975 |  |
| 460 | 8.20.63 | Inspection |  | 2h | 2018-05-25 16:30 | 2018-05-25 18:30 | 459 |  |  | 2018-05-10 17:30 | 2018-05-10 19:30 | 2h | 14.44d | 0d | TEAM_2Shift_Calendar-1 | Helper; Fitter | 4h |  | 237.5 | 237.5 |  |
| 461 | 8.20.64 | welding |  | 7h | 2018-05-25 18:30 | 2018-05-28 09:30 | 460 |  |  | 2018-05-10 19:30 | 2018-05-11 10:30 | 7h | 14.44d | 0d | TEAM_2Shift_Calendar-1 | TIG Welder; TIG Welding Machine; Helper | 21h |  | 1,225 | 1,225 |  |
| 462 | 8.20.65 | Backchip grinding |  | 2h | 2018-05-28 09:30 | 2018-05-28 11:30 | 461 |  |  | 2018-05-11 10:30 | 2018-05-11 12:30 | 2h | 14.44d | 0d | TEAM_2Shift_Calendar-1 | Grinding Machine; Grinder | 4h |  | 112.5 | 112.5 |  |
| 463 | 8.20.66 | inside welding |  | 4h | 2018-05-28 11:30 | 2018-05-28 15:30 | 462 |  |  | 2018-05-11 12:30 | 2018-05-11 16:30 | 4h | 14.44d | 0d | TEAM_2Shift_Calendar-1 | TIG Welder; TIG Welding Machine; Helper | 12h |  | 700 | 700 |  |
| 464 | 8.20.67 | flush grinding |  | 1.5h | 2018-05-28 15:30 | 2018-05-28 17:00 | 463 |  |  | 2018-05-11 16:30 | 2018-05-11 18:00 | 1.5h | 14.44d | 0d | TEAM_2Shift_Calendar-1 | Grinding Machine; Grinder | 3h |  | 84.38 | 84.38 |  |
| 465 | 8.20.68 | Dp check |  | 1h | 2018-05-28 17:00 | 2018-05-28 18:00 | 464 |  |  | 2018-05-11 18:00 | 2018-05-11 19:00 | 1h | 14.44d | 0d | TEAM_2Shift_Calendar-1 | Fitter | 1h |  | 68.75 | 68.75 |  |
| 466 | 8.20.69 | Radiography test |  | 1d | 2018-05-28 18:00 | 2018-05-29 10:00 | 465 |  |  | 2018-05-11 19:00 | 2018-05-14 11:00 | 1d | 14.44d |  | TEAM_2Shift_Calendar-1 | SC (Cost) [0.1%] |  |  |  |  |  |

Notes:
- 401: OD 754
- 419: OD 898xID 726x90T
- 427: BLANK DIA ~992x18T(NOM)/14T(MIN)
- 435: 1.5''NB sch 15.95 lWN
- 444: 2Nos

| ID | WBS | Task | Duration | Start | Finish | Predecessors | Baseline start | Baseline finish | Baseline duration | Total slack | Calendar | Resources | Work | Cost | Baseline cost |
| --- | --- | --- | --- | --- | --- | --- | --- | --- | --- | --- | --- | --- | --- | --- | --- |
| 467 | 8.21 | **TubeBundle Assembly** | 14.5d | 2018-05-24 13:30 | 2018-06-02 17:30 |  | 2018-05-03 13:30 | 2018-05-14 21:30 | 17d | 0d | TEAM_2Shift_Calendar-1 |  | 420h | 22,214.58 | 25,018.21 |
| 468 | 8.21.1 | Assembly Frame Setup | 8h | 2018-05-24 13:30 | 2018-05-24 21:30 | 143, 161, 174, 183, 187 | 2018-05-03 13:30 | 2018-05-03 21:30 | 8h | 0d | TEAM_2Shift_Calendar-1 | Helper [400%]; Fitter [200%] | 48h | 2,700 | 2,700 |
| 469 | 8.21.2 | Skeleton Assembly | 15h | 2018-05-24 21:30 | 2018-05-25 20:30 | 468 | 2018-05-03 21:30 | 2018-05-04 20:30 | 15h | 0d | TEAM_2Shift_Calendar-1 | Helper [400%]; Fitter [200%] | 90h | 5,062.5 | 5,062.5 |
| 470 | 8.21.3 | Tie-Rod Welding | 3h | 2018-05-25 20:30 | 2018-05-28 07:30 | 469 | 2018-05-04 20:30 | 2018-05-05 07:30 | 3h | 0d | TEAM_2Shift_Calendar-1 | SMAW Welder; SMAW Welding Machine; Helper [200%] | 12h | 506.25 | 506.25 |
| 471 | 8.21.4 | Tube Insertion | 10h | 2018-05-28 07:30 | 2018-05-28 17:30 | 470, 43 | 2018-05-05 07:30 | 2018-05-05 17:30 | 10h | 0d | TEAM_2Shift_Calendar-1 | Helper [200%]; Fitter | 30h | 1,687.5 | 1,687.5 |
| 472 | 8.21.5 | Tube Allignment | 8h | 2018-05-28 17:30 | 2018-05-29 09:30 | 471 | 2018-05-05 17:30 | 2018-05-07 09:30 | 8h | 0d | TEAM_2Shift_Calendar-1 | Helper; Fitter | 16h | 950 | 950 |
| 473 | 8.21.6 | SealingStrip&Sliding-StripFitup | 8h | 2018-05-29 09:30 | 2018-05-29 17:30 | 472 | 2018-05-07 09:30 | 2018-05-07 17:30 | 8h | 0d | TEAM_2Shift_Calendar-1 | Fitter; TIG Welder; TIG Welding Machine; Helper [200%] | 40h | 2,350 | 2,350 |
| 474 | 8.21.7 | SealingStrip&Sliding-StripWelding | 8h | 2018-05-29 17:30 | 2018-05-30 09:30 | 473 | 2018-05-07 17:30 | 2018-05-08 09:30 | 8h | 0d | TEAM_2Shift_Calendar-1 | TIG Welder; TIG Welding Machine; Helper [200%] | 32h | 1,800 | 1,800 |
| 475 | 8.21.8 | SealingStrip&Sliding-StripGrinding | 10h | 2018-05-30 09:30 | 2018-05-30 19:30 | 474 | 2018-05-08 09:30 | 2018-05-08 19:30 | 10h | 0d | TEAM_2Shift_Calendar-1 | Grinding Machine; Grinder | 20h | 562.5 | 562.5 |
| 476 | 8.21.9 | Tube/TubesheetRootWelding | 12h | 2018-05-30 19:30 | 2018-05-31 15:30 | 475 | 2018-05-08 19:30 | 2018-05-09 15:30 | 12h | 0d | TEAM_2Shift_Calendar-1 | TIG Welder; TIG Welding Machine; Helper | 36h | 2,100 | 2,100 |
| 477 | 8.21.10 | DPCheck | 2h | 2018-05-31 15:30 | 2018-05-31 17:30 | 476 | 2018-05-09 15:30 | 2018-05-09 17:30 | 2h | 0d | TEAM_2Shift_Calendar-1 | Helper; Fitter | 4h | 237.5 | 237.5 |
| 478 | 8.21.11 | Tube/TubesheetFinalWelding | 8h | 2018-05-31 17:30 | 2018-06-01 09:30 | 477 | 2018-05-09 17:30 | 2018-05-10 09:30 | 8h | 0d | TEAM_2Shift_Calendar-1 | TIG Welder; TIG Welding Machine; Helper [200%] | 32h | 1,800 | 1,800 |
| 479 | 8.21.12 | TubeTrimming | 8h | 2018-06-01 09:30 | 2018-06-01 17:30 | 478 | 2018-05-10 09:30 | 2018-05-10 17:30 | 8h | 0d | TEAM_2Shift_Calendar-1 | Grinding Machine; Grinder | 16h | 450 | 450 |
| 480 | 8.21.13 | DPCheck | 4h | 2018-06-01 17:30 | 2018-06-01 21:30 | 479 | 2018-05-10 17:30 | 2018-05-10 21:30 | 4h | 0d | TEAM_2Shift_Calendar-1 | Helper; Fitter | 8h | 475 | 475 |
| 481 | 8.21.14 | Expansion | 1d | 2018-06-01 21:30 | 2018-06-02 13:30 | 480 | 2018-05-10 21:30 | 2018-05-14 13:30 | 3d | 0d | TEAM_2Shift_Calendar-1 | Helper [200%]; Expanding Machine; Fitter | 32h | 1,350 | 4,050 |
| 482 | 8.21.15 | Inspection | 4h | 2018-06-02 13:30 | 2018-06-02 17:30 | 481 | 2018-05-14 13:30 | 2018-05-14 21:30 | 1d | 0d | TEAM_2Shift_Calendar-1 | QC Engineer; Fitter | 4h | 183.33 | 286.96 |
| 483 | 8.22 | **Final Assembly & Hydrotest Test** | 6d | 2018-06-05 17:30 | 2018-06-08 17:30 |  | 2018-05-16 21:30 | 2018-05-22 08:30 | 8.38d | 0d | TEAM_2Shift_Calendar-1 |  | 196h | 11,175 | 11,425 |
| 484 | 8.22.1 | OpenBundleHydrotest | 1d | 2018-06-05 17:30 | 2018-06-06 09:30 | 467FS+4d | 2018-05-16 21:30 | 2018-05-17 13:30 | 1d | 0d | TEAM_2Shift_Calendar-1 | Helper [400%]; Fitter [400%] | 24h | 1,425 | 1,425 |
| 485 | 8.22.2 | OpenBundleHydrotest-TPI Inspection | 4h | 2018-06-06 09:30 | 2018-06-06 13:30 | 484 | 2018-05-17 13:30 | 2018-05-17 21:30 | 1d | 0d | TEAM_2Shift_Calendar-1 | QC Engineer | 4h |  |  |
| 486 | 8.22.3 | Bundle Insertion | 1d | 2018-06-06 13:30 | 2018-06-06 21:30 | 485, 302, 361, 397 | 2018-05-18 16:30 | 2018-05-19 08:30 | 1d | 0d | TEAM_2Shift_Calendar-1 | Helper [400%]; Fitter [400%] | 64h | 3,800 | 3,800 |
| 487 | 8.22.4 | ShellSide Hydrotest | 1d | 2018-06-06 21:30 | 2018-06-07 13:30 | 486 | 2018-05-19 08:30 | 2018-05-19 16:30 | 1d | 0d | TEAM_2Shift_Calendar-1 | Helper [400%]; Fitter [400%] | 64h | 3,800 | 3,800 |
| 488 | 8.22.5 | ShellSideHydrotestTPI Inspection | 8h | 2018-06-07 13:30 | 2018-06-07 21:30 | 487 | 2018-05-19 16:30 | 2018-05-21 08:30 | 1d | 0d | TEAM_2Shift_Calendar-1 | QC Engineer | 3h |  |  |
| 489 | 8.22.6 | Final hydro test | 1d | 2018-06-07 21:30 | 2018-06-08 13:30 | 488 | 2018-05-21 08:30 | 2018-05-21 16:30 | 1d | 0d | TEAM_2Shift_Calendar-1 | Helper [400%]; Fitter [400%] | 32h | 1,900 | 1,900 |
| 490 | 8.22.7 | De-watering&Drying | 4h | 2018-06-08 13:30 | 2018-06-08 17:30 | 489 | 2018-05-21 16:30 | 2018-05-22 08:30 | 1d | 0d | TEAM_2Shift_Calendar-1 | Helper [200%] | 5h | 250 | 500 |

Notes:
- 470: 4NOS
- 471: 224 NOS
- 473: 4NOS
- 476: 224 NOS

| ID | WBS | Task | Duration | Start | Finish | Predecessors | Baseline start | Baseline finish | Baseline duration | Total slack | Calendar | Resources | Work | Cost | Baseline cost |
| --- | --- | --- | --- | --- | --- | --- | --- | --- | --- | --- | --- | --- | --- | --- | --- |
| 491 | 8.23 | **Cleaning & Painting** | 3.88d | 2018-06-08 17:30 | 2018-06-12 16:30 |  | 2018-05-23 08:30 | 2018-05-30 20:30 | 11.5d | 0d | TEAM_2Shift_Calendar-1 |  | 30h | 472.5 | 1,475 |
| 492 | 8.23.1 | Blast Cleaning Arrangement | 2h | 2018-06-08 17:30 | 2018-06-08 19:30 | 483 | 2018-05-23 08:30 | 2018-05-24 08:30 | 2d | 0d | TEAM_2Shift_Calendar-1 | Store | 2h |  |  |
| 493 | 8.23.2 | Transport for BlastCleaning | 2h | 2018-06-08 19:30 | 2018-06-08 21:30 | 492 | 2018-05-24 08:30 | 2018-05-24 16:30 | 1d | 0d | TEAM_2Shift_Calendar-1 | Helper [300%]; Fitter [200%] | 3h | 172.5 | 575 |
| 494 | 8.23.3 | BlastCleaning | 1d | 2018-06-08 21:30 | 2018-06-11 13:30 | 493 | 2018-05-24 16:30 | 2018-05-28 08:30 | 3d | 0d | TEAM_2Shift_Calendar-1 | Helper | 6h | 300 | 900 |
| 495 | 8.23.4 | PrimerPainting | 5h | 2018-06-11 13:30 | 2018-06-11 18:30 | 494 | 2018-05-28 08:30 | 2018-05-29 08:30 | 2d | 0d | TEAM_2Shift_Calendar-1 | SC (Work) | 5h |  |  |
| 496 | 8.23.5 | ReturnFromBlastCleaning | 2h | 2018-06-11 18:30 | 2018-06-11 20:30 | 495 | 2018-05-29 08:30 | 2018-05-29 16:30 | 1d | 0d | TEAM_2Shift_Calendar-1 | Painter | 2h |  |  |
| 497 | 8.23.6 | Top CoatPainting | 1d | 2018-06-11 20:30 | 2018-06-12 12:30 | 496 | 2018-05-29 16:30 | 2018-05-30 16:30 | 2d | 0d | TEAM_2Shift_Calendar-1 | Painter | 8h |  |  |
| 498 | 8.23.7 | Painting Inspection | 0.5d | 2018-06-12 12:30 | 2018-06-12 16:30 | 497 | 2018-05-30 16:30 | 2018-05-30 20:30 | 0.5d | 0d | TEAM_2Shift_Calendar-1 | Painter | 4h |  |  |
| 499 | 8.24 | **Final documentation & Despatch** | 2.62d | 2018-06-12 16:30 | 2018-06-15 12:30 |  | 2018-05-30 20:30 | 2018-06-04 12:30 | 3.5d | 0d |  |  | 20h | 144.64 | 1,928.57 |
| 500 | 8.24.1 | Despatch Clearance by TPI | 9h | 2018-06-12 16:30 | 2018-06-13 09:30 | 498 | 2018-05-30 20:30 | 2018-05-31 12:30 | 1d | 0d | TEAM_2Shift_Calendar-1 | TPI (Cost) [0.1%]; QC Engineer | 2h |  |  |
| 501 | 8.24.2 | Despatch 4224-A | 3h | 2018-06-13 09:30 | 2018-06-13 12:30 | 500 | 2018-05-31 12:30 | 2018-05-31 20:30 | 1d | 0d | TEAM_2Shift_Calendar-1 | Helper [400%]; Store; Fitter [200%] | 3h | 144.64 | 1,928.57 |
| 502 | 8.24.3 | Final Documentation | 4d | 2018-06-13 12:30 | 2018-06-15 12:30 | 501 | 2018-05-31 20:30 | 2018-06-04 12:30 | 5d | 0d | TEAM_2Shift_Calendar-1 | Marketing | 15h |  |  |
| 503 | 9 | **PBG** | 2d | 2018-06-13 13:30 | 2018-06-15 12:30 |  | 2018-06-01 08:30 | 2018-06-02 17:30 | 2d | 0d |  |  | 16h |  |  |
| 504 | 9.1 | PBG submission(10%) | 2d | 2018-06-13 13:30 | 2018-06-15 12:30 | 501 | 2018-06-01 08:30 | 2018-06-02 17:30 | 2d | 0d |  | Finance | 16h |  |  |
