# 4224-309

Schedule from MS Project, 2017-10-17 to 2018-06-15, costs in Rs., A marks actual dates.

## Calendars

- TEAM_Stand_Calendar: Mon-Sat 08:30-12:30, 13:30-17:30; Sun off. Exceptions (off unless hours are given): 2017-01-13 to 2023-08-12 (2nd Sat, recurring), 2017-01-26 to 2036-01-26 (Republic Day, recurring), 2017-01-27 to 2023-08-26 (4th Sat, recurring), 2017-05-01 to 2036-05-01 (May Day, recurring), 2017-08-15 to 2036-08-15 (Independence Day, recurring), 2017-10-02 to 2036-10-02 (Gandhi Jayanti, recurring), 2017-10-18 (Deepavali'2017), 2018-01-15 (Thiruvalluvar Day'2018).
- TEAM_2Shift_Calendar-1: Mon-Sat 06:00-22:00; Sun off. Exceptions (off unless hours are given): 2017-01-13 to 2023-02-11 (2nd Sat, recurring), 2017-01-26 to 2036-01-26 (Republic Day, recurring), 2017-01-27 to 2023-08-26 (4th Sat, recurring), 2017-05-01 to 2036-05-01 (May Day, recurring), 2017-08-15 to 2036-08-15 (Indepdence Day, recurring), 2017-10-02 to 2036-10-02 (Gandhi Jayanti, recurring), 2017-10-19 (Deepavali'2017), 2018-01-15 (Thiruvalluvar Day'2018).

## Resources

| Resource | Rate |
| --- | --- |
| Marketing |  |
| PMO Head |  |
| Client |  |
| PM |  |
| Store |  |
| QC Engineer |  |
| Draftman |  |
| TIG Welding Machine |  |
| TIG Welder | 125 |
| Rolling Machine |  |
| Radial Drilling Machine |  |
| PPC Engineer |  |
| Plate Bending Machine |  |
| Painter |  |
| OAGM |  |
| Lathe |  |
| Lathe Operator | 120 |
| Helper | 50 |
| Grinding Machine |  |
| Grinder | 56.25 |
| Gas Cutter | 68.75 |
| Fitter | 68.75 |
| Expanding Machine |  |
| Cutting Machine |  |
| Crane |  |
| SC (Work) |  |
| SMAW Welding Machine |  |
| SMAW Welder | 68.75 |
| SAW Welder | 68.75 |
| Production Department |  |
| Pedestal Grinder |  |
| Driller | 68.75 |
| Vehicle |  |
| Foreman |  |
| Purchase Engineer |  |
| Design Engineer |  |
| TPI (Cost) |  |
| SC Radiography (Cost) |  |
| SC (Cost) |  |
| Consumables (Cost) |  |
| Fastners (Cost) |  |
| Forging Non-Std (Cost) |  |
| Forging Std (Cost) |  |
| Gaskets (Cost) |  |
| Pipe (Cost) |  |
| Plate (Cost) |  |
| Rod (Cost) |  |
| Tube (Cost) |  |
| Tube Sheet (Cost) |  |
| Finance |  |

## Schedule

| ID | WBS | Task | Type | Duration | Start | Finish | Predecessors | Complete | Baseline start | Baseline finish | Baseline duration | Constraint | Resources | Work | Actual work |
| --- | --- | --- | --- | --- | --- | --- | --- | --- | --- | --- | --- | --- | --- | --- | --- |
| 1 | 1 | **Project Initiation** |  | 4.5d | 2017-10-17 08:30 A | 2017-10-23 12:30 A |  | 100% | 2017-10-17 08:30 | 2017-10-23 12:30 | 4.5d |  |  |  |  |
| 2 | 1.1 | Po Receipt |  | 1d | 2017-10-17 08:30 A | 2017-10-17 17:30 A |  | 100% | 2017-10-17 08:30 | 2017-10-17 17:30 | 1d |  |  |  |  |
| 3 | 1.2 | Work Order |  | 1d | 2017-10-21 08:30 A | 2017-10-21 17:30 A | 2FS+2d | 100% | 2017-10-21 08:30 | 2017-10-21 17:30 | 1d |  |  |  |  |
| 4 | 1.3 | CRM |  | 4h | 2017-10-23 08:30 A | 2017-10-23 12:30 A | 3 | 100% | 2017-10-23 08:30 | 2017-10-23 12:30 | 4h |  |  |  |  |
| 5 | 2 | **Design** |  | 57d | 2017-10-23 08:30 A | 2018-01-02 17:30 A |  | 100% | 2017-10-23 08:30 | 2018-01-02 17:30 | 57d |  |  |  |  |
| 6 | 2.1 | Drawing preparation | manual | 22.5d | 2017-10-23 08:30 A | 2017-11-20 12:30 A | 4 | 100% | 2017-10-23 08:30 | 2017-11-20 12:30 | 22.5d |  |  |  |  |
| 7 | 2.2 | Drawing Submission | manual | 1d | 2017-11-21 08:30 A | 2017-11-21 17:30 A | 6 | 100% | 2017-11-21 08:30 | 2017-11-21 17:30 | 1d |  |  |  |  |
| 8 | 2.3 | Drawing Approval(A) | manual | 1d | 2018-01-02 08:30 A | 2018-01-02 17:30 A | 7FS+14d | 100% | 2018-01-02 08:30 | 2018-01-02 17:30 | 1d | start no earlier than 2017-12-11 08:00 |  |  |  |
| 9 | 2.4 | Drawing Approval(B) | manual | 1d | 2017-12-29 08:30 A | 2017-12-29 17:30 A | 7FS+14d | 100% | 2017-12-29 08:30 | 2017-12-29 17:30 | 1d |  |  |  |  |
| 10 | 3 | Preliminary Details For Enquiry | manual | 5d | 2017-10-27 08:30 A | 2017-11-03 17:30 A |  | 100% | 2017-10-27 08:30 | 2017-11-03 17:30 | 5d |  |  |  |  |
| 11 | 4 | **PR Issue** |  | 50d | 2017-11-09 08:30 A | 2018-01-10 17:30 A |  | 100% | 2017-11-09 08:30 | 2018-01-10 17:30 | 50d |  |  |  |  |
| 12 | 4.1 | Plates | manual | 3d | 2017-12-20 08:30 A | 2017-12-22 17:30 A | 7 | 100% | 2017-12-20 08:30 | 2017-12-22 17:30 | 3d |  | Plate (Cost) [0.1%] |  |  |
| 13 | 4.2 | Pipe | manual | 2d | 2017-11-21 08:30 A | 2017-11-22 17:30 A | 7 | 100% | 2017-11-21 08:30 | 2017-11-22 17:30 | 2d |  | Pipe (Cost) [0.1%] |  |  |
| 14 | 4.3 | Tube | manual | 2d | 2017-11-09 08:30 A | 2017-11-10 17:30 A | 7 | 100% | 2017-11-09 08:30 | 2017-11-10 17:30 | 2d |  | Tube (Cost) [0.1%] |  |  |
| 15 | 4.4 | Forging-(Blank,Std,Non-std) | manual | 2d | 2017-12-18 08:30 A | 2017-12-19 17:30 A | 7 | 100% | 2017-12-18 08:30 | 2017-12-19 17:30 | 2d |  | Forging Non-Std (Cost) [0.1%]; Forging Std (Cost) [0.1%]; Tube Sheet (Cost) [0.1%] |  |  |
| 16 | 4.5 | Spacer | manual | 2d | 2017-12-21 08:30 A | 2017-12-22 17:30 A | 7 | 100% | 2017-12-21 08:30 | 2017-12-22 17:30 | 2d |  | Tube (Cost) [0.1%] |  |  |
| 17 | 4.6 | U Bend shell split type | manual | 1d | 2017-12-22 08:30 A | 2017-12-22 17:30 A | 7 | 100% | 2017-12-22 08:30 | 2017-12-22 17:30 | 1d |  |  |  |  |
| 18 | 4.7 | Rods | manual | 2d | 2017-12-21 08:30 A | 2017-12-22 17:30 A | 7 | 100% | 2017-12-21 08:30 | 2017-12-22 17:30 | 2d |  | Rod (Cost) [0.1%] |  |  |
| 19 | 4.8 | Gasket | manual | 2d | 2017-12-21 08:30 A | 2017-12-22 17:30 A | 7 | 100% | 2017-12-21 08:30 | 2017-12-22 17:30 | 2d |  |  |  |  |
| 20 | 4.9 | Fasteners | manual | 3d | 2017-12-20 08:30 A | 2017-12-25 17:30 A | 7 | 100% | 2017-12-20 08:30 | 2017-12-25 17:30 | 3d |  |  |  |  |
| 21 | 4.10 | Consumables | manual | 3d | 2018-01-08 08:30 A | 2018-01-10 17:30 A | 7 | 100% | 2018-01-08 08:30 | 2018-01-10 17:30 | 3d |  |  |  |  |
| 22 | 5 | **Material Ordering** |  | 105d | 2017-12-11 08:30 A | 2018-04-23 17:30 A |  | 100% | 2017-12-11 08:30 | 2018-04-23 17:30 | 105d |  |  | 4h | 4h |
| 23 | 5.1 | Plates | manual | 2d | 2018-01-22 08:30 A | 2018-01-23 17:30 A | 12 | 100% | 2018-01-22 08:30 | 2018-01-23 17:30 | 2d |  | Plate (Cost) [0.1%] |  |  |
| 24 | 5.2 | Pipe | manual | 2d | 2018-01-29 08:30 A | 2018-01-30 17:30 A | 13 | 100% | 2018-01-29 08:30 | 2018-01-30 17:30 | 2d |  | Pipe (Cost) [0.1%] |  |  |
| 25 | 5.3 | Tube(LAS) | manual | 5d | 2017-12-11 08:30 A | 2017-12-15 17:30 A | 14 | 100% | 2017-12-11 08:30 | 2017-12-15 17:30 | 5d |  | Tube (Cost) [0.1%] |  |  |
| 26 | 5.4 | Forging-(Blank,Std,Non-std) | manual | 4d | 2017-12-18 08:30 A | 2017-12-21 17:30 A | 15 | 100% | 2017-12-18 08:30 | 2017-12-21 17:30 | 4d |  | Forging Non-Std (Cost) [0.1%]; Forging Std (Cost) [0.1%]; Tube Sheet (Cost) [0.1%] |  |  |
| 27 | 5.5 | Spacer | manual | 1d | 2017-12-15 08:30 A | 2017-12-15 17:30 A | 16 | 100% | 2017-12-15 08:30 | 2017-12-15 17:30 | 1d |  | Tube (Cost) [0.1%] |  |  |
| 28 | 5.6 | Elbow |  | 1d | 2018-04-23 08:30 A | 2018-04-23 17:30 A | 17FS+93d | 100% | 2018-04-23 08:30 | 2018-04-23 17:30 | 1d |  | Purchase Engineer | 4h | 4h |
| 29 | 5.7 | Rods | manual | 24.27d | 2018-02-02 08:30 A | 2018-03-05 10:40 A | 18 | 100% | 2018-02-02 08:30 | 2018-03-05 10:40 | 24.27d | finish no earlier than 2018-03-03 17:00 | Rod (Cost) [0.1%] |  |  |
| 30 | 5.8 | Gasket | manual | 2d | 2017-12-30 08:30 A | 2018-01-01 17:30 A | 19 | 100% | 2017-12-30 08:30 | 2018-01-01 17:30 | 2d |  |  |  |  |
| 31 | 5.9 | Fasteners | manual | 1d | 2018-02-02 08:30 A | 2018-02-02 17:30 A | 20 | 100% | 2018-02-02 08:30 | 2018-02-02 17:30 | 1d |  |  |  |  |
| 32 | 5.10 | Consumables | manual | 41.94d | 2018-01-17 08:30 A | 2018-03-14 17:00 A | 21 | 100% | 2018-01-17 08:30 | 2018-03-14 17:00 | 41.94d | finish no earlier than 2018-03-03 17:00 |  |  |  |

Notes:
- 8: IBR approval delay
- 10: U tubes SA 213 T11 48 nos / Tube-SA 213 T11 (224 Nos) / Blank Forging-Sa 336 F11 Cl.2 (60T,115T) / Non Std Forging-Sa 336 F11 Cl.2(60T) / Non Std Forging-Sa 266 Gr.4 (90T) / Non Std Forging-Sa 336 F11 Cl.2 (90T,100T) / Std Forging-Sa 182 F11 Cl.2
- 11: Plates-SA 387 Gr.11 Cl.2 / Plates-SA 516 Gr.60 / Std Pipe SA 335 P11(10''NBX SCH30) / Tube-SA 213 T11 (224 Nos) / Plate(90T) - SA 266 Gr.4 / U tubes SA 213 T11 48 nos / Blank Forging-SA 336 F11 Cl.2 (115T,60T) / Spacer - SA 213T11(2.35T) / U Bend shell split type- SA 234 WP11 CL2 / Tie Rod-SA 739 B11 / pipe-SA 266 GR.4 / Pipe-SA 106 Gr.B / Pipe-SA 335 P11 / Std Forging-SA 182 F11 Cl.2 / Non Std Forging-SA 336 F11 Cl.2 (90T,87T,100T) / Non Std Forging-SA 336 F11 Cl.2(60T) / Non Std Forging-SA 266 Gr.4 (90T) / Gasket / Fasteners / Consumables weld over lay
- 22: Plates-SA 387 Gr.11 Cl.2 / Plates-SA 516 Gr.60 / Std Pipe SA 335 P11(10''NBX SCH30) / Tube-SA 213 T11 (224 Nos) / Plate(90T) - SA 266 Gr.4 / U tubes SA 213 T11 48 nos / Blank Forging-SA 336 F11 Cl.2 (115T,60T) / Spacer - SA 213T11(2.35T) / U Bend shell split type-SA 234 WP 11 CL.2 / Tie Rod-SA 739 B11 / pipe-SA 266 GR.4 / Pipe-SA 106 Gr.B / Pipe-SA 335 P11 / Std Forging-SA 182 F11 Cl.2 / Non Std Forging-SA 336 F11 Cl.2 (90T,87T,100T) / Non Std Forging-SA 336 F11 Cl.2(60T) / Non Std Forging-SA 266 Gr.4 (90T) / Gasket / Fasteners / Consumables weld over lay

| ID | WBS | Task | Duration | Start | Finish | Predecessors | Complete | Remaining | Baseline start | Baseline finish | Baseline duration | Total slack | Calendar | Resources | Work | Actual work | Cost | Baseline cost | Actual cost |
| --- | --- | --- | --- | --- | --- | --- | --- | --- | --- | --- | --- | --- | --- | --- | --- | --- | --- | --- | --- |
| 33 | 6 | **Material Receipt** | 80.52d | 2018-02-09 08:30 A | 2018-05-23 13:40 |  | 97% | 2.1d | 2018-02-09 08:30 | 2018-05-15 11:30 | 73.38d | 9.75d |  |  | 119.5h | 113.5h | 2,375 | 2,391.25 | 2,225 |
| 34 | 6.1 | Shell SA 335 P11 10"NB x SCH. 30 x 3412 Lg | 1d | 2018-02-26 08:30 A | 2018-02-26 17:30 A | 23FS+20d | 100% |  | 2018-02-26 08:30 | 2018-02-26 17:30 | 1d |  |  | Helper; Store; Pipe (Cost) [0.1%] | 6h | 6h | 150 | 150 | 150 |
| 35 | 6.2 | U-Bend SA 335 P11/SA 387 Gr.11 CL.2 | 3h | 2018-05-21 08:30 | 2018-05-21 11:30 | 28FS+20d |  |  | 2018-05-15 08:30 | 2018-05-15 11:30 | 3h | 11.9d |  | Helper; Store | 6h |  | 150 | 150 |  |
| 36 | 6.3 | Channel shell (2Nos) SA 335 P11 | 1d | 2018-02-26 08:30 A | 2018-02-26 17:30 A | 23FS+20d | 100% |  | 2018-02-26 08:30 | 2018-02-26 17:30 | 1d |  |  | Crane; Helper; Store; Pipe (Cost) [0.1%] | 1.5h | 1.5h | 25 | 25 | 25 |
| 37 | 6.4 | Tube sheet SA 336 F11 CL.2 OD 398x60T | 1d | 2018-03-06 08:30 A | 2018-03-06 17:30 A | 26FS+66d | 100% |  | 2018-03-06 08:30 | 2018-03-06 17:30 | 1d |  |  | Crane; Helper; Store; Forging Non-Std (Cost) [0.1%] | 3.5h | 3.5h | 58.33 | 58.33 | 58.33 |
| 38 | 6.5 | Channel front FLG SA 336 F11 CL.2 OD 398x60T | 1d | 2018-03-06 08:30 A | 2018-03-06 17:30 A | 26FS+66d | 100% |  | 2018-03-06 08:30 | 2018-03-06 17:30 | 1d |  |  | Crane; Helper; Store; Forging Non-Std (Cost) [0.1%] | 3.5h | 3.5h | 58.33 | 58.33 | 58.33 |
| 39 | 6.6 | Channel bonnet SA 387 Gr.11 CL.2 | 1d | 2018-02-09 08:30 A | 2018-02-09 17:30 A | 26FS+56d | 100% |  | 2018-02-09 08:30 | 2018-02-09 17:30 | 1d |  |  | Crane; Helper; Store; Plate (Cost) [0.1%] | 5h | 5h | 83.33 | 83.33 | 83.33 |
| 40 | 6.7 | U tube SA 213 T11 OD 20X 2.0T | 5h | 2018-05-16 08:30 A | 2018-05-16 14:30 A | 25FS+116d | 100% |  | 2018-04-24 08:30 | 2018-04-24 14:30 | 5h |  |  | Crane; Helper; Store; Tube (Cost) [0.1%] | 15h | 15h | 250 | 250 | 250 |
| 41 | 6.8 | Baffle plate (6T) SA 387 Gr.11 cl.2 | 1d | 2018-02-09 08:30 A | 2018-02-09 17:30 A | 23FS+45d | 100% |  | 2018-02-09 08:30 | 2018-02-09 17:30 | 1d |  |  | Crane; Helper; Store; Plate (Cost) [0.1%] | 6h | 6h | 100 | 100 | 100 |
| 42 | 6.9 | Tie rod Ø10 SA 739 B11 | 2h | 2018-05-23 10:40 A | 2018-05-23 13:40 A | 29FS+62d | 100% |  | 2018-04-27 10:40 | 2018-04-27 13:40 | 2h |  |  | Helper; Store; Rod (Cost) [0.1%] | 4h | 4h | 100 | 100.25 | 100 |
| 43 | 6.10 | SpacerTube Ø17.5X2.35T SA 213 T11 | 4h | 2018-05-16 08:30 A | 2018-05-16 12:30 A | 27FS+116d | 100% |  | 2018-04-24 08:30 | 2018-04-24 12:30 | 4h |  |  | Helper; Store; Tube (Cost) [0.1%] | 7h | 7h | 175 | 191 | 175 |
| 44 | 6.11 | Standard forging SA 182 F11.CL.2 | 1d | 2018-03-06 08:30 A | 2018-03-06 17:30 A | 26FS+66d | 100% |  | 2018-03-06 08:30 | 2018-03-06 17:30 | 1d |  |  | Helper; Store; Forging Std (Cost) [0.1%] | 2h | 2h | 50 | 50 | 50 |
| 45 | 6.12 | SRN NOZ for N1-N4 SA 182 F11.CL.2 | 4h | 2018-03-06 08:30 A | 2018-03-06 12:30 A | 24FS+27d | 100% |  | 2018-03-06 08:30 | 2018-03-06 12:30 | 4h |  |  | Helper; Store; Forging Non-Std (Cost) [0.1%] | 7h | 7h | 175 | 175 | 175 |
| 46 | 6.13 | Pipe SA 335 P11 | 3h | 2018-03-29 08:30 A | 2018-03-29 11:30 A | 24FS+45d | 100% |  | 2018-03-29 08:30 | 2018-03-29 11:30 | 3h |  |  | Helper; Store; Pipe (Cost) [0.1%] | 7h | 7h | 175 | 175 | 175 |
| 47 | 6.14 | Insulation cleat SA 387 Gr.11 CL.2 (6T) | 4h | 2018-02-09 08:30 A | 2018-02-09 12:30 A | 23FS+12d | 100% |  | 2018-02-09 08:30 | 2018-02-09 12:30 | 4h |  |  | Helper; Store; Plate (Cost) [0.1%] | 8h | 8h |  |  |  |
| 48 | 6.15 | Saddle plate ( 16T,10T,12T) SA 516 Gr.60 | 3h | 2018-03-29 08:30 A | 2018-03-29 11:30 A | 23FS+49d | 100% |  | 2018-03-29 08:30 | 2018-03-29 11:30 | 3h |  |  | Crane; Helper; Store; Plate (Cost) [0.1%] | 9h | 9h | 150 | 150 | 150 |
| 49 | 6.16 | Saddle pad plate SA 387 Gr.11 cl.2 (12T) | 1d | 2018-02-09 08:30 A | 2018-02-09 17:30 A | 23FS+45d | 100% |  | 2018-02-09 08:30 | 2018-02-09 17:30 | 1d |  |  | Crane; Helper; Store; Plate (Cost) [0.1%] | 6h | 6h | 100 | 100 | 100 |
| 50 | 6.17 | Lifiting lug pad (8T) SA 387 Gr.11 CL.2 | 1d | 2018-02-09 08:30 A | 2018-02-09 17:30 A | 23FS+45d | 100% |  | 2018-02-09 08:30 | 2018-02-09 17:30 | 1d |  |  | Helper; Store; Plate (Cost) [0.1%] | 2h | 2h | 50 | 50 | 50 |
| 51 | 6.18 | Lifting lug (12T) SA 516 Gr.70 | 3h | 2018-03-29 08:30 A | 2018-03-29 11:30 A | 23FS+49d | 100% |  | 2018-03-29 08:30 | 2018-03-29 11:30 | 3h |  |  | Helper; Store; Plate (Cost) [0.1%] | 6h | 6h | 150 | 150 | 150 |
| 52 | 6.19 | Gaskets | 5h | 2018-05-03 08:30 A | 2018-05-03 14:30 A | 30FS+93d | 100% |  | 2018-04-27 08:30 | 2018-04-27 14:30 | 5h |  |  | Helper; Store | 5h | 5h | 125 | 125 | 125 |
| 53 | 6.20 | Cosumbales | 4h | 2018-04-20 17:00 A | 2018-04-21 12:00 A | 32FS+30d | 100% |  | 2018-04-27 17:00 | 2018-04-30 12:00 | 4h |  |  | Helper; Store | 6h | 6h | 150 | 150 | 150 |
| 54 | 6.21 | Fastners | 3h | 2018-04-25 08:30 A | 2018-04-25 11:30 A | 31FS+64d | 100% |  | 2018-04-30 08:30 | 2018-04-30 11:30 | 3h |  |  | Helper; Store | 4h | 4h | 100 | 100 | 100 |
| 55 | 7 | **Fabrication** | 145.88d | 2018-03-14 09:30 A | 2018-06-15 08:30 |  | 76% | 34.49d | 2018-03-14 09:30 | 2018-06-08 17:40 | 137.02d | 0d | TEAM_2Shift_Calendar-1 |  | 2114.9h | 1272.4h | 98,853.1 | 111,894.56 | 57,583 |
| 56 | 7.1 | **Dish Forming 2 nos** | 81.19d | 2018-03-14 09:30 A | 2018-05-04 19:00 A |  | 100% |  | 2018-03-14 09:30 | 2018-05-31 19:00 | 123.19d |  | TEAM_2Shift_Calendar-1 |  | 169h | 169h | 6,837.5 | 6,837.5 | 6,837.5 |
| 57 | 7.1.1 | Dish Blank Marking | 6h | 2018-03-14 09:30 A | 2018-03-14 15:30 A | 39FS+49d | 100% |  | 2018-03-14 09:30 | 2018-03-14 15:30 | 6h |  | TEAM_2Shift_Calendar-1 | Fitter; Helper | 8h | 8h | 475 | 475 | 475 |
| 58 | 7.1.2 | Dish Blank Mkg Inspection | 1h | 2018-03-14 15:30 A | 2018-03-14 16:30 A | 57 | 100% |  | 2018-03-14 15:30 | 2018-03-14 16:30 | 1h |  | TEAM_2Shift_Calendar-1 | Fitter | 1h | 1h |  |  |  |
| 59 | 7.1.3 | Dish Blank Mkg Stamping | 10h | 2018-04-09 08:30 A | 2018-04-09 18:30 A | 58FS+41d | 100% |  | 2018-04-09 08:30 | 2018-04-09 18:30 | 10h |  | TEAM_2Shift_Calendar-1 | QC Engineer | 3h | 3h |  |  |  |
| 60 | 7.1.4 | Transfer For Cutting | 3h | 2018-04-09 18:30 A | 2018-04-09 21:30 A | 59 | 100% |  | 2018-04-09 18:30 | 2018-04-09 21:30 | 3h |  | TEAM_2Shift_Calendar-1 | Helper [200%] | 6h | 6h | 300 | 300 | 300 |
| 61 | 7.1.5 | Dish Blank Cutting | 7h | 2018-04-10 13:30 A | 2018-04-10 20:30 A | 60FS+1d | 100% |  | 2018-04-10 13:30 | 2018-04-10 20:30 | 7h |  | TEAM_2Shift_Calendar-1 | Helper; Gas Cutter; OAGM | 21h | 21h | 831.25 | 831.25 | 831.25 |
| 62 | 7.1.6 | DishBlank OD Grinding | 5h | 2018-04-11 20:30 A | 2018-04-12 09:30 A | 61FS+2d | 100% |  | 2018-04-11 20:30 | 2018-04-12 09:30 | 5h |  | TEAM_2Shift_Calendar-1 | Grinder; Grinding Machine | 10h | 10h | 281.25 | 281.25 | 281.25 |
| 63 | 7.1.7 | Dish Blank Offloading For Forming | 3h | 2018-04-12 09:30 A | 2018-04-12 12:30 A | 62 | 100% |  | 2018-04-12 09:30 | 2018-04-12 12:30 | 3h |  | TEAM_2Shift_Calendar-1 | Helper; Vehicle | 6h | 6h | 150 | 150 | 150 |
| 64 | 7.1.8 | Dish Forming | 5d | 2018-04-12 12:30 A | 2018-04-16 20:30 A | 63 | 100% |  | 2018-04-12 12:30 | 2018-04-16 20:30 | 5d |  | TEAM_2Shift_Calendar-1 | SC (Cost) [0.1%] |  |  |  |  |  |
| 65 | 7.1.9 | Receipt After Forming | 1h | 2018-04-16 20:30 A | 2018-04-16 21:30 A | 64 | 100% |  | 2018-04-16 20:30 | 2018-04-16 21:30 | 1h |  | TEAM_2Shift_Calendar-1 | Helper | 1h | 1h | 50 | 50 | 50 |
| 66 | 7.1.10 | Surface Grinding | 8h | 2018-04-16 21:30 A | 2018-04-17 13:30 A | 65 | 100% |  | 2018-04-16 21:30 | 2018-04-17 13:30 | 8h |  | TEAM_2Shift_Calendar-1 | Grinder; Grinding Machine | 16h | 16h | 450 | 450 | 450 |
| 67 | 7.1.11 | Surface Dp Check | 4h | 2018-04-17 13:30 A | 2018-04-17 17:30 A | 66 | 100% |  | 2018-04-17 13:30 | 2018-04-17 17:30 | 4h |  | TEAM_2Shift_Calendar-1 | Fitter; Helper | 8h | 8h | 475 | 475 | 475 |
| 68 | 7.1.12 | Dish Inspection | 2h | 2018-04-19 13:30 A | 2018-04-19 15:30 A | 66FS+4d | 100% |  | 2018-04-19 13:30 | 2018-04-19 15:30 | 2h |  | TEAM_2Shift_Calendar-1 | Fitter; QC Engineer | 2h | 2h | 68.75 | 68.75 | 68.75 |
| 69 | 7.1.13 | Spider Set Up For SR | 8.5h | 2018-04-30 17:30 A | 2018-05-02 10:00 A | 67FS+20d | 100% |  | 2018-05-25 09:30 | 2018-05-25 18:00 | 8.5h |  | TEAM_2Shift_Calendar-1 | Fitter; Helper [200%] | 25h | 25h | 1,406.25 | 1,406.25 | 1,406.25 |
| 70 | 7.1.14 | Dish SR | 1d | 2018-05-02 10:00 A | 2018-05-02 18:00 A | 69 | 100% |  | 2018-05-25 18:00 | 2018-05-29 18:00 | 4d |  | TEAM_2Shift_Calendar-1 | SC (Work) | 6h | 6h |  |  |  |
| 71 | 7.1.15 | Remove Spider | 7h | 2018-05-02 18:00 A | 2018-05-03 09:00 A | 70 | 100% |  | 2018-05-29 18:00 | 2018-05-30 09:00 | 7h |  | TEAM_2Shift_Calendar-1 | Grinder; Grinding Machine | 14h | 14h | 393.75 | 393.75 | 393.75 |
| 72 | 7.1.16 | Surface Cleaning | 5h | 2018-05-03 09:00 A | 2018-05-03 14:00 A | 71 | 100% |  | 2018-05-30 09:00 | 2018-05-30 14:00 | 5h |  | TEAM_2Shift_Calendar-1 | Helper | 5h | 5h | 250 | 250 | 250 |
| 73 | 7.1.17 | SF Marking | 4h | 2018-05-03 14:00 A | 2018-05-03 18:00 A | 72 | 100% |  | 2018-05-30 14:00 | 2018-05-30 18:00 | 4h |  | TEAM_2Shift_Calendar-1 | Fitter; Helper | 8h | 8h | 475 | 475 | 475 |
| 74 | 7.1.18 | SF Cutting | 5h | 2018-05-03 18:00 A | 2018-05-04 07:00 A | 73 | 100% |  | 2018-05-30 18:00 | 2018-05-31 07:00 | 5h |  | TEAM_2Shift_Calendar-1 | Helper; Gas Cutter; OAGM | 15h | 15h | 593.75 | 593.75 | 593.75 |
| 75 | 7.1.19 | Dish Edge Preparation | 4h | 2018-05-04 07:00 A | 2018-05-04 11:00 A | 74 | 100% |  | 2018-05-31 07:00 | 2018-05-31 11:00 | 4h |  | TEAM_2Shift_Calendar-1 | Grinder; Grinding Machine | 8h | 8h | 225 | 225 | 225 |
| 76 | 7.1.20 | Final Inspection | 1d | 2018-05-04 11:00 A | 2018-05-04 19:00 A | 75 | 100% |  | 2018-05-31 11:00 | 2018-05-31 19:00 | 1d |  | TEAM_2Shift_Calendar-1 | Fitter [200%] | 6h | 6h | 412.5 | 412.5 | 412.5 |

Notes:
- 34: 2Nos
- 35: 10"NBxSCH.30x180% %D(Mean Radius400)
- 36: 10"NB x SCH. 30 x ~348 Lg
- 37: 2Nos
- 38: 2Nos
- 39: Blank Dia ~406 10T (NOM) / 8T (MIN)
- 40: 48 Nos
- 41: 36 Nos
- 42: 8 Nos
- 43: 108 Nos
- 47: 32 Nos
- 50: 4Nos
- 51: 4Nos
- 56: 2Nos
- 57: 0D 10"NBx SCH 30

| ID | WBS | Task | Duration | Start | Finish | Predecessors | Complete | Remaining | Baseline start | Baseline finish | Baseline duration | Total slack | Free slack | Calendar | Resources | Work | Actual work | Cost | Baseline cost | Actual cost |
| --- | --- | --- | --- | --- | --- | --- | --- | --- | --- | --- | --- | --- | --- | --- | --- | --- | --- | --- | --- | --- |
| 77 | 7.2 | **Nozzle Fabrication** | 73.44d | 2018-04-04 19:30 A | 2018-05-22 15:00 |  | 98% | 1.55d | 2018-04-04 19:30 | 2018-04-27 19:00 | 37.94d | 37.19d |  | TEAM_2Shift_Calendar-1 |  | 168.4h | 148.4h | 8,209.38 | 9,021.88 | 7,196.88 |
| 78 | 7.2.1 | Noz Pipe Marking | 1d | 2018-04-04 19:30 A | 2018-04-05 11:30 A | 44FS+7d, 45FS+9d, 46FS+11d | 100% |  | 2018-04-04 19:30 | 2018-04-05 11:30 | 1d |  |  | TEAM_2Shift_Calendar-1 | Fitter; Helper; Pipe (Cost) [0.1%] | 8h | 8h | 475 | 475 | 475 |
| 79 | 7.2.2 | Noz Pipe Stamping | 1d | 2018-04-05 11:30 A | 2018-04-05 19:30 A | 78 | 100% |  | 2018-04-05 11:30 | 2018-04-05 19:30 | 1d |  |  | TEAM_2Shift_Calendar-1 | QC Engineer; TPI (Cost) [0.1%] | 2.4h | 2.4h |  |  |  |
| 80 | 7.2.3 | Noz Pipe Cutting | 1d | 2018-04-06 11:30 A | 2018-04-06 19:30 A | 79FS+1d | 100% |  | 2018-04-06 11:30 | 2018-04-06 19:30 | 1d |  |  | TEAM_2Shift_Calendar-1 | Helper; Gas Cutter; OAGM | 24h | 24h | 950 | 950 | 950 |
| 81 | 7.2.4 | Noz Pipe Ep | 4.5h | 2018-04-06 19:30 A | 2018-04-07 08:00 A | 80 | 100% |  | 2018-04-06 19:30 | 2018-04-07 08:00 | 4.5h |  |  | TEAM_2Shift_Calendar-1 | Grinder; Grinding Machine | 9h | 9h | 253.12 | 253.12 | 253.12 |
| 82 | 7.2.5 | Noz Flange+Pipe FitUp | 27d | 2018-04-13 16:00 A | 2018-05-03 08:00 A | 81FS+28d | 100% |  | 2018-04-13 16:00 | 2018-04-25 12:00 | 17.5d |  |  | TEAM_2Shift_Calendar-1 | Fitter; Helper [200%]; Forging Std (Cost) [0.1%]; TIG Welder; TIG Welding Machine | 8h | 8h | 450 | 1,262.5 | 450 |
| 83 | 7.2.6 | Noz Flange+PipeFitUp Inspection | 1d | 2018-05-03 08:00 A | 2018-05-03 16:00 A | 82 | 100% |  | 2018-04-25 12:00 | 2018-04-25 20:00 | 1d |  |  | TEAM_2Shift_Calendar-1 | QC Engineer | 3h | 3h |  |  |  |
| 84 | 7.2.7 | Noz Flange+PipeRoot TigWelding | 1d | 2018-05-05 16:00 A | 2018-05-07 08:00 A | 83FS+4d | 100% |  | 2018-04-25 20:00 | 2018-04-26 12:00 | 1d |  |  | TEAM_2Shift_Calendar-1 | Helper [200%]; TIG Welder; TIG Welding Machine | 32h | 32h | 1,800 | 1,800 | 1,800 |
| 85 | 7.2.8 | Noz Flange+Pipe FillerPassWelding | 1d | 2018-05-07 08:00 A | 2018-05-07 16:00 A | 84 | 100% |  | 2018-04-26 12:00 | 2018-04-26 20:00 | 1d |  |  | TEAM_2Shift_Calendar-1 | Helper [200%]; TIG Welder; TIG Welding Machine | 32h | 32h | 1,800 | 1,800 | 1,800 |
| 86 | 7.2.9 | Mp ConMarking | 1h | 2018-05-21 16:00 A | 2018-05-21 17:00 A | 85FS+22d | 100% |  | 2018-04-26 20:00 | 2018-04-26 21:00 | 1h |  |  | TEAM_2Shift_Calendar-1 | Fitter; Helper | 2h | 2h | 118.75 | 118.75 | 118.75 |
| 87 | 7.2.10 | Mp ConOpenning | 3h | 2018-05-21 17:00 A | 2018-05-21 20:00 A | 86 | 100% |  | 2018-04-26 21:00 | 2018-04-27 08:00 | 3h |  |  | TEAM_2Shift_Calendar-1 | Helper; Gas Cutter; OAGM | 9h | 9h | 356.25 | 356.25 | 356.25 |
| 88 | 7.2.11 | Mp ConEp | 2h | 2018-05-21 20:00 A | 2018-05-21 22:00 A | 87 | 100% |  | 2018-04-27 08:00 | 2018-04-27 10:00 | 2h |  |  | TEAM_2Shift_Calendar-1 | Grinder; Grinding Machine | 4h | 4h | 112.5 | 112.5 | 112.5 |
| 89 | 7.2.12 | Mp Con Noz FitUp | 3h | 2018-05-22 06:00 A | 2018-05-22 09:00 A | 88 | 100% |  | 2018-04-27 10:00 | 2018-04-27 13:00 | 3h |  |  | TEAM_2Shift_Calendar-1 | Fitter; Helper [200%]; TIG Welder; TIG Welding Machine | 15h | 15h | 881.25 | 881.25 | 881.25 |
| 90 | 7.2.13 | Mp Con Noz Welding | 4h | 2018-05-22 09:00 | 2018-05-22 13:00 | 89 |  |  | 2018-04-27 13:00 | 2018-04-27 17:00 | 4h | 37.19d | 0d | TEAM_2Shift_Calendar-1 | Helper [200%]; TIG Welder; TIG Welding Machine | 16h |  | 900 | 900 |  |
| 91 | 7.2.14 | Mp Con Noz Welding FlushGrind | 2h | 2018-05-22 13:00 | 2018-05-22 15:00 | 90 |  |  | 2018-04-27 17:00 | 2018-04-27 19:00 | 2h | 37.19d |  | TEAM_2Shift_Calendar-1 | Grinder; Grinding Machine | 4h |  | 112.5 | 112.5 |  |
| 92 | 7.3 | **Saddle Fabrication** | 40.5d | 2018-04-09 11:30 A | 2018-05-05 15:30 A |  | 100% |  | 2018-04-09 11:30 | 2018-04-26 15:30 | 28.5d |  |  | TEAM_2Shift_Calendar-1 |  | 167h | 167h | 7,514.58 | 7,514.58 | 7,514.58 |
| 93 | 7.3.1 | Saddle Pl Marking | 6h | 2018-04-09 11:30 A | 2018-04-09 17:30 A | 48FS+18d | 100% |  | 2018-04-09 11:30 | 2018-04-09 17:30 | 6h |  |  | TEAM_2Shift_Calendar-1 | Fitter; Helper; Plate (Cost) [0.1%] | 12h | 12h | 712.5 | 712.5 | 712.5 |
| 94 | 7.3.2 | Saddle Pl Mkg Inspection | 1d | 2018-04-09 17:30 A | 2018-04-10 09:30 A | 93 | 100% |  | 2018-04-09 17:30 | 2018-04-10 09:30 | 1d |  |  | TEAM_2Shift_Calendar-1 | Fitter; QC Engineer | 3h | 3h | 183.33 | 183.33 | 183.33 |
| 95 | 7.3.3 | Saddle Pl Mkg Cutting | 7h | 2018-04-10 09:30 A | 2018-04-10 16:30 A | 94 | 100% |  | 2018-04-10 09:30 | 2018-04-10 16:30 | 7h |  |  | TEAM_2Shift_Calendar-1 | Helper; Gas Cutter; OAGM | 21h | 21h | 831.25 | 831.25 | 831.25 |
| 96 | 7.3.4 | Grinding | 7h | 2018-04-27 16:30 A | 2018-04-30 07:30 A | 95FS+28d | 100% |  | 2018-04-23 16:30 | 2018-04-24 07:30 | 7h |  |  | TEAM_2Shift_Calendar-1 | Grinder; Grinding Machine | 14h | 14h | 393.75 | 393.75 | 393.75 |
| 97 | 7.3.5 | Saddle Base Hole Marking | 3h | 2018-04-30 07:30 A | 2018-04-30 10:30 A | 96 | 100% |  | 2018-04-24 07:30 | 2018-04-24 10:30 | 3h |  |  | TEAM_2Shift_Calendar-1 | Fitter; Helper | 6h | 6h | 356.25 | 356.25 | 356.25 |
| 98 | 7.3.6 | Saddle BaseHole Drilling | 6h | 2018-04-30 10:30 A | 2018-04-30 16:30 A | 97 | 100% |  | 2018-04-24 10:30 | 2018-04-24 16:30 | 6h |  |  | TEAM_2Shift_Calendar-1 | Driller; Radial Drilling Machine | 12h | 12h | 412.5 | 412.5 | 412.5 |
| 99 | 7.3.7 | Saddle Pad Forming | 1d | 2018-04-30 16:30 A | 2018-05-02 08:30 A | 98 | 100% |  | 2018-04-24 16:30 | 2018-04-25 08:30 | 1d |  |  | TEAM_2Shift_Calendar-1 | Fitter [200%]; Helper | 24h | 24h | 1,500 | 1,500 | 1,500 |
| 100 | 7.3.8 | Saddle FitUp | 5h | 2018-05-04 08:30 A | 2018-05-04 13:30 A | 99FS+4d | 100% |  | 2018-04-25 08:30 | 2018-04-25 13:30 | 5h |  |  | TEAM_2Shift_Calendar-1 | Fitter; Helper [200%]; SMAW Welder; SMAW Welding Machine | 25h | 25h | 1,187.5 | 1,187.5 | 1,187.5 |
| 101 | 7.3.9 | Saddle FitUp Inspection | 2h | 2018-05-04 13:30 A | 2018-05-04 15:30 A | 100 | 100% |  | 2018-04-25 13:30 | 2018-04-25 15:30 | 2h |  |  | TEAM_2Shift_Calendar-1 | Fitter | 2h | 2h | 137.5 | 137.5 | 137.5 |
| 102 | 7.3.10 | Saddle Welding | 1d | 2018-05-04 15:30 A | 2018-05-05 07:30 A | 101 | 100% |  | 2018-04-25 15:30 | 2018-04-26 07:30 | 1d |  |  | TEAM_2Shift_Calendar-1 | Helper [200%]; SMAW Welder; SMAW Welding Machine | 32h | 32h | 1,350 | 1,350 | 1,350 |
| 103 | 7.3.11 | Saddle Profile Grinding | 8h | 2018-05-05 07:30 A | 2018-05-05 15:30 A | 102 | 100% |  | 2018-04-26 07:30 | 2018-04-26 15:30 | 8h |  |  | TEAM_2Shift_Calendar-1 | Grinder; Grinding Machine | 16h | 16h | 450 | 450 | 450 |

Notes:
- 93: 2 shell
- 99: DEV.Lg 347X150X12T

| ID | WBS | Task | Type | Duration | Start | Finish | Predecessors | Complete | Baseline start | Baseline finish | Baseline duration | Calendar | Resources | Work | Actual work | Cost | Baseline cost | Actual cost |
| --- | --- | --- | --- | --- | --- | --- | --- | --- | --- | --- | --- | --- | --- | --- | --- | --- | --- | --- |
| 104 | 7.4 | **TubeSheet** |  | 9d | 2018-04-03 09:30 A | 2018-04-07 17:30 A |  | 100% | 2018-04-03 09:30 | 2018-04-07 17:30 | 9d | TEAM_2Shift_Calendar-1 |  | 66h | 66h | 2,693.21 | 2,693.21 | 2,693.21 |
| 105 | 7.4.1 | Inspection |  | 1d | 2018-04-03 09:30 A | 2018-04-03 17:30 A | 37FS+43d | 100% | 2018-04-03 09:30 | 2018-04-03 17:30 | 1d | TEAM_2Shift_Calendar-1 | Fitter [200%]; QC Engineer; Tube Sheet (Cost) [0.1%] | 6h | 6h | 286.96 | 286.96 | 286.96 |
| 106 | 7.4.2 | Off Load For Drilling |  | 1h | 2018-04-05 09:30 A | 2018-04-05 10:30 A | 105FS+3d | 100% | 2018-04-05 09:30 | 2018-04-05 10:30 | 1h | TEAM_2Shift_Calendar-1 | Helper [200%] | 2h | 2h | 100 | 100 | 100 |
| 107 | 7.4.3 | Tube sheet hole marking |  | 7h | 2018-04-05 10:30 A | 2018-04-05 17:30 A | 106 | 100% | 2018-04-05 10:30 | 2018-04-05 17:30 | 7h | TEAM_2Shift_Calendar-1 | Fitter | 7h | 7h | 481.25 | 481.25 | 481.25 |
| 108 | 7.4.4 | Drilling Of Tube Holes |  | 1d | 2018-04-05 18:30 A | 2018-04-06 10:30 A | 106FS+1d | 100% | 2018-04-05 18:30 | 2018-04-06 10:30 | 1d | TEAM_2Shift_Calendar-1 | Driller; Radial Drilling Machine | 16h | 16h | 550 | 550 | 550 |
| 109 | 7.4.5 | Drilling Of Bolt Holes |  | 5h | 2018-04-06 10:30 A | 2018-04-06 15:30 A | 108 | 100% | 2018-04-06 10:30 | 2018-04-06 15:30 | 5h | TEAM_2Shift_Calendar-1 | Driller; Radial Drilling Machine | 10h | 10h | 343.75 | 343.75 | 343.75 |
| 110 | 7.4.6 | Drilling Of TieRod Holes |  | 7h | 2018-04-06 15:30 A | 2018-04-07 06:30 A | 109 | 100% | 2018-04-06 15:30 | 2018-04-07 06:30 | 7h | TEAM_2Shift_Calendar-1 | Driller; Radial Drilling Machine | 14h | 14h | 481.25 | 481.25 | 481.25 |
| 111 | 7.4.7 | Tube Sheet Cleaning |  | 3h | 2018-04-07 14:30 A | 2018-04-07 17:30 A | 112 | 100% | 2018-04-07 14:30 | 2018-04-07 17:30 | 3h | TEAM_2Shift_Calendar-1 | Helper [300%] | 9h | 9h | 450 | 450 | 450 |
| 112 | 7.4.8 | Tube Sheet Inspection |  | 1d | 2018-04-07 06:30 A | 2018-04-07 14:30 A | 110 | 100% | 2018-04-07 06:30 | 2018-04-07 14:30 | 1d | TEAM_2Shift_Calendar-1 | QC Engineer | 2h | 2h |  |  |  |
| 113 | 7.5 | **SpacerTube** |  | 4.75d | 2018-05-17 20:30 A | 2018-05-21 10:30 A |  | 100% | 2018-04-26 20:30 | 2018-05-02 10:30 | 4.75d | TEAM_2Shift_Calendar-1 |  | 54h | 54h | 3,638.75 | 3,638.75 | 3,638.75 |
| 114 | 7.5.1 | SpacerTubeMarking |  | 9h | 2018-05-17 20:30 A | 2018-05-18 13:30 A | 43FS+3d | 100% | 2018-04-26 20:30 | 2018-04-27 13:30 | 9h | TEAM_2Shift_Calendar-1 | Fitter; Helper; Tube (Cost) [0.1%] | 18h | 18h | 1,068.75 | 1,068.75 | 1,068.75 |
| 115 | 7.5.2 | SpacerTubeCutting |  | 7h | 2018-05-18 13:30 A | 2018-05-18 20:30 A | 114 | 100% | 2018-04-27 13:30 | 2018-04-27 20:30 | 7h | TEAM_2Shift_Calendar-1 | Cutting Machine; Helper | 14h | 14h | 350 | 350 | 350 |
| 116 | 7.5.3 | SpacerTubeM/C |  | 2d | 2018-05-18 20:30 A | 2018-05-19 20:30 A | 115 | 100% | 2018-04-27 20:30 | 2018-04-30 20:30 | 2d | TEAM_2Shift_Calendar-1 | Lathe Operator | 16h | 16h | 1,920 | 1,920 | 1,920 |
| 117 | 7.5.4 | SpacerCleaning |  | 6h | 2018-05-19 20:30 A | 2018-05-21 10:30 A | 116 | 100% | 2018-04-30 20:30 | 2018-05-02 10:30 | 6h | TEAM_2Shift_Calendar-1 | Helper | 6h | 6h | 300 | 300 | 300 |
| 118 | 7.6 | **BaffleFabrication** |  | 49.25d | 2018-04-12 17:30 A | 2018-05-16 11:30 A |  | 100% | 2018-04-12 17:30 | 2018-05-02 19:30 | 28.25d | TEAM_2Shift_Calendar-1 |  | 190h | 190h | 8,125 | 8,125 | 8,125 |
| 119 | 7.6.1 | Marking |  | 1d | 2018-04-12 17:30 A | 2018-04-13 09:30 A | 41FS+98d | 100% | 2018-04-12 17:30 | 2018-04-13 09:30 | 1d | TEAM_2Shift_Calendar-1 | Fitter; Helper; Plate (Cost) [0.1%] | 16h | 16h | 950 | 950 | 950 |
| 120 | 7.6.2 | Cutting |  | 1d | 2018-04-13 09:30 A | 2018-04-13 17:30 A | 119 | 100% | 2018-04-13 09:30 | 2018-04-13 17:30 | 1d | TEAM_2Shift_Calendar-1 | Helper; Gas Cutter; OAGM | 24h | 24h | 950 | 950 | 950 |
| 121 | 7.6.3 | Grinding |  | 1d | 2018-04-13 17:30 A | 2018-04-16 09:30 A | 120 | 100% | 2018-04-13 17:30 | 2018-04-16 09:30 | 1d | TEAM_2Shift_Calendar-1 | Grinder; Grinding Machine | 16h | 16h | 450 | 450 | 450 |
| 122 | 7.6.4 | Stacking |  | 6h | 2018-04-16 09:30 A | 2018-04-16 15:30 A | 121 | 100% | 2018-04-16 09:30 | 2018-04-16 15:30 | 6h | TEAM_2Shift_Calendar-1 | Helper | 6h | 6h | 300 | 300 | 300 |
| 123 | 7.6.5 | CentreLineMarking |  | 4h | 2018-04-16 15:30 A | 2018-04-16 19:30 A | 122 | 100% | 2018-04-16 15:30 | 2018-04-16 19:30 | 4h | TEAM_2Shift_Calendar-1 | Fitter; Helper | 8h | 8h | 475 | 475 | 475 |
| 124 | 7.6.6 | Drilling |  | 24d | 2018-04-21 11:30 A | 2018-05-08 11:30 A | 123FS+9d | 100% | 2018-04-21 11:30 | 2018-04-24 19:30 | 5d | TEAM_2Shift_Calendar-1 | SC (Cost) [0.1%] |  |  |  |  |  |
| 125 | 7.6.7 | De Stacking |  | 8h | 2018-05-08 11:30 A | 2018-05-08 19:30 A | 124 | 100% | 2018-04-24 19:30 | 2018-04-25 11:30 | 8h | TEAM_2Shift_Calendar-1 | Helper | 8h | 8h | 400 | 400 | 400 |
| 126 | 7.6.8 | Hole Chamfering |  | 1d | 2018-05-08 19:30 A | 2018-05-09 11:30 A | 125 | 100% | 2018-04-25 11:30 | 2018-04-25 19:30 | 1d | TEAM_2Shift_Calendar-1 | Driller | 8h | 8h | 550 | 550 | 550 |
| 127 | 7.6.9 | EdgeTrimming |  | 8h | 2018-05-09 11:30 A | 2018-05-09 19:30 A | 126 | 100% | 2018-04-25 19:30 | 2018-04-26 11:30 | 8h | TEAM_2Shift_Calendar-1 | Grinder; Grinding Machine | 16h | 16h | 450 | 450 | 450 |
| 128 | 7.6.10 | Grinding |  | 8h | 2018-05-09 19:30 A | 2018-05-10 11:30 A | 127 | 100% | 2018-04-26 11:30 | 2018-04-26 19:30 | 8h | TEAM_2Shift_Calendar-1 | Grinder; Grinding Machine | 16h | 16h | 450 | 450 | 450 |
| 129 | 7.6.11 | Stacking TypeA&B |  | 8h | 2018-05-11 11:30 A | 2018-05-11 19:30 A | 128FS+2d | 100% | 2018-04-26 19:30 | 2018-04-27 11:30 | 8h | TEAM_2Shift_Calendar-1 | Helper | 8h | 8h | 400 | 400 | 400 |
| 130 | 7.6.12 | Through Hole Check |  | 1d | 2018-05-11 19:30 A | 2018-05-14 11:30 A | 129 | 100% | 2018-04-27 11:30 | 2018-04-27 19:30 | 1d | TEAM_2Shift_Calendar-1 | Fitter; Helper | 16h | 16h | 950 | 950 | 950 |
| 131 | 7.6.13 | ReDrill If Required |  | 1d | 2018-05-14 11:30 A | 2018-05-14 19:30 A | 130 | 100% | 2018-04-27 19:30 | 2018-04-30 11:30 | 1d | TEAM_2Shift_Calendar-1 | Driller; Radial Drilling Machine | 16h | 16h | 550 | 550 | 550 |
| 132 | 7.6.14 | OD Machining |  | 1d | 2018-05-14 19:30 A | 2018-05-15 11:30 A | 131 | 100% | 2018-04-30 11:30 | 2018-04-30 19:30 | 1d | TEAM_2Shift_Calendar-1 | Grinder; Grinding Machine | 16h | 16h | 450 | 450 | 450 |
| 133 | 7.6.15 | De Stacking |  | 8h | 2018-05-15 11:30 A | 2018-05-15 19:30 A | 132 | 100% | 2018-04-30 19:30 | 2018-05-02 11:30 | 8h | TEAM_2Shift_Calendar-1 | Helper | 8h | 8h | 400 | 400 | 400 |
| 134 | 7.6.16 | Cleaning |  | 1d | 2018-05-15 19:30 A | 2018-05-16 11:30 A | 133 | 100% | 2018-05-02 11:30 | 2018-05-02 19:30 | 1d | TEAM_2Shift_Calendar-1 | Helper | 8h | 8h | 400 | 400 | 400 |
| 135 | 7.6.17 | Ready For Assy | milestone | 0d | 2018-05-16 11:30 A | 2018-05-16 11:30 A | 134 | 100% | 2018-05-02 19:30 | 2018-05-02 19:30 | 0d | TEAM_2Shift_Calendar-1 |  |  |  |  |  |  |

Notes:
- 104: 2Nos
- 108: 96NOSxØ20.20
- 109: 12Nos Ø23
- 110: 6NOS Ø11
- 114: 108Nos-OD17.5x2.35T
- 124: 936 Holes-Ø20.8

| ID | WBS | Task | Duration | Start | Finish | Predecessors | Complete | Remaining | Baseline start | Baseline finish | Baseline duration | Total slack | Free slack | Calendar | Resources | Work | Actual work | Cost | Baseline cost | Actual cost |
| --- | --- | --- | --- | --- | --- | --- | --- | --- | --- | --- | --- | --- | --- | --- | --- | --- | --- | --- | --- | --- |
| 136 | 7.7 | **TieRod** | 2.75d | 2018-05-23 13:40 A | 2018-05-24 19:40 |  | 27% | 2d | 2018-04-30 13:40 | 2018-05-02 19:40 | 2.75d | 0d |  | TEAM_2Shift_Calendar-1 |  | 28h | 12h | 1,535 | 1,535 | 575 |
| 137 | 7.7.1 | Marking | 4h | 2018-05-23 13:40 A | 2018-05-23 17:40 A | 42 | 100% |  | 2018-04-30 13:40 | 2018-04-30 17:40 | 4h |  |  | TEAM_2Shift_Calendar-1 | Fitter; Helper; Rod (Cost) [0.1%] | 8h | 8h | 475 | 475 | 475 |
| 138 | 7.7.2 | Cutting | 2h | 2018-05-23 17:40 A | 2018-05-23 19:40 A | 137 | 100% |  | 2018-04-30 17:40 | 2018-04-30 19:40 | 2h |  |  | TEAM_2Shift_Calendar-1 | Cutting Machine; Helper | 4h | 4h | 100 | 100 | 100 |
| 139 | 7.7.3 | Thread Machining | 2d | 2018-05-23 19:40 | 2018-05-24 19:40 | 138 |  |  | 2018-04-30 19:40 | 2018-05-02 19:40 | 2d | 0d |  | TEAM_2Shift_Calendar-1 | Lathe Operator; Lathe | 16h |  | 960 | 960 |  |
| 140 | 7.8 | **OtherComponents(lifting lug,insulation cleat)** | 5d | 2018-05-19 11:30 A | 2018-05-22 19:30 A |  | 100% |  | 2018-05-03 19:30 | 2018-05-07 11:30 | 5d |  |  | TEAM_2Shift_Calendar-1 |  | 86h | 86h | 3,775 | 3,775 | 3,775 |
| 141 | 7.8.1 | LiftingLug Marking | 3h | 2018-05-19 11:30 A | 2018-05-19 14:30 A | 50, 51FS+80d | 100% |  | 2018-05-03 19:30 | 2018-05-04 06:30 | 3h |  |  | TEAM_2Shift_Calendar-1 | Fitter; Helper; Plate (Cost) [0.1%] | 6h | 6h | 356.25 | 356.25 | 356.25 |
| 142 | 7.8.2 | LiftingLug Cutting | 3h | 2018-05-19 14:30 A | 2018-05-19 17:30 A | 141 | 100% |  | 2018-05-04 06:30 | 2018-05-04 09:30 | 3h |  |  | TEAM_2Shift_Calendar-1 | Gas Cutter; OAGM | 6h | 6h | 206.25 | 206.25 | 206.25 |
| 143 | 7.8.3 | Lifting LugPad Marking | 2h | 2018-05-19 17:30 A | 2018-05-19 19:30 A | 142 | 100% |  | 2018-05-04 09:30 | 2018-05-04 11:30 | 2h |  |  | TEAM_2Shift_Calendar-1 | Fitter; Helper | 4h | 4h | 237.5 | 237.5 | 237.5 |
| 144 | 7.8.4 | Lifting LugPad Cutting | 3h | 2018-05-19 19:30 A | 2018-05-21 06:30 A | 143 | 100% |  | 2018-05-04 11:30 | 2018-05-04 14:30 | 3h |  |  | TEAM_2Shift_Calendar-1 | Gas Cutter; OAGM | 6h | 6h | 206.25 | 206.25 | 206.25 |
| 145 | 7.8.5 | Lifting LugPad Grinding | 7h | 2018-05-21 06:30 A | 2018-05-21 13:30 A | 144 | 100% |  | 2018-05-04 14:30 | 2018-05-04 21:30 | 7h |  |  | TEAM_2Shift_Calendar-1 | Grinder; Grinding Machine | 14h | 14h | 393.75 | 393.75 | 393.75 |
| 146 | 7.8.6 | LiftingLugPadForming | 6h | 2018-05-21 13:30 A | 2018-05-21 19:30 A | 145 | 100% |  | 2018-05-04 21:30 | 2018-05-05 11:30 | 6h |  |  | TEAM_2Shift_Calendar-1 | Fitter [200%]; Helper | 18h | 18h | 1,125 | 1,125 | 1,125 |
| 147 | 7.8.7 | Ins Cleat Marking | 4h | 2018-05-21 19:30 A | 2018-05-22 07:30 A | 146 | 100% |  | 2018-05-05 11:30 | 2018-05-05 15:30 | 4h |  |  | TEAM_2Shift_Calendar-1 | Fitter; Helper | 8h | 8h | 475 | 475 | 475 |
| 148 | 7.8.8 | Ins Cleat Cutting | 5h | 2018-05-22 07:30 A | 2018-05-22 12:30 A | 147 | 100% |  | 2018-05-05 15:30 | 2018-05-05 20:30 | 5h |  |  | TEAM_2Shift_Calendar-1 | Gas Cutter; OAGM | 10h | 10h | 343.75 | 343.75 | 343.75 |
| 149 | 7.8.9 | Ins Cleat Grinding | 4h | 2018-05-22 12:30 A | 2018-05-22 16:30 A | 148 | 100% |  | 2018-05-05 20:30 | 2018-05-07 08:30 | 4h |  |  | TEAM_2Shift_Calendar-1 | Grinder; Grinding Machine | 8h | 8h | 225 | 225 | 225 |
| 150 | 7.8.10 | Ins Cleat Drilling | 3h | 2018-05-22 16:30 A | 2018-05-22 19:30 A | 149 | 100% |  | 2018-05-07 08:30 | 2018-05-07 11:30 | 3h |  |  | TEAM_2Shift_Calendar-1 | Driller; Radial Drilling Machine | 6h | 6h | 206.25 | 206.25 | 206.25 |
| 151 | 7.9 | **Channel Assembly(nozzle,dish,flange)** | 107.12d | 2018-03-20 09:30 A | 2018-05-28 18:30 |  | 72% | 30.4d | 2018-03-20 09:30 | 2018-06-01 15:00 | 114.69d | 28.75d |  | TEAM_2Shift_Calendar-1 |  | 452.5h | 326h | 18,117.71 | 18,867.71 | 13,414.58 |
| 152 | 7.9.1 | Ch-Stamping | 1d | 2018-03-20 09:30 A | 2018-03-20 17:30 A | 36FS+35d | 100% |  | 2018-03-20 09:30 | 2018-03-20 17:30 | 1d |  |  | TEAM_2Shift_Calendar-1 | QC Engineer; Pipe (Cost) [0.1%] | 3h | 3h |  |  |  |
| 153 | 7.9.2 | Ch-Edge preparation | 8h | 2018-04-12 17:30 A | 2018-04-13 09:30 A | 152FS+38d | 100% |  | 2018-04-12 17:30 | 2018-04-13 09:30 | 8h |  |  | TEAM_2Shift_Calendar-1 | Grinder; Grinding Machine | 16h | 16h | 450 | 450 | 450 |
| 154 | 7.9.3 | Ch-FlangeFitup | 6h | 2018-04-21 17:30 A | 2018-04-23 07:30 A | 38, 153FS+13d | 100% |  | 2018-04-21 17:30 | 2018-04-23 07:30 | 6h |  |  | TEAM_2Shift_Calendar-1 | Helper; SMAW Welder; SMAW Welding Machine; Fitter | 24h | 24h | 1,125 | 1,125 | 1,125 |
| 155 | 7.9.4 | Ch-Flange fit up Inspection | 1d | 2018-04-27 07:30 A | 2018-04-27 15:30 A | 154FS+8d | 100% |  | 2018-04-23 07:30 | 2018-04-23 15:30 | 1d |  |  | TEAM_2Shift_Calendar-1 | Helper; QC Engineer | 4h | 4h | 133.33 | 133.33 | 133.33 |
| 156 | 7.9.5 | Ch-FlangeWelding | 8h | 2018-04-30 07:30 A | 2018-04-30 15:30 A | 155FS+1d | 100% |  | 2018-04-23 15:30 | 2018-04-24 07:30 | 8h |  |  | TEAM_2Shift_Calendar-1 | Helper; SMAW Welder; SMAW Welding Machine | 24h | 24h | 950 | 950 | 950 |
| 157 | 7.9.6 | Ch-FlangeBackchip | 5h | 2018-04-30 15:30 A | 2018-04-30 20:30 A | 156 | 100% |  | 2018-04-24 07:30 | 2018-04-24 12:30 | 5h |  |  | TEAM_2Shift_Calendar-1 | Grinder; Grinding Machine | 10h | 10h | 281.25 | 281.25 | 281.25 |
| 158 | 7.9.7 | Ch-Flange InsideWelding | 1d | 2018-04-30 20:30 A | 2018-05-02 12:30 A | 157 | 100% |  | 2018-04-24 12:30 | 2018-04-24 20:30 | 1d |  |  | TEAM_2Shift_Calendar-1 | Helper; SMAW Welder; SMAW Welding Machine | 24h | 24h | 950 | 950 | 950 |
| 159 | 7.9.8 | Ch-Flange Flush Grinding | 5h | 2018-05-03 12:30 A | 2018-05-03 17:30 | 158FS+2d | 100% | 0h | 2018-04-24 20:30 | 2018-04-25 09:30 | 5h | 0.25d | 0d | TEAM_2Shift_Calendar-1 | Grinder; Grinding Machine | 20h | 10h | 281.25 | 281.25 | 281.25 |
| 160 | 7.9.9 | Ch-Flange DP Check | 2h | 2018-05-03 17:30 A | 2018-05-03 19:30 | 159 | 100% | 0h | 2018-04-25 09:30 | 2018-04-25 11:30 | 2h | 2.44d | 1.94d | TEAM_2Shift_Calendar-1 | Fitter | 4h | 2h | 137.5 | 137.5 | 137.5 |
| 161 | 7.9.10 | Ch-Flange Radiography | 1d | 2018-05-03 19:30 A | 2018-05-04 11:30 A | 160 | 100% |  | 2018-04-25 11:30 | 2018-04-25 19:30 | 1d |  |  | TEAM_2Shift_Calendar-1 | SC Radiography (Cost) [0.1%] |  |  |  |  |  |
| 162 | 7.9.11 | Ch-dish fit up | 4h | 2018-05-04 19:00 A | 2018-05-05 07:00 | 56, 160 | 100% | 0h | 2018-05-31 19:00 | 2018-06-01 07:00 | 4h | 64.19d |  | TEAM_2Shift_Calendar-1 | Fitter; SMAW Welder | 16h | 8h | 550 | 550 | 550 |
| 163 | 7.9.12 | Ch-dish welding | 6h | 2018-05-05 07:00 A | 2018-05-05 13:00 A | 162 | 100% |  | 2018-06-01 07:00 | 2018-06-01 13:00 | 6h |  |  | TEAM_2Shift_Calendar-1 | SMAW Welder; Helper | 12h | 12h | 712.5 | 712.5 | 712.5 |
| 164 | 7.9.13 | DP check | 2h | 2018-05-05 13:00 A | 2018-05-05 15:00 A | 163 | 100% |  | 2018-06-01 13:00 | 2018-06-01 15:00 | 2h |  |  | TEAM_2Shift_Calendar-1 | Fitter | 2h | 2h | 137.5 | 137.5 | 137.5 |
| 165 | 7.9.14 | Ch NozzleOpening-N3,N4,N6,N7 | 8h | 2018-05-08 15:00 A | 2018-05-09 07:00 A | 77, 161 | 100% |  | 2018-04-27 19:00 | 2018-04-30 11:00 | 8h |  |  | TEAM_2Shift_Calendar-1 | Gas Cutter; OAGM; Helper | 24h | 24h | 950 | 950 | 950 |
| 166 | 7.9.15 | Ch Nozzle Opening E.P | 5h | 2018-05-09 07:00 A | 2018-05-09 12:00 A | 165 | 100% |  | 2018-04-30 11:00 | 2018-04-30 16:00 | 5h |  |  | TEAM_2Shift_Calendar-1 | Grinder; Grinding Machine | 10h | 10h | 281.25 | 281.25 | 281.25 |
| 167 | 7.9.16 | Ch Nozzle Fitup-N3,N4,N6,N7 | 1d | 2018-05-11 20:00 A | 2018-05-14 12:00 A | 166FS+5d | 100% |  | 2018-04-30 16:00 | 2018-05-02 08:00 | 1d |  |  | TEAM_2Shift_Calendar-1 | Helper; SMAW Welder; SMAW Welding Machine; Fitter | 32h | 32h | 1,500 | 1,500 | 1,500 |
| 168 | 7.9.17 | Ch Nozzle Fitup Inspection | 0.5d | 2018-05-14 12:00 A | 2018-05-14 16:00 A | 167 | 100% |  | 2018-05-02 08:00 | 2018-05-02 12:00 | 0.5d |  |  | TEAM_2Shift_Calendar-1 | Fitter; Helper | 4h | 4h | 237.5 | 237.5 | 237.5 |
| 169 | 7.9.18 | Ch Nozzle Welding Arragement | 3h | 2018-05-14 16:00 A | 2018-05-14 19:00 A | 168 | 100% |  | 2018-05-02 12:00 | 2018-05-02 15:00 | 3h |  |  | TEAM_2Shift_Calendar-1 | Fitter; Helper | 6h | 6h | 356.25 | 356.25 | 356.25 |
| 170 | 7.9.19 | Ch Nozzle Welding | 8h | 2018-05-14 19:00 A | 2018-05-15 11:00 A | 169 | 100% |  | 2018-05-02 15:00 | 2018-05-03 07:00 | 8h |  |  | TEAM_2Shift_Calendar-1 | Helper; SMAW Welder; SMAW Welding Machine | 24h | 24h | 950 | 950 | 950 |
| 171 | 7.9.20 | Ch Nozzle Inside Grinding | 5h | 2018-05-15 11:00 A | 2018-05-15 16:00 A | 170 | 100% |  | 2018-05-03 07:00 | 2018-05-03 12:00 | 5h |  |  | TEAM_2Shift_Calendar-1 | Grinder; Grinding Machine | 10h | 10h | 281.25 | 281.25 | 281.25 |
| 172 | 7.9.21 | Ch Nozzle Inside Welding | 7h | 2018-05-15 16:00 A | 2018-05-16 07:00 A | 171 | 100% |  | 2018-05-03 12:00 | 2018-05-03 19:00 | 7h |  |  | TEAM_2Shift_Calendar-1 | Helper; SMAW Welder; SMAW Welding Machine | 21h | 21h | 831.25 | 831.25 | 831.25 |
| 173 | 7.9.22 | Ch Nozzle Inside flushGrinding | 4h | 2018-05-16 07:00 A | 2018-05-16 11:00 A | 172 | 100% |  | 2018-05-03 19:00 | 2018-05-04 07:00 | 4h |  |  | TEAM_2Shift_Calendar-1 | Grinder; Grinding Machine | 8h | 8h | 225 | 225 | 225 |
| 174 | 7.9.23 | Dpcheck | 4h | 2018-05-16 11:00 A | 2018-05-16 15:00 A | 173 | 100% |  | 2018-05-04 07:00 | 2018-05-04 11:00 | 4h |  |  | TEAM_2Shift_Calendar-1 | Fitter | 4h | 4h | 275 | 275 | 275 |
| 175 | 7.9.24 | N10,N11 MP connection marking | 1h | 2018-05-19 15:00 A | 2018-05-19 16:00 A | 174FS+6d | 100% |  | 2018-05-04 11:00 | 2018-05-04 12:00 | 1h |  |  | TEAM_2Shift_Calendar-1 | Fitter | 1h | 1h | 68.75 | 68.75 | 68.75 |
| 176 | 7.9.25 | Opening | 3h | 2018-05-19 16:00 A | 2018-05-19 19:00 A | 175 | 100% |  | 2018-05-04 12:00 | 2018-05-04 15:00 | 3h |  |  | TEAM_2Shift_Calendar-1 | Gas Cutter; OAGM; Helper | 9h | 9h | 356.25 | 356.25 | 356.25 |
| 177 | 7.9.26 | fitup | 2h | 2018-05-19 19:00 A | 2018-05-19 21:00 A | 176 | 100% |  | 2018-05-04 15:00 | 2018-05-04 17:00 | 2h |  |  | TEAM_2Shift_Calendar-1 | Helper; SMAW Welder; SMAW Welding Machine; Fitter | 8h | 8h | 375 | 375 | 375 |
| 178 | 7.9.27 | Inspection | 1h | 2018-05-19 21:00 A | 2018-05-19 22:00 A | 177 | 100% |  | 2018-05-04 17:00 | 2018-05-04 18:00 | 1h |  |  | TEAM_2Shift_Calendar-1 | Fitter | 1h | 1h | 68.75 | 68.75 | 68.75 |
| 179 | 7.9.28 | welding | 6h | 2018-05-21 06:00 A | 2018-05-21 12:00 A | 178 | 100% |  | 2018-05-04 18:00 | 2018-05-05 08:00 | 6h |  |  | TEAM_2Shift_Calendar-1 | Helper; SMAW Welder; SMAW Welding Machine | 18h | 18h | 712.5 | 712.5 | 712.5 |
| 180 | 7.9.29 | grinding | 3h | 2018-05-21 12:00 A | 2018-05-21 15:00 A | 179 | 100% |  | 2018-05-05 08:00 | 2018-05-05 11:00 | 3h |  |  | TEAM_2Shift_Calendar-1 | Grinder; Grinding Machine | 6h | 6h | 168.75 | 168.75 | 168.75 |
| 181 | 7.9.30 | Dpcheck | 1h | 2018-05-21 15:00 A | 2018-05-21 16:00 A | 180 | 100% |  | 2018-05-05 11:00 | 2018-05-05 12:00 | 1h |  |  | TEAM_2Shift_Calendar-1 | Fitter | 1h | 1h | 68.75 | 68.75 | 68.75 |
| 182 | 7.9.31 | Ch Nozzle Radiography | 1d | 2018-05-21 16:00 A | 2018-05-22 08:00 A | 181 | 100% |  | 2018-05-05 12:00 | 2018-05-05 20:00 | 1d |  |  | TEAM_2Shift_Calendar-1 | SC (Cost) [0.1%] |  |  |  |  |  |
| 183 | 7.9.32 | Ch LiftingLugPad Fitup | 4h | 2018-05-22 19:30 | 2018-05-23 07:30 | 140, 182 |  |  | 2018-05-07 11:30 | 2018-05-07 15:30 | 4h | 28.75d | 0d | TEAM_2Shift_Calendar-1 | Fitter; Helper; SMAW Welder; SMAW Welding Machine | 16h |  | 750 | 750 |  |
| 184 | 7.9.33 | Ch Lifting LugPad Weld Arrangement | 1h | 2018-05-23 07:30 | 2018-05-23 08:30 | 183 |  |  | 2018-05-07 15:30 | 2018-05-07 16:30 | 1h | 28.75d | 0d | TEAM_2Shift_Calendar-1 | Fitter; Helper | 2h |  | 118.75 | 118.75 |  |
| 185 | 7.9.34 | Ch Lifting LugPad Welding | 3h | 2018-05-23 08:30 | 2018-05-23 11:30 | 184 |  |  | 2018-05-07 16:30 | 2018-05-07 19:30 | 3h | 28.75d | 0d | TEAM_2Shift_Calendar-1 | Helper; SMAW Welding Machine | 6h |  | 150 | 150 |  |
| 186 | 7.9.35 | Ch LiftingLug Fitup | 2h | 2018-05-23 11:30 | 2018-05-23 13:30 | 185 |  |  | 2018-05-07 19:30 | 2018-05-07 21:30 | 2h | 28.75d | 0d | TEAM_2Shift_Calendar-1 | Fitter; Helper; SMAW Welder; SMAW Welding Machine | 8h |  | 375 | 375 |  |
| 187 | 7.9.36 | Ch LiftingLug Welding | 2.5h | 2018-05-23 13:30 | 2018-05-23 16:00 | 186 |  |  | 2018-05-07 21:30 | 2018-05-08 08:00 | 2.5h | 28.75d | 0d | TEAM_2Shift_Calendar-1 | Helper; SMAW Welder; SMAW Welding Machine | 7.5h |  | 296.88 | 296.88 |  |
| 188 | 7.9.37 | Ch InsulationCleat Marking | 1h | 2018-05-23 16:00 | 2018-05-23 17:00 | 187 |  |  | 2018-05-08 08:00 | 2018-05-08 09:00 | 1h | 28.75d | 0d | TEAM_2Shift_Calendar-1 | Fitter; Helper | 2h |  | 118.75 | 118.75 |  |
| 189 | 7.9.38 | Ch InsulationCleat Fitup | 2.5h | 2018-05-23 17:00 | 2018-05-23 19:30 | 188 |  |  | 2018-05-08 09:00 | 2018-05-08 11:30 | 2.5h | 28.75d | 0d | TEAM_2Shift_Calendar-1 | Fitter; Helper; SMAW Welder; SMAW Welding Machine | 10h |  | 468.75 | 468.75 |  |
| 190 | 7.9.39 | Ch Insulation Cleatwelding | 3h | 2018-05-23 19:30 | 2018-05-24 06:30 | 189 |  |  | 2018-05-08 11:30 | 2018-05-08 14:30 | 3h | 28.75d | 0d | TEAM_2Shift_Calendar-1 | Helper; SMAW Welder; SMAW Welding Machine | 9h |  | 356.25 | 356.25 |  |
| 191 | 7.9.40 | Ch Final DressUp | 7h | 2018-05-24 06:30 | 2018-05-24 13:30 | 190 |  |  | 2018-05-08 14:30 | 2018-05-08 21:30 | 7h | 28.75d | 0d | TEAM_2Shift_Calendar-1 | Grinder; Grinding Machine | 14h |  | 393.75 | 393.75 |  |
| 192 | 7.9.41 | Ch Dimensional Inspection | 6h | 2018-05-24 13:30 | 2018-05-24 19:30 | 191 |  |  | 2018-05-08 21:30 | 2018-05-09 11:30 | 6h | 28.75d | 0d | TEAM_2Shift_Calendar-1 | Fitter [200%] | 12h |  | 825 | 825 |  |
| 193 | 7.9.42 | Ch Clearanceby TPI | 6h | 2018-05-24 19:30 | 2018-05-25 09:30 | 192 |  |  | 2018-05-09 11:30 | 2018-05-09 21:30 | 1.25d | 28.75d | 0d | TEAM_2Shift_Calendar-1 | QC Engineer; TPI (Cost) [0.1%] | 1h |  |  |  |  |
| 194 | 7.9.43 | Ch PWHT | 1d | 2018-05-25 09:30 | 2018-05-25 17:30 | 193 |  |  | 2018-05-09 21:30 | 2018-05-11 13:30 | 3d | 28.75d | 0d | TEAM_2Shift_Calendar-1 | SC (Cost) [0.1%] |  |  |  |  |  |
| 195 | 7.9.44 | Ch Receipt after PWHT | 4h | 2018-05-25 17:30 | 2018-05-25 21:30 | 194 |  |  | 2018-05-11 13:30 | 2018-05-11 21:30 | 1d | 28.75d | 0d | TEAM_2Shift_Calendar-1 | Helper [300%] | 12h |  | 600 | 1,200 |  |
| 196 | 7.9.45 | Ch Surface Cleaning | 5h | 2018-05-25 21:30 | 2018-05-28 10:30 | 195 |  |  | 2018-05-11 21:30 | 2018-05-14 13:30 | 1d | 28.75d | 0d | TEAM_2Shift_Calendar-1 | Helper | 5h |  | 250 | 400 |  |
| 197 | 7.9.46 | Ch NDE by TPI | 1d | 2018-05-28 10:30 | 2018-05-28 18:30 | 196 |  |  | 2018-05-14 13:30 | 2018-05-15 07:00 | 1.19d | 28.75d |  | TEAM_2Shift_Calendar-1 | QC Engineer; TPI (Cost) [0.1%] | 2h |  |  |  |  |

Notes:
- 141: 4NOS
- 144: 4Nos
- 146: 32NOS
- 154: OD 398xID 257.5x60T
- 165: N3&N4(SRN):3''NB 12T N6&N7 1.5''
- 175: N10-N11 MP CONN: 1.5'' SCH 160
- 183: 4 Nos

| ID | WBS | Task | Duration | Start | Finish | Predecessors | Complete | Remaining | Baseline start | Baseline finish | Baseline duration | Total slack | Calendar | Resources | Work | Actual work | Cost | Baseline cost | Actual cost |
| --- | --- | --- | --- | --- | --- | --- | --- | --- | --- | --- | --- | --- | --- | --- | --- | --- | --- | --- | --- |
| 198 | 7.10 | **TubeBundleAssembly** | 14.27d | 2018-05-21 10:30 | 2018-05-30 12:40 |  |  |  | 2018-05-02 19:40 | 2018-05-08 13:40 | 9.25d | 0d | TEAM_2Shift_Calendar-1 |  | 204h |  | 10,463.75 | 13,602.08 |  |
| 199 | 7.10.1 | Assembly Frame Setup | 6h | 2018-05-21 10:30 | 2018-05-21 16:30 | 104, 113 |  |  | 2018-05-02 19:40 | 2018-05-03 11:40 | 8h | 6.4d | TEAM_2Shift_Calendar-1 | Fitter [200%]; Helper [400%] | 36h |  | 2,025 | 2,700 |  |
| 200 | 7.10.2 | Skeleton Assembly | 8h | 2018-05-24 19:40 | 2018-05-25 11:40 | 199, 136 |  |  | 2018-05-03 11:40 | 2018-05-04 10:40 | 15h | 0d | TEAM_2Shift_Calendar-1 | Fitter [200%]; Helper [400%] | 48h |  | 2,700 | 5,062.5 |  |
| 201 | 7.10.3 | Tie-Rod Welding | 3h | 2018-05-25 11:40 | 2018-05-25 14:40 | 200 |  |  | 2018-05-04 10:40 | 2018-05-04 13:40 | 3h | 0d | TEAM_2Shift_Calendar-1 | Helper [200%]; SMAW Welder; SMAW Welding Machine | 12h |  | 506.25 | 506.25 |  |
| 202 | 7.10.4 | Tube Insertion | 10h | 2018-05-25 14:40 | 2018-05-28 08:40 | 201 |  |  | 2018-05-04 13:40 | 2018-05-05 07:40 | 10h | 0d | TEAM_2Shift_Calendar-1 | Fitter; Helper [200%] | 30h |  | 1,687.5 | 1,687.5 |  |
| 203 | 7.10.5 | Tube Allignment | 8h | 2018-05-28 08:40 | 2018-05-28 16:40 | 202 |  |  | 2018-05-05 07:40 | 2018-05-05 15:40 | 8h | 0d | TEAM_2Shift_Calendar-1 | Fitter; Helper | 16h |  | 950 | 950 |  |
| 204 | 7.10.6 | DPCheck | 2h | 2018-05-28 16:40 | 2018-05-28 18:40 | 203 |  |  | 2018-05-05 15:40 | 2018-05-05 17:40 | 2h | 0d | TEAM_2Shift_Calendar-1 | Fitter; Helper | 4h |  | 237.5 | 237.5 |  |
| 205 | 7.10.7 | TubeTrimming | 8h | 2018-05-28 18:40 | 2018-05-29 10:40 | 204 |  |  | 2018-05-05 17:40 | 2018-05-07 09:40 | 8h | 0d | TEAM_2Shift_Calendar-1 | Grinder; Grinding Machine | 16h |  | 450 | 450 |  |
| 206 | 7.10.8 | DPCheck | 4h | 2018-05-29 10:40 | 2018-05-29 14:40 | 205 |  |  | 2018-05-07 09:40 | 2018-05-07 13:40 | 4h | 0d | TEAM_2Shift_Calendar-1 | Fitter; Helper | 8h |  | 475 | 475 |  |
| 207 | 7.10.9 | Expansion | 1d | 2018-05-29 14:40 | 2018-05-30 06:40 | 206 |  |  | 2018-05-07 13:40 | 2018-05-07 21:40 | 1d | 0d | TEAM_2Shift_Calendar-1 | Fitter; Helper [200%]; Expanding Machine | 32h |  | 1,350 | 1,350 |  |
| 208 | 7.10.10 | Inspection | 6h | 2018-05-30 06:40 | 2018-05-30 12:40 | 207 |  |  | 2018-05-07 21:40 | 2018-05-08 13:40 | 1d | 0d | TEAM_2Shift_Calendar-1 | Fitter; QC Engineer | 2h |  | 82.5 | 183.33 |  |
| 209 | 7.11 | **Shell with tube bundle assembly** | 123.4d | 2018-03-20 09:30 A | 2018-06-06 20:40 |  | 30% | 86.13d | 2018-03-20 09:30 | 2018-05-22 16:40 | 98.9d | 0d | TEAM_2Shift_Calendar-1 |  | 273h | 54h | 14,355.73 | 21,777.6 | 3,812.5 |
| 210 | 7.11.1 | Stamping | 1d | 2018-03-20 09:30 A | 2018-03-20 17:30 A | 34FS+35d | 100% |  | 2018-03-20 09:30 | 2018-03-20 17:30 | 1d |  | TEAM_2Shift_Calendar-1 | QC Engineer; TPI (Cost) [0.1%]; Pipe (Cost) [0.1%] | 3h | 3h |  |  |  |
| 211 | 7.11.2 | Shell Edge preparation | 10h | 2018-04-18 09:30 A | 2018-04-18 19:30 A | 210FS+45d | 100% |  | 2018-04-18 09:30 | 2018-04-18 19:30 | 10h |  | TEAM_2Shift_Calendar-1 | Grinder; Grinding Machine | 10h | 10h | 281.25 | 281.25 | 281.25 |
| 212 | 7.11.3 | Shell nozzle opening | 1d | 2018-04-20 19:30 A | 2018-04-21 11:30 A | 211FS+4d | 100% |  | 2018-04-23 19:30 | 2018-04-24 11:30 | 1d |  | TEAM_2Shift_Calendar-1 | Gas Cutter; Fitter | 16h | 16h | 1,100 | 1,100 | 1,100 |
| 213 | 7.11.4 | Edge preparation | 6h | 2018-04-21 11:30 A | 2018-04-21 17:30 A | 212 | 100% |  | 2018-04-24 11:30 | 2018-04-24 17:30 | 6h |  | TEAM_2Shift_Calendar-1 | Grinder | 6h | 6h | 337.5 | 337.5 | 337.5 |
| 214 | 7.11.5 | Shell nozzle fit up | 5h | 2018-05-10 17:30 A | 2018-05-11 06:30 A | 213FS+28d | 100% |  | 2018-04-24 17:30 | 2018-04-25 06:30 | 5h |  | TEAM_2Shift_Calendar-1 | Fitter; TIG Welder | 10h | 10h | 968.75 | 968.75 | 968.75 |
| 215 | 7.11.6 | Shell to nozzle welding | 1d | 2018-05-11 06:30 A | 2018-05-11 17:30 A | 214 | 100% |  | 2018-04-25 06:30 | 2018-04-25 17:30 | 1d |  |  | TIG Welder | 9h | 9h | 1,125 | 1,125 | 1,125 |
| 216 | 7.11.7 | Shell to bundle insert | 1d | 2018-05-30 12:40 | 2018-05-30 20:40 | 198 |  |  | 2018-05-08 13:40 | 2018-05-08 21:40 | 1d | 0d | TEAM_2Shift_Calendar-1 | Fitter [200%]; Crane; Helper [200%] | 40h |  | 1,900 | 1,900 |  |
| 217 | 7.11.8 | Shell to tube sheet fit up | 12h | 2018-05-30 20:40 | 2018-05-31 16:40 | 104, 216 |  |  | 2018-05-08 21:40 | 2018-05-09 17:40 | 12h | 0d | TEAM_2Shift_Calendar-1 | Fitter; SMAW Welder; SMAW Welding Machine | 35h |  | 1,604.17 | 1,604.17 |  |
| 218 | 7.11.9 | Inspection | 4h | 2018-05-31 16:40 | 2018-05-31 20:40 | 217 |  |  | 2018-05-09 17:40 | 2018-05-09 21:40 | 4h | 0d | TEAM_2Shift_Calendar-1 | Fitter; QC Engineer | 8h |  | 550 | 550 |  |
| 219 | 7.11.10 | welding | 10h | 2018-05-31 20:40 | 2018-06-01 14:40 | 218 |  |  | 2018-05-09 21:40 | 2018-05-10 20:40 | 15h | 0d | TEAM_2Shift_Calendar-1 | SMAW Welder; SMAW Welding Machine | 20h |  | 687.5 | 1,031.25 |  |
| 220 | 7.11.11 | Grinding | 3h | 2018-06-01 14:40 | 2018-06-01 17:40 | 219 |  |  | 2018-05-10 20:40 | 2018-05-11 07:40 | 3h | 0d | TEAM_2Shift_Calendar-1 | Grinder; Grinding Machine | 6h |  | 168.75 | 168.75 |  |
| 221 | 7.11.12 | Dp check | 2h | 2018-06-01 17:40 | 2018-06-01 19:40 | 220 |  |  | 2018-05-11 07:40 | 2018-05-11 09:40 | 2h | 0d | TEAM_2Shift_Calendar-1 | Fitter | 2h |  | 137.5 | 137.5 |  |
| 222 | 7.11.13 | tube to tubesheet root welding | 10h | 2018-06-01 19:40 | 2018-06-02 13:40 | 221 |  |  | 2018-05-11 09:40 | 2018-05-15 17:40 | 40h | 0d | TEAM_2Shift_Calendar-1 | TIG Welder; TIG Welding Machine | 15h |  | 937.5 | 3,875 |  |
| 223 | 7.11.14 | Dp check | 2h | 2018-06-02 13:40 | 2018-06-02 15:40 | 222 |  |  | 2018-05-15 17:40 | 2018-05-15 19:40 | 2h | 0d | TEAM_2Shift_Calendar-1 | Fitter | 2h |  | 137.5 | 137.5 |  |
| 224 | 7.11.15 | tube to tube sheet final welding | 10h | 2018-06-02 15:40 | 2018-06-04 09:40 | 223 |  |  | 2018-05-15 19:40 | 2018-05-17 07:40 | 20h | 0d | TEAM_2Shift_Calendar-1 | TIG Welder; TIG Welding Machine | 20h |  | 1,250 | 2,500 |  |
| 225 | 7.11.16 | tube trimming | 6h | 2018-06-04 09:40 | 2018-06-04 15:40 | 224 |  |  | 2018-05-17 07:40 | 2018-05-17 15:40 | 1d | 0d | TEAM_2Shift_Calendar-1 | Grinder; Grinding Machine | 12h |  | 337.5 | 450 |  |
| 226 | 7.11.17 | Dp check | 3h | 2018-06-04 15:40 | 2018-06-04 18:40 | 225 |  |  | 2018-05-17 15:40 | 2018-05-17 18:40 | 3h | 0d | TEAM_2Shift_Calendar-1 | Fitter | 3h |  | 206.25 | 206.25 |  |
| 227 | 7.11.18 | Expansion | 1d | 2018-06-04 18:40 | 2018-06-05 10:40 | 226 |  |  | 2018-05-17 18:40 | 2018-05-19 10:40 | 3d | 0d | TEAM_2Shift_Calendar-1 | Fitter; Helper [200%]; Expanding Machine | 15h |  | 632.81 | 1,898.44 |  |
| 228 | 7.11.19 | U bend with shell fitup | 6h | 2018-06-05 10:40 | 2018-06-05 16:40 | 227, 35 |  |  | 2018-05-19 10:40 | 2018-05-21 10:40 | 2d | 0d | TEAM_2Shift_Calendar-1 | Fitter; SMAW Welder; SMAW Welding Machine | 18h |  | 825 | 2,200 |  |
| 229 | 7.11.20 | Inspection | 0.5d | 2018-06-05 16:40 | 2018-06-05 20:40 | 228 |  |  | 2018-05-21 10:40 | 2018-05-21 14:40 | 0.5d | 0d | TEAM_2Shift_Calendar-1 | Fitter | 4h |  | 275 | 275 |  |
| 230 | 7.11.21 | welding | 6h | 2018-06-05 20:40 | 2018-06-06 10:40 | 229 |  |  | 2018-05-21 14:40 | 2018-05-22 06:40 | 1d | 0d | TEAM_2Shift_Calendar-1 | SMAW Welder; SMAW Welding Machine | 12h |  | 412.5 | 550 |  |
| 231 | 7.11.22 | DP check | 4h | 2018-06-06 10:40 | 2018-06-06 14:40 | 230 |  |  | 2018-05-22 06:40 | 2018-05-22 10:40 | 4h | 0d | TEAM_2Shift_Calendar-1 | Fitter | 4h |  | 275 | 275 |  |
| 232 | 7.11.23 | Radiography test | 3h | 2018-06-06 14:40 | 2018-06-06 17:40 | 231 |  |  | 2018-05-22 10:40 | 2018-05-22 13:40 | 3h | 0d | TEAM_2Shift_Calendar-1 | SC Radiography (Cost) [0.1%] |  |  |  |  |  |
| 233 | 7.11.24 | Inspection | 3h | 2018-06-06 17:40 | 2018-06-06 20:40 | 232 |  |  | 2018-05-22 13:40 | 2018-05-22 16:40 | 3h | 0d | TEAM_2Shift_Calendar-1 | Fitter [200%] | 3h |  | 206.25 | 206.25 |  |

Notes:
- 201: 8NOS
- 202: 48 NOS

| ID | WBS | Task | Duration | Start | Finish | Predecessors | Baseline start | Baseline finish | Baseline duration | Total slack | Free slack | Calendar | Resources | Work | Cost | Baseline cost |
| --- | --- | --- | --- | --- | --- | --- | --- | --- | --- | --- | --- | --- | --- | --- | --- | --- |
| 234 | 7.12 | **FinalAssembly&Hydrotest** | 17.23d | 2018-05-30 12:40 | 2018-06-11 06:30 |  | 2018-05-24 16:40 | 2018-05-30 08:40 | 7d | 0d |  | TEAM_2Shift_Calendar-1 |  | 207h | 12,037.5 | 12,650 |
| 235 | 7.12.1 | Open BundleHydrotest | 1d | 2018-05-30 12:40 | 2018-05-30 20:40 | 198 | 2018-05-24 16:40 | 2018-05-25 08:40 | 1d | 11.4d | 0d | TEAM_2Shift_Calendar-1 | Fitter [400%]; Helper [400%] | 48h | 2,850 | 2,850 |
| 236 | 7.12.2 | Open Bundle Hydrotest-TPI Inspection | 4.83h | 2018-05-30 20:40 | 2018-05-31 09:30 | 235 | 2018-05-25 08:40 | 2018-05-25 16:40 | 1d | 11.4d |  | TEAM_2Shift_Calendar-1 | QC Engineer | 1h |  |  |
| 237 | 7.12.3 | Bundle Insertion | 6h | 2018-06-06 20:40 | 2018-06-07 10:40 | 236, 209 | 2018-05-25 16:40 | 2018-05-28 08:40 | 1d | 0d |  | TEAM_2Shift_Calendar-1 | Fitter [400%]; Helper [400%] | 36h | 2,137.5 | 2,850 |
| 238 | 7.12.4 | ShellSide Hydrotest | 1d | 2018-06-07 10:40 | 2018-06-07 18:40 | 237 | 2018-05-28 08:40 | 2018-05-28 16:40 | 1d | 0d |  | TEAM_2Shift_Calendar-1 | Fitter [400%]; Helper [400%] | 64h | 3,800 | 3,800 |
| 239 | 7.12.5 | ShellSide Hydrotest TPI Inspection | 7.83h | 2018-06-07 18:40 | 2018-06-08 10:30 | 238 | 2018-05-28 16:40 | 2018-05-29 08:40 | 1d | 0d |  | TEAM_2Shift_Calendar-1 | QC Engineer | 2h |  |  |
| 240 | 7.12.6 | Final hydro test | 1d | 2018-06-08 10:30 | 2018-06-08 18:30 | 239 | 2018-05-29 08:40 | 2018-05-29 16:40 | 1d | 0d |  | TEAM_2Shift_Calendar-1 | Fitter [400%]; Helper [400%] | 48h | 2,850 | 2,850 |
| 241 | 7.12.7 | De-watering&Drying | 4h | 2018-06-08 18:30 | 2018-06-11 06:30 | 240 | 2018-05-29 16:40 | 2018-05-30 08:40 | 1d | 0d |  | TEAM_2Shift_Calendar-1 | Helper [200%] | 8h | 400 | 300 |
| 242 | 7.13 | **Cleaning&Painting** | 2.88d | 2018-06-12 06:30 | 2018-06-13 13:30 |  | 2018-05-31 08:40 | 2018-06-05 20:40 | 9.5d | 0d |  | TEAM_2Shift_Calendar-1 |  | 24h | 537.5 | 1,575 |
| 243 | 7.13.1 | Blast Cleaning Arrangement | 4h | 2018-06-12 06:30 | 2018-06-12 10:30 | 234FS+2d | 2018-05-31 08:40 | 2018-05-31 16:40 | 1d | 0d |  | TEAM_2Shift_Calendar-1 | Store; Helper | 4h | 100 | 200 |
| 244 | 7.13.2 | Transport for BlastCleaning | 4h | 2018-06-12 10:30 | 2018-06-12 14:30 | 243 | 2018-05-31 16:40 | 2018-06-01 08:40 | 1d | 0d |  | TEAM_2Shift_Calendar-1 | Fitter [200%]; Helper [300%] | 5h | 287.5 | 575 |
| 245 | 7.13.3 | Blast Cleaning | 3h | 2018-06-12 14:30 | 2018-06-12 17:30 | 244 | 2018-06-01 08:40 | 2018-06-02 08:40 | 2d | 0d |  | TEAM_2Shift_Calendar-1 | Helper | 3h | 150 | 800 |
| 246 | 7.13.4 | PrimerPainting | 5h | 2018-06-12 17:30 | 2018-06-13 06:30 | 245 | 2018-06-02 08:40 | 2018-06-04 08:40 | 2d | 0d |  | TEAM_2Shift_Calendar-1 | Painter | 5h |  |  |
| 247 | 7.13.5 | TopCoatPainting | 4h | 2018-06-13 06:30 | 2018-06-13 10:30 | 246 | 2018-06-04 16:40 | 2018-06-05 16:40 | 2d | 0d |  | TEAM_2Shift_Calendar-1 | Painter | 4h |  |  |
| 248 | 7.13.6 | Painting Inspection | 3h | 2018-06-13 10:30 | 2018-06-13 13:30 | 247 | 2018-06-05 16:40 | 2018-06-05 20:40 | 0.5d | 0d |  | TEAM_2Shift_Calendar-1 | Painter | 3h |  |  |
| 249 | 7.14 | **Final Documentation&Despatch** | 1.5d | 2018-06-13 13:30 | 2018-06-15 08:30 |  | 2018-06-05 20:40 | 2018-06-08 17:40 | 3d | 0d |  |  |  | 26h | 1,012.5 | 281.25 |
| 250 | 7.14.1 | Despatch 4224-B | 3h | 2018-06-13 13:30 | 2018-06-13 16:30 | 248 | 2018-06-06 09:40 | 2018-06-06 17:40 | 1d | 0d |  | TEAM_2Shift_Calendar-1 | Fitter [200%]; Helper [400%] | 18h | 1,012.5 | 281.25 |
| 251 | 7.14.2 | Final Documentation | 3d | 2018-06-13 16:30 | 2018-06-15 08:30 | 250 | 2018-06-06 09:40 | 2018-06-08 17:40 | 5d | 0d |  | TEAM_2Shift_Calendar-1 | Marketing | 8h |  |  |
| 252 | 8 | **PBG** | 1d | 2018-06-13 16:30 | 2018-06-14 16:30 |  | 2018-06-07 08:30 | 2018-06-11 17:30 | 3d | 0.12d |  |  |  | 8h |  |  |
| 253 | 8.1 | PBG submission(10%) | 1d | 2018-06-13 16:30 | 2018-06-14 16:30 | 250 | 2018-06-07 08:30 | 2018-06-11 17:30 | 3d | 0.12d |  |  | Finance | 8h |  |  |
