# 4227-BDL

Schedule from MS Project, 2017-09-08 to 2018-05-11, costs in Rs., A marks actual dates.

## Calendars

- TEAM_Stand_Calendar: Mon-Sat 08:30-12:30, 13:30-17:30; Sun off. Exceptions (off unless hours are given): 2017-01-13 to 2023-08-12 (2nd Sat, recurring), 2017-01-26 to 2036-01-26 (Republic Day, recurring), 2017-01-27 to 2023-08-26 (4th Sat, recurring), 2017-05-01 to 2036-05-01 (May Day, recurring), 2017-08-15 to 2036-08-15 (Independence Day, recurring), 2017-09-29 (Ayudha Pooja'2017), 2017-10-02 to 2036-10-02 (Gandhi Jayanti, recurring), 2017-10-18 (Deepavali'2017), 2018-01-15 (Thiruvalluvar Day'2018).
- TEAM_2Shift_Calendar-1: Mon-Sat 06:00-22:00; Sun off. Exceptions (off unless hours are given): 2017-01-13 to 2023-02-11 (2nd Sat, recurring), 2017-01-26 to 2036-01-26 (Republic Day, recurring), 2017-01-27 to 2023-08-26 (4th Sat, recurring), 2017-05-01 to 2036-05-01 (May Day, recurring), 2017-08-15 to 2036-08-15 (Indepdence Day, recurring), 2017-10-02 to 2036-10-02 (Gandhi Jayanti, recurring), 2017-10-19 (Deepavali'2017), 2018-01-15 (Thiruvalluvar Day'2018).

## Resources

| Resource | Rate |
| --- | --- |
| Production Engineer |  |
| Marketing |  |
| PM |  |
| PMO Head |  |
| Crane |  |
| Helper | 50 |
| Store |  |
| QC Engineer |  |
| Fitter | 68.75 |
| Grinder | 56.25 |
| Grinding Machine |  |
| SMAW Welder | 68.75 |
| SMAW Welding Machine |  |
| Finance |  |
| Client |  |

## Schedule

| ID | WBS | Task | Duration | Start | Finish | Predecessors | Complete | Remaining | Baseline start | Baseline finish | Baseline duration | Total slack | Constraint | Calendar | Resources | Work | Actual work | Cost | Baseline cost | Actual cost |
| --- | --- | --- | --- | --- | --- | --- | --- | --- | --- | --- | --- | --- | --- | --- | --- | --- | --- | --- | --- | --- |
| 1 | 1 | **Project Initiation** | 7.25d | 2017-09-08 A | 2017-09-13 A |  | 100% |  | 2017-09-08 | 2017-09-13 | 7.25d |  |  | TEAM_2Shift_Calendar-1 |  | 17h | 17h |  |  |  |
| 2 | 1.1 | PO Receipt | 1d | 2017-09-08 A | 2017-09-08 A |  | 100% |  | 2017-09-08 | 2017-09-08 | 1d |  |  | TEAM_2Shift_Calendar-1 | Marketing | 7h | 7h |  |  |  |
| 3 | 1.2 | Work Order | 1d | 2017-09-11 A | 2017-09-11 A | 2 | 100% |  | 2017-09-11 | 2017-09-11 | 1d |  | start no earlier than 2017-09-11 | TEAM_2Shift_Calendar-1 | Marketing | 1h | 1h |  |  |  |
| 4 | 1.3 | CRM | 10h | 2017-09-13 A | 2017-09-13 A | 3FS+1d | 100% |  | 2017-09-13 | 2017-09-13 | 10h |  | start no earlier than 2017-09-13 | TEAM_2Shift_Calendar-1 | Marketing; PM; PMO Head | 9h | 9h |  |  |  |
| 5 | 2 | **4227-Material Receipt(2nd Lot)** | 1d | 2018-01-24 A | 2018-01-24 A |  | 100% |  | 2018-01-24 | 2018-01-24 | 1d |  |  | TEAM_2Shift_Calendar-1 |  | 4h | 4h | 66.67 | 66.67 | 66.67 |
| 6 | 2.1 | FIM - Ti Sheets-20 NOS | 1d | 2018-01-24 A | 2018-01-24 A |  | 100% |  | 2018-01-24 | 2018-01-24 | 1d |  | start no earlier than 2018-01-24 | TEAM_2Shift_Calendar-1 | Crane; Helper; Store | 4h | 4h | 66.67 | 66.67 | 66.67 |
| 7 | 3 | **Raw Material Inspection** | 1d | 2018-01-25 A | 2018-01-25 A |  | 100% |  | 2018-01-25 | 2018-01-25 | 1d |  |  | TEAM_2Shift_Calendar-1 |  | 3h | 3h |  |  |  |
| 8 | 3.1 | Raw Material Inspection (Plates) | 1d | 2018-01-25 A | 2018-01-25 A | 6 | 100% |  | 2018-01-25 | 2018-01-25 | 1d |  | start no earlier than 2018-01-25 | TEAM_2Shift_Calendar-1 | QC Engineer | 3h | 3h |  |  |  |
| 9 | 4 | **4227-Fabrication Plan** | 30.75d | 2018-02-20 A | 2018-03-12 A |  | 100% |  | 2018-02-20 | 2018-03-12 | 30.75d |  |  | TEAM_2Shift_Calendar-1 |  | 295h | 295h | 13,668.75 | 13,668.75 | 13,668.75 |
| 10 | 4.1 | Plate Marking & cutting | 2d | 2018-02-20 A | 2018-02-21 A | 8FS+37d | 100% |  | 2018-02-20 | 2018-02-21 | 2d |  | start no earlier than 2018-02-20 | TEAM_2Shift_Calendar-1 | Fitter; Helper | 16h | 16h | 950 | 950 | 950 |
| 11 | 4.2 | Plate Grinding Work | 3d | 2018-02-22 A | 2018-02-23 A | 10FS+2d | 100% |  | 2018-02-22 | 2018-02-23 | 3d |  | start no earlier than 2018-02-22 | TEAM_2Shift_Calendar-1 | Grinder; Grinding Machine | 30h | 30h | 843.75 | 843.75 | 843.75 |
| 12 | 4.3 | Shell Plate Pre Bending Work | 4d | 2018-02-23 A | 2018-02-27 A | 11 | 100% |  | 2018-02-23 | 2018-02-27 | 4d |  | start no earlier than 2018-02-23 | TEAM_2Shift_Calendar-1 | Fitter; Helper | 32h | 32h | 1,900 | 1,900 | 1,900 |
| 13 | 4.4 | Shell Rolling Work | 3d | 2018-02-27 A | 2018-03-01 A | 12 | 100% |  | 2018-02-27 | 2018-03-01 | 3d |  | start no earlier than 2018-02-27 | TEAM_2Shift_Calendar-1 | Fitter [200%]; Helper | 45h | 45h | 2,812.5 | 2,812.5 | 2,812.5 |
| 14 | 4.5 | Shell Fitup | 9d | 2018-03-01 A | 2018-03-07 A | 13 | 100% |  | 2018-03-01 | 2018-03-07 | 9d |  | start no earlier than 2018-03-01 | TEAM_2Shift_Calendar-1 | Fitter; Helper; SMAW Welder; SMAW Welding Machine | 124h | 124h | 5,812.5 | 5,812.5 | 5,812.5 |
| 15 | 4.6 | Final Finishing | 6d | 2018-03-07 A | 2018-03-12 A | 14 | 100% |  | 2018-03-07 | 2018-03-12 | 6d |  | start no earlier than 2018-03-05 | TEAM_2Shift_Calendar-1 | Grinder; Grinding Machine | 48h | 48h | 1,350 | 1,350 | 1,350 |
| 16 | 5 | **Project Closure** | 3d | 2018-03-14 A | 2018-03-17 A |  | 100% |  | 2018-03-14 | 2018-03-17 | 3d |  |  |  |  | 12h | 12h |  |  |  |
| 17 | 5.1 | Material Handover to Store | 4h | 2018-03-14 A | 2018-03-15 A | 15FS+2d | 100% |  | 2018-03-14 | 2018-03-15 | 4h |  |  |  | Production Engineer | 3h | 3h |  |  |  |
| 18 | 5.2 | Final Documentation | 1d | 2018-03-15 A | 2018-03-16 A | 17 | 100% |  | 2018-03-15 | 2018-03-16 | 1d |  |  |  | QC Engineer | 4h | 4h |  |  |  |
| 19 | 5.3 | Invoice to Customer | 3h | 2018-03-16 A | 2018-03-16 A | 18 | 100% |  | 2018-03-16 | 2018-03-16 | 3h |  | start no earlier than 2018-03-14 |  | Finance | 1h | 1h |  |  |  |
| 20 | 5.4 | Despatch | 4h | 2018-03-17 A | 2018-03-17 A | 19 | 100% |  | 2018-03-17 | 2018-03-17 | 4h |  | start no earlier than 2018-03-17 |  | Store | 4h | 4h |  |  |  |
| 22 | 6 | **4227-Material Receipt(3rd Lot)** | 52.25d | 2018-04-07 A | 2018-05-11 |  | 97% | 1.69d | 2018-04-07 | 2018-05-19 | 64.38d | 0d |  | TEAM_2Shift_Calendar-1 |  | 303h | 295h | 15,391.67 | 14,972.92 | 15,391.67 |
| 23 | 6.1 | FIM - Ti Sheets-20 NOS | 1d | 2018-04-07 A | 2018-04-07 A |  | 100% |  | 2018-04-07 | 2018-04-07 | 1d |  | start no earlier than 2018-04-07 | TEAM_2Shift_Calendar-1 | Crane; Helper; Store | 4h | 4h | 66.67 | 66.67 | 66.67 |
| 24 | 6.2 | **Raw Material Inspection** | 1d | 2018-04-07 A | 2018-04-09 A |  | 100% |  | 2018-04-07 | 2018-04-09 | 1d |  |  | TEAM_2Shift_Calendar-1 |  | 3h | 3h |  |  |  |
| 25 | 6.2.1 | Raw Material Inspection (Plates) | 1d | 2018-04-07 A | 2018-04-09 A | 23 | 100% |  | 2018-04-07 | 2018-04-09 | 1d |  |  | TEAM_2Shift_Calendar-1 | QC Engineer | 3h | 3h |  |  |  |

| ID | WBS | Task | Duration | Start | Finish | Predecessors | Complete | Remaining | Baseline start | Baseline finish | Baseline duration | Total slack | Constraint | Calendar | Resources | Work | Actual work | Cost | Baseline cost | Actual cost |
| --- | --- | --- | --- | --- | --- | --- | --- | --- | --- | --- | --- | --- | --- | --- | --- | --- | --- | --- | --- | --- |
| 26 | 6.3 | **4227-Fabrication Plan** | 45d | 2018-04-10 A | 2018-05-09 A |  | 100% |  | 2018-04-25 | 2018-05-16 | 31.12d |  |  | TEAM_2Shift_Calendar-1 |  | 286h | 286h | 15,325 | 14,906.25 | 15,325 |
| 27 | 6.3.1 | Plate Marking & cutting | 2d | 2018-04-10 A | 2018-04-11 A | 25FS+2d | 100% |  | 2018-04-25 | 2018-04-26 | 3d |  |  | TEAM_2Shift_Calendar-1 | Fitter; Helper | 32h | 32h | 1,900 | 2,850 | 1,900 |
| 28 | 6.3.2 | Plate Grinding Work | 3d | 2018-04-12 A | 2018-04-13 A | 27FS+2d | 100% |  | 2018-04-27 | 2018-05-02 | 3d |  |  | TEAM_2Shift_Calendar-1 | Grinder; Grinding Machine | 24h | 24h | 675 | 843.75 | 675 |
| 29 | 6.3.3 | Shell Plate Pre Bending Work | 3d | 2018-04-13 A | 2018-04-17 A | 28 | 100% |  | 2018-05-02 | 2018-05-03 | 3d |  |  | TEAM_2Shift_Calendar-1 | Fitter; Helper | 24h | 24h | 1,425 | 1,425 | 1,425 |
| 30 | 6.3.4 | Shell Rolling Work | 15d | 2018-04-18 A | 2018-04-26 A | 29 | 100% |  | 2018-05-03 | 2018-05-05 | 3d |  | finish no earlier than 2018-04-27 | TEAM_2Shift_Calendar-1 | Fitter [200%]; Helper | 150h | 150h | 9,375 | 3,000 | 9,375 |
| 31 | 6.3.5 | Shell Fitup | 2d | 2018-04-28 A | 2018-04-30 A | 30 | 100% |  | 2018-05-05 | 2018-05-10 | 8d |  |  | TEAM_2Shift_Calendar-1 | Fitter; Helper; SMAW Welder; SMAW Welding Machine | 32h | 32h | 1,500 | 5,437.5 | 1,500 |
| 32 | 6.3.6 | Final Finishing | 1d | 2018-04-30 A | 2018-04-30 A | 31 | 100% |  | 2018-05-10 | 2018-05-15 | 6d |  |  | TEAM_2Shift_Calendar-1 | Grinder; Grinding Machine | 16h | 16h | 450 | 1,350 | 450 |
| 33 | 6.3.7 | Final inspection | 1d | 2018-05-08 A | 2018-05-09 A | 32FS+6d | 100% |  | 2018-05-16 | 2018-05-16 | 1d |  |  |  | Client | 8h | 8h |  |  |  |
| 34 | 6.4 | **Project Closure** | 2.38d | 2018-05-08 A | 2018-05-11 |  | 50% | 1.19d | 2018-05-17 | 2018-05-19 | 2.38d | 0d |  |  |  | 10h | 2h |  |  |  |
| 35 | 6.4.1 | Final Documentation | 1d | 2018-05-08 A | 2018-05-09 A | 33SS | 100% |  | 2018-05-17 | 2018-05-18 | 1d |  |  |  | QC Engineer | 2h | 2h |  |  |  |
| 36 | 6.4.2 | Material Handover to Store | 3h | 2018-05-10 | 2018-05-11 | 35FS+1d |  |  | 2018-05-17 | 2018-05-17 | 4h | 0d |  |  | Production Engineer | 3h |  |  |  |  |
| 37 | 6.4.3 | Invoice to Customer | 3h | 2018-05-10 | 2018-05-11 | 36SS |  |  | 2018-05-18 | 2018-05-18 | 3h | 0d |  |  | Finance | 3h |  |  |  |  |
| 38 | 6.4.4 | Despatch | 2h | 2018-05-10 | 2018-05-11 | 36SS |  |  | 2018-05-18 | 2018-05-19 | 4h | 0.12d |  |  | Store | 2h |  |  |  |  |
