# 4228-102

Schedule from MS Project, 2017-11-14 to 2018-08-04, costs in Rs., A marks actual dates.

## Calendars

- TEAM_Stand_Calendar: Mon-Sat 08:30-12:30, 13:30-17:30; Sun off. Exceptions (off unless hours are given): 2017-01-13 to 2023-08-12 (2nd Sat, recurring), 2017-01-26 to 2036-01-26 (Republic Day, recurring), 2017-01-27 to 2023-08-26 (4th Sat, recurring), 2017-05-01 to 2036-05-01 (May Day, recurring), 2017-08-15 to 2036-08-15 (Independence Day, recurring), 2017-10-02 to 2036-10-02 (Gandhi Jayanti, recurring), 2018-01-15 (Thiruvalluvar Day'2018).
- TEAM_2Shift_Calendar-1: Mon-Sat 06:00-22:00; Sun off. Exceptions (off unless hours are given): 2017-01-13 to 2023-02-11 (2nd Sat, recurring), 2017-01-26 to 2036-01-26 (Republic Day, recurring), 2017-01-27 to 2023-08-26 (4th Sat, recurring), 2017-05-01 to 2036-05-01 (May Day, recurring), 2017-08-15 to 2036-08-15 (Indepdence Day, recurring), 2017-10-02 to 2036-10-02 (Gandhi Jayanti, recurring), 2018-01-15 (Thiruvalluvar Day'2018).

## Resources

| Resource | Rate |
| --- | --- |
| Marketing |  |
| PMO Head |  |
| Client |  |
| PM |  |
| Store |  |
| QC Engineer |  |
| Draftman |  |
| Helper | 50 |
| Crane |  |
| PPC Engineer |  |
| Fitter | 68.75 |
| Gas Cutter | 68.75 |
| OAGM |  |
| Grinder | 56.25 |
| Grinding Machine |  |
| SMAW Welder | 68.75 |
| SMAW Welding Machine |  |
| TIG Welder | 125 |
| TIG Welding Machine |  |
| Driller | 68.75 |
| Radial Drilling Machine |  |
| Cutting Machine |  |
| Lathe Operator | 120 |
| Lathe |  |
| Plate Bending Machine |  |
| Rolling Machine |  |
| Expanding Machine |  |
| Painter |  |
| SC (Work) |  |
| Design Engineer |  |
| Purchase Engineer |  |
| TPI (Cost) |  |
| Consumables (Cost) |  |
| Fastners (Cost) |  |
| Forging Non-Std (Cost) |  |
| Forging Std (Cost) |  |
| Gaskets (Cost) |  |
| Paint (Cost) |  |
| Pipe (Cost) |  |
| Rod (Cost) |  |
| Tube (Cost) |  |
| Tube Sheet (Cost) |  |
| Plate (Cost) |  |
| Finance |  |

## Schedule

| ID | WBS | Task | Duration | Start | Finish | Predecessors | Complete | Baseline start | Baseline finish | Baseline duration | Resources | Work | Actual work |
| --- | --- | --- | --- | --- | --- | --- | --- | --- | --- | --- | --- | --- | --- |
| 1 | 1 | **Preliminary Details For Enquiry** | 40.25d | 2017-11-14 08:30 A | 2018-01-03 10:30 A |  | 100% | 2017-11-14 08:30 | 2018-01-03 10:30 | 40.25d |  | 40h | 40h |
| 2 | 1.1 | tubes SA 789 UNS S32205(OD=20x1.6THKx6000Lg)-67nos | 4.75d | 2017-11-14 08:30 A | 2017-11-18 15:30 A |  | 100% | 2017-11-14 08:30 | 2017-11-18 15:30 | 4.75d | Design Engineer; PPC Engineer | 4h | 4h |
| 3 | 1.2 | Plates 14THk(shell),5THK(Floating Dish) | 1.25d | 2018-01-02 08:30 A | 2018-01-03 10:30 A |  | 100% | 2018-01-02 08:30 | 2018-01-03 10:30 | 1.25d | Design Engineer; PPC Engineer | 4h | 4h |
| 4 | 1.3 | Tie Rod-SS-316L(5nos) | 1.25d | 2018-01-02 08:30 A | 2018-01-03 10:30 A |  | 100% | 2018-01-02 08:30 | 2018-01-03 10:30 | 1.25d | Design Engineer; PPC Engineer | 4h | 4h |
| 5 | 1.4 | Spacer(OD=17.1)(2.31THK) SA 312TP 316L(77nos) | 9.25d | 2017-11-14 08:30 A | 2017-11-24 10:30 A |  | 100% | 2017-11-14 08:30 | 2017-11-24 10:30 | 9.25d | Design Engineer; PPC Engineer [174.7%] | 8h | 8h |
| 6 | 1.5 | Blank Forging(55THK+10THK) SA 266 Gr.4+SA 240UNS S32205 CLAD | 1d | 2017-12-04 08:30 A | 2017-12-04 17:30 A |  | 100% | 2017-12-04 08:30 | 2017-12-04 17:30 | 1d | Design Engineer; PPC Engineer | 4h | 4h |
| 7 | 1.6 | Non Std Forging(55THK,60THK,50THK)-SA 266 Gr.4 | 1d | 2017-12-04 08:30 A | 2017-12-04 17:30 A |  | 100% | 2017-12-04 08:30 | 2017-12-04 17:30 | 1d | Design Engineer; PPC Engineer | 4h | 4h |
| 8 | 1.7 | Non Std Forging(FLOATING 50THK)-SA 182 F60 UNS S32205 | 1d | 2017-12-04 08:30 A | 2017-12-04 17:30 A |  | 100% | 2017-12-04 08:30 | 2017-12-04 17:30 | 1d | Design Engineer; PPC Engineer | 4h | 4h |
| 9 | 1.8 | Std Forging-SA 105 | 1d | 2017-12-04 08:30 A | 2017-12-04 17:30 A |  | 100% | 2017-12-04 08:30 | 2017-12-04 17:30 | 1d | Design Engineer; PPC Engineer | 4h | 4h |
| 10 | 1.9 | Dish-sa 240 UNS NO s32205-(5T)-1no | 1d | 2017-12-03 08:00 A | 2017-12-04 17:30 A |  | 100% | 2017-12-03 08:00 | 2017-12-04 17:30 | 1d | Design Engineer; PPC Engineer | 4h | 4h |
| 11 | 2 | **Pr Issue** | 47d | 2017-11-15 08:30 A | 2018-01-11 17:30 A |  | 100% | 2017-11-15 08:30 | 2018-01-11 17:30 | 47d |  | 32h | 32h |
| 12 | 2.1 | Plates | 5d | 2018-01-03 08:30 A | 2018-01-08 17:30 A |  | 100% | 2018-01-03 08:30 | 2018-01-08 17:30 | 5d | Plate (Cost) [0.1%]; PPC Engineer | 4h | 4h |
| 13 | 2.2 | Rods | 5d | 2018-01-03 08:30 A | 2018-01-08 17:30 A |  | 100% | 2018-01-03 08:30 | 2018-01-08 17:30 | 5d | Rod (Cost) [0.1%]; PPC Engineer | 4h | 4h |
| 14 | 2.3 | Tubes | 9d | 2017-11-15 08:30 A | 2017-11-24 17:30 A |  | 100% | 2017-11-15 08:30 | 2017-11-24 17:30 | 9d | Tube (Cost) [0.1%]; PPC Engineer | 4h | 4h |
| 15 | 2.4 | Pipes | 5d | 2018-01-03 08:30 A | 2018-01-08 17:30 A |  | 100% | 2018-01-03 08:30 | 2018-01-08 17:30 | 5d | Pipe (Cost) [0.1%]; PPC Engineer | 4h | 4h |
| 16 | 2.5 | Forgings-std,Non std,Blank | 5d | 2018-01-04 08:30 A | 2018-01-09 17:30 A |  | 100% | 2018-01-04 08:30 | 2018-01-09 17:30 | 5d | Forging Non-Std (Cost) [0.1%]; Forging Std (Cost) [0.1%]; PPC Engineer | 4h | 4h |
| 17 | 2.6 | Gasket | 5d | 2018-01-06 08:30 A | 2018-01-11 17:30 A |  | 100% | 2018-01-06 08:30 | 2018-01-11 17:30 | 5d | Gaskets (Cost) [0.1%]; PPC Engineer | 4h | 4h |
| 18 | 2.7 | Fasteners | 5d | 2018-01-06 08:30 A | 2018-01-11 17:30 A |  | 100% | 2018-01-06 08:30 | 2018-01-11 17:30 | 5d | Fastners (Cost) [0.1%]; PPC Engineer | 4h | 4h |
| 19 | 2.8 | Consumables | 5d | 2018-01-06 08:30 A | 2018-01-11 17:30 A |  | 100% | 2018-01-06 08:30 | 2018-01-11 17:30 | 5d | Consumables (Cost) [0.1%]; PPC Engineer | 4h | 4h |
| 20 | 3 | **Material Ordering** | 102.94d | 2017-11-30 08:30 A | 2018-04-10 17:00 A |  | 100% | 2017-11-30 08:30 | 2018-04-10 17:00 | 102.94d |  | 559.5h | 559.5h |
| 21 | 3.1 | Plates | 32.94d | 2018-01-09 08:30 A | 2018-02-21 17:00 A | 12 | 100% | 2018-01-09 08:30 | 2018-02-21 17:00 | 32.94d | Plate (Cost) [0.1%]; Purchase Engineer | 263.5h | 263.5h |
| 22 | 3.2 | Rods | 8d | 2018-01-09 08:30 A | 2018-01-19 17:30 A | 13 | 100% | 2018-01-09 08:30 | 2018-01-19 17:30 | 8d | Rod (Cost) [0.1%]; Purchase Engineer | 64h | 64h |
| 23 | 3.3 | Tubes | 4d | 2017-11-30 08:30 A | 2017-12-04 17:30 A | 14 | 100% | 2017-11-30 08:30 | 2017-12-04 17:30 | 4d | Tube (Cost) [0.1%]; Purchase Engineer | 32h | 32h |
| 24 | 3.4 | Pipes | 42d | 2018-01-09 08:30 A | 2018-03-05 17:30 A | 15 | 100% | 2018-01-09 08:30 | 2018-03-05 17:30 | 42d | Pipe (Cost) [0.1%]; Purchase Engineer [185.7%] | 64h | 64h |
| 25 | 3.5 | Forgings-std,Non std,Blank | 22d | 2017-12-22 08:30 A | 2018-01-19 17:30 A | 16 | 100% | 2017-12-22 08:30 | 2018-01-19 17:30 | 22d | Forging Non-Std (Cost) [0.1%]; Forging Std (Cost) [0.1%]; Purchase Engineer [104.5%] | 64h | 64h |
| 26 | 3.6 | Gasket | 0.94d | 2018-04-10 08:00 A | 2018-04-10 17:00 A | 17FS+70d | 100% | 2018-04-10 08:00 | 2018-04-10 17:00 | 0.94d | Gaskets (Cost) [0.1%]; Purchase Engineer | 4h | 4h |
| 27 | 3.7 | Fasteners | 0.94d | 2018-04-10 08:00 A | 2018-04-10 17:00 A | 18FS+70d | 100% | 2018-04-10 08:00 | 2018-04-10 17:00 | 0.94d | Fastners (Cost) [0.1%]; Purchase Engineer | 4h | 4h |
| 28 | 3.8 | Consumables | 25d | 2018-01-12 08:30 A | 2018-02-15 17:30 A | 19 | 100% | 2018-01-12 08:30 | 2018-02-15 17:30 | 25d | Consumables (Cost) [0.1%]; Purchase Engineer [168%] | 64h | 64h |

Notes:
- 11: Plates 14THk,16THK(DAVIT),12THK(Saddle)-SA 516 Gr.60 / Baffle plate(5THK,10THK) SA 240 Gr.316L / Plate(floating head4THK) SA 240 UNS S32205 / Pass partition plate(10thk+5thk(w.o)) SA 516 Gr.60+UNS S32205 W.O / Saddle plate(12THK,16THK) IS 2062 Gr.250 Quality(B) / tubes SA 789 UNS S32205(1.6THKx6000Lg)-67 nos / Blank Forging(55THK+10THK) SA 266 Gr.4+SA 240UNS S32205 CLAD / Non Std Forging(55THK,60THK,50THK)-SA 266 Gr.4 / Non Std Forging(FLOATING 50THK)-SA 182 F60 UNS S32205 / Tie Rod-SS-316L(5nos) / Spacer(2.31THK) SA 312TP 316L(77nos) / pipe SA 106 Gr.B / SRN Nozzle -SA 105 / Std Forging-SA 105
- 20: Plates 14THk,16THK(DAVIT),12THK(Saddle)-SA 516 Gr.60 / Baffle plate(5THK,10THK) SA 240 Gr.316L / Plate(floating head4THK) SA 240 UNS S32205 / Pass partition plate(10thk+5thk(w.o)) SA 516 Gr.60+UNS S32205 W.O / Saddle plate(12THK,16THK) IS 2062 Gr.250 Quality(B) / tubes SA 789 UNS S32205(1.6THKx6000Lg)-67 nos / Blank Forging(55THK+10THK) SA 266 Gr.4+SA 240UNS S32205 CLAD / Non Std Forging(55THK,60THK,50THK)-SA 266 Gr.4 / Non Std Forging(FLOATING 50THK)-SA 182 F60 UNS S32205 / Tie Rod-SS-316L(5nos) / Spacer(2.31THK) SA 312TP 316L(77nos) / pipe SA 106 Gr.B / SRN Nozzle -SA 105 / Std Forging-SA 105

| ID | WBS | Task | Duration | Start | Finish | Predecessors | Complete | Remaining | Baseline start | Baseline finish | Baseline duration | Total slack | Free slack | Calendar | Resources | Work | Actual work | Cost | Baseline cost | Actual cost |
| --- | --- | --- | --- | --- | --- | --- | --- | --- | --- | --- | --- | --- | --- | --- | --- | --- | --- | --- | --- | --- |
| 29 | 4 | **Material Receipt** | 103.31d | 2018-02-16 08:30 A | 2018-06-28 11:00 |  | 94% | 6.31d | 2018-02-16 08:30 | 2018-06-28 11:00 | 103.31d | 19.71d | 0d |  |  | 148.46h | 67.4h | 2,351.35 | 2,351.35 | 1,000.35 |
| 30 | 4.1 | Plates 14THk,16THK(DAVIT),12THK(Saddle)-SA 516 Gr.60 | 3h | 2018-03-29 08:30 A | 2018-03-29 11:30 A | 21FS+55d | 100% |  | 2018-03-29 08:30 | 2018-03-29 11:30 | 3h |  |  |  | Helper; Store; Plate (Cost) [0.1%]; Crane | 1.12h | 1.12h | 18.75 | 18.75 | 18.75 |
| 31 | 4.2 | Baffle plate(5THK,10THK) SA 240 Gr.316L,6T-imp plate,8T,14T-sliding and sealing strip | 3.02h | 2018-05-03 17:00 A | 2018-05-04 11:01 A | 21FS+55d | 100% |  | 2018-05-03 17:00 | 2018-05-04 11:01 | 3.02h |  |  |  | Helper; Store; Plate (Cost) [0.1%]; Crane | 9.06h | 9.06h | 151 | 151 | 151 |
| 32 | 4.3 | Plate(floating head 5THK) SA 240 UNS S32205 | 3.02h | 2018-05-03 17:00 A | 2018-05-04 11:01 A | 21FS+55d | 100% |  | 2018-05-03 17:00 | 2018-05-04 11:01 | 3.02h |  |  |  | Helper; Store; Plate (Cost) [0.1%]; Crane | 9.06h | 9.06h | 151 | 151 | 151 |
| 33 | 4.4 | Pass partition plate(10thk+5thk(w.o)) SA 516 Gr.60+UNS S32205 W.O | 3.02h | 2018-05-16 17:00 | 2018-05-17 11:01 | 21FS+65d |  |  | 2018-05-03 17:00 | 2018-05-04 11:01 | 3.02h | 52.69d | 0d |  | Helper; Store; Plate (Cost) [0.1%]; Crane | 9.06h |  | 151 | 151 |  |
| 34 | 4.5 | Saddle plate(12THK,16THK) IS 2062 Gr.250 Quality(B) | 3h | 2018-02-16 08:30 A | 2018-02-16 11:30 A | 21FS+55d | 100% |  | 2018-02-16 08:30 | 2018-02-16 11:30 | 3h |  |  |  | Helper; Store; Plate (Cost) [0.1%]; Crane | 12.13h | 12.13h | 153.18 | 153.18 | 153.18 |
| 35 | 4.6 | Tubes SA 789 UNS S32205(1.6THKx6000Lg)-67 nos | 3h | 2018-03-06 08:30 A | 2018-03-06 11:30 A | 23FS+110d | 100% |  | 2018-03-06 08:30 | 2018-03-06 11:30 | 3h |  |  |  | Helper [100.9%]; Store; Tube (Cost) [0.1%]; Crane | 9.02h | 9.02h | 113.21 | 113.21 | 113.21 |
| 36 | 4.7 | Blank Forging(55THK+10THK) SA 266 Gr.4+SA 240UNS S32205 CLAD | 3h | 2018-05-23 08:30 | 2018-05-23 11:30 | 25FS+95d |  |  | 2018-05-04 08:30 | 2018-05-04 11:30 | 3h | 44.38d | 0d |  | Helper; Store; Tube Sheet (Cost) [0.1%]; Crane | 9h |  | 150 | 150 |  |
| 37 | 4.8 | Non Std Forging(55THK,60THK,50THK)-SA 266 Gr.4 | 3h | 2018-05-23 08:30 | 2018-05-23 11:30 | 25FS+95d |  |  | 2018-05-04 08:30 | 2018-05-04 11:30 | 3h | 0.94d | 0d |  | Helper; Store; Forging Non-Std (Cost) [0.1%]; Crane | 9h |  | 150 | 150 |  |
| 38 | 4.9 | Non Std Forging(FLOATING 50THK)-SA 182 F60 UNS S32205 | 3h | 2018-05-23 08:30 | 2018-05-23 11:30 | 25FS+95d |  |  | 2018-05-04 08:30 | 2018-05-04 11:30 | 3h | 47.65d |  |  | Helper; Store; Forging Non-Std (Cost) [0.1%]; Crane | 9h |  | 150 | 150 |  |
| 39 | 4.10 | Tie Rod-SS-316L(5nos) | 3h | 2018-03-20 08:00 A | 2018-03-20 11:30 A | 22FS+70d | 100% |  | 2018-03-20 08:00 | 2018-03-20 11:30 | 3h |  |  |  | Helper; Store; Rod (Cost) [0.1%]; Crane | 9h | 9h | 150 | 150 | 150 |
| 40 | 4.11 | Spacer(2.31THK) SA 312TP 316L(77nos) | 3h | 2018-03-06 08:30 A | 2018-03-06 11:30 A | 23FS+110d | 100% |  | 2018-03-06 08:30 | 2018-03-06 11:30 | 3h |  |  |  | Helper [100.9%]; Store; Tube (Cost) [0.1%]; Crane | 9.02h | 9.02h | 113.21 | 113.21 | 113.21 |
| 41 | 4.12 | Pipe SA 106 Gr.B | 3h | 2018-05-29 08:30 | 2018-05-29 11:30 | 24FS+65d |  |  | 2018-05-29 08:30 | 2018-05-29 11:30 | 3h | 43.65d | 0d |  | Helper; Store; Pipe (Cost) [0.1%]; Crane | 9h |  | 150 | 150 |  |
| 42 | 4.13 | SRN Nozzle -SA 105 | 3h | 2018-05-25 08:30 | 2018-05-25 11:30 | 25FS+97d |  |  | 2018-05-04 08:30 | 2018-05-04 11:30 | 3h | 2.55d | 0d |  | Helper; Store; Pipe (Cost) [0.1%]; Crane | 9h |  | 150 | 150 |  |
| 43 | 4.14 | Std Forging-SA 105 | 3h | 2018-05-25 08:30 | 2018-05-25 11:30 | 25FS+97d |  |  | 2018-05-04 08:30 | 2018-05-04 11:30 | 3h | 45.65d | 0.62d |  | Helper; Store; Forging Std (Cost) [0.1%]; Crane | 9h |  | 150 | 150 |  |
| 44 | 4.15 | Gasket | 3h | 2018-06-27 17:00 | 2018-06-28 11:00 | 26FS+60d |  |  | 2018-06-27 17:00 | 2018-06-28 11:00 | 3h | 19.71d |  |  | Helper; Store; Gaskets (Cost) [0.1%]; Crane | 9h |  | 150 | 150 |  |
| 45 | 4.16 | Fasteners | 394.5h | 2018-04-25 08:30 A | 2018-06-28 11:00 A | 27FS+60d | 100% |  | 2018-06-27 17:00 | 2018-06-28 11:00 | 3h |  |  |  | Helper; Store; Fastners (Cost) [0.1%]; Crane | 9h | 9h | 150 | 150 | 150 |
| 46 | 4.17 | Consumables(CS,SS) | 3h | 2018-05-09 08:30 | 2018-05-09 11:30 | 28FS+64d |  |  | 2018-05-04 08:30 | 2018-05-04 11:30 | 3h | 58.65d |  |  | Helper; Store; Consumables (Cost) [0.1%]; Crane | 9h |  | 150 | 150 |  |
| 47 | 5 | **QA** | 49.38d | 2018-05-08 17:00 A | 2018-07-10 11:00 |  | 9% | 44.89d | 2018-05-04 17:00 | 2018-07-10 11:00 | 52.38d | 19.71d |  |  |  | 28h | 8h |  |  |  |
| 48 | 5.1 | Raw material inspection | 10d | 2018-06-28 11:00 | 2018-07-10 11:00 | 29 |  |  | 2018-06-28 11:00 | 2018-07-10 11:00 | 10d | 19.71d |  |  | QC Engineer | 20h |  |  |  |  |
| 49 | 5.2 | Qap submission | 1d | 2018-05-08 17:00 A | 2018-05-09 17:00 A | 20FS+21d | 100% |  | 2018-05-04 17:00 | 2018-05-05 17:00 | 1d |  |  |  | QC Engineer | 8h | 8h |  |  |  |
| 50 | 6 | **Fab: 4228-87-E-102** | 262.08d | 2018-02-19 08:00 A | 2018-08-04 08:39 |  | 18% | 213.68d | 2018-02-19 08:00 | 2018-07-17 09:00 | 232.13d | 0d |  | TEAM_2Shift_Calendar-1 |  | 4816.68h | 607.81h | 196,719.18 | 196,719.18 | 19,234.67 |
| 51 | 6.1 | **Dish Forming(shellcover)** | 86.94d | 2018-03-29 11:30 A | 2018-05-23 19:00 |  | 63% | 31.91d | 2018-03-29 11:30 | 2018-04-27 19:00 | 48.94d | 114.71d |  | TEAM_2Shift_Calendar-1 |  | 79.59h | 37.55h | 3,388.88 | 3,388.88 | 1,684.38 |
| 52 | 6.1.1 | Plate Receipt | 3h | 2018-03-29 11:30 A | 2018-03-29 14:30 A | 30 | 100% |  | 2018-03-29 11:30 | 2018-03-29 14:30 | 3h |  |  | TEAM_2Shift_Calendar-1 | Plate (Cost) [0.1%]; Store | 2h | 2h |  |  |  |
| 53 | 6.1.2 | Inward Inspection | 10h | 2018-04-10 14:30 A | 2018-04-11 08:30 A | 52FS+20d | 100% |  | 2018-04-10 14:30 | 2018-04-11 08:30 | 10h |  |  | TEAM_2Shift_Calendar-1 | QC Engineer; Fitter | 4.55h | 4.55h | 240.62 | 240.62 | 240.62 |
| 54 | 6.1.3 | Dish Blank Marking | 2h | 2018-04-11 08:30 A | 2018-04-11 10:30 A | 53 | 100% |  | 2018-04-11 08:30 | 2018-04-11 10:30 | 2h |  |  | TEAM_2Shift_Calendar-1 | Helper; Fitter | 4h | 4h | 237.5 | 237.5 | 237.5 |
| 55 | 6.1.4 | Dish Blank Mkg Inpection | 2h | 2018-04-11 10:30 A | 2018-04-11 12:30 A | 54 | 100% |  | 2018-04-11 10:30 | 2018-04-11 12:30 | 2h |  |  | TEAM_2Shift_Calendar-1 | Fitter | 2h | 2h | 137.5 | 137.5 | 137.5 |
| 56 | 6.1.5 | Dish Blank Mkg Stamping | 3h | 2018-04-11 12:30 A | 2018-04-11 15:30 A | 55 | 100% |  | 2018-04-11 12:30 | 2018-04-11 15:30 | 3h |  |  | TEAM_2Shift_Calendar-1 | TPI (Cost) [0.1%]; QC Engineer |  |  |  |  |  |
| 57 | 6.1.6 | Transfer For Cutting | 1h | 2018-04-11 15:30 A | 2018-04-11 16:30 A | 56 | 100% |  | 2018-04-11 15:30 | 2018-04-11 16:30 | 1h |  |  | TEAM_2Shift_Calendar-1 | Helper [300%] | 3h | 3h | 150 | 150 | 150 |
| 58 | 6.1.7 | Dish Blank Cutting | 3h | 2018-04-11 16:30 A | 2018-04-11 19:30 A | 57 | 100% |  | 2018-04-11 16:30 | 2018-04-11 19:30 | 3h |  |  | TEAM_2Shift_Calendar-1 | Gas Cutter; OAGM; Helper | 9h | 9h | 356.25 | 356.25 | 356.25 |
| 59 | 6.1.8 | DishBlank OD Grinding | 2h | 2018-04-11 19:30 A | 2018-04-11 21:30 A | 58 | 100% |  | 2018-04-11 19:30 | 2018-04-11 21:30 | 2h |  |  | TEAM_2Shift_Calendar-1 | Grinding Machine; Grinder | 4h | 4h | 112.5 | 112.5 | 112.5 |
| 60 | 6.1.9 | Dish Blank Offloading For Forming | 16h | 2018-04-19 06:00 A | 2018-04-19 22:00 A | 59FS+6d | 100% |  | 2018-04-19 06:00 | 2018-04-19 22:00 | 16h |  |  | TEAM_2Shift_Calendar-1 | Helper | 1h | 1h | 50 | 50 | 50 |
| 61 | 6.1.10 | Receipt After Forming | 1d | 2018-05-07 14:00 A | 2018-05-07 22:00 A | 60FS+25d | 100% |  | 2018-04-25 14:00 | 2018-04-25 22:00 | 1d |  |  | TEAM_2Shift_Calendar-1 | Helper | 8h | 8h | 400 | 400 | 400 |
| 62 | 6.1.11 | Inward Inspection | 9h | 2018-05-22 06:00 | 2018-05-22 15:00 | 61FS+22d |  |  | 2018-04-26 06:00 | 2018-04-26 15:00 | 9h | 114.71d | 0d | TEAM_2Shift_Calendar-1 | QC Engineer; Fitter | 5.04h |  | 173.25 | 173.25 |  |
| 63 | 6.1.12 | Surface Grinding | 1h | 2018-05-22 15:00 | 2018-05-22 16:00 | 62 |  |  | 2018-04-26 15:00 | 2018-04-26 16:00 | 1h | 114.71d | 0d | TEAM_2Shift_Calendar-1 | Grinding Machine; Grinder | 2h |  | 56.25 | 56.25 |  |
| 64 | 6.1.13 | Surface Dp Check | 1h | 2018-05-22 16:00 | 2018-05-22 17:00 | 63 |  |  | 2018-04-26 16:00 | 2018-04-26 17:00 | 1h | 114.71d | 0d | TEAM_2Shift_Calendar-1 | Helper; Fitter | 2h |  | 118.75 | 118.75 |  |
| 65 | 6.1.14 | Spider Set Up For SR | 2h | 2018-05-22 17:00 | 2018-05-22 19:00 | 64 |  |  | 2018-04-26 17:00 | 2018-04-26 19:00 | 2h | 114.71d | 0d | TEAM_2Shift_Calendar-1 | Helper [200%]; Fitter | 6h |  | 337.5 | 337.5 |  |
| 66 | 6.1.15 | Dish SR | 5h | 2018-05-22 19:00 | 2018-05-23 08:00 | 65 |  |  | 2018-04-26 19:00 | 2018-04-27 08:00 | 5h | 114.71d | 0d | TEAM_2Shift_Calendar-1 | SC (Work) | 5h |  |  |  |  |
| 67 | 6.1.16 | Remove Spider | 1h | 2018-05-23 08:00 | 2018-05-23 09:00 | 66 |  |  | 2018-04-27 08:00 | 2018-04-27 09:00 | 1h | 114.71d | 0d | TEAM_2Shift_Calendar-1 | Grinding Machine; Grinder | 2h |  | 56.25 | 56.25 |  |
| 68 | 6.1.17 | Surface Cleaning | 2h | 2018-05-23 09:00 | 2018-05-23 11:00 | 67 |  |  | 2018-04-27 09:00 | 2018-04-27 11:00 | 2h | 114.71d | 0d | TEAM_2Shift_Calendar-1 | Helper | 2h |  | 100 | 100 |  |
| 69 | 6.1.18 | SF Marking | 2h | 2018-05-23 11:00 | 2018-05-23 13:00 | 68 |  |  | 2018-04-27 11:00 | 2018-04-27 13:00 | 2h | 114.71d | 0d | TEAM_2Shift_Calendar-1 | Helper; Fitter | 4h |  | 237.5 | 237.5 |  |
| 70 | 6.1.19 | SF Cutting | 2h | 2018-05-23 13:00 | 2018-05-23 15:00 | 69 |  |  | 2018-04-27 13:00 | 2018-04-27 15:00 | 2h | 114.71d | 0d | TEAM_2Shift_Calendar-1 | Gas Cutter; OAGM; Helper | 6h |  | 237.5 | 237.5 |  |
| 71 | 6.1.20 | Dish Edge Preparation | 2h | 2018-05-23 15:00 | 2018-05-23 17:00 | 70 |  |  | 2018-04-27 15:00 | 2018-04-27 17:00 | 2h | 114.71d | 0d | TEAM_2Shift_Calendar-1 | Grinding Machine; Grinder | 4h |  | 112.5 | 112.5 |  |
| 72 | 6.1.21 | Final Inspection | 2h | 2018-05-23 17:00 | 2018-05-23 19:00 | 71 |  |  | 2018-04-27 17:00 | 2018-04-27 19:00 | 2h | 114.71d |  | TEAM_2Shift_Calendar-1 | Fitter [200%] | 4h |  | 275 | 275 |  |

Notes:
- 41: N5-N9
- 42: SRN WITH LIP-N1,N2A
- 52: SA 516 GR.60-14T

| ID | WBS | Task | Duration | Start | Finish | Predecessors | Complete | Remaining | Baseline start | Baseline finish | Baseline duration | Total slack | Free slack | Calendar | Resources | Work | Actual work | Cost | Baseline cost | Actual cost |
| --- | --- | --- | --- | --- | --- | --- | --- | --- | --- | --- | --- | --- | --- | --- | --- | --- | --- | --- | --- | --- |
| 73 | 6.2 | **Dish forming(floating dish)** | 33.19d | 2018-05-04 11:01 A | 2018-05-24 20:30 |  | 68% | 10.74d | 2018-05-04 11:01 | 2018-05-18 08:00 | 21.62d | 17.67d |  | TEAM_2Shift_Calendar-1 |  | 207.35h | 121.74h | 4,230.83 | 4,230.83 | 1,143.58 |
| 74 | 6.2.1 | Plate Receipt | 3h | 2018-05-04 11:01 A | 2018-05-04 14:01 A | 32 | 100% |  | 2018-05-04 11:01 | 2018-05-04 14:01 | 3h |  |  | TEAM_2Shift_Calendar-1 | Plate (Cost) [0.1%]; Store | 3h | 3h |  |  |  |
| 75 | 6.2.2 | Inward Inspection | 2h | 2018-05-04 14:01 A | 2018-05-04 16:01 A | 74 | 100% |  | 2018-05-04 14:01 | 2018-05-04 16:01 | 2h |  |  | TEAM_2Shift_Calendar-1 | TPI (Cost) [0.1%]; QC Engineer | 2h | 2h |  |  |  |
| 76 | 6.2.3 | Dish Blank Marking | 2h | 2018-05-04 16:01 A | 2018-05-04 18:01 A | 75 | 100% |  | 2018-05-04 16:01 | 2018-05-04 18:01 | 2h |  |  | TEAM_2Shift_Calendar-1 | Helper; Fitter | 1h | 1h | 59.38 | 59.38 | 59.38 |
| 77 | 6.2.4 | Dish Blank Mkg Inpection | 2h | 2018-05-04 18:01 A | 2018-05-04 20:01 A | 76 | 100% |  | 2018-05-04 18:01 | 2018-05-04 20:01 | 2h |  |  | TEAM_2Shift_Calendar-1 | Fitter | 2h | 2h | 137.5 | 137.5 | 137.5 |
| 78 | 6.2.5 | Dish Blank Mkg Stamping | 4h | 2018-05-04 20:01 A | 2018-05-05 08:01 A | 77 | 100% |  | 2018-05-04 20:01 | 2018-05-05 08:01 | 4h |  |  | TEAM_2Shift_Calendar-1 | TPI (Cost) [0.1%]; Fitter | 7.74h | 7.74h | 532.12 | 532.12 | 532.12 |
| 79 | 6.2.6 | Transfer For Cutting | 1h | 2018-05-05 08:01 A | 2018-05-05 09:01 A | 78 | 100% |  | 2018-05-05 08:01 | 2018-05-05 09:01 | 1h |  |  | TEAM_2Shift_Calendar-1 | Helper [300%] | 3h | 3h | 150 | 150 | 150 |
| 80 | 6.2.7 | Dish Blank Cutting | 2h | 2018-05-05 09:01 A | 2018-05-05 11:01 A | 79 | 100% |  | 2018-05-05 09:01 | 2018-05-05 11:01 | 2h |  |  | TEAM_2Shift_Calendar-1 | Gas Cutter; OAGM; Helper | 4h | 4h | 158.33 | 158.33 | 158.33 |
| 81 | 6.2.8 | DishBlank OD Grinding | 1h | 2018-05-05 11:01 A | 2018-05-05 12:01 A | 80 | 100% |  | 2018-05-05 11:01 | 2018-05-05 12:01 | 1h |  |  | TEAM_2Shift_Calendar-1 | Grinding Machine; Grinder | 2h | 2h | 56.25 | 56.25 | 56.25 |
| 82 | 6.2.9 | Dish Blank Offloading For Forming | 2h | 2018-05-05 12:01 A | 2018-05-05 14:01 A | 81 | 100% |  | 2018-05-05 12:01 | 2018-05-05 14:01 | 2h |  |  | TEAM_2Shift_Calendar-1 | Helper | 0.5h | 0.5h | 25 | 25 | 25 |
| 83 | 6.2.10 | Dish Forming | 12d | 2018-05-05 14:01 A | 2018-05-14 14:01 A | 82 | 100% |  | 2018-05-05 14:01 | 2018-05-14 14:01 | 12d |  |  | TEAM_2Shift_Calendar-1 | SC (Work) | 96h | 96h |  |  |  |
| 84 | 6.2.11 | Receipt After Forming | 2h | 2018-05-14 14:01 A | 2018-05-14 16:01 A | 83 | 100% |  | 2018-05-14 14:01 | 2018-05-14 16:01 | 2h |  |  | TEAM_2Shift_Calendar-1 | Helper | 0.5h | 0.5h | 25 | 25 | 25 |
| 85 | 6.2.12 | Inward Inspection | 7.98h | 2018-05-19 16:01 | 2018-05-21 08:00 | 84FS+10d |  |  | 2018-05-14 16:01 | 2018-05-15 08:00 | 7.98h | 19.24d | 0d | TEAM_2Shift_Calendar-1 | QC Engineer; Fitter | 1.58h |  | 12.25 | 12.25 |  |
| 86 | 6.2.13 | Surface Grinding | 1h | 2018-05-21 08:00 | 2018-05-21 09:00 | 85 |  |  | 2018-05-15 08:00 | 2018-05-15 09:00 | 1h | 19.24d | 0d | TEAM_2Shift_Calendar-1 | Grinding Machine; Grinder | 2h |  | 56.25 | 56.25 |  |
| 87 | 6.2.14 | Surface Dp Check | 1h | 2018-05-21 09:00 | 2018-05-21 10:00 | 86 |  |  | 2018-05-15 09:00 | 2018-05-15 10:00 | 1h | 19.24d | 0d | TEAM_2Shift_Calendar-1 | Helper; Fitter | 2h |  | 118.75 | 118.75 |  |
| 88 | 6.2.15 | Spider Set Up For SR | 2h | 2018-05-21 10:00 | 2018-05-21 12:00 | 87 |  |  | 2018-05-15 10:00 | 2018-05-15 12:00 | 2h | 19.24d | 0d | TEAM_2Shift_Calendar-1 | Helper [200%]; Fitter | 6h |  | 337.5 | 337.5 |  |
| 89 | 6.2.16 | Dish SR | 1d | 2018-05-21 12:00 | 2018-05-21 20:00 | 88 |  |  | 2018-05-15 12:00 | 2018-05-15 20:00 | 1d | 19.24d | 0d | TEAM_2Shift_Calendar-1 | SC (Work) | 8h |  |  |  |  |
| 90 | 6.2.17 | Remove Spider | 1h | 2018-05-21 20:00 | 2018-05-21 21:00 | 89 |  |  | 2018-05-15 20:00 | 2018-05-15 21:00 | 1h | 19.24d | 0d | TEAM_2Shift_Calendar-1 | Grinding Machine; Grinder | 2h |  | 56.25 | 56.25 |  |
| 91 | 6.2.18 | Surface Cleaning | 1h | 2018-05-21 21:00 | 2018-05-22 06:00 | 90 |  |  | 2018-05-15 21:00 | 2018-05-16 06:00 | 1h | 19.24d | 0d | TEAM_2Shift_Calendar-1 | Helper | 1h |  | 50 | 50 |  |
| 92 | 6.2.19 | SF Marking | 2h | 2018-05-22 06:00 | 2018-05-22 08:00 | 91 |  |  | 2018-05-16 06:00 | 2018-05-16 08:00 | 2h | 19.24d | 0d | TEAM_2Shift_Calendar-1 | Helper; Fitter | 1h |  | 59.38 | 59.38 |  |
| 93 | 6.2.20 | SF Cutting | 2h | 2018-05-22 08:00 | 2018-05-22 10:00 | 92 |  |  | 2018-05-16 08:00 | 2018-05-16 10:00 | 2h | 19.24d | 0d | TEAM_2Shift_Calendar-1 | Gas Cutter; OAGM; Helper | 6h |  | 237.5 | 237.5 |  |
| 94 | 6.2.21 | Dish Edge Preparation | 2h | 2018-05-22 10:00 | 2018-05-22 12:00 | 93 |  |  | 2018-05-16 10:00 | 2018-05-16 12:00 | 2h | 19.24d | 0d | TEAM_2Shift_Calendar-1 | Grinding Machine; Grinder | 4h |  | 112.5 | 112.5 |  |
| 95 | 6.2.22 | Final Inspection | 3h | 2018-05-22 12:00 | 2018-05-22 15:00 | 94 |  |  | 2018-05-16 12:00 | 2018-05-16 15:00 | 3h | 19.24d | 1.56d | TEAM_2Shift_Calendar-1 | Fitter [200%] | 6h |  | 412.5 | 412.5 |  |
| 96 | 6.2.23 | FL Dish with flange fitup | 3h | 2018-05-23 11:30 | 2018-05-23 14:30 | 37, 95 |  |  | 2018-05-16 15:00 | 2018-05-16 18:00 | 3h | 17.67d | 0d | TEAM_2Shift_Calendar-1 | Helper; SMAW Welder; SMAW Welding Machine; Fitter | 9h |  | 421.88 | 421.88 |  |
| 97 | 6.2.24 | Inspection | 3h | 2018-05-23 14:30 | 2018-05-23 17:30 | 96 |  |  | 2018-05-16 18:00 | 2018-05-16 21:00 | 3h | 17.67d | 0d | TEAM_2Shift_Calendar-1 | Fitter | 3h |  | 206.25 | 206.25 |  |
| 98 | 6.2.25 | Welding | 4h | 2018-05-23 17:30 | 2018-05-23 21:30 | 97 |  |  | 2018-05-16 21:00 | 2018-05-17 09:00 | 4h | 17.67d | 0d | TEAM_2Shift_Calendar-1 | SMAW Welder; SMAW Welding Machine; Helper | 12h |  | 475 | 475 |  |
| 99 | 6.2.26 | Backchip Grinding | 2h | 2018-05-23 21:30 | 2018-05-24 07:30 | 98 |  |  | 2018-05-17 09:00 | 2018-05-17 11:00 | 2h | 17.67d | 0d | TEAM_2Shift_Calendar-1 | Grinding Machine; Grinder | 4h |  | 112.5 | 112.5 |  |
| 100 | 6.2.27 | Inside Welding | 2h | 2018-05-24 07:30 | 2018-05-24 09:30 | 99 |  |  | 2018-05-17 11:00 | 2018-05-17 13:00 | 2h | 17.67d | 0d | TEAM_2Shift_Calendar-1 | SMAW Welder; SMAW Welding Machine; Helper | 6h |  | 237.5 | 237.5 |  |
| 101 | 6.2.28 | Inside flush Grinding | 2h | 2018-05-24 09:30 | 2018-05-24 11:30 | 100 |  |  | 2018-05-17 13:00 | 2018-05-17 15:00 | 2h | 17.67d | 0d | TEAM_2Shift_Calendar-1 | Grinding Machine; Grinder | 4h |  | 112.5 | 112.5 |  |
| 102 | 6.2.29 | DP Check | 1h | 2018-05-24 11:30 | 2018-05-24 12:30 | 101 |  |  | 2018-05-17 15:00 | 2018-05-17 16:00 | 1h | 17.67d | 0d | TEAM_2Shift_Calendar-1 | Fitter | 1h |  | 68.75 | 68.75 |  |
| 103 | 6.2.30 | RT | 1d | 2018-05-24 12:30 | 2018-05-24 20:30 | 102 |  |  | 2018-05-17 16:00 | 2018-05-18 08:00 | 1d | 17.67d |  | TEAM_2Shift_Calendar-1 | SC (Work) | 7.03h |  |  |  |  |

Notes:
- 74: SA 240 UNS S32205-5T
- 96: OD409xID299x50T

| ID | WBS | Task | Duration | Start | Finish | Predecessors | Complete | Remaining | Baseline start | Baseline finish | Baseline duration | Total slack | Free slack | Calendar | Resources | Work | Actual work | Cost | Baseline cost | Actual cost |
| --- | --- | --- | --- | --- | --- | --- | --- | --- | --- | --- | --- | --- | --- | --- | --- | --- | --- | --- | --- | --- |
| 104 | 6.3 | **Nozzle Fabrication** | 5.88d | 2018-05-25 11:30 | 2018-05-30 10:30 |  |  |  | 2018-05-04 11:30 | 2018-05-30 10:30 | 39.88d | 105.77d |  | TEAM_2Shift_Calendar-1 |  | 100h |  | 5,022.5 | 5,022.5 |  |
| 105 | 6.3.1 | Noz Pipe Receipt | 3h | 2018-05-25 11:30 | 2018-05-25 14:30 | 42 |  |  | 2018-05-04 11:30 | 2018-05-04 14:30 | 3h | 106.77d | 0d | TEAM_2Shift_Calendar-1 | Pipe (Cost) [0.1%]; Store | 3h |  |  |  |  |
| 106 | 6.3.2 | Noz Pipe Marking | 2h | 2018-05-25 14:30 | 2018-05-25 16:30 | 105 |  |  | 2018-05-04 14:30 | 2018-05-04 16:30 | 2h | 106.77d | 0d | TEAM_2Shift_Calendar-1 | Helper; Fitter | 1h |  | 59.38 | 59.38 |  |
| 107 | 6.3.3 | Noz Pipe Stamping | 1h | 2018-05-25 16:30 | 2018-05-25 17:30 | 106 |  |  | 2018-05-04 16:30 | 2018-05-04 17:30 | 1h | 106.77d | 0d | TEAM_2Shift_Calendar-1 | TPI (Cost) [0.1%]; QC Engineer |  |  |  |  |  |
| 108 | 6.3.4 | Noz Pipe Cutting | 0.5d | 2018-05-25 17:30 | 2018-05-25 21:30 | 107 |  |  | 2018-05-04 17:30 | 2018-05-04 21:30 | 0.5d | 106.77d | 0d | TEAM_2Shift_Calendar-1 | Gas Cutter; OAGM; Helper | 6h |  | 237.5 | 237.5 |  |
| 109 | 6.3.5 | Noz Pipe Ep | 2h | 2018-05-25 21:30 | 2018-05-28 07:30 | 108 |  |  | 2018-05-04 21:30 | 2018-05-05 07:30 | 2h | 106.77d | 0d | TEAM_2Shift_Calendar-1 | Grinding Machine; Grinder | 1h |  | 28.12 | 28.12 |  |
| 110 | 6.3.6 | Noz Flange+PipeFitUp | 3h | 2018-05-28 07:30 | 2018-05-28 10:30 | 43, 109 |  |  | 2018-05-05 07:30 | 2018-05-05 10:30 | 3h | 106.77d | 0d | TEAM_2Shift_Calendar-1 | Helper [200%]; SMAW Welder; SMAW Welding Machine; Forging Std (Cost) [0.1%]; Pipe (Cost) [0.1%]; Fitter | 12h |  | 570 | 570 |  |
| 111 | 6.3.7 | Noz Flange+Pipe Fit Up Inspection | 2h | 2018-05-28 10:30 | 2018-05-28 12:30 | 110 |  |  | 2018-05-05 10:30 | 2018-05-05 12:30 | 2h | 106.77d | 0d | TEAM_2Shift_Calendar-1 | Fitter [200%] | 1h |  | 68.75 | 68.75 |  |
| 112 | 6.3.8 | Noz Flange+PipeRootTigWelding | 4h | 2018-05-28 12:30 | 2018-05-28 16:30 | 111 |  |  | 2018-05-05 12:30 | 2018-05-05 16:30 | 4h | 106.77d | 0d | TEAM_2Shift_Calendar-1 | TIG Welder; TIG Welding Machine; Helper [200%] | 16h |  | 900 | 900 |  |
| 113 | 6.3.9 | Noz Flange+PipeFillerPassWelding | 3h | 2018-05-28 16:30 | 2018-05-28 19:30 | 112 |  |  | 2018-05-05 16:30 | 2018-05-05 19:30 | 3h | 106.77d | 1d | TEAM_2Shift_Calendar-1 | TIG Welder; TIG Welding Machine; Helper [200%] | 12h |  | 675 | 675 |  |
| 114 | 6.3.10 | Mp Con Marking | 2h | 2018-05-29 11:30 | 2018-05-29 13:30 | 41, 113 |  |  | 2018-05-29 11:30 | 2018-05-29 13:30 | 2h | 105.77d | 0d | TEAM_2Shift_Calendar-1 | Helper; Fitter | 4h |  | 237.5 | 237.5 |  |
| 115 | 6.3.11 | Mp Con Openning | 2h | 2018-05-29 13:30 | 2018-05-29 15:30 | 114 |  |  | 2018-05-29 13:30 | 2018-05-29 15:30 | 2h | 105.77d | 0d | TEAM_2Shift_Calendar-1 | Gas Cutter; OAGM; Helper | 6h |  | 237.5 | 237.5 |  |
| 116 | 6.3.12 | Mp Con Ep | 1h | 2018-05-29 15:30 | 2018-05-29 16:30 | 115 |  |  | 2018-05-29 15:30 | 2018-05-29 16:30 | 1h | 105.77d | 0d | TEAM_2Shift_Calendar-1 | Grinding Machine; Grinder | 2h |  | 56.25 | 56.25 |  |
| 117 | 6.3.13 | Mp Con Noz FitUp | 4h | 2018-05-29 16:30 | 2018-05-29 20:30 | 116 |  |  | 2018-05-29 16:30 | 2018-05-29 20:30 | 4h | 105.77d | 0d | TEAM_2Shift_Calendar-1 | Helper [200%]; TIG Welder; TIG Welding Machine; Fitter | 16h |  | 940 | 940 |  |
| 118 | 6.3.14 | Mp Con Noz Welding | 4h | 2018-05-29 20:30 | 2018-05-30 08:30 | 117 |  |  | 2018-05-29 20:30 | 2018-05-30 08:30 | 4h | 105.77d | 0d | TEAM_2Shift_Calendar-1 | TIG Welder; TIG Welding Machine; Helper [200%] | 16h |  | 900 | 900 |  |
| 119 | 6.3.15 | Mp Con Noz Welding FlushGrind | 2h | 2018-05-30 08:30 | 2018-05-30 10:30 | 118 |  |  | 2018-05-30 08:30 | 2018-05-30 10:30 | 2h | 105.77d |  | TEAM_2Shift_Calendar-1 | Grinding Machine; Grinder | 4h |  | 112.5 | 112.5 |  |
| 120 | 6.4 | **Saddle Fabrication** | 147.75d | 2018-02-19 08:00 A | 2018-05-23 22:00 |  | 21% | 116.77d | 2018-02-19 08:00 | 2018-04-26 14:00 | 106.75d | 114.33d |  | TEAM_2Shift_Calendar-1 |  | 153.55h | 13.55h | 6,769.22 | 6,769.22 | 275.47 |
| 121 | 6.4.1 | Plate Receipt | 9h | 2018-02-19 08:00 A | 2018-02-19 17:00 A | 34 | 100% |  | 2018-02-19 08:00 | 2018-02-19 17:00 | 9h |  |  | TEAM_2Shift_Calendar-1 | Plate (Cost) [0.1%]; Store | 9h | 9h |  |  |  |
| 122 | 6.4.2 | Saddle Pl Marking | 2h | 2018-04-07 09:00 A | 2018-04-07 11:00 A | 121FS+75d | 100% |  | 2018-04-07 09:00 | 2018-04-07 11:00 | 2h |  |  | TEAM_2Shift_Calendar-1 | Helper; Fitter | 4h | 4h | 237.5 | 237.5 | 237.5 |
| 123 | 6.4.3 | Saddle Pl Mkg Inspection | 2h | 2018-04-07 11:00 A | 2018-04-07 13:00 A | 122 | 100% |  | 2018-04-07 11:00 | 2018-04-07 13:00 | 2h |  |  | TEAM_2Shift_Calendar-1 | QC Engineer; Fitter | 0.55h | 0.55h | 37.97 | 37.97 | 37.97 |
| 124 | 6.4.4 | Saddle Pl Mkg Cutting | 2h | 2018-05-07 21:00 | 2018-05-08 07:00 | 123FS+45d |  |  | 2018-04-23 13:00 | 2018-04-23 15:00 | 2h | 114.33d | 0d | TEAM_2Shift_Calendar-1 | Gas Cutter; OAGM; Helper | 6h |  | 237.5 | 237.5 |  |
| 125 | 6.4.5 | Grinding | 2h | 2018-05-21 07:00 | 2018-05-21 09:00 | 124FS+20d |  |  | 2018-04-23 15:00 | 2018-04-23 17:00 | 2h | 114.33d | 0d | TEAM_2Shift_Calendar-1 | Grinding Machine; Grinder | 4h |  | 112.5 | 112.5 |  |
| 126 | 6.4.6 | Saddle Base Hole Marking | 1h | 2018-05-21 09:00 | 2018-05-21 10:00 | 125 |  |  | 2018-04-23 17:00 | 2018-04-23 18:00 | 1h | 114.33d | 0d | TEAM_2Shift_Calendar-1 | Helper; Fitter | 2h |  | 118.75 | 118.75 |  |
| 127 | 6.4.7 | Saddle BaseHole Drilling | 4h | 2018-05-21 10:00 | 2018-05-21 14:00 | 126 |  |  | 2018-04-23 18:00 | 2018-04-23 22:00 | 4h | 114.33d | 0d | TEAM_2Shift_Calendar-1 | Radial Drilling Machine; Driller | 8h |  | 275 | 275 |  |
| 128 | 6.4.8 | Saddle Pad Forming | 1d | 2018-05-21 14:00 | 2018-05-21 22:00 | 127 |  |  | 2018-04-24 06:00 | 2018-04-24 14:00 | 1d | 114.33d | 0d | TEAM_2Shift_Calendar-1 | Helper; Fitter [200%] | 24h |  | 1,500 | 1,500 |  |
| 129 | 6.4.9 | Saddle FitUp | 1d | 2018-05-22 06:00 | 2018-05-22 14:00 | 128 |  |  | 2018-04-24 14:00 | 2018-04-24 22:00 | 1d | 114.33d | 0d | TEAM_2Shift_Calendar-1 | Helper [200%]; SMAW Welder; SMAW Welding Machine; Fitter | 40h |  | 1,900 | 1,900 |  |
| 130 | 6.4.10 | Saddle FitUp Inspection | 1d | 2018-05-22 14:00 | 2018-05-22 22:00 | 129 |  |  | 2018-04-25 06:00 | 2018-04-25 14:00 | 1d | 114.33d | 0d | TEAM_2Shift_Calendar-1 | Fitter | 8h |  | 550 | 550 |  |
| 131 | 6.4.11 | Saddle Welding | 1d | 2018-05-23 06:00 | 2018-05-23 14:00 | 130 |  |  | 2018-04-25 14:00 | 2018-04-25 22:00 | 1d | 114.33d | 0d | TEAM_2Shift_Calendar-1 | SMAW Welder; SMAW Welding Machine; Helper [200%] | 32h |  | 1,350 | 1,350 |  |
| 132 | 6.4.12 | Saddle Profile Grinding | 1d | 2018-05-23 14:00 | 2018-05-23 22:00 | 131 |  |  | 2018-04-26 06:00 | 2018-04-26 14:00 | 1d | 114.33d |  | TEAM_2Shift_Calendar-1 | Grinding Machine; Grinder | 16h |  | 450 | 450 |  |

Notes:
- 105: SRN-N1,N2A-6"
- 121: Saddle plate(12THK,16THK) IS 2062 Gr.250 Quality(B)

| ID | WBS | Task | Duration | Start | Finish | Predecessors | Complete | Remaining | Baseline start | Baseline finish | Baseline duration | Total slack | Free slack | Calendar | Resources | Work | Actual work | Cost | Baseline cost |
| --- | --- | --- | --- | --- | --- | --- | --- | --- | --- | --- | --- | --- | --- | --- | --- | --- | --- | --- | --- |
| 133 | 6.5 | **BaffleFabrication** | 31.88d | 2018-05-04 11:01 A | 2018-05-24 10:01 |  | 5% | 30.14d | 2018-05-04 11:01 | 2018-05-08 18:01 | 6.88d | 113.83d |  | TEAM_2Shift_Calendar-1 |  | 90h | 3h | 3,368.75 | 3,368.75 |
| 134 | 6.5.1 | Pl Receipt | 3h | 2018-05-04 11:01 A | 2018-05-04 14:01 A | 31 | 100% |  | 2018-05-04 11:01 | 2018-05-04 14:01 | 3h |  |  | TEAM_2Shift_Calendar-1 | Plate (Cost) [0.1%]; Store | 3h | 3h |  |  |
| 135 | 6.5.2 | Marking | 2h | 2018-05-04 14:01 | 2018-05-04 16:01 | 134 |  |  | 2018-05-04 14:01 | 2018-05-04 16:01 | 2h | 113.83d | 0d | TEAM_2Shift_Calendar-1 | Helper; Fitter | 2h |  | 118.75 | 118.75 |
| 136 | 6.5.3 | Cutting | 4h | 2018-05-21 08:01 | 2018-05-21 12:01 | 135FS+25d |  |  | 2018-05-04 16:01 | 2018-05-04 20:01 | 4h | 113.83d | 0d | TEAM_2Shift_Calendar-1 | Gas Cutter; OAGM; Helper | 12h |  | 475 | 475 |
| 137 | 6.5.4 | Grinding | 2h | 2018-05-21 12:01 | 2018-05-21 14:01 | 136 |  |  | 2018-05-04 20:01 | 2018-05-05 06:01 | 2h | 113.83d | 0d | TEAM_2Shift_Calendar-1 | Grinding Machine; Grinder | 4h |  | 112.5 | 112.5 |
| 138 | 6.5.5 | Stacking | 1h | 2018-05-21 14:01 | 2018-05-21 15:01 | 137 |  |  | 2018-05-05 06:01 | 2018-05-05 07:01 | 1h | 113.83d | 0d | TEAM_2Shift_Calendar-1 | Fitter; Helper | 2h |  | 118.75 | 118.75 |
| 139 | 6.5.6 | CentreLineMarking | 2h | 2018-05-21 15:01 | 2018-05-21 17:01 | 138 |  |  | 2018-05-05 07:01 | 2018-05-05 09:01 | 2h | 113.83d | 0d | TEAM_2Shift_Calendar-1 | Helper; Fitter | 4h |  | 237.5 | 237.5 |
| 140 | 6.5.7 | Drilling | 0.5d | 2018-05-21 17:01 | 2018-05-21 21:01 | 139 |  |  | 2018-05-05 09:01 | 2018-05-05 13:01 | 0.5d | 113.83d | 0d | TEAM_2Shift_Calendar-1 | SC (Work) | 4h |  |  |  |
| 141 | 6.5.8 | De Stacking | 2h | 2018-05-21 21:01 | 2018-05-22 07:01 | 140 |  |  | 2018-05-05 13:01 | 2018-05-05 15:01 | 2h | 113.83d | 0d | TEAM_2Shift_Calendar-1 | Fitter; Helper | 4h |  | 237.5 | 237.5 |
| 142 | 6.5.9 | HoleChamfering | 3h | 2018-05-22 07:01 | 2018-05-22 10:01 | 141 |  |  | 2018-05-05 15:01 | 2018-05-05 18:01 | 3h | 113.83d | 0d | TEAM_2Shift_Calendar-1 | Radial Drilling Machine; Driller | 6h |  | 206.25 | 206.25 |
| 143 | 6.5.10 | EdgeTrimming | 3h | 2018-05-22 10:01 | 2018-05-22 13:01 | 142 |  |  | 2018-05-05 18:01 | 2018-05-05 21:01 | 3h | 113.83d | 0d | TEAM_2Shift_Calendar-1 | Grinding Machine; Grinder | 6h |  | 168.75 | 168.75 |
| 144 | 6.5.11 | Grinding | 3h | 2018-05-22 13:01 | 2018-05-22 16:01 | 143 |  |  | 2018-05-05 21:01 | 2018-05-07 08:01 | 3h | 113.83d | 0d | TEAM_2Shift_Calendar-1 | Grinding Machine; Grinder | 6h |  | 168.75 | 168.75 |
| 145 | 6.5.12 | StackingTypeA&B | 3h | 2018-05-22 16:01 | 2018-05-22 19:01 | 144 |  |  | 2018-05-07 08:01 | 2018-05-07 11:01 | 3h | 113.83d | 0d | TEAM_2Shift_Calendar-1 | Fitter; Helper | 6h |  | 356.25 | 356.25 |
| 146 | 6.5.13 | ThroughHoleCheck | 1h | 2018-05-22 19:01 | 2018-05-22 20:01 | 145 |  |  | 2018-05-07 11:01 | 2018-05-07 12:01 | 1h | 113.83d | 0d | TEAM_2Shift_Calendar-1 | Helper; Fitter [200%] | 3h |  | 187.5 | 187.5 |
| 147 | 6.5.14 | ReDrillIfRequired | 3h | 2018-05-22 20:01 | 2018-05-23 07:01 | 146 |  |  | 2018-05-07 12:01 | 2018-05-07 15:01 | 3h | 113.83d | 0d | TEAM_2Shift_Calendar-1 | Radial Drilling Machine; Driller | 6h |  | 206.25 | 206.25 |
| 148 | 6.5.15 | OD Machining | 1d | 2018-05-23 07:01 | 2018-05-23 15:01 | 147 |  |  | 2018-05-07 15:01 | 2018-05-08 07:01 | 1d | 113.83d | 0d | TEAM_2Shift_Calendar-1 | SC (Work) | 8h |  |  |  |
| 149 | 6.5.16 | DeStacking | 0.5d | 2018-05-23 15:01 | 2018-05-23 19:01 | 148 |  |  | 2018-05-08 07:01 | 2018-05-08 11:01 | 0.5d | 113.83d | 0d | TEAM_2Shift_Calendar-1 | Fitter; Helper | 8h |  | 475 | 475 |
| 150 | 6.5.17 | Cleaning | 3h | 2018-05-23 19:01 | 2018-05-24 06:01 | 149 |  |  | 2018-05-08 11:01 | 2018-05-08 14:01 | 3h | 113.83d | 0d | TEAM_2Shift_Calendar-1 | Helper [200%] | 6h |  | 300 | 300 |
| 151 | 6.5.18 | Ready for assly | 0.5d | 2018-05-24 06:01 | 2018-05-24 10:01 | 150 |  |  | 2018-05-08 14:01 | 2018-05-08 18:01 | 0.5d | 113.83d |  | TEAM_2Shift_Calendar-1 |  |  |  |  |  |
| 152 | 6.6 | **TubeSheet(Floating and Stationary)** | 26.5d | 2018-05-23 11:30 | 2018-06-08 15:30 |  |  |  | 2018-05-04 11:30 | 2018-05-21 15:30 | 26.5d | 88.5d |  | TEAM_2Shift_Calendar-1 |  | 280.35h |  | 7,044.22 | 7,044.22 |
| 153 | 6.6.1 | Receipt Of Forging | 4h | 2018-05-23 11:30 | 2018-05-23 15:30 | 36 |  |  | 2018-05-04 11:30 | 2018-05-04 15:30 | 4h | 88.5d | 0d | TEAM_2Shift_Calendar-1 | Tube Sheet (Cost) [0.1%]; Helper [200%] | 8h |  | 400 | 400 |
| 154 | 6.6.2 | Inward Inspection | 4h | 2018-05-23 15:30 | 2018-05-23 19:30 | 153 |  |  | 2018-05-04 15:30 | 2018-05-04 19:30 | 4h | 88.5d | 0d | TEAM_2Shift_Calendar-1 | QC Engineer; Fitter [200%] | 3.39h |  | 232.83 | 232.83 |
| 155 | 6.6.3 | send for cladding | 4h | 2018-05-23 19:30 | 2018-05-24 07:30 | 154 |  |  | 2018-05-04 19:30 | 2018-05-05 07:30 | 4h | 88.5d | 0d | TEAM_2Shift_Calendar-1 | Store; Helper | 8h |  | 200 | 200 |
| 156 | 6.6.4 | Receipt of cladded Material | 15d | 2018-05-24 07:30 | 2018-06-02 15:30 | 155 |  |  | 2018-05-05 07:30 | 2018-05-15 15:30 | 15d | 88.5d | 0d | TEAM_2Shift_Calendar-1 | Client | 111.81h |  |  |  |
| 157 | 6.6.5 | Off Load For Drilling | 3h | 2018-06-02 15:30 | 2018-06-02 18:30 | 156 |  |  | 2018-05-15 15:30 | 2018-05-15 18:30 | 3h | 88.5d | 0d | TEAM_2Shift_Calendar-1 | Helper [200%] | 6h |  | 300 | 300 |
| 158 | 6.6.6 | Drilling Of Tube Holes | 1d | 2018-06-02 18:30 | 2018-06-04 10:30 | 157 |  |  | 2018-05-15 18:30 | 2018-05-16 10:30 | 1d | 88.5d | 0d | TEAM_2Shift_Calendar-1 | SC (Work) | 8h |  |  |  |
| 159 | 6.6.7 | Drilling Of Bolt Holes | 1d | 2018-06-04 10:30 | 2018-06-04 18:30 | 158 |  |  | 2018-05-16 10:30 | 2018-05-16 18:30 | 1d | 88.5d | 0d | TEAM_2Shift_Calendar-1 | Radial Drilling Machine; Driller | 16h |  | 550 | 550 |
| 160 | 6.6.8 | Drilling Of TieRod Holes | 0.5d | 2018-06-04 18:30 | 2018-06-05 06:30 | 159 |  |  | 2018-05-16 18:30 | 2018-05-17 06:30 | 0.5d | 88.5d | 0d | TEAM_2Shift_Calendar-1 | Radial Drilling Machine; Driller | 8h |  | 275 | 275 |
| 161 | 6.6.9 | M/C Of PassPartion | 4h | 2018-06-05 06:30 | 2018-06-05 10:30 | 160 |  |  | 2018-05-17 06:30 | 2018-05-17 10:30 | 4h | 88.5d | 0d | TEAM_2Shift_Calendar-1 | SC (Work) | 4h |  |  |  |
| 162 | 6.6.10 | Drilling Of Pulling EyeBolt | 4h | 2018-06-05 10:30 | 2018-06-05 14:30 | 161 |  |  | 2018-05-17 10:30 | 2018-05-17 14:30 | 4h | 88.5d | 0d | TEAM_2Shift_Calendar-1 | Radial Drilling Machine; Driller | 8h |  | 275 | 275 |
| 163 | 6.6.11 | Drilling Of Lifting Eye Bolt | 4h | 2018-06-05 14:30 | 2018-06-05 18:30 | 162 |  |  | 2018-05-17 14:30 | 2018-05-17 18:30 | 4h | 88.5d | 0d | TEAM_2Shift_Calendar-1 | Radial Drilling Machine; Driller | 8h |  | 275 | 275 |
| 164 | 6.6.12 | TubeSheet Receipt After Drilling | 5d | 2018-06-05 18:30 | 2018-06-08 10:30 | 163 |  |  | 2018-05-17 18:30 | 2018-05-21 10:30 | 5d | 88.5d | 0d | TEAM_2Shift_Calendar-1 | Helper [200%] | 80h |  | 4,000 | 4,000 |
| 165 | 6.6.13 | Tubesheet inspection | 4h | 2018-06-08 10:30 | 2018-06-08 14:30 | 164 |  |  | 2018-05-21 10:30 | 2018-05-21 14:30 | 4h | 88.5d | 0d | TEAM_2Shift_Calendar-1 | QC Engineer; Fitter [200%] | 8.15h |  | 386.39 | 386.39 |
| 166 | 6.6.14 | Tubesheet cleaning | 1h | 2018-06-08 14:30 | 2018-06-08 15:30 | 165 |  |  | 2018-05-21 14:30 | 2018-05-21 15:30 | 1h | 89.14d |  | TEAM_2Shift_Calendar-1 | Helper [300%] | 3h |  | 150 | 150 |

Notes:
- 134: Baffle plate(5THK,10THK) SA 240 Gr.316L
- 153: Blank Forging(55THK+10THK) SA 266 Gr.4+SA 240UNS S32205 CLAD

| ID | WBS | Task | Duration | Start | Finish | Predecessors | Complete | Remaining | Baseline start | Baseline finish | Baseline duration | Total slack | Free slack | Calendar | Resources | Work | Actual work | Cost | Baseline cost |
| --- | --- | --- | --- | --- | --- | --- | --- | --- | --- | --- | --- | --- | --- | --- | --- | --- | --- | --- | --- |
| 167 | 6.7 | **Sealing&slidingStripFabrication** | 3.5d | 2018-05-21 11:01 | 2018-05-23 07:01 |  |  |  | 2018-05-04 11:01 | 2018-05-07 07:01 | 3.5d | 61.61d |  | TEAM_2Shift_Calendar-1 |  | 56h |  | 2,237.5 | 2,237.5 |
| 168 | 6.7.1 | PL Receipt | 4h | 2018-05-21 11:01 | 2018-05-21 15:01 | 31FS+26d |  |  | 2018-05-04 11:01 | 2018-05-04 15:01 | 4h | 61.61d | 0d | TEAM_2Shift_Calendar-1 | Plate (Cost) [0.1%]; Store | 4h |  |  |  |
| 169 | 6.7.2 | SealingStripMarking | 4h | 2018-05-21 15:01 | 2018-05-21 19:01 | 168 |  |  | 2018-05-04 15:01 | 2018-05-04 19:01 | 4h | 61.61d | 0d | TEAM_2Shift_Calendar-1 | Helper; Fitter | 4h |  | 237.5 | 237.5 |
| 170 | 6.7.3 | SealingStripCutting | 1d | 2018-05-21 19:01 | 2018-05-22 11:01 | 169 |  |  | 2018-05-04 19:01 | 2018-05-05 11:01 | 1d | 61.61d | 0d | TEAM_2Shift_Calendar-1 | Gas Cutter; OAGM; Helper | 24h |  | 950 | 950 |
| 171 | 6.7.4 | SealingStripGrinding | 4h | 2018-05-22 11:01 | 2018-05-22 15:01 | 170 |  |  | 2018-05-05 11:01 | 2018-05-05 15:01 | 4h | 61.61d | 0d | TEAM_2Shift_Calendar-1 | Grinding Machine; Grinder | 8h |  | 225 | 225 |
| 172 | 6.7.5 | sliding strip marking | 2h | 2018-05-22 15:01 | 2018-05-22 17:01 | 171 |  |  | 2018-05-05 15:01 | 2018-05-05 17:01 | 2h | 61.61d | 0d | TEAM_2Shift_Calendar-1 | Helper; Plate (Cost) [0.1%]; Fitter | 4h |  | 237.5 | 237.5 |
| 173 | 6.7.6 | sliding strip cutting | 4h | 2018-05-22 17:01 | 2018-05-22 21:01 | 172 |  |  | 2018-05-05 17:01 | 2018-05-05 21:01 | 4h | 61.61d | 0d | TEAM_2Shift_Calendar-1 | Gas Cutter; Helper | 8h |  | 475 | 475 |
| 174 | 6.7.7 | SlidindStripGrinding | 2h | 2018-05-22 21:01 | 2018-05-23 07:01 | 173 |  |  | 2018-05-05 21:01 | 2018-05-07 07:01 | 2h | 61.61d |  | TEAM_2Shift_Calendar-1 | Grinding Machine; Grinder | 4h |  | 112.5 | 112.5 |
| 175 | 6.8 | **TieRod** | 45d | 2018-04-21 19:30 A | 2018-05-22 11:30 |  | 17% | 37.5d | 2018-04-21 19:30 | 2018-04-24 11:30 | 3d | 117.64d |  | TEAM_2Shift_Calendar-1 |  | 44h | 4h | 1,835 | 1,835 |
| 176 | 6.8.1 | Rod Receipt | 4h | 2018-04-21 19:30 A | 2018-04-23 07:30 A | 39FS+53d | 100% |  | 2018-04-21 19:30 | 2018-04-23 07:30 | 4h |  |  | TEAM_2Shift_Calendar-1 | Rod (Cost) [0.1%]; Store | 4h | 4h |  |  |
| 177 | 6.8.2 | Marking | 0.5d | 2018-05-21 07:30 | 2018-05-21 11:30 | 176FS+42d |  |  | 2018-04-23 07:30 | 2018-04-23 11:30 | 0.5d | 117.64d | 0d | TEAM_2Shift_Calendar-1 | Helper; Fitter | 8h |  | 475 | 475 |
| 178 | 6.8.3 | Cutting | 1d | 2018-05-21 11:30 | 2018-05-21 19:30 | 177 |  |  | 2018-04-23 11:30 | 2018-04-23 19:30 | 1d | 117.64d | 0d | TEAM_2Shift_Calendar-1 | Helper; Cutting Machine | 16h |  | 400 | 400 |
| 179 | 6.8.4 | Thread Machining | 1d | 2018-05-21 19:30 | 2018-05-22 11:30 | 178 |  |  | 2018-04-23 19:30 | 2018-04-24 11:30 | 1d | 117.64d |  | TEAM_2Shift_Calendar-1 | Lathe; Lathe Operator | 16h |  | 960 | 960 |
| 180 | 6.9 | **SpacerTube** | 4d | 2018-05-21 11:30 | 2018-05-23 11:30 |  |  |  | 2018-04-21 19:30 | 2018-04-24 19:30 | 4d | 115.64d |  | TEAM_2Shift_Calendar-1 |  | 40h |  | 2,030 | 2,030 |
| 181 | 6.9.1 | SpacerTubeMarking | 1d | 2018-05-21 11:30 | 2018-05-21 19:30 | 40FS+118d |  |  | 2018-04-21 19:30 | 2018-04-23 11:30 | 1d | 115.64d | 0d | TEAM_2Shift_Calendar-1 | Helper; Tube (Cost) [0.1%]; Fitter | 16h |  | 950 | 950 |
| 182 | 6.9.2 | SpacerTubeCutting | 1d | 2018-05-21 19:30 | 2018-05-22 11:30 | 181 |  |  | 2018-04-23 11:30 | 2018-04-23 19:30 | 1d | 115.64d | 0d | TEAM_2Shift_Calendar-1 | Helper; Cutting Machine | 8h |  | 200 | 200 |
| 183 | 6.9.3 | SpacerTubeM/C | 1d | 2018-05-22 11:30 | 2018-05-22 19:30 | 182 |  |  | 2018-04-23 19:30 | 2018-04-24 11:30 | 1d | 115.64d | 0d | TEAM_2Shift_Calendar-1 | Lathe; Lathe Operator | 8h |  | 480 | 480 |
| 184 | 6.9.4 | SpacerCleaning | 1d | 2018-05-22 19:30 | 2018-05-23 11:30 | 183 |  |  | 2018-04-24 11:30 | 2018-04-24 19:30 | 1d | 115.64d |  | TEAM_2Shift_Calendar-1 | Helper | 8h |  | 400 | 400 |
| 185 | 6.10 | **Impingement Plate** | 4.5d | 2018-05-19 19:01 | 2018-05-23 07:01 |  |  |  | 2018-05-04 11:01 | 2018-05-07 15:01 | 4.5d | 116.2d |  | TEAM_2Shift_Calendar-1 |  | 88h |  | 4,325 | 4,325 |
| 186 | 6.10.1 | ImpingementPL Marking | 0.5d | 2018-05-19 19:01 | 2018-05-21 07:01 | 31FS+25d |  |  | 2018-05-04 11:01 | 2018-05-04 15:01 | 0.5d | 116.2d | 0d | TEAM_2Shift_Calendar-1 | Helper; Plate (Cost) [0.1%]; Fitter | 8h |  | 475 | 475 |
| 187 | 6.10.2 | ImpingementPL Cutting | 1d | 2018-05-21 07:01 | 2018-05-21 15:01 | 186 |  |  | 2018-05-04 15:01 | 2018-05-05 07:01 | 1d | 116.2d | 0d | TEAM_2Shift_Calendar-1 | Helper; Cutting Machine | 16h |  | 400 | 400 |
| 188 | 6.10.3 | ImpingementPL Grinding | 1d | 2018-05-21 15:01 | 2018-05-22 07:01 | 187 |  |  | 2018-05-05 07:01 | 2018-05-05 15:01 | 1d | 116.2d | 0d | TEAM_2Shift_Calendar-1 | Grinding Machine; Grinder | 16h |  | 450 | 450 |
| 189 | 6.10.4 | ImpingementPL Forming | 2d | 2018-05-22 07:01 | 2018-05-23 07:01 | 188 |  |  | 2018-05-05 15:01 | 2018-05-07 15:01 | 2d | 116.2d |  | TEAM_2Shift_Calendar-1 | Helper; Fitter [200%] | 48h |  | 3,000 | 3,000 |
| 190 | 6.11 | **OtherComponents** | 14.32d | 2018-05-21 11:01 | 2018-05-30 13:34 |  |  |  | 2018-05-04 11:01 | 2018-05-14 13:34 | 14.32d | 105.05d |  | TEAM_2Shift_Calendar-1 |  | 294.25h |  | 12,568.03 | 12,568.03 |
| 191 | 6.11.1 | Pass partition plate weld overlay | 0.5d | 2018-05-21 11:01 | 2018-05-21 15:01 | 33FS+6d |  |  | 2018-05-04 11:01 | 2018-05-04 15:01 | 0.5d | 105.05d | 0d | TEAM_2Shift_Calendar-1 | SMAW Welder; SMAW Welding Machine; Plate (Cost) [0.1%]; Helper | 36h |  | 1,425 | 1,425 |
| 192 | 6.11.2 | pre-machinng | 1d | 2018-05-21 15:01 | 2018-05-22 07:01 | 191 |  |  | 2018-05-04 15:01 | 2018-05-05 07:01 | 1d | 105.05d | 0d | TEAM_2Shift_Calendar-1 | Grinding Machine; Grinder | 16h |  | 450 | 450 |
| 193 | 6.11.3 | wel overlay | 3d | 2018-05-22 07:01 | 2018-05-23 15:01 | 192 |  |  | 2018-05-05 07:01 | 2018-05-07 15:01 | 3d | 105.05d | 0d | TEAM_2Shift_Calendar-1 | SMAW Welder; SMAW Welding Machine; Helper | 72h |  | 2,850 | 2,850 |
| 194 | 6.11.4 | Final machining | 0.5d | 2018-05-23 15:01 | 2018-05-23 19:01 | 193 |  |  | 2018-05-07 15:01 | 2018-05-07 19:01 | 0.5d | 105.05d | 0d | TEAM_2Shift_Calendar-1 | Grinding Machine; Grinder | 8h |  | 225 | 225 |
| 195 | 6.11.5 | PassPartion Plate Marking | 0.5d | 2018-05-23 19:01 | 2018-05-24 07:01 | 194 |  |  | 2018-05-07 19:01 | 2018-05-08 07:01 | 0.5d | 105.05d | 0d | TEAM_2Shift_Calendar-1 | Helper; Fitter | 8h |  | 475 | 475 |
| 196 | 6.11.6 | Inspection | 3.55h | 2018-05-24 07:01 | 2018-05-24 10:34 | 195 |  |  | 2018-05-08 07:01 | 2018-05-08 10:34 | 3.55h | 105.05d | 0d | TEAM_2Shift_Calendar-1 | QC Engineer; Fitter | 4.25h |  | 174.28 | 174.28 |
| 197 | 6.11.7 | Cutting | 0.5d | 2018-05-24 10:34 | 2018-05-24 14:34 | 196 |  |  | 2018-05-08 10:34 | 2018-05-08 14:34 | 0.5d | 105.39d | 0d | TEAM_2Shift_Calendar-1 | OAGM; Gas Cutter | 8h |  | 275 | 275 |
| 198 | 6.11.8 | Grinding | 0.5d | 2018-05-24 14:34 | 2018-05-24 18:34 | 197 |  |  | 2018-05-08 14:34 | 2018-05-08 18:34 | 0.5d | 105.39d | 0d | TEAM_2Shift_Calendar-1 | Grinding Machine; Grinder | 8h |  | 225 | 225 |
| 199 | 6.11.9 | LiftingLug Marking | 0.5d | 2018-05-24 18:34 | 2018-05-25 06:34 | 30, 198 |  |  | 2018-05-08 18:34 | 2018-05-09 06:34 | 0.5d | 105.39d | 0d | TEAM_2Shift_Calendar-1 | Helper; Plate (Cost) [0.1%]; Fitter | 8h |  | 475 | 475 |
| 200 | 6.11.10 | LiftingLug Cutting | 1d | 2018-05-25 06:34 | 2018-05-25 14:34 | 199 |  |  | 2018-05-09 06:34 | 2018-05-09 14:34 | 1d | 105.39d | 0d | TEAM_2Shift_Calendar-1 | OAGM; Gas Cutter | 16h |  | 550 | 550 |
| 201 | 6.11.11 | Lifting LugPad Marking | 0.5d | 2018-05-25 14:34 | 2018-05-25 18:34 | 200 |  |  | 2018-05-09 14:34 | 2018-05-09 18:34 | 0.5d | 105.39d | 0d | TEAM_2Shift_Calendar-1 | Helper; Fitter | 8h |  | 475 | 475 |
| 202 | 6.11.12 | Lifting LugPad Cutting | 1d | 2018-05-25 18:34 | 2018-05-28 10:34 | 201 |  |  | 2018-05-09 18:34 | 2018-05-10 10:34 | 1d | 105.39d | 0d | TEAM_2Shift_Calendar-1 | OAGM; Gas Cutter | 16h |  | 550 | 550 |
| 203 | 6.11.13 | Lifting LugPad Grinding | 0.5d | 2018-05-28 10:34 | 2018-05-28 14:34 | 202 |  |  | 2018-05-10 10:34 | 2018-05-10 14:34 | 0.5d | 105.39d | 0d | TEAM_2Shift_Calendar-1 | Grinding Machine; Grinder | 8h |  | 225 | 225 |
| 204 | 6.11.14 | LiftingLugPadForming | 2d | 2018-05-28 14:34 | 2018-05-29 14:34 | 203 |  |  | 2018-05-10 14:34 | 2018-05-11 14:34 | 2d | 105.39d | 0d | TEAM_2Shift_Calendar-1 | Helper; Fitter [200%] | 48h |  | 3,000 | 3,000 |
| 205 | 6.11.15 | Ins Cleat Marking | 0.5d | 2018-05-29 14:34 | 2018-05-29 18:34 | 204 |  |  | 2018-05-11 14:34 | 2018-05-11 18:34 | 0.5d | 105.39d | 0d | TEAM_2Shift_Calendar-1 | Helper; Plate (Cost) [0.1%]; Fitter | 8h |  | 475 | 475 |
| 206 | 6.11.16 | Ins Cleat Cutting | 0.5d | 2018-05-29 18:34 | 2018-05-30 06:34 | 205 |  |  | 2018-05-11 18:34 | 2018-05-14 06:34 | 0.5d | 105.39d | 0d | TEAM_2Shift_Calendar-1 | OAGM; Gas Cutter | 8h |  | 275 | 275 |
| 207 | 6.11.17 | Ins Cleat Grinding | 3h | 2018-05-30 06:34 | 2018-05-30 09:34 | 206 |  |  | 2018-05-14 06:34 | 2018-05-14 09:34 | 3h | 105.39d | 0d | TEAM_2Shift_Calendar-1 | Grinding Machine; Grinder | 6h |  | 168.75 | 168.75 |
| 208 | 6.11.18 | Ins Cleat Drilling | 0.5d | 2018-05-30 09:34 | 2018-05-30 13:34 | 207 |  |  | 2018-05-14 09:34 | 2018-05-14 13:34 | 0.5d | 105.39d |  | TEAM_2Shift_Calendar-1 | Radial Drilling Machine; Driller | 8h |  | 275 | 275 |

Notes:
- 168: 8&14T-SA 240 GR.316L
- 176: Tie Rod-SS-316L(5nos)
- 181: (2.31THK) SA 312TP 316L(77nos)
- 186: SA 240 Gr.316- 6T
- 191: Pass partition plate(10thk+5thk(w.o)) SA 516 Gr.60+UNS S32205 W.O

| ID | WBS | Task | Duration | Start | Finish | Predecessors | Complete | Remaining | Baseline start | Baseline finish | Baseline duration | Total slack | Free slack | Calendar | Resources | Work | Actual work | Cost | Baseline cost | Actual cost |
| --- | --- | --- | --- | --- | --- | --- | --- | --- | --- | --- | --- | --- | --- | --- | --- | --- | --- | --- | --- | --- |
| 209 | 6.12 | **shell fabrication&Assembly** | 144.01d | 2018-03-29 11:30 A | 2018-06-29 11:34 |  | 24% | 109.27d | 2018-03-29 11:30 | 2018-06-08 19:34 | 113.01d | 57.63d |  | TEAM_2Shift_Calendar-1 |  | 1467.34h | 316.97h | 59,104.64 | 59,104.64 | 11,800 |
| 210 | 6.12.1 | PlateReceipt | 4h | 2018-03-29 11:30 A | 2018-03-29 15:30 A | 30 | 100% |  | 2018-03-29 11:30 | 2018-03-29 15:30 | 4h |  |  | TEAM_2Shift_Calendar-1 | Plate (Cost) [0.1%]; Store | 4h | 4h |  |  |  |
| 211 | 6.12.2 | Inward Inspection | 9h | 2018-04-04 08:30 A | 2018-04-04 17:30 A | 210 | 100% |  | 2018-04-04 08:30 | 2018-04-04 17:30 | 9h |  |  | TEAM_2Shift_Calendar-1 | QC Engineer | 1.97h | 1.97h |  |  |  |
| 212 | 6.12.3 | ShPl.Marking | 2d | 2018-04-05 06:00 A | 2018-04-05 22:00 A | 211 | 100% |  | 2018-04-05 06:00 | 2018-04-05 22:00 | 2d |  |  | TEAM_2Shift_Calendar-1 | Helper; Fitter | 8h | 8h | 475 | 475 | 475 |
| 213 | 6.12.4 | ShPl.Stamping | 0.75d | 2018-04-06 06:00 A | 2018-04-06 12:00 A | 212 | 100% |  | 2018-04-06 06:00 | 2018-04-06 12:00 | 0.75d |  |  | TEAM_2Shift_Calendar-1 | TPI (Cost) [0.1%]; QC Engineer | 3h | 3h |  |  |  |
| 214 | 6.12.5 | Sh-LS1Cutting(2000MM) | 0.5d | 2018-04-06 12:00 A | 2018-04-06 16:00 A | 213 | 100% |  | 2018-04-06 12:00 | 2018-04-06 16:00 | 0.5d |  |  | TEAM_2Shift_Calendar-1 | Gas Cutter; OAGM; Helper | 12h | 12h | 475 | 475 | 475 |
| 215 | 6.12.6 | Sh-LS2Cutting(2000MM) | 0.5d | 2018-04-06 16:00 A | 2018-04-06 20:00 A | 214 | 100% |  | 2018-04-06 16:00 | 2018-04-06 20:00 | 0.5d |  |  | TEAM_2Shift_Calendar-1 | Gas Cutter; OAGM; Helper | 12h | 12h | 475 | 475 | 475 |
| 216 | 6.12.7 | Sh-LS3Cutting(1772MM) | 0.5d | 2018-04-06 20:00 A | 2018-04-07 08:00 A | 215 | 100% |  | 2018-04-06 20:00 | 2018-04-07 08:00 | 0.5d |  |  | TEAM_2Shift_Calendar-1 | Gas Cutter; OAGM; Helper | 12h | 12h | 475 | 475 | 475 |
| 217 | 6.12.8 | Sh-LS1E.P | 0.5d | 2018-04-07 08:00 A | 2018-04-07 12:00 A | 216 | 100% |  | 2018-04-07 08:00 | 2018-04-07 12:00 | 0.5d |  |  | TEAM_2Shift_Calendar-1 | Grinding Machine; Grinder | 8h | 8h | 225 | 225 | 225 |
| 218 | 6.12.9 | Sh-LS2E.P | 0.5d | 2018-04-30 12:00 A | 2018-04-30 16:00 A | 217FS+34d | 100% |  | 2018-04-21 20:00 | 2018-04-23 08:00 | 0.5d |  |  | TEAM_2Shift_Calendar-1 | Grinding Machine; Grinder | 8h | 8h | 225 | 225 | 225 |
| 219 | 6.12.10 | Sh-LS3E.P | 0.5d | 2018-04-30 16:00 A | 2018-04-30 20:00 A | 218 | 100% |  | 2018-04-23 08:00 | 2018-04-23 12:00 | 0.5d |  |  | TEAM_2Shift_Calendar-1 | Grinding Machine; Grinder | 8h | 8h | 225 | 225 | 225 |
| 220 | 6.12.11 | Sh-LS1Pre-Bending | 1d | 2018-04-30 20:00 A | 2018-05-02 12:00 A | 219 | 100% |  | 2018-04-23 12:00 | 2018-04-23 20:00 | 1d |  |  | TEAM_2Shift_Calendar-1 | Helper; Plate Bending Machine; Fitter [200%] | 24h | 24h | 1,125 | 1,125 | 1,125 |
| 221 | 6.12.12 | Sh-LS2Pre-Bending | 1d | 2018-05-02 12:00 A | 2018-05-02 20:00 A | 220 | 100% |  | 2018-04-23 20:00 | 2018-04-24 12:00 | 1d |  |  | TEAM_2Shift_Calendar-1 | Helper; Plate Bending Machine; Fitter [200%] | 24h | 24h | 1,125 | 1,125 | 1,125 |
| 222 | 6.12.13 | Sh-LS3Pre-Bending | 1d | 2018-05-02 20:00 A | 2018-05-03 12:00 A | 221 | 100% |  | 2018-04-24 12:00 | 2018-04-24 20:00 | 1d |  |  | TEAM_2Shift_Calendar-1 | Helper; Plate Bending Machine; Fitter [200%] | 24h | 24h | 1,125 | 1,125 | 1,125 |
| 223 | 6.12.14 | Sh-LS1Pre-BendCut-off | 1d | 2018-05-03 12:00 A | 2018-05-03 20:00 A | 222 | 100% |  | 2018-04-24 20:00 | 2018-04-25 12:00 | 1d |  |  | TEAM_2Shift_Calendar-1 | OAGM; Gas Cutter | 16h | 16h | 550 | 550 | 550 |
| 224 | 6.12.15 | Sh-LS2Pre-BendCut-off | 1d | 2018-05-03 20:00 A | 2018-05-04 12:00 A | 223 | 100% |  | 2018-04-25 12:00 | 2018-04-25 20:00 | 1d |  |  | TEAM_2Shift_Calendar-1 | OAGM; Gas Cutter | 16h | 16h | 550 | 550 | 550 |
| 225 | 6.12.16 | Sh-LS3Pre-BendCut-off | 1d | 2018-05-04 12:00 A | 2018-05-04 20:00 A | 224 | 100% |  | 2018-04-25 20:00 | 2018-04-26 12:00 | 1d |  |  | TEAM_2Shift_Calendar-1 | OAGM; Gas Cutter | 16h | 16h | 550 | 550 | 550 |
| 226 | 6.12.17 | Sh-LS1E.P | 1d | 2018-05-04 20:00 A | 2018-05-05 12:00 A | 225 | 100% |  | 2018-04-26 12:00 | 2018-04-26 20:00 | 1d |  |  | TEAM_2Shift_Calendar-1 | Grinding Machine; Grinder | 16h | 16h | 450 | 450 | 450 |
| 227 | 6.12.18 | Sh-LS2E.P | 1d | 2018-05-05 12:00 A | 2018-05-05 20:00 A | 226 | 100% |  | 2018-04-26 20:00 | 2018-04-27 12:00 | 1d |  |  | TEAM_2Shift_Calendar-1 | Grinding Machine; Grinder | 16h | 16h | 450 | 450 | 450 |
| 228 | 6.12.19 | Sh-LS3E.P | 1d | 2018-05-05 20:00 A | 2018-05-07 12:00 A | 227 | 100% |  | 2018-04-27 12:00 | 2018-04-27 20:00 | 1d |  |  | TEAM_2Shift_Calendar-1 | Grinding Machine; Grinder | 16h | 16h | 450 | 450 | 450 |
| 229 | 6.12.20 | Sh-LS1Rolling | 1d | 2018-05-07 12:00 A | 2018-05-07 20:00 A | 228 | 100% |  | 2018-04-27 20:00 | 2018-04-30 12:00 | 1d |  |  | TEAM_2Shift_Calendar-1 | Helper; Rolling Machine; Fitter | 24h | 24h | 950 | 950 | 950 |
| 230 | 6.12.21 | Sh-LS2Rolling | 1d | 2018-05-07 20:00 A | 2018-05-08 12:00 A | 229 | 100% |  | 2018-04-30 12:00 | 2018-04-30 20:00 | 1d |  |  | TEAM_2Shift_Calendar-1 | Helper; Rolling Machine; Fitter | 24h | 24h | 950 | 950 | 950 |
| 231 | 6.12.22 | Sh-LS3Rolling | 1d | 2018-05-08 12:00 A | 2018-05-08 20:00 A | 230 | 100% |  | 2018-04-30 20:00 | 2018-05-02 12:00 | 1d |  |  | TEAM_2Shift_Calendar-1 | Helper; Rolling Machine; Fitter | 24h | 24h | 950 | 950 | 950 |
| 232 | 6.12.23 | Sh-LS1Fitup | 1d | 2018-05-21 20:00 | 2018-05-22 12:00 | 231FS+20d |  |  | 2018-05-02 12:00 | 2018-05-02 20:00 | 1d | 57.63d | 0d | TEAM_2Shift_Calendar-1 | Helper [200%]; SMAW Welder; SMAW Welding Machine; Fitter | 32h |  | 1,520 | 1,520 |  |
| 233 | 6.12.24 | Sh-LS2Fitup | 1d | 2018-05-22 12:00 | 2018-05-22 20:00 | 232 |  |  | 2018-05-02 20:00 | 2018-05-03 12:00 | 1d | 57.63d | 0d | TEAM_2Shift_Calendar-1 | Helper [200%]; SMAW Welder; SMAW Welding Machine; Fitter | 32h |  | 1,520 | 1,520 |  |
| 234 | 6.12.25 | Sh-LS3Fitup | 1d | 2018-05-22 20:00 | 2018-05-23 12:00 | 233 |  |  | 2018-05-03 12:00 | 2018-05-03 20:00 | 1d | 57.63d | 0d | TEAM_2Shift_Calendar-1 | Helper [200%]; SMAW Welder; SMAW Welding Machine; Fitter | 32h |  | 1,520 | 1,520 |  |
| 235 | 6.12.26 | Sh-LS1,2,3 Inspection | 0.5d | 2018-05-23 12:00 | 2018-05-23 16:00 | 234 |  |  | 2018-05-03 20:00 | 2018-05-04 08:00 | 0.5d | 57.63d | 0d | TEAM_2Shift_Calendar-1 | Helper; Fitter | 8h |  | 475 | 475 |  |
| 236 | 6.12.27 | Sh-LS1WeldingArrangement | 4h | 2018-05-23 16:00 | 2018-05-23 20:00 | 235 |  |  | 2018-05-04 08:00 | 2018-05-04 12:00 | 4h | 57.63d | 0d | TEAM_2Shift_Calendar-1 | Fitter | 4h |  | 275 | 275 |  |
| 237 | 6.12.28 | Sh-LS2WeldingArrangement | 4h | 2018-05-23 20:00 | 2018-05-24 08:00 | 236 |  |  | 2018-05-04 12:00 | 2018-05-04 16:00 | 4h | 57.63d | 0d | TEAM_2Shift_Calendar-1 | Fitter | 4h |  | 275 | 275 |  |
| 238 | 6.12.29 | Sh-LS3WeldingArrangement | 4h | 2018-05-24 08:00 | 2018-05-24 12:00 | 237 |  |  | 2018-05-04 16:00 | 2018-05-04 20:00 | 4h | 57.63d | 0d | TEAM_2Shift_Calendar-1 | Fitter | 4h |  | 275 | 275 |  |
| 239 | 6.12.30 | Sh-LS1Welding | 1d | 2018-05-24 12:00 | 2018-05-24 20:00 | 238 |  |  | 2018-05-04 20:00 | 2018-05-05 12:00 | 1d | 57.63d | 0d | TEAM_2Shift_Calendar-1 | SMAW Welder; SMAW Welding Machine; Helper [200%] | 24h |  | 1,012.5 | 1,012.5 |  |
| 240 | 6.12.31 | Sh-LS2Welding | 1d | 2018-05-24 20:00 | 2018-05-25 12:00 | 239 |  |  | 2018-05-05 12:00 | 2018-05-05 20:00 | 1d | 57.63d | 0d | TEAM_2Shift_Calendar-1 | SMAW Welder; SMAW Welding Machine; Helper [200%] | 24h |  | 1,012.5 | 1,012.5 |  |
| 241 | 6.12.32 | Sh-LS3Welding | 1d | 2018-05-25 12:00 | 2018-05-25 20:00 | 240 |  |  | 2018-05-05 20:00 | 2018-05-07 12:00 | 1d | 57.63d | 0d | TEAM_2Shift_Calendar-1 | SMAW Welder; SMAW Welding Machine; Helper [200%] | 24h |  | 1,012.5 | 1,012.5 |  |
| 242 | 6.12.33 | Sh-LS1 BackchipGrinding | 0.5d | 2018-05-25 20:00 | 2018-05-28 08:00 | 241 |  |  | 2018-05-07 12:00 | 2018-05-07 16:00 | 0.5d | 57.63d | 0d | TEAM_2Shift_Calendar-1 | Grinding Machine; Grinder | 8h |  | 225 | 225 |  |
| 243 | 6.12.34 | Sh-LS2 BackchipGrinding | 0.5d | 2018-05-28 08:00 | 2018-05-28 12:00 | 242 |  |  | 2018-05-07 16:00 | 2018-05-07 20:00 | 0.5d | 57.63d | 0d | TEAM_2Shift_Calendar-1 | Grinding Machine; Grinder | 8h |  | 225 | 225 |  |
| 244 | 6.12.35 | Sh-LS3 BackchipGrinding | 0.5d | 2018-05-28 12:00 | 2018-05-28 16:00 | 243 |  |  | 2018-05-07 20:00 | 2018-05-08 08:00 | 0.5d | 57.63d | 0d | TEAM_2Shift_Calendar-1 | Grinding Machine; Grinder | 8h |  | 225 | 225 |  |
| 245 | 6.12.36 | Sh-LS1 InsideWelding | 1d | 2018-05-28 16:00 | 2018-05-29 08:00 | 244 |  |  | 2018-05-08 08:00 | 2018-05-08 16:00 | 1d | 57.63d | 0d | TEAM_2Shift_Calendar-1 | SMAW Welder; SMAW Welding Machine; Helper [200%] | 24h |  | 1,012.5 | 1,012.5 |  |
| 246 | 6.12.37 | Sh-LS2 InsideWelding | 1d | 2018-05-29 08:00 | 2018-05-29 16:00 | 245 |  |  | 2018-05-08 16:00 | 2018-05-09 08:00 | 1d | 57.63d | 0d | TEAM_2Shift_Calendar-1 | SMAW Welder; SMAW Welding Machine; Helper [200%] | 24h |  | 1,012.5 | 1,012.5 |  |
| 247 | 6.12.38 | Sh-LS3 InsideWelding | 1d | 2018-05-29 16:00 | 2018-05-30 08:00 | 246 |  |  | 2018-05-09 08:00 | 2018-05-09 16:00 | 1d | 57.63d | 0d | TEAM_2Shift_Calendar-1 | SMAW Welder; SMAW Welding Machine; Helper [200%] | 24h |  | 1,012.5 | 1,012.5 |  |
| 248 | 6.12.39 | Sh-LS1 Inside FlushGrinding | 0.5d | 2018-05-30 08:00 | 2018-05-30 12:00 | 247 |  |  | 2018-05-09 16:00 | 2018-05-09 20:00 | 0.5d | 57.63d | 0d | TEAM_2Shift_Calendar-1 | Grinding Machine; Grinder | 8h |  | 225 | 225 |  |
| 249 | 6.12.40 | Sh-LS2 Inside FlushGrinding | 0.5d | 2018-05-30 12:00 | 2018-05-30 16:00 | 248 |  |  | 2018-05-09 20:00 | 2018-05-10 08:00 | 0.5d | 57.63d | 0d | TEAM_2Shift_Calendar-1 | Grinding Machine; Grinder | 8h |  | 225 | 225 |  |
| 250 | 6.12.41 | Sh-LS3 Inside FlushGrinding | 0.5d | 2018-05-30 16:00 | 2018-05-30 20:00 | 249 |  |  | 2018-05-10 08:00 | 2018-05-10 12:00 | 0.5d | 57.63d | 0d | TEAM_2Shift_Calendar-1 | Grinding Machine; Grinder | 8h |  | 225 | 225 |  |
| 251 | 6.12.42 | Sh-LS1 DPCheck | 2h | 2018-05-30 20:00 | 2018-05-30 22:00 | 250 |  |  | 2018-05-10 12:00 | 2018-05-10 14:00 | 2h | 57.63d | 0d | TEAM_2Shift_Calendar-1 | Fitter | 2h |  | 137.5 | 137.5 |  |
| 252 | 6.12.43 | Sh-LS2 DPCheck | 2h | 2018-05-31 06:00 | 2018-05-31 08:00 | 251 |  |  | 2018-05-10 14:00 | 2018-05-10 16:00 | 2h | 57.63d | 0d | TEAM_2Shift_Calendar-1 | Fitter | 2h |  | 137.5 | 137.5 |  |
| 253 | 6.12.44 | Sh-LS3 DPCheck | 2h | 2018-05-31 08:00 | 2018-05-31 10:00 | 252 |  |  | 2018-05-10 16:00 | 2018-05-10 18:00 | 2h | 57.63d | 0d | TEAM_2Shift_Calendar-1 | Fitter | 2h |  | 137.5 | 137.5 |  |
| 254 | 6.12.45 | Sh-LS1 Re-rolling | 0.5d | 2018-05-31 10:00 | 2018-05-31 14:00 | 253 |  |  | 2018-05-10 18:00 | 2018-05-10 22:00 | 0.5d | 57.63d | 0d | TEAM_2Shift_Calendar-1 | Helper [200%]; Fitter | 12h |  | 675 | 675 |  |
| 255 | 6.12.46 | Sh-LS2 Re-rolling | 0.5d | 2018-05-31 14:00 | 2018-05-31 18:00 | 254 |  |  | 2018-05-11 06:00 | 2018-05-11 10:00 | 0.5d | 57.63d | 0d | TEAM_2Shift_Calendar-1 | Helper [200%]; Fitter | 12h |  | 675 | 675 |  |
| 256 | 6.12.47 | Sh-LS3 Re-rolling | 0.5d | 2018-05-31 18:00 | 2018-05-31 22:00 | 255 |  |  | 2018-05-11 10:00 | 2018-05-11 14:00 | 0.5d | 57.63d | 0d | TEAM_2Shift_Calendar-1 | Helper [200%]; Fitter | 12h |  | 675 | 675 |  |
| 257 | 6.12.48 | Sh-LS1 Radiography | 3h | 2018-06-01 06:00 | 2018-06-01 09:00 | 256 |  |  | 2018-05-11 14:00 | 2018-05-11 17:00 | 3h | 57.63d | 0d | TEAM_2Shift_Calendar-1 | SC (Work) | 3h |  |  |  |  |
| 258 | 6.12.49 | Sh-LS2 Radiography | 0.5d | 2018-06-01 09:00 | 2018-06-01 13:00 | 257 |  |  | 2018-05-11 17:00 | 2018-05-11 21:00 | 0.5d | 57.63d | 0d | TEAM_2Shift_Calendar-1 | SC (Work) | 4h |  |  |  |  |
| 259 | 6.12.50 | Sh-LS3 Radiography | 0.5d | 2018-06-01 13:00 | 2018-06-01 17:00 | 258 |  |  | 2018-05-11 21:00 | 2018-05-14 09:00 | 0.5d | 57.63d | 0d | TEAM_2Shift_Calendar-1 | SC (Work) | 4h |  |  |  |  |
| 260 | 6.12.51 | Sh-LS1 E.P forCir-Seam | 3h | 2018-06-01 17:00 | 2018-06-01 20:00 | 259 |  |  | 2018-05-14 09:00 | 2018-05-14 12:00 | 3h | 57.63d | 0d | TEAM_2Shift_Calendar-1 | Grinding Machine; Grinder | 6h |  | 168.75 | 168.75 |  |
| 261 | 6.12.52 | Sh-LS2 E.P forCir-seam | 3h | 2018-06-01 20:00 | 2018-06-02 07:00 | 260 |  |  | 2018-05-14 12:00 | 2018-05-14 15:00 | 3h | 57.63d | 0d | TEAM_2Shift_Calendar-1 | Grinding Machine; Grinder | 6h |  | 168.75 | 168.75 |  |
| 262 | 6.12.53 | Sh-LS3 E.P forCir-Seam | 3h | 2018-06-02 07:00 | 2018-06-02 10:00 | 261 |  |  | 2018-05-14 15:00 | 2018-05-14 18:00 | 3h | 57.63d | 0d | TEAM_2Shift_Calendar-1 | Grinding Machine; Grinder | 6h |  | 168.75 | 168.75 |  |
| 263 | 6.12.54 | Sh-CS1Fitup | 0.5d | 2018-06-02 10:00 | 2018-06-02 14:00 | 262 |  |  | 2018-05-14 18:00 | 2018-05-14 22:00 | 0.5d | 57.63d | 0d | TEAM_2Shift_Calendar-1 | Helper [200%]; SMAW Welder; SMAW Welding Machine; Fitter | 16h |  | 760 | 760 |  |
| 264 | 6.12.55 | Sh-CS1 Inspection | 3h | 2018-06-02 14:00 | 2018-06-02 17:00 | 263 |  |  | 2018-05-15 06:00 | 2018-05-15 09:00 | 3h | 57.63d | 0d | TEAM_2Shift_Calendar-1 | Fitter; Helper | 6h |  | 356.25 | 356.25 |  |
| 265 | 6.12.56 | Sh-CS1 Welding | 2d | 2018-06-02 17:00 | 2018-06-04 17:00 | 264 |  |  | 2018-05-15 09:00 | 2018-05-16 09:00 | 2d | 57.63d | 0d | TEAM_2Shift_Calendar-1 | SMAW Welder; SMAW Welding Machine; Helper [200%] | 48h |  | 2,025 | 2,025 |  |
| 266 | 6.12.57 | Sh-CS1 BackchipGrinding | 0.5d | 2018-06-04 17:00 | 2018-06-04 21:00 | 265 |  |  | 2018-05-16 09:00 | 2018-05-16 13:00 | 0.5d | 57.63d | 0d | TEAM_2Shift_Calendar-1 | Grinding Machine; Grinder | 8h |  | 225 | 225 |  |
| 267 | 6.12.58 | Sh-CS1 InsideWelding | 1d | 2018-06-04 21:00 | 2018-06-05 13:00 | 266 |  |  | 2018-05-16 13:00 | 2018-05-16 21:00 | 1d | 57.63d | 0d | TEAM_2Shift_Calendar-1 | SMAW Welder; SMAW Welding Machine; Helper [200%] | 24h |  | 1,012.5 | 1,012.5 |  |
| 268 | 6.12.59 | Sh-CS1 FlushGrinding | 0.5d | 2018-06-05 13:00 | 2018-06-05 17:00 | 267 |  |  | 2018-05-16 21:00 | 2018-05-17 09:00 | 0.5d | 57.63d | 0d | TEAM_2Shift_Calendar-1 | Grinding Machine; Grinder | 8h |  | 225 | 225 |  |
| 269 | 6.12.60 | Sh-CS1 DPCheck | 3h | 2018-06-05 17:00 | 2018-06-05 20:00 | 268 |  |  | 2018-05-17 09:00 | 2018-05-17 12:00 | 3h | 57.63d | 0d | TEAM_2Shift_Calendar-1 | Fitter | 3h |  | 206.25 | 206.25 |  |
| 270 | 6.12.61 | Sh-CS1 Radiography | 8.63h | 2018-06-05 20:00 | 2018-06-06 12:37 | 269 |  |  | 2018-05-17 12:00 | 2018-05-17 20:37 | 8.63h | 57.63d | 0d | TEAM_2Shift_Calendar-1 | SC (Work) | 8.63h |  |  |  |  |
| 271 | 6.12.62 | Sh-CS2 Fitup | 1d | 2018-06-06 12:37 | 2018-06-06 20:37 | 270 |  |  | 2018-05-17 20:37 | 2018-05-18 12:37 | 1d | 57.63d | 0d | TEAM_2Shift_Calendar-1 | Helper [200%]; SMAW Welder; SMAW Welding Machine; Fitter | 32h |  | 1,520 | 1,520 |  |
| 272 | 6.12.63 | Sh-CS2 Inspection | 0.5d | 2018-06-06 20:37 | 2018-06-07 08:37 | 271 |  |  | 2018-05-18 12:37 | 2018-05-18 16:37 | 0.5d | 57.63d | 0d | TEAM_2Shift_Calendar-1 | Fitter; Helper | 8h |  | 475 | 475 |  |
| 273 | 6.12.64 | Sh-CS2 Welding | 2d | 2018-06-07 08:37 | 2018-06-08 08:37 | 272 |  |  | 2018-05-18 16:37 | 2018-05-19 16:37 | 2d | 57.63d | 0d | TEAM_2Shift_Calendar-1 | SMAW Welder; SMAW Welding Machine; Helper [200%] | 48h |  | 2,025 | 2,025 |  |
| 274 | 6.12.65 | Sh-CS2 BackchipGrinding | 0.5d | 2018-06-08 08:37 | 2018-06-08 12:37 | 273 |  |  | 2018-05-19 16:37 | 2018-05-19 20:37 | 0.5d | 57.63d | 0d | TEAM_2Shift_Calendar-1 | Grinding Machine; Grinder | 8h |  | 225 | 225 |  |
| 275 | 6.12.66 | Sh-CS2 InsideWelding | 0.5d | 2018-06-08 12:37 | 2018-06-08 16:37 | 274 |  |  | 2018-05-19 20:37 | 2018-05-21 08:37 | 0.5d | 57.63d | 0d | TEAM_2Shift_Calendar-1 | SMAW Welder; SMAW Welding Machine; Helper [200%] | 12h |  | 506.25 | 506.25 |  |
| 276 | 6.12.67 | Sh-CS2 FlushGrinding | 0.5d | 2018-06-08 16:37 | 2018-06-08 20:37 | 275 |  |  | 2018-05-21 08:37 | 2018-05-21 12:37 | 0.5d | 57.63d | 0d | TEAM_2Shift_Calendar-1 | Grinding Machine; Grinder | 8h |  | 225 | 225 |  |
| 277 | 6.12.68 | Sh-CS2 DPCheck | 3h | 2018-06-08 20:37 | 2018-06-11 07:37 | 276 |  |  | 2018-05-21 12:37 | 2018-05-21 15:37 | 3h | 57.63d | 0d | TEAM_2Shift_Calendar-1 | Fitter | 3h |  | 206.25 | 206.25 |  |
| 278 | 6.12.69 | Sh-CS2 Radiography | 4h | 2018-06-11 07:37 | 2018-06-11 11:37 | 277 |  |  | 2018-05-21 15:37 | 2018-05-21 19:37 | 4h | 57.63d | 0d | TEAM_2Shift_Calendar-1 | SC (Work) | 4h |  |  |  |  |

Notes:
- 210: DEV.LG1101x5614LGx14T

| ID | WBS | Task | Duration | Start | Finish | Predecessors | Baseline start | Baseline finish | Baseline duration | Total slack | Free slack | Calendar | Resources | Work | Cost | Baseline cost |
| --- | --- | --- | --- | --- | --- | --- | --- | --- | --- | --- | --- | --- | --- | --- | --- | --- |
| 279 | 6.12.70 | Sh OrienationMkg | 2h | 2018-06-11 11:37 | 2018-06-11 13:37 | 278 | 2018-05-21 19:37 | 2018-05-21 21:37 | 2h | 57.63d | 0d | TEAM_2Shift_Calendar-1 | Helper; Fitter | 4h | 237.5 | 237.5 |
| 280 | 6.12.71 | Sh Extra Length Cutting | 3h | 2018-06-11 13:37 | 2018-06-11 16:37 | 279 | 2018-05-21 21:37 | 2018-05-22 08:37 | 3h | 57.63d | 0d | TEAM_2Shift_Calendar-1 | OAGM; Helper; Gas Cutter | 9h | 356.25 | 356.25 |
| 281 | 6.12.72 | ShE.P of Cir-SeamSide | 3h | 2018-06-11 16:37 | 2018-06-11 19:37 | 280 | 2018-05-22 08:37 | 2018-05-22 11:37 | 3h | 57.63d | 0d | TEAM_2Shift_Calendar-1 | Grinding Machine; Grinder | 6h | 168.75 | 168.75 |
| 282 | 6.12.73 | Sh-front FlangeFitup | 3h | 2018-06-11 19:37 | 2018-06-12 06:37 | 37, 281 | 2018-05-22 11:37 | 2018-05-22 14:37 | 3h | 57.63d | 0d | TEAM_2Shift_Calendar-1 | Helper [200%]; SMAW Welder; SMAW Welding Machine; Forging Non-Std (Cost) [0.1%]; Fitter | 12h | 570 | 570 |
| 283 | 6.12.74 | Sh-front FlangeInspection | 2h | 2018-06-12 06:37 | 2018-06-12 08:37 | 282 | 2018-05-22 14:37 | 2018-05-22 16:37 | 2h | 57.63d | 0d | TEAM_2Shift_Calendar-1 | Helper; Fitter | 4h | 237.5 | 237.5 |
| 284 | 6.12.75 | Sh-front FlangeWelding | 0.5d | 2018-06-12 08:37 | 2018-06-12 12:37 | 283 | 2018-05-22 16:37 | 2018-05-22 20:37 | 0.5d | 57.63d | 0d | TEAM_2Shift_Calendar-1 | SMAW Welder; SMAW Welding Machine; Helper [200%] | 12h | 506.25 | 506.25 |
| 285 | 6.12.76 | Sh-front FlangeBackchip | 3h | 2018-06-12 12:37 | 2018-06-12 15:37 | 284 | 2018-05-22 20:37 | 2018-05-23 07:37 | 3h | 57.63d | 0d | TEAM_2Shift_Calendar-1 | Grinding Machine; Grinder | 6h | 168.75 | 168.75 |
| 286 | 6.12.77 | Sh-front Flange InsideWelding | 0.5d | 2018-06-12 15:37 | 2018-06-12 19:37 | 285 | 2018-05-23 07:37 | 2018-05-23 11:37 | 0.5d | 57.63d | 0d | TEAM_2Shift_Calendar-1 | SMAW Welder; SMAW Welding Machine; Helper [200%] | 12h | 506.25 | 506.25 |
| 287 | 6.12.78 | Sh-front Flange Flush Grinding | 2h | 2018-06-12 19:37 | 2018-06-12 21:37 | 286 | 2018-05-23 11:37 | 2018-05-23 13:37 | 2h | 57.63d | 0d | TEAM_2Shift_Calendar-1 | Grinding Machine; Grinder | 4h | 112.5 | 112.5 |
| 288 | 6.12.79 | Sh-front Flange DP Check | 2h | 2018-06-12 21:37 | 2018-06-13 07:37 | 287 | 2018-05-23 13:37 | 2018-05-23 15:37 | 2h | 57.63d | 0d | TEAM_2Shift_Calendar-1 | Fitter | 2h | 137.5 | 137.5 |
| 289 | 6.12.80 | Sh-front Flange Radiography | 4h | 2018-06-13 07:37 | 2018-06-13 11:37 | 288 | 2018-05-23 15:37 | 2018-05-23 19:37 | 4h | 57.63d | 0d | TEAM_2Shift_Calendar-1 | SC (Work) | 4h |  |  |
| 290 | 6.12.81 | Sh-RearFlangeFitup | 0.5d | 2018-06-13 11:37 | 2018-06-13 15:37 | 37, 289 | 2018-05-23 19:37 | 2018-05-24 07:37 | 0.5d | 57.63d | 0d | TEAM_2Shift_Calendar-1 | Helper [200%]; SMAW Welder; SMAW Welding Machine; Forging Non-Std (Cost) [0.1%]; Fitter | 16h | 760 | 760 |
| 291 | 6.12.82 | Sh-Rear Flange Inspection | 3h | 2018-06-13 15:37 | 2018-06-13 18:37 | 290 | 2018-05-24 07:37 | 2018-05-24 10:37 | 3h | 57.63d | 0d | TEAM_2Shift_Calendar-1 | Helper; Fitter | 6h | 356.25 | 356.25 |
| 292 | 6.12.83 | Sh-Rear Flange Welding | 1d | 2018-06-13 18:37 | 2018-06-14 10:37 | 291 | 2018-05-24 10:37 | 2018-05-24 18:37 | 1d | 57.63d | 0d | TEAM_2Shift_Calendar-1 | SMAW Welder; SMAW Welding Machine; Helper [200%] | 24h | 1,012.5 | 1,012.5 |
| 293 | 6.12.84 | Sh-Rear Flange Backchip | 3h | 2018-06-14 10:37 | 2018-06-14 13:37 | 292 | 2018-05-24 18:37 | 2018-05-24 21:37 | 3h | 57.63d | 0d | TEAM_2Shift_Calendar-1 | Grinding Machine; Grinder | 6h | 168.75 | 168.75 |
| 294 | 6.12.85 | Sh-Rear Flange Inside Welding | 0.5d | 2018-06-14 13:37 | 2018-06-14 17:37 | 293 | 2018-05-24 21:37 | 2018-05-25 09:37 | 0.5d | 57.63d | 0d | TEAM_2Shift_Calendar-1 | SMAW Welder; SMAW Welding Machine; Helper [200%] | 12h | 506.25 | 506.25 |
| 295 | 6.12.86 | Sh-Rear Flange Flush Grinding | 3h | 2018-06-14 17:37 | 2018-06-14 20:37 | 294 | 2018-05-25 09:37 | 2018-05-25 12:37 | 3h | 57.63d | 0d | TEAM_2Shift_Calendar-1 | Grinding Machine; Grinder | 6h | 168.75 | 168.75 |
| 296 | 6.12.87 | Sh-RearFlangeDPCheck | 1h | 2018-06-14 20:37 | 2018-06-14 21:37 | 295 | 2018-05-25 12:37 | 2018-05-25 13:37 | 1h | 57.63d | 0d | TEAM_2Shift_Calendar-1 | Fitter | 1h | 68.75 | 68.75 |
| 297 | 6.12.88 | Sh-RearFlangeRadiography | 4h | 2018-06-14 21:37 | 2018-06-15 09:37 | 296 | 2018-05-25 13:37 | 2018-05-25 17:37 | 4h | 57.63d | 0d | TEAM_2Shift_Calendar-1 | SC (Work) | 4h |  |  |
| 298 | 6.12.89 | ShNozzleOpeningfor N1,N2 | 1d | 2018-06-15 09:37 | 2018-06-15 17:37 | 297 | 2018-05-25 17:37 | 2018-05-28 09:37 | 1d | 57.63d | 0d | TEAM_2Shift_Calendar-1 | Gas Cutter; OAGM; Helper | 24h | 950 | 950 |
| 299 | 6.12.90 | Sh Nozzle Opening E.P | 3h | 2018-06-15 17:37 | 2018-06-15 20:37 | 298 | 2018-05-28 09:37 | 2018-05-28 12:37 | 3h | 57.63d | 0d | TEAM_2Shift_Calendar-1 | Grinding Machine; Grinder | 6h | 168.75 | 168.75 |
| 300 | 6.12.91 | Sh Nozzle RFpadfitup N2 | 1d | 2018-06-15 20:37 | 2018-06-16 12:37 | 299 | 2018-05-28 12:37 | 2018-05-28 20:37 | 1d | 57.63d | 0d | TEAM_2Shift_Calendar-1 | Helper [200%]; SMAW Welder; SMAW Welding Machine; Fitter | 32h | 1,520 | 1,520 |
| 301 | 6.12.92 | Sh Nozzle RF padfitup INSPN | 3h | 2018-06-16 12:37 | 2018-06-16 15:37 | 300 | 2018-05-28 20:37 | 2018-05-29 07:37 | 3h | 57.63d | 0d | TEAM_2Shift_Calendar-1 | Fitter [200%] | 6h | 412.5 | 412.5 |
| 302 | 6.12.93 | Sh Nozzle RFpad Welding N2 | 1d | 2018-06-16 15:37 | 2018-06-18 07:37 | 301 | 2018-05-29 07:37 | 2018-05-29 15:37 | 1d | 57.63d | 0d | TEAM_2Shift_Calendar-1 | SMAW Welder; SMAW Welding Machine; Helper [200%] | 24h | 1,012.5 | 1,012.5 |
| 303 | 6.12.94 | Sh Nozzle RFpad Air leaktest | 0.5d | 2018-06-18 07:37 | 2018-06-18 11:37 | 302 | 2018-05-29 15:37 | 2018-05-29 19:37 | 0.5d | 57.63d | 0d | TEAM_2Shift_Calendar-1 | Helper; Fitter | 8h | 475 | 475 |
| 304 | 6.12.95 | Sh Nozzle (N1,N2) Fitup Inspection | 3h | 2018-06-18 11:37 | 2018-06-18 14:37 | 42, 303 | 2018-05-29 19:37 | 2018-05-30 06:37 | 3h | 57.63d | 0d | TEAM_2Shift_Calendar-1 | Helper [200%]; SMAW Welder; SMAW Welding Machine; Pipe (Cost) [0.1%]; Fitter | 12h | 570 | 570 |
| 305 | 6.12.96 | Sh Nozzle Welding Arragement | 2h | 2018-06-18 14:37 | 2018-06-18 16:37 | 304 | 2018-05-30 06:37 | 2018-05-30 08:37 | 2h | 57.63d | 0d | TEAM_2Shift_Calendar-1 | Helper; Fitter | 4h | 237.5 | 237.5 |
| 306 | 6.12.97 | Sh Nozzle Welding | 1d | 2018-06-18 16:37 | 2018-06-19 08:37 | 305 | 2018-05-30 08:37 | 2018-05-30 16:37 | 1d | 57.63d | 0d | TEAM_2Shift_Calendar-1 | Helper; SMAW Welder; SMAW Welding Machine; Fitter | 24h | 1,125 | 1,125 |
| 307 | 6.12.98 | Sh Nozzle Inside Grinding | 2h | 2018-06-19 08:37 | 2018-06-19 10:37 | 306 | 2018-05-30 16:37 | 2018-05-30 18:37 | 2h | 57.63d | 0d | TEAM_2Shift_Calendar-1 | Grinding Machine; Grinder | 4h | 112.5 | 112.5 |
| 308 | 6.12.99 | Sh Nozzle Inside Welding | 4h | 2018-06-19 10:37 | 2018-06-19 14:37 | 307 | 2018-05-30 18:37 | 2018-05-31 06:37 | 4h | 57.63d | 0d | TEAM_2Shift_Calendar-1 | SMAW Welder; SMAW Welding Machine; Fitter; Helper | 8h | 375 | 375 |
| 309 | 6.12.100 | Sh Nozzle Inside DPcheck | 1h | 2018-06-19 14:37 | 2018-06-19 15:37 | 308 | 2018-05-31 06:37 | 2018-05-31 07:37 | 1h | 57.63d | 0d | TEAM_2Shift_Calendar-1 | Fitter | 1h | 68.75 | 68.75 |
| 310 | 6.12.101 | N7,N8,N9 MP connection marking | 1h | 2018-06-19 15:37 | 2018-06-19 16:37 | 309 | 2018-05-31 07:37 | 2018-05-31 08:37 | 1h | 57.63d | 0d | TEAM_2Shift_Calendar-1 | Fitter; Helper | 2h | 118.75 | 118.75 |
| 311 | 6.12.102 | opening | 1d | 2018-06-19 16:37 | 2018-06-20 08:37 | 310 | 2018-05-31 08:37 | 2018-05-31 16:37 | 1d | 57.63d | 0d | TEAM_2Shift_Calendar-1 | Gas Cutter; OAGM; Helper | 24h | 950 | 950 |
| 312 | 6.12.103 | fitup | 0.5d | 2018-06-20 08:37 | 2018-06-20 12:37 | 41, 311 | 2018-05-31 16:37 | 2018-05-31 20:37 | 0.5d | 57.63d | 0d | TEAM_2Shift_Calendar-1 | Helper; SMAW Welder; SMAW Welding Machine; Fitter | 12h | 562.5 | 562.5 |
| 313 | 6.12.104 | Inspection | 3h | 2018-06-20 12:37 | 2018-06-20 15:37 | 312 | 2018-05-31 20:37 | 2018-06-01 07:37 | 3h | 57.63d | 0d | TEAM_2Shift_Calendar-1 | Fitter; Helper | 6h | 356.25 | 356.25 |
| 314 | 6.12.105 | welding | 1d | 2018-06-20 15:37 | 2018-06-21 07:37 | 313 | 2018-06-01 07:37 | 2018-06-01 15:37 | 1d | 57.63d | 0d | TEAM_2Shift_Calendar-1 | Helper; SMAW Welder; SMAW Welding Machine; Fitter | 24h | 1,125 | 1,125 |
| 315 | 6.12.106 | grinding | 3h | 2018-06-21 07:37 | 2018-06-21 10:37 | 314 | 2018-06-01 15:37 | 2018-06-01 18:37 | 3h | 57.63d | 0d | TEAM_2Shift_Calendar-1 | Grinding Machine; Grinder | 6h | 168.75 | 168.75 |
| 316 | 6.12.107 | Dpcheck | 1h | 2018-06-21 10:37 | 2018-06-21 11:37 | 315 | 2018-06-01 18:37 | 2018-06-01 19:37 | 1h | 57.63d | 0d | TEAM_2Shift_Calendar-1 | Fitter | 1h | 68.75 | 68.75 |
| 317 | 6.12.108 | ShNozzleRadiography | 1.1d | 2018-06-21 11:37 | 2018-06-21 20:25 | 316 | 2018-06-01 19:37 | 2018-06-02 12:25 | 1.1d | 57.63d | 0d | TEAM_2Shift_Calendar-1 | SC (Work) | 8.8h |  |  |
| 318 | 6.12.109 | Sh+SaddlePadFitup | 3h | 2018-06-21 20:25 | 2018-06-22 07:25 | 34, 317 | 2018-06-02 12:25 | 2018-06-02 15:25 | 3h | 57.63d | 0d | TEAM_2Shift_Calendar-1 | SMAW Welder; SMAW Welding Machine; Fitter; Helper | 6h | 281.25 | 281.25 |
| 319 | 6.12.110 | Sh+SaddlePadWeldingArrangement | 1h | 2018-06-22 07:25 | 2018-06-22 08:25 | 318 | 2018-06-02 15:25 | 2018-06-02 16:25 | 1h | 57.63d | 0d | TEAM_2Shift_Calendar-1 | Helper; Fitter | 2h | 118.75 | 118.75 |
| 320 | 6.12.111 | Sh+SaddlePadWelding | 0.5d | 2018-06-22 08:25 | 2018-06-22 12:25 | 319 | 2018-06-02 16:25 | 2018-06-02 20:25 | 0.5d | 57.63d | 0d | TEAM_2Shift_Calendar-1 | SMAW Welder; SMAW Welding Machine; Helper | 12h | 475 | 475 |
| 321 | 6.12.112 | Sh+LiftingLugPadFitup | 0.5d | 2018-06-22 12:25 | 2018-06-22 16:25 | 30, 320 | 2018-06-02 20:25 | 2018-06-04 08:25 | 0.5d | 57.63d | 0d | TEAM_2Shift_Calendar-1 | SMAW Welder; SMAW Welding Machine; Fitter; Helper | 12h | 562.5 | 562.5 |
| 322 | 6.12.113 | Sh+LiftingLugPadWeldingArrangement | 2h | 2018-06-22 16:25 | 2018-06-22 18:25 | 321 | 2018-06-04 08:25 | 2018-06-04 10:25 | 2h | 57.63d | 0d | TEAM_2Shift_Calendar-1 | Helper; Fitter | 2h | 118.75 | 118.75 |
| 323 | 6.12.114 | Sh+LiftingLugPadWelding | 0.5d | 2018-06-22 18:25 | 2018-06-25 06:25 | 322 | 2018-06-04 10:25 | 2018-06-04 14:25 | 0.5d | 57.63d | 0d | TEAM_2Shift_Calendar-1 | SMAW Welder; SMAW Welding Machine; Helper | 12h | 475 | 475 |
| 324 | 6.12.115 | Sh+LiftingLugFitup | 3h | 2018-06-25 06:25 | 2018-06-25 09:25 | 323 | 2018-06-04 14:25 | 2018-06-04 17:25 | 3h | 57.63d | 0d | TEAM_2Shift_Calendar-1 | Fitter; SMAW Welder; SMAW Welding Machine; Helper | 12h | 562.5 | 562.5 |
| 325 | 6.12.116 | Sh+LiftingLugWelding | 0.5d | 2018-06-25 09:25 | 2018-06-25 13:25 | 324 | 2018-06-04 17:25 | 2018-06-04 21:25 | 0.5d | 57.63d | 0d | TEAM_2Shift_Calendar-1 | SMAW Welder; SMAW Welding Machine; Helper | 12h | 475 | 475 |
| 326 | 6.12.117 | Sh+InsulationCleatFitup | 2h | 2018-06-25 13:25 | 2018-06-25 15:25 | 325 | 2018-06-04 21:25 | 2018-06-05 07:25 | 2h | 57.63d | 0d | TEAM_2Shift_Calendar-1 | Fitter; SMAW Welder; SMAW Welding Machine; Helper | 6h | 281.25 | 281.25 |
| 327 | 6.12.118 | Sh+InsulationCleatwelding | 0.5d | 2018-06-25 15:25 | 2018-06-25 19:25 | 326 | 2018-06-05 07:25 | 2018-06-05 11:25 | 0.5d | 57.63d | 0d | TEAM_2Shift_Calendar-1 | SMAW Welder; SMAW Welding Machine; Helper | 12h | 475 | 475 |
| 328 | 6.12.119 | Sh Final Dress Up | 1h | 2018-06-25 19:25 | 2018-06-25 20:25 | 327 | 2018-06-05 11:25 | 2018-06-05 12:25 | 1h | 57.63d | 0d | TEAM_2Shift_Calendar-1 | Grinding Machine; Grinder | 2h | 56.25 | 56.25 |
| 329 | 6.12.120 | Sh Dimensional Inspection | 2h | 2018-06-25 20:25 | 2018-06-26 06:25 | 328 | 2018-06-05 12:25 | 2018-06-05 14:25 | 2h | 57.63d | 0d | TEAM_2Shift_Calendar-1 | Fitter [200%] | 4h | 275 | 275 |
| 330 | 6.12.121 | Sh Clearance by TPI | 1.75d | 2018-06-26 06:25 | 2018-06-26 20:25 | 329 | 2018-06-05 14:25 | 2018-06-06 12:25 | 1.75d | 57.63d | 0d | TEAM_2Shift_Calendar-1 | TPI (Cost) [0.1%]; QC Engineer | 2.95h |  |  |
| 331 | 6.12.122 | Sh PWHT | 3d | 2018-06-26 20:25 | 2018-06-28 12:25 | 330 | 2018-06-06 12:25 | 2018-06-07 20:25 | 3d | 57.63d | 0d | TEAM_2Shift_Calendar-1 | SC (Work) | 24h |  |  |
| 332 | 6.12.123 | Sh Receiptafter PWHT | 4h | 2018-06-28 12:25 | 2018-06-28 16:25 | 331 | 2018-06-07 20:25 | 2018-06-08 08:25 | 4h | 57.63d | 0d | TEAM_2Shift_Calendar-1 | Helper [200%]; Crane [50%]; Store | 16h | 457.14 | 457.14 |
| 333 | 6.12.124 | Sh Surface Cleaning | 1h | 2018-06-28 16:25 | 2018-06-28 17:25 | 332 | 2018-06-08 08:25 | 2018-06-08 09:25 | 1h | 57.63d | 0d | TEAM_2Shift_Calendar-1 | Helper | 1h | 50 | 50 |
| 334 | 6.12.125 | Sh NDE by TPI | 10.15h | 2018-06-28 17:25 | 2018-06-29 11:34 | 333 | 2018-06-08 09:25 | 2018-06-08 19:34 | 10.15h | 57.63d |  | TEAM_2Shift_Calendar-1 | TPI (Cost) [0.1%]; QC Engineer | 2h |  |  |

Notes:
- 282: OD488xID336.5x55T-SA 266 GR.B
- 290: OD572xID336.5x60T-SA 266 GR.B

| ID | WBS | Task | Duration | Start | Finish | Predecessors | Complete | Remaining | Baseline start | Baseline finish | Baseline duration | Total slack | Free slack | Calendar | Resources | Work | Actual work | Cost | Baseline cost | Actual cost |
| --- | --- | --- | --- | --- | --- | --- | --- | --- | --- | --- | --- | --- | --- | --- | --- | --- | --- | --- | --- | --- |
| 335 | 6.13 | **Channel Fabrication&Assembly** | 107.88d | 2018-03-29 11:30 A | 2018-06-06 10:30 |  | 19% | 87.85d | 2018-03-29 11:30 | 2018-06-06 10:30 | 107.88d | 93.77d |  | TEAM_2Shift_Calendar-1 |  | 531.93h | 49h | 20,277.08 | 20,277.08 | 1,937.5 |
| 336 | 6.13.1 | Plate Receipt | 2h | 2018-03-29 11:30 A | 2018-03-29 13:30 A | 30 | 100% |  | 2018-03-29 11:30 | 2018-03-29 13:30 | 2h |  |  | TEAM_2Shift_Calendar-1 | Plate (Cost) [0.1%]; Store | 2h | 2h |  |  |  |
| 337 | 6.13.2 | Inward Inspection | 9h | 2018-04-04 08:30 A | 2018-04-04 17:30 A | 336 | 100% |  | 2018-04-04 08:30 | 2018-04-04 17:30 | 9h |  |  | TEAM_2Shift_Calendar-1 | QC Engineer | 2h | 2h |  |  |  |
| 338 | 6.13.3 | Ch Pl Marking | 2d | 2018-04-05 06:00 A | 2018-04-05 22:00 A | 337 | 100% |  | 2018-04-05 06:00 | 2018-04-05 22:00 | 2d |  |  | TEAM_2Shift_Calendar-1 | Helper; Fitter | 8h | 8h | 475 | 475 | 475 |
| 339 | 6.13.4 | Ch Pl Stamping | 1.12d | 2018-04-06 08:00 A | 2018-04-06 17:00 A | 338 | 100% |  | 2018-04-06 08:00 | 2018-04-06 17:00 | 1.12d |  |  | TEAM_2Shift_Calendar-1 | TPI (Cost) [0.1%] |  |  |  |  |  |
| 340 | 6.13.5 | Ch-LSCutting | 3h | 2018-04-06 17:00 A | 2018-04-06 20:00 A | 339 | 100% |  | 2018-04-06 17:00 | 2018-04-06 20:00 | 3h |  |  | TEAM_2Shift_Calendar-1 | OAGM; Helper; Gas Cutter | 9h | 9h | 356.25 | 356.25 | 356.25 |
| 341 | 6.13.6 | Ch-LSE.P | 1h | 2018-04-06 20:00 A | 2018-04-06 21:00 A | 340 | 100% |  | 2018-04-06 20:00 | 2018-04-06 21:00 | 1h |  |  | TEAM_2Shift_Calendar-1 | Grinding Machine; Grinder | 2h | 2h | 56.25 | 56.25 | 56.25 |
| 342 | 6.13.7 | Ch-LS Pre-Bending | 2h | 2018-04-30 13:00 A | 2018-04-30 15:00 A | 341FS+35d | 100% |  | 2018-04-23 13:00 | 2018-04-23 15:00 | 2h |  |  | TEAM_2Shift_Calendar-1 | Helper; Plate Bending Machine; Fitter [200%] | 6h | 6h | 281.25 | 281.25 | 281.25 |
| 343 | 6.13.8 | Ch-LS Pre-Bend Cut-off | 3h | 2018-04-30 15:00 A | 2018-04-30 18:00 A | 342 | 100% |  | 2018-04-23 15:00 | 2018-04-23 18:00 | 3h |  |  | TEAM_2Shift_Calendar-1 | OAGM; Helper; Gas Cutter | 9h | 9h | 356.25 | 356.25 | 356.25 |
| 344 | 6.13.9 | Ch-LS E.P | 1h | 2018-04-30 18:00 A | 2018-04-30 19:00 A | 343 | 100% |  | 2018-04-23 18:00 | 2018-04-23 19:00 | 1h |  |  | TEAM_2Shift_Calendar-1 | Grinding Machine; Grinder | 2h | 2h | 56.25 | 56.25 | 56.25 |
| 345 | 6.13.10 | Ch-LS Rolling | 3h | 2018-05-07 19:00 A | 2018-05-07 22:00 A | 344FS+10d | 100% |  | 2018-04-23 19:00 | 2018-04-23 22:00 | 3h |  |  | TEAM_2Shift_Calendar-1 | Helper; Rolling Machine; Fitter | 9h | 9h | 356.25 | 356.25 | 356.25 |
| 346 | 6.13.11 | Ch-LS Fitup | 2h | 2018-05-21 06:00 | 2018-05-21 08:00 | 345FS+20d |  |  | 2018-04-24 06:00 | 2018-04-24 08:00 | 2h | 107.33d | 0d | TEAM_2Shift_Calendar-1 | SMAW Welder; SMAW Welding Machine; Fitter; Helper | 6h |  | 281.25 | 281.25 |  |
| 347 | 6.13.12 | Ch-LS FitupInspection | 1h | 2018-05-21 08:00 | 2018-05-21 09:00 | 346 |  |  | 2018-04-24 08:00 | 2018-04-24 09:00 | 1h | 107.33d | 0d | TEAM_2Shift_Calendar-1 | Helper; Fitter | 2h |  | 118.75 | 118.75 |  |
| 348 | 6.13.13 | Ch-LS WeldingArrangement | 1h | 2018-05-21 09:00 | 2018-05-21 10:00 | 347 |  |  | 2018-04-24 09:00 | 2018-04-24 10:00 | 1h | 107.33d | 0d | TEAM_2Shift_Calendar-1 | Helper; Fitter | 2h |  | 118.75 | 118.75 |  |
| 349 | 6.13.14 | Ch-LS Welding | 1d | 2018-05-21 10:00 | 2018-05-21 18:00 | 348 |  |  | 2018-04-24 10:00 | 2018-04-24 18:00 | 1d | 107.33d | 0d | TEAM_2Shift_Calendar-1 | SMAW Welder; SMAW Welding Machine; Helper | 24h |  | 950 | 950 |  |
| 350 | 6.13.15 | Ch-LS BackchipGrinding | 2h | 2018-05-21 18:00 | 2018-05-21 20:00 | 349 |  |  | 2018-04-24 18:00 | 2018-04-24 20:00 | 2h | 107.33d | 0d | TEAM_2Shift_Calendar-1 | Grinding Machine; Grinder | 4h |  | 112.5 | 112.5 |  |
| 351 | 6.13.16 | Ch-LS InsideWelding | 2h | 2018-05-21 20:00 | 2018-05-21 22:00 | 350 |  |  | 2018-04-24 20:00 | 2018-04-24 22:00 | 2h | 107.33d | 0d | TEAM_2Shift_Calendar-1 | SMAW Welder; SMAW Welding Machine; Helper | 4h |  | 158.33 | 158.33 |  |
| 352 | 6.13.17 | Ch-LS FlushGrinding | 1h | 2018-05-22 06:00 | 2018-05-22 07:00 | 351 |  |  | 2018-04-25 06:00 | 2018-04-25 07:00 | 1h | 107.33d | 0d | TEAM_2Shift_Calendar-1 | Grinding Machine; Grinder | 2h |  | 56.25 | 56.25 |  |
| 353 | 6.13.18 | Ch-LS DPCheck | 1h | 2018-05-22 07:00 | 2018-05-22 08:00 | 352 |  |  | 2018-04-25 07:00 | 2018-04-25 08:00 | 1h | 107.33d | 0d | TEAM_2Shift_Calendar-1 | Fitter | 1h |  | 68.75 | 68.75 |  |
| 354 | 6.13.19 | Ch-LS Re-rolling | 3h | 2018-05-22 08:00 | 2018-05-22 11:00 | 353 |  |  | 2018-04-25 08:00 | 2018-04-25 11:00 | 3h | 107.33d | 0d | TEAM_2Shift_Calendar-1 | Helper [200%]; Fitter [200%] | 12h |  | 712.5 | 712.5 |  |
| 355 | 6.13.20 | Ch Radiography | 4h | 2018-05-22 11:00 | 2018-05-22 15:00 | 354 |  |  | 2018-04-25 11:00 | 2018-04-25 15:00 | 4h | 107.33d | 0d | TEAM_2Shift_Calendar-1 | SC (Work) | 4h |  |  |  |  |
| 356 | 6.13.21 | Ch OrinationMkg | 2h | 2018-05-22 15:00 | 2018-05-22 17:00 | 355 |  |  | 2018-04-25 15:00 | 2018-04-25 17:00 | 2h | 107.33d | 0d | TEAM_2Shift_Calendar-1 | Helper; Fitter | 4h |  | 237.5 | 237.5 |  |
| 357 | 6.13.22 | Ch ExtraLengthCutting | 1h | 2018-05-22 17:00 | 2018-05-22 18:00 | 356 |  |  | 2018-04-25 17:00 | 2018-04-25 18:00 | 1h | 107.33d | 0d | TEAM_2Shift_Calendar-1 | OAGM; Helper; Gas Cutter | 3h |  | 118.75 | 118.75 |  |
| 358 | 6.13.23 | ChE.PofCirSeamSide | 2h | 2018-05-22 18:00 | 2018-05-22 20:00 | 357 |  |  | 2018-04-25 18:00 | 2018-04-25 20:00 | 2h | 107.33d | 0.94d | TEAM_2Shift_Calendar-1 | Grinding Machine; Grinder | 4h |  | 112.5 | 112.5 |  |
| 359 | 6.13.24 | ch-front flange weld overlay | 1h | 2018-05-23 11:30 | 2018-05-23 12:30 | 37, 358 |  |  | 2018-05-04 11:30 | 2018-05-04 12:30 | 1h | 106.39d | 0d | TEAM_2Shift_Calendar-1 | SMAW Welder; SMAW Welding Machine; Forging Non-Std (Cost) [0.1%]; Helper | 3h |  | 118.75 | 118.75 |  |
| 360 | 6.13.25 | pre-machinng | 2h | 2018-05-23 12:30 | 2018-05-23 14:30 | 359 |  |  | 2018-05-04 12:30 | 2018-05-04 14:30 | 2h | 106.39d | 0d | TEAM_2Shift_Calendar-1 | Grinding Machine; Grinder | 4h |  | 112.5 | 112.5 |  |
| 361 | 6.13.26 | wel overlay | 2d | 2018-05-23 14:30 | 2018-05-24 14:30 | 360 |  |  | 2018-05-04 14:30 | 2018-05-05 14:30 | 2d | 106.39d | 0d | TEAM_2Shift_Calendar-1 | SMAW Welder; SMAW Welding Machine; Helper | 48h |  | 1,900 | 1,900 |  |
| 362 | 6.13.27 | Final maching | 2h | 2018-05-24 14:30 | 2018-05-24 16:30 | 361 |  |  | 2018-05-05 14:30 | 2018-05-05 16:30 | 2h | 106.39d | 0d | TEAM_2Shift_Calendar-1 | Grinding Machine; Grinder | 4h |  | 112.5 | 112.5 |  |
| 363 | 6.13.28 | ch-frontFlangeFitup | 3h | 2018-05-24 16:30 | 2018-05-24 19:30 | 362 |  |  | 2018-05-05 16:30 | 2018-05-05 19:30 | 3h | 106.39d | 0d | TEAM_2Shift_Calendar-1 | SMAW Welder; SMAW Welding Machine; Fitter; Forging Non-Std (Cost) [0.1%]; Helper | 9h |  | 421.88 | 421.88 |  |
| 364 | 6.13.29 | ch-frontFlangeInspection | 2h | 2018-05-24 19:30 | 2018-05-24 21:30 | 363 |  |  | 2018-05-05 19:30 | 2018-05-05 21:30 | 2h | 106.39d | 0d | TEAM_2Shift_Calendar-1 | Helper; Fitter | 4h |  | 237.5 | 237.5 |  |
| 365 | 6.13.30 | ch-frontFlangeWelding | 1d | 2018-05-24 21:30 | 2018-05-25 13:30 | 364 |  |  | 2018-05-05 21:30 | 2018-05-07 13:30 | 1d | 106.39d | 0d | TEAM_2Shift_Calendar-1 | SMAW Welder; SMAW Welding Machine; Helper | 24h |  | 950 | 950 |  |
| 366 | 6.13.31 | ch-frontFlangeBackchip | 2h | 2018-05-25 13:30 | 2018-05-25 15:30 | 365 |  |  | 2018-05-07 13:30 | 2018-05-07 15:30 | 2h | 106.39d | 0d | TEAM_2Shift_Calendar-1 | Grinding Machine; Grinder | 4h |  | 112.5 | 112.5 |  |
| 367 | 6.13.32 | ch-frontFlangeInsideWelding | 0.5d | 2018-05-25 15:30 | 2018-05-25 19:30 | 366 |  |  | 2018-05-07 15:30 | 2018-05-07 19:30 | 0.5d | 106.39d | 0d | TEAM_2Shift_Calendar-1 | SMAW Welder; SMAW Welding Machine; Helper | 12h |  | 475 | 475 |  |
| 368 | 6.13.33 | ch-frontFlangeFlushGrinding | 2h | 2018-05-25 19:30 | 2018-05-25 21:30 | 367 |  |  | 2018-05-07 19:30 | 2018-05-07 21:30 | 2h | 106.39d | 0d | TEAM_2Shift_Calendar-1 | Grinding Machine; Grinder | 4h |  | 112.5 | 112.5 |  |
| 369 | 6.13.34 | ch-frontFlangeDPCheck | 1h | 2018-05-25 21:30 | 2018-05-28 06:30 | 368 |  |  | 2018-05-07 21:30 | 2018-05-08 06:30 | 1h | 106.39d | 0d | TEAM_2Shift_Calendar-1 | Fitter | 1h |  | 68.75 | 68.75 |  |
| 370 | 6.13.35 | ch-frontFlangeRadiography | 3h | 2018-05-28 06:30 | 2018-05-28 09:30 | 369 |  |  | 2018-05-08 06:30 | 2018-05-08 09:30 | 3h | 106.39d | 0d | TEAM_2Shift_Calendar-1 | SC (Work) | 3h |  |  |  |  |
| 371 | 6.13.36 | ch-RearFlangeFitup | 3h | 2018-05-28 09:30 | 2018-05-28 12:30 | 37, 370 |  |  | 2018-05-04 11:30 | 2018-05-04 14:30 | 3h | 106.39d | 0d | TEAM_2Shift_Calendar-1 | SMAW Welder; SMAW Welding Machine; Fitter; Forging Non-Std (Cost) [0.1%]; Helper | 9h |  | 421.88 | 421.88 |  |
| 372 | 6.13.37 | ch-RearFlangeInspection | 2h | 2018-05-28 12:30 | 2018-05-28 14:30 | 371 |  |  | 2018-05-04 14:30 | 2018-05-04 16:30 | 2h | 106.39d | 0d | TEAM_2Shift_Calendar-1 | Helper; Fitter | 4h |  | 237.5 | 237.5 |  |
| 373 | 6.13.38 | ch-RearFlangeWelding | 0.5d | 2018-05-28 14:30 | 2018-05-28 18:30 | 372 |  |  | 2018-05-04 16:30 | 2018-05-04 20:30 | 0.5d | 106.39d | 0d | TEAM_2Shift_Calendar-1 | SMAW Welder; SMAW Welding Machine; Helper | 12h |  | 475 | 475 |  |
| 374 | 6.13.39 | ch-RearFlangeBackchip | 1h | 2018-05-28 18:30 | 2018-05-28 19:30 | 373 |  |  | 2018-05-04 20:30 | 2018-05-04 21:30 | 1h | 106.39d | 0d | TEAM_2Shift_Calendar-1 | Grinding Machine; Grinder | 2h |  | 56.25 | 56.25 |  |
| 375 | 6.13.40 | ch-RearFlangeInsideWelding | 3h | 2018-05-28 19:30 | 2018-05-29 06:30 | 374 |  |  | 2018-05-04 21:30 | 2018-05-05 08:30 | 3h | 106.39d | 0d | TEAM_2Shift_Calendar-1 | SMAW Welder; SMAW Welding Machine; Helper | 9h |  | 356.25 | 356.25 |  |
| 376 | 6.13.41 | ch-RearFlangeFlushGrinding | 1h | 2018-05-29 06:30 | 2018-05-29 07:30 | 375 |  |  | 2018-05-05 08:30 | 2018-05-05 09:30 | 1h | 106.39d | 0d | TEAM_2Shift_Calendar-1 | Grinding Machine; Grinder | 2h |  | 56.25 | 56.25 |  |
| 377 | 6.13.42 | ch-RearFlangeDPCheck | 1h | 2018-05-29 07:30 | 2018-05-29 08:30 | 376 |  |  | 2018-05-05 09:30 | 2018-05-05 10:30 | 1h | 106.39d | 0d | TEAM_2Shift_Calendar-1 | Fitter | 1h |  | 68.75 | 68.75 |  |
| 378 | 6.13.43 | ch-RearFlangeRadiography | 3h | 2018-05-29 08:30 | 2018-05-29 11:30 | 377 |  |  | 2018-05-05 10:30 | 2018-05-05 13:30 | 3h | 106.39d | 0d | TEAM_2Shift_Calendar-1 | SC (Work) | 3h |  |  |  |  |
| 379 | 6.13.44 | ChNozzleOpening-N3&N4 | 1d | 2018-05-29 11:30 | 2018-05-29 19:30 | 378 |  |  | 2018-05-05 13:30 | 2018-05-05 21:30 | 1d | 106.39d | 0d | TEAM_2Shift_Calendar-1 | OAGM; Helper; Gas Cutter | 24h |  | 950 | 950 |  |
| 380 | 6.13.45 | Ch Nozzle Opening E.P | 2h | 2018-05-29 19:30 | 2018-05-29 21:30 | 379 |  |  | 2018-05-05 21:30 | 2018-05-07 07:30 | 2h | 106.39d |  | TEAM_2Shift_Calendar-1 | Grinding Machine; Grinder | 4h |  | 112.5 | 112.5 |  |
| 381 | 6.13.46 | Ch Nozzle Fitup-N3&N4 | 3h | 2018-05-29 11:30 | 2018-05-29 14:30 | 41 |  |  | 2018-05-29 11:30 | 2018-05-29 14:30 | 3h | 93.02d | 0d | TEAM_2Shift_Calendar-1 | SMAW Welder; SMAW Welding Machine; Fitter; Pipe (Cost) [0.1%]; Helper | 9h |  | 421.88 | 421.88 |  |
| 382 | 6.13.47 | Ch Nozzle Fitup Inspection | 1h | 2018-05-29 14:30 | 2018-05-29 15:30 | 381 |  |  | 2018-05-29 14:30 | 2018-05-29 15:30 | 1h | 93.02d | 0d | TEAM_2Shift_Calendar-1 | Helper; Fitter | 2h |  | 118.75 | 118.75 |  |
| 383 | 6.13.48 | Ch Nozzle Welding Arragement | 1h | 2018-05-29 15:30 | 2018-05-29 16:30 | 382 |  |  | 2018-05-29 15:30 | 2018-05-29 16:30 | 1h | 93.02d | 0d | TEAM_2Shift_Calendar-1 | Helper; Fitter | 2h |  | 118.75 | 118.75 |  |
| 384 | 6.13.49 | Ch Nozzle Welding | 1d | 2018-05-29 16:30 | 2018-05-30 08:30 | 383 |  |  | 2018-05-29 16:30 | 2018-05-30 08:30 | 1d | 93.02d | 0d | TEAM_2Shift_Calendar-1 | SMAW Welder; SMAW Welding Machine; Helper | 24h |  | 950 | 950 |  |
| 385 | 6.13.50 | Ch Nozzle Inside Grinding | 2h | 2018-05-30 08:30 | 2018-05-30 10:30 | 384 |  |  | 2018-05-30 08:30 | 2018-05-30 10:30 | 2h | 93.02d | 0d | TEAM_2Shift_Calendar-1 | Grinding Machine; Grinder | 4h |  | 112.5 | 112.5 |  |
| 386 | 6.13.51 | Ch Nozzle Inside Welding | 0.5d | 2018-05-30 10:30 | 2018-05-30 14:30 | 385 |  |  | 2018-05-30 10:30 | 2018-05-30 14:30 | 0.5d | 93.02d | 0d | TEAM_2Shift_Calendar-1 | SMAW Welder; SMAW Welding Machine; Helper | 12h |  | 475 | 475 |  |
| 387 | 6.13.52 | Ch Nozzle Inside flushGrinding | 2h | 2018-05-30 14:30 | 2018-05-30 16:30 | 386 |  |  | 2018-05-30 14:30 | 2018-05-30 16:30 | 2h | 93.02d | 0d | TEAM_2Shift_Calendar-1 | Grinding Machine; Grinder | 4h |  | 112.5 | 112.5 |  |
| 388 | 6.13.53 | Dpcheck | 1h | 2018-05-30 16:30 | 2018-05-30 17:30 | 387 |  |  | 2018-05-30 16:30 | 2018-05-30 17:30 | 1h | 93.02d | 0d | TEAM_2Shift_Calendar-1 | Fitter | 1h |  | 68.75 | 68.75 |  |
| 389 | 6.13.54 | N9,N10MP connection marking | 1h | 2018-05-30 17:30 | 2018-05-30 18:30 | 388 |  |  | 2018-05-30 17:30 | 2018-05-30 18:30 | 1h | 93.02d | 0d | TEAM_2Shift_Calendar-1 | Fitter | 1h |  | 68.75 | 68.75 |  |
| 390 | 6.13.55 | opening | 2h | 2018-05-30 18:30 | 2018-05-30 20:30 | 389 |  |  | 2018-05-30 18:30 | 2018-05-30 20:30 | 2h | 93.02d | 0d | TEAM_2Shift_Calendar-1 | OAGM; Helper; Gas Cutter | 6h |  | 237.5 | 237.5 |  |
| 391 | 6.13.56 | fitup | 3h | 2018-05-30 20:30 | 2018-05-31 07:30 | 390 |  |  | 2018-05-30 20:30 | 2018-05-31 07:30 | 3h | 93.02d | 0d | TEAM_2Shift_Calendar-1 | SMAW Welder; SMAW Welding Machine; Fitter; Helper | 9h |  | 421.88 | 421.88 |  |
| 392 | 6.13.57 | Inspection | 2h | 2018-05-31 07:30 | 2018-05-31 09:30 | 391 |  |  | 2018-05-31 07:30 | 2018-05-31 09:30 | 2h | 93.02d | 0d | TEAM_2Shift_Calendar-1 | Fitter | 2h |  | 137.5 | 137.5 |  |
| 393 | 6.13.58 | welding | 0.5d | 2018-05-31 09:30 | 2018-05-31 13:30 | 392 |  |  | 2018-05-31 09:30 | 2018-05-31 13:30 | 0.5d | 93.02d | 0d | TEAM_2Shift_Calendar-1 | SMAW Welder; SMAW Welding Machine; Helper | 12h |  | 475 | 475 |  |
| 394 | 6.13.59 | grinding | 2h | 2018-05-31 13:30 | 2018-05-31 15:30 | 393 |  |  | 2018-05-31 13:30 | 2018-05-31 15:30 | 2h | 93.02d | 0d | TEAM_2Shift_Calendar-1 | Grinding Machine; Grinder | 4h |  | 112.5 | 112.5 |  |
| 395 | 6.13.60 | Dpcheck | 1h | 2018-05-31 15:30 | 2018-05-31 16:30 | 394 |  |  | 2018-05-31 15:30 | 2018-05-31 16:30 | 1h | 93.02d | 0d | TEAM_2Shift_Calendar-1 | Fitter | 1h |  | 68.75 | 68.75 |  |
| 396 | 6.13.61 | Ch Nozzle Radiography | 3h | 2018-05-31 16:30 | 2018-05-31 19:30 | 395 |  |  | 2018-05-31 16:30 | 2018-05-31 19:30 | 3h | 93.02d | 0d | TEAM_2Shift_Calendar-1 | SC (Work) | 3h |  |  |  |  |
| 397 | 6.13.62 | Ch LiftingLugPad Fitup | 3h | 2018-05-31 19:30 | 2018-06-01 06:30 | 30, 396 |  |  | 2018-05-31 19:30 | 2018-06-01 06:30 | 3h | 93.02d | 0d | TEAM_2Shift_Calendar-1 | Helper; SMAW Welder; SMAW Welding Machine; Plate (Cost) [0.1%]; Fitter | 9h |  | 421.88 | 421.88 |  |
| 398 | 6.13.63 | Ch Lifting LugPadWeld Arrangement | 1h | 2018-06-01 06:30 | 2018-06-01 07:30 | 397 |  |  | 2018-06-01 06:30 | 2018-06-01 07:30 | 1h | 93.02d | 0d | TEAM_2Shift_Calendar-1 | Helper; Fitter | 2h |  | 118.75 | 118.75 |  |
| 399 | 6.13.64 | Ch Lifting LugPad Welding | 1d | 2018-06-01 07:30 | 2018-06-01 15:30 | 398 |  |  | 2018-06-01 07:30 | 2018-06-01 15:30 | 1d | 93.02d | 0d | TEAM_2Shift_Calendar-1 | SMAW Welding Machine; Helper | 16h |  | 400 | 400 |  |
| 400 | 6.13.65 | Ch LiftingLug Fitup | 0.5d | 2018-06-01 15:30 | 2018-06-01 19:30 | 399 |  |  | 2018-06-01 15:30 | 2018-06-01 19:30 | 0.5d | 93.02d | 0d | TEAM_2Shift_Calendar-1 | Helper; SMAW Welder; SMAW Welding Machine; Fitter | 12h |  | 562.5 | 562.5 |  |
| 401 | 6.13.66 | Ch LiftingLug Welding | 1d | 2018-06-01 19:30 | 2018-06-02 11:30 | 400 |  |  | 2018-06-01 19:30 | 2018-06-02 11:30 | 1d | 93.02d | 0d | TEAM_2Shift_Calendar-1 | SMAW Welder; SMAW Welding Machine; Helper | 24h |  | 950 | 950 |  |
| 402 | 6.13.67 | Ch InsulationCleat Marking | 1h | 2018-06-02 11:30 | 2018-06-02 12:30 | 401 |  |  | 2018-06-02 11:30 | 2018-06-02 12:30 | 1h | 93.02d | 0d | TEAM_2Shift_Calendar-1 | Helper; Plate (Cost) [0.1%]; Fitter | 2h |  | 118.75 | 118.75 |  |
| 403 | 6.13.68 | Ch InsulationCleat Fitup | 3h | 2018-06-02 12:30 | 2018-06-02 15:30 | 402 |  |  | 2018-06-02 12:30 | 2018-06-02 15:30 | 3h | 93.02d | 0d | TEAM_2Shift_Calendar-1 | Helper; SMAW Welder; SMAW Welding Machine; Fitter | 9h |  | 421.88 | 421.88 |  |
| 404 | 6.13.69 | Ch Insulation Cleatwelding | 0.5d | 2018-06-02 15:30 | 2018-06-02 19:30 | 403 |  |  | 2018-06-02 15:30 | 2018-06-02 19:30 | 0.5d | 93.02d | 0d | TEAM_2Shift_Calendar-1 | SMAW Welder; SMAW Welding Machine; Helper | 12h |  | 475 | 475 |  |

Notes:
- 336: DEV.LG 1101x378x14T
- 359: OD488xID336.5x60T-SA 266 GR.4
- 371: SA 266 GR.4-55T

| ID | WBS | Task | Duration | Start | Finish | Predecessors | Complete | Remaining | Baseline start | Baseline finish | Baseline duration | Total slack | Free slack | Calendar | Resources | Work | Actual work | Cost | Baseline cost | Actual cost |
| --- | --- | --- | --- | --- | --- | --- | --- | --- | --- | --- | --- | --- | --- | --- | --- | --- | --- | --- | --- | --- |
| 405 | 6.13.70 | Ch Final DressUp | 1h | 2018-06-02 19:30 | 2018-06-02 20:30 | 404 |  |  | 2018-06-02 19:30 | 2018-06-02 20:30 | 1h | 93.02d | 0d | TEAM_2Shift_Calendar-1 | Grinding Machine; Grinder | 2h |  | 56.25 | 56.25 |  |
| 406 | 6.13.71 | Ch Dimensional Inspection | 3h | 2018-06-02 20:30 | 2018-06-04 07:30 | 405 |  |  | 2018-06-02 20:30 | 2018-06-04 07:30 | 3h | 93.02d | 0d | TEAM_2Shift_Calendar-1 | Fitter [200%] | 6h |  | 412.5 | 412.5 |  |
| 407 | 6.13.72 | Ch Clearanceby TPI | 3h | 2018-06-04 07:30 | 2018-06-04 10:30 | 406 |  |  | 2018-06-04 07:30 | 2018-06-04 10:30 | 3h | 93.02d | 0d | TEAM_2Shift_Calendar-1 | TPI (Cost) [0.1%]; QC Engineer | 1.93h |  |  |  |  |
| 408 | 6.13.73 | Ch PWHT | 3d | 2018-06-04 10:30 | 2018-06-05 18:30 | 407 |  |  | 2018-06-04 10:30 | 2018-06-05 18:30 | 3d | 93.77d | 0d | TEAM_2Shift_Calendar-1 | SC (Work) | 24h |  |  |  |  |
| 409 | 6.13.74 | Ch Receipt after PWHT | 3h | 2018-06-05 18:30 | 2018-06-05 21:30 | 408 |  |  | 2018-06-05 18:30 | 2018-06-05 21:30 | 3h | 93.77d | 0d | TEAM_2Shift_Calendar-1 | SC (Work) | 3h |  |  |  |  |
| 410 | 6.13.75 | Ch Surface Cleaning | 2h | 2018-06-05 21:30 | 2018-06-06 07:30 | 409 |  |  | 2018-06-05 21:30 | 2018-06-06 07:30 | 2h | 93.77d | 0d | TEAM_2Shift_Calendar-1 | Helper | 2h |  | 100 | 100 |  |
| 411 | 6.13.76 | Ch NDE by TPI | 3h | 2018-06-06 07:30 | 2018-06-06 10:30 | 410 |  |  | 2018-06-06 07:30 | 2018-06-06 10:30 | 3h | 93.77d |  | TEAM_2Shift_Calendar-1 | TPI (Cost) [0.1%] |  |  |  |  |  |
| 412 | 6.14 | **Shellcover fabrication** | 110.05d | 2018-03-29 11:30 A | 2018-06-07 11:53 |  | 16% | 92.2d | 2018-03-29 11:30 | 2018-05-19 18:00 | 80.81d | 0d |  | TEAM_2Shift_Calendar-1 |  | 486.98h | 62h | 19,031.25 | 19,031.25 | 2,393.75 |
| 413 | 6.14.1 | Plate Receipt | 3h | 2018-03-29 11:30 A | 2018-03-29 14:30 A | 30 | 100% |  | 2018-03-29 11:30 | 2018-03-29 14:30 | 3h |  |  | TEAM_2Shift_Calendar-1 | Plate (Cost) [0.1%]; Store | 3h | 3h |  |  |  |
| 414 | 6.14.2 | Inward Inspection | 9h | 2018-04-04 08:30 A | 2018-04-04 17:30 A | 413 | 100% |  | 2018-04-04 08:30 | 2018-04-04 17:30 | 9h |  |  | TEAM_2Shift_Calendar-1 | QC Engineer | 2h | 2h |  |  |  |
| 415 | 6.14.3 | sh cover Pl Marking | 3h | 2018-04-04 17:30 A | 2018-04-04 20:30 A | 414 | 100% |  | 2018-04-04 17:30 | 2018-04-04 20:30 | 3h |  |  | TEAM_2Shift_Calendar-1 | Helper; Fitter | 6h | 6h | 356.25 | 356.25 | 356.25 |
| 416 | 6.14.4 | Sh Cover Pl Stamping | 9h | 2018-04-06 08:00 A | 2018-04-06 17:00 A | 415 | 100% |  | 2018-04-06 08:00 | 2018-04-06 17:00 | 9h |  |  | TEAM_2Shift_Calendar-1 | TPI (Cost) [0.1%] |  |  |  |  |  |
| 417 | 6.14.5 | sh cover-LSCutting | 4h | 2018-04-30 09:00 A | 2018-04-30 13:00 A | 416FS+35d | 100% |  | 2018-04-23 17:00 | 2018-04-23 21:00 | 4h |  |  | TEAM_2Shift_Calendar-1 | OAGM; Helper; Gas Cutter | 12h | 12h | 475 | 475 | 475 |
| 418 | 6.14.6 | sh cover-LS E.P | 2h | 2018-04-30 13:00 A | 2018-04-30 15:00 A | 417 | 100% |  | 2018-04-23 21:00 | 2018-04-24 07:00 | 2h |  |  | TEAM_2Shift_Calendar-1 | Grinding Machine; Grinder | 4h | 4h | 112.5 | 112.5 | 112.5 |
| 419 | 6.14.7 | sh cover-LS Pre-Bending | 4h | 2018-04-30 15:00 A | 2018-04-30 19:00 A | 418 | 100% |  | 2018-04-24 07:00 | 2018-04-24 11:00 | 4h |  |  | TEAM_2Shift_Calendar-1 | Helper; Plate Bending Machine; Fitter [200%] | 12h | 12h | 562.5 | 562.5 | 562.5 |
| 420 | 6.14.8 | Sh Cover-LS Pre-BendCut-off | 3h | 2018-04-30 19:00 A | 2018-04-30 22:00 A | 419 | 100% |  | 2018-04-24 11:00 | 2018-04-24 14:00 | 3h |  |  | TEAM_2Shift_Calendar-1 | OAGM; Helper; Gas Cutter | 9h | 9h | 356.25 | 356.25 | 356.25 |
| 421 | 6.14.9 | Sh Cover-LS E.P | 1h | 2018-05-02 06:00 A | 2018-05-02 07:00 A | 420 | 100% |  | 2018-04-24 14:00 | 2018-04-24 15:00 | 1h |  |  | TEAM_2Shift_Calendar-1 | Grinding Machine; Grinder | 2h | 2h | 56.25 | 56.25 | 56.25 |
| 422 | 6.14.10 | Sh Cover-LS Rolling | 0.5d | 2018-05-07 07:00 A | 2018-05-07 11:00 A | 421FS+8d | 100% |  | 2018-04-24 15:00 | 2018-04-24 19:00 | 0.5d |  |  | TEAM_2Shift_Calendar-1 | Helper; Rolling Machine; Fitter | 12h | 12h | 475 | 475 | 475 |
| 423 | 6.14.11 | Sh Cover-LS Fitup | 3h | 2018-05-21 19:00 | 2018-05-21 22:00 | 422FS+23d |  |  | 2018-04-24 19:00 | 2018-04-24 22:00 | 3h | 0d |  | TEAM_2Shift_Calendar-1 | SMAW Welder; SMAW Welding Machine; Fitter; Helper | 9h |  | 421.88 | 421.88 |  |
| 424 | 6.14.12 | Sh Cover-LS Fitup Inspection | 2h | 2018-05-22 06:00 | 2018-05-22 08:00 | 423 |  |  | 2018-04-25 06:00 | 2018-04-25 08:00 | 2h | 0d |  | TEAM_2Shift_Calendar-1 | Helper; Fitter | 4h |  | 237.5 | 237.5 |  |
| 425 | 6.14.13 | Sh Cover-LS Welding Arrangement | 1h | 2018-05-22 08:00 | 2018-05-22 09:00 | 424 |  |  | 2018-04-25 08:00 | 2018-04-25 09:00 | 1h | 0d |  | TEAM_2Shift_Calendar-1 | Helper; Fitter | 2h |  | 118.75 | 118.75 |  |
| 426 | 6.14.14 | Sh Cover-LS Welding | 0.5d | 2018-05-22 09:00 | 2018-05-22 13:00 | 425 |  |  | 2018-04-25 09:00 | 2018-04-25 13:00 | 0.5d | 0d |  | TEAM_2Shift_Calendar-1 | SMAW Welder; SMAW Welding Machine; Helper | 12h |  | 475 | 475 |  |
| 427 | 6.14.15 | sh cover-LS Backsh coverip Grinding | 2h | 2018-05-22 13:00 | 2018-05-22 15:00 | 426 |  |  | 2018-04-25 13:00 | 2018-04-25 15:00 | 2h | 0d |  | TEAM_2Shift_Calendar-1 | Grinding Machine; Grinder | 4h |  | 112.5 | 112.5 |  |
| 428 | 6.14.16 | sh cover-LS Inside Welding | 0.5d | 2018-05-22 15:00 | 2018-05-22 19:00 | 427 |  |  | 2018-04-25 15:00 | 2018-04-25 19:00 | 0.5d | 0d |  | TEAM_2Shift_Calendar-1 | SMAW Welder; SMAW Welding Machine; Helper | 12h |  | 475 | 475 |  |
| 429 | 6.14.17 | sh cover-LS Flush Grinding | 2h | 2018-05-22 19:00 | 2018-05-22 21:00 | 428 |  |  | 2018-04-25 19:00 | 2018-04-25 21:00 | 2h | 0d |  | TEAM_2Shift_Calendar-1 | Grinding Machine; Grinder | 2h |  | 56.25 | 56.25 |  |
| 430 | 6.14.18 | sh cover-LS DP check | 1h | 2018-05-22 21:00 | 2018-05-22 22:00 | 429 |  |  | 2018-04-25 21:00 | 2018-04-25 22:00 | 1h | 0d |  | TEAM_2Shift_Calendar-1 | Fitter | 1h |  | 68.75 | 68.75 |  |
| 431 | 6.14.19 | sh cover-LS Re-rolling | 3h | 2018-05-23 06:00 | 2018-05-23 09:00 | 430 |  |  | 2018-04-26 06:00 | 2018-04-26 09:00 | 3h | 0d |  | TEAM_2Shift_Calendar-1 | Helper [200%]; Fitter [200%] | 12h |  | 712.5 | 712.5 |  |
| 432 | 6.14.20 | sh cover Radiography | 11h | 2018-05-23 09:00 | 2018-05-23 20:00 | 431 |  |  | 2018-04-26 09:00 | 2018-04-26 20:00 | 11h | 0d |  | TEAM_2Shift_Calendar-1 | SC (Work) | 6.05h |  |  |  |  |
| 433 | 6.14.21 | sh cover OrinationMkg | 2h | 2018-05-23 20:00 | 2018-05-23 22:00 | 432 |  |  | 2018-04-26 20:00 | 2018-04-26 22:00 | 2h | 0d |  | TEAM_2Shift_Calendar-1 | Helper; Fitter | 4h |  | 237.5 | 237.5 |  |
| 434 | 6.14.22 | sh coverExtra Length Cutting | 3h | 2018-05-24 06:00 | 2018-05-24 09:00 | 433 |  |  | 2018-04-27 06:00 | 2018-04-27 09:00 | 3h | 0d |  | TEAM_2Shift_Calendar-1 | OAGM; Helper; Gas Cutter | 9h |  | 356.25 | 356.25 |  |
| 435 | 6.14.23 | sh cover E.P of CirSeamSide | 2h | 2018-05-24 09:00 | 2018-05-24 11:00 | 434 |  |  | 2018-04-27 09:00 | 2018-04-27 11:00 | 2h | 0d |  | TEAM_2Shift_Calendar-1 | Grinding Machine; Grinder | 4h |  | 112.5 | 112.5 |  |
| 436 | 6.14.24 | Sh CoverFlangeFitup | 3h | 2018-05-24 11:00 | 2018-05-24 14:00 | 37, 435 |  |  | 2018-05-04 11:30 | 2018-05-04 14:30 | 3h | 0d |  | TEAM_2Shift_Calendar-1 | SMAW Welding Machine; Helper; Fitter; Forging Non-Std (Cost) [0.1%]; SMAW Welder | 6h |  | 281.25 | 281.25 |  |
| 437 | 6.14.25 | Sh CoverFlangeInspection | 2h | 2018-05-24 14:00 | 2018-05-24 16:00 | 436 |  |  | 2018-05-04 14:30 | 2018-05-04 16:30 | 2h | 0d |  | TEAM_2Shift_Calendar-1 | Helper; Fitter | 4h |  | 237.5 | 237.5 |  |
| 438 | 6.14.26 | Sh CoverFlangeWelding | 0.5d | 2018-05-24 16:00 | 2018-05-24 20:00 | 437 |  |  | 2018-05-04 16:30 | 2018-05-04 20:30 | 0.5d | 0d |  | TEAM_2Shift_Calendar-1 | SMAW Welder; SMAW Welding Machine; Helper | 12h |  | 475 | 475 |  |
| 439 | 6.14.27 | Sh CoverFlangeBackchip | 2h | 2018-05-24 20:00 | 2018-05-24 22:00 | 438 |  |  | 2018-05-04 20:30 | 2018-05-05 06:30 | 2h | 0d |  | TEAM_2Shift_Calendar-1 | Grinding Machine; Grinder | 4h |  | 112.5 | 112.5 |  |
| 440 | 6.14.28 | Sh CoverFlangeInsideWelding | 0.5d | 2018-05-25 06:00 | 2018-05-25 10:00 | 439 |  |  | 2018-05-05 06:30 | 2018-05-05 10:30 | 0.5d | 0d |  | TEAM_2Shift_Calendar-1 | SMAW Welder; SMAW Welding Machine; Helper | 12h |  | 475 | 475 |  |
| 441 | 6.14.29 | Sh CoverFlangeFlushGrinding | 2h | 2018-05-25 10:00 | 2018-05-25 12:00 | 440 |  |  | 2018-05-05 10:30 | 2018-05-05 12:30 | 2h | 0d |  | TEAM_2Shift_Calendar-1 | Grinding Machine; Grinder | 4h |  | 112.5 | 112.5 |  |
| 442 | 6.14.30 | Sh CoverFlangeDPCheck | 1h | 2018-05-25 12:00 | 2018-05-25 13:00 | 441 |  |  | 2018-05-05 12:30 | 2018-05-05 13:30 | 1h | 0d |  | TEAM_2Shift_Calendar-1 | Fitter | 1h |  | 68.75 | 68.75 |  |
| 443 | 6.14.31 | Sh CoverFlangeRadiography | 4h | 2018-05-25 13:00 | 2018-05-25 17:00 | 442 |  |  | 2018-05-05 13:30 | 2018-05-05 17:30 | 4h | 0d |  | TEAM_2Shift_Calendar-1 | SC (Work) | 4h |  |  |  |  |
| 444 | 6.14.32 | Sh CoverDishFitup | 3h | 2018-05-25 17:00 | 2018-05-25 20:00 | 443 |  |  | 2018-05-05 17:30 | 2018-05-05 20:30 | 3h | 0d |  | TEAM_2Shift_Calendar-1 | SMAW Welder; SMAW Welding Machine; Fitter; Helper | 9h |  | 421.88 | 421.88 |  |
| 445 | 6.14.33 | Sh CoverDishFitupInspection | 2h | 2018-05-25 20:00 | 2018-05-25 22:00 | 444 |  |  | 2018-05-05 20:30 | 2018-05-07 06:30 | 2h | 0d |  | TEAM_2Shift_Calendar-1 | Helper; Fitter | 4h |  | 237.5 | 237.5 |  |
| 446 | 6.14.34 | Sh CoverDishWelding | 0.5d | 2018-05-28 06:00 | 2018-05-28 10:00 | 445 |  |  | 2018-05-07 06:30 | 2018-05-07 10:30 | 0.5d | 0d |  | TEAM_2Shift_Calendar-1 | SMAW Welder; SMAW Welding Machine; Helper | 12h |  | 475 | 475 |  |
| 447 | 6.14.35 | Sh CoverDishBackchipGrinding | 2h | 2018-05-28 10:00 | 2018-05-28 12:00 | 446 |  |  | 2018-05-07 10:30 | 2018-05-07 12:30 | 2h | 0d |  | TEAM_2Shift_Calendar-1 | Grinding Machine; Grinder | 4h |  | 112.5 | 112.5 |  |
| 448 | 6.14.36 | Sh CoverDishInsideWelding | 0.5d | 2018-05-28 12:00 | 2018-05-28 16:00 | 447 |  |  | 2018-05-07 12:30 | 2018-05-07 16:30 | 0.5d | 0d |  | TEAM_2Shift_Calendar-1 | SMAW Welder; SMAW Welding Machine; Helper | 12h |  | 475 | 475 |  |
| 449 | 6.14.37 | Sh CoverDishFlushGrinding | 2h | 2018-05-28 16:00 | 2018-05-28 18:00 | 448 |  |  | 2018-05-07 16:30 | 2018-05-07 18:30 | 2h | 0d |  | TEAM_2Shift_Calendar-1 | Grinding Machine; Grinder | 4h |  | 112.5 | 112.5 |  |
| 450 | 6.14.38 | Sh CoverDishDPCheck | 1h | 2018-05-28 18:00 | 2018-05-28 19:00 | 449 |  |  | 2018-05-07 18:30 | 2018-05-07 19:30 | 1h | 0d |  | TEAM_2Shift_Calendar-1 | Fitter | 1h |  | 68.75 | 68.75 |  |
| 451 | 6.14.39 | Sh CoverDishRadiography | 8.93h | 2018-05-28 19:00 | 2018-05-29 11:55 | 450 |  |  | 2018-05-07 19:30 | 2018-05-08 12:25 | 8.93h | 0d |  | TEAM_2Shift_Calendar-1 | SC (Work) | 8.93h |  |  |  |  |
| 452 | 6.14.40 | ShNozzleOpening-N5,N6 | 3h | 2018-05-29 11:55 | 2018-05-29 14:55 | 451 |  |  | 2018-05-08 12:25 | 2018-05-08 15:25 | 3h | 0d |  | TEAM_2Shift_Calendar-1 | Gas Cutter; OAGM; Helper | 9h |  | 356.25 | 356.25 |  |
| 453 | 6.14.41 | Sh Nozzle OpeningE.P | 2h | 2018-05-29 14:55 | 2018-05-29 16:55 | 452 |  |  | 2018-05-08 15:25 | 2018-05-08 17:25 | 2h | 0d |  | TEAM_2Shift_Calendar-1 | Grinding Machine; Grinder | 4h |  | 112.5 | 112.5 |  |
| 454 | 6.14.42 | Sh Nozzle Fitup | 3h | 2018-05-29 16:55 | 2018-05-29 19:55 | 42, 453 |  |  | 2018-05-08 17:25 | 2018-05-08 20:25 | 3h | 0d |  | TEAM_2Shift_Calendar-1 | Helper; SMAW Welder; SMAW Welding Machine; Pipe (Cost) [0.1%]; Fitter | 9h |  | 421.88 | 421.88 |  |
| 455 | 6.14.43 | Sh NozzleFitupInspection | 2h | 2018-05-29 19:55 | 2018-05-29 21:55 | 454 |  |  | 2018-05-08 20:25 | 2018-05-09 06:25 | 2h | 0d |  | TEAM_2Shift_Calendar-1 | Helper; Fitter | 4h |  | 237.5 | 237.5 |  |
| 456 | 6.14.44 | Sh Nozzle Welding Arragement | 1h | 2018-05-29 21:55 | 2018-05-30 06:55 | 455 |  |  | 2018-05-09 06:25 | 2018-05-09 07:25 | 1h | 0d |  | TEAM_2Shift_Calendar-1 | Fitter; Helper | 2h |  | 118.75 | 118.75 |  |
| 457 | 6.14.45 | Sh Nozzle Welding | 0.5d | 2018-05-30 06:55 | 2018-05-30 10:55 | 456 |  |  | 2018-05-09 07:25 | 2018-05-09 11:25 | 0.5d | 0d |  | TEAM_2Shift_Calendar-1 | SMAW Welder; SMAW Welding Machine; Helper | 12h |  | 475 | 475 |  |
| 458 | 6.14.46 | Sh Nozzle Backchip Grinding | 3h | 2018-05-30 10:55 | 2018-05-30 13:55 | 457 |  |  | 2018-05-09 11:25 | 2018-05-09 14:25 | 3h | 0d |  | TEAM_2Shift_Calendar-1 | Grinding Machine; Grinder | 6h |  | 168.75 | 168.75 |  |
| 459 | 6.14.47 | Sh NozzleInside welding | 0.5d | 2018-05-30 13:55 | 2018-05-30 17:55 | 458 |  |  | 2018-05-09 14:25 | 2018-05-09 18:25 | 0.5d | 0d |  | TEAM_2Shift_Calendar-1 | SMAW Welder; SMAW Welding Machine; Helper | 12h |  | 475 | 475 |  |
| 460 | 6.14.48 | Sh Nozzle DP check | 1h | 2018-05-30 17:55 | 2018-05-30 18:55 | 459 |  |  | 2018-05-09 18:25 | 2018-05-09 19:25 | 1h | 0d |  | TEAM_2Shift_Calendar-1 | Fitter | 1h |  | 68.75 | 68.75 |  |
| 461 | 6.14.49 | Sh Cover LiftingLug Pad Fitup | 3h | 2018-05-30 18:55 | 2018-05-30 21:55 | 460 |  |  | 2018-05-09 19:25 | 2018-05-10 06:25 | 3h | 0d |  | TEAM_2Shift_Calendar-1 | SMAW Welder; SMAW Welding Machine; Fitter; Helper | 9h |  | 421.88 | 421.88 |  |
| 462 | 6.14.50 | Sh Cover Lifting LugPad Weld Arrangement | 0.5d | 2018-05-30 21:55 | 2018-05-31 09:55 | 461 |  |  | 2018-05-10 06:25 | 2018-05-10 10:25 | 0.5d | 0d |  | TEAM_2Shift_Calendar-1 | Fitter | 4h |  | 275 | 275 |  |
| 463 | 6.14.51 | Sh Cover LiftingLug Pad Welding | 0.5d | 2018-05-31 09:55 | 2018-05-31 13:55 | 462 |  |  | 2018-05-10 10:25 | 2018-05-10 14:25 | 0.5d | 0d |  | TEAM_2Shift_Calendar-1 | SMAW Welder; SMAW Welding Machine; Helper | 12h |  | 475 | 475 |  |
| 464 | 6.14.52 | Sh Cover LiftingLug Fitup | 3h | 2018-05-31 13:55 | 2018-05-31 16:55 | 463 |  |  | 2018-05-10 14:25 | 2018-05-10 17:25 | 3h | 0d |  | TEAM_2Shift_Calendar-1 | SMAW Welder; SMAW Welding Machine; Fitter; Helper | 9h |  | 421.88 | 421.88 |  |
| 465 | 6.14.53 | Sh CoverLiftingLugWelding | 0.5d | 2018-05-31 16:55 | 2018-05-31 20:55 | 464 |  |  | 2018-05-10 17:25 | 2018-05-10 21:25 | 0.5d | 0d |  | TEAM_2Shift_Calendar-1 | SMAW Welder; SMAW Welding Machine; Helper | 12h |  | 475 | 475 |  |
| 466 | 6.14.54 | Sh CoverInsulationCleatMarking | 2h | 2018-05-31 20:55 | 2018-06-01 06:55 | 465 |  |  | 2018-05-10 21:25 | 2018-05-11 07:25 | 2h | 0d |  | TEAM_2Shift_Calendar-1 | Fitter | 2h |  | 137.5 | 137.5 |  |
| 467 | 6.14.55 | Sh CoverInsulationCleatFitup | 3h | 2018-06-01 06:55 | 2018-06-01 09:55 | 466 |  |  | 2018-05-11 07:25 | 2018-05-11 10:25 | 3h | 0d |  | TEAM_2Shift_Calendar-1 | Fitter; SMAW Welder; SMAW Welding Machine; Helper | 9h |  | 421.88 | 421.88 |  |
| 468 | 6.14.56 | Sh CoverInsulationCleatwelding | 0.5d | 2018-06-01 09:55 | 2018-06-01 13:55 | 467 |  |  | 2018-05-11 10:25 | 2018-05-11 14:25 | 0.5d | 0d |  | TEAM_2Shift_Calendar-1 | SMAW Welder; SMAW Welding Machine; Helper | 12h |  | 475 | 475 |  |
| 469 | 6.14.57 | Sh CoverFinalDressUp | 2h | 2018-06-01 13:55 | 2018-06-01 15:55 | 468 |  |  | 2018-05-11 14:25 | 2018-05-11 16:25 | 2h | 0d |  | TEAM_2Shift_Calendar-1 | Helper | 2h |  | 100 | 100 |  |
| 470 | 6.14.58 | Sh CoverDimensionalInspection | 3h | 2018-06-01 15:55 | 2018-06-01 18:55 | 469 |  |  | 2018-05-11 16:25 | 2018-05-11 19:25 | 3h | 0d |  | TEAM_2Shift_Calendar-1 | Fitter | 3h |  | 206.25 | 206.25 |  |
| 471 | 6.14.59 | Sh CoverClearancebyTPI | 1.12d | 2018-06-01 18:55 | 2018-06-02 11:53 | 470 |  |  | 2018-05-11 19:25 | 2018-05-14 12:23 | 1.12d | 0d |  | TEAM_2Shift_Calendar-1 | TPI (Cost) [0.1%] |  |  |  |  |  |
| 472 | 6.14.60 | Sh CoverPWHT | 3d | 2018-06-02 11:53 | 2018-06-04 19:53 | 471 |  |  | 2018-05-14 12:23 | 2018-05-15 20:23 | 3d | 0d |  | TEAM_2Shift_Calendar-1 | SC (Work) | 23h |  |  |  |  |
| 473 | 6.14.61 | Sh CoverReceiptafterPWHT | 3h | 2018-06-04 19:53 | 2018-06-05 06:53 | 472 |  |  | 2018-05-15 20:23 | 2018-05-16 07:23 | 3h | 0d |  | TEAM_2Shift_Calendar-1 | Store | 3h |  |  |  |  |
| 474 | 6.14.62 | Sh CoverSurfaceCleaning | 1d | 2018-06-05 06:53 | 2018-06-05 14:53 | 473 |  |  | 2018-05-16 07:23 | 2018-05-16 15:23 | 1d | 0d |  | TEAM_2Shift_Calendar-1 | Grinder; Grinding Machine; Helper | 24h |  | 850 | 850 |  |

Notes:
- 413: DEVLG.1370x330LGx14T
- 436: OD572xID422x50T

| ID | WBS | Task | Duration | Start | Finish | Predecessors | Baseline start | Baseline finish | Baseline duration | Total slack | Calendar | Resources | Work | Cost | Baseline cost |
| --- | --- | --- | --- | --- | --- | --- | --- | --- | --- | --- | --- | --- | --- | --- | --- |
| 475 | 6.14.63 | Sh Cover NDEbyTPI | 3h | 2018-06-05 14:53 | 2018-06-05 17:53 | 474 | 2018-05-16 15:23 | 2018-05-16 18:23 | 3h | 0d | TEAM_2Shift_Calendar-1 | TPI (Cost) [0.1%] |  |  |  |
| 476 | 6.14.64 | FloatingDish+flangefitup | 0.5d | 2018-06-05 17:53 | 2018-06-05 21:53 | 73, 475 | 2018-05-18 08:00 | 2018-05-18 12:00 | 0.5d | 0d | TEAM_2Shift_Calendar-1 | Fitter; TIG Welder; TIG Welding Machine; Helper | 12h | 731.25 | 731.25 |
| 477 | 6.14.65 | inspection | 3h | 2018-06-05 21:53 | 2018-06-06 08:53 | 476 | 2018-05-18 12:00 | 2018-05-18 15:00 | 3h | 0d | TEAM_2Shift_Calendar-1 | Helper; Fitter | 6h | 356.25 | 356.25 |
| 478 | 6.14.66 | welding | 0.5d | 2018-06-06 08:53 | 2018-06-06 12:53 | 477 | 2018-05-18 15:00 | 2018-05-18 19:00 | 0.5d | 0d | TEAM_2Shift_Calendar-1 | TIG Welder; TIG Welding Machine; Helper | 12h | 700 | 700 |
| 479 | 6.14.67 | Backchip grinding | 3h | 2018-06-06 12:53 | 2018-06-06 15:53 | 478 | 2018-05-18 19:00 | 2018-05-19 06:00 | 3h | 0d | TEAM_2Shift_Calendar-1 | Grinding Machine; Grinder | 6h | 168.75 | 168.75 |
| 480 | 6.14.68 | inside welding | 0.5d | 2018-06-06 15:53 | 2018-06-06 19:53 | 479 | 2018-05-19 06:00 | 2018-05-19 10:00 | 0.5d | 0d | TEAM_2Shift_Calendar-1 | TIG Welder; TIG Welding Machine; Helper | 12h | 700 | 700 |
| 481 | 6.14.69 | flush grinding | 3h | 2018-06-06 19:53 | 2018-06-07 06:53 | 480 | 2018-05-19 10:00 | 2018-05-19 13:00 | 3h | 0d | TEAM_2Shift_Calendar-1 | Grinding Machine; Grinder | 6h | 168.75 | 168.75 |
| 482 | 6.14.70 | Dp check | 1h | 2018-06-07 06:53 | 2018-06-07 07:53 | 481 | 2018-05-19 13:00 | 2018-05-19 14:00 | 1h | 0d | TEAM_2Shift_Calendar-1 | Fitter | 1h | 68.75 | 68.75 |
| 483 | 6.14.71 | Radiography test | 0.5d | 2018-06-07 07:53 | 2018-06-07 11:53 | 482 | 2018-05-19 14:00 | 2018-05-19 18:00 | 0.5d | 0d | TEAM_2Shift_Calendar-1 | SC (Work) | 4h |  |  |
| 484 | 6.15 | **TubeBundleAssembly** | 18.88d | 2018-06-27 11:53 | 2018-07-07 18:53 |  | 2018-06-07 18:00 | 2018-06-20 09:00 | 18.88d | 0d | TEAM_2Shift_Calendar-1 |  | 470h | 24,086.28 | 24,086.28 |
| 485 | 6.15.1 | Assembly Frame Setup | 1d | 2018-06-27 11:53 | 2018-06-27 19:53 | 412FS+30d | 2018-06-07 18:00 | 2018-06-08 10:00 | 1d | 0d | TEAM_2Shift_Calendar-1 | Helper [400%]; Fitter [200%] | 48h | 2,700 | 2,700 |
| 486 | 6.15.2 | Skeleton Assembly | 1d | 2018-06-27 19:53 | 2018-06-28 11:53 | 485 | 2018-06-08 10:00 | 2018-06-08 18:00 | 1d | 0d | TEAM_2Shift_Calendar-1 | Helper [400%]; Fitter [200%] | 48h | 2,700 | 2,700 |
| 487 | 6.15.3 | Tie-Rod Welding | 1d | 2018-06-28 11:53 | 2018-06-28 19:53 | 39, 486 | 2018-06-08 18:00 | 2018-06-11 10:00 | 1d | 0d | TEAM_2Shift_Calendar-1 | SMAW Welder; SMAW Welding Machine; Rod (Cost) [0.1%]; Helper [200%] | 24h | 1,012.5 | 1,012.5 |
| 488 | 6.15.4 | Tube Insertion | 3d | 2018-06-28 19:53 | 2018-06-30 11:53 | 35, 487 | 2018-06-11 10:00 | 2018-06-12 18:00 | 3d | 0d | TEAM_2Shift_Calendar-1 | Helper [200%]; Tube (Cost) [0.1%]; Fitter | 24h | 1,350 | 1,350 |
| 489 | 6.15.5 | Tube Allignment | 1d | 2018-06-30 11:53 | 2018-06-30 19:53 | 488 | 2018-06-12 18:00 | 2018-06-13 10:00 | 1d | 0d | TEAM_2Shift_Calendar-1 | Helper; Fitter | 16h | 950 | 950 |
| 490 | 6.15.6 | SealingStrip&Sliding-StripFitup | 1d | 2018-06-30 19:53 | 2018-07-02 11:53 | 167, 489 | 2018-06-13 10:00 | 2018-06-13 18:00 | 1d | 0d | TEAM_2Shift_Calendar-1 | Fitter; TIG Welder; TIG Welding Machine; Plate (Cost) [0.1%]; Helper [200%] | 32h | 1,880 | 1,880 |
| 491 | 6.15.7 | SealingStrip&Sliding-StripWelding | 1d | 2018-07-02 11:53 | 2018-07-02 19:53 | 490 | 2018-06-13 18:00 | 2018-06-14 10:00 | 1d | 0d | TEAM_2Shift_Calendar-1 | TIG Welder; TIG Welding Machine; Helper [200%] | 32h | 1,800 | 1,800 |
| 492 | 6.15.8 | SealingStrip&Sliding-StripGrinding | 3h | 2018-07-02 19:53 | 2018-07-03 06:53 | 491 | 2018-06-14 10:00 | 2018-06-14 13:00 | 3h | 0d | TEAM_2Shift_Calendar-1 | Grinding Machine; Grinder | 6h | 168.75 | 168.75 |
| 493 | 6.15.9 | Tube/TubesheetRootWelding | 1d | 2018-07-03 06:53 | 2018-07-03 14:53 | 492 | 2018-06-14 13:00 | 2018-06-14 21:00 | 1d | 0d | TEAM_2Shift_Calendar-1 | TIG Welder; TIG Welding Machine; Helper | 24.02h | 1,401.22 | 1,401.22 |
| 494 | 6.15.10 | DPCheck | 2h | 2018-07-03 14:53 | 2018-07-03 16:53 | 493 | 2018-06-14 21:00 | 2018-06-15 07:00 | 2h | 0d | TEAM_2Shift_Calendar-1 | Helper; Fitter | 4h | 237.5 | 237.5 |
| 495 | 6.15.11 | Tube/TubesheetFinalWelding | 2d | 2018-07-03 16:53 | 2018-07-04 16:53 | 494 | 2018-06-15 07:00 | 2018-06-16 07:00 | 2d | 0d | TEAM_2Shift_Calendar-1 | TIG Welder; TIG Welding Machine; Helper [200%] | 63.98h | 3,598.81 | 3,598.81 |
| 496 | 6.15.12 | TubeTrimming | 2d | 2018-07-04 16:53 | 2018-07-05 16:53 | 495 | 2018-06-16 07:00 | 2018-06-18 07:00 | 2d | 0d | TEAM_2Shift_Calendar-1 | Grinding Machine; Grinder | 32h | 900 | 900 |
| 497 | 6.15.13 | DPCheck | 2h | 2018-07-05 16:53 | 2018-07-05 18:53 | 496 | 2018-06-18 07:00 | 2018-06-18 09:00 | 2h | 0d | TEAM_2Shift_Calendar-1 | Helper; Fitter | 4h | 237.5 | 237.5 |
| 498 | 6.15.14 | Expansion | 3d | 2018-07-05 18:53 | 2018-07-07 10:53 | 497 | 2018-06-18 09:00 | 2018-06-19 17:00 | 3d | 0d | TEAM_2Shift_Calendar-1 | Helper [200%]; Expanding Machine; Fitter | 96h | 4,050 | 4,050 |
| 499 | 6.15.15 | Inspection | 1d | 2018-07-07 10:53 | 2018-07-07 18:53 | 498 | 2018-06-19 17:00 | 2018-06-20 09:00 | 1d | 0d | TEAM_2Shift_Calendar-1 | Fitter [200%] | 16h | 1,100 | 1,100 |

Notes:
- 487: Tie Rod-SS-316L(5nos)
- 488: 67NOS
- 490: 8&14T-SA 240 GR.316L

| ID | WBS | Task | Duration | Start | Finish | Predecessors | Baseline start | Baseline finish | Baseline duration | Total slack | Calendar | Resources | Work | Cost | Baseline cost |
| --- | --- | --- | --- | --- | --- | --- | --- | --- | --- | --- | --- | --- | --- | --- | --- |
| 500 | 6.16 | **FinalAssembly&HydrotestTest** | 7.72d | 2018-07-07 18:53 | 2018-07-12 16:39 |  | 2018-06-20 09:00 | 2018-06-25 17:00 | 7d | 0d | TEAM_2Shift_Calendar-1 |  | 276.25h | 16,000 | 16,000 |
| 501 | 6.16.1 | OpenBundleHydrotest | 1d | 2018-07-07 18:53 | 2018-07-09 10:53 | 484 | 2018-06-20 09:00 | 2018-06-20 17:00 | 1d | 0d | TEAM_2Shift_Calendar-1 | Helper [400%]; Fitter [400%] | 64h | 3,800 | 3,800 |
| 502 | 6.16.2 | OpenBundleHydrotest-TPI Inspection | 1d | 2018-07-09 10:53 | 2018-07-09 18:53 | 501 | 2018-06-20 17:00 | 2018-06-21 09:00 | 1d | 0d | TEAM_2Shift_Calendar-1 | TPI (Cost) [0.1%]; QC Engineer | 1h |  |  |
| 503 | 6.16.3 | Bundle Insertion | 1d | 2018-07-09 18:53 | 2018-07-10 10:53 | 502 | 2018-06-21 09:00 | 2018-06-21 17:00 | 1d | 0d | TEAM_2Shift_Calendar-1 | Helper [400%]; Fitter [400%] | 64h | 3,800 | 3,800 |
| 504 | 6.16.4 | ShellSide Hydrotest | 1d | 2018-07-10 10:53 | 2018-07-10 18:53 | 503 | 2018-06-21 17:00 | 2018-06-22 09:00 | 1d | 0d | TEAM_2Shift_Calendar-1 | Helper [400%]; Fitter [400%] | 64h | 3,800 | 3,800 |
| 505 | 6.16.5 | ShellSideHydrotestTPIInspection | 1.72d | 2018-07-10 18:53 | 2018-07-11 16:39 | 504 | 2018-06-22 09:00 | 2018-06-22 17:00 | 1d | 0d | TEAM_2Shift_Calendar-1 | TPI (Cost) [0.1%]; QC Engineer | 3.25h |  |  |
| 506 | 6.16.6 | Final hydro test | 1d | 2018-07-11 16:39 | 2018-07-12 08:39 | 505 | 2018-06-22 17:00 | 2018-06-25 09:00 | 1d | 0d | TEAM_2Shift_Calendar-1 | Helper [400%]; Fitter [400%] | 64h | 3,800 | 3,800 |
| 507 | 6.16.7 | De-watering&Drying | 1d | 2018-07-12 08:39 | 2018-07-12 16:39 | 506 | 2018-06-25 09:00 | 2018-06-25 17:00 | 1d | 0d | TEAM_2Shift_Calendar-1 | Helper [200%] | 16h | 800 | 800 |
| 508 | 6.17 | **Cleaning&Painting** | 35d | 2018-07-12 16:39 | 2018-08-04 08:39 |  | 2018-06-25 17:00 | 2018-07-17 09:00 | 35d | 0d | TEAM_2Shift_Calendar-1 |  | 151.09h | 5,400 | 5,400 |
| 509 | 6.17.1 | BlastCleaningArrangement | 1d | 2018-07-12 16:39 | 2018-07-13 08:39 | 500 | 2018-06-25 17:00 | 2018-06-26 09:00 | 1d | 0d | TEAM_2Shift_Calendar-1 | Store | 8h |  |  |
| 510 | 6.17.2 | Transport for BlastCleaning | 1d | 2018-07-13 08:39 | 2018-07-13 16:39 | 509 | 2018-06-26 09:00 | 2018-06-26 17:00 | 1d | 0d | TEAM_2Shift_Calendar-1 | Helper [300%]; Fitter [200%] | 40h | 2,300 | 2,300 |
| 511 | 6.17.3 | BlastCleaning | 1d | 2018-07-13 16:39 | 2018-07-16 08:39 | 510 | 2018-06-26 17:00 | 2018-06-27 09:00 | 1d | 0d | TEAM_2Shift_Calendar-1 | Helper | 8h | 400 | 400 |
| 512 | 6.17.4 | ReturnFromBlastCleaning | 1d | 2018-07-18 08:39 | 2018-07-18 16:39 | 511FS+4d | 2018-06-29 09:00 | 2018-06-29 17:00 | 1d | 0d | TEAM_2Shift_Calendar-1 | Painter | 8h |  |  |
| 513 | 6.17.5 | PrimerPainting | 2d | 2018-07-18 16:39 | 2018-07-19 16:39 | 512 | 2018-06-29 17:00 | 2018-06-30 17:00 | 2d | 0d | TEAM_2Shift_Calendar-1 | Paint (Cost) [0.1%]; SC (Work) | 13.13h |  |  |
| 514 | 6.17.6 | TopCoatPainting | 2d | 2018-07-19 16:39 | 2018-07-20 16:39 | 513 | 2018-06-30 17:00 | 2018-07-02 17:00 | 2d | 0d | TEAM_2Shift_Calendar-1 | Painter | 16h |  |  |
| 515 | 6.17.7 | Painting Inspection | 1d | 2018-07-20 16:39 | 2018-07-21 08:39 | 514 | 2018-07-02 17:00 | 2018-07-03 09:00 | 1d | 0d | TEAM_2Shift_Calendar-1 | Painter | 8h |  |  |
| 516 | 6.17.8 | Despatch Clearanceby TPI&Despatch | 3d | 2018-07-21 08:39 | 2018-07-23 16:39 | 515 | 2018-07-03 09:00 | 2018-07-04 17:00 | 3d | 0d | TEAM_2Shift_Calendar-1 | QC Engineer | 0.95h |  |  |
| 517 | 6.17.9 | FinalDocumentation | 1d | 2018-07-30 16:39 | 2018-07-31 08:39 | 516FS+10d | 2018-07-10 17:00 | 2018-07-11 09:00 | 1d | 0d | TEAM_2Shift_Calendar-1 | Marketing | 1h |  |  |
| 518 | 6.17.10 | Shipping | 1d | 2018-08-03 16:39 | 2018-08-04 08:39 | 517FS+7d | 2018-07-16 17:00 | 2018-07-17 09:00 | 1d | 0d | TEAM_2Shift_Calendar-1 | Helper [400%]; Fitter [200%] | 48h | 2,700 | 2,700 |
| 519 | 7 | **Pbg** | 1d | 2018-07-23 16:39 | 2018-07-24 16:39 |  | 2018-07-04 17:00 | 2018-07-05 17:00 | 1d | 8.12d |  |  | 4h |  |  |
| 520 | 7.1 | Pbg submission | 1d | 2018-07-23 16:39 | 2018-07-24 16:39 | 516 | 2018-07-04 17:00 | 2018-07-05 17:00 | 1d | 8.12d |  | Finance | 4h |  |  |
