# 4230-ASL

Schedule from MS Project, 2017-11-02 to 2018-05-02, costs in ₹, A marks actual dates.

## Calendars

- TEAM_Stand_Calendar: Mon-Sat 08:30-12:30, 13:30-17:30; Sun off. Exceptions (off unless hours are given): 2017-01-13 to 2023-08-12 (2nd Sat, recurring), 2017-01-26 to 2036-01-26 (Republic Day, recurring), 2017-01-27 to 2023-08-26 (4th Sat, recurring), 2017-05-01 to 2036-05-01 (May Day, recurring), 2017-08-15 to 2036-08-15 (Independence Day, recurring), 2017-10-02 to 2036-10-02 (Gandhi Jayanti, recurring), 2018-01-15 (Thiruvalluvar Day'2018).
- TEAM_2Shift_Calendar-1: Mon-Sat 06:00-22:00; Sun off. Exceptions (off unless hours are given): 2017-01-13 to 2023-02-11 (2nd Sat, recurring), 2017-01-26 to 2036-01-26 (Republic Day, recurring), 2017-01-27 to 2023-08-26 (4th Sat, recurring), 2017-05-01 to 2036-05-01 (May Day, recurring), 2017-08-15 to 2036-08-15 (Indepdence Day, recurring), 2017-10-02 to 2036-10-02 (Gandhi Jayanti, recurring), 2018-01-15 (Thiruvalluvar Day'2018).

## Resources

| Resource | Rate |
| --- | --- |
| CNC Lathe |  |
| Heat Treatment Furnace |  |
| Hydraulic Press |  |
| Maintenance Engineer |  |
| Helper | 50 |
| Client |  |
| Marketing |  |
| Store |  |
| PM |  |
| PPC Engineer |  |
| QC Engineer |  |
| TIG Welding Machine |  |
| TIG Welder | 125 |
| SC (Work) |  |
| Production Department |  |
| OAGM |  |
| Milling Operator | 120 |
| Milling Machine |  |
| Lathe |  |
| Lathe Operator | 120 |
| Gas Cutter | 68.75 |
| Fitter | 68.75 |
| Crane |  |
| Pipe (Cost) |  |
| Plate (Cost) |  |
| Rod (Cost) |  |
| Finance |  |
| Design Engineer |  |
| Foreman |  |
| Purchase Engineer |  |
| TPI (Cost) |  |
| Budget Cost Labour Expenses |  |
| Budget Cost Material Expenses |  |
| Budget Cost P&F/Transport |  |
| Budget Cost Subcontract |  |
| Budget Cost TPI Charges |  |
| Budget Hours Contract |  |
| Budget Hours TEAM |  |

## Schedule

| ID | WBS | Task | Type | Duration | Start | Finish | Predecessors | Complete | Baseline start | Baseline finish | Baseline duration | Resources | Work | Actual work |
| --- | --- | --- | --- | --- | --- | --- | --- | --- | --- | --- | --- | --- | --- | --- |
| 1 | 1 | **Project Initiation** |  | 21d | 2017-11-02 A | 2017-11-28 A |  | 100% | 2017-11-02 | 2017-11-28 | 21d |  | 206h | 206h |
| 2 | 1.1 | LOA Receipt |  | 1d | 2017-11-02 A | 2017-11-02 A |  | 100% | 2017-11-02 | 2017-11-02 | 1d | Marketing | 8h | 8h |
| 3 | 1.2 | Wo issue |  | 2d | 2017-11-03 A | 2017-11-04 A | 2 | 100% | 2017-11-03 | 2017-11-04 | 2d | Marketing | 16h | 16h |
| 4 | 1.3 | CRM |  | 4d | 2017-11-06 A | 2017-11-09 A | 3 | 100% | 2017-11-06 | 2017-11-09 | 4d | PM; Marketing; QC Engineer; Production Department | 96h | 96h |
| 5 | 1.4 | ABG (BG) 10% |  | 2d | 2017-11-08 A | 2017-11-09 A | 4 | 100% | 2017-11-08 | 2017-11-09 | 2d | Finance | 6h | 6h |
| 6 | 1.5 | Service order receipt |  | 10d | 2017-11-16 A | 2017-11-28 A | 5FS+4d | 100% | 2017-11-16 | 2017-11-28 | 10d | Marketing | 80h | 80h |
| 7 | 2 | Drawing Printing & Issue | milestone | 1d | 2017-11-29 A | 2017-11-29 A | 6 | 100% | 2017-11-29 | 2017-11-29 | 1d | Design Engineer | 8h | 8h |
| 8 | 3 | **PR issue** |  | 0.5d | 2017-11-29 A | 2017-11-30 A |  | 100% | 2017-11-29 | 2017-11-30 | 0.5d |  | 6h | 6h |
| 9 | 3.1 | Plates |  | 4h | 2017-11-30 A | 2017-11-30 A | 7 | 100% | 2017-11-30 | 2017-11-30 | 4h | Plate (Cost) [0.1%]; PPC Engineer | 2h | 2h |
| 10 | 3.2 | Rods |  | 4h | 2017-11-29 A | 2017-11-30 A | 7 | 100% | 2017-11-29 | 2017-11-30 | 4h | PPC Engineer; Rod (Cost) [0.1%] | 2h | 2h |
| 11 | 3.3 | Mesh |  | 1h | 2017-11-30 A | 2017-11-30 A | 7 | 100% | 2017-11-30 | 2017-11-30 | 1h | PPC Engineer | 1h | 1h |
| 12 | 3.4 | Testing components |  | 1h | 2017-11-30 A | 2017-11-30 A | 7 | 100% | 2017-11-30 | 2017-11-30 | 1h | PPC Engineer | 1h | 1h |
| 13 | 4 | **Material Ordering** |  | 1.38d | 2017-12-02 A | 2017-12-04 A |  | 100% | 2017-12-02 | 2017-12-04 | 1.38d |  | 20h | 20h |
| 14 | 4.1 | Ti Plate |  | 1d | 2017-12-02 A | 2017-12-04 A | 9FS+2d | 100% | 2017-12-02 | 2017-12-04 | 1d | Plate (Cost) [0.1%]; Purchase Engineer | 6h | 6h |
| 15 | 4.2 | Ti rod |  | 1d | 2017-12-02 A | 2017-12-04 A | 10FS+2d | 100% | 2017-12-02 | 2017-12-04 | 1d | Purchase Engineer | 6h | 6h |
| 16 | 4.3 | SS mesh |  | 1d | 2017-12-02 A | 2017-12-04 A | 11FS+2d | 100% | 2017-12-02 | 2017-12-04 | 1d | Purchase Engineer | 4h | 4h |
| 17 | 4.4 | Testing components |  | 1d | 2017-12-02 A | 2017-12-04 A | 12FS+2d | 100% | 2017-12-02 | 2017-12-04 | 1d | Purchase Engineer | 4h | 4h |
| 18 | 5 | **Material receipt** |  | 11.5d | 2018-01-18 A | 2018-02-02 A |  | 100% | 2018-01-18 | 2018-02-02 | 11.5d |  | 8h | 8h |
| 19 | 5.1 | Ti plate |  | 11.5d | 2018-01-18 A | 2018-02-02 A | 13FS+45d | 100% | 2018-01-18 | 2018-02-02 | 11.5d | Purchase Engineer | 2h | 2h |
| 20 | 5.2 | Ti rod |  | 11.5d | 2018-01-18 A | 2018-02-02 A | 13FS+45d | 100% | 2018-01-18 | 2018-02-02 | 11.5d | Purchase Engineer | 2h | 2h |
| 21 | 5.3 | SS Mesh |  | 11.5d | 2018-01-18 A | 2018-02-02 A | 13FS+45d | 100% | 2018-01-18 | 2018-02-02 | 11.5d | Purchase Engineer | 2h | 2h |
| 22 | 5.4 | Testing Components |  | 11.5d | 2018-01-18 A | 2018-02-02 A | 13FS+45d | 100% | 2018-01-18 | 2018-02-02 | 11.5d | Purchase Engineer | 2h | 2h |
| 23 | 6 | **Material Costing** |  | 0d | 2017-12-18 A | 2017-12-18 A |  | 100% | 2017-12-18 | 2017-12-18 | 0d |  |  |  |
| 24 | 6.1 | Material Costing - Plates | milestone, manual | 0d | 2017-12-18 A | 2017-12-18 A |  | 100% | 2017-12-18 | 2017-12-18 | 0d |  |  |  |
| 25 | 6.2 | Material Costing - Rods | milestone, manual | 0d | 2017-12-18 A | 2017-12-18 A |  | 100% | 2017-12-18 | 2017-12-18 | 0d |  |  |  |
| 26 | 6.3 | Material Costing - Others | milestone, manual | 0d | 2017-12-18 A | 2017-12-18 A |  | 100% | 2017-12-18 | 2017-12-18 | 0d |  |  |  |

Notes:
- 17: Cu Washer, Strain Gauge Fixing Solution

| ID | WBS | Task | Duration | Start | Finish | Predecessors | Complete | Baseline start | Baseline finish | Baseline duration | Calendar | Resources | Work | Actual work | Cost | Baseline cost | Actual cost |
| --- | --- | --- | --- | --- | --- | --- | --- | --- | --- | --- | --- | --- | --- | --- | --- | --- | --- |
| 27 | 7 | **QC** | 14d | 2018-02-02 A | 2018-02-20 A |  | 100% | 2018-02-02 | 2018-02-20 | 14d |  |  | 72h | 72h | 1,500 | 1,500 | 1,500 |
| 28 | 7.1 | Welder Qualification | 1.5d | 2018-02-02 A | 2018-02-03 A | 19 | 100% | 2018-02-02 | 2018-02-03 | 1.5d |  | Production Department; QC Engineer; TIG Welder; TIG Welding Machine | 48h | 48h | 1,500 | 1,500 | 1,500 |
| 29 | 7.2 | Chemical testing | 1d | 2018-02-19 A | 2018-02-20 A | 28FS+12d | 100% | 2018-02-19 | 2018-02-20 | 1d |  | QC Engineer | 8h | 8h |  |  |  |
| 30 | 7.3 | Mechanical testing | 1d | 2018-02-12 A | 2018-02-13 A | 28FS+6d | 100% | 2018-02-12 | 2018-02-13 | 1d |  | QC Engineer; SC (Work) | 16h | 16h |  |  |  |
| 31 | 8 | **Fabrication** | 224.8d | 2017-12-07 A | 2018-05-02 A |  | 100% | 2017-12-07 | 2018-04-27 | 220.5d | TEAM_2Shift_Calendar-1 |  | 1685.32h | 1685.32h | 68,241.25 | 68,241.26 | 68,241.25 |
| 32 | 8.1 | Marking | 0.5d | 2017-12-07 A | 2018-02-02 A | 19, 20 | 100% | 2017-12-07 | 2018-02-02 | 0.5d | TEAM_2Shift_Calendar-1 | Helper; Fitter; Plate (Cost) [0.1%] | 8h | 8h | 475 | 475 | 475 |
| 33 | 8.2 | Material identification | 6d | 2018-02-02 A | 2018-02-06 A | 19 | 100% | 2018-02-02 | 2018-02-06 | 6d | TEAM_2Shift_Calendar-1 | Helper; Store; Crane; Client; Fitter; QC Engineer | 37.67h | 37.67h | 440.97 | 440.98 | 440.97 |
| 34 | 8.3 | Machining of Adaptor | 2d | 2018-02-07 A | 2018-02-07 A | 33 | 100% | 2018-02-07 | 2018-02-07 | 2d | TEAM_2Shift_Calendar-1 | CNC Lathe; Lathe Operator; Rod (Cost) [0.1%] | 64h | 64h | 3,840 | 3,840 | 3,840 |
| 35 | 8.4 | Machining of Socket | 5d | 2018-02-05 A | 2018-02-07 A | 33 | 100% | 2018-02-05 | 2018-02-07 | 5d | TEAM_2Shift_Calendar-1 | CNC Lathe; Lathe Operator; Rod (Cost) [0.1%] | 124h | 124h | 7,440 | 7,440 | 7,440 |
| 36 | 8.5 | Mechanical & Chemical Prep testing speciman | 1.5d | 2018-02-05 A | 2018-02-06 A | 33 | 100% | 2018-02-05 | 2018-02-06 | 1.5d |  | Gas Cutter; Milling Machine; Milling Operator [50%]; Production Department; QC Engineer; SC (Work) | 23.86h | 23.86h | 761.5 | 761.5 | 761.5 |
| 37 | 8.6 | Cutting | 2d | 2018-01-24 A | 2018-01-24 A | 33 | 100% | 2018-01-24 | 2018-01-24 | 2d | TEAM_2Shift_Calendar-1 | OAGM; Helper; Gas Cutter | 48h | 48h | 1,200 | 1,200 | 1,200 |
| 38 | 8.7 | Machining | 2d | 2018-01-29 A | 2018-01-30 A | 37 | 100% | 2018-01-29 | 2018-01-30 | 2d | TEAM_2Shift_Calendar-1 | Lathe; Lathe Operator | 32h | 32h |  |  |  |
| 39 | 8.8 | Heat Treatment & Forming | 8d | 2018-01-24 A | 2018-02-03 A | 38 | 100% | 2018-01-24 | 2018-02-03 | 8d |  | Helper [200%]; Fitter; Foreman [50%]; Heat Treatment Furnace; Hydraulic Press | 212h | 212h | 4,984 | 4,984 | 4,984 |
| 40 | 8.9 | Machining of Hemisphere | 50d | 2018-02-09 A | 2018-03-13 A | 39 | 100% | 2018-02-09 | 2018-03-13 | 50d | TEAM_2Shift_Calendar-1 | CNC Lathe; Lathe Operator | 400h | 400h | 20,354.2 | 20,354.2 | 20,354.2 |
| 41 | 8.10 | Machining of Slot & Hexagon | 2d | 2018-02-28 A | 2018-03-02 A | 35, 34 | 100% | 2018-02-28 | 2018-03-02 | 2d |  | Production Department; SC (Work) | 24h | 24h |  |  |  |
| 42 | 8.11 | Component inspection | 1d | 2018-03-09 A | 2018-03-09 A | 41 | 100% | 2018-03-09 | 2018-03-09 | 1d | TEAM_2Shift_Calendar-1 | Client; QC Engineer | 8h | 8h |  |  |  |
| 43 | 8.12 | **Top Hem to Socket Welding** | 5.39d | 2018-03-12 A | 2018-03-17 A |  | 100% | 2018-03-12 | 2018-03-17 | 5.39d |  |  | 65.46h | 65.46h | 1,272.9 | 1,272.9 | 1,272.9 |
| 44 | 8.12.1 | Hem to socket Fitup | 1d | 2018-03-12 A | 2018-03-12 A | 42 | 100% | 2018-03-12 | 2018-03-12 | 1d |  | Helper; TIG Welder; TIG Welding Machine | 12h | 12h | 600 | 600 | 600 |
| 45 | 8.12.2 | Hem to socket root welding | 1.68d | 2018-03-12 A | 2018-03-13 A | 44 | 100% | 2018-03-12 | 2018-03-13 | 1.68d | TEAM_2Shift_Calendar-1 | Helper; TIG Welder; TIG Welding Machine | 13.46h | 13.46h | 672.9 | 672.9 | 672.9 |
| 46 | 8.12.3 | RT inspection | 1d | 2018-03-13 A | 2018-03-14 A | 45 | 100% | 2018-03-13 | 2018-03-14 | 1d |  | Production Department; SC (Work) | 12h | 12h |  |  |  |
| 47 | 8.12.4 | Hem to Socket final welding | 2d | 2018-03-14 A | 2018-03-16 A | 46 | 100% | 2018-03-14 | 2018-03-16 | 2d |  | Helper; TIG Welder; TIG Welding Machine | 16h | 16h |  |  |  |
| 48 | 8.12.5 | RT inspection | 1d | 2018-03-16 A | 2018-03-17 A | 47 | 100% | 2018-03-16 | 2018-03-17 | 1d |  | Production Department; SC (Work) | 12h | 12h |  |  |  |
| 49 | 8.13 | **Bottom Hem to Socket Welding** | 4.12d | 2018-03-12 A | 2018-03-16 A |  | 100% | 2018-03-12 | 2018-03-16 | 4.12d |  |  | 71.67h | 71.67h | 2,533.33 | 2,533.33 | 2,533.33 |
| 50 | 8.13.1 | Hem to socket Fitup | 1d | 2018-03-12 A | 2018-03-12 A | 42 | 100% | 2018-03-12 | 2018-03-12 | 1d |  | Helper; TIG Welder; TIG Welding Machine | 12h | 12h | 600 | 600 | 600 |
| 51 | 8.13.2 | Hem to socket root welding | 6.67h | 2018-03-12 A | 2018-03-13 A | 50 | 100% | 2018-03-12 | 2018-03-13 | 6.67h | TEAM_2Shift_Calendar-1 | Helper; TIG Welder; TIG Welding Machine | 6.67h | 6.67h | 333.44 | 333.44 | 333.44 |
| 52 | 8.13.3 | RT inspection | 1d | 2018-03-12 A | 2018-03-13 A | 51 | 100% | 2018-03-12 | 2018-03-13 | 1d |  | Production Department; SC (Work) | 12h | 12h |  |  |  |
| 53 | 8.13.4 | Hem to Socket final welding | 2d | 2018-03-13 A | 2018-03-15 A | 52 | 100% | 2018-03-13 | 2018-03-15 | 2d |  | Helper; TIG Welder; TIG Welding Machine | 32h | 32h | 1,599.89 | 1,599.89 | 1,599.89 |
| 54 | 8.13.5 | RT inspection | 1h | 2018-03-15 A | 2018-03-16 A | 53 | 100% | 2018-03-15 | 2018-03-16 | 1h |  | Production Department; SC (Work) | 9h | 9h |  |  |  |

| ID | WBS | Task | Duration | Start | Finish | Predecessors | Complete | Baseline start | Baseline finish | Baseline duration | Constraint | Calendar | Resources | Work | Actual work | Cost | Baseline cost | Actual cost |
| --- | --- | --- | --- | --- | --- | --- | --- | --- | --- | --- | --- | --- | --- | --- | --- | --- | --- | --- |
| 55 | 8.14 | **Hemisphere Welding (Dish Ends)** | 5.92d | 2018-03-19 A | 2018-03-27 A |  | 100% | 2018-03-19 | 2018-03-27 | 5.92d |  |  |  | 197.66h | 197.66h | 5,782.96 | 5,782.96 | 5,782.96 |
| 56 | 8.14.1 | Dish Fit Up | 4.55d | 2018-03-19 A | 2018-03-23 A | 48FS+1d, 54FS+1d | 100% | 2018-03-19 | 2018-03-23 | 4.55d | finish no earlier than 2018-03-23 |  | Helper; TIG Welder; TIG Welding Machine | 9.32h | 9.32h | 465.93 | 465.93 | 465.93 |
| 57 | 8.14.2 | Dish Welding (Root) | 3.55d | 2018-03-20 A | 2018-03-23 A | 56SS | 100% | 2018-03-20 | 2018-03-23 | 3.55d | finish no earlier than 2018-03-23 |  | Helper; TIG Welder; TIG Welding Machine | 22.27h | 22.27h | 1,113.33 | 1,113.33 | 1,113.33 |
| 58 | 8.14.3 | RT inspection | 1d | 2018-03-22 A | 2018-03-23 A | 57SS | 100% | 2018-03-22 | 2018-03-23 | 1d | finish no earlier than 2018-03-23 |  | Production Department; SC (Work) | 16h | 16h |  |  |  |
| 59 | 8.14.4 | Dish Welding (Final) | 6.62d | 2018-03-22 A | 2018-03-27 A | 58SS | 100% | 2018-03-22 | 2018-03-27 | 6.62d | finish no earlier than 2018-03-26 | TEAM_2Shift_Calendar-1 | Helper; TIG Welder; TIG Welding Machine | 60.07h | 60.07h | 3,003.7 | 3,003.7 | 3,003.7 |
| 60 | 8.14.5 | Cleaning Process | 3d | 2018-03-22 A | 2018-03-26 A | 59SS | 100% | 2018-03-22 | 2018-03-26 | 3d |  |  | Helper; Fitter | 87h | 87h | 1,200 | 1,200 | 1,200 |
| 61 | 8.14.6 | RT inspection | 1.5h | 2018-03-26 A | 2018-03-26 A | 60FS-1d | 100% | 2018-03-26 | 2018-03-26 | 1.5h |  |  | Production Department; SC (Work) | 3h | 3h |  |  |  |
| 62 | 8.15 | **Final inspection** | 58.3d | 2018-03-26 A | 2018-05-02 A |  | 100% | 2018-03-26 | 2018-04-27 | 54d |  | TEAM_2Shift_Calendar-1 |  | 369h | 369h | 19,156.39 | 19,156.39 | 19,156.39 |
| 63 | 8.15.1 | Strain gauge fixing (7/10) | 2d | 2018-03-26 A | 2018-03-27 A | 61 | 100% | 2018-03-26 | 2018-03-27 | 2d |  | TEAM_2Shift_Calendar-1 | Fitter; Helper; Maintenance Engineer | 6h | 6h | 356.25 | 356.25 | 356.25 |
| 64 | 8.15.2 | Hydraulic proof pressure testing | 6d | 2018-03-27 A | 2018-03-30 A | 63 | 100% | 2018-03-27 | 2018-03-30 | 6d |  | TEAM_2Shift_Calendar-1 | Helper; Fitter [300%]; QC Engineer; Foreman | 223h | 223h | 12,490.44 | 12,490.44 | 12,490.44 |
| 65 | 8.15.3 | Cleaning | 1d | 2018-03-29 A | 2018-03-30 A | 64 | 100% | 2018-03-29 | 2018-03-30 | 1d |  | TEAM_2Shift_Calendar-1 | Helper; Fitter | 16h | 16h | 950 | 950 | 950 |
| 66 | 8.15.4 | RT inspection | 0.5d | 2018-03-30 A | 2018-03-30 A | 65 | 100% | 2018-03-30 | 2018-03-30 | 0.5d |  | TEAM_2Shift_Calendar-1 | SC (Work) | 4h | 4h |  |  |  |
| 67 | 8.15.5 | Final cleaning | 2d | 2018-03-30 A | 2018-03-31 A | 66 | 100% | 2018-03-30 | 2018-03-31 | 2d |  | TEAM_2Shift_Calendar-1 | Helper; Fitter | 16h | 16h | 1,000 | 1,000 | 1,000 |
| 68 | 8.15.6 | Inspection clearance from client | 1h | 2018-03-31 A | 2018-03-31 A | 67 | 100% | 2018-03-31 | 2018-03-31 | 1h |  | TEAM_2Shift_Calendar-1 | Client; QC Engineer | 1h | 1h |  |  |  |
| 69 | 8.15.7 | Stenciling | 1h | 2018-03-31 A | 2018-03-31 A | 68 | 100% | 2018-03-31 | 2018-03-31 | 1h |  | TEAM_2Shift_Calendar-1 | Helper; Fitter | 8h | 8h | 479.42 | 479.42 | 479.42 |
| 70 | 8.15.8 | Sealing | 1h | 2018-03-31 A | 2018-03-31 A | 69 | 100% | 2018-03-31 | 2018-03-31 | 1h |  | TEAM_2Shift_Calendar-1 | Helper; Fitter | 8h | 8h | 479.42 | 479.42 | 479.42 |
| 71 | 8.15.9 | Packing | 1h | 2018-03-31 A | 2018-03-31 A | 70 | 100% | 2018-03-31 | 2018-03-31 | 1h |  | TEAM_2Shift_Calendar-1 | Store; Helper [200%] | 4h | 4h | 138.46 | 138.46 | 138.46 |
| 72 | 8.15.10 | Despatch | 1h | 2018-03-31 A | 2018-03-31 A | 71 | 100% | 2018-03-31 | 2018-03-31 | 1h |  | TEAM_2Shift_Calendar-1 | Store | 1h | 1h |  |  |  |
| 73 | 8.15.11 | Strain gauge fixing (3/10) | 1d | 2018-04-24 A | 2018-04-25 A | 61FS+49d | 100% | 2018-04-23 | 2018-04-24 | 1d |  | TEAM_2Shift_Calendar-1 | Fitter; Helper; Maintenance Engineer | 8h | 8h | 124.59 | 124.59 | 124.59 |
| 74 | 8.15.12 | Hydraulic proof pressure testing | 2d | 2018-04-25 A | 2018-04-26 A | 73 | 100% | 2018-04-24 | 2018-04-25 | 2d |  | TEAM_2Shift_Calendar-1 | Helper; Fitter [300%]; QC Engineer; Foreman | 16h | 16h | 565.51 | 565.52 | 565.51 |
| 75 | 8.15.13 | Cleaning | 1d | 2018-04-26 A | 2018-04-26 A | 74 | 100% | 2018-04-24 | 2018-04-24 | 1d |  | TEAM_2Shift_Calendar-1 | Helper; Fitter | 8h | 8h | 475 | 475 | 475 |
| 76 | 8.15.14 | RT inspection | 1d | 2018-04-26 A | 2018-04-27 A | 75 | 100% | 2018-04-24 | 2018-04-25 | 1d |  | TEAM_2Shift_Calendar-1 | SC (Work) | 8h | 8h |  |  |  |
| 77 | 8.15.15 | Final cleaning | 2d | 2018-04-27 A | 2018-04-30 A | 76 | 100% | 2018-04-25 | 2018-04-26 | 2d |  | TEAM_2Shift_Calendar-1 | Helper; Fitter | 16h | 16h | 1,000 | 1,000 | 1,000 |
| 78 | 8.15.16 | Inspection clearance from client | 1d | 2018-04-30 A | 2018-05-02 A | 77 | 100% | 2018-04-26 | 2018-04-27 | 1d |  | TEAM_2Shift_Calendar-1 | Client; QC Engineer | 4h | 4h |  |  |  |
| 79 | 8.15.17 | Stenciling | 1d | 2018-04-30 A | 2018-04-30 A | 78SS | 100% | 2018-04-26 | 2018-04-26 | 1d |  | TEAM_2Shift_Calendar-1 | Helper; Fitter | 8h | 8h | 479.42 | 479.42 | 479.42 |
| 80 | 8.15.18 | Sealing | 1d | 2018-04-30 A | 2018-04-30 A | 79SS | 100% | 2018-04-26 | 2018-04-26 | 1d |  | TEAM_2Shift_Calendar-1 | Helper; Fitter | 8h | 8h | 479.42 | 479.42 | 479.42 |
| 81 | 8.15.19 | Packing | 1d | 2018-04-30 A | 2018-04-30 A | 80SS | 100% | 2018-04-26 | 2018-04-26 | 1d |  | TEAM_2Shift_Calendar-1 | Store; Helper [200%] | 4h | 4h | 138.46 | 138.46 | 138.46 |
| 82 | 8.15.20 | Despatch | 1d | 2018-04-30 A | 2018-04-30 A | 81SS | 100% | 2018-04-26 | 2018-04-26 | 1d |  | TEAM_2Shift_Calendar-1 | Store | 2h | 2h |  |  |  |
