# 4232-IOCL

Schedule from MS Project, 2017-11-07 to 2018-07-02, costs in ₹, A marks actual dates.

## Calendars

- TEAM_Stand_Calendar: Mon-Sat 08:30-12:30, 13:30-17:30; Sun off. Exceptions (off unless hours are given): 2017-01-13 to 2023-08-12 (2nd Sat, recurring), 2017-01-26 to 2036-01-26 (Republic Day, recurring), 2017-01-27 to 2023-08-26 (4th Sat, recurring), 2017-05-01 to 2036-05-01 (May Day, recurring), 2017-08-15 to 2036-08-15 (Independence Day, recurring), 2017-10-02 to 2036-10-02 (Gandhi Jayanti, recurring), 2018-01-15 (Thiruvalluvar Day'2018).
- TEAM_2Shift_Calendar-1: Mon-Sat 06:00-22:00; Sun off. Exceptions (off unless hours are given): 2017-01-13 to 2023-02-11 (2nd Sat, recurring), 2017-01-26 to 2036-01-26 (Republic Day, recurring), 2017-01-27 to 2023-08-26 (4th Sat, recurring), 2017-05-01 to 2036-05-01 (May Day, recurring), 2017-08-15 to 2036-08-15 (Indepdence Day, recurring), 2017-10-02 to 2036-10-02 (Gandhi Jayanti, recurring), 2018-01-15 (Thiruvalluvar Day'2018).

## Resources

| Resource | Rate |
| --- | --- |
| Marketing |  |
| PMO Head |  |
| Client |  |
| PM |  |
| Store |  |
| QC Engineer |  |
| PPC Engineer |  |
| Draftman |  |
| TIG Welding Machine |  |
| TIG Welder | 125 |
| SC (Work) |  |
| SMAW Welding Machine |  |
| SAW Welder | 68.75 |
| Rolling Machine |  |
| Radial Drilling Machine |  |
| Plate Bending Machine |  |
| Painter |  |
| OAGM |  |
| Milling Operator | 120 |
| Lathe |  |
| Lathe Operator | 120 |
| Helper | 50 |
| Grinding Machine |  |
| Grinder | 56.25 |
| Gas Cutter | 68.75 |
| Fitter | 68.75 |
| Expanding Machine |  |
| Driller | 68.75 |
| Cutting Machine |  |
| Crane |  |
| Purchase Engineer |  |
| TPI (Cost) |  |
| Design Engineer |  |
| SC Radiography (Cost) |  |
| SC (Cost) |  |
| Forging Non-Std (Cost) |  |
| Forging Std (Cost) |  |
| Pipe (Cost) |  |
| Plate (Cost) |  |
| Rod (Cost) |  |
| Tube (Cost) |  |
| Tube Sheet (Cost) |  |
| Finance |  |
| Production Engineer |  |
| SMAW Welder | 68.75 |

## Schedule

| ID | WBS | Task | Duration | Start | Finish | Predecessors | Complete | Baseline start | Baseline finish | Baseline duration | Baseline 1 start | Baseline 1 finish | Resources | Work | Actual work | Text3 | Text10 | Text13 | Text1 |
| --- | --- | --- | --- | --- | --- | --- | --- | --- | --- | --- | --- | --- | --- | --- | --- | --- | --- | --- | --- |
| 1 | 1 | **Project Initiation** | 4.38d | 2017-11-07 08:30 A | 2017-11-13 11:30 A |  | 100% | 2017-11-07 08:30 | 2017-11-13 11:30 | 4.38d |  |  |  | 25h | 25h |  |  |  |  |
| 2 | 1.1 | PO Receipt | 1d | 2017-11-07 08:30 A | 2017-11-07 17:30 A |  | 100% | 2017-11-07 08:30 | 2017-11-07 17:30 | 1d |  |  | Marketing | 8h | 8h | TEAM | TEAM | No |  |
| 3 | 1.2 | Work Order | 1d | 2017-11-09 08:30 A | 2017-11-09 17:30 A | 2FS+1d | 100% | 2017-11-09 08:30 | 2017-11-09 17:30 | 1d |  |  | Marketing | 8h | 8h |  |  |  |  |
| 4 | 1.3 | CRM | 3h | 2017-11-13 08:30 A | 2017-11-13 11:30 A | 3FS+1d | 100% | 2017-11-13 08:30 | 2017-11-13 11:30 | 3h |  |  | PMO Head; PM; Marketing | 9h | 9h |  |  |  |  |
| 5 | 2 | **Design** | 77.25d | 2017-11-14 08:30 A | 2018-02-21 10:30 A |  | 100% | 2017-11-14 08:30 | 2018-02-21 10:30 | 77.25d |  |  |  | 54h | 54h |  |  |  |  |
| 6 | 2.1 | Drawing Preparation | 24d | 2017-11-14 08:30 A | 2017-12-13 17:30 A | 3SS | 100% | 2017-11-14 08:30 | 2017-12-13 17:30 | 24d | 2017-11-22 17:00 | 2017-12-06 17:00 | Design Engineer; Draftman | 44h | 44h |  |  |  |  |
| 7 | 2.2 | Drawimg Submission | 1d | 2017-12-14 08:30 A | 2017-12-14 17:30 A | 6 | 100% | 2017-12-14 08:30 | 2017-12-14 17:30 | 1d |  |  | Design Engineer | 8h | 8h |  |  |  |  |
| 8 | 2.3 | Drawing Approval | 2h | 2018-02-21 08:30 A | 2018-02-21 10:30 A | 7FS+13d | 100% | 2018-02-21 08:30 | 2018-02-21 10:30 | 2h |  |  | Client | 2h | 2h |  |  |  |  |
| 9 | 3 | ABG Submission(5%) | 1d | 2018-04-04 10:30 A | 2018-04-05 10:30 A | 8FS+33d | 100% | 2018-04-04 10:30 | 2018-04-05 10:30 | 1d |  |  | Finance; Marketing | 2h | 2h |  |  |  |  |
| 10 | 4 | **Preliminary Details For Enquiry** | 14.25d | 2017-11-16 08:30 A | 2017-12-04 10:30 A |  | 100% | 2017-11-16 08:30 | 2017-12-04 10:30 | 14.25d |  |  |  | 12h | 12h |  |  |  |  |
| 11 | 4.1 | SA213GRT11 - Spacers, Tubes (334 U Tubes: Od 20 X 2.3Min Wt X 6000L Sl) | 4d | 2017-11-16 08:30 A | 2017-11-20 17:30 A | 3FS+4d | 100% | 2017-11-16 08:30 | 2017-11-20 17:30 | 4d |  |  | PPC Engineer [30%] | 4h | 4h |  |  |  | Design |
| 12 | 4.2 | CS Forging | 1.25d | 2017-12-02 08:30 A | 2017-12-04 10:30 A | 3FS+5d | 100% | 2017-12-02 08:30 | 2017-12-04 10:30 | 1.25d |  |  | PPC Engineer [30%] | 3h | 3h |  |  |  | Design |
| 13 | 4.3 | Las Forging - Tube Sheet, Tube Side Flanges, Nozzle Flanges | 1.25d | 2017-12-02 08:30 A | 2017-12-04 10:30 A | 3FS+5d | 100% | 2017-12-02 08:30 | 2017-12-04 10:30 | 1.25d |  |  | PPC Engineer [30%] | 3h | 3h |  |  |  | Design |
| 14 | 4.4 | SA387Gr11Cl1 22 & 24 Thk For Dish & Bonnet | 1d | 2017-12-02 08:30 A | 2017-12-02 17:30 A | 3FS+5d | 100% | 2017-12-02 08:30 | 2017-12-02 17:30 | 1d |  |  | PPC Engineer [30%] | 2h | 2h |  |  |  | Design |
| 15 | 5 | **QA** | 2d | 2018-02-01 08:30 A | 2018-02-02 17:30 A |  | 100% | 2018-02-01 08:30 | 2018-02-02 17:30 | 2d |  |  |  | 10h | 10h |  |  |  |  |
| 16 | 5.1 | Qap Submission | 2d | 2018-02-01 08:30 A | 2018-02-02 17:30 A | 8 | 100% | 2018-02-01 08:30 | 2018-02-02 17:30 | 2d |  |  | QC Engineer | 10h | 10h |  |  |  |  |
| 17 | 6 | **PR Issue** | 41d | 2017-11-21 08:30 A | 2018-01-10 17:30 A |  | 100% | 2017-11-21 08:30 | 2018-01-10 17:30 | 41d |  |  |  | 46h | 46h |  |  |  |  |
| 18 | 6.1 | Plates(SH14T,Dish 14T) -SA 516 GR.70 | 24h | 2017-12-27 08:30 A | 2017-12-29 17:30 A | 14FS+1d | 100% | 2017-12-27 08:30 | 2017-12-29 17:30 | 24h |  |  | Plate (Cost) [0.1%]; PPC Engineer [116.7%] | 4h | 4h |  |  |  | PPC |
| 19 | 6.2 | Plates(cha,Dish 22T) -SA 387 GR.11 Cl.2 | 4d | 2017-12-26 08:30 A | 2017-12-29 17:30 A | 14FS+1d | 100% | 2017-12-26 08:30 | 2017-12-29 17:30 | 4d |  |  | Plate (Cost) [0.1%]; PPC Engineer | 4h | 4h |  |  |  | PPC |
| 20 | 6.3 | Tie Rod Ø14X5876 Lg SA 739 B11 | 1d | 2017-12-29 08:30 A | 2017-12-29 17:30 A | 14FS+1d | 100% | 2017-12-29 08:30 | 2017-12-29 17:30 | 1d |  |  | Rod (Cost) [0.1%]; PPC Engineer | 1h | 1h |  |  |  | PPC |
| 21 | 6.4 | U Tube(OD 20X2.3T)-SA213 T11 | 24h | 2017-11-21 08:30 A | 2017-11-23 17:30 A | 11 | 100% | 2017-11-21 08:30 | 2017-11-23 17:30 | 24h |  |  | Tube (Cost) [0.1%]; PPC Engineer [133.3%] | 5h | 5h |  |  |  | PPC |
| 22 | 6.5 | Blank Forging(Ø1195x136T)-SA 182 GR.F11 Cl.2 | 2d | 2017-12-28 08:30 A | 2017-12-29 17:30 A | 13FS+1d | 100% | 2017-12-28 08:30 | 2017-12-29 17:30 | 2d |  |  | Tube Sheet (Cost) [0.1%]; PPC Engineer | 3h | 3h |  |  |  | PPC |
| 23 | 6.6 | Std Forging-SA 105 | 10h | 2017-12-28 08:30 A | 2017-12-29 10:30 A | 13FS+1d | 100% | 2017-12-28 08:30 | 2017-12-29 10:30 | 10h |  |  | Forging Std (Cost) [0.1%]; PPC Engineer | 3h | 3h |  |  |  | PPC |
| 24 | 6.7 | Std Forging-SA 182 GR.F11 Cl.2 | 1d | 2017-12-29 08:30 A | 2017-12-29 17:30 A | 13FS+1d | 100% | 2017-12-29 08:30 | 2017-12-29 17:30 | 1d |  |  | Forging Std (Cost) [0.1%]; PPC Engineer | 2h | 2h |  |  |  | PPC |
| 25 | 6.8 | Non-Std Forging(OD 1195XID 880X140T)-SA 182 GR.F11 Cl.2 | 2d | 2017-12-28 08:30 A | 2017-12-29 17:30 A | 13FS+1d | 100% | 2017-12-28 08:30 | 2017-12-29 17:30 | 2d |  |  | Forging Non-Std (Cost) [0.1%]; PPC Engineer | 3h | 3h |  |  |  | PPC |
| 26 | 6.9 | Non-Std Forging(OD1195XID 880X136T)-SA 266 GR.2 | 10h | 2017-12-28 08:30 A | 2017-12-29 10:30 A | 13FS+1d | 100% | 2017-12-28 08:30 | 2017-12-29 10:30 | 10h |  |  | Forging Non-Std (Cost) [0.1%]; PPC Engineer | 3h | 3h |  |  |  | PPC |
| 27 | 6.10 | Pipe-SA335 P11 | 32h | 2017-12-26 08:30 A | 2017-12-29 17:30 A | 13FS+1d | 100% | 2017-12-26 08:30 | 2017-12-29 17:30 | 32h |  |  | Pipe (Cost) [0.1%]; PPC Engineer [150%] | 3h | 3h |  |  |  | PPC |
| 28 | 6.11 | Pipe-SA 106 GR.B | 32h | 2017-12-26 08:30 A | 2017-12-29 17:30 A | 13FS+1d | 100% | 2017-12-26 08:30 | 2017-12-29 17:30 | 32h |  |  | Pipe (Cost) [0.1%]; PPC Engineer [150%] | 2h | 2h |  |  |  | PPC |
| 29 | 6.12 | Gaskets | 24h | 2017-12-27 08:30 A | 2017-12-29 17:30 A | 7FS+1d | 100% | 2017-12-27 08:30 | 2017-12-29 17:30 | 24h |  |  | PPC Engineer [133.3%] | 5h | 5h |  |  |  | PPC |
| 30 | 6.13 | Fasteners | 8h | 2017-12-29 08:30 A | 2017-12-29 17:30 A | 7FS+1d | 100% | 2017-12-29 08:30 | 2017-12-29 17:30 | 8h |  |  | PPC Engineer | 2h | 2h |  |  |  | PPC |
| 31 | 6.14 | Consumables-CS | 96h | 2017-12-28 08:30 A | 2018-01-10 17:30 A | 7FS+1d | 100% | 2017-12-28 08:30 | 2018-01-10 17:30 | 96h |  |  | PPC Engineer [183.3%] | 4h | 4h |  |  |  | PPC |
| 32 | 6.15 | Consumables-LAS | 104h | 2017-12-27 08:30 A | 2018-01-10 17:30 A | 7FS+1d | 100% | 2017-12-27 08:30 | 2018-01-10 17:30 | 104h |  |  | PPC Engineer [184.6%] | 2h | 2h |  |  |  | PPC |

Notes:
- 9: expected to get approval 15.02.2018

| ID | WBS | Task | Duration | Start | Finish | Predecessors | Complete | Remaining | Baseline start | Baseline finish | Baseline duration | Total slack | Free slack | Resources | Work | Actual work | Cost | Baseline cost | Actual cost |
| --- | --- | --- | --- | --- | --- | --- | --- | --- | --- | --- | --- | --- | --- | --- | --- | --- | --- | --- | --- |
| 33 | 7 | **Materials Ordering** | 127d | 2017-12-08 08:30 A | 2018-05-21 17:30 |  | 42% | 73.32d | 2017-12-08 08:30 | 2018-04-23 17:30 | 106d | 31.62d |  |  | 203h | 202h |  |  |  |
| 34 | 7.1 | Plates(14T,18T,6T,24T) -SA 516 GR.70 | 37h | 2018-01-16 08:30 A | 2018-01-20 14:30 A | 18FS+16d | 100% |  | 2018-01-16 08:30 | 2018-01-20 14:30 | 37h |  |  | Plate (Cost) [0.1%]; Purchase Engineer [121.6%] | 21h | 21h |  |  |  |
| 35 | 7.2 | Plates(cha,Dish 22T) -SA 387 GR.11 Cl.2 | 3d | 2018-01-20 08:30 A | 2018-01-23 17:30 A | 19FS+16d | 100% |  | 2018-01-20 08:30 | 2018-01-23 17:30 | 3d |  |  | Plate (Cost) [0.1%]; Purchase Engineer | 7h | 7h |  |  |  |
| 36 | 7.3 | Tie Rod Ø14X5876 Lg SA 739 B11 | 85d | 2018-02-02 08:30 A | 2018-05-21 17:30 | 20FS+10d | 1% | 84.5d | 2018-02-02 08:30 | 2018-04-23 17:30 | 64d | 31.62d | 0d | Rod (Cost) [0.1%]; Purchase Engineer | 5h | 4h |  |  |  |
| 37 | 7.4 | U Tube(OD 20X2.3T)-SA213 T11 | 18h | 2017-12-08 08:30 A | 2017-12-12 10:30 A | 21FS+11d | 100% |  | 2017-12-08 08:30 | 2017-12-12 10:30 | 18h |  |  | Tube (Cost) [0.1%]; Purchase Engineer | 18h | 18h |  |  |  |
| 38 | 7.5 | Blank Forging(Ø1195x136T)-SA 182 GR.F11 Cl.2 | 3d | 2018-01-12 08:30 A | 2018-01-17 17:30 A | 22FS+16d | 100% |  | 2018-01-12 08:30 | 2018-01-17 17:30 | 3d |  |  | Tube Sheet (Cost) [0.1%]; Purchase Engineer | 24h | 24h |  |  |  |
| 39 | 7.6 | Std Forging-SA 105 | 3d | 2018-01-12 08:30 A | 2018-01-17 17:30 A | 23FS+16d | 100% |  | 2018-01-12 08:30 | 2018-01-17 17:30 | 3d |  |  | Forging Std (Cost) [0.1%]; Purchase Engineer | 24h | 24h |  |  |  |
| 40 | 7.7 | Std Forging-SA 182 GR.F11 Cl.2 | 3d | 2018-01-12 08:30 A | 2018-01-17 17:30 A | 24FS+16d | 100% |  | 2018-01-12 08:30 | 2018-01-17 17:30 | 3d |  |  | Forging Std (Cost) [0.1%]; Purchase Engineer | 24h | 24h |  |  |  |
| 41 | 7.8 | Non-Std Forging(OD 1195XID 880X140T)-SA 182 GR.F11 Cl.2 | 3d | 2018-01-12 08:30 A | 2018-01-17 17:30 A | 25FS+16d | 100% |  | 2018-01-12 08:30 | 2018-01-17 17:30 | 3d |  |  | Forging Non-Std (Cost) [0.1%]; Purchase Engineer | 24h | 24h |  |  |  |
| 42 | 7.9 | Non-Std Forging(OD1195XID 880X136T)-SA 266 GR.2 | 2d | 2018-01-16 08:30 A | 2018-01-17 17:30 A | 26FS+14d | 100% |  | 2018-01-16 08:30 | 2018-01-17 17:30 | 2d |  |  | Forging Non-Std (Cost) [0.1%]; Purchase Engineer | 16h | 16h |  |  |  |
| 43 | 7.10 | Pipe-SA335 P11 | 115h | 2018-01-18 08:30 A | 2018-02-06 11:30 A | 27FS+14d | 100% |  | 2018-01-18 08:30 | 2018-02-06 11:30 | 115h |  |  | Pipe (Cost) [0.1%]; Purchase Engineer | 7h | 7h |  |  |  |
| 44 | 7.11 | Pipe-SA 106 GR.B | 114h | 2018-01-18 08:30 A | 2018-02-06 10:30 A | 28FS+14d | 100% |  | 2018-01-18 08:30 | 2018-02-06 10:30 | 114h |  |  | Pipe (Cost) [0.1%]; Purchase Engineer | 7h | 7h |  |  |  |
| 45 | 7.12 | Gaskets | 3d | 2018-01-19 08:30 A | 2018-01-22 17:30 A | 29FS+13d | 100% |  | 2018-01-19 08:30 | 2018-01-22 17:30 | 3d |  |  | Purchase Engineer [160%] | 5h | 5h |  |  |  |
| 46 | 7.13 | Fasteners | 3d | 2018-01-31 08:30 A | 2018-02-02 17:30 A | 30FS+13d | 100% |  | 2018-01-31 08:30 | 2018-02-02 17:30 | 3d |  |  | Purchase Engineer | 6h | 6h |  |  |  |
| 47 | 7.14 | Consumables-CS | 2d | 2018-01-16 08:30 A | 2018-01-17 17:30 A | 31FS+13d | 100% |  | 2018-01-16 08:30 | 2018-01-17 17:30 | 2d |  |  | Purchase Engineer | 8h | 8h |  |  |  |
| 48 | 7.15 | Consumables-LAS | 7h | 2018-03-30 08:30 A | 2018-03-30 16:30 A | 32FS+59d | 100% |  | 2018-03-30 08:30 | 2018-03-30 16:30 | 7h |  |  | Purchase Engineer | 7h | 7h |  |  |  |
| 49 | 8 | **Materials Receipt** | 110.38d | 2018-01-01 08:30 A | 2018-05-23 11:30 |  | 99% | 0.87d | 2018-01-01 08:30 | 2018-05-09 16:30 | 99.88d | 31.62d |  |  | 70h | 66h | 1,227.78 | 1,227.78 | 1,127.78 |
| 50 | 8.1 | Plates(SH14T,Dish 14T) -SA 516 GR.70 | 1d | 2018-02-09 08:30 A | 2018-02-09 17:30 A | 34FS+36d | 100% |  | 2018-02-09 08:30 | 2018-02-09 17:30 | 1d |  |  | Helper; Store; Plate (Cost) [0.1%]; Crane | 5h | 5h | 69.44 | 69.44 | 69.44 |
| 51 | 8.2 | Plates(cha,Dish 22T) -SA 387 GR.11 Cl.2 | 1d | 2018-02-09 08:30 A | 2018-02-09 17:30 A | 35FS+30d | 100% |  | 2018-02-09 08:30 | 2018-02-09 17:30 | 1d |  |  | Helper; Store; Plate (Cost) [0.1%]; Crane | 5h | 5h | 69.44 | 69.44 | 69.44 |
| 52 | 8.3 | Tie Rod Ø14X5876 Lg SA 739 B11 | 3h | 2018-05-23 08:30 | 2018-05-23 11:30 | 36FS+1d |  |  | 2018-05-05 08:30 | 2018-05-05 11:30 | 3h | 31.62d |  | Store; Rod (Cost) [0.1%]; Helper | 4h |  | 100 | 100 |  |
| 53 | 8.4 | U Tube(OD 20X2.3T)-SA213 T11 | 3h | 2018-04-19 10:30 A | 2018-04-19 14:30 A | 37FS+100d | 100% |  | 2018-04-19 10:30 | 2018-04-19 14:30 | 3h |  |  | Helper; Store; Tube (Cost) [0.1%]; Crane | 6h | 6h | 100 | 100 | 100 |
| 54 | 8.5 | Blank Forging(Ø1195x136T)-SA 182 GR.F11 Cl.2 | 3.5h | 2018-05-03 08:30 A | 2018-05-03 12:00 A | 38FS+81d | 100% |  | 2018-04-25 08:30 | 2018-04-25 12:00 | 3.5h |  |  | Helper; Store; Tube Sheet (Cost) [0.1%]; Crane | 9h | 9h | 150 | 150 | 150 |
| 55 | 8.6 | Std Forging-SA 105 | 3h | 2018-05-03 08:30 A | 2018-05-03 11:30 A | 39FS+81d | 100% |  | 2018-04-25 08:30 | 2018-04-25 11:30 | 3h |  |  | Helper; Store; Forging Std (Cost) [0.1%]; Crane | 6h | 6h | 100 | 100 | 100 |
| 56 | 8.7 | Std Forging-SA 182 GR.F11 Cl.2 | 3h | 2018-05-03 08:30 A | 2018-05-03 11:30 A | 40FS+81d | 100% |  | 2018-04-25 08:30 | 2018-04-25 11:30 | 3h |  |  | Helper; Store; Forging Std (Cost) [0.1%]; Crane | 6h | 6h | 100 | 100 | 100 |
| 57 | 8.8 | Non-Std Forging(OD 1195XID 880X140T)-SA 182 GR.F11 Cl.2 | 3h | 2018-05-03 08:30 A | 2018-05-03 11:30 A | 41FS+81d | 100% |  | 2018-04-25 08:30 | 2018-04-25 11:30 | 3h |  |  | Helper; Store; Forging Non-Std (Cost) [0.1%]; Crane | 6h | 6h | 100 | 100 | 100 |
| 58 | 8.9 | Non-Std Forging(OD1195XID 880X136T)-SA 266 GR.2 | 3h | 2018-05-03 08:30 A | 2018-05-03 11:30 A | 42FS+81d | 100% |  | 2018-04-25 08:30 | 2018-04-25 11:30 | 3h |  |  | Helper; Store; Forging Non-Std (Cost) [0.1%]; Crane | 6h | 6h | 100 | 100 | 100 |
| 59 | 8.10 | Pipe-SA335 P11 | 38d | 2018-01-01 08:30 A | 2018-02-19 17:30 A | 43FS+9d | 100% |  | 2018-01-01 08:30 | 2018-02-19 17:30 | 38d |  |  | Store; Pipe (Cost) [0.1%]; PPC Engineer | 1h | 1h |  |  |  |
| 60 | 8.11 | Pipe-SA 106 GR.B | 1d | 2018-02-17 10:30 A | 2018-02-19 10:30 A | 44FS+9d | 100% |  | 2018-02-17 10:30 | 2018-02-19 10:30 | 1d |  |  | Store; Pipe (Cost) [0.1%]; PPC Engineer | 2h | 2h |  |  |  |
| 61 | 8.12 | Gaskets | 1d | 2018-03-16 08:30 A | 2018-03-16 17:30 A | 45FS+40d | 100% |  | 2018-03-16 08:30 | 2018-03-16 17:30 | 1d |  |  | Store; Helper | 4h | 4h | 88.89 | 88.89 | 88.89 |
| 62 | 8.13 | Fasteners | 9h | 2018-04-24 08:30 A | 2018-04-25 09:30 A | 46FS+63d | 100% |  | 2018-04-26 08:30 | 2018-04-27 09:30 | 9h |  |  | Store; Helper | 2h | 2h | 50 | 50 | 50 |
| 63 | 8.14 | Consumables-CS | 8h | 2018-05-08 08:30 A | 2018-05-08 17:30 A | 47FS+85d | 100% |  | 2018-05-02 08:30 | 2018-05-02 17:30 | 8h |  |  | Store; Helper | 2h | 2h | 50 | 50 | 50 |
| 64 | 8.15 | Consumables-LAS | 8h | 2018-04-20 16:30 A | 2018-04-21 16:30 A | 48FS+17d | 100% |  | 2018-05-08 16:30 | 2018-05-09 16:30 | 8h |  |  | Store; Helper | 6h | 6h | 150 | 150 | 150 |

Notes:
- 36: design approval waiting...
- 60: Available on stock

| ID | WBS | Task | Duration | Start | Finish | Predecessors | Complete | Remaining | Baseline start | Baseline finish | Baseline duration | Total slack | Free slack | Calendar | Resources | Work | Actual work | Cost | Baseline cost | Actual cost | Text1 |
| --- | --- | --- | --- | --- | --- | --- | --- | --- | --- | --- | --- | --- | --- | --- | --- | --- | --- | --- | --- | --- | --- |
| 65 | 9 | **Fabrication of Heat exchanger** | 86.38d | 2018-03-09 09:30 A | 2018-06-28 13:30 |  | 57% | 37.24d | 2018-03-09 09:30 | 2018-06-27 13:30 | 85.38d | 3.5d |  |  |  | 4507h | 2035h | 199,598.26 | 201,011 | 94,001.67 |  |
| 66 | 9.1 | **Dish Forming-2 Nos** | 43.5d | 2018-05-02 09:30 A | 2018-05-29 21:30 |  | 70% | 12.93d | 2018-04-24 17:30 | 2018-06-05 15:30 | 63.75d | 47.75d | 0d | TEAM_2Shift_Calendar-1 |  | 221h | 125h | 8,397.87 | 8,636.3 | 5,579.12 |  |
| 67 | 9.1.1 | **Dish Preparation** | 32.25d | 2018-05-02 09:30 A | 2018-05-22 11:30 A |  | 100% |  | 2018-04-24 17:30 | 2018-05-28 13:31 | 49.5d |  |  | TEAM_2Shift_Calendar-1 |  | 63h | 63h | 2,785.37 | 2,911.3 | 2,785.37 |  |
| 68 | 9.1.1.1 | Dish Blank Marking | 4h | 2018-05-02 09:30 A | 2018-05-02 13:30 A | 50FS+120d, 51FS+125d | 100% |  | 2018-04-24 17:30 | 2018-04-24 21:30 | 4h |  |  | TEAM_2Shift_Calendar-1 | Helper; Plate (Cost) [0.1%]; Fitter | 8h | 8h | 475 | 475 | 475 | Production |
| 69 | 9.1.1.2 | Dish Blank Mkg Inspection | 2h | 2018-05-02 13:30 A | 2018-05-02 15:30 A | 68 | 100% |  | 2018-04-24 21:30 | 2018-04-25 07:30 | 2h |  |  | TEAM_2Shift_Calendar-1 | Fitter | 2h | 2h | 137.5 | 137.5 | 137.5 | Production |
| 70 | 9.1.1.3 | Dish Blank Mkg Stamping | 1d | 2018-05-02 15:30 A | 2018-05-03 07:30 A | 69 | 100% |  | 2018-05-05 15:30 | 2018-05-07 07:30 | 1d |  |  | TEAM_2Shift_Calendar-1 | QC Engineer; Fitter | 10h | 10h | 528.23 | 528.23 | 528.23 | Production |
| 71 | 9.1.1.4 | Transfer For Cutting | 3h | 2018-05-03 07:30 A | 2018-05-03 10:30 A | 70 | 100% |  | 2018-05-15 15:30 | 2018-05-15 18:30 | 3h |  |  | TEAM_2Shift_Calendar-1 | Helper [300%] | 3h | 3h | 150 | 150 | 150 | Production |
| 72 | 9.1.1.5 | Dish Blank Cutting | 5h | 2018-05-03 10:30 A | 2018-05-03 15:30 A | 71 | 100% |  | 2018-05-15 18:30 | 2018-05-16 07:30 | 5h |  |  | TEAM_2Shift_Calendar-1 | Gas Cutter; OAGM; Helper | 15h | 15h | 593.75 | 593.75 | 593.75 | Production |
| 73 | 9.1.1.6 | Dish Blank OD Grinding | 7h | 2018-05-07 07:30 A | 2018-05-07 14:30 A | 72FS+5d | 100% |  | 2018-05-18 15:30 | 2018-05-19 06:30 | 7h |  |  | TEAM_2Shift_Calendar-1 | Grinding Machine; Grinder | 14h | 14h | 393.75 | 393.75 | 393.75 | Production |
| 74 | 9.1.1.7 | Dish Blank Offloading For Forming | 5h | 2018-05-07 14:30 A | 2018-05-07 19:30 A | 73 | 100% |  | 2018-05-19 06:30 | 2018-05-19 11:30 | 5h |  |  | TEAM_2Shift_Calendar-1 | Helper | 5h | 5h | 250 | 250 | 250 | Production |
| 75 | 9.1.1.8 | Dish Forming | 10d | 2018-05-07 19:30 A | 2018-05-14 19:30 A | 74 | 100% |  | 2018-05-19 11:30 | 2018-05-25 11:30 | 10d |  |  | TEAM_2Shift_Calendar-1 | SC (Cost) [0.1%] |  |  |  |  |  | Production |
| 76 | 9.1.1.9 | Receipt After Forming | 2h | 2018-05-21 19:30 A | 2018-05-21 21:30 A | 75FS+12d | 100% |  | 2018-05-25 11:30 | 2018-05-25 19:30 | 1d |  |  | TEAM_2Shift_Calendar-1 | Helper | 2h | 2h | 100 | 200 | 100 | Production |
| 77 | 9.1.1.10 | Inward Inspection | 6h | 2018-05-21 21:30 A | 2018-05-22 11:30 A | 76 | 100% |  | 2018-05-25 19:30 | 2018-05-28 13:31 | 1.25d |  |  | TEAM_2Shift_Calendar-1 | QC Engineer; Fitter | 4h | 4h | 157.14 | 183.08 | 157.14 | Production |
| 78 | 9.1.2 | **Surface Preparation** | 11.25d | 2018-05-22 11:30 A | 2018-05-29 21:30 |  | 30% | 7.88d | 2018-05-28 13:31 | 2018-06-05 15:30 | 14.25d | 47.75d |  | TEAM_2Shift_Calendar-1 |  | 158h | 62h | 5,612.5 | 5,725 | 2,793.75 |  |
| 79 | 9.1.2.1 | Surface Grinding | 13h | 2018-05-22 11:30 A | 2018-05-23 08:30 A | 77 | 100% |  | 2018-05-28 13:31 | 2018-05-29 12:31 | 15h |  |  | TEAM_2Shift_Calendar-1 | Grinding Machine; Grinder | 26h | 26h | 731.25 | 843.75 | 731.25 |  |
| 80 | 9.1.2.2 | Surface DP Check | 6h | 2018-05-23 08:30 A | 2018-05-23 14:30 A | 79 | 100% |  | 2018-05-29 12:31 | 2018-05-29 18:31 | 6h |  |  | TEAM_2Shift_Calendar-1 | Helper; Fitter | 12h | 12h | 712.5 | 712.5 | 712.5 |  |
| 81 | 9.1.2.3 | Spider Set Up For SR | 8h | 2018-05-23 14:30 A | 2018-05-24 06:30 A | 80 | 100% |  | 2018-05-29 18:31 | 2018-05-30 10:31 | 8h |  |  | TEAM_2Shift_Calendar-1 | Helper [200%]; Fitter | 24h | 24h | 1,350 | 1,350 | 1,350 |  |
| 82 | 9.1.2.4 | Dish SR | 3d | 2018-05-24 06:30 | 2018-05-25 14:30 | 81 |  |  | 2018-05-30 10:31 | 2018-06-02 08:30 | 5.75d | 47.25d | 0d | TEAM_2Shift_Calendar-1 | SC (Work); Production Engineer | 27h |  |  |  |  |  |
| 83 | 9.1.2.5 | Remove Spider | 8h | 2018-05-25 14:30 | 2018-05-28 06:30 | 82 |  |  | 2018-06-02 08:30 | 2018-06-02 16:30 | 8h | 47.75d | 0d | TEAM_2Shift_Calendar-1 | Grinding Machine; Grinder | 16h |  | 450 | 450 |  |  |
| 84 | 9.1.2.6 | Surface Cleaning | 6h | 2018-05-28 06:30 | 2018-05-28 12:30 | 83 |  |  | 2018-06-02 16:30 | 2018-06-04 06:30 | 6h | 47.75d | 0d | TEAM_2Shift_Calendar-1 | Helper | 6h |  | 300 | 300 |  |  |
| 85 | 9.1.2.7 | SF Marking | 4h | 2018-05-28 12:30 | 2018-05-28 16:30 | 84 |  |  | 2018-06-04 06:30 | 2018-06-04 10:30 | 4h | 47.75d | 0d | TEAM_2Shift_Calendar-1 | Helper; Fitter | 8h |  | 475 | 475 |  |  |
| 86 | 9.1.2.8 | SF Cutting | 5h | 2018-05-28 16:30 | 2018-05-28 21:30 | 85 |  |  | 2018-06-04 10:30 | 2018-06-04 15:30 | 5h | 47.75d | 0d | TEAM_2Shift_Calendar-1 | Gas Cutter; OAGM; Helper | 15h |  | 593.75 | 593.75 |  |  |
| 87 | 9.1.2.9 | Dish Edge Preparation | 8h | 2018-05-28 21:30 | 2018-05-29 13:30 | 86 |  |  | 2018-06-04 15:30 | 2018-06-05 07:30 | 8h | 47.75d | 0d | TEAM_2Shift_Calendar-1 | Grinding Machine; Grinder | 16h |  | 450 | 450 |  |  |
| 88 | 9.1.2.10 | Final Inspection | 1d | 2018-05-29 13:30 | 2018-05-29 21:30 | 87 |  |  | 2018-06-05 07:30 | 2018-06-05 15:30 | 1d | 47.75d |  | TEAM_2Shift_Calendar-1 | Fitter [200%] | 8h |  | 550 | 550 |  |  |

Notes:
- 66: 2 NOS
- 68: 16T *~ 1200
- 72: 16 T X 1200 DIA
- 75: 16T/14T-880 ID

| ID | WBS | Task | Duration | Start | Finish | Predecessors | Complete | Remaining | Baseline start | Baseline finish | Baseline duration | Total slack | Free slack | Calendar | Resources | Work | Actual work | Cost | Baseline cost | Actual cost |
| --- | --- | --- | --- | --- | --- | --- | --- | --- | --- | --- | --- | --- | --- | --- | --- | --- | --- | --- | --- | --- |
| 89 | 9.2 | **Nozzle Fabrication** | 23.12d | 2018-05-10 11:30 A | 2018-05-24 20:30 |  | 72% | 6.57d | 2018-04-25 11:30 | 2018-05-03 20:30 | 11.12d | 59.62d |  | TEAM_2Shift_Calendar-1 |  | 206h | 133h | 9,994.44 | 9,950 | 6,400.69 |
| 90 | 9.2.1 | Nozzle Pipe Receipt to production | 1d | 2018-05-10 11:30 A | 2018-05-10 19:30 A | 59, 60FS+80d, 55FS+12d, 56 | 100% |  | 2018-04-25 11:30 | 2018-04-25 19:30 | 1d |  |  | TEAM_2Shift_Calendar-1 | Forging Std (Cost) [0.1%]; Pipe (Cost) [0.1%]; Helper [200%] | 8h | 8h | 400 | 400 | 400 |
| 91 | 9.2.2 | **Nozzle Prep** | 11.25d | 2018-05-14 19:30 A | 2018-05-21 13:30 A |  | 100% |  | 2018-04-25 19:30 | 2018-05-02 13:30 | 7.25d |  |  | TEAM_2Shift_Calendar-1 |  | 125h | 125h | 6,000.69 | 5,956.25 | 6,000.69 |
| 92 | 9.2.2.1 | Nozzle Pipe Marking | 6h | 2018-05-14 19:30 A | 2018-05-15 09:30 A | 90FS+4d | 100% |  | 2018-04-25 19:30 | 2018-04-26 09:30 | 6h |  |  | TEAM_2Shift_Calendar-1 | Helper; Fitter | 12h | 12h | 712.5 | 712.5 | 712.5 |
| 93 | 9.2.2.2 | Nozzle Pipe Stamping | 1d | 2018-05-15 09:30 A | 2018-05-15 17:30 A | 92 | 100% |  | 2018-04-26 09:30 | 2018-04-26 17:30 | 1d |  |  | TEAM_2Shift_Calendar-1 | QC Engineer; TPI (Cost) [0.1%]; Fitter | 4h | 4h | 244.44 | 200 | 244.44 |
| 94 | 9.2.2.3 | Nozzle Pipe Cutting | 5h | 2018-05-16 09:30 A | 2018-05-16 14:30 A | 93FS+1d | 100% |  | 2018-04-27 09:30 | 2018-04-27 14:30 | 5h |  |  | TEAM_2Shift_Calendar-1 | Gas Cutter; OAGM; Helper | 15h | 15h | 593.75 | 593.75 | 593.75 |
| 95 | 9.2.2.4 | Nozzle Pipe EP | 6h | 2018-05-16 14:30 A | 2018-05-16 20:30 A | 94 | 100% |  | 2018-04-27 14:30 | 2018-04-27 20:30 | 6h |  |  | TEAM_2Shift_Calendar-1 | Grinding Machine; Grinder | 12h | 12h | 337.5 | 337.5 | 337.5 |
| 96 | 9.2.2.5 | Nozzle Flange +Pipe Fitup | 6h | 2018-05-16 20:30 A | 2018-05-17 10:30 A | 95 | 100% |  | 2018-04-27 20:30 | 2018-04-30 10:30 | 6h |  |  | TEAM_2Shift_Calendar-1 | Helper [200%]; SAW Welder; SMAW Welding Machine; Fitter | 30h | 30h | 1,425 | 1,425 | 1,425 |
| 97 | 9.2.2.6 | Nozzle Flange +Pipe Fitup Inspection | 1d | 2018-05-19 10:30 A | 2018-05-19 18:30 A | 96FS+4d | 100% |  | 2018-04-30 10:30 | 2018-04-30 18:30 | 1d |  |  | TEAM_2Shift_Calendar-1 | Fitter [200%] | 8h | 8h | 550 | 550 | 550 |
| 98 | 9.2.2.7 | Nozzle Flange +Pipe Root Tig Welding | 5h | 2018-05-19 18:30 A | 2018-05-21 07:30 A | 97 | 100% |  | 2018-04-30 18:30 | 2018-05-02 07:30 | 5h |  |  | TEAM_2Shift_Calendar-1 | TIG Welder; TIG Welding Machine; Helper [200%] | 20h | 20h | 1,125 | 1,125 | 1,125 |
| 99 | 9.2.2.8 | Nozzle Flange +Pipe Filler Pass Welding | 6h | 2018-05-21 07:30 A | 2018-05-21 13:30 A | 98 | 100% |  | 2018-05-02 07:30 | 2018-05-02 13:30 | 6h |  |  | TEAM_2Shift_Calendar-1 | SAW Welder; SMAW Welding Machine; Helper [200%] | 24h | 24h | 1,012.5 | 1,012.5 | 1,012.5 |
| 100 | 9.2.3 | **Nozzle-MP** | 2.88d | 2018-05-23 13:30 | 2018-05-24 20:30 |  |  |  | 2018-05-02 13:30 | 2018-05-03 20:30 | 2.88d | 59.62d |  | TEAM_2Shift_Calendar-1 |  | 73h |  | 3,593.75 | 3,593.75 |  |
| 101 | 9.2.3.1 | MP Conn. Marking | 3h | 2018-05-23 13:30 | 2018-05-23 16:30 | 99FS+4d |  |  | 2018-05-02 13:30 | 2018-05-02 16:30 | 3h | 59.62d | 0d | TEAM_2Shift_Calendar-1 | Helper; Fitter | 6h |  | 356.25 | 356.25 |  |
| 102 | 9.2.3.2 | MP Conn. Openning | 4h | 2018-05-23 16:30 | 2018-05-23 20:30 | 101 |  |  | 2018-05-02 16:30 | 2018-05-02 20:30 | 4h | 59.62d | 0d | TEAM_2Shift_Calendar-1 | Gas Cutter; OAGM; Helper | 12h |  | 475 | 475 |  |
| 103 | 9.2.3.3 | MP Conn. EP | 4h | 2018-05-23 20:30 | 2018-05-24 08:30 | 102 |  |  | 2018-05-02 20:30 | 2018-05-03 08:30 | 4h | 59.62d | 0d | TEAM_2Shift_Calendar-1 | Grinding Machine; Grinder | 8h |  | 225 | 225 |  |
| 104 | 9.2.3.4 | MP Conn. Nozzle Fitup | 5h | 2018-05-24 08:30 | 2018-05-24 13:30 | 103 |  |  | 2018-05-03 08:30 | 2018-05-03 13:30 | 5h | 59.62d | 0d | TEAM_2Shift_Calendar-1 | Helper [200%]; TIG Welder; TIG Welding Machine; Fitter | 25h |  | 1,468.75 | 1,468.75 |  |
| 105 | 9.2.3.5 | MP Conn. Nozzle Welding | 4h | 2018-05-24 13:30 | 2018-05-24 17:30 | 104 |  |  | 2018-05-03 13:30 | 2018-05-03 17:30 | 4h | 59.62d | 0d | TEAM_2Shift_Calendar-1 | TIG Welder; TIG Welding Machine; Helper [200%] | 16h |  | 900 | 900 |  |
| 106 | 9.2.3.6 | MP Conn. Nozzle Welding Flush Grind | 3h | 2018-05-24 17:30 | 2018-05-24 20:30 | 105 |  |  | 2018-05-03 17:30 | 2018-05-03 20:30 | 3h | 59.62d |  | TEAM_2Shift_Calendar-1 | Grinding Machine; Grinder | 6h |  | 168.75 | 168.75 |  |
| 107 | 9.3 | **Saddle Fabrication** | 46.75d | 2018-03-31 09:30 A | 2018-04-30 15:30 A |  | 100% |  | 2018-03-31 09:30 | 2018-04-24 15:30 | 38.75d |  |  | TEAM_2Shift_Calendar-1 |  | 227h | 227h | 13,531.25 | 13,531.25 | 13,531.25 |
| 108 | 9.3.1 | Saddle Pad plate grinding | 1d | 2018-03-31 09:30 A | 2018-03-31 17:30 A | 50FS+77d | 100% |  | 2018-03-31 09:30 | 2018-03-31 17:30 | 1d |  |  | TEAM_2Shift_Calendar-1 | Plate (Cost) [0.1%]; Helper; Grinder | 5h | 5h | 275 | 275 | 275 |
| 109 | 9.3.2 | Saddle Pl Marking | 6h | 2018-04-05 09:30 A | 2018-04-05 15:30 A | 108FS+7d | 100% |  | 2018-04-05 09:30 | 2018-04-05 15:30 | 6h |  |  | TEAM_2Shift_Calendar-1 | Helper; Fitter [300%] | 24h | 24h | 1,537.5 | 1,537.5 | 1,537.5 |
| 110 | 9.3.3 | Saddle Pl Mkg Inspection | 4h | 2018-04-05 15:30 A | 2018-04-05 19:30 A | 109 | 100% |  | 2018-04-05 15:30 | 2018-04-05 19:30 | 4h |  |  | TEAM_2Shift_Calendar-1 | Fitter | 4h | 4h | 275 | 275 | 275 |
| 111 | 9.3.4 | Saddle Pl Mkg Cutting | 2d | 2018-04-05 19:30 A | 2018-04-06 19:30 A | 110 | 100% |  | 2018-04-05 19:30 | 2018-04-06 19:30 | 2d |  |  | TEAM_2Shift_Calendar-1 | Gas Cutter; Helper | 15h | 15h | 993.75 | 993.75 | 993.75 |
| 112 | 9.3.5 | Grinding | 8h | 2018-04-06 19:30 A | 2018-04-07 11:30 A | 111 | 100% |  | 2018-04-06 19:30 | 2018-04-07 11:30 | 8h |  |  | TEAM_2Shift_Calendar-1 | Grinder | 8h | 8h | 450 | 450 | 450 |
| 113 | 9.3.6 | Saddle Base Hole Marking | 3h | 2018-04-02 09:30 A | 2018-04-02 12:30 A | 108FS+1d | 100% |  | 2018-04-02 09:30 | 2018-04-02 12:30 | 3h |  |  | TEAM_2Shift_Calendar-1 | Helper; Fitter | 6h | 6h | 356.25 | 356.25 | 356.25 |
| 114 | 9.3.7 | Saddle Base Hole Drilling | 5h | 2018-04-02 12:30 A | 2018-04-02 17:30 A | 113 | 100% |  | 2018-04-02 12:30 | 2018-04-02 17:30 | 5h |  |  | TEAM_2Shift_Calendar-1 | Driller | 5h | 5h | 343.75 | 343.75 | 343.75 |
| 115 | 9.3.8 | Saddle Pad Forming | 1d | 2018-04-02 09:30 A | 2018-04-02 17:30 A | 108FS+1d | 100% |  | 2018-04-02 09:30 | 2018-04-02 17:30 | 1d |  |  | TEAM_2Shift_Calendar-1 | Helper; Fitter [200%] | 24h | 24h | 1,500 | 1,500 | 1,500 |
| 116 | 9.3.9 | Saddle Fitup | 1d | 2018-04-07 11:30 A | 2018-04-07 19:30 A | 115, 112 | 100% |  | 2018-04-07 11:30 | 2018-04-07 19:30 | 1d |  |  | TEAM_2Shift_Calendar-1 | Helper [200%]; Fitter; SMAW Welder | 32h | 32h | 1,900 | 1,900 | 1,900 |
| 117 | 9.3.10 | Saddle Fitup Inspection | 4h | 2018-04-07 19:30 A | 2018-04-09 07:30 A | 116 | 100% |  | 2018-04-07 19:30 | 2018-04-09 07:30 | 4h |  |  | TEAM_2Shift_Calendar-1 | Fitter | 4h | 4h | 275 | 275 | 275 |
| 118 | 9.3.11 | Saddle Welding | 30h | 2018-04-21 07:30 A | 2018-04-23 21:30 A | 117FS+20d | 100% |  | 2018-04-21 07:30 | 2018-04-23 21:30 | 30h |  |  | TEAM_2Shift_Calendar-1 | Helper [200%]; SMAW Welder | 90h | 90h | 5,062.5 | 5,062.5 | 5,062.5 |
| 119 | 9.3.12 | Saddle Profile Grinding | 10h | 2018-04-27 21:30 A | 2018-04-30 15:30 A | 118FS+8d | 100% |  | 2018-04-23 21:30 | 2018-04-24 15:30 | 10h |  |  | TEAM_2Shift_Calendar-1 | Grinder | 10h | 10h | 562.5 | 562.5 | 562.5 |

Notes:
- 90: S1-3 :12" SCH60 , MP1-5: 1.5" LWN
- 108: 14T

| ID | WBS | Task | Duration | Start | Finish | Predecessors | Complete | Remaining | Baseline start | Baseline finish | Baseline duration | Total slack | Free slack | Calendar | Resources | Work | Actual work | Cost | Baseline cost | Actual cost |
| --- | --- | --- | --- | --- | --- | --- | --- | --- | --- | --- | --- | --- | --- | --- | --- | --- | --- | --- | --- | --- |
| 120 | 9.4 | **Baffle Fabrication** | 65.5d | 2018-04-09 09:30 A | 2018-05-21 21:30 |  | 96% | 2.65d | 2018-04-09 09:30 | 2018-05-09 13:30 | 46.5d | 7.88d | 7.5d | TEAM_2Shift_Calendar-1 |  | 377h | 257h | 12,287.5 | 12,287.5 | 11,487.5 |
| 121 | 9.4.1 | **Preparation** | 6d | 2018-04-09 09:30 A | 2018-04-12 09:30 A |  | 100% |  | 2018-04-09 09:30 | 2018-04-12 09:30 | 6d |  |  | TEAM_2Shift_Calendar-1 |  | 89h | 89h | 3,812.5 | 3,812.5 | 3,812.5 |
| 122 | 9.4.1.1 | Marking | 7h | 2018-04-09 09:30 A | 2018-04-09 16:30 A | 51FS+91d | 100% |  | 2018-04-09 09:30 | 2018-04-09 16:30 | 7h |  |  | TEAM_2Shift_Calendar-1 | Helper; Plate (Cost) [0.1%]; Fitter | 14h | 14h | 831.25 | 831.25 | 831.25 |
| 123 | 9.4.1.2 | Cutting | 9h | 2018-04-10 08:30 A | 2018-04-10 17:30 A | 122FS+1d | 100% |  | 2018-04-10 08:30 | 2018-04-10 17:30 | 9h |  |  | TEAM_2Shift_Calendar-1 | Gas Cutter; OAGM; Helper | 27h | 27h | 1,068.75 | 1,068.75 | 1,068.75 |
| 124 | 9.4.1.3 | Grinding | 15h | 2018-04-10 17:30 A | 2018-04-11 16:30 A | 123 | 100% |  | 2018-04-10 17:30 | 2018-04-11 16:30 | 15h |  |  | TEAM_2Shift_Calendar-1 | Grinding Machine; Grinder | 30h | 30h | 843.75 | 843.75 | 843.75 |
| 125 | 9.4.1.4 | Stacking | 6h | 2018-04-11 16:30 A | 2018-04-12 06:30 A | 124 | 100% |  | 2018-04-11 16:30 | 2018-04-12 06:30 | 6h |  |  | TEAM_2Shift_Calendar-1 | Fitter; Helper | 12h | 12h | 712.5 | 712.5 | 712.5 |
| 126 | 9.4.1.5 | Center Line Marking | 3h | 2018-04-12 06:30 A | 2018-04-12 09:30 A | 125 | 100% |  | 2018-04-12 06:30 | 2018-04-12 09:30 | 3h |  |  | TEAM_2Shift_Calendar-1 | Helper; Fitter | 6h | 6h | 356.25 | 356.25 | 356.25 |
| 127 | 9.4.2 | **Activities for holes** | 41.75d | 2018-04-21 17:30 A | 2018-05-19 15:30 |  | 99% | 0d | 2018-04-21 17:30 | 2018-05-08 07:30 | 22.75d | 10.62d |  | TEAM_2Shift_Calendar-1 |  | 260h | 156h | 6,962.5 | 6,962.5 | 6,962.5 |
| 128 | 9.4.2.1 | Drilling | 26d | 2018-04-21 17:30 A | 2018-05-09 17:30 A | 126FS+15d | 100% |  | 2018-04-21 17:30 | 2018-04-26 09:30 | 7d |  |  | TEAM_2Shift_Calendar-1 | SC (Cost) [0.1%] |  |  |  |  |  |
| 129 | 9.4.2.2 | Destacking | 6h | 2018-05-09 17:30 A | 2018-05-10 07:30 A | 128 | 100% |  | 2018-04-26 09:30 | 2018-04-26 15:30 | 6h |  |  | TEAM_2Shift_Calendar-1 | Fitter; Helper | 12h | 12h | 712.5 | 712.5 | 712.5 |
| 130 | 9.4.2.3 | Hole Chamfering | 4d | 2018-05-10 07:30 A | 2018-05-14 07:30 | 129 | 100% | 0d | 2018-04-26 15:30 | 2018-04-30 15:30 | 4d | 1d | 0d | TEAM_2Shift_Calendar-1 | Driller | 64h | 32h | 2,200 | 2,200 | 2,200 |
| 131 | 9.4.2.4 | Edge Trimming | 8h | 2018-05-14 07:30 A | 2018-05-14 15:30 | 130 | 100% | 0h | 2018-04-30 15:30 | 2018-05-02 07:30 | 8h | 1.25d | 0d | TEAM_2Shift_Calendar-1 | Grinding Machine; Grinder | 32h | 16h | 450 | 450 | 450 |
| 132 | 9.4.2.5 | Grinding | 10h | 2018-05-14 15:30 A | 2018-05-15 09:30 | 131 | 100% | 0h | 2018-05-02 07:30 | 2018-05-02 17:30 | 10h | 0.75d | 0d | TEAM_2Shift_Calendar-1 | Grinding Machine; Grinder | 40h | 20h | 562.5 | 562.5 | 562.5 |
| 133 | 9.4.2.6 | Stacking Type A&B | 6h | 2018-05-15 09:30 A | 2018-05-15 15:30 | 132 | 100% | 0h | 2018-05-02 17:30 | 2018-05-03 07:30 | 6h | 1d | 0d | TEAM_2Shift_Calendar-1 | Fitter; Helper | 24h | 12h | 712.5 | 712.5 | 712.5 |
| 134 | 9.4.2.7 | Through Hole Check | 1d | 2018-05-15 15:30 A | 2018-05-16 07:30 | 133 | 100% | 0d | 2018-05-03 07:30 | 2018-05-03 15:30 | 1d | 17.62d |  | TEAM_2Shift_Calendar-1 | Helper; Fitter [200%] | 48h | 24h | 1,500 | 1,500 | 1,500 |
| 135 | 9.4.2.8 | Redrill If Required | 3d | 2018-05-16 07:30 A | 2018-05-17 15:30 A | 134 | 100% |  | 2018-05-03 15:30 | 2018-05-05 07:30 | 3d |  |  | TEAM_2Shift_Calendar-1 | Radial Drilling Machine; Driller | 24h | 24h | 825 | 825 | 825 |
| 136 | 9.4.2.9 | OD Machining | 4d | 2018-05-17 15:30 A | 2018-05-19 15:30 A | 135 | 100% |  | 2018-05-05 07:30 | 2018-05-08 07:30 | 4d |  |  | TEAM_2Shift_Calendar-1 | SC (Work) | 16h | 16h |  |  |  |
| 137 | 9.4.3 | Destacking | 6h | 2018-05-19 15:30 A | 2018-05-19 21:30 A | 136 | 100% |  | 2018-05-08 07:30 | 2018-05-08 13:30 | 6h |  |  | TEAM_2Shift_Calendar-1 | Fitter; Helper | 12h | 12h | 712.5 | 712.5 | 712.5 |
| 138 | 9.4.4 | Cleaning | 8h | 2018-05-19 21:30 | 2018-05-21 13:30 | 137 |  |  | 2018-05-08 13:30 | 2018-05-08 21:30 | 8h | 7.88d | 0d | TEAM_2Shift_Calendar-1 | Helper [200%] | 16h |  | 800 | 800 |  |
| 139 | 9.4.5 | Ready For Assembly | 1d | 2018-05-21 13:30 | 2018-05-21 21:30 | 138 |  |  | 2018-05-08 21:30 | 2018-05-09 13:30 | 1d | 7.88d |  | TEAM_2Shift_Calendar-1 |  |  |  |  |  |  |
| 140 | 9.5 | **Tube sheet** | 29d | 2018-05-03 12:00 A | 2018-05-21 20:00 |  | 60% | 11.64d | 2018-04-25 12:00 | 2018-05-08 16:00 | 18.5d | 8.06d | 7.69d | TEAM_2Shift_Calendar-1 |  | 113h | 65h | 4,783.75 | 4,783.75 | 2,681.25 |
| 141 | 9.5.1 | Receipt of Forging | 1d | 2018-05-03 12:00 A | 2018-05-03 20:00 A | 54 | 100% |  | 2018-04-25 12:00 | 2018-04-25 20:00 | 1d |  |  | TEAM_2Shift_Calendar-1 | Tube Sheet (Cost) [0.1%]; Helper [200%] | 3h | 3h | 150 | 150 | 150 |
| 142 | 9.5.2 | Stamping | 0.5d | 2018-05-14 12:00 A | 2018-05-14 16:00 A | 141FS+15d | 100% |  | 2018-04-26 20:00 | 2018-04-27 08:00 | 0.5d |  |  | TEAM_2Shift_Calendar-1 | QC Engineer; Fitter [200%] | 8h | 8h | 550 | 550 | 550 |
| 143 | 9.5.3 | **Drilling & M/C** | 15.62d | 2018-05-10 12:00 A | 2018-05-21 09:00 |  | 61% | 6.02d | 2018-04-27 08:00 | 2018-05-07 21:00 | 13.62d | 8.06d |  | TEAM_2Shift_Calendar-1 |  | 90h | 54h | 3,468.75 | 3,468.75 | 1,981.25 |
| 144 | 9.5.3.1 | Off Load For Drilling | 4h | 2018-05-10 12:00 A | 2018-05-10 16:00 A | 141FS+11d | 100% |  | 2018-04-27 08:00 | 2018-04-27 12:00 | 4h |  |  | TEAM_2Shift_Calendar-1 | Helper [200%] | 8h | 8h | 400 | 400 | 400 |
| 145 | 9.5.3.2 | Drilling of Tube Holes | 5d | 2018-05-10 16:00 A | 2018-05-15 08:00 A | 144 | 100% |  | 2018-04-27 12:00 | 2018-05-02 20:00 | 5d |  |  | TEAM_2Shift_Calendar-1 | SC (Cost) [0.1%] |  |  |  |  |  |
| 146 | 9.5.3.3 | Drilling of Bolt Holes | 15h | 2018-05-15 08:00 A | 2018-05-16 07:00 A | 145 | 100% |  | 2018-05-02 20:00 | 2018-05-03 19:00 | 15h |  |  | TEAM_2Shift_Calendar-1 | Radial Drilling Machine; Driller | 30h | 30h | 1,031.25 | 1,031.25 | 1,031.25 |
| 147 | 9.5.3.4 | Drilling of Tie Rod Holes | 8h | 2018-05-16 07:00 A | 2018-05-16 15:00 A | 146 | 100% |  | 2018-05-03 19:00 | 2018-05-04 11:00 | 8h |  |  | TEAM_2Shift_Calendar-1 | Radial Drilling Machine; Driller | 16h | 16h | 550 | 550 | 550 |
| 148 | 9.5.3.5 | M/C of Pass Partion | 3d | 2018-05-17 15:00 | 2018-05-19 07:00 | 147FS+2d |  |  | 2018-05-04 11:00 | 2018-05-05 19:00 | 3d | 8.06d | 0d | TEAM_2Shift_Calendar-1 | SC (Cost) [0.1%] |  |  |  |  |  |
| 149 | 9.5.3.6 | Drilling of Pulling Eye Bolt | 8h | 2018-05-19 07:00 | 2018-05-19 15:00 | 148 |  |  | 2018-05-05 19:00 | 2018-05-07 11:00 | 8h | 8.06d | 0d | TEAM_2Shift_Calendar-1 | Radial Drilling Machine; Driller | 16h |  | 550 | 550 |  |
| 150 | 9.5.3.7 | Drilling of Lifting Eye Bolt | 2h | 2018-05-19 15:00 | 2018-05-19 17:00 | 149 |  |  | 2018-05-07 11:00 | 2018-05-07 13:00 | 2h | 8.06d | 0d | TEAM_2Shift_Calendar-1 | Radial Drilling Machine; Driller | 4h |  | 137.5 | 137.5 |  |
| 151 | 9.5.3.8 | Tube Sheet Receipt After Drilling | 1d | 2018-05-19 17:00 | 2018-05-21 09:00 | 150 |  |  | 2018-05-07 13:00 | 2018-05-07 21:00 | 1d | 8.06d | 0d | TEAM_2Shift_Calendar-1 | Helper [200%] | 16h |  | 800 | 800 |  |
| 152 | 9.5.4 | Tube Sheet Inspection | 1d | 2018-05-21 09:00 | 2018-05-21 17:00 | 151 |  |  | 2018-05-07 21:00 | 2018-05-08 13:00 | 1d | 8.06d | 0d | TEAM_2Shift_Calendar-1 | QC Engineer; Fitter [200%] | 3h |  | 165 | 165 |  |
| 153 | 9.5.5 | Tube Sheet Cleaning | 3h | 2018-05-21 17:00 | 2018-05-21 20:00 | 152 |  |  | 2018-05-08 13:00 | 2018-05-08 16:00 | 3h | 8.06d |  | TEAM_2Shift_Calendar-1 | Helper [300%] | 9h |  | 450 | 450 |  |

Notes:
- 122: 875.24*8T-18 NOS
- 128: 668HOLES-OD20
- 146: 28NOS-DIA52
- 149: 4NO
- 150: 1NO

| ID | WBS | Task | Duration | Start | Finish | Predecessors | Complete | Remaining | Baseline start | Baseline finish | Baseline duration | Total slack | Free slack | Calendar | Resources | Work | Actual work | Cost | Baseline cost | Actual cost |
| --- | --- | --- | --- | --- | --- | --- | --- | --- | --- | --- | --- | --- | --- | --- | --- | --- | --- | --- | --- | --- |
| 154 | 9.6 | **Sealing Strip Fabrication** | 6d | 2018-05-17 17:30 A | 2018-05-21 17:30 A |  | 100% |  | 2018-04-27 17:30 | 2018-05-02 17:30 | 4d |  |  | TEAM_2Shift_Calendar-1 |  | 71h | 71h | 2,925 | 2,925 | 2,925 |
| 155 | 9.6.1 | Sealing Strip Marking | 3h | 2018-05-17 17:30 A | 2018-05-17 20:30 A | 51FS+150d | 100% |  | 2018-04-27 17:30 | 2018-04-27 20:30 | 3h |  |  | TEAM_2Shift_Calendar-1 | Helper; Plate (Cost) [0.1%]; Fitter | 6h | 6h | 356.25 | 356.25 | 356.25 |
| 156 | 9.6.2 | Sealing Strip Cutting | 4h | 2018-05-17 20:30 A | 2018-05-18 08:30 A | 155 | 100% |  | 2018-04-27 20:30 | 2018-04-30 08:30 | 4h |  |  | TEAM_2Shift_Calendar-1 | Gas Cutter; OAGM; Helper | 12h | 12h | 475 | 475 | 475 |
| 157 | 9.6.3 | Sealing Strip Grinding | 9h | 2018-05-18 08:30 A | 2018-05-18 17:30 A | 156 | 100% |  | 2018-04-30 08:30 | 2018-04-30 17:30 | 9h |  |  | TEAM_2Shift_Calendar-1 | Grinding Machine; Grinder | 18h | 18h | 506.25 | 506.25 | 506.25 |
| 158 | 9.6.4 | Sliding Strip Marking | 3h | 2018-05-18 17:30 A | 2018-05-18 20:30 A | 157 | 100% |  | 2018-04-30 17:30 | 2018-04-30 20:30 | 3h |  |  | TEAM_2Shift_Calendar-1 | Helper; Fitter | 6h | 6h | 356.25 | 356.25 | 356.25 |
| 159 | 9.6.5 | Sliding Strip Cutting | 3h | 2018-05-18 20:30 A | 2018-05-19 07:30 A | 158 | 100% |  | 2018-04-30 20:30 | 2018-05-02 07:30 | 3h |  |  | TEAM_2Shift_Calendar-1 | Gas Cutter; Helper | 6h | 6h | 356.25 | 356.25 | 356.25 |
| 160 | 9.6.6 | Sliding Strip Grinding | 5h | 2018-05-21 07:30 A | 2018-05-21 12:30 A | 159FS+2d | 100% |  | 2018-05-02 07:30 | 2018-05-02 12:30 | 5h |  |  | TEAM_2Shift_Calendar-1 | Grinding Machine; Grinder | 10h | 10h | 281.25 | 281.25 | 281.25 |
| 161 | 9.6.7 | Seal Rod Marking | 2h | 2018-05-21 12:30 A | 2018-05-21 14:30 A | 160 | 100% |  | 2018-05-02 12:30 | 2018-05-02 14:30 | 2h |  |  | TEAM_2Shift_Calendar-1 | Helper; Fitter | 4h | 4h | 237.5 | 237.5 | 237.5 |
| 162 | 9.6.8 | Seal Rod Cutting | 3h | 2018-05-21 14:30 A | 2018-05-21 17:30 A | 161 | 100% |  | 2018-05-02 14:30 | 2018-05-02 17:30 | 3h |  |  | TEAM_2Shift_Calendar-1 | Gas Cutter; OAGM; Helper | 9h | 9h | 356.25 | 356.25 | 356.25 |
| 163 | 9.7 | **Tie Rod** | 2.75d | 2018-05-24 11:30 A | 2018-05-25 17:30 |  | 18% | 2.25d | 2018-05-05 11:30 | 2018-05-07 17:30 | 2.75d | 0.38d | 0d | TEAM_2Shift_Calendar-1 |  | 44h | 8h | 2,495 | 2,495 | 475 |
| 164 | 9.7.1 | Marking | 4h | 2018-05-24 11:30 A | 2018-05-24 15:30 A | 52FS+2d | 100% |  | 2018-05-05 11:30 | 2018-05-05 15:30 | 4h |  |  | TEAM_2Shift_Calendar-1 | Helper; Rod (Cost) [0.1%]; Fitter | 8h | 8h | 475 | 475 | 475 |
| 165 | 9.7.2 | Cutting | 2h | 2018-05-24 15:30 | 2018-05-24 17:30 | 164 |  |  | 2018-05-05 15:30 | 2018-05-05 17:30 | 2h | 0.38d | 0d | TEAM_2Shift_Calendar-1 | Helper; Cutting Machine | 4h |  | 100 | 100 |  |
| 166 | 9.7.3 | Thread Machining | 2d | 2018-05-24 17:30 | 2018-05-25 17:30 | 165 |  |  | 2018-05-05 17:30 | 2018-05-07 17:30 | 2d | 0.38d |  | TEAM_2Shift_Calendar-1 | Lathe; Lathe Operator | 32h |  | 1,920 | 1,920 |  |
| 167 | 9.8 | **Spacer Tube** | 5.12d | 2018-05-16 14:30 A | 2018-05-19 07:30 A |  | 100% |  | 2018-05-07 15:30 | 2018-05-10 08:30 | 5.12d |  |  | TEAM_2Shift_Calendar-1 |  | 59h | 59h | 3,788.75 | 3,788.75 | 3,788.75 |
| 168 | 9.8.1 | Spacer Tube Marking | 9h | 2018-05-16 14:30 A | 2018-05-17 07:30 A | 53FS+40d | 100% |  | 2018-05-07 15:30 | 2018-05-08 08:30 | 9h |  |  | TEAM_2Shift_Calendar-1 | Helper; Tube (Cost) [0.1%]; Fitter | 18h | 18h | 1,068.75 | 1,068.75 | 1,068.75 |
| 169 | 9.8.2 | Spacer Tube Cutting | 9h | 2018-05-17 07:30 A | 2018-05-17 16:30 A | 168 | 100% |  | 2018-05-08 08:30 | 2018-05-08 17:30 | 9h |  |  | TEAM_2Shift_Calendar-1 | Helper; Cutting Machine | 18h | 18h | 450 | 450 | 450 |
| 170 | 9.8.3 | Spacer Tube M/C | 2d | 2018-05-17 16:30 A | 2018-05-18 16:30 A | 169 | 100% |  | 2018-05-08 17:30 | 2018-05-09 17:30 | 2d |  |  | TEAM_2Shift_Calendar-1 | Lathe Operator | 16h | 16h | 1,920 | 1,920 | 1,920 |
| 171 | 9.8.4 | Spacer Cleaning | 7h | 2018-05-18 16:30 A | 2018-05-19 07:30 A | 170 | 100% |  | 2018-05-09 17:30 | 2018-05-10 08:30 | 7h |  |  | TEAM_2Shift_Calendar-1 | Helper | 7h | 7h | 350 | 350 | 350 |
| 172 | 9.9 | **Impingement Plate** | 1.62d | 2018-05-18 07:30 A | 2018-05-18 20:30 A |  | 100% |  | 2018-05-09 08:30 | 2018-05-09 21:30 | 1.62d |  |  | TEAM_2Shift_Calendar-1 |  | 30h | 30h | 1,468.75 | 1,468.75 | 1,468.75 |
| 173 | 9.9.1 | Impingement Pl Marking | 3h | 2018-05-18 07:30 A | 2018-05-18 10:30 A | 168FS+2d, 51 | 100% |  | 2018-05-09 08:30 | 2018-05-09 11:30 | 3h |  |  | TEAM_2Shift_Calendar-1 | Helper; Plate (Cost) [0.1%]; Fitter | 6h | 6h | 356.25 | 356.25 | 356.25 |
| 174 | 9.9.2 | Impingement Pl Cutting | 2h | 2018-05-18 10:30 A | 2018-05-18 12:30 A | 173 | 100% |  | 2018-05-09 11:30 | 2018-05-09 13:30 | 2h |  |  | TEAM_2Shift_Calendar-1 | OAGM; Gas Cutter | 4h | 4h | 137.5 | 137.5 | 137.5 |
| 175 | 9.9.3 | Impingement Pl Grinding | 4h | 2018-05-18 12:30 A | 2018-05-18 16:30 A | 174 | 100% |  | 2018-05-09 13:30 | 2018-05-09 17:30 | 4h |  |  | TEAM_2Shift_Calendar-1 | Grinding Machine; Grinder | 8h | 8h | 225 | 225 | 225 |
| 176 | 9.9.4 | Impingement Pl Forming | 0.5d | 2018-05-18 16:30 A | 2018-05-18 20:30 A | 175 | 100% |  | 2018-05-09 17:30 | 2018-05-09 21:30 | 0.5d |  |  | TEAM_2Shift_Calendar-1 | Helper; Fitter [200%] | 12h | 12h | 750 | 750 | 750 |
| 177 | 9.10 | **PP** | 2.25d | 2018-05-24 10:30 A | 2018-05-25 12:30 |  | 17% | 1.88d | 2018-05-10 11:30 | 2018-05-11 13:30 | 2.25d | 53.75d |  | TEAM_2Shift_Calendar-1 |  | 25h | 6h | 1,037.5 | 1,037.5 | 356.25 |
| 178 | 9.10.1 | Pass Partition Plate Marking | 3h | 2018-05-24 10:30 A | 2018-05-24 13:30 A | 173FS+10d, 51 | 100% |  | 2018-05-10 11:30 | 2018-05-10 14:30 | 3h |  |  | TEAM_2Shift_Calendar-1 | Helper; Plate (Cost) [0.1%]; Fitter | 6h | 6h | 356.25 | 356.25 | 356.25 |
| 179 | 9.10.2 | Inspection | 1d | 2018-05-24 13:30 | 2018-05-24 21:30 | 178 |  |  | 2018-05-10 14:30 | 2018-05-11 06:30 | 1d | 53.75d | 0d | TEAM_2Shift_Calendar-1 | QC Engineer; Fitter | 5h |  | 250 | 250 |  |
| 180 | 9.10.3 | Cutting | 3h | 2018-05-24 21:30 | 2018-05-25 08:30 | 179 |  |  | 2018-05-11 06:30 | 2018-05-11 09:30 | 3h | 53.75d | 0d | TEAM_2Shift_Calendar-1 | OAGM; Gas Cutter | 6h |  | 206.25 | 206.25 |  |
| 181 | 9.10.4 | Grinding | 4h | 2018-05-25 08:30 | 2018-05-25 12:30 | 180 |  |  | 2018-05-11 09:30 | 2018-05-11 13:30 | 4h | 53.75d | 0d | TEAM_2Shift_Calendar-1 | Grinding Machine; Grinder | 8h |  | 225 | 225 |  |

Notes:
- 155: 2NOS-50W*5080LG*6T
- 158: 2NOS-54W*5835Lg*12T
- 164: 8NOS-DIA14*5876Lg
- 168: 112NOS-OD20*2.3T
- 173: 1NOS-375*362*6T
- 178: 840*880Lg*14T

| ID | WBS | Task | Duration | Start | Finish | Predecessors | Complete | Baseline start | Baseline finish | Baseline duration | Total slack | Free slack | Calendar | Resources | Work | Actual work | Cost | Baseline cost | Actual cost |
| --- | --- | --- | --- | --- | --- | --- | --- | --- | --- | --- | --- | --- | --- | --- | --- | --- | --- | --- | --- |
| 182 | 9.11 | **Lifting Lug** | 3.25d | 2018-05-25 12:30 | 2018-05-29 06:30 |  |  | 2018-05-11 13:30 | 2018-05-15 07:30 | 3.25d | 53.75d |  | TEAM_2Shift_Calendar-1 |  | 60h |  | 2,900 | 2,900 |  |
| 183 | 9.11.1 | Lifting Lug Marking | 3h | 2018-05-25 12:30 | 2018-05-25 15:30 | 181 |  | 2018-05-11 13:30 | 2018-05-11 16:30 | 3h | 53.75d | 0d | TEAM_2Shift_Calendar-1 | Helper; Plate (Cost) [0.1%]; Fitter | 6h |  | 356.25 | 356.25 |  |
| 184 | 9.11.2 | Lifting Lug Cutting | 3h | 2018-05-25 15:30 | 2018-05-25 18:30 | 183 |  | 2018-05-11 16:30 | 2018-05-11 19:30 | 3h | 53.75d | 0d | TEAM_2Shift_Calendar-1 | OAGM; Gas Cutter | 6h |  | 206.25 | 206.25 |  |
| 185 | 9.11.3 | Lifting Lug Pad Marking | 2h | 2018-05-25 18:30 | 2018-05-25 20:30 | 184 |  | 2018-05-11 19:30 | 2018-05-11 21:30 | 2h | 53.75d | 0d | TEAM_2Shift_Calendar-1 | Helper; Fitter | 4h |  | 237.5 | 237.5 |  |
| 186 | 9.11.4 | Lifting Lug Pad Cutting | 3h | 2018-05-25 20:30 | 2018-05-28 07:30 | 185 |  | 2018-05-11 21:30 | 2018-05-14 08:30 | 3h | 53.75d | 0d | TEAM_2Shift_Calendar-1 | OAGM; Gas Cutter | 6h |  | 206.25 | 206.25 |  |
| 187 | 9.11.5 | Lifting Lug Pad Grinding | 7h | 2018-05-28 07:30 | 2018-05-28 14:30 | 186 |  | 2018-05-14 08:30 | 2018-05-14 15:30 | 7h | 53.75d | 0d | TEAM_2Shift_Calendar-1 | Grinding Machine; Grinder | 14h |  | 393.75 | 393.75 |  |
| 188 | 9.11.6 | Lifting Lug Pad Forming | 1d | 2018-05-28 14:30 | 2018-05-29 06:30 | 187 |  | 2018-05-14 15:30 | 2018-05-15 07:30 | 1d | 53.75d | 0d | TEAM_2Shift_Calendar-1 | Helper; Fitter [200%] | 24h |  | 1,500 | 1,500 |  |
| 189 | 9.12 | **Insulation Cleat** | 1.62d | 2018-05-29 06:30 | 2018-05-29 19:30 |  |  | 2018-05-15 07:30 | 2018-05-15 20:30 | 1.62d | 53.75d |  | TEAM_2Shift_Calendar-1 |  | 26h |  | 993.75 | 993.75 |  |
| 190 | 9.12.1 | Insulation Cleat Marking | 3h | 2018-05-29 06:30 | 2018-05-29 09:30 | 188 |  | 2018-05-15 07:30 | 2018-05-15 10:30 | 3h | 53.75d | 0d | TEAM_2Shift_Calendar-1 | Helper; Plate (Cost) [0.1%]; Fitter | 6h |  | 356.25 | 356.25 |  |
| 191 | 9.12.2 | Insulation Cleat Cutting | 3h | 2018-05-29 09:30 | 2018-05-29 12:30 | 190 |  | 2018-05-15 10:30 | 2018-05-15 13:30 | 3h | 53.75d | 0d | TEAM_2Shift_Calendar-1 | OAGM; Gas Cutter | 6h |  | 206.25 | 206.25 |  |
| 192 | 9.12.3 | Insulation Cleat Grinding | 4h | 2018-05-29 12:30 | 2018-05-29 16:30 | 191 |  | 2018-05-15 13:30 | 2018-05-15 17:30 | 4h | 53.75d | 0d | TEAM_2Shift_Calendar-1 | Grinding Machine; Grinder | 8h |  | 225 | 225 |  |
| 193 | 9.12.4 | Insulation Cleat Drilling | 3h | 2018-05-29 16:30 | 2018-05-29 19:30 | 192 |  | 2018-05-15 17:30 | 2018-05-15 20:30 | 3h | 53.75d |  | TEAM_2Shift_Calendar-1 | Radial Drilling Machine; Driller | 6h |  | 206.25 | 206.25 |  |
| 194 | 9.13 | **Initial Preparation-Shell** | 59.06d | 2018-03-09 09:30 A | 2018-04-16 18:00 A |  | 100% | 2018-03-09 09:30 | 2018-04-16 18:00 | 59.06d |  |  | TEAM_2Shift_Calendar-1 |  | 84h | 84h | 2,931.25 | 2,931.25 | 2,931.25 |
| 195 | 9.13.1 | Marking | 4h | 2018-03-09 09:30 A | 2018-03-09 13:30 A | 50FS+43d | 100% | 2018-03-09 09:30 | 2018-03-09 13:30 | 4h |  |  | TEAM_2Shift_Calendar-1 | Helper; Plate (Cost) [0.1%]; Fitter | 8h | 8h |  |  |  |
| 196 | 9.13.2 | Sh Plate Stamping | 1d | 2018-03-20 13:30 A | 2018-03-20 21:30 A | 195FS+16d | 100% | 2018-03-20 13:30 | 2018-03-20 21:30 | 1d |  |  | TEAM_2Shift_Calendar-1 | QC Engineer; TPI (Cost) [0.1%]; Fitter | 4h | 4h | 137.5 | 137.5 | 137.5 |
| 197 | 9.13.3 | Sh LS-1 Cutting | 3h | 2018-03-29 06:00 A | 2018-03-29 09:00 A | 196FS+12d | 100% | 2018-03-29 06:00 | 2018-03-29 09:00 | 3h |  |  | TEAM_2Shift_Calendar-1 | Gas Cutter; OAGM; Helper | 9h | 9h | 356.25 | 356.25 | 356.25 |
| 198 | 9.13.4 | Sh LS-2 Cutting | 3h | 2018-03-29 09:00 A | 2018-03-29 12:00 A | 197 | 100% | 2018-03-29 09:00 | 2018-03-29 12:00 | 3h |  |  | TEAM_2Shift_Calendar-1 | Gas Cutter; OAGM; Helper | 9h | 9h | 356.25 | 356.25 | 356.25 |
| 199 | 9.13.5 | Sh LS-3 Cutting | 3h | 2018-03-29 12:00 A | 2018-03-29 15:00 A | 198 | 100% | 2018-03-29 12:00 | 2018-03-29 15:00 | 3h |  |  | TEAM_2Shift_Calendar-1 | Gas Cutter; OAGM; Helper | 9h | 9h | 356.25 | 356.25 | 356.25 |
| 200 | 9.13.6 | Sh LS-1 EP | 4h | 2018-04-02 15:00 A | 2018-04-02 19:00 A | 199FS+6d | 100% | 2018-04-02 15:00 | 2018-04-02 19:00 | 4h |  |  | TEAM_2Shift_Calendar-1 | Grinding Machine; Grinder | 8h | 8h | 225 | 225 | 225 |
| 201 | 9.13.7 | Sh LS-2 EP | 4h | 2018-04-02 19:00 A | 2018-04-03 07:00 A | 200 | 100% | 2018-04-02 19:00 | 2018-04-03 07:00 | 4h |  |  | TEAM_2Shift_Calendar-1 | Grinding Machine; Grinder | 8h | 8h | 225 | 225 | 225 |
| 202 | 9.13.8 | Sh LS-3 EP | 4h | 2018-04-03 07:00 A | 2018-04-03 11:00 A | 201 | 100% | 2018-04-03 07:00 | 2018-04-03 11:00 | 4h |  |  | TEAM_2Shift_Calendar-1 | Grinding Machine; Grinder | 8h | 8h | 225 | 225 | 225 |
| 203 | 9.13.9 | Send for shell rolling | 3h | 2018-04-12 11:00 A | 2018-04-12 14:00 A | 202FS+16d | 100% | 2018-04-12 11:00 | 2018-04-12 14:00 | 3h |  |  | TEAM_2Shift_Calendar-1 | Helper [300%] | 9h | 9h | 450 | 450 | 450 |
| 204 | 9.13.10 | Shell Receipt after rolling | 4h | 2018-04-16 14:00 A | 2018-04-16 18:00 A | 203FS+4d | 100% | 2018-04-16 14:00 | 2018-04-16 18:00 | 4h |  |  | TEAM_2Shift_Calendar-1 | Helper [300%] | 12h | 12h | 600 | 600 | 600 |
| 205 | 9.14 | **Fitup & Welding-Shell(LS)** | 31.31d | 2018-04-17 10:00 A | 2018-05-07 20:30 A |  | 100% | 2018-04-17 10:00 | 2018-04-26 22:00 | 17.5d |  |  | TEAM_2Shift_Calendar-1 |  | 248h | 248h | 11,238.86 | 11,857.61 | 11,238.86 |
| 206 | 9.14.1 | Sh LS-1 Fitup | 4h | 2018-04-17 10:00 A | 2018-04-17 14:00 A | 204FS+1d | 100% | 2018-04-17 10:00 | 2018-04-17 14:00 | 4h |  |  | TEAM_2Shift_Calendar-1 | Helper; SAW Welder; Fitter | 12h | 12h | 750 | 750 | 750 |
| 207 | 9.14.2 | Sh LS-2 Fitup | 4h | 2018-04-17 14:00 A | 2018-04-17 18:00 A | 206 | 100% | 2018-04-17 14:00 | 2018-04-17 18:00 | 4h |  |  | TEAM_2Shift_Calendar-1 | Helper; SAW Welder; Fitter | 12h | 12h | 750 | 750 | 750 |
| 208 | 9.14.3 | Sh LS-3 Fitup | 4h | 2018-04-17 18:00 A | 2018-04-17 22:00 A | 207 | 100% | 2018-04-17 18:00 | 2018-04-17 22:00 | 4h |  |  | TEAM_2Shift_Calendar-1 | Helper; SAW Welder; Fitter | 12h | 12h | 750 | 750 | 750 |
| 209 | 9.14.4 | Sh LS-1,2,3 fit up inspection and DP check | 1d | 2018-04-18 06:00 A | 2018-04-18 14:00 A | 208 | 100% | 2018-04-18 06:00 | 2018-04-18 14:00 | 1d |  |  | TEAM_2Shift_Calendar-1 | Fitter; QC Engineer | 8h | 8h | 382.61 | 382.61 | 382.61 |
| 210 | 9.14.5 | Sh LS-1 Welding Arrangement | 2h | 2018-04-18 14:00 A | 2018-04-18 16:00 A | 209 | 100% | 2018-04-18 14:00 | 2018-04-18 16:00 | 2h |  |  | TEAM_2Shift_Calendar-1 | Helper; Fitter | 4h | 4h | 237.5 | 237.5 | 237.5 |
| 211 | 9.14.6 | Sh LS-2 Welding Arrangement | 2h | 2018-04-18 16:00 A | 2018-04-18 18:00 A | 210 | 100% | 2018-04-18 16:00 | 2018-04-18 18:00 | 2h |  |  | TEAM_2Shift_Calendar-1 | Helper; Fitter | 4h | 4h | 237.5 | 237.5 | 237.5 |
| 212 | 9.14.7 | Sh LS-3 Welding Arrangement | 2h | 2018-04-18 18:00 A | 2018-04-18 20:00 A | 211 | 100% | 2018-04-18 18:00 | 2018-04-18 20:00 | 2h |  |  | TEAM_2Shift_Calendar-1 | Helper; Fitter | 4h | 4h | 237.5 | 237.5 | 237.5 |
| 213 | 9.14.8 | Sh LS-1 Welding | 7h | 2018-04-19 12:00 A | 2018-04-19 19:00 A | 212FS+1d | 100% | 2018-04-19 12:00 | 2018-04-19 19:00 | 7h |  |  | TEAM_2Shift_Calendar-1 | SAW Welder; SMAW Welding Machine; Helper [200%] | 28h | 28h | 1,181.25 | 1,181.25 | 1,181.25 |
| 214 | 9.14.9 | Sh LS-2 Welding | 7h | 2018-04-19 19:00 A | 2018-04-20 10:00 A | 213 | 100% | 2018-04-19 19:00 | 2018-04-20 10:00 | 7h |  |  | TEAM_2Shift_Calendar-1 | SAW Welder; SMAW Welding Machine; Helper [200%] | 28h | 28h | 1,181.25 | 1,181.25 | 1,181.25 |
| 215 | 9.14.10 | Sh LS-3 Welding | 7h | 2018-04-20 10:00 A | 2018-04-20 17:00 A | 214 | 100% | 2018-04-20 10:00 | 2018-04-20 17:00 | 7h |  |  | TEAM_2Shift_Calendar-1 | SAW Welder; SMAW Welding Machine; Helper [200%] | 28h | 28h | 1,181.25 | 1,181.25 | 1,181.25 |
| 216 | 9.14.11 | Sh LS-1 Back Chip | 4h | 2018-04-21 17:00 A | 2018-04-21 21:00 A | 215FS+2d | 100% | 2018-04-21 17:00 | 2018-04-21 21:00 | 4h |  |  | TEAM_2Shift_Calendar-1 | Grinding Machine; Grinder | 8h | 8h | 225 | 225 | 225 |
| 217 | 9.14.12 | Sh LS-2 Back Chip | 4h | 2018-04-21 21:00 A | 2018-04-23 09:00 A | 216 | 100% | 2018-04-21 21:00 | 2018-04-23 09:00 | 4h |  |  | TEAM_2Shift_Calendar-1 | Grinding Machine; Grinder | 8h | 8h | 225 | 225 | 225 |
| 218 | 9.14.13 | Sh LS-3 Back Chip | 4h | 2018-04-23 09:00 A | 2018-04-23 13:00 A | 217 | 100% | 2018-04-23 09:00 | 2018-04-23 13:00 | 4h |  |  | TEAM_2Shift_Calendar-1 | Grinding Machine; Grinder | 8h | 8h | 225 | 225 | 225 |
| 219 | 9.14.14 | Sh LS-1 Inner Weld | 4h | 2018-04-23 13:00 A | 2018-04-23 17:00 A | 218 | 100% | 2018-04-23 13:00 | 2018-04-23 17:00 | 4h |  |  | TEAM_2Shift_Calendar-1 | SAW Welder; SMAW Welding Machine; Helper [200%] | 16h | 16h | 675 | 675 | 675 |
| 220 | 9.14.15 | Sh LS-2 Inner Weld | 4h | 2018-04-23 17:00 A | 2018-04-23 21:00 A | 219 | 100% | 2018-04-23 17:00 | 2018-04-23 21:00 | 4h |  |  | TEAM_2Shift_Calendar-1 | SAW Welder; SMAW Welding Machine; Helper [200%] | 16h | 16h | 675 | 675 | 675 |
| 221 | 9.14.16 | Sh LS-3 Inner Weld | 4h | 2018-04-23 21:00 A | 2018-04-24 09:00 A | 220 | 100% | 2018-04-23 21:00 | 2018-04-24 09:00 | 4h |  |  | TEAM_2Shift_Calendar-1 | SAW Welder; SMAW Welding Machine; Helper [200%] | 16h | 16h | 675 | 675 | 675 |
| 222 | 9.14.17 | Sh LS-1 Inner Flush Grind | 2h | 2018-04-24 09:00 A | 2018-04-24 11:00 A | 221 | 100% | 2018-04-24 09:00 | 2018-04-24 11:00 | 2h |  |  | TEAM_2Shift_Calendar-1 | Grinding Machine; Grinder | 4h | 4h | 112.5 | 112.5 | 112.5 |
| 223 | 9.14.18 | Sh LS-2 Inner Flush Grind | 2h | 2018-04-24 11:00 A | 2018-04-24 13:00 A | 222 | 100% | 2018-04-24 11:00 | 2018-04-24 13:00 | 2h |  |  | TEAM_2Shift_Calendar-1 | Grinding Machine; Grinder | 4h | 4h | 112.5 | 112.5 | 112.5 |
| 224 | 9.14.19 | Sh LS-3 Inner Flush Grind | 2h | 2018-04-24 13:00 A | 2018-04-24 15:00 A | 223 | 100% | 2018-04-24 13:00 | 2018-04-24 15:00 | 2h |  |  | TEAM_2Shift_Calendar-1 | Grinding Machine; Grinder | 4h | 4h | 112.5 | 112.5 | 112.5 |
| 225 | 9.14.20 | Sh LS-1 DP Check | 2h | 2018-04-24 15:00 A | 2018-04-24 17:00 A | 224 | 100% | 2018-04-24 15:00 | 2018-04-24 17:00 | 2h |  |  | TEAM_2Shift_Calendar-1 | Fitter | 2h | 2h | 137.5 | 137.5 | 137.5 |
| 226 | 9.14.21 | Sh LS-2 DP Check | 2h | 2018-04-24 17:00 A | 2018-04-24 19:00 A | 225 | 100% | 2018-04-24 17:00 | 2018-04-24 19:00 | 2h |  |  | TEAM_2Shift_Calendar-1 | Fitter | 2h | 2h | 137.5 | 137.5 | 137.5 |
| 227 | 9.14.22 | Sh LS-3 DP Check | 2h | 2018-04-24 19:00 A | 2018-04-24 21:00 A | 226 | 100% | 2018-04-24 19:00 | 2018-04-24 21:00 | 2h |  |  | TEAM_2Shift_Calendar-1 | Fitter | 2h | 2h | 137.5 | 137.5 | 137.5 |
| 228 | 9.14.23 | Shell send for re-rolling | 3h | 2018-04-30 21:00 A | 2018-05-02 08:00 A | 227FS+8d | 100% |  |  |  |  |  | TEAM_2Shift_Calendar-1 | Helper [300%] | 9h | 9h | 450 |  | 450 |
| 229 | 9.14.24 | Shell receipt after re- rolling | 3h | 2018-05-04 17:30 A | 2018-05-04 20:30 A | 228FS+3d | 100% |  |  |  |  |  |  | Helper [300%] | 9h | 9h | 450 |  | 450 |
| 230 | 9.14.25 | Sh LS-1 Radiography | 1d | 2018-05-05 12:30 A | 2018-05-05 20:30 A | 229FS+1d | 100% | 2018-04-25 14:00 | 2018-04-25 22:00 | 1d |  |  | TEAM_2Shift_Calendar-1 | SC Radiography (Cost) [0.1%] |  |  |  |  |  |
| 231 | 9.14.26 | Sh LS-2 Radiography | 1d | 2018-05-05 20:30 A | 2018-05-07 12:30 A | 230 | 100% | 2018-04-26 06:00 | 2018-04-26 14:00 | 1d |  |  | TEAM_2Shift_Calendar-1 | SC Radiography (Cost) [0.1%] |  |  |  |  |  |
| 232 | 9.14.27 | Sh LS-3 Radiography | 1d | 2018-05-07 12:30 A | 2018-05-07 20:30 A | 231 | 100% | 2018-04-26 14:00 | 2018-04-26 22:00 | 1d |  |  | TEAM_2Shift_Calendar-1 | SC Radiography (Cost) [0.1%] |  |  |  |  |  |

Notes:
- 183: 2NOS
- 190: 8NOS
- 197: ID880*2000Lg*14T
- 198: ID880*2000Lg*14T
- 199: ID880*1972Lg*14T
- 213: 1.61Kg/m
- 214: 1.61Kg/m
- 215: 1.61Kg/m

| ID | WBS | Task | Duration | Start | Finish | Predecessors | Complete | Remaining | Baseline start | Baseline finish | Baseline duration | Total slack | Free slack | Calendar | Resources | Work | Actual work | Cost | Baseline cost | Actual cost |
| --- | --- | --- | --- | --- | --- | --- | --- | --- | --- | --- | --- | --- | --- | --- | --- | --- | --- | --- | --- | --- |
| 233 | 9.15 | **Shell CS** | 14.88d | 2018-05-07 20:30 A | 2018-05-17 11:30 |  | 99% | 0d | 2018-04-27 06:00 | 2018-05-09 13:00 | 16.88d | 72.75d |  | TEAM_2Shift_Calendar-1 |  | 276h | 255h | 10,781.25 | 10,781.25 | 10,781.25 |
| 234 | 9.15.1 | Sh LS-1 EP For Cir Seam | 5h | 2018-05-07 20:30 A | 2018-05-08 09:30 A | 232 | 100% |  | 2018-04-27 06:00 | 2018-04-27 11:00 | 5h |  |  | TEAM_2Shift_Calendar-1 | Grinding Machine; Grinder | 10h | 10h | 281.25 | 281.25 | 281.25 |
| 235 | 9.15.2 | Sh LS-2 EP For Cir Seam | 5h | 2018-05-08 09:30 A | 2018-05-08 14:30 A | 234 | 100% |  | 2018-04-27 11:00 | 2018-04-27 16:00 | 5h |  |  | TEAM_2Shift_Calendar-1 | Grinding Machine; Grinder | 10h | 10h | 281.25 | 281.25 | 281.25 |
| 236 | 9.15.3 | Sh LS-3 EP For Cir Seam | 5h | 2018-05-08 14:30 A | 2018-05-08 19:30 A | 235 | 100% |  | 2018-04-27 16:00 | 2018-04-27 21:00 | 5h |  |  | TEAM_2Shift_Calendar-1 | Grinding Machine; Grinder | 10h | 10h | 281.25 | 281.25 | 281.25 |
| 237 | 9.15.4 | CS 1 Fitup | 5h | 2018-05-08 19:30 A | 2018-05-09 08:30 A | 236 | 100% |  | 2018-04-27 21:00 | 2018-04-30 10:00 | 5h |  |  | TEAM_2Shift_Calendar-1 | Helper [200%]; SAW Welder; SMAW Welding Machine; Fitter | 25h | 25h | 1,187.5 | 1,187.5 | 1,187.5 |
| 238 | 9.15.5 | CS 1 fit up inspection Inspection | 0.5d | 2018-05-09 08:30 A | 2018-05-09 12:30 A | 237 | 100% |  | 2018-04-30 10:00 | 2018-04-30 14:00 | 0.5d |  |  | TEAM_2Shift_Calendar-1 | Fitter [200%] | 6h | 6h | 412.5 | 412.5 | 412.5 |
| 239 | 9.15.6 | CS 1 Welding | 8h | 2018-05-09 12:30 A | 2018-05-09 20:30 A | 238 | 100% |  | 2018-04-30 14:00 | 2018-04-30 22:00 | 8h |  |  | TEAM_2Shift_Calendar-1 | SAW Welder; SMAW Welding Machine; Helper [200%] | 32h | 32h | 1,350 | 1,350 | 1,350 |
| 240 | 9.15.7 | CS 1 Back Chip | 4h | 2018-05-09 20:30 A | 2018-05-10 08:30 A | 239 | 100% |  | 2018-05-02 06:00 | 2018-05-02 10:00 | 4h |  |  | TEAM_2Shift_Calendar-1 | Grinding Machine; Grinder | 8h | 8h | 225 | 225 | 225 |
| 241 | 9.15.8 | CS 1 Inside Welding | 4h | 2018-05-10 08:30 A | 2018-05-10 12:30 A | 240 | 100% |  | 2018-05-02 10:00 | 2018-05-02 14:00 | 4h |  |  | TEAM_2Shift_Calendar-1 | SAW Welder; SMAW Welding Machine; Helper [200%] | 16h | 16h | 675 | 675 | 675 |
| 242 | 9.15.9 | CS 1 Flush Grind | 3h | 2018-05-10 12:30 A | 2018-05-10 15:30 A | 241 | 100% |  | 2018-05-02 14:00 | 2018-05-02 17:00 | 3h |  |  | TEAM_2Shift_Calendar-1 | Grinding Machine; Grinder | 6h | 6h | 168.75 | 168.75 | 168.75 |
| 243 | 9.15.10 | CS 1 DP Check | 2h | 2018-05-10 15:30 A | 2018-05-10 17:30 A | 242 | 100% |  | 2018-05-02 17:00 | 2018-05-02 19:00 | 2h |  |  | TEAM_2Shift_Calendar-1 | Fitter | 2h | 2h | 137.5 | 137.5 | 137.5 |
| 244 | 9.15.11 | CS 1 Radiography | 1d | 2018-05-10 17:30 A | 2018-05-11 09:30 A | 243 | 100% |  | 2018-05-02 19:00 | 2018-05-03 11:00 | 1d |  |  | TEAM_2Shift_Calendar-1 | SC Radiography (Cost) [0.1%] |  |  |  |  |  |
| 245 | 9.15.12 | CS 2 Fitup | 5h | 2018-05-11 09:30 A | 2018-05-11 14:30 A | 244 | 100% |  | 2018-05-03 11:00 | 2018-05-03 16:00 | 5h |  |  | TEAM_2Shift_Calendar-1 | Helper [200%]; SAW Welder; SMAW Welding Machine; Fitter | 25h | 25h | 1,187.5 | 1,187.5 | 1,187.5 |
| 246 | 9.15.13 | CS 2 Inspection | 0.5d | 2018-05-11 14:30 A | 2018-05-11 18:30 A | 245 | 100% |  | 2018-05-03 16:00 | 2018-05-03 20:00 | 0.5d |  |  | TEAM_2Shift_Calendar-1 | Fitter [200%] | 8h | 8h | 550 | 550 | 550 |
| 247 | 9.15.14 | CS 2 Welding | 8h | 2018-05-11 18:30 A | 2018-05-14 10:30 A | 246 | 100% |  | 2018-05-03 20:00 | 2018-05-04 12:00 | 8h |  |  | TEAM_2Shift_Calendar-1 | SAW Welder; SMAW Welding Machine; Helper [200%] | 32h | 32h | 1,350 | 1,350 | 1,350 |
| 248 | 9.15.15 | CS 2 Back Chip | 4h | 2018-05-14 10:30 A | 2018-05-14 14:30 A | 247 | 100% |  | 2018-05-04 12:00 | 2018-05-04 16:00 | 4h |  |  | TEAM_2Shift_Calendar-1 | Grinding Machine; Grinder | 8h | 8h | 225 | 225 | 225 |
| 249 | 9.15.16 | CS 2 Inside Welding | 4h | 2018-05-14 14:30 A | 2018-05-14 18:30 A | 248 | 100% |  | 2018-05-04 16:00 | 2018-05-04 20:00 | 4h |  |  | TEAM_2Shift_Calendar-1 | SAW Welder; SMAW Welding Machine; Helper [200%] | 16h | 16h | 675 | 675 | 675 |
| 250 | 9.15.17 | CS 2 Flush Grind | 3h | 2018-05-14 18:30 A | 2018-05-14 21:30 A | 249 | 100% |  | 2018-05-04 20:00 | 2018-05-05 07:00 | 3h |  |  | TEAM_2Shift_Calendar-1 | Grinding Machine; Grinder | 6h | 6h | 168.75 | 168.75 | 168.75 |
| 251 | 9.15.18 | CS 2 DP Check | 2h | 2018-05-14 21:30 A | 2018-05-15 07:30 A | 250 | 100% |  | 2018-05-05 07:00 | 2018-05-05 09:00 | 2h |  |  | TEAM_2Shift_Calendar-1 | Helper; Fitter | 4h | 4h | 237.5 | 237.5 | 237.5 |
| 252 | 9.15.19 | CS 2 Radiography | 1d | 2018-05-15 07:30 A | 2018-05-15 15:30 A | 251 | 100% |  | 2018-05-05 09:00 | 2018-05-05 17:00 | 1d |  |  | TEAM_2Shift_Calendar-1 | SC Radiography (Cost) [0.1%] |  |  |  |  |  |
| 253 | 9.15.20 | Sh Orientation Marking | 12h | 2018-05-15 15:30 A | 2018-05-16 11:30 | 252 | 100% | 0h | 2018-05-07 17:00 | 2018-05-08 13:00 | 12h | 0.38d | 0d | TEAM_2Shift_Calendar-1 | Helper; Fitter [200%] | 24h | 12h | 750 | 750 | 750 |
| 254 | 9.15.21 | Sh Extra Length Cutting | 3h | 2018-05-16 11:30 A | 2018-05-16 14:30 | 253 | 100% | 0h | 2018-05-08 13:00 | 2018-05-08 16:00 | 3h | 74.38d |  | TEAM_2Shift_Calendar-1 | Gas Cutter; OAGM; Helper | 18h | 9h | 356.25 | 356.25 | 356.25 |
| 255 | 9.15.22 | Sh EP of Cir Side | 13h | 2018-05-16 14:30 A | 2018-05-17 11:30 A | 254 | 100% |  | 2018-05-08 16:00 | 2018-05-09 13:00 | 13h |  |  | TEAM_2Shift_Calendar-1 | Grinding Machine; Grinder | 10h | 10h | 281.25 | 281.25 | 281.25 |
| 256 | 9.16 | **Body Flg Welding-Shell** | 5.75d | 2018-05-17 11:30 A | 2018-05-21 09:30 A |  | 100% |  | 2018-05-09 13:00 | 2018-05-14 11:00 | 5.75d |  |  | TEAM_2Shift_Calendar-1 |  | 97h | 97h | 4,256.25 | 4,256.25 | 4,256.25 |
| 257 | 9.16.1 | Body Flg-1 Fitup | 5h | 2018-05-17 11:30 A | 2018-05-17 16:30 A | 255 | 100% |  | 2018-05-09 13:00 | 2018-05-09 18:00 | 5h |  |  | TEAM_2Shift_Calendar-1 | Helper [200%]; SAW Welder; SMAW Welding Machine; Forging Non-Std (Cost) [0.1%]; Fitter | 25h | 25h | 1,187.5 | 1,187.5 | 1,187.5 |
| 258 | 9.16.2 | Body Flg-1 Inspection | 0.5d | 2018-05-17 16:30 A | 2018-05-17 20:30 A | 257 | 100% |  | 2018-05-09 18:00 | 2018-05-09 22:00 | 0.5d |  |  | TEAM_2Shift_Calendar-1 | Fitter [200%] | 6h | 6h | 412.5 | 412.5 | 412.5 |
| 259 | 9.16.3 | Body Flg-1 Welding | 16h | 2018-05-17 20:30 A | 2018-05-18 20:30 A | 258 | 100% |  | 2018-05-10 06:00 | 2018-05-10 22:00 | 16h |  |  | TEAM_2Shift_Calendar-1 | SAW Welder; SMAW Welding Machine; Helper [200%] | 32h | 32h | 1,350 | 1,350 | 1,350 |
| 260 | 9.16.4 | Body Flg-1 Back Chip | 4h | 2018-05-18 20:30 A | 2018-05-19 08:30 A | 259 | 100% |  | 2018-05-11 06:00 | 2018-05-11 10:00 | 4h |  |  | TEAM_2Shift_Calendar-1 | Grinding Machine; Grinder | 8h | 8h | 225 | 225 | 225 |
| 261 | 9.16.5 | Body Flg-1 Inside Welding | 4h | 2018-05-19 08:30 A | 2018-05-19 12:30 A | 260 | 100% |  | 2018-05-11 10:00 | 2018-05-11 14:00 | 4h |  |  | TEAM_2Shift_Calendar-1 | SAW Welder; SMAW Welding Machine; Helper [200%] | 16h | 16h | 675 | 675 | 675 |
| 262 | 9.16.6 | Body Flg-1 Inside Flush Grind | 3h | 2018-05-19 12:30 A | 2018-05-19 15:30 A | 261 | 100% |  | 2018-05-11 14:00 | 2018-05-11 17:00 | 3h |  |  | TEAM_2Shift_Calendar-1 | Grinding Machine; Grinder | 6h | 6h | 168.75 | 168.75 | 168.75 |
| 263 | 9.16.7 | Body Flg-1 DP Check | 2h | 2018-05-19 15:30 A | 2018-05-19 17:30 A | 262 | 100% |  | 2018-05-11 17:00 | 2018-05-11 19:00 | 2h |  |  | TEAM_2Shift_Calendar-1 | Helper; Fitter | 4h | 4h | 237.5 | 237.5 | 237.5 |
| 264 | 9.16.8 | Body Flg-1 Radiography | 1d | 2018-05-19 17:30 A | 2018-05-21 09:30 A | 263 | 100% |  | 2018-05-11 19:00 | 2018-05-14 11:00 | 1d |  |  | TEAM_2Shift_Calendar-1 | SC Radiography (Cost) [0.1%] |  |  |  |  |  |

Notes:
- 239: 1.61Kg/m
- 247: 1.61Kg/m

| ID | WBS | Task | Duration | Start | Finish | Predecessors | Complete | Remaining | Baseline start | Baseline finish | Baseline duration | Total slack | Free slack | Calendar | Resources | Work | Actual work | Cost | Baseline cost | Actual cost |
| --- | --- | --- | --- | --- | --- | --- | --- | --- | --- | --- | --- | --- | --- | --- | --- | --- | --- | --- | --- | --- |
| 265 | 9.17 | **Dish Welding-Shell** | 5.75d | 2018-05-29 21:30 | 2018-06-01 19:30 |  |  |  | 2018-06-05 15:30 | 2018-06-08 13:30 | 5.75d | 47.75d |  | TEAM_2Shift_Calendar-1 |  | 133h |  | 5,493.75 | 5,493.75 |  |
| 266 | 9.17.1 | Sh + Dish Fitup | 7h | 2018-05-29 21:30 | 2018-05-30 12:30 | 66, 264FS+2d |  |  | 2018-06-05 15:30 | 2018-06-06 06:30 | 7h | 47.75d | 0d | TEAM_2Shift_Calendar-1 | SAW Welder; Fitter; SMAW Welding Machine; Helper [200%] | 35h |  | 1,662.5 | 1,662.5 |  |
| 267 | 9.17.2 | Sh + Dish Fitup Inspection | 0.5d | 2018-05-30 12:30 | 2018-05-30 16:30 | 266 |  |  | 2018-06-06 06:30 | 2018-06-06 10:30 | 0.5d | 47.75d | 0d | TEAM_2Shift_Calendar-1 | Fitter [200%] | 8h |  | 550 | 550 |  |
| 268 | 9.17.3 | Sh + Dish Fitup Welding | 8h | 2018-05-30 16:30 | 2018-05-31 08:30 | 267 |  |  | 2018-06-06 10:30 | 2018-06-06 18:30 | 8h | 47.75d | 0d | TEAM_2Shift_Calendar-1 | SAW Welder; SMAW Welding Machine; Helper [200%] | 32h |  | 1,350 | 1,350 |  |
| 269 | 9.17.4 | Sh + Dish Fitup Back Chip | 6h | 2018-05-31 08:30 | 2018-05-31 14:30 | 268 |  |  | 2018-06-06 18:30 | 2018-06-07 08:30 | 6h | 47.75d | 0d | TEAM_2Shift_Calendar-1 | Grinding Machine; Grinder | 12h |  | 337.5 | 337.5 |  |
| 270 | 9.17.5 | Sh + Dish Inside Welding | 6h | 2018-05-31 14:30 | 2018-05-31 20:30 | 269 |  |  | 2018-06-07 08:30 | 2018-06-07 14:30 | 6h | 47.75d | 0d | TEAM_2Shift_Calendar-1 | SAW Welder; SMAW Welding Machine; Helper [200%] | 24h |  | 1,012.5 | 1,012.5 |  |
| 271 | 9.17.6 | Sh + Dish Inside Flush Grind | 4h | 2018-05-31 20:30 | 2018-06-01 08:30 | 270 |  |  | 2018-06-07 14:30 | 2018-06-07 18:30 | 4h | 47.75d | 0d | TEAM_2Shift_Calendar-1 | Grinding Machine; Grinder | 8h |  | 225 | 225 |  |
| 272 | 9.17.7 | Sh + Dish Inside DP Check | 3h | 2018-06-01 08:30 | 2018-06-01 11:30 | 271 |  |  | 2018-06-07 18:30 | 2018-06-07 21:30 | 3h | 47.75d | 0d | TEAM_2Shift_Calendar-1 | Helper; Fitter | 6h |  | 356.25 | 356.25 |  |
| 273 | 9.17.8 | Sh + Dish Inside Radiography | 1d | 2018-06-01 11:30 | 2018-06-01 19:30 | 272 |  |  | 2018-06-07 21:30 | 2018-06-08 13:30 | 1d | 47.75d |  | TEAM_2Shift_Calendar-1 | SC (Work) | 8h |  |  |  |  |
| 274 | 9.18 | **Nozzle Welding-Shell** | 10d | 2018-05-18 20:30 A | 2018-05-24 20:30 |  | 14% | 8.59d | 2018-06-11 13:30 | 2018-06-15 13:30 | 8d | 59.62d |  | TEAM_2Shift_Calendar-1 |  | 201h | 21h | 9,275 | 9,275 | 693.75 |
| 275 | 9.18.1 | Sh Nozzle Opening- S1,S2,S3 | 3h | 2018-05-18 20:30 A | 2018-05-19 07:30 A | 259 | 100% |  | 2018-06-11 13:30 | 2018-06-11 16:30 | 3h |  |  | TEAM_2Shift_Calendar-1 | Gas Cutter; OAGM; Helper | 9h | 9h | 356.25 | 356.25 | 356.25 |
| 276 | 9.18.2 | Sh Nozzle Opening- S1,S2,S3 EP | 6h | 2018-05-19 07:30 A | 2018-05-19 13:30 A | 275 | 100% |  | 2018-06-11 16:30 | 2018-06-12 06:30 | 6h |  |  | TEAM_2Shift_Calendar-1 | Grinding Machine; Grinder | 12h | 12h | 337.5 | 337.5 | 337.5 |
| 277 | 9.18.3 | Sh Nozzle RF Pad Fitup-3 Nos | 6h | 2018-05-21 13:30 | 2018-05-21 19:30 | 276FS+2d |  |  | 2018-06-12 06:30 | 2018-06-12 12:30 | 6h | 59.62d | 0d | TEAM_2Shift_Calendar-1 | Helper [200%]; SAW Welder; SMAW Welding Machine; Fitter | 30h |  | 1,425 | 1,425 |  |
| 278 | 9.18.4 | Sh Nozzle RF Pad Fitup Inspection | 0.5d | 2018-05-21 19:30 | 2018-05-22 07:30 | 277 |  |  | 2018-06-12 12:30 | 2018-06-12 16:30 | 0.5d | 59.62d | 0d | TEAM_2Shift_Calendar-1 | Fitter [200%] | 8h |  | 550 | 550 |  |
| 279 | 9.18.5 | Sh Nozzle RF Pad Welding - 3 Nos | 5h | 2018-05-22 07:30 | 2018-05-22 12:30 | 278 |  |  | 2018-06-12 16:30 | 2018-06-12 21:30 | 5h | 59.62d | 0d | TEAM_2Shift_Calendar-1 | SAW Welder; SMAW Welding Machine; Helper [200%] | 20h |  | 843.75 | 843.75 |  |
| 280 | 9.18.6 | Sh Nozzle RF Pad Air Leak Test | 5h | 2018-05-22 12:30 | 2018-05-22 17:30 | 279 |  |  | 2018-06-12 21:30 | 2018-06-13 10:30 | 5h | 59.62d | 0d | TEAM_2Shift_Calendar-1 | Helper; Fitter | 10h |  | 593.75 | 593.75 |  |
| 281 | 9.18.7 | Sh Nozzle Fitup -S1,S2,S3- 12NB | 6h | 2018-05-22 17:30 | 2018-05-23 07:30 | 280 |  |  | 2018-06-13 10:30 | 2018-06-13 16:30 | 6h | 59.62d | 0d | TEAM_2Shift_Calendar-1 | Helper [200%]; SAW Welder; SMAW Welding Machine; Fitter | 30h |  | 1,425 | 1,425 |  |
| 282 | 9.18.8 | Sh Nozzle Fitup Inspection | 0.5d | 2018-05-23 07:30 | 2018-05-23 11:30 | 281 |  |  | 2018-06-13 16:30 | 2018-06-13 20:30 | 0.5d | 59.62d | 0d | TEAM_2Shift_Calendar-1 | Fitter [200%] | 8h |  | 550 | 550 |  |
| 283 | 9.18.9 | Sh Nozzle Welding Arrangement | 3h | 2018-05-23 11:30 | 2018-05-23 14:30 | 282 |  |  | 2018-06-13 20:30 | 2018-06-14 07:30 | 3h | 59.62d | 0d | TEAM_2Shift_Calendar-1 | Helper; Fitter | 6h |  | 356.25 | 356.25 |  |
| 284 | 9.18.10 | Sh Nozzle Welding | 6h | 2018-05-23 14:30 | 2018-05-23 20:30 | 283 |  |  | 2018-06-14 07:30 | 2018-06-14 13:30 | 6h | 59.62d | 0d | TEAM_2Shift_Calendar-1 | SAW Welder; SMAW Welding Machine; Helper [200%] | 24h |  | 1,012.5 | 1,012.5 |  |
| 285 | 9.18.11 | Sh Nozzle Welding- Inner Back chip Grinding | 6h | 2018-05-23 20:30 | 2018-05-24 10:30 | 284 |  |  | 2018-06-14 13:30 | 2018-06-14 19:30 | 6h | 59.62d | 0d | TEAM_2Shift_Calendar-1 | Grinding Machine; Grinder | 12h |  | 337.5 | 337.5 |  |
| 286 | 9.18.12 | Sh Nozzle Welding- Inner DP Check | 4h | 2018-05-24 10:30 | 2018-05-24 14:30 | 285 |  |  | 2018-06-14 19:30 | 2018-06-15 07:30 | 4h | 59.62d | 0d | TEAM_2Shift_Calendar-1 | Helper; Fitter | 8h |  | 475 | 475 |  |
| 287 | 9.18.13 | Sh Nozzle Welding- Inner Weld | 6h | 2018-05-24 14:30 | 2018-05-24 20:30 | 286 |  |  | 2018-06-15 07:30 | 2018-06-15 13:30 | 6h | 59.62d |  | TEAM_2Shift_Calendar-1 | SAW Welder; SMAW Welding Machine; Helper [200%] | 24h |  | 1,012.5 | 1,012.5 |  |
| 288 | 9.19 | **Other Components Welding-shell(saddle,Lifting Lug)** | 9.5d | 2018-05-23 07:30 A | 2018-05-29 19:30 |  | 48% | 4.93d | 2018-06-16 13:30 | 2018-06-20 17:30 | 6.5d | 44.5d |  | TEAM_2Shift_Calendar-1 |  | 205h | 104h | 9,280.34 | 9,280.34 | 4,756.25 |
| 289 | 9.19.1 | Sh+Saddle Pad Fitup | 10h | 2018-05-23 07:30 A | 2018-05-23 17:30 A | 107FS+35d | 100% |  | 2018-06-16 13:30 | 2018-06-18 07:30 | 10h |  |  | TEAM_2Shift_Calendar-1 | Helper [200%]; SAW Welder; SMAW Welding Machine; Fitter | 50h | 50h | 2,375 | 2,375 | 2,375 |
| 290 | 9.19.2 | Sh+Saddle Pad Welding Arrangement | 3h | 2018-05-23 17:30 A | 2018-05-23 20:30 A | 289 | 100% |  | 2018-06-18 07:30 | 2018-06-18 10:30 | 3h |  |  | TEAM_2Shift_Calendar-1 | Helper; Fitter | 6h | 6h | 356.25 | 356.25 | 356.25 |
| 291 | 9.19.3 | Sh+Saddle Pad Welding | 12h | 2018-05-23 20:30 A | 2018-05-24 16:30 A | 290 | 100% |  | 2018-06-18 10:30 | 2018-06-19 06:30 | 12h |  |  | TEAM_2Shift_Calendar-1 | SAW Welder; SMAW Welding Machine; Helper [200%] | 48h | 48h | 2,025 | 2,025 | 2,025 |
| 292 | 9.19.4 | Sh Lifting Lug Pad Fitup | 4h | 2018-05-28 08:30 | 2018-05-28 12:30 | 291FS+3d |  |  | 2018-06-19 06:30 | 2018-06-19 10:30 | 4h | 44.5d | 0d | TEAM_2Shift_Calendar-1 | Helper [200%]; SAW Welder; SMAW Welding Machine; Fitter | 20h |  | 950 | 950 |  |
| 293 | 9.19.5 | Sh Ll Pad Weld Arrangement | 1h | 2018-05-28 12:30 | 2018-05-28 13:30 | 292 |  |  | 2018-06-19 10:30 | 2018-06-19 11:30 | 1h | 44.5d | 0d | TEAM_2Shift_Calendar-1 | Helper; Fitter | 2h |  | 118.75 | 118.75 |  |
| 294 | 9.19.6 | Sh Lifting Lug Pad Welding | 4h | 2018-05-28 13:30 | 2018-05-28 17:30 | 293 |  |  | 2018-06-19 11:30 | 2018-06-19 15:30 | 4h | 44.5d | 0d | TEAM_2Shift_Calendar-1 | SAW Welder; SMAW Welding Machine; Helper [200%] | 16h |  | 675 | 675 |  |
| 295 | 9.19.7 | Sh Lifting Lug Fitup | 2h | 2018-05-28 17:30 | 2018-05-28 19:30 | 294 |  |  | 2018-06-19 15:30 | 2018-06-19 17:30 | 2h | 44.5d | 0d | TEAM_2Shift_Calendar-1 | Helper [200%]; SAW Welder; Milling Operator [50%]; SMAW Welding Machine; Fitter | 12h |  | 649.09 | 649.09 |  |
| 296 | 9.19.8 | Sh Lifting Lug Welding | 2h | 2018-05-28 19:30 | 2018-05-28 21:30 | 295 |  |  | 2018-06-19 17:30 | 2018-06-19 19:30 | 2h | 44.5d | 0d | TEAM_2Shift_Calendar-1 | SAW Welder; SMAW Welding Machine; Helper [200%] | 8h |  | 337.5 | 337.5 |  |
| 297 | 9.19.9 | Sh Insulation Cleat Marking | 2h | 2018-05-28 21:30 | 2018-05-29 07:30 | 296 |  |  | 2018-06-19 19:30 | 2018-06-19 21:30 | 2h | 44.5d | 0d | TEAM_2Shift_Calendar-1 | Helper; Fitter | 4h |  | 237.5 | 237.5 |  |
| 298 | 9.19.10 | Sh Insulation Cleat Fitup | 3h | 2018-05-29 07:30 | 2018-05-29 10:30 | 297 |  |  | 2018-06-19 21:30 | 2018-06-20 08:30 | 3h | 44.5d | 0d | TEAM_2Shift_Calendar-1 | Helper [200%]; SAW Welder; SMAW Welding Machine; Fitter | 15h |  | 712.5 | 712.5 |  |
| 299 | 9.19.11 | Sh Insulation Cleat welding | 3h | 2018-05-29 10:30 | 2018-05-29 13:30 | 298 |  |  | 2018-06-20 08:30 | 2018-06-20 11:30 | 3h | 44.5d | 0d | TEAM_2Shift_Calendar-1 | SAW Welder; SMAW Welding Machine; Helper [200%] | 12h |  | 506.25 | 506.25 |  |
| 300 | 9.19.12 | Sh Final Dress Up | 6h | 2018-05-29 13:30 | 2018-05-29 19:30 | 299 |  |  | 2018-06-20 11:30 | 2018-06-20 17:30 | 6h | 44.5d | 0d | TEAM_2Shift_Calendar-1 | Grinding Machine; Grinder | 12h |  | 337.5 | 337.5 |  |

Notes:
- 289: 2NOS
- 292: 2NOS
- 297: 4NOS

| ID | WBS | Task | Duration | Start | Finish | Predecessors | Complete | Remaining | Baseline start | Baseline finish | Baseline duration | Total slack | Free slack | Calendar | Resources | Work | Actual work | Cost | Baseline cost | Actual cost |
| --- | --- | --- | --- | --- | --- | --- | --- | --- | --- | --- | --- | --- | --- | --- | --- | --- | --- | --- | --- | --- |
| 301 | 9.20 | **Final Works & Inspection-Shell** | 9.25d | 2018-05-29 19:30 | 2018-06-04 13:30 |  |  |  | 2018-06-20 17:30 | 2018-06-27 13:30 | 9.5d | 44.5d |  | TEAM_2Shift_Calendar-1 |  | 46h |  | 1,500 | 1,500 |  |
| 302 | 9.20.1 | Sh Dimensional Inspection | 0.5d | 2018-05-29 19:30 | 2018-05-30 07:30 | 300 |  |  | 2018-06-20 17:30 | 2018-06-20 21:30 | 0.5d | 44.5d | 0d | TEAM_2Shift_Calendar-1 | Fitter [200%] | 8h |  | 550 | 550 |  |
| 303 | 9.20.2 | Sh Clearance By TPI | 1.38d | 2018-05-30 07:30 | 2018-05-30 18:30 | 302 |  |  | 2018-06-20 21:30 | 2018-06-21 13:30 | 1d | 44.5d | 0d | TEAM_2Shift_Calendar-1 | TPI (Cost) [0.1%]; QC Engineer | 4h |  |  |  |  |
| 304 | 9.20.3 | Sh PWHT | 4d | 2018-05-30 18:30 | 2018-06-01 18:30 | 303 |  |  | 2018-06-21 13:30 | 2018-06-25 21:30 | 5d | 44.5d | 0d | TEAM_2Shift_Calendar-1 | SC (Cost) [0.1%] |  |  |  |  |  |
| 305 | 9.20.4 | Sh Receipt After PWHT | 1d | 2018-06-01 18:30 | 2018-06-02 10:30 | 304 |  |  | 2018-06-25 21:30 | 2018-06-26 13:30 | 1d | 44.5d | 0d | TEAM_2Shift_Calendar-1 | Helper; Crane; Store | 6h |  | 100 | 100 |  |
| 306 | 9.20.5 | Sh Sufrace Cleaning and DP check | 1d | 2018-06-02 10:30 | 2018-06-02 18:30 | 305 |  |  | 2018-06-26 13:30 | 2018-06-26 21:30 | 1d | 44.5d | 0d | TEAM_2Shift_Calendar-1 | Grinder; Grinding Machine; Helper | 24h |  | 850 | 850 |  |
| 307 | 9.20.6 | Sh NDE- TPI | 1.38d | 2018-06-02 18:30 | 2018-06-04 13:30 | 306 |  |  | 2018-06-26 21:30 | 2018-06-27 13:30 | 1d | 44.5d |  | TEAM_2Shift_Calendar-1 | TPI (Cost) [0.1%]; QC Engineer | 4h |  |  |  |  |
| 308 | 9.21 | **Channel LS** | 19.69d | 2018-04-27 17:30 A | 2018-05-11 15:00 |  | 99% | 0d | 2018-04-25 17:30 | 2018-05-17 07:00 | 30.69d | 80.31d |  | TEAM_2Shift_Calendar-1 |  | 161h | 121h | 5,262.99 | 5,262.99 | 5,262.99 |
| 309 | 9.21.1 | Ch Pl Marking | 1d | 2018-04-27 17:30 A | 2018-04-30 09:30 A | 51FS+122d | 100% |  | 2018-04-25 17:30 | 2018-04-26 09:30 | 1d |  |  | TEAM_2Shift_Calendar-1 | Helper; Plate (Cost) [0.1%]; Fitter | 6h | 6h | 347.37 | 347.37 | 347.37 |
| 310 | 9.21.2 | Ch Pl Stamping | 1d | 2018-04-30 17:30 A | 2018-05-02 09:30 A | 309FS+1d | 100% |  | 2018-04-27 09:30 | 2018-04-27 17:30 | 1d |  |  | TEAM_2Shift_Calendar-1 | TPI (Cost) [0.1%]; QC Engineer | 1h | 1h |  |  |  |
| 311 | 9.21.3 | Ch Pl Cutting | 2h | 2018-05-02 17:30 A | 2018-05-02 19:30 A | 310FS+1d | 100% |  | 2018-05-08 09:30 | 2018-05-08 11:30 | 2h |  |  | TEAM_2Shift_Calendar-1 | Gas Cutter; OAGM; Helper | 6h | 6h | 237.5 | 237.5 | 237.5 |
| 312 | 9.21.4 | Ch Pl EP | 3h | 2018-05-02 19:30 A | 2018-05-03 06:30 A | 311 | 100% |  | 2018-05-14 11:30 | 2018-05-14 14:30 | 3h |  |  | TEAM_2Shift_Calendar-1 | Grinding Machine; Grinder | 6h | 6h | 168.75 | 168.75 | 168.75 |
| 313 | 9.21.5 | Ch Pl Pre Bending | 4h | 2018-05-03 06:30 A | 2018-05-03 10:30 A | 312 | 100% |  | 2018-05-14 14:30 | 2018-05-14 18:30 | 4h |  |  | TEAM_2Shift_Calendar-1 | Helper [200%]; Plate Bending Machine; Fitter | 16h | 16h | 675 | 675 | 675 |
| 314 | 9.21.6 | Ch Pl Pre Bend Cut Off | 2h | 2018-05-03 10:30 A | 2018-05-03 12:30 A | 313 | 100% |  | 2018-05-14 18:30 | 2018-05-14 20:30 | 2h |  |  | TEAM_2Shift_Calendar-1 | OAGM; Gas Cutter | 4h | 4h | 137.5 | 137.5 | 137.5 |
| 315 | 9.21.7 | Ch Pl LS EP | 2.5h | 2018-05-03 12:30 A | 2018-05-03 15:00 A | 314 | 100% |  | 2018-05-14 20:30 | 2018-05-15 07:00 | 2.5h |  |  | TEAM_2Shift_Calendar-1 | Grinding Machine; Grinder | 5h | 5h | 140.62 | 140.62 | 140.62 |
| 316 | 9.21.8 | Ch Pl LS Rolling | 3h | 2018-05-09 15:00 A | 2018-05-09 18:00 A | 203, 315FS+10d | 100% |  | 2018-05-15 07:00 | 2018-05-15 10:00 | 3h |  |  | TEAM_2Shift_Calendar-1 | Helper [200%]; Rolling Machine; Fitter | 12h | 12h | 506.25 | 506.25 | 506.25 |
| 317 | 9.21.9 | Ch Pl LS Fitup | 5h | 2018-05-09 18:00 A | 2018-05-10 07:00 A | 316 | 100% |  | 2018-05-15 10:00 | 2018-05-15 15:00 | 5h |  |  | TEAM_2Shift_Calendar-1 | Helper [200%]; SAW Welder; SMAW Welding Machine; Fitter | 25h | 25h | 1,187.5 | 1,187.5 | 1,187.5 |
| 318 | 9.21.10 | Ch Pl LS Fitup Inspection | 0.5d | 2018-05-10 07:00 A | 2018-05-10 11:00 | 317 | 100% | 0d | 2018-05-15 15:00 | 2018-05-15 19:00 | 0.5d | 0.38d | 0d | TEAM_2Shift_Calendar-1 | Fitter | 8h | 4h | 275 | 275 | 275 |
| 319 | 9.21.11 | Ch Pl LS Welding | 3h | 2018-05-10 11:00 A | 2018-05-10 14:00 | 318 | 100% | 0h | 2018-05-15 19:00 | 2018-05-15 22:00 | 3h | 0.25d | 0d | TEAM_2Shift_Calendar-1 | SAW Welder; SMAW Welding Machine; Helper [200%] | 24h | 12h | 506.25 | 506.25 | 506.25 |
| 320 | 9.21.12 | Ch Pl LS Back Chip | 2h | 2018-05-10 14:00 A | 2018-05-10 16:00 | 319 | 100% | 0h | 2018-05-16 06:00 | 2018-05-16 08:00 | 2h | 0.25d | 0d | TEAM_2Shift_Calendar-1 | Grinding Machine; Grinder | 8h | 4h | 112.5 | 112.5 | 112.5 |
| 321 | 9.21.13 | Ch Sh Inner Welding | 2h | 2018-05-10 16:00 A | 2018-05-10 18:00 | 320 | 100% | 0h | 2018-05-16 08:00 | 2018-05-16 10:00 | 2h | 0.12d | 0d | TEAM_2Shift_Calendar-1 | SAW Welder; SMAW Welding Machine; Helper [200%] | 16h | 8h | 337.5 | 337.5 | 337.5 |
| 322 | 9.21.14 | Ch Sh Inner Weld Flush Grind | 1h | 2018-05-10 18:00 A | 2018-05-10 19:00 | 321 | 100% | 0h | 2018-05-16 10:00 | 2018-05-16 11:00 | 1h | 0.12d | 0d | TEAM_2Shift_Calendar-1 | Grinding Machine; Grinder | 4h | 2h | 56.25 | 56.25 | 56.25 |
| 323 | 9.21.15 | Ch Sh Inner Weld DP Check | 1h | 2018-05-10 19:00 A | 2018-05-10 20:00 | 322 | 100% | 0h | 2018-05-16 11:00 | 2018-05-16 12:00 | 1h | 0.38d | 0d | TEAM_2Shift_Calendar-1 | Fitter | 2h | 1h | 68.75 | 68.75 | 68.75 |
| 324 | 9.21.16 | Ch Sh Rerolling | 3h | 2018-05-10 20:00 A | 2018-05-11 07:00 | 323 | 100% | 0h | 2018-05-16 12:00 | 2018-05-16 15:00 | 3h | 81.31d |  | TEAM_2Shift_Calendar-1 | Helper [200%]; Fitter | 18h | 9h | 506.25 | 506.25 | 506.25 |
| 325 | 9.21.17 | Ch Sh Radiography | 1d | 2018-05-11 07:00 A | 2018-05-11 15:00 A | 324 | 100% |  | 2018-05-16 15:00 | 2018-05-17 07:00 | 1d |  |  | TEAM_2Shift_Calendar-1 | SC Radiography (Cost) [0.1%] |  |  |  |  |  |

Notes:
- 309: ID880*399Lg*22T
- 319: 1.25 Kg/m
- 321: 0.94 Kg/m

| ID | WBS | Task | Duration | Start | Finish | Predecessors | Complete | Remaining | Baseline start | Baseline finish | Baseline duration | Total slack | Free slack | Calendar | Resources | Work | Actual work | Cost | Baseline cost | Actual cost |
| --- | --- | --- | --- | --- | --- | --- | --- | --- | --- | --- | --- | --- | --- | --- | --- | --- | --- | --- | --- | --- |
| 326 | 9.22 | **Channel flange and dish welding** | 23.12d | 2018-05-14 15:00 A | 2018-05-29 08:00 |  | 55% | 10.39d | 2018-05-18 07:00 | 2018-05-28 16:00 | 15.12d | 33.19d |  | TEAM_2Shift_Calendar-1 |  | 225h | 124h | 9,843.75 | 9,843.75 | 5,387.5 |
| 327 | 9.22.1 | Ch Sh Orientation Marking | 4h | 2018-05-14 15:00 A | 2018-05-14 19:00 A | 325FS+2d | 100% |  | 2018-05-18 07:00 | 2018-05-18 11:00 | 4h |  |  | TEAM_2Shift_Calendar-1 | Helper [200%]; Fitter | 12h | 12h | 675 | 675 | 675 |
| 328 | 9.22.2 | Sh Extra Length Cutting | 3h | 2018-05-14 19:00 A | 2018-05-14 22:00 A | 327 | 100% |  | 2018-05-18 11:00 | 2018-05-18 14:00 | 3h |  |  | TEAM_2Shift_Calendar-1 | OAGM; Gas Cutter | 6h | 6h | 206.25 | 206.25 | 206.25 |
| 329 | 9.22.3 | Sh EP of Cir Side | 4h | 2018-05-15 06:00 A | 2018-05-15 10:00 A | 328 | 100% |  | 2018-05-18 14:00 | 2018-05-18 18:00 | 4h |  |  | TEAM_2Shift_Calendar-1 | Grinding Machine; Grinder | 8h | 8h | 225 | 225 | 225 |
| 330 | 9.22.4 | Body Flg-2 Fitup | 5h | 2018-05-16 10:00 A | 2018-05-16 15:00 A | 329FS+2d | 100% |  | 2018-05-19 18:00 | 2018-05-21 07:00 | 5h |  |  | TEAM_2Shift_Calendar-1 | Helper [200%]; SAW Welder; SMAW Welding Machine; Forging Non-Std (Cost) [0.1%]; Fitter | 25h | 25h | 1,187.5 | 1,187.5 | 1,187.5 |
| 331 | 9.22.5 | Body Flg-2 Inspection | 0.5d | 2018-05-16 15:00 A | 2018-05-16 19:00 A | 330 | 100% |  | 2018-05-21 07:00 | 2018-05-21 11:00 | 0.5d |  |  | TEAM_2Shift_Calendar-1 | Fitter [200%] | 8h | 8h | 550 | 550 | 550 |
| 332 | 9.22.6 | Body Flg-2 Welding | 6h | 2018-05-16 19:00 A | 2018-05-17 09:00 A | 331 | 100% |  | 2018-05-21 11:00 | 2018-05-21 17:00 | 6h |  |  | TEAM_2Shift_Calendar-1 | SAW Welder; SMAW Welding Machine; Helper [200%] | 24h | 24h | 1,012.5 | 1,012.5 | 1,012.5 |
| 333 | 9.22.7 | Body Flg-2 Back Chip | 5h | 2018-05-17 09:00 A | 2018-05-17 14:00 A | 332 | 100% |  | 2018-05-21 17:00 | 2018-05-21 22:00 | 5h |  |  | TEAM_2Shift_Calendar-1 | Grinding Machine; Grinder | 10h | 10h | 281.25 | 281.25 | 281.25 |
| 334 | 9.22.8 | Body Flg-2 Inside Welding | 6h | 2018-05-17 14:00 A | 2018-05-17 20:00 A | 333 | 100% |  | 2018-05-22 06:00 | 2018-05-22 12:00 | 6h |  |  | TEAM_2Shift_Calendar-1 | SAW Welder; SMAW Welding Machine; Helper [200%] | 24h | 24h | 1,012.5 | 1,012.5 | 1,012.5 |
| 335 | 9.22.9 | Body Flg-2 Inside Flush Grind | 3h | 2018-05-17 20:00 A | 2018-05-18 07:00 A | 334 | 100% |  | 2018-05-22 12:00 | 2018-05-22 15:00 | 3h |  |  | TEAM_2Shift_Calendar-1 | Grinding Machine; Grinder | 6h | 6h | 168.75 | 168.75 | 168.75 |
| 336 | 9.22.10 | Body Flg-2 DP Check | 1h | 2018-05-18 07:00 A | 2018-05-18 08:00 A | 335 | 100% |  | 2018-05-22 15:00 | 2018-05-22 16:00 | 1h |  |  | TEAM_2Shift_Calendar-1 | Fitter | 1h | 1h | 68.75 | 68.75 | 68.75 |
| 337 | 9.22.11 | Body Flg-2 Radiography | 1d | 2018-05-19 08:00 A | 2018-05-19 16:00 A | 336FS+2d | 100% |  | 2018-05-22 16:00 | 2018-05-23 08:00 | 1d |  |  | TEAM_2Shift_Calendar-1 | SC Radiography (Cost) [0.1%] |  |  |  |  |  |
| 338 | 9.22.12 | Ch + Dish Fitup | 5h | 2018-05-24 16:00 | 2018-05-24 21:00 | 337FS+8d |  |  | 2018-05-24 08:00 | 2018-05-24 13:00 | 5h | 33.19d | 0d | TEAM_2Shift_Calendar-1 | Helper [200%]; SAW Welder; SMAW Welding Machine; Fitter | 25h |  | 1,187.5 | 1,187.5 |  |
| 339 | 9.22.13 | Ch + Dish Fitup Inspection | 0.5d | 2018-05-24 21:00 | 2018-05-25 09:00 | 338 |  |  | 2018-05-24 13:00 | 2018-05-24 17:00 | 0.5d | 33.19d | 0d | TEAM_2Shift_Calendar-1 | Fitter [200%] | 8h |  | 550 | 550 |  |
| 340 | 9.22.14 | Ch + Dish Welding | 6h | 2018-05-25 09:00 | 2018-05-25 15:00 | 339 |  |  | 2018-05-24 17:00 | 2018-05-25 07:00 | 6h | 33.19d | 0d | TEAM_2Shift_Calendar-1 | SAW Welder; SMAW Welding Machine; Helper [200%] | 24h |  | 1,012.5 | 1,012.5 |  |
| 341 | 9.22.15 | Ch + Dish Back Chip | 5h | 2018-05-25 15:00 | 2018-05-25 20:00 | 340 |  |  | 2018-05-25 07:00 | 2018-05-25 12:00 | 5h | 33.19d | 0d | TEAM_2Shift_Calendar-1 | Grinding Machine; Grinder | 10h |  | 281.25 | 281.25 |  |
| 342 | 9.22.16 | Ch + Dish Inside Welding | 5h | 2018-05-25 20:00 | 2018-05-28 09:00 | 341 |  |  | 2018-05-25 12:00 | 2018-05-25 17:00 | 5h | 33.19d | 0d | TEAM_2Shift_Calendar-1 | SAW Welder; SMAW Welding Machine; Helper [200%] | 20h |  | 843.75 | 843.75 |  |
| 343 | 9.22.17 | Ch + Dish Inside Fluch Grind | 4h | 2018-05-28 09:00 | 2018-05-28 13:00 | 342 |  |  | 2018-05-25 17:00 | 2018-05-25 21:00 | 4h | 33.19d | 0d | TEAM_2Shift_Calendar-1 | Grinding Machine; Grinder | 8h |  | 225 | 225 |  |
| 344 | 9.22.18 | Ch + Dish Inside DP Check | 3h | 2018-05-28 13:00 | 2018-05-28 16:00 | 343 |  |  | 2018-05-25 21:00 | 2018-05-28 08:00 | 3h | 33.19d | 0d | TEAM_2Shift_Calendar-1 | Helper; Fitter | 6h |  | 356.25 | 356.25 |  |
| 345 | 9.22.19 | Ch + Dish weld Radiography | 1d | 2018-05-28 16:00 | 2018-05-29 08:00 | 344 |  |  | 2018-05-28 08:00 | 2018-05-28 16:00 | 1d | 33.19d | 0d | TEAM_2Shift_Calendar-1 | SC Radiography (Cost) [0.1%] |  |  |  |  |  |
| 346 | 9.23 | **Nozzle Welding-Channel** | 9.12d | 2018-05-29 08:00 | 2018-06-02 17:00 |  |  |  | 2018-05-29 16:00 | 2018-06-04 09:00 | 9.12d | 33.19d |  | TEAM_2Shift_Calendar-1 |  | 169h |  | 7,787.5 | 7,787.5 |  |
| 347 | 9.23.1 | Ch Nozzle Opening- T1,T2 | 3h | 2018-05-29 08:00 | 2018-05-29 11:00 | 345 |  |  | 2018-05-29 16:00 | 2018-05-29 19:00 | 3h | 33.19d | 0d | TEAM_2Shift_Calendar-1 | Gas Cutter; OAGM; Helper | 9h |  | 356.25 | 356.25 |  |
| 348 | 9.23.2 | Ch Nozzle EP T1,T2 | 8h | 2018-05-29 11:00 | 2018-05-29 19:00 | 347 |  |  | 2018-05-29 19:00 | 2018-05-30 11:00 | 8h | 33.19d | 0d | TEAM_2Shift_Calendar-1 | Grinding Machine; Grinder | 16h |  | 450 | 450 |  |
| 349 | 9.23.3 | Ch Nozzle RF Pad Fitup- 2 Nos | 5h | 2018-05-29 19:00 | 2018-05-30 08:00 | 348 |  |  | 2018-05-30 11:00 | 2018-05-30 16:00 | 5h | 33.19d | 0d | TEAM_2Shift_Calendar-1 | Helper [200%]; SAW Welder; SMAW Welding Machine; Fitter | 25h |  | 1,187.5 | 1,187.5 |  |
| 350 | 9.23.4 | Ch Nozzle RF Pad Fitup Inspection | 0.5d | 2018-05-30 08:00 | 2018-05-30 12:00 | 349 |  |  | 2018-05-30 16:00 | 2018-05-30 20:00 | 0.5d | 33.19d | 0d | TEAM_2Shift_Calendar-1 | Fitter [200%] | 8h |  | 550 | 550 |  |
| 351 | 9.23.5 | Ch Nozzle RF Pad Welding - 2 Nos | 6h | 2018-05-30 12:00 | 2018-05-30 18:00 | 350 |  |  | 2018-05-30 20:00 | 2018-05-31 10:00 | 6h | 33.19d | 0d | TEAM_2Shift_Calendar-1 | SAW Welder; SMAW Welding Machine; Helper [200%] | 24h |  | 1,012.5 | 1,012.5 |  |
| 352 | 9.23.6 | Ch Nozzle RF Pad Air Leak Test | 2h | 2018-05-30 18:00 | 2018-05-30 20:00 | 351 |  |  | 2018-05-31 10:00 | 2018-05-31 12:00 | 2h | 33.19d | 0d | TEAM_2Shift_Calendar-1 | Helper; Fitter [200%] | 6h |  | 375 | 375 |  |
| 353 | 9.23.7 | Ch Nozzle Fitup -T1,T2 - 6NB & 4 NB | 5h | 2018-05-30 20:00 | 2018-05-31 09:00 | 352 |  |  | 2018-05-31 12:00 | 2018-05-31 17:00 | 5h | 33.19d | 0d | TEAM_2Shift_Calendar-1 | Helper [200%]; SAW Welder; SMAW Welding Machine; Fitter | 25h |  | 1,187.5 | 1,187.5 |  |
| 354 | 9.23.8 | Ch Nozzle Fitup Inspection | 0.5d | 2018-05-31 09:00 | 2018-05-31 13:00 | 353 |  |  | 2018-05-31 17:00 | 2018-05-31 21:00 | 0.5d | 33.19d | 0d | TEAM_2Shift_Calendar-1 | Fitter [200%] | 8h |  | 550 | 550 |  |
| 355 | 9.23.9 | Ch Nozzle Welding Arragement | 3h | 2018-05-31 13:00 | 2018-05-31 16:00 | 354 |  |  | 2018-05-31 21:00 | 2018-06-01 08:00 | 3h | 33.19d | 0d | TEAM_2Shift_Calendar-1 | Helper; Fitter | 6h |  | 356.25 | 356.25 |  |
| 356 | 9.23.10 | Ch Nozzle Fitup Welding | 12h | 2018-05-31 16:00 | 2018-06-01 12:00 | 355 |  |  | 2018-06-01 08:00 | 2018-06-01 20:00 | 12h | 33.19d | 0d | TEAM_2Shift_Calendar-1 | SAW Welder; SMAW Welding Machine; Helper [200%] | 16h |  | 675 | 675 |  |
| 357 | 9.23.11 | Ch Nozzle Welding- Inner Grinding | 11h | 2018-06-01 12:00 | 2018-06-02 07:00 | 356 |  |  | 2018-06-01 20:00 | 2018-06-02 15:00 | 11h | 33.19d | 0d | TEAM_2Shift_Calendar-1 | Grinding Machine; Grinder | 8h |  | 225 | 225 |  |
| 358 | 9.23.12 | Ch Nozzle Welding- Inner DP Check | 7h | 2018-06-02 07:00 | 2018-06-02 14:00 | 357 |  |  | 2018-06-02 15:00 | 2018-06-02 22:00 | 7h | 33.19d | 0d | TEAM_2Shift_Calendar-1 | Helper; Fitter | 6h |  | 356.25 | 356.25 |  |
| 359 | 9.23.13 | Ch Nozzle Welding- Inner Weld | 3h | 2018-06-02 14:00 | 2018-06-02 17:00 | 358 |  |  | 2018-06-04 06:00 | 2018-06-04 09:00 | 3h | 33.19d | 0d | TEAM_2Shift_Calendar-1 | SAW Welder; SMAW Welding Machine; Helper [200%] | 12h |  | 506.25 | 506.25 |  |

| ID | WBS | Task | Duration | Start | Finish | Predecessors | Baseline start | Baseline finish | Baseline duration | Total slack | Free slack | Calendar | Resources | Work | Cost | Baseline cost |
| --- | --- | --- | --- | --- | --- | --- | --- | --- | --- | --- | --- | --- | --- | --- | --- | --- |
| 360 | 9.24 | **Other Components Welding** | 10.88d | 2018-06-04 17:00 | 2018-06-12 08:00 |  | 2018-06-05 09:00 | 2018-06-13 15:25 | 12.8d | 33.19d |  | TEAM_2Shift_Calendar-1 |  | 138h | 5,637.5 | 5,637.5 |
| 361 | 9.24.1 | Ch Lifting Lug Pad Fitup | 4h | 2018-06-04 17:00 | 2018-06-04 21:00 | 359FS+2d | 2018-06-05 09:00 | 2018-06-05 13:00 | 4h | 33.19d | 0d | TEAM_2Shift_Calendar-1 | Helper [200%]; SAW Welder; SMAW Welding Machine; Fitter | 20h | 950 | 950 |
| 362 | 9.24.2 | Ch Lifting Lug Pad Weld Arrangement | 1h | 2018-06-04 21:00 | 2018-06-04 22:00 | 361 | 2018-06-05 13:00 | 2018-06-05 14:00 | 1h | 33.19d | 0d | TEAM_2Shift_Calendar-1 | Helper; Fitter | 2h | 118.75 | 118.75 |
| 363 | 9.24.3 | Ch Lifting Lug Pad Welding | 3h | 2018-06-05 06:00 | 2018-06-05 09:00 | 362 | 2018-06-05 14:00 | 2018-06-05 17:00 | 3h | 33.19d | 0d | TEAM_2Shift_Calendar-1 | SAW Welder; SMAW Welding Machine; Helper [200%] | 12h | 506.25 | 506.25 |
| 364 | 9.24.4 | Ch Lifting Lug Fitup | 3h | 2018-06-05 09:00 | 2018-06-05 12:00 | 363 | 2018-06-05 17:00 | 2018-06-05 20:00 | 3h | 33.19d | 0d | TEAM_2Shift_Calendar-1 | Helper [200%]; SAW Welder; SMAW Welding Machine; Fitter | 15h | 712.5 | 712.5 |
| 365 | 9.24.5 | Ch Lifting Lug Welding | 3h | 2018-06-05 12:00 | 2018-06-05 15:00 | 364 | 2018-06-05 20:00 | 2018-06-06 07:00 | 3h | 33.19d | 0d | TEAM_2Shift_Calendar-1 | SAW Welder; SMAW Welding Machine; Helper [200%] | 12h | 506.25 | 506.25 |
| 366 | 9.24.6 | Ch Insulation Cleat Marking | 2h | 2018-06-05 15:00 | 2018-06-05 17:00 | 365 | 2018-06-06 07:00 | 2018-06-06 09:00 | 2h | 33.19d | 0d | TEAM_2Shift_Calendar-1 | Helper; Fitter | 4h | 237.5 | 237.5 |
| 367 | 9.24.7 | Ch Insulation Cleat Fitup | 2h | 2018-06-05 17:00 | 2018-06-05 19:00 | 366 | 2018-06-06 09:00 | 2018-06-06 11:00 | 2h | 33.19d | 0d | TEAM_2Shift_Calendar-1 | Helper [200%]; SAW Welder; SMAW Welding Machine; Fitter | 10h | 475 | 475 |
| 368 | 9.24.8 | Ch Insulation Cleatwelding | 2h | 2018-06-05 19:00 | 2018-06-05 21:00 | 367 | 2018-06-06 11:00 | 2018-06-06 13:00 | 2h | 33.19d | 0d | TEAM_2Shift_Calendar-1 | SAW Welder; SMAW Welding Machine; Helper [200%] | 8h | 337.5 | 337.5 |
| 369 | 9.24.9 | Ch Final Dress Up | 7h | 2018-06-05 21:00 | 2018-06-06 12:00 | 368 | 2018-06-06 13:00 | 2018-06-06 20:00 | 7h | 33.19d | 0d | TEAM_2Shift_Calendar-1 | Grinding Machine; Grinder | 14h | 393.75 | 393.75 |
| 370 | 9.24.10 | Ch Dimesional Inspection | 0.5d | 2018-06-06 12:00 | 2018-06-06 16:00 | 369 | 2018-06-06 20:00 | 2018-06-07 08:00 | 0.5d | 33.19d | 0d | TEAM_2Shift_Calendar-1 | Fitter [200%] | 8h | 550 | 550 |
| 371 | 9.24.11 | Ch Clearenec By TPI | 1d | 2018-06-06 16:00 | 2018-06-07 08:00 | 370 | 2018-06-07 08:00 | 2018-06-07 22:00 | 1.75d | 33.19d | 0d | TEAM_2Shift_Calendar-1 | TPI (Cost) [0.1%]; QC Engineer | 1h |  |  |
| 372 | 9.24.12 | Ch PWHT | 3d | 2018-06-07 08:00 | 2018-06-08 16:00 | 371 | 2018-06-08 06:00 | 2018-06-11 22:00 | 4d | 33.19d | 0d | TEAM_2Shift_Calendar-1 | SC (Cost) [0.1%] |  |  |  |
| 373 | 9.24.13 | Ch Receipt After PWHT | 1d | 2018-06-08 16:00 | 2018-06-11 08:00 | 372 | 2018-06-12 06:00 | 2018-06-12 14:00 | 1d | 33.19d | 0d | TEAM_2Shift_Calendar-1 | SC (Work) | 5h |  |  |
| 374 | 9.24.14 | Ch Sufrace Cleaning and DP check | 1d | 2018-06-11 08:00 | 2018-06-11 16:00 | 373 | 2018-06-12 14:00 | 2018-06-12 22:00 | 1d | 33.19d | 0d | TEAM_2Shift_Calendar-1 | Grinder; Grinding Machine; Helper | 24h | 850 | 850 |
| 375 | 9.24.15 | Ch NDE- TPI | 1d | 2018-06-11 16:00 | 2018-06-12 08:00 | 374 | 2018-06-13 06:00 | 2018-06-13 15:25 | 1.18d | 33.19d |  | TEAM_2Shift_Calendar-1 | TPI (Cost) [0.1%]; QC Engineer | 3h |  |  |
| 376 | 9.25 | **Preliminary Set up-tube bundle** | 8.62d | 2018-05-25 17:30 | 2018-06-01 06:30 |  | 2018-05-10 08:30 | 2018-05-16 13:30 | 8.62d | 0.38d |  | TEAM_2Shift_Calendar-1 |  | 273h | 15,193.75 | 15,193.75 |
| 377 | 9.25.1 | Assy Frame Set Up | 12h | 2018-05-25 17:30 | 2018-05-28 13:30 | 120, 140, 154, 163, 167, 172 | 2018-05-10 08:30 | 2018-05-10 20:30 | 12h | 0.38d | 0d | TEAM_2Shift_Calendar-1 | Helper [400%]; Fitter [200%] | 72h | 4,050 | 4,050 |
| 378 | 9.25.2 | Skeleton Assy | 20h | 2018-05-28 13:30 | 2018-05-29 17:30 | 377 | 2018-05-10 20:30 | 2018-05-14 08:30 | 20h | 0.38d | 0d | TEAM_2Shift_Calendar-1 | Helper [400%]; Fitter [200%] | 120h | 6,750 | 6,750 |
| 379 | 9.25.3 | Tie Rod Welding | 4h | 2018-05-29 17:30 | 2018-05-29 21:30 | 378 | 2018-05-14 08:30 | 2018-05-14 12:30 | 4h | 0.38d | 0d | TEAM_2Shift_Calendar-1 | SAW Welder; SMAW Welding Machine; Helper [200%] | 16h | 675 | 675 |
| 380 | 9.25.4 | Tube Insert | 15h | 2018-05-29 21:30 | 2018-05-30 20:30 | 379 | 2018-05-14 12:30 | 2018-05-15 11:30 | 15h | 0.38d | 0d | TEAM_2Shift_Calendar-1 | Helper [200%]; Fitter | 45h | 2,531.25 | 2,531.25 |
| 381 | 9.25.5 | Tube Allingment | 18h | 2018-05-30 20:30 | 2018-06-01 06:30 | 380 | 2018-05-15 11:30 | 2018-05-16 13:30 | 18h | 0.38d | 0d | TEAM_2Shift_Calendar-1 | Helper; Fitter | 20h | 1,187.5 | 1,187.5 |
| 382 | 9.26 | **Assy-tube bundle** | 5.62d | 2018-06-01 06:30 | 2018-06-04 19:30 |  | 2018-05-16 13:30 | 2018-05-19 10:30 | 5.62d | 0.38d |  | TEAM_2Shift_Calendar-1 |  | 150h | 6,281.25 | 6,281.25 |
| 383 | 9.26.1 | Sealing Strip/Sliding Strip Fitup | 16h | 2018-06-01 06:30 | 2018-06-02 06:30 | 381 | 2018-05-16 13:30 | 2018-05-17 13:30 | 16h | 0.38d | 0d | TEAM_2Shift_Calendar-1 | Fitter; SAW Welder; SMAW Welding Machine; Helper [200%] | 60h | 2,850 | 2,850 |
| 384 | 9.26.2 | Sealing Strip/Sliding Strip Welding | 16h | 2018-06-02 06:30 | 2018-06-04 06:30 | 383 | 2018-05-17 13:30 | 2018-05-18 13:30 | 16h | 0.38d | 0d | TEAM_2Shift_Calendar-1 | SAW Welder; SMAW Welding Machine; Helper [200%] | 64h | 2,700 | 2,700 |
| 385 | 9.26.3 | Sealing Strip/Sliding Strip Grinding | 13h | 2018-06-04 06:30 | 2018-06-04 19:30 | 384 | 2018-05-18 13:30 | 2018-05-19 10:30 | 13h | 0.38d | 0d | TEAM_2Shift_Calendar-1 | Grinding Machine; Grinder | 26h | 731.25 | 731.25 |

Notes:
- 361: 2NOS
- 366: 4 NOS
- 379: 8NOS
- 380: 334 TUBES
- 383: 4NOS

| ID | WBS | Task | Duration | Start | Finish | Predecessors | Baseline start | Baseline finish | Baseline duration | Total slack | Free slack | Calendar | Resources | Work | Cost | Baseline cost |
| --- | --- | --- | --- | --- | --- | --- | --- | --- | --- | --- | --- | --- | --- | --- | --- | --- |
| 386 | 9.27 | **Tube Welding & other Works** | 16.5d | 2018-06-04 19:30 | 2018-06-15 07:30 |  | 2018-05-19 10:30 | 2018-05-30 14:30 | 16.5d | 0.38d |  | TEAM_2Shift_Calendar-1 |  | 384h | 18,081.25 | 18,081.25 |
| 387 | 9.27.1 | Tube /Tube Sheet Root Welding | 23h | 2018-06-04 19:30 | 2018-06-06 10:30 | 385 | 2018-05-19 10:30 | 2018-05-21 17:30 | 23h | 0.38d | 0d | TEAM_2Shift_Calendar-1 | SAW Welder; SMAW Welding Machine; Helper [200%] | 60h | 2,531.25 | 2,531.25 |
| 388 | 9.27.2 | DP Check | 1d | 2018-06-06 10:30 | 2018-06-06 18:30 | 387 | 2018-05-21 17:30 | 2018-05-22 09:30 | 1d | 0.38d | 0d | TEAM_2Shift_Calendar-1 | Helper; Fitter | 6h | 356.25 | 356.25 |
| 389 | 9.27.3 | Tube /Tube Sheet Final Welding | 35h | 2018-06-06 18:30 | 2018-06-08 21:30 | 388 | 2018-05-22 09:30 | 2018-05-24 12:30 | 35h | 0.38d | 0d | TEAM_2Shift_Calendar-1 | TIG Welder; TIG Welding Machine; Helper [200%] | 140h | 7,875 | 7,875 |
| 390 | 9.27.4 | Tube Trimming | 18h | 2018-06-08 21:30 | 2018-06-12 07:30 | 389 | 2018-05-24 12:30 | 2018-05-25 14:30 | 18h | 0.38d | 0d | TEAM_2Shift_Calendar-1 | Grinding Machine; Grinder | 36h | 1,012.5 | 1,012.5 |
| 391 | 9.27.5 | DP Check | 1d | 2018-06-12 07:30 | 2018-06-12 15:30 | 390 | 2018-05-25 14:30 | 2018-05-28 06:30 | 1d | 0.38d | 0d | TEAM_2Shift_Calendar-1 | Helper; Fitter | 6h | 356.25 | 356.25 |
| 392 | 9.27.6 | Expansion | 32h | 2018-06-12 15:30 | 2018-06-14 15:30 | 391 | 2018-05-28 06:30 | 2018-05-30 06:30 | 32h | 0.38d | 0d | TEAM_2Shift_Calendar-1 | Helper [200%]; Expanding Machine; Fitter | 128h | 5,400 | 5,400 |
| 393 | 9.27.7 | Inspection | 1d | 2018-06-14 15:30 | 2018-06-15 07:30 | 392 | 2018-05-30 06:30 | 2018-05-30 14:30 | 1d | 0.38d | 0d | TEAM_2Shift_Calendar-1 | Fitter [200%] | 8h | 550 | 550 |
| 394 | 9.28 | **Final Assy & Hydro Test** | 8.25d | 2018-06-15 07:30 | 2018-06-20 09:30 |  | 2018-05-30 14:30 | 2018-06-04 14:30 | 8d | 0.38d | 0d | TEAM_2Shift_Calendar-1 |  | 181h | 10,000 | 10,000 |
| 395 | 9.28.1 | Open Bundle Hydro | 1d | 2018-06-15 07:30 | 2018-06-15 15:30 | 393 | 2018-05-30 14:30 | 2018-05-31 06:30 | 1d | 0.38d | 0d | TEAM_2Shift_Calendar-1 | Helper [400%]; Fitter [400%] | 32h | 1,900 | 1,900 |
| 396 | 9.28.2 | Open Bundle Hydro- TPI Inspection | 1.25d | 2018-06-15 15:30 | 2018-06-16 09:30 | 395 | 2018-05-31 06:30 | 2018-05-31 14:30 | 1d | 0.38d | 0d | TEAM_2Shift_Calendar-1 | TPI (Cost) [0.1%]; QC Engineer | 3h |  |  |
| 397 | 9.28.3 | Bundle Insert | 1d | 2018-06-16 09:30 | 2018-06-16 17:30 | 396 | 2018-05-31 14:30 | 2018-06-01 06:30 | 1d | 0.38d | 0d | TEAM_2Shift_Calendar-1 | Helper [400%]; Fitter [400%] | 64h | 3,800 | 3,800 |
| 398 | 9.28.4 | Shell Side Hydro | 1d | 2018-06-16 17:30 | 2018-06-18 09:30 | 397 | 2018-06-01 06:30 | 2018-06-01 14:30 | 1d | 0.38d | 0d | TEAM_2Shift_Calendar-1 | Helper [400%]; Fitter [400%] | 32h | 1,900 | 1,900 |
| 399 | 9.28.5 | Shell Side Hydro TPI Inspection | 1d | 2018-06-18 09:30 | 2018-06-18 17:30 | 398 | 2018-06-01 14:30 | 2018-06-02 06:30 | 1d | 0.38d | 0d | TEAM_2Shift_Calendar-1 | TPI (Cost) [0.1%]; QC Engineer | 4h |  |  |
| 400 | 9.28.6 | Channel Side Hydro | 1d | 2018-06-18 17:30 | 2018-06-19 09:30 | 399 | 2018-06-02 06:30 | 2018-06-02 14:30 | 1d | 0.38d | 0d | TEAM_2Shift_Calendar-1 | Helper [400%]; Fitter [400%] | 32h | 1,900 | 1,900 |
| 401 | 9.28.7 | Channel Side Hydro TPI Insp | 1d | 2018-06-19 09:30 | 2018-06-19 17:30 | 400 | 2018-06-02 14:30 | 2018-06-04 06:30 | 1d | 0.38d | 0d | TEAM_2Shift_Calendar-1 | TPI (Cost) [0.1%]; QC Engineer | 4h |  |  |
| 402 | 9.28.8 | De-Watering & Drying | 1d | 2018-06-19 17:30 | 2018-06-20 09:30 | 401 | 2018-06-04 06:30 | 2018-06-04 14:30 | 1d | 0.38d |  | TEAM_2Shift_Calendar-1 | Helper [200%] | 10h | 500 | 500 |
| 403 | 9.29 | **Cleaning & Painting** | 8.5d | 2018-06-22 09:30 | 2018-06-28 13:30 |  | 2018-06-06 14:30 | 2018-06-14 18:30 | 12.5d | 0.38d |  | TEAM_2Shift_Calendar-1 |  | 77h | 2,150 | 2,750 |
| 404 | 9.29.1 | Blast Cleaning Arrangment | 1d | 2018-06-22 09:30 | 2018-06-22 17:30 | 394FS+4d | 2018-06-06 14:30 | 2018-06-07 14:30 | 2d | 0.38d | 0d | TEAM_2Shift_Calendar-1 | Helper; Store | 8h | 200 | 400 |
| 405 | 9.29.2 | Transport For BC | 1d | 2018-06-22 17:30 | 2018-06-25 09:30 | 404 | 2018-06-07 14:30 | 2018-06-08 06:30 | 1d | 0.38d | 0d | TEAM_2Shift_Calendar-1 | Helper [300%]; Fitter [200%] | 20h | 1,150 | 1,150 |
| 406 | 9.29.3 | Blast Cleaning | 2d | 2018-06-25 09:30 | 2018-06-26 09:30 | 405 | 2018-06-08 06:30 | 2018-06-11 14:30 | 3d | 0.38d | 0d | TEAM_2Shift_Calendar-1 | Helper | 16h | 800 | 1,200 |
| 407 | 9.29.4 | Primer Painting | 1d | 2018-06-26 09:30 | 2018-06-26 17:30 | 406 | 2018-06-11 14:30 | 2018-06-13 06:30 | 3d | 0.38d | 0d | TEAM_2Shift_Calendar-1 | SC (Work) | 5h |  |  |
| 408 | 9.29.5 | Return From Blast Clean | 1d | 2018-06-26 17:30 | 2018-06-27 09:30 | 407 | 2018-06-13 06:30 | 2018-06-13 14:30 | 1d | 0.38d | 0d | TEAM_2Shift_Calendar-1 | Painter | 8h |  |  |
| 409 | 9.29.6 | Top Coat Painting | 2d | 2018-06-27 09:30 | 2018-06-28 09:30 | 408 | 2018-06-13 14:30 | 2018-06-14 14:30 | 2d | 0.38d | 0d | TEAM_2Shift_Calendar-1 | Painter | 16h |  |  |
| 410 | 9.29.7 | Painting Inspection | 0.5d | 2018-06-28 09:30 | 2018-06-28 13:30 | 409 | 2018-06-14 14:30 | 2018-06-14 18:30 | 0.5d | 0.38d | 0d | TEAM_2Shift_Calendar-1 | Painter | 4h |  |  |

Notes:
- 387: 334 TUBES

| ID | WBS | Task | Duration | Start | Finish | Predecessors | Baseline start | Baseline finish | Baseline duration | Total slack | Calendar | Resources | Work | Cost | Baseline cost |
| --- | --- | --- | --- | --- | --- | --- | --- | --- | --- | --- | --- | --- | --- | --- | --- |
| 411 | 10 | **Despatch Clearance and Final Documentation** | 4d | 2018-06-28 13:30 | 2018-06-30 13:30 |  | 2018-06-14 18:30 | 2018-06-18 10:30 | 5d | 2.38d | TEAM_2Shift_Calendar-1 |  | 18.71h | 281.25 | 281.25 |
| 412 | 10.1 | Despatch Clearance and final documentation | 4d | 2018-06-28 13:30 | 2018-06-30 13:30 | 410 | 2018-06-14 18:30 | 2018-06-18 10:30 | 5d | 2.5d | TEAM_2Shift_Calendar-1 | QC Engineer | 13.71h |  |  |
| 413 | 10.2 | Despatch | 1d | 2018-06-29 13:30 | 2018-06-29 21:30 | 410FS+2d | 2018-06-15 18:30 | 2018-06-16 10:30 | 1d | 0.38d | TEAM_2Shift_Calendar-1 | Helper [400%]; Fitter [200%] | 5h | 281.25 | 281.25 |
| 414 | 11 | **PBG** | 2d | 2018-06-30 08:30 | 2018-07-02 17:30 |  | 2018-06-16 10:30 | 2018-06-19 10:30 | 2d | 0d |  |  | 16h |  |  |
| 415 | 11.1 | PBG Submission(10%) | 2d | 2018-06-30 08:30 | 2018-07-02 17:30 | 413 | 2018-06-16 10:30 | 2018-06-19 10:30 | 2d | 0d |  | Finance | 16h |  |  |
