# 4233 - KMML

Schedule from MS Project, 2017-11-14 to 2018-01-23, costs in Rs., A marks actual dates.

## Calendars

- TEAM_2Shift_Calendar-1: Mon-Sat 06:00-22:00; Sun off. Exceptions (off unless hours are given): 2017-01-13 to 2023-02-11 (2nd Sat, recurring), 2017-01-26 to 2036-01-26 (Republic Day, recurring), 2017-01-27 to 2023-08-26 (4th Sat, recurring), 2017-05-01 to 2036-05-01 (May Day, recurring), 2017-08-15 to 2036-08-15 (Indepdence Day, recurring), 2017-10-02 to 2036-10-02 (Gandhi Jayanti, recurring), 2018-01-15 (Thiruvalluvar Day'2018).
- TEAM_Stand_Calendar: Mon-Sat 08:30-12:30, 13:30-17:30; Sun off. Exceptions (off unless hours are given): 2017-01-13 to 2023-08-12 (2nd Sat, recurring), 2017-01-26 to 2036-01-26 (Republic Day, recurring), 2017-01-27 to 2023-08-26 (4th Sat, recurring), 2017-05-01 to 2036-05-01 (May Day, recurring), 2017-08-15 to 2036-08-15 (Independence Day, recurring), 2017-10-02 to 2036-10-02 (Gandhi Jayanti, recurring), 2018-01-15 (Thiruvalluvar Day'2018).

## Resources

| Resource | Rate |
| --- | --- |
| Marketing |  |
| Crane |  |
| Helper | 50 |
| Store |  |
| PM |  |
| PMO Head |  |
| SC (Work) |  |
| PPC Engineer |  |
| Purchase Engineer |  |

## Schedule

| ID | WBS | Task | Duration | Start | Finish | Predecessors | Complete | Baseline start | Baseline finish | Baseline duration | Constraint | Calendar | Resources | Work | Actual work | Cost | Baseline cost | Actual cost |
| --- | --- | --- | --- | --- | --- | --- | --- | --- | --- | --- | --- | --- | --- | --- | --- | --- | --- | --- |
| 1 | 1 | **J-4233 Stud M16 x 150mm** | 56d | 2017-11-14 08:30 A | 2018-01-23 17:30 A |  | 100% | 2017-11-14 08:30 | 2017-12-30 17:30 | 38d |  |  |  | 102h | 102h | 50 | 50 | 50 |
| 2 | 1.1 | PO Receipt | 2h | 2017-11-14 08:30 A | 2017-11-14 10:30 A |  | 100% | 2017-11-14 08:30 | 2017-11-14 10:30 | 2h |  |  | Marketing | 2h | 2h |  |  |  |
| 3 | 1.2 | Work order | 2h | 2017-11-14 10:30 A | 2017-11-14 12:30 A | 2 | 100% | 2017-11-14 10:30 | 2017-11-14 12:30 | 2h |  |  | Marketing | 2h | 2h |  |  |  |
| 4 | 1.3 | CRM | 2h | 2017-11-16 13:30 A | 2017-11-16 15:30 A | 3FS+2d | 100% | 2017-11-16 13:30 | 2017-11-16 15:30 | 2h |  |  | Marketing; PM; PMO Head | 6h | 6h |  |  |  |
| 5 | 1.4 | **PR Issue** | 0.25d | 2017-11-16 08:30 A | 2017-11-16 10:30 A |  | 100% | 2017-11-21 15:30 | 2017-11-21 17:30 | 0.25d |  |  |  | 2h | 2h |  |  |  |
| 6 | 1.4.1 | Ti-Rod SB348 GR.2 | 2h | 2017-11-16 08:30 A | 2017-11-16 10:30 A | 4FS+4d | 100% | 2017-11-21 15:30 | 2017-11-21 17:30 | 2h |  |  | PPC Engineer | 2h | 2h |  |  |  |
| 7 | 1.5 | **Material Ordering** | 1d | 2017-12-19 08:30 A | 2017-12-19 17:30 A |  | 100% | 2017-11-29 08:30 | 2017-11-29 17:30 | 1d |  |  |  | 2h | 2h |  |  |  |
| 8 | 1.5.1 | Ti - Rod SB348 GR.2 | 1d | 2017-12-19 08:30 A | 2017-12-19 17:30 A | 6FS+5d | 100% | 2017-11-29 08:30 | 2017-11-29 17:30 | 1d |  |  | Purchase Engineer | 2h | 2h |  |  |  |
| 9 | 1.6 | **Material Receipt** | 0.12d | 2018-01-10 08:30 A | 2018-01-10 09:30 A |  | 100% | 2017-12-26 08:30 | 2017-12-26 09:30 | 0.12d |  |  |  | 3h | 3h | 50 | 50 | 50 |
| 10 | 1.6.1 | Ti - Rod SB348 GR.2 | 1h | 2018-01-10 08:30 A | 2018-01-10 09:30 A | 8FS+20d | 100% | 2017-12-26 08:30 | 2017-12-26 09:30 | 1h |  |  | Crane; Helper; Store | 3h | 3h | 50 | 50 | 50 |
| 11 | 1.7 | **Fabrication** | 5.13d | 2018-01-16 09:30 A | 2018-01-18 18:33 A |  | 100% | 2017-12-26 09:30 | 2017-12-28 17:33 | 5d |  | TEAM_2Shift_Calendar-1 |  | 81h | 81h |  |  |  |
| 12 | 1.7.1 | Machining | 5.12d | 2018-01-16 09:30 A | 2018-01-18 18:33 A | 10 | 100% | 2017-12-26 09:30 | 2017-12-28 17:33 | 5d |  | TEAM_2Shift_Calendar-1 | SC (Work) | 81h | 81h |  |  |  |
| 13 | 1.8 | **Packing and Despatch** | 2d | 2018-01-22 08:30 A | 2018-01-23 17:30 A |  | 100% | 2017-12-29 08:30 | 2017-12-30 17:30 | 2d |  |  |  | 4h | 4h |  |  |  |
| 14 | 1.8.1 | Packing | 1d | 2018-01-22 08:30 A | 2018-01-22 17:30 A | 12 | 100% | 2017-12-29 08:30 | 2017-12-29 17:30 | 1d |  |  | Store | 2h | 2h |  |  |  |
| 15 | 1.8.2 | Despatch | 2d | 2018-01-22 08:30 A | 2018-01-23 17:30 A | 14 | 100% | 2017-12-30 08:30 | 2017-12-30 17:30 | 1d | start no later than 2018-01-22 08:30 |  | Store | 2h | 2h |  |  |  |
