# 4235-MCPI-2E1353-UTube-Bundle

Schedule from MS Project, 2017-12-01 to 2018-05-08, costs in Rs., A marks actual dates.

## Calendars

- TEAM_Stand_Calendar: Mon-Sat 08:30-12:30, 13:30-17:30; Sun off. Exceptions (off unless hours are given): 2017-01-13 to 2023-08-12 (2nd Sat, recurring), 2017-01-26 to 2036-01-26 (Republic Day, recurring), 2017-01-27 to 2023-08-26 (4th Sat, recurring), 2017-05-01 to 2036-05-01 (May Day, recurring), 2017-08-15 to 2036-08-15 (Independence Day, recurring), 2017-10-02 to 2036-10-02 (Gandhi Jayanti, recurring), 2018-01-15 (Thiruvalluvar Day'2018).

## Resources

| Resource | Rate |
| --- | --- |
| Marketing |  |
| Client |  |
| PM |  |
| QC Engineer |  |
| SAW Welder | 68.75 |
| SC (Work) |  |
| Radial Drilling Machine |  |
| Store |  |
| PPC Engineer |  |
| Helper | 50 |
| Grinding Machine |  |
| Grinder | 56.25 |
| Fitter | 68.75 |
| Expanding Machine |  |
| Driller | 68.75 |
| Draftman |  |
| Gas Cutter | 68.75 |
| Crane |  |
| CNC Lathe |  |
| HOD |  |
| TIG Welding Machine |  |
| Cutting Machine |  |
| Pedestal Grinder |  |
| Lathe Operator | 120 |
| Foreman |  |
| Finance-New |  |
| Finance |  |

## Schedule

| ID | WBS | Task | Duration | Start | Finish | Predecessors | Complete | Baseline start | Baseline finish | Baseline duration | Constraint | Resources | Work | Actual work |
| --- | --- | --- | --- | --- | --- | --- | --- | --- | --- | --- | --- | --- | --- | --- |
| 1 | 1 | Po Receipt | 0.94d | 2017-12-01 A | 2017-12-01 A |  | 100% | 2017-12-01 | 2017-12-01 | 0.94d |  | Marketing | 7.5h | 7.5h |
| 2 | 2 | Workorder | 0.94d | 2017-12-02 A | 2017-12-02 A | 1 | 100% | 2017-12-02 | 2017-12-02 | 0.94d | finish no earlier than 2017-12-02 | Marketing | 7.5h | 7.5h |
| 3 | 3 | Crm | 1.19d | 2017-12-04 A | 2017-12-05 A | 2 | 100% | 2017-12-04 | 2017-12-05 | 1.19d |  | PM; HOD; Marketing | 33h | 33h |
| 4 | 4 | Finance | 0.94d | 2017-12-25 A | 2017-12-25 A | 3 | 100% | 2017-12-25 | 2017-12-25 | 0.94d | finish no earlier than 2017-12-25 | Marketing; Finance-New | 15h | 15h |
| 5 | 5 | **Design** | 27.94d | 2017-12-04 A | 2018-01-06 A |  | 100% | 2017-12-04 | 2018-01-06 | 27.94d |  |  | 103.5h | 103.5h |
| 6 | 5.1 | Drawing Submission | 9.75d | 2017-12-08 A | 2017-12-20 A | 2 | 100% | 2017-12-08 | 2017-12-20 | 9.75d |  | Draftman | 78h | 78h |
| 7 | 5.2 | Drawing Approval | 3.19d | 2017-12-04 A | 2018-01-06 A | 6 | 100% | 2017-12-04 | 2018-01-06 | 3.19d | start no later than 2017-07-19 | Client | 25.5h | 25.5h |
| 8 | 6 | **Preliminary Details For Enquiry** | 5.94d | 2017-12-04 A | 2017-12-11 A |  | 100% | 2017-12-04 | 2017-12-11 | 5.94d |  |  | 96h | 96h |
| 9 | 6.1 | Tube-Sb338 Gr.2 | 4d | 2017-12-04 A | 2017-12-08 A | 2 | 100% | 2017-12-04 | 2017-12-08 | 4d |  | PPC Engineer | 32h | 32h |
| 10 | 6.2 | Tubesheet-Sa965 Gr.316L | 4d | 2017-12-04 A | 2017-12-11 A | 2 | 100% | 2017-12-04 | 2017-12-11 | 4d |  | PPC Engineer | 32h | 32h |
| 11 | 6.3 | Titanium Gr 1 Plate | 4d | 2017-12-04 A | 2017-12-11 A | 2 | 100% | 2017-12-04 | 2017-12-11 | 4d |  | PPC Engineer | 32h | 32h |
| 12 | 7 | **Pr Issue** | 10.15d | 2017-12-08 A | 2017-12-21 A |  | 100% | 2017-12-08 | 2017-12-21 | 10.15d |  |  | 160.5h | 160.5h |
| 13 | 7.1 | Plates And Rods-Sa 240 Gr.316L | 1d | 2017-12-12 A | 2017-12-12 A | 6 | 100% | 2017-12-12 | 2017-12-12 | 1d |  | PPC Engineer | 8h | 8h |
| 14 | 7.2 | Plates And Rods-Is 2062 Gr.B | 1d | 2017-12-12 A | 2017-12-12 A | 6 | 100% | 2017-12-12 | 2017-12-12 | 1d |  | PPC Engineer | 8h | 8h |
| 15 | 7.3 | Plates And Rods-Sb 265 Gr.1 | 1d | 2017-12-08 A | 2017-12-11 A | 9 | 100% | 2017-12-08 | 2017-12-11 | 1d |  | PPC Engineer | 8h | 8h |
| 16 | 7.4 | Plates And Rods-Sb 265 Gr.2 | 2d | 2017-12-12 A | 2017-12-13 A | 6 | 100% | 2017-12-12 | 2017-12-13 | 2d |  | PPC Engineer | 16h | 16h |
| 17 | 7.5 | Rod-Sb 348 Gr.2 | 2d | 2017-12-12 A | 2017-12-13 A | 6 | 100% | 2017-12-12 | 2017-12-13 | 2d |  | PPC Engineer | 16h | 16h |
| 18 | 7.6 | Tube-Sb338 Gr.2 | 3d | 2017-12-08 A | 2017-12-12 A | 9 | 100% | 2017-12-08 | 2017-12-12 | 3d |  | PPC Engineer | 24h | 24h |
| 19 | 7.7 | Blank Forging-Sa 965 Gr.316L | 1.06d | 2017-12-11 A | 2017-12-12 A | 9 | 100% | 2017-12-11 | 2017-12-12 | 1.06d |  | PPC Engineer | 8.5h | 8.5h |
| 20 | 7.8 | Non Std Forging-Sa 266 Gr.2 | 1d | 2017-12-12 A | 2017-12-12 A | 6 | 100% | 2017-12-12 | 2017-12-12 | 1d |  | PPC Engineer | 8h | 8h |
| 21 | 7.9 | Std Forging-Sa 105 | 1d | 2017-12-12 A | 2017-12-12 A | 6 | 100% | 2017-12-12 | 2017-12-12 | 1d |  | PPC Engineer | 8h | 8h |
| 22 | 7.10 | Pipe-Sa 106 Gr.B | 1d | 2017-12-12 A | 2017-12-12 A | 6 | 100% | 2017-12-12 | 2017-12-12 | 1d |  | PPC Engineer | 8h | 8h |
| 23 | 7.11 | Fasteners | 1d | 2017-12-12 A | 2017-12-12 A | 6 | 100% | 2017-12-12 | 2017-12-12 | 1d |  | PPC Engineer | 8h | 8h |
| 24 | 7.12 | Gasket | 1d | 2017-12-12 A | 2017-12-12 A | 6 | 100% | 2017-12-12 | 2017-12-12 | 1d |  | PPC Engineer | 8h | 8h |
| 25 | 7.13 | Consumables-Cs,Ti | 1d | 2017-12-12 A | 2017-12-12 A | 6 | 100% | 2017-12-12 | 2017-12-12 | 1d |  | PPC Engineer | 8h | 8h |
| 26 | 7.14 | Hydrotest Components | 3d | 2017-12-12 A | 2017-12-21 A | 6 | 100% | 2017-12-12 | 2017-12-21 | 3d |  | PPC Engineer | 24h | 24h |

| ID | WBS | Task | Type | Duration | Start | Finish | Predecessors | Complete | Baseline start | Baseline finish | Baseline duration | Constraint | Resources | Work | Actual work |
| --- | --- | --- | --- | --- | --- | --- | --- | --- | --- | --- | --- | --- | --- | --- | --- |
| 27 | 8 | **Material Ordering** |  | 57d | 2017-12-12 A | 2018-02-22 A |  | 100% | 2017-12-12 | 2018-02-22 | 57d |  |  |  |  |
| 28 | 8.1 | Plates And Rods-Sa 240 Gr.316L |  | 5d | 2017-12-13 A | 2017-12-18 A | 13 | 100% | 2017-12-13 | 2017-12-18 | 5d |  |  |  |  |
| 29 | 8.2 | Plates And Rods-Is 2062 Gr.B |  | 4d | 2017-12-13 A | 2017-12-18 A | 14 | 100% | 2017-12-13 | 2017-12-18 | 4d |  |  |  |  |
| 30 | 8.3 | Plates And Rods-Sb 265 Gr.1 |  | 7d | 2017-12-12 A | 2017-12-20 A | 15 | 100% | 2017-12-12 | 2017-12-20 | 7d |  |  |  |  |
| 31 | 8.4 | Plates And Rods-Sb 265 Gr.2 |  | 4d | 2017-12-14 A | 2017-12-18 A | 16 | 100% | 2017-12-14 | 2017-12-18 | 4d |  |  |  |  |
| 32 | 8.5 | Rod-Sb 348 Gr.2 |  | 4d | 2017-12-14 A | 2017-12-19 A | 17 | 100% | 2017-12-14 | 2017-12-19 | 4d |  |  |  |  |
| 33 | 8.6 | Tube-Sb338 Gr.2 |  | 2d | 2017-12-13 A | 2017-12-14 A | 18 | 100% | 2017-12-13 | 2017-12-14 | 2d |  |  |  |  |
| 34 | 8.7 | Blank Forging-Sa 965 Gr.316L |  | 2.06d | 2017-12-12 A | 2017-12-14 A | 19 | 100% | 2017-12-12 | 2017-12-14 | 2.06d |  |  |  |  |
| 35 | 8.8 | Non Std Forging-Sa 266 Gr.2 |  | 5d | 2017-12-13 A | 2017-12-18 A | 20 | 100% | 2017-12-13 | 2017-12-18 | 5d |  |  |  |  |
| 36 | 8.9 | Std Forging-Sa 105 |  | 5d | 2017-12-13 A | 2017-12-19 A | 21 | 100% | 2017-12-13 | 2017-12-19 | 5d |  |  |  |  |
| 37 | 8.10 | Pipe-Sa 106 Gr.B |  | 5d | 2017-12-13 A | 2017-12-18 A | 22 | 100% | 2017-12-13 | 2017-12-18 | 5d |  |  |  |  |
| 38 | 8.11 | Fasteners |  | 5d | 2017-12-13 A | 2017-12-18 A | 23 | 100% | 2017-12-13 | 2017-12-18 | 5d |  |  |  |  |
| 39 | 8.12 | Gasket |  | 5d | 2018-02-16 A | 2018-02-22 A | 24FS+50d | 100% | 2018-02-16 | 2018-02-22 | 5d |  |  |  |  |
| 40 | 8.13 | Consumables-Cs,Ti |  | 5d | 2017-12-13 A | 2017-12-18 A | 25 | 100% | 2017-12-13 | 2017-12-18 | 5d |  |  |  |  |
| 41 | 8.14 | Hydrotest Components |  | 6d | 2018-01-08 A | 2018-01-17 A | 26 | 100% | 2018-01-08 | 2018-01-17 | 6d |  |  |  |  |
| 42 | 9 | **Material Receipt** |  | 67.69d | 2018-01-04 A | 2018-04-03 A |  | 100% | 2018-01-04 | 2018-04-03 | 67.69d |  |  | 580.97h | 580.97h |
| 43 | 9.1 | Plates And Rods-Sa 240 Gr.316L |  | 1d | 2018-01-24 A | 2018-01-25 A | 28FS+29d | 100% | 2018-01-24 | 2018-01-25 | 1d |  | Store; Crane | 16h | 16h |
| 44 | 9.2 | Plates And Rods-Is 2062 Gr.B |  | 1d | 2018-01-24 A | 2018-01-25 A | 29FS+29d | 100% | 2018-01-24 | 2018-01-25 | 1d |  | Store; Crane | 16h | 16h |
| 45 | 9.3 | Plates And Rods-Sb 265 Gr.1 | milestone | 6.25d | 2018-01-10 A | 2018-03-05 A | 30FS+55d | 100% | 2018-01-10 | 2018-03-05 | 6.25d |  | Store; Crane | 58h | 58h |
| 46 | 9.4 | Plates And Rods-Sb 265 Gr.2 | milestone | 10.75d | 2018-02-14 A | 2018-03-01 A | 31FS+54d | 100% | 2018-02-14 | 2018-03-01 | 10.75d |  | Store; Crane | 101.97h | 101.97h |
| 47 | 9.5 | Rod-Sb 348 Gr.2 |  | 6.5d | 2018-01-29 A | 2018-03-02 A | 32FS+54d | 100% | 2018-01-29 | 2018-03-02 | 6.5d |  | Store; Crane | 60h | 60h |
| 48 | 9.6 | Tube-Sb338 Gr.2 | milestone | 1d | 2018-03-23 A | 2018-03-23 A | 33FS+69d | 100% | 2018-03-23 | 2018-03-23 | 1d | start no earlier than 2018-03-23 | Store; Crane | 16h | 16h |
| 49 | 9.7 | Blank Forging-Sa 965 Gr.316L | milestone | 1d | 2018-02-23 A | 2018-02-23 A | 34FS+55d | 100% | 2018-02-23 | 2018-02-23 | 1d |  | Store; Crane | 16h | 16h |
| 50 | 9.8 | Non Std Forging-Sa 266 Gr.2 |  | 1d | 2018-02-28 A | 2018-03-01 A | 35FS+55d | 100% | 2018-02-28 | 2018-03-01 | 1d |  | Store; Crane | 16h | 16h |
| 51 | 9.9 | Std Forging-Sa 105 |  | 1d | 2018-03-01 A | 2018-03-02 A | 36FS+55d | 100% | 2018-03-01 | 2018-03-02 | 1d |  | Store; Crane | 16h | 16h |
| 52 | 9.10 | Pipe-Sa 106 Gr.B |  | 1d | 2018-01-24 A | 2018-01-25 A | 37FS+29d | 100% | 2018-01-24 | 2018-01-25 | 1d |  | Store; Crane | 16h | 16h |
| 53 | 9.11 | Fasteners |  | 1d | 2018-01-04 A | 2018-01-05 A | 38FS+14d | 100% | 2018-01-04 | 2018-01-05 | 1d |  | Store; Crane | 16h | 16h |
| 54 | 9.12 | Gasket | milestone | 1d | 2018-03-14 A | 2018-03-15 A | 39FS+15d | 100% | 2018-03-14 | 2018-03-15 | 1d |  | Store; Crane | 16h | 16h |
| 55 | 9.13 | Consumables-Cs,Ti |  | 1.88d | 2018-02-08 A | 2018-02-09 A | 40FS+24d | 100% | 2018-02-08 | 2018-02-09 | 1.88d |  | Store; Crane | 30h | 30h |
| 56 | 9.14 | Hydrotest Components |  | 1d | 2018-02-26 A | 2018-02-26 A | 41FS+30d | 100% | 2018-02-26 | 2018-02-26 | 1d |  | Store; Crane | 16h | 16h |
| 57 | 9.15 | ABG submission |  | 15.56d | 2018-03-15 A | 2018-04-03 A | 43, 44, 45, 50, 48 | 100% | 2018-03-15 | 2018-04-03 | 15.56d |  | Marketing; Finance | 171h | 171h |

Notes:
- 39: 50 Days delay in order Gasket is put at lag

| ID | WBS | Task | Duration | Start | Finish | Predecessors | Complete | Remaining | Baseline start | Baseline finish | Baseline duration | Total slack | Constraint | Resources | Work | Actual work | Cost | Baseline cost | Actual cost |
| --- | --- | --- | --- | --- | --- | --- | --- | --- | --- | --- | --- | --- | --- | --- | --- | --- | --- | --- | --- |
| 58 | 10 | **Fabrication** | 69d | 2018-02-09 A | 2018-05-08 |  | 98% | 1.45d | 2018-02-09 | 2018-05-08 | 69d | 0d |  |  | 2016.5h | 1968.5h | 34,628.75 | 34,628.75 | 34,628.75 |
| 59 | 10.1 | **Baffle Fabrication** | 29d | 2018-02-09 A | 2018-03-17 A |  | 100% |  | 2018-02-09 | 2018-03-17 | 29d |  |  |  | 828h | 828h |  |  |  |
| 60 | 10.1.1 | Plate Marking And Cutting | 33d | 2018-02-09 A | 2018-03-15 A | 31, 46 | 100% |  | 2018-02-09 | 2018-03-15 | 33d |  |  | Helper; Gas Cutter; Cutting Machine; Fitter | 444h | 444h |  |  |  |
| 61 | 10.1.2 | Slot Preparation | 6d | 2018-02-23 A | 2018-02-27 A | 60 | 100% |  | 2018-02-23 | 2018-02-27 | 6d |  |  | Grinder; Gas Cutter | 96h | 96h |  |  |  |
| 62 | 10.1.3 | Edge Preparation | 9.62d | 2018-02-23 A | 2018-03-16 A | 61 | 100% |  | 2018-02-23 | 2018-03-16 | 9.62d |  |  | Pedestal Grinder; Grinder | 80h | 80h |  |  |  |
| 63 | 10.1.4 | Drilling | 26d | 2018-02-13 A | 2018-03-17 A | 62 | 100% |  | 2018-02-13 | 2018-03-17 | 26d |  |  | Radial Drilling Machine; Driller | 208h | 208h |  |  |  |
| 64 | 10.2 | **Tie Rod And Spacer Fabrication** | 9.19d | 2018-02-23 A | 2018-03-07 A |  | 100% |  | 2018-02-23 | 2018-03-07 | 9.19d |  |  |  | 220h | 220h | 11,622.5 | 11,622.5 | 11,622.5 |
| 65 | 10.2.1 | Tie Rod Cutting | 1.88d | 2018-03-02 A | 2018-03-03 A | 32, 47 | 100% |  | 2018-03-02 | 2018-03-03 | 1.88d |  |  | Helper; Gas Cutter; Cutting Machine; Fitter | 60h | 60h | 2,812.5 | 2,812.5 | 2,812.5 |
| 66 | 10.2.2 | Threading | 1d | 2018-03-03 A | 2018-03-03 A | 65 | 100% |  | 2018-03-03 | 2018-03-03 | 1d |  |  | Lathe Operator; CNC Lathe | 16h | 16h | 960 | 960 | 960 |
| 67 | 10.2.3 | Spacer Marking | 1d | 2018-03-03 A | 2018-03-05 A | 66 | 100% |  | 2018-03-03 | 2018-03-05 | 1d |  |  | Helper; Fitter | 16h | 16h | 950 | 950 | 950 |
| 68 | 10.2.4 | Cutting | 4d | 2018-02-23 A | 2018-03-06 A | 67 | 100% |  | 2018-02-23 | 2018-03-06 | 4d |  |  | Fitter; Helper; Gas Cutter | 96h | 96h | 6,000 | 6,000 | 6,000 |
| 69 | 10.2.5 | Grinding | 2d | 2018-03-06 A | 2018-03-07 A | 68 | 100% |  | 2018-03-06 | 2018-03-07 | 2d |  |  | Grinding Machine; Grinder | 32h | 32h | 900 | 900 | 900 |
| 70 | 10.3 | **Tubesheet Fabrication** | 12.69d | 2018-03-03 A | 2018-03-20 A |  | 100% |  | 2018-03-03 | 2018-03-20 | 12.69d |  |  |  | 496h | 496h | 9,375 | 9,375 | 9,375 |
| 71 | 10.3.1 | Clad Plate Marking | 1d | 2018-03-03 A | 2018-03-05 A | 30, 45 | 100% |  | 2018-03-03 | 2018-03-05 | 1d |  |  | Helper; Fitter | 16h | 16h | 950 | 950 | 950 |
| 72 | 10.3.2 | Clad Plate Cutting | 1d | 2018-03-05 A | 2018-03-05 A | 71 | 100% |  | 2018-03-05 | 2018-03-05 | 1d |  |  | Helper; Gas Cutter; Cutting Machine; Fitter | 32h | 32h | 1,500 | 1,500 | 1,500 |
| 73 | 10.3.3 | Sent For Cladding & Receipt | 12d | 2018-03-05 A | 2018-03-13 A | 72 | 100% |  | 2018-03-05 | 2018-03-13 | 12d |  |  | Crane; Store; Helper; SC (Work) | 384h | 384h | 4,800 | 4,800 | 4,800 |
| 74 | 10.3.4 | Hole Punching | 0.5d | 2018-03-17 A | 2018-03-17 A | 34, 49 | 100% |  | 2018-03-17 | 2018-03-17 | 0.5d |  | start no earlier than 2018-03-17 | Helper; Fitter | 8h | 8h | 475 | 475 | 475 |
| 75 | 10.3.5 | Send For Drilling | 1d | 2018-03-17 A | 2018-03-17 A | 74 | 100% |  | 2018-03-17 | 2018-03-17 | 1d |  |  | SC (Work) | 8h | 8h |  |  |  |
| 76 | 10.3.6 | Driiled T/Sheet Receipt | 3d | 2018-03-17 A | 2018-03-20 A | 75 | 100% |  | 2018-03-17 | 2018-03-20 | 3d |  |  | Radial Drilling Machine; Driller | 48h | 48h | 1,650 | 1,650 | 1,650 |
| 77 | 10.4 | **Tube Bundle Assembly** | 56.94d | 2018-02-19 A | 2018-05-02 A |  | 100% |  | 2018-02-19 | 2018-05-02 | 56.94d |  |  |  | 313.5h | 313.5h | 10,675 | 10,675 | 10,675 |
| 78 | 10.4.1 | Tie Rod To Tubesheet Assy | 4d | 2018-03-20 A | 2018-03-22 A | 64, 70 | 100% |  | 2018-03-20 | 2018-03-22 | 4d |  |  | Helper; Foreman [50%]; Fitter | 48h | 48h | 1,900 | 1,900 | 1,900 |
| 79 | 10.4.2 | Baffle Plate With Spacer Assy | 9d | 2018-02-19 A | 2018-03-27 A | 78 | 100% |  | 2018-02-19 | 2018-03-27 | 9d |  |  | Helper; Foreman [50%]; Fitter | 148h | 148h | 5,225 | 5,225 | 5,225 |
| 80 | 10.4.3 | Tube Insertion | 1d | 2018-03-23 A | 2018-03-26 A | 33, 48 | 100% |  | 2018-03-23 | 2018-03-26 | 1d |  |  | Fitter; Helper | 16h | 16h | 950 | 950 | 950 |
| 81 | 10.4.4 | Tube Bundle Insertion To Shell | 2d | 2018-03-26 A | 2018-03-27 A | 80 | 100% |  | 2018-03-26 | 2018-03-27 | 2d |  |  | Helper; Foreman [50%]; Fitter | 24h | 24h | 950 | 950 | 950 |
| 82 | 10.4.5 | Tube To Tubesheet Expansion | 4d | 2018-03-27 A | 2018-03-29 A | 81 | 100% |  | 2018-03-27 | 2018-03-29 | 4d |  |  | Foreman [50%]; Expanding Machine; Fitter | 48h | 48h | 1,100 | 1,100 | 1,100 |
| 83 | 10.4.6 | Tube To Tubesheet Welding | 1.44d | 2018-03-29 A | 2018-05-02 A | 82 | 100% |  | 2018-03-29 | 2018-05-02 | 1.44d |  |  | TIG Welding Machine; Foreman [50%]; SAW Welder | 29.5h | 29.5h | 550 | 550 | 550 |

| ID | WBS | Task | Duration | Start | Finish | Predecessors | Complete | Remaining | Baseline start | Baseline finish | Baseline duration | Total slack | Constraint | Resources | Work | Actual work | Cost | Baseline cost | Actual cost |
| --- | --- | --- | --- | --- | --- | --- | --- | --- | --- | --- | --- | --- | --- | --- | --- | --- | --- | --- | --- |
| 84 | 10.5 | **Testing And Inspection** | 27.44d | 2018-03-30 A | 2018-05-04 A |  | 100% |  | 2018-03-30 | 2018-05-04 | 27.44d |  |  |  | 67h | 67h | 2,356.25 | 2,356.25 | 2,356.25 |
| 85 | 10.5.1 | Tube Side Hydro Test | 2.81d | 2018-03-30 A | 2018-05-03 A | 77, 54 | 100% |  | 2018-03-30 | 2018-05-03 | 2.81d |  | start no later than 2018-03-30 | Helper; QC Engineer; Fitter | 32.5h | 32.5h | 1,421.88 | 1,421.88 | 1,421.88 |
| 86 | 10.5.2 | Water Dry | 18h | 2018-03-30 A | 2018-05-03 A | 85 | 100% |  | 2018-03-30 | 2018-05-03 | 18h |  | start no later than 2018-03-30 | Helper | 4h | 4h | 200 | 200 | 200 |
| 87 | 10.5.3 | Shell Side Hydrotest | 1.62d | 2018-03-30 A | 2018-05-03 A | 86 | 100% |  | 2018-03-30 | 2018-05-03 | 1.62d |  | start no later than 2018-03-30 | Helper; QC Engineer; Fitter | 22.5h | 22.5h | 534.38 | 534.38 | 534.38 |
| 88 | 10.5.4 | Water Dry | 18h | 2018-03-30 A | 2018-05-03 A | 87 | 100% |  | 2018-03-30 | 2018-05-03 | 18h |  | start no later than 2018-03-30 | Helper | 4h | 4h | 200 | 200 | 200 |
| 89 | 10.5.5 | Final Inspection | 0.5d | 2018-05-03 A | 2018-05-04 A | 88 | 100% |  | 2018-05-03 | 2018-05-04 | 0.5d |  |  | Client | 4h | 4h |  |  |  |
| 90 | 10.6 | **Closure** | 31d | 2018-03-30 A | 2018-05-08 |  | 65% | 10.94d | 2018-03-30 | 2018-05-08 | 31d | 0d |  |  | 92h | 44h | 600 | 600 | 600 |
| 91 | 10.6.1 | Packing | 2.5d | 2018-03-30 A | 2018-05-04 A | 84 | 100% |  | 2018-03-30 | 2018-05-04 | 2.5d |  | start no later than 2018-03-30 | Helper; Store | 12h | 12h | 200 | 200 | 200 |
| 92 | 10.6.2 | Final Despatch | 3d | 2018-03-30 A | 2018-05-05 A | 91 | 100% |  | 2018-03-30 | 2018-05-05 | 3d |  | start no later than 2018-03-30 | Crane; Helper; Store | 32h | 32h | 400 | 400 | 400 |
| 93 | 10.6.3 | PBG submission | 3d | 2018-05-05 | 2018-05-08 | 92 |  |  | 2018-05-05 | 2018-05-08 | 3d | 0d |  | Marketing; Finance | 48h |  |  |  |  |
