# 4236-SRF

Schedule from MS Project, 2017-12-08 to 2018-03-31, costs in Rs., A marks actual dates.

## Calendars

- TEAM_Stand_Calendar: Mon-Sat 08:30-12:30, 13:30-17:30; Sun off. Exceptions (off unless hours are given): 2017-01-13 to 2023-08-12 (2nd Sat, recurring), 2017-01-26 to 2036-01-26 (Republic Day, recurring), 2017-01-27 to 2023-08-26 (4th Sat, recurring), 2017-05-01 to 2036-05-01 (May Day, recurring), 2017-08-15 to 2036-08-15 (Independence Day, recurring), 2017-10-02 to 2036-10-02 (Gandhi Jayanti, recurring), 2018-01-15 (Thiruvalluvar Day'2018).
- TEAM_2Shift_Calendar-1: Mon-Sat 06:00-22:00; Sun off. Exceptions (off unless hours are given): 2017-01-13 to 2023-02-11 (2nd Sat, recurring), 2017-01-26 to 2036-01-26 (Republic Day, recurring), 2017-01-27 to 2023-08-26 (4th Sat, recurring), 2017-05-01 to 2036-05-01 (May Day, recurring), 2017-08-15 to 2036-08-15 (Indepdence Day, recurring), 2017-10-02 to 2036-10-02 (Gandhi Jayanti, recurring), 2018-01-15 (Thiruvalluvar Day'2018).

## Resources

| Resource | Rate |
| --- | --- |
| Marketing |  |
| PMO Head |  |
| Client |  |
| PM |  |
| TPI |  |
| Store |  |
| QC Engineer |  |
| Purchase Eng |  |
| PPC Engineer |  |
| Finance-New |  |
| Draftman |  |
| Design Eng |  |
| Expanding Machine |  |
| Helper | 50 |
| TIG Welding Machine |  |
| TIG Welder | 125 |
| SC (Work) |  |
| SMAW Welding Machine |  |
| SMAW Welder | 68.75 |
| SAW Welder | 68.75 |
| Rolling Machine |  |
| Production Department |  |
| Plate Bending Machine |  |
| Grinding Machine |  |
| Grinder | 56.25 |
| Gas Cutter | 68.75 |
| Fitter | 68.75 |
| Cutting Machine |  |
| Crane |  |
| Consumables (Cost) |  |
| Fastners (Cost) |  |
| Forging Non-Std (Cost) |  |
| Forging Std (Cost) |  |
| Pipe (Cost) |  |
| Plate (Cost) |  |
| Rod (Cost) |  |
| Finance |  |
| Design Engineer |  |
| Purchase Engineer |  |
| TPI (Work) |  |

## Schedule

| ID | WBS | Task | Duration | Start | Finish | Predecessors | Complete | Baseline start | Baseline finish | Baseline duration | Resources | Work | Actual work | Cost | Baseline cost | Actual cost |
| --- | --- | --- | --- | --- | --- | --- | --- | --- | --- | --- | --- | --- | --- | --- | --- | --- |
| 1 | 1 | **4236-SRF-CMS-D691** | 88d | 2017-12-08 08:00 A | 2018-03-31 17:30 A |  | 100% | 2017-12-08 08:00 | 2018-03-31 17:30 | 88d |  | 1585.71h | 1585.71h | 30,750.46 | 30,750.46 | 30,750.46 |
| 2 | 1.1 | PO Receipt | 1d | 2017-12-08 08:30 A | 2017-12-08 17:30 A |  | 100% | 2017-12-08 08:30 | 2017-12-08 17:30 | 1d | Marketing | 8h | 8h |  |  |  |
| 3 | 1.2 | Work Order | 1d | 2017-12-11 08:30 A | 2017-12-11 17:30 A | 2 | 100% | 2017-12-11 08:30 | 2017-12-11 17:30 | 1d | Marketing | 8h | 8h |  |  |  |
| 4 | 1.3 | CRM | 1d | 2017-12-12 08:30 A | 2017-12-12 17:30 A | 3 | 100% | 2017-12-12 08:30 | 2017-12-12 17:30 | 1d | PM; Marketing | 16h | 16h |  |  |  |
| 5 | 1.4 | Order acceptance | 3h | 2017-12-13 08:30 A | 2017-12-13 11:30 A | 4 | 100% | 2017-12-13 08:30 | 2017-12-13 11:30 | 3h | PM | 3h | 3h |  |  |  |
| 6 | 1.5 | **Design** | 3.38d | 2017-12-13 08:30 A | 2017-12-16 11:30 A |  | 100% | 2017-12-13 08:30 | 2017-12-16 11:30 | 3.38d |  | 29h | 29h |  |  |  |
| 7 | 1.5.1 | Design Preparation | 3d | 2017-12-13 08:30 A | 2017-12-15 17:30 A | 4 | 100% | 2017-12-13 08:30 | 2017-12-15 17:30 | 3d | Draftman; Design Engineer | 24h | 24h |  |  |  |
| 8 | 1.5.2 | Drawing Submission | 1h | 2017-12-16 08:30 A | 2017-12-16 09:30 A | 7 | 100% | 2017-12-16 08:30 | 2017-12-16 09:30 | 1h | Design Engineer | 1h | 1h |  |  |  |
| 9 | 1.5.3 | Drawing Approval | 2h | 2017-12-16 09:30 A | 2017-12-16 11:30 A | 8 | 100% | 2017-12-16 09:30 | 2017-12-16 11:30 | 2h | PM; Client | 4h | 4h |  |  |  |
| 10 | 1.6 | ABG Submission to client(20%) | 8h | 2018-02-08 08:30 A | 2018-02-08 17:30 A |  | 100% | 2018-02-08 08:30 | 2018-02-08 17:30 | 8h | Marketing; Finance | 4.8h | 4.8h |  |  |  |
| 11 | 1.7 | PR Issue | 5.13d | 2017-12-16 09:30 A | 2017-12-22 10:32 A | 8 | 100% | 2017-12-16 09:30 | 2017-12-22 10:32 | 5.13d | PPC Engineer | 8h | 8h |  |  |  |
| 12 | 1.8 | **Material Ordering** | 33.02d | 2017-12-08 08:00 A | 2018-01-20 08:39 A |  | 100% | 2017-12-08 08:00 | 2018-01-20 08:39 | 33.02d |  | 256.24h | 256.24h |  |  |  |
| 13 | 1.8.1 | Plates | 5.25d | 2017-12-08 08:00 A | 2017-12-15 10:30 A | 11 | 100% | 2017-12-08 08:00 | 2017-12-15 10:30 | 5.25d | Plate (Cost) [0.1%]; Purchase Engineer |  |  |  |  |  |
| 14 | 1.8.2 | Standard Forging | 12.75d | 2017-12-25 10:30 A | 2018-01-08 17:30 A | 13 | 100% | 2017-12-25 10:30 | 2018-01-08 17:30 | 12.75d | Forging Std (Cost) [0.1%]; Purchase Eng [73.5%] | 8h | 8h |  |  |  |
| 15 | 1.8.3 | Pipes | 25d | 2017-12-08 08:00 A | 2018-01-08 17:30 A | 14 | 100% | 2017-12-08 08:00 | 2018-01-08 17:30 | 25d | Pipe (Cost) [0.1%]; Purchase Engineer |  |  |  |  |  |
| 16 | 1.8.4 | Gasket | 16.01d | 2017-12-26 08:30 A | 2018-01-16 08:34 A | 15 | 100% | 2017-12-26 08:30 | 2018-01-16 08:34 | 16.01d | Purchase Engineer | 128.08h | 128.08h |  |  |  |
| 17 | 1.8.5 | Fasteners | 29.01d | 2017-12-08 08:00 A | 2018-01-16 08:34 A | 16 | 100% | 2017-12-08 08:00 | 2018-01-16 08:34 | 29.01d | Fastners (Cost) [0.1%]; Purchase Engineer |  |  |  |  |  |
| 18 | 1.8.6 | Consumables | 15.01d | 2017-12-08 08:00 A | 2017-12-28 08:34 A | 17 | 100% | 2017-12-08 08:00 | 2017-12-28 08:34 | 15.01d | Consumables (Cost) [0.1%]; Purchase Engineer |  |  |  |  |  |
| 19 | 1.8.7 | Fittings | 15.02d | 2018-01-01 08:30 A | 2018-01-20 08:39 A | 18 | 100% | 2018-01-01 08:30 | 2018-01-20 08:39 | 15.02d | Purchase Engineer | 120.16h | 120.16h |  |  |  |
| 20 | 1.9 | **Material Receipt** | 27d | 2018-02-13 10:30 A | 2018-03-19 10:30 A |  | 100% | 2018-02-13 10:30 | 2018-03-19 10:30 | 27d |  | 147.98h | 147.98h | 2,330.05 | 2,330.05 | 2,330.05 |
| 21 | 1.9.1 | Top Shell | 2.5h | 2018-02-13 10:30 A | 2018-02-13 14:00 A | 13FS+38d | 100% | 2018-02-13 10:30 | 2018-02-13 14:00 | 2.5h | Helper; Store; Plate (Cost) [0.1%]; Crane | 6h | 6h | 100 | 100 | 100 |
| 22 | 1.9.2 | Top Ellipsoidal Dished End | 2.5h | 2018-02-13 10:30 A | 2018-02-13 14:00 A | 13FS+38d | 100% | 2018-02-13 10:30 | 2018-02-13 14:00 | 2.5h | Helper; Store; Plate (Cost) [0.1%]; Crane | 6h | 6h | 100 | 100 | 100 |
| 23 | 1.9.3 | Liner | 2.5h | 2018-02-13 10:30 A | 2018-02-13 14:00 A | 13FS+38d | 100% | 2018-02-13 10:30 | 2018-02-13 14:00 | 2.5h | Helper; Store; Plate (Cost) [0.1%]; Crane | 6h | 6h | 100 | 100 | 100 |
| 24 | 1.9.4 | R/F Pad Plate for N9, N10 | 2.5h | 2018-02-13 10:30 A | 2018-02-13 14:00 A | 13FS+38d | 100% | 2018-02-13 10:30 | 2018-02-13 14:00 | 2.5h | Helper; Store; Plate (Cost) [0.1%]; Crane | 6h | 6h | 100 | 100 | 100 |
| 25 | 1.9.5 | Liner for N9, N10 | 2.5h | 2018-02-13 10:30 A | 2018-02-13 14:00 A | 13FS+38d | 100% | 2018-02-13 10:30 | 2018-02-13 14:00 | 2.5h | Helper; Store; Plate (Cost) [0.1%]; Crane | 6h | 6h | 100 | 100 | 100 |
| 26 | 1.9.6 | Liner for N9, N10 | 2.5h | 2018-02-13 10:30 A | 2018-02-13 14:00 A | 13FS+38d | 100% | 2018-02-13 10:30 | 2018-02-13 14:00 | 2.5h | Helper; Store; Plate (Cost) [0.1%]; Crane | 6h | 6h | 100 | 100 | 100 |
| 27 | 1.9.7 | Liner for N6, N7, N8 | 2.5h | 2018-02-13 10:30 A | 2018-02-13 14:00 A | 13FS+38d | 100% | 2018-02-13 10:30 | 2018-02-13 14:00 | 2.5h | Helper; Store; Plate (Cost) [0.1%]; Crane | 6h | 6h | 100 | 100 | 100 |
| 28 | 1.9.8 | Liner for PI1, TI1 | 2.5h | 2018-02-13 10:30 A | 2018-02-13 14:00 A | 13FS+38d | 100% | 2018-02-13 10:30 | 2018-02-13 14:00 | 2.5h | Helper; Store; Plate (Cost) [0.1%]; Crane | 6h | 6h | 100 | 100 | 100 |
| 29 | 1.9.9 | Stiffner for PI1, TI1 | 2.5h | 2018-02-13 10:30 A | 2018-02-13 14:00 A | 13FS+38d | 100% | 2018-02-13 10:30 | 2018-02-13 14:00 | 2.5h | Helper; Store; Plate (Cost) [0.1%]; Crane | 6h | 6h | 100 | 100 | 100 |
| 30 | 1.9.10 | Body Flange | 90h | 2018-02-19 08:30 A | 2018-03-05 10:30 A | 14FS+41d | 100% | 2018-02-19 08:30 | 2018-03-05 10:30 | 90h | Helper; Store; Forging Non-Std (Cost) [0.1%]; Crane | 6h | 6h | 75.81 | 75.81 | 75.81 |
| 31 | 1.9.11 | Nozzle Flange for N9, N10 | 90h | 2018-02-19 08:30 A | 2018-03-05 10:30 A | 14FS+41d | 100% | 2018-02-19 08:30 | 2018-03-05 10:30 | 90h | Helper; Store; Forging Std (Cost) [0.1%]; Crane | 6h | 6h | 75.81 | 75.81 | 75.81 |
| 32 | 1.9.12 | Reducing Flange for N9, N10 | 90h | 2018-02-19 08:30 A | 2018-03-05 10:30 A | 14FS+41d | 100% | 2018-02-19 08:30 | 2018-03-05 10:30 | 90h | Helper; Store; Forging Non-Std (Cost) [0.1%]; Crane | 6h | 6h | 75.81 | 75.81 | 75.81 |
| 33 | 1.9.13 | Nozzle Flange for N6, N7, N8 | 178h | 2018-02-19 08:30 A | 2018-03-19 10:30 A | 14FS+41d | 100% | 2018-02-19 08:30 | 2018-03-19 10:30 | 178h | Helper; Store; Forging Std (Cost) [0.1%]; Crane | 7.99h | 7.99h | 101.31 | 101.31 | 101.31 |
| 34 | 1.9.14 | Nozzle Flange for PI1, TI1 | 178h | 2018-02-19 08:30 A | 2018-03-19 10:30 A | 14FS+41d | 100% | 2018-02-19 08:30 | 2018-03-19 10:30 | 178h | Helper; Store; Forging Std (Cost) [0.1%]; Crane | 7.99h | 7.99h | 101.31 | 101.31 | 101.31 |
| 35 | 1.9.15 | Nozzle Neck for N9, N10 | 2.5h | 2018-03-05 08:32 A | 2018-03-05 11:02 A | 15FS+39d | 100% | 2018-03-05 08:32 | 2018-03-05 11:02 | 2.5h | Helper; Store; Pipe (Cost) [0.1%]; Crane | 6h | 6h | 100 | 100 | 100 |
| 36 | 1.9.16 | Nozzle Neck for N6, N7, N8 | 2.5h | 2018-03-05 08:32 A | 2018-03-05 11:02 A | 15FS+39d | 100% | 2018-03-05 08:32 | 2018-03-05 11:02 | 2.5h | Helper; Store; Pipe (Cost) [0.1%]; Crane | 6h | 6h | 100 | 100 | 100 |
| 37 | 1.9.17 | Pipe for N6, N8 | 2.5h | 2018-03-05 08:32 A | 2018-03-05 11:02 A | 15FS+39d | 100% | 2018-03-05 08:32 | 2018-03-05 11:02 | 2.5h | Helper; Store; Pipe (Cost) [0.1%]; Crane | 6h | 6h | 100 | 100 | 100 |
| 38 | 1.9.18 | Reflux Pipe for N6, N8 | 2.5h | 2018-03-05 08:32 A | 2018-03-05 11:02 A | 15FS+39d | 100% | 2018-03-05 08:32 | 2018-03-05 11:02 | 2.5h | Helper; Store; Pipe (Cost) [0.1%]; Crane | 6h | 6h | 100 | 100 | 100 |
| 39 | 1.9.19 | Nozzle Neck for PI1, TI1 | 2.5h | 2018-03-05 08:32 A | 2018-03-05 11:02 A | 15FS+39d | 100% | 2018-03-05 08:32 | 2018-03-05 11:02 | 2.5h | Helper; Store; Pipe (Cost) [0.1%]; Crane | 6h | 6h | 100 | 100 | 100 |
| 40 | 1.9.20 | Gasket | 2.5h | 2018-03-05 08:32 A | 2018-03-05 11:02 A | 15FS+39d | 100% | 2018-03-05 08:32 | 2018-03-05 11:02 | 2.5h | Helper; Store; Crane | 6h | 6h | 100 | 100 | 100 |
| 41 | 1.9.21 | Gasket for N9, N10 MEJ 'U' Shaped CAF | 2.5h | 2018-03-05 08:32 A | 2018-03-05 11:02 A | 15FS+39d | 100% | 2018-03-05 08:32 | 2018-03-05 11:02 | 2.5h | Helper; Store; Crane | 6h | 6h | 100 | 100 | 100 |
| 42 | 1.9.22 | Fasteners | 2.5h | 2018-02-14 08:36 A | 2018-02-14 11:06 A | 17FS+20d | 100% | 2018-02-14 08:36 | 2018-02-14 11:06 | 2.5h | Helper; Store; Fastners (Cost) [0.1%]; Crane | 6h | 6h | 100 | 100 | 100 |
| 43 | 1.9.23 | Consumables | 2.5h | 2018-02-14 08:36 A | 2018-02-14 11:06 A | 17FS+20d | 100% | 2018-02-14 08:36 | 2018-02-14 11:06 | 2.5h | Helper; Store; Consumables (Cost) [0.1%]; Crane | 6h | 6h | 100 | 100 | 100 |
| 44 | 1.9.24 | Full Coupling for N6, N8 | 2.5h | 2018-02-14 08:36 A | 2018-02-14 11:06 A | 17FS+20d | 100% | 2018-02-14 08:36 | 2018-02-14 11:06 | 2.5h | Helper; Store; Crane | 6h | 6h | 100 | 100 | 100 |

Notes:
- 11: Top Shell / Body Flange / Top Ellipsoidal Dished End / Liner / Gasket / R/F Pad Plate for N9, N10 / Nozzle Neck for N9, N10 / Nozzle Flange for N9, N10 / Liner for N9, N10 / Gasket for N9, N10 MEJ 'U' Shaped CAF / Liner for N9, N10 / Reducing Flange for N9, N10 / Nozzle Neck for N6, N7, N8 / Pipe for N6, N8 / Nozzle Flange for N6, N7, N8 / Liner for N6, N7, N8 / Full Coupling for N6, N8 / Reflux Pipe for N6, N8 / Nozzle Neck for PI1, TI1 / Nozzle Flange for PI1, TI1 / Liner for PI1, TI1 / Stiffner for PI1, TI1 / Fasteners / Consumables
- 21: SB 127 UNS No. 4400(8T)
- 22: SB 127 UNS No. 4400 (10T)
- 23: SB 127 UNS No. 4400 (OD 584*ID 492*5T)
- 24: SB 127 UNS No. 4400(8T)
- 25: SB 127 UNS No. 4400 (OD 216*ID 152*5T)
- 26: SB 127 UNS No. 4400 (OD 216*ID 91*5T)
- 27: SB 127 UNS No. 4400 (OD 127*ID 77*5T)
- 28: SB 127 UNS No. 4400 (OD 73*ID 38*5T)
- 29: SB 127 UNS No. 4400
- 30: 500NB_150#_SOFF
- 31: SA 105 150NB_150#
- 32: SA 105 NB (150*80)_150#
- 33: SA 105 150NB_150#
- 34: SA 105 40NB_150# SOFF
- 35: SB 127 UNS No. 4400(8T)
- 36: SB 127 UNS No. 4400 (6T)
- 37: SB 127 UNS No. 4400 (6T)
- 38: SB 127 UNS No. 4400
- 39: SB 165 UNS No. 4400
- 40: 500NB_150#
- 41: 150NB_150#
- 44: SB 127 UNS No. 4400

| ID | WBS | Task | Duration | Start | Finish | Predecessors | Complete | Baseline start | Baseline finish | Baseline duration | Calendar | Resources | Work | Actual work | Cost | Baseline cost | Actual cost |
| --- | --- | --- | --- | --- | --- | --- | --- | --- | --- | --- | --- | --- | --- | --- | --- | --- | --- |
| 45 | 1.10 | **QA** | 62.94d | 2017-12-16 11:30 A | 2018-03-08 11:02 A |  | 100% | 2017-12-16 11:30 | 2018-03-08 11:02 | 62.94d |  |  | 48h | 48h |  |  |  |
| 46 | 1.10.1 | Raw material inspection | 3d | 2018-03-05 11:02 A | 2018-03-08 11:02 A | 20 | 100% | 2018-03-05 11:02 | 2018-03-08 11:02 | 3d |  | QC Engineer | 24h | 24h |  |  |  |
| 47 | 1.10.2 | QAP Submission | 2d | 2017-12-16 11:30 A | 2017-12-19 11:30 A | 9 | 100% | 2017-12-16 11:30 | 2017-12-19 11:30 | 2d |  | QC Engineer | 16h | 16h |  |  |  |
| 48 | 1.10.3 | Mechanical & Chemical Testing for Plates | 1d | 2018-02-13 14:00 A | 2018-02-14 14:00 A | 21 | 100% | 2018-02-13 14:00 | 2018-02-14 14:00 | 1d |  | QC Engineer | 8h | 8h |  |  |  |
| 49 | 1.11 | **Fabrication** | 81.44d | 2018-02-08 06:00 A | 2018-03-31 17:30 A |  | 100% | 2018-02-08 06:00 | 2018-03-31 17:30 | 81.44d | TEAM_2Shift_Calendar-1 |  | 1056.69h | 1056.69h | 28,420.41 | 28,420.41 | 28,420.41 |
| 50 | 1.11.1 | **Bonnet (Dish) Fabrication** | 37.62d | 2018-02-08 06:00 A | 2018-03-03 19:00 A |  | 100% | 2018-02-08 06:00 | 2018-03-03 19:00 | 37.62d | TEAM_2Shift_Calendar-1 |  | 186.49h | 186.49h | 2,877.12 | 2,877.12 | 2,877.12 |
| 51 | 1.11.1.1 | **Initial Preparation** | 4.63d | 2018-02-13 14:00 A | 2018-02-15 19:03 A |  | 100% | 2018-02-13 14:00 | 2018-02-15 19:03 | 4.63d | TEAM_2Shift_Calendar-1 |  | 46.5h | 46.5h | 1,210.48 | 1,210.48 | 1,210.48 |
| 52 | 1.11.1.1.1 | Plate Receipt | 9h | 2018-02-13 14:00 A | 2018-02-14 07:00 A | 22 | 100% | 2018-02-13 14:00 | 2018-02-14 07:00 | 9h | TEAM_2Shift_Calendar-1 | Plate (Cost) [0.1%]; Store | 3h | 3h |  |  |  |
| 53 | 1.11.1.1.2 | Inward Inspection | 4h | 2018-02-14 07:00 A | 2018-02-14 11:00 A | 52 | 100% | 2018-02-14 07:00 | 2018-02-14 11:00 | 4h | TEAM_2Shift_Calendar-1 | QC Engineer; Helper | 6.5h | 6.5h |  |  |  |
| 54 | 1.11.1.1.3 | Dish Blank Marking | 3.02h | 2018-02-14 11:00 A | 2018-02-14 14:01 A | 53 | 100% | 2018-02-14 11:00 | 2018-02-14 14:01 | 3.02h | TEAM_2Shift_Calendar-1 | Helper; Fitter | 6h | 6h | 356.25 | 356.25 | 356.25 |
| 55 | 1.11.1.1.4 | Dish Blank Mkg Inspection | 2.02h | 2018-02-14 14:01 A | 2018-02-14 16:02 A | 54 | 100% | 2018-02-14 14:01 | 2018-02-14 16:02 | 2.02h | TEAM_2Shift_Calendar-1 | Fitter | 2h | 2h | 137.5 | 137.5 | 137.5 |
| 56 | 1.11.1.1.5 | Dish Blank Mkg Stamping | 10h | 2018-02-14 16:02 A | 2018-02-15 10:02 A | 55 | 100% | 2018-02-14 16:02 | 2018-02-15 10:02 | 10h | TEAM_2Shift_Calendar-1 | TPI; Fitter | 6h | 6h | 311.67 | 311.67 | 311.67 |
| 57 | 1.11.1.1.6 | Transfer for cutting | 1h | 2018-02-15 10:02 A | 2018-02-15 11:02 A | 56 | 100% | 2018-02-15 10:02 | 2018-02-15 11:02 | 1h | TEAM_2Shift_Calendar-1 | Helper [300%] | 3h | 3h |  |  |  |
| 58 | 1.11.1.1.7 | Dish Blank cutting | 4.02h | 2018-02-15 11:02 A | 2018-02-15 15:03 A | 57 | 100% | 2018-02-15 11:02 | 2018-02-15 15:03 | 4.02h | TEAM_2Shift_Calendar-1 | Helper; Cutting Machine; Gas Cutter | 12h | 12h | 405.06 | 405.06 | 405.06 |
| 59 | 1.11.1.1.8 | Dish Blank Od Grinding | 4h | 2018-02-15 15:03 A | 2018-02-15 19:03 A | 58 | 100% | 2018-02-15 15:03 | 2018-02-15 19:03 | 4h | TEAM_2Shift_Calendar-1 | Grinding Machine; Grinder | 8h | 8h |  |  |  |
| 60 | 1.11.1.2 | Dish Blank Off loading for forming | 94.05h | 2018-02-08 06:00 A | 2018-02-15 20:03 A | 59 | 100% | 2018-02-08 06:00 | 2018-02-15 20:03 | 94.05h | TEAM_2Shift_Calendar-1 | Plate (Cost) [0.1%]; Helper | 1h | 1h | 50 | 50 | 50 |
| 61 | 1.11.1.3 | Dish forming | 18d | 2018-02-15 06:00 A | 2018-02-26 22:00 A | 60 | 100% | 2018-02-15 06:00 | 2018-02-26 22:00 | 18d | TEAM_2Shift_Calendar-1 | SC (Work) | 86h | 86h |  |  |  |
| 62 | 1.11.1.4 | Receipt after forming | 22.4h | 2018-02-26 06:00 A | 2018-02-27 12:24 A | 61 | 100% | 2018-02-26 06:00 | 2018-02-27 12:24 | 22.4h | TEAM_2Shift_Calendar-1 | Store | 2h | 2h |  |  |  |
| 63 | 1.11.1.5 | Inward Inspection | 32h | 2018-02-26 06:00 A | 2018-02-27 22:00 A | 62 | 100% | 2018-02-26 06:00 | 2018-02-27 22:00 | 32h | TEAM_2Shift_Calendar-1 | QC Engineer; Helper | 4h | 4h | 162.08 | 162.08 | 162.08 |
| 64 | 1.11.1.6 | Surface Grinding&dp check | 34h | 2018-02-26 06:00 A | 2018-02-28 08:00 A | 63 | 100% | 2018-02-26 06:00 | 2018-02-28 08:00 | 34h | TEAM_2Shift_Calendar-1 | Grinding Machine; Grinder | 4h | 4h | 109.22 | 109.22 | 109.22 |
| 65 | 1.11.1.7 | Spider setup for sr | 36h | 2018-02-26 06:00 A | 2018-02-28 10:00 A | 64 | 100% | 2018-02-26 06:00 | 2018-02-28 10:00 | 36h | TEAM_2Shift_Calendar-1 | Helper [200%]; Fitter | 6h | 6h | 353.23 | 353.23 | 353.23 |
| 66 | 1.11.1.8 | Dish SR | 1d | 2018-02-26 06:00 A | 2018-02-26 14:00 A | 65 | 100% | 2018-02-26 06:00 | 2018-02-26 14:00 | 1d | TEAM_2Shift_Calendar-1 | SC (Work) | 8h | 8h |  |  |  |
| 67 | 1.11.1.9 | Remove spider | 82h | 2018-02-26 06:00 A | 2018-03-03 08:00 A | 66 | 100% | 2018-02-26 06:00 | 2018-03-03 08:00 | 82h | TEAM_2Shift_Calendar-1 | Grinding Machine; Grinder | 6h | 6h | 166.69 | 166.69 | 166.69 |
| 68 | 1.11.1.10 | surface cleaning | 84h | 2018-02-26 06:00 A | 2018-03-03 10:00 A | 67 | 100% | 2018-02-26 06:00 | 2018-03-03 10:00 | 84h | TEAM_2Shift_Calendar-1 | Helper | 2h | 2h | 100 | 100 | 100 |
| 69 | 1.11.1.11 | SF Marking | 86h | 2018-02-26 06:00 A | 2018-03-03 12:00 A | 68 | 100% | 2018-02-26 06:00 | 2018-03-03 12:00 | 86h | TEAM_2Shift_Calendar-1 | Helper; Fitter | 4h | 4h | 237.03 | 237.03 | 237.03 |
| 70 | 1.11.1.12 | SF cutting | 74h | 2018-02-27 06:00 A | 2018-03-03 16:00 A | 69 | 100% | 2018-02-27 06:00 | 2018-03-03 16:00 | 74h | TEAM_2Shift_Calendar-1 | Gas Cutter; Cutting Machine | 8h | 8h | 282.14 | 282.14 | 282.14 |
| 71 | 1.11.1.13 | Dish edge preparation | 77h | 2018-02-27 06:00 A | 2018-03-03 19:00 A | 70 | 100% | 2018-02-27 06:00 | 2018-03-03 19:00 | 77h | TEAM_2Shift_Calendar-1 | Grinder; Grinding Machine | 6h | 6h |  |  |  |
| 72 | 1.11.1.14 | Final inspection | 27h | 2018-02-27 06:00 A | 2018-02-28 17:00 A | 71 | 100% | 2018-02-27 06:00 | 2018-02-28 17:00 | 27h | TEAM_2Shift_Calendar-1 | Fitter [300%] | 3h | 3h | 206.25 | 206.25 | 206.25 |

Notes:
- 48: If mateiral is available in stock chemical and mechanical test is not required. / If identified mateiral is bought chemical and mechanical testing is not requried. / If unidentified mateiral is bought chemical and mechanical testing is not requried.
- 50: SB 127 UNS No. 4400
- 58: DIA 715 x 10T

| ID | WBS | Task | Duration | Start | Finish | Predecessors | Complete | Baseline start | Baseline finish | Baseline duration | Constraint | Calendar | Resources | Work | Actual work | Cost | Baseline cost | Actual cost |
| --- | --- | --- | --- | --- | --- | --- | --- | --- | --- | --- | --- | --- | --- | --- | --- | --- | --- | --- |
| 73 | 1.11.2 | **Shell Fabrication** | 17d | 2018-02-13 14:00 A | 2018-02-22 21:58 A |  | 100% | 2018-02-13 14:00 | 2018-02-22 21:58 | 17d |  | TEAM_2Shift_Calendar-1 |  | 115.99h | 115.99h | 1,258.07 | 1,258.07 | 1,258.07 |
| 74 | 1.11.2.1 | Plate Receipt | 9h | 2018-02-13 14:00 A | 2018-02-14 07:00 A | 21 | 100% | 2018-02-13 14:00 | 2018-02-14 07:00 | 9h |  | TEAM_2Shift_Calendar-1 | QC Engineer; Plate (Cost) [0.1%]; Fitter | 4h | 4h | 137.5 | 137.5 | 137.5 |
| 75 | 1.11.2.2 | Inward inspection | 3.95h | 2018-02-14 07:00 A | 2018-02-14 10:57 A | 74 | 100% | 2018-02-14 07:00 | 2018-02-14 10:57 | 3.95h |  | TEAM_2Shift_Calendar-1 | QC Engineer | 1h | 1h |  |  |  |
| 76 | 1.11.2.3 | Marking | 1h | 2018-02-14 10:57 A | 2018-02-14 11:57 A | 75 | 100% | 2018-02-14 10:57 | 2018-02-14 11:57 | 1h |  | TEAM_2Shift_Calendar-1 | Helper; Fitter | 2h | 2h |  |  |  |
| 77 | 1.11.2.4 | Stamping | 8h | 2018-02-14 11:57 A | 2018-02-14 19:57 A | 76 | 100% | 2018-02-14 11:57 | 2018-02-14 19:57 | 8h |  | TEAM_2Shift_Calendar-1 | Fitter; QC Engineer; TPI | 3h | 3h | 87 | 87 | 87 |
| 78 | 1.11.2.5 | Shell cutting | 4h | 2018-02-14 19:57 A | 2018-02-15 07:57 A | 77 | 100% | 2018-02-14 19:57 | 2018-02-15 07:57 | 4h |  | TEAM_2Shift_Calendar-1 | Cutting Machine; Gas Cutter; Helper | 12h | 12h |  |  |  |
| 79 | 1.11.2.6 | Shell edge preparation | 1h | 2018-02-15 07:57 A | 2018-02-15 08:57 A | 78 | 100% | 2018-02-15 07:57 | 2018-02-15 08:57 | 1h |  | TEAM_2Shift_Calendar-1 | Grinding Machine; Grinder | 2h | 2h |  |  |  |
| 80 | 1.11.2.7 | shell Pre bending | 3h | 2018-02-15 08:57 A | 2018-02-15 11:57 A | 79 | 100% | 2018-02-15 08:57 | 2018-02-15 11:57 | 3h |  | TEAM_2Shift_Calendar-1 | Helper; Plate Bending Machine; Fitter | 9h | 9h |  |  |  |
| 81 | 1.11.2.8 | shell pre bend cutoff | 1h | 2018-02-15 11:57 A | 2018-02-15 12:57 A | 80 | 100% | 2018-02-15 11:57 | 2018-02-15 12:57 | 1h |  | TEAM_2Shift_Calendar-1 | Helper; Cutting Machine; Gas Cutter | 3h | 3h |  |  |  |
| 82 | 1.11.2.9 | shell rolling | 2h | 2018-02-15 12:57 A | 2018-02-15 14:57 A | 81 | 100% | 2018-02-15 12:57 | 2018-02-15 14:57 | 2h |  | TEAM_2Shift_Calendar-1 | Fitter; Rolling Machine; Helper | 6h | 6h |  |  |  |
| 83 | 1.11.2.10 | shell LS fitup | 3h | 2018-02-20 08:00 A | 2018-02-20 11:00 A |  | 100% | 2018-02-20 08:00 | 2018-02-20 11:00 | 3h | start no earlier than 2018-02-20 08:00 | TEAM_2Shift_Calendar-1 | Helper [200%]; Fitter | 9h | 9h | 492.19 | 492.19 | 492.19 |
| 84 | 1.11.2.11 | shell TPI inspection | 8.62h | 2018-02-20 11:00 A | 2018-02-20 19:37 A | 83 | 100% | 2018-02-20 11:00 | 2018-02-20 19:37 | 8.62h |  | TEAM_2Shift_Calendar-1 | Fitter; QC Engineer; TPI | 9h | 9h | 213.26 | 213.26 | 213.26 |
| 85 | 1.11.2.12 | shell welding arrangement | 1h | 2018-02-20 19:37 A | 2018-02-20 20:37 A | 84 | 100% | 2018-02-20 19:37 | 2018-02-20 20:37 | 1h |  | TEAM_2Shift_Calendar-1 | Fitter; Helper | 2h | 2h |  |  |  |
| 86 | 1.11.2.13 | shell LS welding | 5h | 2018-02-20 20:37 A | 2018-02-21 09:37 A | 85 | 100% | 2018-02-20 20:37 | 2018-02-21 09:37 | 5h |  | TEAM_2Shift_Calendar-1 | SMAW Welder; SMAW Welding Machine; Helper | 15h | 15h |  |  |  |
| 87 | 1.11.2.14 | Shell LS backchip | 1h | 2018-02-21 09:37 A | 2018-02-21 10:37 A | 86 | 100% | 2018-02-21 09:37 | 2018-02-21 10:37 | 1h |  | TEAM_2Shift_Calendar-1 | Grinding Machine; Grinder | 2h | 2h |  |  |  |
| 88 | 1.11.2.15 | shell LS inner weld | 3h | 2018-02-21 10:37 A | 2018-02-21 13:37 A | 87 | 100% | 2018-02-21 10:37 | 2018-02-21 13:37 | 3h |  | TEAM_2Shift_Calendar-1 | SMAW Welder; SMAW Welding Machine; Helper | 9h | 9h |  |  |  |
| 89 | 1.11.2.16 | Shell LS inner Flush grind | 2h | 2018-02-21 13:37 A | 2018-02-21 15:37 A | 88 | 100% | 2018-02-21 13:37 | 2018-02-21 15:37 | 2h |  | TEAM_2Shift_Calendar-1 | Grinding Machine; Grinder | 4h | 4h |  |  |  |
| 90 | 1.11.2.17 | Shell LS DP check | 2h | 2018-02-21 15:37 A | 2018-02-21 17:37 A | 89 | 100% | 2018-02-21 15:37 | 2018-02-21 17:37 | 2h |  | TEAM_2Shift_Calendar-1 | Fitter | 2h | 2h |  |  |  |
| 91 | 1.11.2.18 | shell Re Rolling | 2h | 2018-02-21 17:37 A | 2018-02-21 19:37 A | 90 | 100% | 2018-02-21 17:37 | 2018-02-21 19:37 | 2h |  | TEAM_2Shift_Calendar-1 | Helper [200%]; Fitter | 6h | 6h | 328.12 | 328.12 | 328.12 |
| 92 | 1.11.2.19 | shell RT | 1.79d | 2018-02-21 19:37 A | 2018-02-22 17:56 A | 91 | 100% | 2018-02-21 19:37 | 2018-02-22 17:56 | 1.79d |  | TEAM_2Shift_Calendar-1 | SC (Work) | 8h | 8h |  |  |  |
| 93 | 1.11.2.20 | Shell Edge preparation | 4h | 2018-02-22 17:58 A | 2018-02-22 21:58 A | 92 | 100% | 2018-02-22 17:58 | 2018-02-22 21:58 | 4h |  | TEAM_2Shift_Calendar-1 | Grinding Machine; Grinder | 8h | 8h |  |  |  |
| 94 | 1.11.3 | **Nozzle Fabrication** | 9.67d | 2018-03-05 11:02 A | 2018-03-12 08:25 A |  | 100% | 2018-03-05 11:02 | 2018-03-12 08:25 | 9.67d |  | TEAM_2Shift_Calendar-1 |  | 119.98h | 119.98h | 4,031.17 | 4,031.17 | 4,031.17 |
| 95 | 1.11.3.1 | Noz Pipe Receipt | 9h | 2018-03-05 11:02 A | 2018-03-05 20:02 A | 35 | 100% | 2018-03-05 11:02 | 2018-03-05 20:02 | 9h |  | TEAM_2Shift_Calendar-1 | Pipe (Cost) [0.1%]; Store | 3h | 3h |  |  |  |
| 96 | 1.11.3.2 | Noz Pipe Marking | 3h | 2018-03-05 20:02 A | 2018-03-06 07:02 A | 95 | 100% | 2018-03-05 20:02 | 2018-03-06 07:02 | 3h |  | TEAM_2Shift_Calendar-1 | Helper; Fitter | 6h | 6h |  |  |  |
| 97 | 1.11.3.3 | Noz Pipe Stamping | 0.5d | 2018-03-06 07:02 A | 2018-03-06 11:02 A | 96 | 100% | 2018-03-06 07:02 | 2018-03-06 11:02 | 0.5d |  | TEAM_2Shift_Calendar-1 | Fitter; QC Engineer; TPI | 11.99h | 11.99h | 631.97 | 631.97 | 631.97 |
| 98 | 1.11.3.4 | Noz Pipe Cutting | 3h | 2018-03-06 11:02 A | 2018-03-06 14:02 A | 31, 97 | 100% | 2018-03-06 11:02 | 2018-03-06 14:02 | 3h |  | TEAM_2Shift_Calendar-1 | Gas Cutter; Cutting Machine; Helper | 9h | 9h |  |  |  |
| 99 | 1.11.3.5 | Noz Pipe Ep | 2h | 2018-03-06 14:02 A | 2018-03-06 16:02 A | 98 | 100% | 2018-03-06 14:02 | 2018-03-06 16:02 | 2h |  | TEAM_2Shift_Calendar-1 | Grinding Machine; Grinder | 4h | 4h |  |  |  |
| 100 | 1.11.3.6 | Noz Flange +Pipe Fit Up | 2d | 2018-03-06 16:02 A | 2018-03-07 16:02 A | 99 | 100% | 2018-03-06 16:02 | 2018-03-07 16:02 | 2d |  | TEAM_2Shift_Calendar-1 | Fitter; Forging Std (Cost) [0.1%]; Pipe (Cost) [0.1%]; Helper [200%] | 24h | 24h | 1,450 | 1,450 | 1,450 |
| 101 | 1.11.3.7 | Noz Flange +Pipe Fit Up Inspection | 3h | 2018-03-07 16:02 A | 2018-03-07 19:02 A | 100 | 100% | 2018-03-07 16:02 | 2018-03-07 19:02 | 3h |  | TEAM_2Shift_Calendar-1 | Fitter [200%] | 6h | 6h |  |  |  |
| 102 | 1.11.3.8 | Noz Flange +Pipe Root Tig Welding | 1d | 2018-03-07 19:02 A | 2018-03-08 11:02 A | 101 | 100% | 2018-03-07 19:02 | 2018-03-08 11:02 | 1d |  | TEAM_2Shift_Calendar-1 | TIG Welder; TIG Welding Machine; Helper | 24h | 24h | 1,199.46 | 1,199.46 | 1,199.46 |
| 103 | 1.11.3.9 | Noz Flange +Pipe Filler Pass Welding | 1d | 2018-03-08 11:03 A | 2018-03-08 19:03 A | 102 | 100% | 2018-03-08 11:03 | 2018-03-08 19:03 | 1d |  | TEAM_2Shift_Calendar-1 | SMAW Welder; SMAW Welding Machine; Helper | 23.99h | 23.99h | 749.74 | 749.74 | 749.74 |
| 104 | 1.11.3.10 | Radiography | 2.67d | 2018-03-08 19:04 A | 2018-03-12 08:25 A | 103 | 100% | 2018-03-08 19:04 | 2018-03-12 08:25 | 2.67d |  | TEAM_2Shift_Calendar-1 | SC (Work) | 8h | 8h |  |  |  |

Notes:
- 74: SB 127 UNS No. 4400
- 76: 1570x720x8T
- 95: SB 127 UNS No. 4400

| ID | WBS | Task | Duration | Start | Finish | Predecessors | Complete | Baseline start | Baseline finish | Baseline duration | Constraint | Calendar | Resources | Work | Actual work | Cost | Baseline cost | Actual cost |
| --- | --- | --- | --- | --- | --- | --- | --- | --- | --- | --- | --- | --- | --- | --- | --- | --- | --- | --- |
| 105 | 1.11.4 | **Assembly** | 24.76d | 2018-03-06 06:00 A | 2018-03-21 12:04 A |  | 100% | 2018-03-06 06:00 | 2018-03-21 12:04 | 24.76d |  | TEAM_2Shift_Calendar-1 |  | 617.22h | 617.22h | 20,254.05 | 20,254.05 | 20,254.05 |
| 106 | 1.11.4.1 | Dish to Shell Fitup & DPT | 5d | 2018-03-12 08:00 A | 2018-03-14 16:00 A | 50, 73 | 100% | 2018-03-12 08:00 | 2018-03-14 16:00 | 5d |  | TEAM_2Shift_Calendar-1 | Fitter; QC Engineer; SMAW Welding Machine; SAW Welder; Plate (Cost) [0.1%]; Helper | 39.99h | 39.99h | 1,583.2 | 1,583.2 | 1,583.2 |
| 107 | 1.11.4.2 | Inspection | 2d | 2018-03-14 16:00 A | 2018-03-15 16:00 A | 106 | 100% | 2018-03-14 16:00 | 2018-03-15 16:00 | 2d |  | TEAM_2Shift_Calendar-1 | QC Engineer; Helper | 16h | 16h | 530 | 530 | 530 |
| 108 | 1.11.4.3 | Welding | 2d | 2018-03-15 16:00 A | 2018-03-16 16:00 A | 107 | 100% | 2018-03-15 16:00 | 2018-03-16 16:00 | 2d |  | TEAM_2Shift_Calendar-1 | Helper; SMAW Welding Machine; Consumables (Cost) [0.1%]; SAW Welder | 48h | 48h | 1,620.06 | 1,620.06 | 1,620.06 |
| 109 | 1.11.4.4 | B/C Grinding&Dp check | 1d | 2018-03-16 16:01 A | 2018-03-17 08:01 A | 108 | 100% | 2018-03-16 16:01 | 2018-03-17 08:01 | 1d |  | TEAM_2Shift_Calendar-1 | Helper; Grinder | 16h | 16h |  |  |  |
| 110 | 1.11.4.5 | Inward welding | 3.25d | 2018-03-16 06:00 A | 2018-03-17 16:00 A | 109 | 100% | 2018-03-16 06:00 | 2018-03-17 16:00 | 3.25d |  | TEAM_2Shift_Calendar-1 | SAW Welder; TIG Welding Machine [107.8%] | 16h | 16h | 529.38 | 529.38 | 529.38 |
| 111 | 1.11.4.6 | Radiography | 3.75d | 2018-03-16 06:00 A | 2018-03-17 20:00 A | 110 | 100% | 2018-03-16 06:00 | 2018-03-17 20:00 | 3.75d |  | TEAM_2Shift_Calendar-1 | SC (Work) [133.4%] | 8h | 8h |  |  |  |
| 112 | 1.11.4.7 | Shell Flange Fitup & DPT | 3.13d | 2018-03-07 08:00 A | 2018-03-08 17:02 A | 111, 30 | 100% | 2018-03-07 08:00 | 2018-03-08 17:02 | 3.13d | start no earlier than 2018-03-03 08:00 | TEAM_2Shift_Calendar-1 | Fitter; QC Engineer; Forging Std (Cost) [0.1%]; Helper | 49h | 49h | 2,195.91 | 2,195.91 | 2,195.91 |
| 113 | 1.11.4.8 | Welding | 2d | 2018-03-08 17:00 A | 2018-03-09 17:00 A | 112 | 100% | 2018-03-08 17:00 | 2018-03-09 17:00 | 2d |  | TEAM_2Shift_Calendar-1 | Helper; SMAW Welding Machine; Consumables (Cost) [0.1%]; SAW Welder | 48h | 48h | 1,900 | 1,900 | 1,900 |
| 114 | 1.11.4.9 | Radiography | 3d | 2018-03-09 17:02 A | 2018-03-13 09:02 A | 113 | 100% | 2018-03-09 17:02 | 2018-03-13 09:02 | 3d |  | TEAM_2Shift_Calendar-1 | SC (Work) | 8h | 8h |  |  |  |
| 115 | 1.11.4.10 | Nozzle Fitup with Shell | 6.13d | 2018-03-08 08:00 A | 2018-03-13 09:02 A | 73, 94, 114 | 100% | 2018-03-08 08:00 | 2018-03-13 09:02 | 6.13d | start no earlier than 2018-03-09 08:00 | TEAM_2Shift_Calendar-1 | Fitter; QC Engineer; SMAW Welding Machine; SAW Welder; Pipe (Cost) [0.1%]; Plate (Cost) [0.1%]; Helper | 32h | 32h | 1,062.59 | 1,062.59 | 1,062.59 |
| 116 | 1.11.4.11 | Inspection | 1.13d | 2018-03-09 08:00 A | 2018-03-09 17:02 A | 115 | 100% | 2018-03-09 08:00 | 2018-03-09 17:02 | 1.13d |  | TEAM_2Shift_Calendar-1 | QC Engineer; Helper | 16h | 16h | 325.92 | 325.92 | 325.92 |
| 117 | 1.11.4.12 | Welding | 2d | 2018-03-09 17:00 A | 2018-03-12 17:00 A | 116 | 100% | 2018-03-09 17:00 | 2018-03-12 17:00 | 2d |  | TEAM_2Shift_Calendar-1 | Helper; SMAW Welding Machine; Consumables (Cost) [0.1%]; SAW Welder | 48h | 48h | 1,900 | 1,900 | 1,900 |
| 118 | 1.11.4.13 | Radiography | 1d | 2018-03-12 17:02 A | 2018-03-13 09:02 A | 117 | 100% | 2018-03-12 17:02 | 2018-03-13 09:02 | 1d |  | TEAM_2Shift_Calendar-1 | SC (Work) | 8h | 8h |  |  |  |
| 119 | 1.11.4.14 | Inspection(Internal) | 0.95d | 2018-03-13 09:02 A | 2018-03-13 16:38 A | 118 | 100% | 2018-03-13 09:02 | 2018-03-13 16:38 | 0.95d |  | TEAM_2Shift_Calendar-1 | QC Engineer; Helper | 8h | 8h | 203.33 | 203.33 | 203.33 |
| 120 | 1.11.4.15 | nozzle fitup with dish | 3.38d | 2018-03-06 06:00 A | 2018-03-07 17:02 A | 119 | 100% | 2018-03-06 06:00 | 2018-03-07 17:02 | 3.38d |  | TEAM_2Shift_Calendar-1 | Fitter; Helper; Crane | 8.75h | 8.75h | 377.18 | 377.18 | 377.18 |
| 121 | 1.11.4.16 | fitup Inspection | 3.13d | 2018-03-07 08:00 A | 2018-03-08 17:02 A | 120 | 100% | 2018-03-07 08:00 | 2018-03-08 17:02 | 3.13d |  | TEAM_2Shift_Calendar-1 | QC Engineer; Helper | 24h | 24h | 799.92 | 799.92 | 799.92 |
| 122 | 1.11.4.17 | nozzle weld with dish | 2d | 2018-03-08 17:00 A | 2018-03-09 17:00 A | 121 | 100% | 2018-03-08 17:00 | 2018-03-09 17:00 | 2d |  | TEAM_2Shift_Calendar-1 | TIG Welding Machine; SAW Welder; Helper | 48h | 48h | 1,900 | 1,900 | 1,900 |
| 123 | 1.11.4.18 | nozzle inside b/c grind & dp check | 0.5d | 2018-03-09 17:02 A | 2018-03-09 21:02 A | 122 | 100% | 2018-03-09 17:02 | 2018-03-09 21:02 | 0.5d |  | TEAM_2Shift_Calendar-1 | Helper; Grinder | 8h | 8h |  |  |  |
| 124 | 1.11.4.19 | nozzle inside weld | 1d | 2018-03-09 21:02 A | 2018-03-12 13:02 A | 123 | 100% | 2018-03-09 21:02 | 2018-03-12 13:02 | 1d |  | TEAM_2Shift_Calendar-1 | TIG Welding Machine; SAW Welder; Helper | 24h | 24h |  |  |  |
| 125 | 1.11.4.20 | flush grind & Dp check | 0.5d | 2018-03-12 13:02 A | 2018-03-12 17:02 A | 124 | 100% | 2018-03-12 13:02 | 2018-03-12 17:02 | 0.5d |  | TEAM_2Shift_Calendar-1 | Helper; Grinder | 8h | 8h |  |  |  |
| 126 | 1.11.4.21 | Lug and Padfitup with shell | 4h | 2018-03-12 17:02 A | 2018-03-12 21:02 A | 125 | 100% | 2018-03-12 17:02 | 2018-03-12 21:02 | 4h |  | TEAM_2Shift_Calendar-1 | Fitter; Helper; Crane | 12h | 12h |  |  |  |
| 127 | 1.11.4.22 | Stiffner plate fitup & welding | 1d | 2018-03-12 21:02 A | 2018-03-13 13:02 A | 126 | 100% | 2018-03-12 21:02 | 2018-03-13 13:02 | 1d |  | TEAM_2Shift_Calendar-1 | Helper; TIG Welding Machine; SAW Welder; Fitter | 32h | 32h | 1,500 | 1,500 | 1,500 |
| 128 | 1.11.4.23 | internals assembly | 3d | 2018-03-16 06:00 A | 2018-03-17 14:00 A | 127 | 100% | 2018-03-16 06:00 | 2018-03-17 14:00 | 3d |  | TEAM_2Shift_Calendar-1 | Fitter; Helper; Crane | 48h | 48h | 1,900 | 1,900 | 1,900 |
| 129 | 1.11.4.24 | Hydrotest | 1.13d | 2018-03-19 08:00 A | 2018-03-19 17:02 A | 128 | 100% | 2018-03-19 08:00 | 2018-03-19 17:02 | 1.13d |  | TEAM_2Shift_Calendar-1 | Helper [200%]; Fitter | 27h | 27h | 1,476.56 | 1,476.56 | 1,476.56 |
| 130 | 1.11.4.25 | Final Inspection | 1.38d | 2018-03-20 08:00 A | 2018-03-20 19:02 A | 129 | 100% | 2018-03-20 08:00 | 2018-03-20 19:02 | 1.38d |  | TEAM_2Shift_Calendar-1 | Helper; QC Engineer | 16.5h | 16.5h | 450 | 450 | 450 |
| 131 | 1.11.4.26 | Pickling | 1.13d | 2018-03-20 19:02 A | 2018-03-21 12:04 A | 130 | 100% | 2018-03-20 19:02 | 2018-03-21 12:04 | 1.13d |  | TEAM_2Shift_Calendar-1 | Helper |  |  |  |  |  |

| ID | WBS | Task | Duration | Start | Finish | Predecessors | Complete | Baseline start | Baseline finish | Baseline duration | Resources | Work | Actual work |
| --- | --- | --- | --- | --- | --- | --- | --- | --- | --- | --- | --- | --- | --- |
| 132 | 1.11.5 | **Despatch clearance** | 8.55d | 2018-03-21 12:04 A | 2018-03-31 17:30 A |  | 100% | 2018-03-21 12:04 | 2018-03-31 17:30 | 8.55d |  | 17h | 17h |
| 133 | 1.11.5.1 | Despatch | 0.94d | 2018-03-21 12:04 A | 2018-03-22 11:36 A | 105 | 100% | 2018-03-21 12:04 | 2018-03-22 11:36 | 0.94d | Marketing; Finance-New | 6h | 6h |
| 134 | 1.11.5.2 | Transportation | 34.6h | 2018-03-22 08:30 A | 2018-03-28 11:06 A | 133FS+3d | 100% | 2018-03-22 08:30 | 2018-03-28 11:06 | 34.6h | Store | 3h | 3h |
| 135 | 1.11.5.3 | PBG Submission(10%) | 3d | 2018-03-29 08:30 A | 2018-03-31 17:30 A | 134 | 100% | 2018-03-29 08:30 | 2018-03-31 17:30 | 3d | Finance | 8h | 8h |
