# 4238-HPCL-EIL-11-E-49

Schedule from MS Project, 2017-12-13 to 2018-09-10, costs in Rs., A marks actual dates.

## Calendars

- TEAM_Stand_Calendar: Mon-Sat 08:30-12:30, 13:30-17:30; Sun off. Exceptions (off unless hours are given): 2017-01-13 to 2023-08-12 (2nd Sat, recurring), 2017-01-26 to 2036-01-26 (Republic Day, recurring), 2017-01-27 to 2023-08-26 (4th Sat, recurring), 2017-05-01 to 2036-05-01 (May Day, recurring), 2017-08-15 to 2036-08-15 (Independence Day, recurring), 2017-10-02 to 2036-10-02 (Gandhi Jayanti, recurring), 2018-01-15 (Thiruvalluvar Day'2018).
- TEAM_2Shift_Calendar-1: Mon-Sat 06:00-22:00; Sun off. Exceptions (off unless hours are given): 2017-01-13 to 2023-02-11 (2nd Sat, recurring), 2017-01-26 to 2036-01-26 (Republic Day, recurring), 2017-01-27 to 2023-08-26 (4th Sat, recurring), 2017-05-01 to 2036-05-01 (May Day, recurring), 2017-08-15 to 2036-08-15 (Indepdence Day, recurring), 2017-10-02 to 2036-10-02 (Gandhi Jayanti, recurring), 2018-01-15 (Thiruvalluvar Day'2018).

## Resources

| Resource | Rate |
| --- | --- |
| Marketing |  |
| PMO Head |  |
| Draftman |  |
| Client |  |
| PPC Engineer |  |
| QC Engineer |  |
| Purchase Eng |  |
| Helper | 50 |
| Store |  |
| PM |  |
| Crane |  |
| Fitter | 68.75 |
| Gas Cutter | 68.75 |
| OAGM |  |
| Grinder | 56.25 |
| Grinding Machine |  |
| SMAW Welder | 68.75 |
| SMAW Welding Machine |  |
| TIG Welder | 125 |
| TIG Welding Machine |  |
| Driller | 68.75 |
| Radial Drilling Machine |  |
| Cutting Machine |  |
| Lathe Operator | 120 |
| Lathe |  |
| Expanding Machine |  |
| Rolling Machine |  |
| SC (Work) |  |
| Design Engineer |  |
| Purchase Engineer |  |
| TPI (Cost) |  |
| SC (Cost) |  |
| SC Radiography (Cost) |  |
| Production Engineer |  |
| Forging Non-Std (Cost) |  |
| Forging Std (Cost) |  |
| Pipe (Cost) |  |
| Plate (Cost) |  |
| Rod (Cost) |  |
| Tube (Cost) |  |
| Tube Sheet (Cost) |  |
| Finance |  |

## Schedule

| ID | WBS | Task | Type | Duration | Start | Finish | Predecessors | Complete | Baseline start | Baseline finish | Baseline duration | Constraint | Resources | Work | Actual work |
| --- | --- | --- | --- | --- | --- | --- | --- | --- | --- | --- | --- | --- | --- | --- | --- |
| 1 | 1 | **Project Initiation** |  | 4d | 2017-12-13 A | 2017-12-18 A |  | 100% | 2017-12-13 | 2017-12-18 | 5d |  |  |  |  |
| 2 | 1.1 | PO Receipt | milestone | 0d | 2017-12-13 A | 2017-12-13 A |  | 100% | 2017-12-13 | 2017-12-13 | 1d |  | Marketing |  |  |
| 3 | 1.2 | Work Order | milestone | 0d | 2017-12-14 A | 2017-12-14 A | 2 | 100% | 2017-12-14 | 2017-12-14 | 1d |  | Marketing |  |  |
| 4 | 1.3 | CRM | milestone | 0h | 2017-12-18 A | 2017-12-18 A | 3FS+1d | 100% | 2017-12-18 | 2017-12-18 | 8h |  | PM; PMO Head; Marketing |  |  |
| 5 | 2 | **Design** |  | 53d | 2017-12-19 A | 2018-02-27 A |  | 100% | 2017-12-19 | 2018-03-03 | 57.25d |  |  |  |  |
| 6 | 2.1 | Drawing Preparation | milestone | 0d | 2017-12-19 A | 2017-12-19 A | 4 | 100% | 2017-12-19 | 2018-01-06 | 16d |  | Design Engineer; Draftman |  |  |
| 7 | 2.2 | Drawing Submission | milestone | 0d | 2017-12-21 A | 2017-12-21 A | 4FS+1d | 100% | 2017-12-20 | 2017-12-21 | 2d |  | Design Engineer |  |  |
| 8 | 2.3 | DCI Creation | milestone | 0d | 2018-01-17 A | 2018-01-17 A | 6 | 100% | 2018-01-08 | 2018-01-08 | 1d |  | Design Engineer |  |  |
| 9 | 2.4 | Drawing Approval | milestone | 0h | 2018-02-27 A | 2018-02-27 A | 8FS+15d | 100% | 2018-01-31 | 2018-01-31 | 2h |  | Client |  |  |
| 10 | 2.5 | Final machining sketch for Non std flanges,tube sheet and SRN |  | 1d | 2018-01-22 A | 2018-01-23 A | 8FS+5d | 100% | 2018-02-28 | 2018-03-03 | 3d |  | Design Engineer |  |  |
| 11 | 3 | **ABG** |  | 40d | 2018-02-27 A | 2018-04-17 A |  | 100% | 2018-01-31 | 2018-02-09 | 8d |  |  | 24h | 24h |
| 12 | 3.1 | ABG submission(5% code 2 approval) |  | 2d | 2018-02-27 A | 2018-02-28 A | 9 | 100% | 2018-01-31 | 2018-02-02 | 2d |  | Finance | 16h | 16h |
| 13 | 3.2 | ABG approval |  | 1d | 2018-04-17 A | 2018-04-17 A | 12FS+37d | 100% | 2018-02-08 | 2018-02-09 | 1d |  | Finance; Client | 8h | 8h |
| 14 | 4 | **Preliminary Details For Enquiry** |  | 0d | 2017-12-22 A | 2017-12-22 A |  | 100% | 2017-12-19 | 2017-12-22 | 4d |  |  |  |  |
| 15 | 4.1 | SA268 TP 405-Spacers,U Tube(OD=25.4,THK=2.1Min,Length-4877,NOS=435 | milestone | 0d | 2017-12-22 A | 2017-12-22 A | 3FS+3d | 100% | 2017-12-19 | 2017-12-22 | 4d |  | Design Engineer; PPC Engineer |  |  |
| 16 | 4.2 | Tube Sheet forging ,Channel side flanges, Nozzle flanges, SS 410 S Clad plate | milestone | 0d | 2017-12-22 A | 2017-12-22 A | 15SS | 100% | 2017-12-19 | 2017-12-22 | 4d |  | Design Engineer; PPC Engineer |  |  |
| 17 | 5 | **PR Issue** |  | 60d | 2017-12-22 A | 2018-03-09 A |  | 100% | 2017-12-25 | 2018-01-17 | 19d |  |  | 11h | 11h |
| 18 | 5.1 | Plates | milestone | 0d | 2018-01-17 A | 2018-01-17 A | 8FS+1d | 100% | 2018-01-10 | 2018-01-17 | 5d |  | Plate (Cost) [0.1%]; PPC Engineer |  |  |
| 19 | 5.2 | Rods |  | 1d | 2018-01-29 A | 2018-01-29 A | 8FS+1d | 100% | 2018-01-10 | 2018-01-17 | 5d |  | Rod (Cost) [0.1%]; PPC Engineer | 8h | 8h |
| 20 | 5.3 | Tubes | milestone | 0d | 2017-12-22 A | 2017-12-22 A | 15 | 100% | 2017-12-25 | 2017-12-26 | 2d |  | Tube (Cost); PPC Engineer |  |  |
| 21 | 5.4 | Forgings(Blank,Std) | milestone | 0d | 2017-12-22 A | 2017-12-22 A | 16 | 100% | 2017-12-25 | 2017-12-27 | 3d |  | Forging Std (Cost) [0.1%]; Tube Sheet (Cost) [0.1%]; PPC Engineer |  |  |
| 22 | 5.5 | Non Std Forgings | milestone | 0d | 2017-12-22 A | 2017-12-22 A | 16 | 100% | 2017-12-25 | 2017-12-27 | 3d |  | Forging Non-Std (Cost); PPC Engineer |  |  |
| 23 | 5.6 | Pipes | milestone | 0d | 2018-01-17 A | 2018-01-17 A | 8FS+1d | 100% | 2018-01-10 | 2018-01-17 | 5d |  | Pipe (Cost); PPC Engineer |  |  |
| 24 | 5.7 | Gaskets | milestone | 0d | 2018-01-25 A | 2018-01-25 A | 8FS+1d | 100% | 2018-01-10 | 2018-01-17 | 5d |  | PPC Engineer |  |  |
| 25 | 5.8 | Fastners | milestone | 0d | 2018-01-25 A | 2018-01-25 A | 8FS+1d | 100% | 2018-01-10 | 2018-01-17 | 5d |  | PPC Engineer |  |  |
| 26 | 5.9 | Consumables |  | 1d | 2018-03-09 A | 2018-03-09 A | 8FS+1d | 100% | 2018-01-10 | 2018-01-17 | 5d | finish no earlier than 2018-03-09 | PPC Engineer | 3h | 3h |

Notes:
- 17: Plates -SA 516 GR.60-16THK

| ID | WBS | Task | Duration | Start | Finish | Predecessors | Complete | Remaining | Baseline start | Baseline finish | Baseline duration | Total slack | Free slack | Constraint | Resources | Work | Actual work | Cost | Baseline cost | Actual cost |
| --- | --- | --- | --- | --- | --- | --- | --- | --- | --- | --- | --- | --- | --- | --- | --- | --- | --- | --- | --- | --- |
| 27 | 6 | **Material Ordering** | 105d | 2018-01-10 A | 2018-05-25 |  | 21% | 82.75d | 2018-01-06 | 2018-02-07 | 24d | 42d |  |  |  | 51h | 43h |  |  |  |
| 28 | 6.1 | Plates | 86d | 2018-02-02 A | 2018-05-22 | 18FS+48d | 1% | 85d | 2018-01-19 | 2018-01-29 | 7d | -15.5d | 0d |  | Plate (Cost) [0.1%]; Purchase Engineer | 5h | 3h |  |  |  |
| 29 | 6.2 | Rods | 2d | 2018-05-24 | 2018-05-25 | 19FS+90d |  |  | 2018-01-19 | 2018-01-29 | 7d | 42d | 0d |  | Rod (Cost) [0.1%]; Purchase Engineer | 2h |  |  |  |  |
| 30 | 6.3 | Tubes | 3d | 2018-01-10 A | 2018-01-12 A | 20FS+10d | 100% |  | 2018-01-08 | 2018-01-16 | 6d |  |  |  | Tube (Cost) [0.1%]; Purchase Engineer | 12h | 12h |  |  |  |
| 31 | 6.4 | Forgings(Blank,Std) | 2d | 2018-02-13 A | 2018-02-14 A | 21FS+8d | 100% |  | 2018-01-06 | 2018-01-16 | 7d |  |  |  | Forging Std (Cost) [0.1%]; Tube Sheet (Cost) [0.1%]; Purchase Engineer | 8h | 8h |  |  |  |
| 32 | 6.5 | Non Std Forgings | 2d | 2018-02-13 A | 2018-02-14 A | 22FS+8d | 100% |  | 2018-01-06 | 2018-01-16 | 7d |  |  |  | Forging Non-Std (Cost) [0.1%]; Purchase Engineer | 8h | 8h |  |  |  |
| 33 | 6.6 | Pipes | 13d | 2018-02-22 A | 2018-03-09 A | 23FS+8d | 100% |  | 2018-01-30 | 2018-02-01 | 3d |  |  | finish no earlier than 2018-03-06 | Pipe (Cost) [0.1%]; Purchase Engineer [162.5%] | 3h | 3h |  |  |  |
| 34 | 6.7 | Gaskets | 2d | 2018-02-15 A | 2018-02-16 A | 24FS+13d | 100% |  | 2018-02-05 | 2018-02-07 | 3d |  |  |  | Purchase Engineer | 4h | 4h |  |  |  |
| 35 | 6.8 | Fastners | 1d | 2018-02-02 A | 2018-02-02 A | 25FS+13d | 100% |  | 2018-02-05 | 2018-02-07 | 3d |  |  |  | Purchase Engineer | 3h | 3h |  |  |  |
| 36 | 6.9 | Consumables | 40d | 2018-04-02 A | 2018-05-22 | 26FS+26d | 20% | 32d | 2018-02-05 | 2018-02-07 | 3d | 44.5d | 0d |  | Purchase Engineer | 6h | 2h |  |  |  |
| 37 | 7 | **Material Receipt** | 41d | 2018-05-30 A | 2018-07-20 |  | 2% | 40.02d | 2018-04-10 | 2018-06-05 | 43d | 40d |  |  |  | 84h | 6h | 1,416.67 | 1,499.9 | 100 |
| 38 | 7.1 | Channel shell(16T+3T) SA 516Gr.60+SA240Gr.410S CLAD | 9d | 2018-06-22 A | 2018-07-03 | 28FS+40d | 6% | 8.5d | 2018-04-10 | 2018-04-11 | 1d | 13d |  |  | Helper; Store; Plate (Cost) [0.1%]; Crane | 6h | 6h | 100 | 200 | 100 |
| 39 | 7.2 | Plate(14T) - SA 240 GR.410S | 1d | 2018-07-19 | 2018-07-20 | 28FS+45d |  |  | 2018-04-10 | 2018-04-11 | 1d | 0d |  |  | Helper; Store; Plate (Cost) [0.1%]; Crane | 12h |  | 200 | 200 |  |
| 40 | 7.3 | Tie Rod -SS 410S- 32Nos | 1d | 2018-06-21 | 2018-06-22 | 29FS+20d |  |  | 2018-05-19 | 2018-05-21 | 1d | 42d | 0d |  | Store; Rod (Cost) [0.1%]; Helper | 2h |  | 50 | 33.33 |  |
| 41 | 7.4 | U-Tube-SA268 TP 405-435NOS | 1d | 2018-06-06 | 2018-06-07 | 30FS+110d |  |  | 2018-05-25 | 2018-05-28 | 1d | 55.87d | 14d |  | Helper; Store; Tube (Cost) [0.1%]; Crane | 6h |  | 100 | 100 |  |
| 42 | 7.5 | Support plate Ø1207.6X14T - SA 240 Gr.4105 | 1d | 2018-07-06 | 2018-07-07 | 28FS+35d |  |  | 2018-04-10 | 2018-04-11 | 1d | 50d |  |  | Helper; Store; Plate (Cost) [0.1%]; Crane | 8h |  | 133.33 | 133.33 |  |
| 43 | 7.6 | Spacer-SA 268 TP 405-160Nos | 1d | 2018-06-06 | 2018-06-07 | 30FS+110d |  |  | 2018-05-19 | 2018-05-21 | 1d | 54.5d | 13d |  | Helper; Store; Tube (Cost) [0.1%]; Crane | 2h |  | 33.33 | 33.33 |  |
| 44 | 7.7 | Blank Forging-SA 182 Gr.F6a Cl.1 | 1d | 2018-06-05 | 2018-06-06 | 31FS+86d |  |  | 2018-05-08 | 2018-05-09 | 1d | 50d | 0d |  | Helper; Store; Tube Sheet (Cost) [0.1%]; Crane | 12h |  | 200 | 200 |  |
| 45 | 7.8 | Std Forging-SA 105 | 1d | 2018-06-05 | 2018-06-06 | 31FS+86d |  |  | 2018-04-30 | 2018-05-02 | 1d | 54.12d | 7d |  | Helper; Store; Forging Std (Cost) [0.1%]; Crane | 9h |  | 150 | 150 |  |
| 46 | 7.9 | Channel Front,Cover FLG-SA 266 Gr.4+SS410S WD | 1d | 2018-06-05 | 2018-06-06 | 32FS+86d |  |  | 2018-04-30 | 2018-05-02 | 1d | 54.5d | 10d |  | Helper; Store; Forging Non-Std (Cost) [0.1%]; Crane | 12h |  | 200 | 200 |  |
| 47 | 7.10 | Pipe-SA 106 GR.B+SS410S WD (N1,N2) | 1d | 2018-06-02 | 2018-06-04 | 33FS+65d |  |  | 2018-04-19 | 2018-04-20 | 1d | 47.5d | 0d |  | Helper; Store; Pipe (Cost) [0.1%]; Crane | 6h |  | 100 | 100 |  |
| 48 | 7.11 | Gaskets | 1d | 2018-06-13 | 2018-06-14 | 34FS+90d |  |  | 2018-06-04 | 2018-06-05 | 1d | 69d |  |  | Helper; Store; Crane | 3h |  | 50 | 49.97 |  |
| 49 | 7.12 | Fasteners-SA 193 GR B7 | 1d | 2018-05-30 | 2018-05-31 | 35FS+90d |  |  | 2018-06-04 | 2018-06-05 | 1d | 80d |  |  | Helper; Store; Crane | 3h |  | 50 | 49.97 |  |
| 50 | 7.13 | Consumables-SS,CS | 1d | 2018-06-18 | 2018-06-19 | 36FS+20d |  |  | 2018-06-04 | 2018-06-05 | 1d | 44.5d | 0d |  | Helper; Store; Crane | 3h |  | 50 | 49.97 |  |

Notes:
- 27: Plates -SA 516 GR.60-16THK
- 40: Ø12X4723Lg
- 41: OD 25.4X2.11TX4877Staight length
- 42: 5 Nos
- 43: OD 25.4X2.1T
- 44: Ø1266X155T
- 45: Blind flange 3CNA,3CNB,3CNC,3CND SA 105+ss 410S WD...
- 46: OD 1414XID 1217X85T

| ID | WBS | Task | Duration | Start | Finish | Predecessors | Baseline start | Baseline finish | Baseline duration | Total slack | Free slack | Calendar | Resources | Work | Cost | Baseline cost |
| --- | --- | --- | --- | --- | --- | --- | --- | --- | --- | --- | --- | --- | --- | --- | --- | --- |
| 51 | 8 | **Fabrication 4238-11-E-49(M)-AKU** | 122.75d | 2018-06-08 | 2018-08-28 |  | 2018-05-29 | 2018-08-18 | 128.75d | 0.25d |  | TEAM_2Shift_Calendar-1 |  | 1338h | 54,951.25 | 88,528.18 |
| 52 | 8.1 | **Channel Fabrication** | 42d | 2018-07-20 | 2018-08-17 |  | 2018-06-25 | 2018-07-20 | 41.75d | 0d |  | TEAM_2Shift_Calendar-1 |  | 182h | 7,206.62 | 9,208.49 |
| 53 | 8.1.1 | Clad&Base Plate Marking | 1d | 2018-07-20 | 2018-07-20 | 38, 39 | 2018-06-25 | 2018-06-25 | 1d | 0d |  | TEAM_2Shift_Calendar-1 | Helper; Plate (Cost) [0.1%]; Fitter | 10h | 593.75 | 950 |
| 54 | 8.1.2 | Plate Stamping | 4h | 2018-07-20 | 2018-07-20 | 53 | 2018-06-25 | 2018-06-25 | 4h | 0d |  | TEAM_2Shift_Calendar-1 | TPI (Cost) [0.1%]; QC Engineer | 4h |  | 446.28 |
| 55 | 8.1.3 | Plate cutting | 1d | 2018-07-20 | 2018-07-21 | 54 | 2018-06-25 | 2018-06-26 | 1d | 0d |  | TEAM_2Shift_Calendar-1 | OAGM; Gas Cutter | 16h | 550 | 550 |
| 56 | 8.1.4 | send for cladding | 4h | 2018-07-21 | 2018-07-21 | 55 | 2018-06-26 | 2018-06-26 | 4h | 0d |  | TEAM_2Shift_Calendar-1 | Helper; Crane; Store | 12h | 200 | 300 |
| 57 | 8.1.5 | Cladding receipt | 5h | 2018-08-09 | 2018-08-09 | 56FS+30d | 2018-07-13 | 2018-07-13 | 4h | 0d |  | TEAM_2Shift_Calendar-1 | Helper; Crane; Store | 4h | 66.67 | 258.06 |
| 58 | 8.1.6 | Channel pre-pinching | 6h | 2018-08-09 | 2018-08-10 | 57 | 2018-07-13 | 2018-07-16 | 6h | 0d |  | TEAM_2Shift_Calendar-1 | Helper; Fitter | 12h | 712.5 | 712.5 |
| 59 | 8.1.7 | Pre-pinching marking and cutting | 4h | 2018-08-10 | 2018-08-10 | 58 | 2018-07-16 | 2018-07-16 | 4h | 0d |  | TEAM_2Shift_Calendar-1 | Helper; Gas Cutter; OAGM; Fitter | 16h | 750 | 750 |
| 60 | 8.1.8 | Edge preparation | 3h | 2018-08-10 | 2018-08-10 | 59 | 2018-07-16 | 2018-07-16 | 3h | 0d |  | TEAM_2Shift_Calendar-1 | Grinding Machine; Grinder | 6h | 168.75 | 168.75 |
| 61 | 8.1.9 | Channel Rolling | 8h | 2018-08-10 | 2018-08-13 | 60 | 2018-07-16 | 2018-07-17 | 8h | 0d |  | TEAM_2Shift_Calendar-1 | Helper; Rolling Machine; Fitter | 24h | 950 | 1,316.65 |
| 62 | 8.1.10 | Channel LS fit up | 5h | 2018-08-13 | 2018-08-13 | 61 | 2018-07-17 | 2018-07-17 | 5h | 0d |  | TEAM_2Shift_Calendar-1 | Helper; SMAW Welder; SMAW Welding Machine; Fitter | 20h | 937.5 | 937.5 |
| 63 | 8.1.11 | Inspection | 5.97h | 2018-08-13 | 2018-08-13 | 62 | 2018-07-17 | 2018-07-17 | 4h | 0d |  | TEAM_2Shift_Calendar-1 | Helper; QC Engineer | 4h | 133.7 | 200 |
| 64 | 8.1.12 | LS Welding | 6h | 2018-08-13 | 2018-08-14 | 63 | 2018-07-17 | 2018-07-18 | 6h | 0.25d | 0d | TEAM_2Shift_Calendar-1 | SMAW Welder; SMAW Welding Machine; Helper | 18h | 712.5 | 712.5 |
| 65 | 8.1.13 | LS Backchip Grinding | 4h | 2018-08-14 | 2018-08-14 | 64 | 2018-07-18 | 2018-07-18 | 4h | 0.25d | 0d | TEAM_2Shift_Calendar-1 | Grinding Machine; Grinder | 8h | 225 | 225 |
| 66 | 8.1.14 | DP Check | 3h | 2018-08-14 | 2018-08-14 | 65 | 2018-07-18 | 2018-07-18 | 3h | 0.25d | 0d | TEAM_2Shift_Calendar-1 | Fitter | 3h | 206.25 | 206.25 |
| 67 | 8.1.15 | Backchip Welding | 5h | 2018-08-14 | 2018-08-16 | 66 | 2018-07-18 | 2018-07-18 | 5h | 0.25d | 0d | TEAM_2Shift_Calendar-1 | SMAW Welder; SMAW Welding Machine; Helper | 15h | 593.75 | 593.75 |
| 68 | 8.1.16 | Radiography | 1d | 2018-08-16 | 2018-08-16 | 67 | 2018-07-18 | 2018-07-19 | 1d | 0.25d | 0d | TEAM_2Shift_Calendar-1 | SC Radiography (Cost) [0.1%] |  |  |  |
| 69 | 8.1.17 | Channel Re-rolling | 6h | 2018-08-16 | 2018-08-16 | 68 | 2018-07-19 | 2018-07-19 | 6h | 0.25d | 0d | TEAM_2Shift_Calendar-1 | Helper; Fitter | 4h | 237.5 | 712.5 |
| 70 | 8.1.18 | Flush Grinding | 3h | 2018-08-16 | 2018-08-17 | 69 | 2018-07-19 | 2018-07-20 | 3h | 0.25d |  | TEAM_2Shift_Calendar-1 | Grinding Machine; Grinder | 6h | 168.75 | 168.75 |
| 71 | 8.2 | **Flange to Channel assembly** | 107.75d | 2018-06-19 | 2018-08-28 |  | 2018-08-06 | 2018-08-18 | 18.75d | 0.25d |  | TEAM_2Shift_Calendar-1 |  | 311h | 12,028.62 | 16,610.08 |
| 72 | 8.2.1 | weld overlay | 1d | 2018-06-19 | 2018-06-19 | 46, 50 | 2018-08-06 | 2018-08-06 | 1d | 88.5d | 0d | TEAM_2Shift_Calendar-1 | SMAW Welder; SMAW Welding Machine; Forging Non-Std (Cost) [0.1%]; Helper | 24h | 950 | 593.75 |
| 73 | 8.2.2 | pre machinig | 6h | 2018-06-19 | 2018-06-20 | 72 | 2018-08-06 | 2018-08-07 | 6h | 88.5d | 0d | TEAM_2Shift_Calendar-1 | Grinding Machine; Grinder | 12h | 337.5 | 56.25 |
| 74 | 8.2.3 | weld overlay | 1d | 2018-06-20 | 2018-06-20 | 73 | 2018-08-07 | 2018-08-07 | 1d | 88.5d | 0d | TEAM_2Shift_Calendar-1 | SMAW Welder; SMAW Welding Machine; Helper | 24h | 950 | 356.25 |
| 75 | 8.2.4 | final Machining | 1d | 2018-06-20 | 2018-06-21 | 74 | 2018-08-07 | 2018-08-08 | 1d | 88.5d | 88.25d | TEAM_2Shift_Calendar-1 | Grinding Machine; Grinder | 16h | 450 | 112.5 |
| 76 | 8.2.5 | Channel front end flange fit up | 6h | 2018-08-17 | 2018-08-18 | 52FS+1d, 75FS+1d | 2018-08-08 | 2018-08-08 | 6h | 0.25d | 0d | TEAM_2Shift_Calendar-1 | Helper; SMAW Welder; SMAW Welding Machine; Fitter | 15h | 703.12 | 1,500 |
| 77 | 8.2.6 | Inspection | 4h | 2018-08-18 | 2018-08-18 | 76 | 2018-08-08 | 2018-08-09 | 4h | 0.25d | 0d | TEAM_2Shift_Calendar-1 | Fitter; QC Engineer | 8h | 547.72 | 100 |
| 78 | 8.2.7 | Channel front end flange welding | 1d | 2018-08-18 | 2018-08-18 | 77 | 2018-08-09 | 2018-08-09 | 1d | 0.25d | 0d | TEAM_2Shift_Calendar-1 | SMAW Welder; SMAW Welding Machine; Helper | 24h | 950 | 950 |
| 79 | 8.2.8 | Flange CS Backchip Grinding | 4h | 2018-08-18 | 2018-08-20 | 78 | 2018-08-09 | 2018-08-09 | 4h | 0.25d | 0d | TEAM_2Shift_Calendar-1 | Grinding Machine; Grinder | 8h | 225 | 112.5 |
| 80 | 8.2.9 | DP Check | 2h | 2018-08-20 | 2018-08-20 | 79 | 2018-08-09 | 2018-08-10 | 2h | 0.25d | 0d | TEAM_2Shift_Calendar-1 | Fitter | 2h | 137.5 | 137.5 |
| 81 | 8.2.10 | Backchip Welding | 1d | 2018-08-20 | 2018-08-20 | 80 | 2018-08-10 | 2018-08-10 | 1d | 0.25d | 0d | TEAM_2Shift_Calendar-1 | SMAW Welder; SMAW Welding Machine; Helper | 24h | 950 | 950 |
| 82 | 8.2.11 | Radiography | 1d | 2018-08-20 | 2018-08-21 | 81 | 2018-08-10 | 2018-08-13 | 1d | 0.25d | 0d | TEAM_2Shift_Calendar-1 | SC Radiography (Cost) [0.1%] |  |  |  |
| 83 | 8.2.12 | Flush Grinding | 4h | 2018-08-21 | 2018-08-21 | 82 | 2018-08-13 | 2018-08-13 | 4h | 0.25d | 0d | TEAM_2Shift_Calendar-1 | Grinding Machine; Grinder | 8h | 225 | 225 |
| 84 | 8.2.13 | weld overlay | 1d | 2018-08-21 | 2018-08-21 | 83 | 2018-08-13 | 2018-08-13 | 1d | 0.25d | 0d | TEAM_2Shift_Calendar-1 | SMAW Welder; SMAW Welding Machine; Helper | 24h | 950 | 593.75 |
| 85 | 8.2.14 | Pre machining | 5h | 2018-08-21 | 2018-08-22 | 84 | 2018-08-13 | 2018-08-14 | 5h | 0.25d | 0d | TEAM_2Shift_Calendar-1 | Grinding Machine; Grinder | 10h | 281.25 | 168.75 |
| 86 | 8.2.15 | weld overlay | 1d | 2018-08-22 | 2018-08-22 | 85 | 2018-08-14 | 2018-08-14 | 1d | 0.25d | 0d | TEAM_2Shift_Calendar-1 | SMAW Welder; SMAW Welding Machine; Helper | 24h | 950 | 356.25 |
| 87 | 8.2.16 | final machining | 5h | 2018-08-22 | 2018-08-23 | 86 | 2018-08-14 | 2018-08-14 | 5h | 0.25d | 0d | TEAM_2Shift_Calendar-1 | Grinding Machine; Grinder | 10h | 281.25 | 112.5 |
| 88 | 8.2.17 | Channel back end flange fit up | 5h | 2018-08-23 | 2018-08-23 | 87 | 2018-08-14 | 2018-08-16 | 5h | 0.25d | 0d | TEAM_2Shift_Calendar-1 | Helper; SMAW Welder; SMAW Welding Machine; Fitter | 20h | 937.5 | 937.5 |
| 89 | 8.2.18 | Inspection | 11h | 2018-08-23 | 2018-08-24 | 88 | 2018-08-16 | 2018-08-16 | 5h | 0.25d | 0d | TEAM_2Shift_Calendar-1 | Fitter; QC Engineer | 10h | 381.94 | 322.58 |
| 90 | 8.2.19 | Channel Back end flange welding | 8h | 2018-08-24 | 2018-08-24 | 89 | 2018-08-16 | 2018-08-17 | 8h | 0.25d | 0d | TEAM_2Shift_Calendar-1 | SMAW Welder; SMAW Welding Machine; Helper | 24h | 950 | 950 |
| 91 | 8.2.20 | Flange CS Backchip Grinding | 3h | 2018-08-24 | 2018-08-24 | 90 | 2018-08-17 | 2018-08-17 | 3h | 0.25d | 0d | TEAM_2Shift_Calendar-1 | Grinding Machine; Grinder | 6h | 168.75 | 168.75 |
| 92 | 8.2.21 | DP Check | 2h | 2018-08-24 | 2018-08-24 | 91 | 2018-08-17 | 2018-08-17 | 2h | 0.25d | 0d | TEAM_2Shift_Calendar-1 | Fitter | 2h | 137.5 | 137.5 |
| 93 | 8.2.22 | Backchip Welding | 1d | 2018-08-24 | 2018-08-27 | 92 | 2018-08-17 | 2018-08-17 | 1d | 0.25d | 0d | TEAM_2Shift_Calendar-1 | SMAW Welder; SMAW Welding Machine; Helper | 10h | 395.83 | 7,600 |
| 94 | 8.2.23 | Radiography | 1d | 2018-08-27 | 2018-08-27 | 93 | 2018-08-17 | 2018-08-18 | 1d | 0.25d | 0d | TEAM_2Shift_Calendar-1 | SC Radiography (Cost) [0.1%] |  |  |  |
| 95 | 8.2.24 | Flush Grinding | 3h | 2018-08-27 | 2018-08-28 | 94 | 2018-08-18 | 2018-08-18 | 3h | 0.25d |  | TEAM_2Shift_Calendar-1 | Grinding Machine; Grinder | 6h | 168.75 | 168.75 |

| ID | WBS | Task | Duration | Start | Finish | Predecessors | Baseline start | Baseline finish | Baseline duration | Total slack | Free slack | Calendar | Resources | Work | Cost | Baseline cost |
| --- | --- | --- | --- | --- | --- | --- | --- | --- | --- | --- | --- | --- | --- | --- | --- | --- |
| 96 | 8.3 | **Channel side nozzle fabrication** | 106.62d | 2018-06-13 | 2018-08-20 |  | 2018-05-29 | 2018-08-13 | 120.5d | 5.12d | 0d | TEAM_2Shift_Calendar-1 |  | 302h | 11,606.18 | 12,576.7 |
| 97 | 8.3.1 | Pipe marking | 4h | 2018-06-13 | 2018-06-13 | 47FS+15d | 2018-05-29 | 2018-05-29 | 4h | 94.5d | 0d | TEAM_2Shift_Calendar-1 | Helper; Forging Std (Cost) [0.1%]; Pipe (Cost) [0.1%]; Fitter | 8h | 475 | 593.75 |
| 98 | 8.3.2 | Pipe Stamping | 7h | 2018-06-13 | 2018-06-14 | 97 | 2018-05-29 | 2018-05-29 | 4h | 94.5d | 0d | TEAM_2Shift_Calendar-1 | TPI (Cost) [0.1%]; QC Engineer | 4h |  | 600 |
| 99 | 8.3.3 | Pipe Cutting | 6h | 2018-06-14 | 2018-06-14 | 98 | 2018-05-29 | 2018-05-30 | 6h | 94.5d | 0d | TEAM_2Shift_Calendar-1 | OAGM; Gas Cutter | 12h | 412.5 | 412.5 |
| 100 | 8.3.4 | Pipe Edge preparation | 4h | 2018-06-14 | 2018-06-14 | 99 | 2018-05-30 | 2018-05-30 | 4h | 94.5d | 0d | TEAM_2Shift_Calendar-1 | Grinding Machine; Grinder | 8h | 225 | 225 |
| 101 | 8.3.5 | Pipe to flange fitup | 4h | 2018-06-14 | 2018-06-15 | 45, 100 | 2018-05-30 | 2018-05-30 | 4h | 94.5d | 0d | TEAM_2Shift_Calendar-1 | Helper; SMAW Welder; SMAW Welding Machine; Fitter | 16h | 750 | 750 |
| 102 | 8.3.6 | Pipe to flange fitup inspection | 4h | 2018-06-15 | 2018-06-15 | 101 | 2018-05-30 | 2018-05-30 | 4h | 94.5d | 0d | TEAM_2Shift_Calendar-1 | Helper; QC Engineer | 12h | 343.68 | 239.2 |
| 103 | 8.3.7 | Pipe to flange welding | 6h | 2018-06-15 | 2018-06-15 | 102 | 2018-05-30 | 2018-05-31 | 6h | 94.5d | 0d | TEAM_2Shift_Calendar-1 | SMAW Welder; SMAW Welding Machine; Helper | 18h | 712.5 | 712.5 |
| 104 | 8.3.8 | Pipe inside welding backchip grinding | 3h | 2018-06-15 | 2018-06-16 | 103 | 2018-05-31 | 2018-05-31 | 3h | 94.5d | 0d | TEAM_2Shift_Calendar-1 | Grinding Machine; Grinder | 6h | 168.75 | 168.75 |
| 105 | 8.3.9 | Pipe inside welding | 8h | 2018-06-16 | 2018-06-16 | 104 | 2018-05-31 | 2018-05-31 | 8h | 94.5d | 0d | TEAM_2Shift_Calendar-1 | SMAW Welder; SMAW Welding Machine; Helper | 24h | 950 | 950 |
| 106 | 8.3.10 | Radiography | 1d | 2018-06-16 | 2018-06-18 | 105 | 2018-05-31 | 2018-06-01 | 1d | 94.5d | 2.25d | TEAM_2Shift_Calendar-1 | SC Radiography (Cost) [0.1%] |  |  |  |
| 107 | 8.3.11 | weld overlay | 2d | 2018-06-19 | 2018-06-20 | 50, 106 | 2018-08-06 | 2018-08-07 | 2d | 92.25d | 0d | TEAM_2Shift_Calendar-1 | SMAW Welder; SMAW Welding Machine; Helper | 48h | 1,900 | 1,900 |
| 108 | 8.3.12 | pre machinig | 5h | 2018-06-20 | 2018-06-20 | 107 | 2018-08-07 | 2018-08-07 | 5h | 92.25d | 0d | TEAM_2Shift_Calendar-1 | Grinding Machine; Grinder | 10h | 281.25 | 281.25 |
| 109 | 8.3.13 | weldover lay | 1d | 2018-06-20 | 2018-06-20 | 108 | 2018-08-07 | 2018-08-07 | 1d | 92.25d | 0d | TEAM_2Shift_Calendar-1 | SMAW Welder; SMAW Welding Machine; Helper | 24h | 950 | 950 |
| 110 | 8.3.14 | final machinig | 6h | 2018-06-20 | 2018-06-21 | 109 | 2018-08-07 | 2018-08-08 | 6h | 92.25d | 0d | TEAM_2Shift_Calendar-1 | Grinding Machine; Grinder | 12h | 337.5 | 337.5 |
| 111 | 8.3.15 | Pipe inside welding flush grinding | 4h | 2018-06-21 | 2018-06-21 | 110 | 2018-08-08 | 2018-08-08 | 4h | 92.25d | 87.12d | TEAM_2Shift_Calendar-1 | Grinding Machine; Grinder | 8h | 225 | 225 |
| 112 | 8.3.16 | Orientation marking | 5h | 2018-08-17 | 2018-08-17 | 52, 111 | 2018-08-08 | 2018-08-08 | 5h | 5.12d | 0d | TEAM_2Shift_Calendar-1 | Helper; Fitter | 4h | 237.5 | 593.75 |
| 113 | 8.3.17 | nozzle opening | 1d | 2018-08-17 | 2018-08-17 | 112 | 2018-08-08 | 2018-08-09 | 1d | 5.12d | 0d | TEAM_2Shift_Calendar-1 | OAGM; Gas Cutter | 16h | 550 | 550 |
| 114 | 8.3.18 | grinding | 5h | 2018-08-17 | 2018-08-18 | 113 | 2018-08-09 | 2018-08-09 | 5h | 5.12d | 0d | TEAM_2Shift_Calendar-1 | Grinding Machine; Grinder | 10h | 281.25 | 281.25 |
| 115 | 8.3.19 | Nozzle to Channel fitup | 8h | 2018-08-18 | 2018-08-18 | 114 | 2018-08-09 | 2018-08-10 | 8h | 5.12d | 0d | TEAM_2Shift_Calendar-1 | Helper; SMAW Welder; SMAW Welding Machine; Fitter | 32h | 1,500 | 1,500 |
| 116 | 8.3.20 | Inspection | 3h | 2018-08-18 | 2018-08-18 | 115 | 2018-08-10 | 2018-08-10 | 3h | 5.12d | 0d | TEAM_2Shift_Calendar-1 | Helper; Fitter | 6h | 356.25 | 356.25 |
| 117 | 8.3.21 | welding | 1d | 2018-08-18 | 2018-08-20 | 116 | 2018-08-10 | 2018-08-10 | 1d | 5.12d | 0d | TEAM_2Shift_Calendar-1 | SMAW Welder; SMAW Welding Machine; Helper | 24h | 950 | 950 |
| 118 | 8.3.22 | Radiography | 1d | 2018-08-20 | 2018-08-20 | 117 | 2018-08-10 | 2018-08-13 | 1d | 5.12d |  | TEAM_2Shift_Calendar-1 | SC Radiography (Cost) [0.1%] |  |  |  |
| 119 | 8.4 | **Tubesheet Drilling** | 8d | 2018-06-08 | 2018-06-14 |  | 2018-06-06 | 2018-06-12 | 8d | 100d | 16.88d | TEAM_2Shift_Calendar-1 |  | 16h | 598.34 | 1,182.52 |
| 120 | 8.4.1 | Send for drilling | 1d | 2018-06-08 | 2018-06-11 | 44FS+5d | 2018-06-06 | 2018-06-06 | 1d | 100d | 0d | TEAM_2Shift_Calendar-1 | Helper; Tube Sheet (Cost) [0.1%]; Store | 4h | 100 | 300.63 |
| 121 | 8.4.2 | Drilling and Taping | 6d | 2018-06-11 | 2018-06-14 | 120 | 2018-06-06 | 2018-06-11 | 6d | 100d | 0d | TEAM_2Shift_Calendar-1 | SC (Cost) [0.1%] |  |  |  |
| 122 | 8.4.3 | Drilled T/Sheet Receipt | 4h | 2018-06-14 | 2018-06-14 | 121 | 2018-06-11 | 2018-06-11 | 4h | 100d | 0d | TEAM_2Shift_Calendar-1 | Helper; Store | 4h | 100 | 342.86 |
| 123 | 8.4.4 | Inspection | 4h | 2018-06-14 | 2018-06-14 | 122 | 2018-06-11 | 2018-06-12 | 4h | 100d |  | TEAM_2Shift_Calendar-1 | Helper; QC Engineer | 8h | 398.34 | 539.03 |

| ID | WBS | Task | Duration | Start | Finish | Predecessors | Baseline start | Baseline finish | Baseline duration | Total slack | Free slack | Calendar | Resources | Work | Cost | Baseline cost |
| --- | --- | --- | --- | --- | --- | --- | --- | --- | --- | --- | --- | --- | --- | --- | --- | --- |
| 124 | 8.5 | **Baffle Fabrication** | 17d | 2018-07-20 | 2018-07-31 |  | 2018-06-25 | 2018-07-04 | 17d | 41d |  | TEAM_2Shift_Calendar-1 |  | 144h | 3,850.31 | 23,046.72 |
| 125 | 8.5.1 | Plate Marking | 4h | 2018-07-20 | 2018-07-20 | 39 | 2018-06-25 | 2018-06-25 | 4h | 41d | 0d | TEAM_2Shift_Calendar-1 | Helper; Plate (Cost) [0.1%]; Fitter | 8h | 475 | 475 |
| 126 | 8.5.2 | Plate Cutting | 1d | 2018-07-20 | 2018-07-20 | 125 | 2018-06-25 | 2018-06-25 | 1d | 41d | 0d | TEAM_2Shift_Calendar-1 | OAGM; Gas Cutter | 16h | 550 | 550 |
| 127 | 8.5.3 | Template Drilling | 10h | 2018-07-20 | 2018-07-21 | 126 | 2018-06-25 | 2018-06-26 | 10h | 41d | 0d | TEAM_2Shift_Calendar-1 | Helper; Fitter | 20h | 1,187.5 | 3,800 |
| 128 | 8.5.4 | Stacking | 4h | 2018-07-21 | 2018-07-21 | 127 | 2018-06-26 | 2018-06-26 | 4h | 41d | 0d | TEAM_2Shift_Calendar-1 | Fitter [100.8%]; Helper | 8h | 475.31 | 196.72 |
| 129 | 8.5.5 | Drilling | 7d | 2018-07-21 | 2018-07-26 | 128 | 2018-06-26 | 2018-06-30 | 7d | 41d | 0d | TEAM_2Shift_Calendar-1 | SC (Cost) [0.1%] |  |  |  |
| 130 | 8.5.6 | OD Machining | 2d | 2018-07-26 | 2018-07-27 | 129 | 2018-06-30 | 2018-07-02 | 2d | 41d | 0d | TEAM_2Shift_Calendar-1 | SC (Work) | 24h |  |  |
| 131 | 8.5.7 | Baffle holes Radius | 2d | 2018-07-27 | 2018-07-30 | 130 | 2018-07-02 | 2018-07-03 | 2d | 41d | 0d | TEAM_2Shift_Calendar-1 | SC (Work) | 16h |  |  |
| 132 | 8.5.8 | Slot Cutting& Griding | 1d | 2018-07-30 | 2018-07-30 | 131 | 2018-07-03 | 2018-07-03 | 1d | 41d | 0d | TEAM_2Shift_Calendar-1 | Grinding Machine; Cutting Machine; Grinder | 24h | 450 | 450 |
| 133 | 8.5.9 | Baffles Reassembly | 6h | 2018-07-30 | 2018-07-31 | 132 | 2018-07-03 | 2018-07-04 | 6h | 41d | 0d | TEAM_2Shift_Calendar-1 | Fitter; Helper | 12h | 712.5 | 712.5 |
| 134 | 8.5.10 | Baffle Re-drilling | 1d | 2018-07-31 | 2018-07-31 | 133 | 2018-07-04 | 2018-07-04 | 1d | 41d |  | TEAM_2Shift_Calendar-1 | SC (Work) | 16h |  |  |
| 135 | 8.6 | **Tube bundle fabrication and assembly** | 13.62d | 2018-06-22 | 2018-06-30 |  | 2018-06-29 | 2018-07-06 | 13.63d | 83.12d | 78d | TEAM_2Shift_Calendar-1 |  | 311h | 15,716.25 | 15,716.25 |
| 136 | 8.6.1 | Tie Rod Cutting | 3h | 2018-06-22 | 2018-06-22 | 40 | 2018-06-29 | 2018-06-29 | 3h | 83.12d | 0d | TEAM_2Shift_Calendar-1 | Helper; Rod (Cost) [0.1%]; Cutting Machine | 6h | 150 | 150 |
| 137 | 8.6.2 | Threading | 1d | 2018-06-22 | 2018-06-22 | 136 | 2018-06-29 | 2018-06-29 | 1d | 83.12d | 0d | TEAM_2Shift_Calendar-1 | Lathe Operator; Lathe | 16h | 960 | 960 |
| 138 | 8.6.3 | Spacer Marking | 4h | 2018-06-22 | 2018-06-25 | 43, 137 | 2018-06-29 | 2018-06-30 | 4h | 83.12d | 0d | TEAM_2Shift_Calendar-1 | Helper; Tube (Cost) [0.1%]; Fitter | 8h | 475 | 475 |
| 139 | 8.6.4 | Cutting | 5h | 2018-06-25 | 2018-06-25 | 138 | 2018-06-30 | 2018-06-30 | 5h | 83.12d | 0d | TEAM_2Shift_Calendar-1 | Helper; Cutting Machine | 10h | 250 | 250 |
| 140 | 8.6.5 | Grinding | 3h | 2018-06-25 | 2018-06-25 | 139 | 2018-06-30 | 2018-06-30 | 3h | 83.12d | 0d | TEAM_2Shift_Calendar-1 | Grinding Machine; Cutting Machine; Grinder | 9h | 168.75 | 168.75 |
| 141 | 8.6.6 | Baffle Plate With skeleton | 1d | 2018-06-25 | 2018-06-26 | 140 | 2018-06-30 | 2018-07-02 | 1d | 83.12d | 0d | TEAM_2Shift_Calendar-1 | Helper [400%]; Fitter [200%] | 48h | 2,700 | 2,700 |
| 142 | 8.6.7 | Tube Insertion to tube sheet | 2d | 2018-06-26 | 2018-06-27 | 41, 119, 141 | 2018-07-02 | 2018-07-03 | 2d | 83.12d | 0d | TEAM_2Shift_Calendar-1 | Helper [400%]; Tube (Cost) [0.1%]; Fitter [200%] | 96h | 5,400 | 5,400 |
| 143 | 8.6.8 | Sliding& sealing fitup & welding | 1d | 2018-06-27 | 2018-06-27 | 142 | 2018-07-03 | 2018-07-03 | 1d | 83.12d | 0d | TEAM_2Shift_Calendar-1 | Helper; TIG Welder; TIG Welding Machine; Fitter | 32h | 1,950 | 1,950 |
| 144 | 8.6.9 | Sliding& sealing grinding | 4h | 2018-06-27 | 2018-06-27 | 143 | 2018-07-03 | 2018-07-03 | 4h | 83.12d | 0d | TEAM_2Shift_Calendar-1 | Grinding Machine; Cutting Machine; Grinder | 12h | 225 | 225 |
| 145 | 8.6.10 | Tube to Tubesheet Expansion | 2d | 2018-06-27 | 2018-06-28 | 144 | 2018-07-03 | 2018-07-04 | 2d | 83.12d | 0d | TEAM_2Shift_Calendar-1 | Fitter; Helper; Expanding Machine | 48h | 1,900 | 1,900 |
| 146 | 8.6.11 | Tube to Tubesheet Welding | 8h | 2018-06-28 | 2018-06-29 | 145 | 2018-07-04 | 2018-07-05 | 8h | 83.12d | 0d | TEAM_2Shift_Calendar-1 | TIG Welder; TIG Welding Machine; Helper | 24h | 1,400 | 1,400 |
| 147 | 8.6.12 | DP Check | 2h | 2018-06-29 | 2018-06-29 | 146 | 2018-07-05 | 2018-07-05 | 2h | 83.12d | 0d | TEAM_2Shift_Calendar-1 | Fitter | 2h | 137.5 | 137.5 |
| 148 | 8.6.13 | Heat Treatment | 3d | 2018-06-29 | 2018-06-30 | 147 | 2018-07-05 | 2018-07-06 | 3d | 83.12d |  | TEAM_2Shift_Calendar-1 | SC (Cost) [0.1%] |  |  |  |

| ID | WBS | Task | Duration | Start | Finish | Predecessors | Baseline start | Baseline finish | Baseline duration | Total slack | Free slack | Calendar | Resources | Work | Cost | Baseline cost |
| --- | --- | --- | --- | --- | --- | --- | --- | --- | --- | --- | --- | --- | --- | --- | --- | --- |
| 149 | 8.7 | **Final assembly&testing** | 5d | 2018-08-20 | 2018-08-23 |  | 2018-08-13 | 2018-08-16 | 5d | 5.12d |  | TEAM_2Shift_Calendar-1 |  | 72h | 3,944.93 | 10,037.5 |
| 150 | 8.7.1 | Channel to Tube bundle assembly | 2d | 2018-08-20 | 2018-08-21 | 135, 96 | 2018-08-13 | 2018-08-14 | 2d | 5.12d | 0d | TEAM_2Shift_Calendar-1 | Helper [400%]; Fitter [200%] | 32h | 1,800 | 4,162.5 |
| 151 | 8.7.2 | Inspection | 8h | 2018-08-21 | 2018-08-22 | 150 | 2018-08-14 | 2018-08-14 | 4h | 5.12d | 0d | TEAM_2Shift_Calendar-1 | Fitter; Helper; QC Engineer | 8h | 344.93 | 475 |
| 152 | 8.7.3 | Tube side hydrotesting | 2d | 2018-08-22 | 2018-08-23 | 151 | 2018-08-14 | 2018-08-16 | 2d | 5.38d |  | TEAM_2Shift_Calendar-1 | Helper [400%]; Fitter [200%] | 32h | 1,800 | 5,400 |
| 153 | 9 | **Despatch Clearance** | 8d | 2018-08-31 | 2018-09-10 |  | 2018-09-03 | 2018-09-21 | 15d | 0d |  |  |  | 34h | 150 | 149.92 |
| 154 | 9.1 | Despatch-4238(A) | 1d | 2018-08-31 | 2018-08-31 | 51FS+3d | 2018-09-14 | 2018-09-21 | 1d | 0d |  |  | Helper [300%]; Store | 4h | 150 | 149.92 |
| 155 | 9.2 | Final documentation and despatch clearance | 5d | 2018-09-04 | 2018-09-10 | 154FS+2d | 2018-09-03 | 2018-09-07 | 5d | 0d |  |  | Marketing; Store | 30h |  |  |
| 156 | 10 | **PBG** | 4d | 2018-08-31 | 2018-09-04 |  | 2018-09-14 | 2018-09-18 | 4d | 4d |  |  |  | 32h |  | -0 |
| 157 | 10.1 | PBG Submission (10%) | 3d | 2018-08-31 | 2018-09-03 | 154SS | 2018-09-14 | 2018-09-17 | 3d | 4d | 0d |  | Finance | 24h |  |  |
| 158 | 10.2 | PBG Approval | 1d | 2018-09-04 | 2018-09-04 | 157 | 2018-09-18 | 2018-09-18 | 1d | 4d |  |  | Finance | 8h |  |  |
