# 4238-7001

Schedule from MS Project, 2017-12-13 to 2018-09-06, costs in Rs., A marks actual dates.

## Calendars

- TEAM_Stand_Calendar: Mon-Sat 08:30-12:30, 13:30-17:30; Sun off. Exceptions (off unless hours are given): 2017-01-13 to 2023-08-12 (2nd Sat, recurring), 2017-01-26 to 2036-01-26 (Republic Day, recurring), 2017-01-27 to 2023-08-26 (4th Sat, recurring), 2017-05-01 to 2036-05-01 (May Day, recurring), 2017-08-15 to 2036-08-15 (Independence Day, recurring), 2017-10-02 to 2036-10-02 (Gandhi Jayanti, recurring), 2018-01-15 (Thiruvalluvar Day'2018).
- TEAM_2Shift_Calendar-1: Mon-Sat 06:00-22:00; Sun off. Exceptions (off unless hours are given): 2017-01-13 to 2023-02-11 (2nd Sat, recurring), 2017-01-26 to 2036-01-26 (Republic Day, recurring), 2017-01-27 to 2023-08-26 (4th Sat, recurring), 2017-05-01 to 2036-05-01 (May Day, recurring), 2017-08-15 to 2036-08-15 (Indepdence Day, recurring), 2017-10-02 to 2036-10-02 (Gandhi Jayanti, recurring), 2018-01-15 (Thiruvalluvar Day'2018).

## Resources

| Resource | Rate |
| --- | --- |
| Marketing |  |
| PMO Head |  |
| Draftman |  |
| Client |  |
| PPC Engineer |  |
| QC Engineer |  |
| Purchase Eng |  |
| Helper | 50 |
| Store |  |
| PM |  |
| Crane |  |
| Fitter | 68.75 |
| Gas Cutter | 68.75 |
| OAGM |  |
| Grinder | 56.25 |
| Grinding Machine |  |
| SMAW Welder | 68.75 |
| SMAW Welding Machine |  |
| TIG Welder | 125 |
| TIG Welding Machine |  |
| Driller | 68.75 |
| Radial Drilling Machine |  |
| Cutting Machine |  |
| Lathe Operator | 120 |
| Lathe |  |
| Expanding Machine |  |
| Rolling Machine |  |
| SC (Work) |  |
| Design Engineer |  |
| Purchase Engineer |  |
| TPI (Cost) |  |
| SC (Cost) |  |
| SC Radiography (Cost) |  |
| Production Engineer |  |
| Painter |  |
| Forging Non-Std (Cost) |  |
| Forging Std (Cost) |  |
| Pipe (Cost) |  |
| Plate (Cost) |  |
| Rod (Cost) |  |
| Tube (Cost) |  |
| Tube Sheet (Cost) |  |
| Finance |  |

## Schedule

| ID | WBS | Task | Duration | Start | Finish | Predecessors | Complete | Remaining | Baseline start | Baseline finish | Baseline duration | Total slack | Free slack | Constraint | Resources | Work | Actual work |
| --- | --- | --- | --- | --- | --- | --- | --- | --- | --- | --- | --- | --- | --- | --- | --- | --- | --- |
| 1 | 1 | **Project Initiation** | 5d | 2017-12-13 08:30 A | 2017-12-18 17:30 A |  | 100% |  | 2017-12-13 08:30 | 2017-12-18 17:30 | 5d |  |  |  |  | 28h | 28h |
| 2 | 1.1 | PO Receipt | 1d | 2017-12-13 08:30 A | 2017-12-13 17:30 A |  | 100% |  | 2017-12-13 08:30 | 2017-12-13 17:30 | 1d |  |  |  | Marketing | 8h | 8h |
| 3 | 1.2 | Work Order | 1d | 2017-12-14 08:30 A | 2017-12-14 17:30 A | 2 | 100% |  | 2017-12-14 08:30 | 2017-12-14 17:30 | 1d |  |  |  | Marketing | 8h | 8h |
| 4 | 1.3 | CRM | 8h | 2017-12-18 08:30 A | 2017-12-18 17:30 A | 3FS+1d | 100% |  | 2017-12-18 08:30 | 2017-12-18 17:30 | 8h |  |  |  | PM; PMO Head; Marketing | 12h | 12h |
| 5 | 2 | **Design** | 53.25d | 2017-12-19 08:30 A | 2018-02-27 10:30 A |  | 100% |  | 2017-12-19 08:30 | 2018-02-27 10:30 | 53.25d |  |  |  |  | 138h | 138h |
| 6 | 2.1 | Drawing Preparation | 16d | 2017-12-19 08:30 A | 2018-01-06 17:30 A | 4 | 100% |  | 2017-12-19 08:30 | 2018-01-06 17:30 | 16d |  |  |  | Design Engineer; Draftman | 98h | 98h |
| 7 | 2.2 | DCI Creation | 2d | 2017-12-21 08:30 A | 2017-12-22 17:30 A | 4FS+1d | 100% |  | 2017-12-21 08:30 | 2017-12-22 17:30 | 2d |  |  |  | Design Engineer | 16h | 16h |
| 8 | 2.3 | Drawing Submission | 1d | 2018-01-17 08:30 A | 2018-01-17 17:30 A | 6 | 100% |  | 2018-01-17 08:30 | 2018-01-17 17:30 | 1d |  |  |  | Design Engineer | 8h | 8h |
| 9 | 2.4 | Drawing Approval | 2h | 2018-02-27 08:30 A | 2018-02-27 10:30 A | 8FS+15d | 100% |  | 2018-02-27 08:30 | 2018-02-27 10:30 | 2h |  |  |  | Client | 2h | 2h |
| 10 | 2.5 | Final machining sketch for Non std flanges,tube sheet and SRN | 4d | 2018-01-23 08:30 A | 2018-01-29 17:30 A | 9FS+22d | 100% |  | 2018-01-23 08:30 | 2018-01-29 17:30 | 4d |  |  |  | Design Engineer | 14h | 14h |
| 11 | 3 | **Preliminary Details For Enquiry** | 3d | 2017-12-22 08:30 A | 2017-12-26 17:30 A |  | 100% |  | 2017-12-22 08:30 | 2017-12-26 17:30 | 3d |  |  |  |  | 21h | 21h |
| 12 | 3.1 | SA213 T11-Spacers, Tube(OD=19.05,THK=2.11MIN,Length=4267,NOS=188 | 3d | 2017-12-22 08:30 A | 2017-12-26 17:30 A | 3FS+3d | 100% |  | 2017-12-22 08:30 | 2017-12-26 17:30 | 3d |  |  |  | Design Engineer; PPC Engineer | 10h | 10h |
| 13 | 3.2 | Forgings-Tube Sheet(SA336 F11 CL.2),Channel Flanges(SA 336 F11 Cl.2),Nozzle Flanges(SA 182 F11 CL.2) | 3d | 2017-12-22 08:30 A | 2017-12-26 17:30 A | 12SS | 100% |  | 2017-12-22 08:30 | 2017-12-26 17:30 | 3d |  |  |  | Design Engineer; PPC Engineer | 11h | 11h |
| 14 | 4 | **PR Issue** | 52d | 2018-01-02 08:30 A | 2018-03-09 17:30 A |  | 100% |  | 2018-01-02 08:30 | 2018-03-09 17:30 | 52d |  |  |  |  | 35h | 35h |
| 15 | 4.1 | Plates | 2d | 2018-01-25 08:30 A | 2018-01-29 17:30 A | 8FS+1d | 100% |  | 2018-01-25 08:30 | 2018-01-29 17:30 | 2d |  |  |  | Plate (Cost) [0.1%]; PPC Engineer | 4h | 4h |
| 16 | 4.2 | Rods | 2d | 2018-01-25 08:30 A | 2018-01-29 17:30 A | 8FS+1d | 100% |  | 2018-01-25 08:30 | 2018-01-29 17:30 | 2d |  |  |  | Rod (Cost) [0.1%]; PPC Engineer | 2h | 2h |
| 17 | 4.3 | Tubes | 2d | 2018-01-02 08:30 A | 2018-01-03 17:30 A | 12 | 100% |  | 2018-01-02 08:30 | 2018-01-03 17:30 | 2d |  |  |  | Tube (Cost) [0.1%]; PPC Engineer | 8h | 8h |
| 18 | 4.4 | Forgings(Blank,Std) | 2d | 2018-01-25 08:30 A | 2018-01-29 17:30 A | 13 | 100% |  | 2018-01-25 08:30 | 2018-01-29 17:30 | 2d |  |  |  | Forging Std (Cost) [0.1%]; Tube Sheet (Cost) [0.1%]; PPC Engineer | 8h | 8h |
| 19 | 4.5 | Non Std Forgings | 2d | 2018-01-25 08:30 A | 2018-01-29 17:30 A | 13 | 100% |  | 2018-01-25 08:30 | 2018-01-29 17:30 | 2d |  |  |  | Forging Non-Std (Cost) [0.1%]; PPC Engineer | 4h | 4h |
| 20 | 4.6 | Pipes | 2d | 2018-01-25 08:30 A | 2018-01-29 17:30 A | 8FS+1d | 100% |  | 2018-01-25 08:30 | 2018-01-29 17:30 | 2d |  |  |  | Pipe (Cost) [0.1%]; PPC Engineer | 2h | 2h |
| 21 | 4.7 | Gaskets | 1d | 2018-01-29 08:30 A | 2018-01-29 17:30 A | 8FS+1d | 100% |  | 2018-01-29 08:30 | 2018-01-29 17:30 | 1d |  |  |  | PPC Engineer | 2h | 2h |
| 22 | 4.8 | Fastners | 1d | 2018-01-29 08:30 A | 2018-01-29 17:30 A | 8FS+1d | 100% |  | 2018-01-29 08:30 | 2018-01-29 17:30 | 1d |  |  |  | PPC Engineer | 2h | 2h |
| 23 | 4.9 | Consumables | 1d | 2018-03-09 08:30 A | 2018-03-09 17:30 A | 8FS+1d | 100% |  | 2018-03-09 08:30 | 2018-03-09 17:30 | 1d |  |  | finish no earlier than 2018-03-09 17:30 | PPC Engineer | 3h | 3h |
| 24 | 5 | **Material ordering** | 96d | 2018-01-20 08:30 A | 2018-05-23 17:30 |  | 55% | 43.03d | 2018-01-20 08:30 | 2018-04-25 17:30 | 75d | 54d |  |  |  | 52h | 46h |
| 25 | 5.1 | Plates | 12d | 2018-01-31 08:30 A | 2018-02-14 17:30 A | 15FS+1d | 100% |  | 2018-01-31 08:30 | 2018-02-14 17:30 | 12d |  |  |  | Plate (Cost) [0.1%]; Purchase Engineer | 6h | 6h |
| 26 | 5.2 | Rods | 7d | 2018-05-16 08:30 | 2018-05-23 17:30 | 16FS+83d |  |  | 2018-04-18 08:30 | 2018-04-25 17:30 | 7d | 30.5d | 0d |  | Rod (Cost) [0.1%]; Purchase Engineer | 4h |  |
| 27 | 5.3 | Tubes | 7d | 2018-01-20 08:30 A | 2018-01-30 17:30 A | 17FS+10d | 100% |  | 2018-01-20 08:30 | 2018-01-30 17:30 | 7d |  |  |  | Tube (Cost) [0.1%]; Purchase Engineer [140%] | 11h | 11h |
| 28 | 5.4 | Forgings(Blank,Std) | 3d | 2018-02-12 08:30 A | 2018-02-14 17:30 A | 18FS+8d | 100% |  | 2018-02-12 08:30 | 2018-02-14 17:30 | 3d |  |  |  | Forging Std (Cost) [0.1%]; Tube Sheet (Cost) [0.1%]; Purchase Engineer | 8h | 8h |
| 29 | 5.5 | Non Std Forgings | 3d | 2018-02-12 08:30 A | 2018-02-14 17:30 A | 19FS+8d | 100% |  | 2018-02-12 08:30 | 2018-02-14 17:30 | 3d |  |  |  | Forging Non-Std (Cost) [0.1%]; Purchase Engineer | 8h | 8h |
| 30 | 5.6 | Pipes | 12d | 2018-02-23 08:30 A | 2018-03-09 17:30 A | 20FS+8d | 100% |  | 2018-02-23 08:30 | 2018-03-09 17:30 | 12d |  |  | finish no earlier than 2018-03-06 17:30 | Pipe (Cost) [0.1%]; Purchase Engineer [171%] | 4h | 4h |
| 31 | 5.7 | Gaskets | 2d | 2018-02-15 08:30 A | 2018-02-16 17:30 A | 21FS+13d | 100% |  | 2018-02-15 08:30 | 2018-02-16 17:30 | 2d |  |  |  | Purchase Engineer | 4h | 4h |
| 32 | 5.8 | Fastners | 1d | 2018-02-02 08:30 A | 2018-02-02 17:30 A | 22FS+13d | 100% |  | 2018-02-02 08:30 | 2018-02-02 17:30 | 1d |  |  | finish no earlier than 2018-02-26 17:30 | Purchase Engineer | 3h | 3h |
| 33 | 5.9 | Consumables | 40d | 2018-04-02 08:30 A | 2018-05-22 17:30 | 23FS+27d | 20% | 32d | 2018-04-02 08:30 | 2018-04-25 17:30 | 20d | 55d | 0d |  | Purchase Engineer | 4h | 2h |

Notes:
- 14: Plates -SA 387 GR.11 CL.2-(10THK-Dish,6THK-Baffle)...
- 24: Plates -SA 387 GR.11 CL.2-(10THK-Dish,6THK-Baffle)...

| ID | WBS | Task | Duration | Start | Finish | Predecessors | Complete | Remaining | Baseline start | Baseline finish | Baseline duration | Total slack | Free slack | Calendar | Resources | Work | Actual work | Cost | Baseline cost | Actual cost |
| --- | --- | --- | --- | --- | --- | --- | --- | --- | --- | --- | --- | --- | --- | --- | --- | --- | --- | --- | --- | --- |
| 34 | 6 | **Material Receipt** | 101d | 2018-02-22 08:30 A | 2018-07-02 08:31 |  | 33% | 67.36d | 2018-02-22 08:30 | 2018-08-22 08:31 | 141d | 55d |  |  |  | 55h | 23h | 1,108.33 | 1,108.33 | 458.33 |
| 35 | 6.1 | Shell 12'' NBX4091Lg-SA 335P11 | 3h | 2018-03-27 08:30 A | 2018-03-27 11:30 A | 25FS+56d | 100% |  | 2018-03-27 08:30 | 2018-03-27 11:30 | 3h |  |  |  | Helper; Store; Pipe (Cost) [0.1%]; Crane | 3h | 3h | 50 | 50 | 50 |
| 36 | 6.2 | Channel shell 12'' NBX465Lg - SA 335P11 | 2h | 2018-03-27 08:30 A | 2018-03-27 10:30 A | 25FS+56d | 100% |  | 2018-03-27 08:30 | 2018-03-27 10:30 | 2h |  |  |  | Helper; Store; Pipe (Cost) [0.1%]; Crane | 2h | 2h | 33.33 | 33.33 | 33.33 |
| 37 | 6.3 | Channel Bonnet -387 Gr.11 CL.2 -4 Nos | 1d | 2018-02-22 08:30 A | 2018-02-22 17:30 A | 25FS+6d | 100% |  | 2018-02-22 08:30 | 2018-02-22 17:30 | 1d |  |  |  | Helper; Store; Plate (Cost) [0.1%]; Crane | 4.5h | 4.5h | 75 | 75 | 75 |
| 38 | 6.4 | Tube sheet Ø450X60T-SA 336 F11 CL.2 | 1d | 2018-06-02 08:30 | 2018-06-04 08:31 | 28FS+84d |  |  | 2018-06-02 08:30 | 2018-06-04 08:31 | 1d | 45d | 0d |  | Helper; Store; Tube Sheet (Cost) [0.1%]; Crane | 2h |  | 33.33 | 33.33 |  |
| 39 | 6.5 | Channel Flange - SA 336 F11 CL.2 - 4 NOS | 1d | 2018-06-02 08:30 | 2018-06-04 08:31 | 29FS+84d |  |  | 2018-05-16 08:30 | 2018-05-17 08:31 | 1d | 48.88d | 3d |  | Helper; Store; Forging Non-Std (Cost) [0.1%]; Crane | 2h |  | 33.33 | 33.33 |  |
| 40 | 6.6 | Tubes OD 19.05x2.11t x 4267Lg SA 213 T11 | 1d | 2018-06-07 08:30 | 2018-06-08 08:31 | 27FS+100d |  |  | 2018-06-07 08:30 | 2018-06-08 08:31 | 1d | 73d |  |  | Helper; Store; Tube (Cost) [0.1%]; Crane | 8h |  | 133.33 | 133.33 |  |
| 41 | 6.7 | Baffle Plate Ø301.8 X 6T - SA 387 Gr.11 CL.2 | 1d | 2018-02-22 08:30 A | 2018-02-22 17:30 A | 25FS+6d | 100% |  | 2018-02-22 08:30 | 2018-02-22 17:30 | 1d |  |  |  | Helper; Store; Plate (Cost) [0.1%]; Crane | 4.5h | 4.5h | 75 | 75 | 75 |
| 42 | 6.8 | Tie Rod Ø10 - SA 739 B11 | 1d | 2018-06-27 08:30 | 2018-06-28 08:31 | 26FS+26d |  |  | 2018-08-13 08:30 | 2018-08-14 08:31 | 1d | 30.5d | 0d |  | Store; Rod (Cost) [0.1%]; Helper | 2h |  | 50 | 50 |  |
| 43 | 6.9 | Spacers OD 19.05 X 2.11T - SA 213 T11 | 1d | 2018-06-13 08:30 | 2018-06-14 08:31 | 26FS+15d |  |  | 2018-08-13 08:30 | 2018-08-14 08:31 | 1d | 41d | 0d |  | Store; Tube (Cost) [0.1%]; Helper | 2h |  | 50 | 50 |  |
| 44 | 6.10 | Plate(20T,16T,12T) IS 2062 Gr.B | 1d | 2018-06-04 08:30 | 2018-06-05 08:31 | 25FS+85d |  |  | 2018-04-26 08:30 | 2018-04-27 08:31 | 1d | 2.12d | 0d |  | Helper; Store; Plate (Cost) [0.1%]; Crane | 6h |  | 100 | 100 |  |
| 45 | 6.11 | Pad Plate(12T,10T) SA 387 Gr.11 CL.2 | 1d | 2018-04-26 08:30 A | 2018-04-27 08:31 A | 25FS+56d | 100% |  | 2018-04-26 08:30 | 2018-04-27 08:31 | 1d |  |  |  | Store; Plate (Cost) [0.1%]; Helper | 4h | 4h | 100 | 100 | 100 |
| 46 | 6.12 | Pipe SA 335 P11 | 3h | 2018-03-27 08:30 A | 2018-03-27 11:30 A | 30FS+70d | 100% |  | 2018-03-27 08:30 | 2018-03-27 11:30 | 3h |  |  |  | Store; Pipe (Cost) [0.1%]; Helper | 3h | 3h | 75 | 75 | 75 |
| 47 | 6.13 | Std Forgings SA 182 F11 CL.2 | 1d | 2018-06-02 08:30 | 2018-06-04 08:31 | 28FS+84d |  |  | 2018-06-02 08:30 | 2018-06-04 08:31 | 1d | 77d |  |  | Store; Forging Std (Cost) [0.1%]; Helper | 4h |  | 100 | 100 |  |
| 48 | 6.14 | Insulation cleat(8T,6T) SA 387 Gr.11 CL.2 | 1d | 2018-04-26 08:30 A | 2018-04-27 08:31 A | 25FS+56d | 100% |  | 2018-04-26 08:30 | 2018-04-27 08:31 | 1d |  |  |  | Store; Plate (Cost) [0.1%]; Helper | 2h | 2h | 50 | 50 | 50 |
| 49 | 6.15 | Gaskets | 1d | 2018-06-13 08:30 | 2018-06-14 08:31 | 31FS+90d |  |  | 2018-06-13 08:30 | 2018-06-14 08:31 | 1d | 69d |  |  | Store; Helper | 2h |  | 50 | 50 |  |
| 50 | 6.16 | Fasteners-SA 193 GR B7 | 1d | 2018-05-30 08:30 | 2018-05-31 08:31 | 32FS+90d |  |  | 2018-05-30 08:30 | 2018-05-31 08:31 | 1d | 80d |  |  | Store; Helper | 2h |  | 50 | 50 |  |
| 51 | 6.17 | Consumables | 1d | 2018-06-30 08:30 | 2018-07-02 08:31 | 33FS+30d |  |  | 2018-08-21 08:30 | 2018-08-22 08:31 | 1d | 55d |  |  | Store; Helper | 2h |  | 50 | 50 |  |
| 52 | 7 | **Fabrication 4238-103-E-7001N A(N) BEM Type(A)** | 177.12d | 2018-05-03 11:30 A | 2018-08-23 20:30 |  | 2% | 172.8d | 2018-05-04 10:30 | 2018-09-04 21:31 | 193.38d | 4.37d | 0d | TEAM_2Shift_Calendar-1 |  | 2645.46h | 15h | 118,670.94 | 119,752.46 | 340.62 |
| 53 | 7.1 | **Dish Forming** | 32.88d | 2018-06-02 09:30 | 2018-06-22 16:30 |  |  |  | 2018-05-04 17:30 | 2018-05-25 08:30 | 32.88d | 100.87d |  | TEAM_2Shift_Calendar-1 |  | 234h |  | 9,181.25 | 9,181.25 |  |
| 54 | 7.1.1 | Inward Inspection | 2d | 2018-06-02 09:30 | 2018-06-04 09:30 | 37FS+155d |  |  | 2018-05-04 17:30 | 2018-05-05 17:30 | 2d | 100.87d | 0d | TEAM_2Shift_Calendar-1 | QC Engineer; Plate (Cost) [0.1%]; Fitter | 4h |  | 137.5 | 137.5 |  |
| 55 | 7.1.2 | **Dish Preparation** | 20.75d | 2018-06-04 09:30 | 2018-06-16 15:30 |  |  |  | 2018-05-05 17:30 | 2018-05-19 07:30 | 20.75d | 100.87d |  | TEAM_2Shift_Calendar-1 |  | 96h |  | 4,131.25 | 4,131.25 |  |
| 56 | 7.1.2.1 | Dish Blank Marking | 8h | 2018-06-04 09:30 | 2018-06-04 17:30 | 54 |  |  | 2018-05-05 17:30 | 2018-05-07 09:30 | 8h | 100.87d | 0d | TEAM_2Shift_Calendar-1 | Helper; Fitter | 16h |  | 950 | 950 |  |
| 57 | 7.1.2.2 | Dish Blank Mkg Inspection | 3h | 2018-06-04 17:30 | 2018-06-04 20:30 | 56 |  |  | 2018-05-07 09:30 | 2018-05-07 12:30 | 3h | 100.87d | 0d | TEAM_2Shift_Calendar-1 | Fitter | 3h |  | 206.25 | 206.25 |  |
| 58 | 7.1.2.3 | Dish Blank Mkg Stamping | 1d | 2018-06-04 20:30 | 2018-06-05 12:30 | 57 |  |  | 2018-05-07 12:30 | 2018-05-07 20:30 | 1d | 100.87d | 0d | TEAM_2Shift_Calendar-1 | TPI (Cost) [0.1%]; QC Engineer | 2h |  |  |  |  |
| 59 | 7.1.2.4 | Transfer For Cutting | 3h | 2018-06-05 12:30 | 2018-06-05 15:30 | 58 |  |  | 2018-05-07 20:30 | 2018-05-08 07:30 | 3h | 100.87d | 0d | TEAM_2Shift_Calendar-1 | Helper [300%] | 9h |  | 450 | 450 |  |
| 60 | 7.1.2.5 | Dish Blank Cutting | 6h | 2018-06-05 15:30 | 2018-06-05 21:30 | 59 |  |  | 2018-05-08 07:30 | 2018-05-08 13:30 | 6h | 100.87d | 0d | TEAM_2Shift_Calendar-1 | Gas Cutter; OAGM; Helper | 18h |  | 712.5 | 712.5 |  |
| 61 | 7.1.2.6 | Dish Blank OD Grinding | 6h | 2018-06-05 21:30 | 2018-06-06 11:30 | 60 |  |  | 2018-05-08 13:30 | 2018-05-08 19:30 | 6h | 100.87d | 0d | TEAM_2Shift_Calendar-1 | Grinding Machine; Grinder | 12h |  | 337.5 | 337.5 |  |
| 62 | 7.1.2.7 | Dish Blank Offloading For Forming | 4h | 2018-06-06 11:30 | 2018-06-06 15:30 | 61 |  |  | 2018-05-08 19:30 | 2018-05-09 07:30 | 4h | 100.87d | 0d | TEAM_2Shift_Calendar-1 | Helper [300%] | 12h |  | 600 | 600 |  |
| 63 | 7.1.2.8 | Dish Forming | 15d | 2018-06-06 15:30 | 2018-06-16 07:30 | 62 |  |  | 2018-05-09 07:30 | 2018-05-18 15:30 | 15d | 100.87d | 0d | TEAM_2Shift_Calendar-1 | SC (Work) | 8h |  |  |  |  |
| 64 | 7.1.2.9 | Receipt After Forming | 4h | 2018-06-16 07:30 | 2018-06-16 11:30 | 63 |  |  | 2018-05-18 15:30 | 2018-05-18 19:30 | 4h | 100.87d | 0d | TEAM_2Shift_Calendar-1 | Helper [300%] | 12h |  | 600 | 600 |  |
| 65 | 7.1.2.10 | Inward Inspection | 4h | 2018-06-16 11:30 | 2018-06-16 15:30 | 64 |  |  | 2018-05-18 19:30 | 2018-05-19 07:30 | 4h | 100.87d | 0d | TEAM_2Shift_Calendar-1 | Fitter | 4h |  | 275 | 275 |  |

Notes:
- 35: 2Nos
- 36: 4Nos
- 37: Blank Dia ~464 10T(NOM)/8T(MIN)
- 38: 4Nos
- 39: OD 459D X ID 304.84 X 50T
- 40: 188Nos
- 41: 30Nos
- 42: 12 Nos
- 43: 120Nos
- 45: 4Nos
- 53: 2 Nos

| ID | WBS | Task | Duration | Start | Finish | Predecessors | Baseline start | Baseline finish | Baseline duration | Total slack | Free slack | Calendar | Resources | Work | Cost | Baseline cost |
| --- | --- | --- | --- | --- | --- | --- | --- | --- | --- | --- | --- | --- | --- | --- | --- | --- |
| 66 | 7.1.3 | **Surface Preparation** | 10.12d | 2018-06-16 15:30 | 2018-06-22 16:30 |  | 2018-05-19 07:30 | 2018-05-25 08:30 | 10.12d | 100.87d |  | TEAM_2Shift_Calendar-1 |  | 134h | 4,912.5 | 4,912.5 |
| 67 | 7.1.3.1 | Surface Grinding | 10h | 2018-06-16 15:30 | 2018-06-18 09:30 | 65 | 2018-05-19 07:30 | 2018-05-19 17:30 | 10h | 100.87d | 0d | TEAM_2Shift_Calendar-1 | Grinding Machine; Grinder | 20h | 562.5 | 562.5 |
| 68 | 7.1.3.2 | Surface DP Check | 4h | 2018-06-18 09:30 | 2018-06-18 13:30 | 67 | 2018-05-19 17:30 | 2018-05-19 21:30 | 4h | 100.87d | 0d | TEAM_2Shift_Calendar-1 | Helper; Fitter | 8h | 475 | 475 |
| 69 | 7.1.3.3 | Spider Set Up For SR | 8h | 2018-06-18 13:30 | 2018-06-18 21:30 | 68 | 2018-05-19 21:30 | 2018-05-21 13:30 | 8h | 100.87d | 0d | TEAM_2Shift_Calendar-1 | Helper; Fitter | 16h | 950 | 950 |
| 70 | 7.1.3.4 | Dish SR | 3d | 2018-06-18 21:30 | 2018-06-20 13:30 | 69 | 2018-05-21 13:30 | 2018-05-22 21:30 | 3d | 100.87d | 0d | TEAM_2Shift_Calendar-1 | SC (Work) | 15h |  |  |
| 71 | 7.1.3.5 | Remove Spider | 6h | 2018-06-20 13:30 | 2018-06-20 19:30 | 70 | 2018-05-22 21:30 | 2018-05-23 11:30 | 6h | 100.87d | 0d | TEAM_2Shift_Calendar-1 | Grinding Machine [200%]; Grinder [200%] | 24h | 675 | 675 |
| 72 | 7.1.3.6 | Surface Cleaning | 5h | 2018-06-20 19:30 | 2018-06-21 08:30 | 71 | 2018-05-23 11:30 | 2018-05-23 16:30 | 5h | 100.87d | 0d | TEAM_2Shift_Calendar-1 | Helper | 5h | 250 | 250 |
| 73 | 7.1.3.7 | SF Marking | 4h | 2018-06-21 08:30 | 2018-06-21 12:30 | 72 | 2018-05-23 16:30 | 2018-05-23 20:30 | 4h | 100.87d | 0d | TEAM_2Shift_Calendar-1 | Helper; Fitter | 8h | 475 | 475 |
| 74 | 7.1.3.8 | SF Cutting | 6h | 2018-06-21 12:30 | 2018-06-21 18:30 | 73 | 2018-05-23 20:30 | 2018-05-24 10:30 | 6h | 100.87d | 0d | TEAM_2Shift_Calendar-1 | Gas Cutter; OAGM; Helper | 18h | 712.5 | 712.5 |
| 75 | 7.1.3.9 | Dish Edge Preparation | 6h | 2018-06-21 18:30 | 2018-06-22 08:30 | 74 | 2018-05-24 10:30 | 2018-05-24 16:30 | 6h | 100.87d | 0d | TEAM_2Shift_Calendar-1 | Grinding Machine; Grinder | 12h | 337.5 | 337.5 |
| 76 | 7.1.3.10 | Final Inspection | 1d | 2018-06-22 08:30 | 2018-06-22 16:30 | 75 | 2018-05-24 16:30 | 2018-05-25 08:30 | 1d | 100.87d |  | TEAM_2Shift_Calendar-1 | Helper; Fitter | 8h | 475 | 475 |
| 77 | 7.2 | **Nozzle Fabrication** | 10.75d | 2018-06-05 11:30 | 2018-06-12 17:30 |  | 2018-05-30 11:30 | 2018-06-05 17:30 | 10.75d | 64.62d | 0d | TEAM_2Shift_Calendar-1 |  | 178h | 8,250 | 8,250 |
| 78 | 7.2.1 | Nozzle Pipe Receipt | 1d | 2018-06-05 11:30 | 2018-06-05 19:30 | 46FS+110d | 2018-05-30 11:30 | 2018-05-30 19:30 | 1d | 64.62d | 0d | TEAM_2Shift_Calendar-1 | Pipe (Cost) [0.1%]; Forging Std (Cost) [0.1%]; Store | 2h |  |  |
| 79 | 7.2.2 | **Nozzle Prep** | 5.38d | 2018-06-05 19:30 | 2018-06-08 14:30 |  | 2018-05-30 19:30 | 2018-06-02 14:30 | 5.38d | 64.62d | 3.38d | TEAM_2Shift_Calendar-1 |  | 106h | 4,793.75 | 4,793.75 |
| 80 | 7.2.2.1 | Nozzle Pipe Marking | 5h | 2018-06-05 19:30 | 2018-06-06 08:30 | 78 | 2018-05-30 19:30 | 2018-05-31 08:30 | 5h | 64.62d | 0d | TEAM_2Shift_Calendar-1 | Helper; Fitter | 10h | 593.75 | 593.75 |
| 81 | 7.2.2.2 | Nozzle Pipe Stamping | 4h | 2018-06-06 08:30 | 2018-06-06 12:30 | 80 | 2018-05-31 08:30 | 2018-05-31 12:30 | 4h | 64.62d | 0d | TEAM_2Shift_Calendar-1 | TPI (Cost) [0.1%]; QC Engineer | 4h |  |  |
| 82 | 7.2.2.3 | Nozzle Pipe Cutting | 7h | 2018-06-06 12:30 | 2018-06-06 19:30 | 81 | 2018-05-31 12:30 | 2018-05-31 19:30 | 7h | 64.62d | 0d | TEAM_2Shift_Calendar-1 | Gas Cutter; OAGM; Helper | 21h | 831.25 | 831.25 |
| 83 | 7.2.2.4 | Nozzle Pipe EP | 5h | 2018-06-06 19:30 | 2018-06-07 08:30 | 82 | 2018-05-31 19:30 | 2018-06-01 08:30 | 5h | 64.62d | 0d | TEAM_2Shift_Calendar-1 | Grinding Machine; Grinder | 10h | 281.25 | 281.25 |
| 84 | 7.2.2.5 | Nozzle Flange +Pipe Fitup | 5h | 2018-06-07 08:30 | 2018-06-07 13:30 | 83 | 2018-06-01 08:30 | 2018-06-01 13:30 | 5h | 64.62d | 0d | TEAM_2Shift_Calendar-1 | Helper; SMAW Welder; SMAW Welding Machine; Fitter | 20h | 937.5 | 937.5 |
| 85 | 7.2.2.6 | Nozzle Flange +Pipe Fitup Inspection | 4h | 2018-06-07 13:30 | 2018-06-07 17:30 | 84 | 2018-06-01 13:30 | 2018-06-01 17:30 | 4h | 64.62d | 0d | TEAM_2Shift_Calendar-1 | Helper; Fitter | 8h | 475 | 475 |
| 86 | 7.2.2.7 | Nozzle Flange +Pipe Root Tig Welding | 5h | 2018-06-07 17:30 | 2018-06-08 06:30 | 85 | 2018-06-01 17:30 | 2018-06-02 06:30 | 5h | 64.62d | 0d | TEAM_2Shift_Calendar-1 | TIG Welder; TIG Welding Machine; Helper | 15h | 875 | 875 |
| 87 | 7.2.2.8 | Nozzle Flange +Pipe Filler Pass Welding | 5h | 2018-06-08 06:30 | 2018-06-08 11:30 | 86 | 2018-06-02 06:30 | 2018-06-02 11:30 | 5h | 64.62d | 0d | TEAM_2Shift_Calendar-1 | SMAW Welder; SMAW Welding Machine; Helper | 15h | 593.75 | 593.75 |
| 88 | 7.2.2.9 | DP Check | 3h | 2018-06-08 11:30 | 2018-06-08 14:30 | 87 | 2018-06-02 11:30 | 2018-06-02 14:30 | 3h | 64.62d | 0d | TEAM_2Shift_Calendar-1 | Fitter | 3h | 206.25 | 206.25 |
| 89 | 7.2.3 | **Nozzle-MP** | 3.38d | 2018-06-08 14:30 | 2018-06-12 09:30 |  | 2018-06-02 14:30 | 2018-06-05 09:30 | 3.38d | 64.62d | 0d | TEAM_2Shift_Calendar-1 |  | 70h | 3,456.25 | 3,456.25 |
| 90 | 7.2.3.1 | MP Conn. Marking | 2h | 2018-06-08 14:30 | 2018-06-08 16:30 | 88 | 2018-06-02 14:30 | 2018-06-02 16:30 | 2h | 64.62d | 0d | TEAM_2Shift_Calendar-1 | Helper; Fitter | 4h | 237.5 | 237.5 |
| 91 | 7.2.3.2 | MP Conn. Openning | 5h | 2018-06-08 16:30 | 2018-06-08 21:30 | 90 | 2018-06-02 16:30 | 2018-06-02 21:30 | 5h | 64.62d | 0d | TEAM_2Shift_Calendar-1 | Gas Cutter; OAGM; Helper | 15h | 593.75 | 593.75 |
| 92 | 7.2.3.3 | MP Conn. EP | 3h | 2018-06-08 21:30 | 2018-06-11 08:30 | 91 | 2018-06-02 21:30 | 2018-06-04 08:30 | 3h | 64.62d | 0d | TEAM_2Shift_Calendar-1 | Grinding Machine; Grinder | 6h | 168.75 | 168.75 |
| 93 | 7.2.3.4 | MP Conn. Nozzle Fitup | 4h | 2018-06-11 08:30 | 2018-06-11 12:30 | 92 | 2018-06-04 08:30 | 2018-06-04 12:30 | 4h | 64.62d | 0d | TEAM_2Shift_Calendar-1 | Helper; TIG Welder; TIG Welding Machine; Fitter | 16h | 975 | 975 |
| 94 | 7.2.3.5 | MP Conn. Nozzle Welding | 6h | 2018-06-11 12:30 | 2018-06-11 18:30 | 93 | 2018-06-04 12:30 | 2018-06-04 18:30 | 6h | 64.62d | 0d | TEAM_2Shift_Calendar-1 | TIG Welder; TIG Welding Machine; Helper | 18h | 1,050 | 1,050 |
| 95 | 7.2.3.6 | MP Conn. Nozzle Welding Flush Grind | 4h | 2018-06-11 18:30 | 2018-06-12 06:30 | 94 | 2018-06-04 18:30 | 2018-06-05 06:30 | 4h | 64.62d | 0d | TEAM_2Shift_Calendar-1 | Grinding Machine; Grinder | 8h | 225 | 225 |
| 96 | 7.2.3.7 | Dp Check | 3h | 2018-06-12 06:30 | 2018-06-12 09:30 | 95 | 2018-06-05 06:30 | 2018-06-05 09:30 | 3h | 64.62d |  | TEAM_2Shift_Calendar-1 | Fitter | 3h | 206.25 | 206.25 |
| 97 | 7.2.4 | Radiography | 1d | 2018-06-12 09:30 | 2018-06-12 17:30 | 79, 89 | 2018-06-05 09:30 | 2018-06-05 17:30 | 1d | 64.62d |  | TEAM_2Shift_Calendar-1 | SC Radiography (Cost) [0.1%] |  |  |  |

Notes:
- 80: N1A,N2A,N3A&N4A= 6''NBX80SCH/THK...
- 90: N9,N6,N10&N5=1.5''X160SCH/THK

| ID | WBS | Task | Duration | Start | Finish | Predecessors | Baseline start | Baseline finish | Baseline duration | Total slack | Free slack | Calendar | Resources | Work | Cost | Baseline cost |
| --- | --- | --- | --- | --- | --- | --- | --- | --- | --- | --- | --- | --- | --- | --- | --- | --- |
| 98 | 7.3 | **Saddle Fabrication** | 13.62d | 2018-06-25 08:31 | 2018-07-02 21:31 |  | 2018-05-18 08:31 | 2018-05-25 21:31 | 13.62d | 86.25d |  | TEAM_2Shift_Calendar-1 |  | 239h | 11,593.75 | 11,593.75 |
| 99 | 7.3.1 | Plate Receipt | 1d | 2018-06-25 08:31 | 2018-06-25 16:31 | 44FS+30d | 2018-05-18 08:31 | 2018-05-18 16:31 | 1d | 86.25d | 0d | TEAM_2Shift_Calendar-1 | Plate (Cost) [0.1%]; Helper | 3h | 150 | 150 |
| 100 | 7.3.2 | Saddle Pl Marking | 5h | 2018-06-25 16:31 | 2018-06-25 21:31 | 99 | 2018-05-18 16:31 | 2018-05-18 21:31 | 5h | 86.25d | 0d | TEAM_2Shift_Calendar-1 | Helper; Fitter | 10h | 593.75 | 593.75 |
| 101 | 7.3.3 | Saddle Pl Mkg Inspection | 4h | 2018-06-25 21:31 | 2018-06-26 09:31 | 100 | 2018-05-18 21:31 | 2018-05-19 09:31 | 4h | 86.25d | 0d | TEAM_2Shift_Calendar-1 | Fitter | 4h | 275 | 275 |
| 102 | 7.3.4 | Saddle Pl Mkg Cutting | 10h | 2018-06-26 09:31 | 2018-06-26 19:31 | 101 | 2018-05-19 09:31 | 2018-05-19 19:31 | 10h | 86.25d | 0d | TEAM_2Shift_Calendar-1 | Gas Cutter; OAGM; Helper | 30h | 1,187.5 | 1,187.5 |
| 103 | 7.3.5 | Grinding | 5h | 2018-06-26 19:31 | 2018-06-27 08:31 | 102 | 2018-05-19 19:31 | 2018-05-21 08:31 | 5h | 86.25d | 0d | TEAM_2Shift_Calendar-1 | Grinding Machine; Grinder | 10h | 281.25 | 281.25 |
| 104 | 7.3.6 | Saddle Base Hole Marking | 3h | 2018-06-27 08:31 | 2018-06-27 11:31 | 103 | 2018-05-21 08:31 | 2018-05-21 11:31 | 3h | 86.25d | 0d | TEAM_2Shift_Calendar-1 | Helper; Fitter | 6h | 356.25 | 356.25 |
| 105 | 7.3.7 | Saddle Base Hole Drilling | 5h | 2018-06-27 11:31 | 2018-06-27 16:31 | 104 | 2018-05-21 11:31 | 2018-05-21 16:31 | 5h | 86.25d | 0d | TEAM_2Shift_Calendar-1 | Radial Drilling Machine; Driller | 10h | 343.75 | 343.75 |
| 106 | 7.3.8 | Saddle Pad Forming | 1d | 2018-06-27 16:31 | 2018-06-28 08:31 | 45, 105 | 2018-05-21 16:31 | 2018-05-22 08:31 | 1d | 86.25d | 0d | TEAM_2Shift_Calendar-1 | Helper; Fitter | 16h | 950 | 950 |
| 107 | 7.3.9 | Saddle Fitup | 18h | 2018-06-28 08:31 | 2018-06-29 10:31 | 106 | 2018-05-22 08:31 | 2018-05-23 10:31 | 18h | 86.25d | 0d | TEAM_2Shift_Calendar-1 | Helper; SMAW Welder; SMAW Welding Machine; Fitter | 72h | 3,375 | 3,375 |
| 108 | 7.3.10 | Saddle Fitup Inspection | 4h | 2018-06-29 10:31 | 2018-06-29 14:31 | 107 | 2018-05-23 10:31 | 2018-05-23 14:31 | 4h | 86.25d | 0d | TEAM_2Shift_Calendar-1 | Fitter | 4h | 275 | 275 |
| 109 | 7.3.11 | Saddle Welding | 25h | 2018-06-29 14:31 | 2018-07-02 07:31 | 108 | 2018-05-23 14:31 | 2018-05-25 07:31 | 25h | 86.25d | 0d | TEAM_2Shift_Calendar-1 | SMAW Welder; Helper | 50h | 2,968.75 | 2,968.75 |
| 110 | 7.3.12 | Saddle Profile Grinding | 10h | 2018-07-02 07:31 | 2018-07-02 17:31 | 109 | 2018-05-25 07:31 | 2018-05-25 17:31 | 10h | 86.25d | 0d | TEAM_2Shift_Calendar-1 | Grinding Machine; Grinder | 20h | 562.5 | 562.5 |
| 111 | 7.3.13 | DP Check | 4h | 2018-07-02 17:31 | 2018-07-02 21:31 | 110 | 2018-05-25 17:31 | 2018-05-25 21:31 | 4h | 86.25d |  | TEAM_2Shift_Calendar-1 | Fitter | 4h | 275 | 275 |
| 112 | 7.4 | **Tubesheet Drilling** | 7.25d | 2018-06-06 16:31 | 2018-06-12 10:31 |  | 2018-06-04 08:31 | 2018-06-07 13:31 | 6.62d | 89.62d | 28.75d | TEAM_2Shift_Calendar-1 |  | 50h | 769.94 | 764.29 |
| 113 | 7.4.1 | Send for drilling | 4h | 2018-06-06 16:31 | 2018-06-06 20:31 | 38FS+5d | 2018-06-04 08:31 | 2018-06-04 12:31 | 4h | 89.62d | 0d | TEAM_2Shift_Calendar-1 | Store; Tube Sheet (Cost) [0.1%]; Helper | 8h | 200 | 200 |
| 114 | 7.4.2 | Drilling and Taping | 5d | 2018-06-06 20:31 | 2018-06-11 12:31 | 113 | 2018-06-04 12:31 | 2018-06-06 20:31 | 5d | 89.62d | 0d | TEAM_2Shift_Calendar-1 | SC (Work) | 25h |  |  |
| 115 | 7.4.3 | Drilled T/Sheet Receipt | 5h | 2018-06-11 12:31 | 2018-06-11 17:31 | 114 | 2018-06-06 20:31 | 2018-06-07 09:31 | 5h | 89.62d | 0d | TEAM_2Shift_Calendar-1 | Store; Helper | 10h | 250 | 250 |
| 116 | 7.4.4 | Inspection | 9h | 2018-06-11 17:31 | 2018-06-12 10:31 | 115 | 2018-06-07 09:31 | 2018-06-07 13:31 | 4h | 89.62d |  | TEAM_2Shift_Calendar-1 | Fitter; QC Engineer | 7h | 319.94 | 314.29 |
| 117 | 7.5 | **Baffle Fabrication** | 24.12d | 2018-06-02 09:30 | 2018-06-18 10:30 |  | 2018-05-04 17:30 | 2018-05-19 18:30 | 24.12d | 79.63d | 18.75d | TEAM_2Shift_Calendar-1 |  | 240h | 10,043.75 | 10,043.75 |
| 118 | 7.5.1 | **Preparation** | 3.75d | 2018-06-02 09:30 | 2018-06-05 07:30 |  | 2018-05-04 17:30 | 2018-05-07 15:30 | 3.75d | 79.63d |  | TEAM_2Shift_Calendar-1 |  | 68h | 3,062.5 | 3,062.5 |
| 119 | 7.5.1.1 | Marking | 5h | 2018-06-02 09:30 | 2018-06-02 14:30 | 41FS+155d | 2018-05-04 17:30 | 2018-05-05 06:30 | 5h | 79.63d | 0d | TEAM_2Shift_Calendar-1 | Helper; Plate (Cost) [0.1%]; Fitter | 10h | 593.75 | 593.75 |
| 120 | 7.5.1.2 | Cutting | 8h | 2018-06-02 14:30 | 2018-06-04 06:30 | 119 | 2018-05-05 06:30 | 2018-05-05 14:30 | 8h | 79.63d | 0d | TEAM_2Shift_Calendar-1 | Gas Cutter; OAGM; Helper | 24h | 950 | 950 |
| 121 | 7.5.1.3 | Grinding | 8h | 2018-06-04 06:30 | 2018-06-04 14:30 | 120 | 2018-05-05 14:30 | 2018-05-07 06:30 | 8h | 79.63d | 0d | TEAM_2Shift_Calendar-1 | Grinding Machine; Grinder | 16h | 450 | 450 |
| 122 | 7.5.1.4 | Stacking | 6h | 2018-06-04 14:30 | 2018-06-04 20:30 | 121 | 2018-05-07 06:30 | 2018-05-07 12:30 | 6h | 79.63d | 0d | TEAM_2Shift_Calendar-1 | Fitter; Helper | 12h | 712.5 | 712.5 |
| 123 | 7.5.1.5 | Center Line Marking | 3h | 2018-06-04 20:30 | 2018-06-05 07:30 | 122 | 2018-05-07 12:30 | 2018-05-07 15:30 | 3h | 79.63d | 0d | TEAM_2Shift_Calendar-1 | Helper; Fitter | 6h | 356.25 | 356.25 |

| ID | WBS | Task | Duration | Start | Finish | Predecessors | Baseline start | Baseline finish | Baseline duration | Total slack | Free slack | Calendar | Resources | Work | Cost | Baseline cost |
| --- | --- | --- | --- | --- | --- | --- | --- | --- | --- | --- | --- | --- | --- | --- | --- | --- |
| 124 | 7.5.2 | **Activities for holes** | 17.62d | 2018-06-05 07:30 | 2018-06-15 20:30 |  | 2018-05-07 15:30 | 2018-05-18 12:30 | 17.62d | 79.63d |  | TEAM_2Shift_Calendar-1 |  | 150h | 5,731.25 | 5,731.25 |
| 125 | 7.5.2.1 | Drilling | 6d | 2018-06-05 07:30 | 2018-06-08 07:30 | 123 | 2018-05-07 15:30 | 2018-05-10 15:30 | 6d | 79.63d | 0d | TEAM_2Shift_Calendar-1 | SC (Cost) [0.1%] |  |  |  |
| 126 | 7.5.2.2 | Destacking | 6h | 2018-06-08 07:30 | 2018-06-08 13:30 | 125 | 2018-05-10 15:30 | 2018-05-10 21:30 | 6h | 79.63d | 0d | TEAM_2Shift_Calendar-1 | Fitter; Helper | 12h | 712.5 | 712.5 |
| 127 | 7.5.2.3 | Hole Chamfering | 2d | 2018-06-08 13:30 | 2018-06-11 13:30 | 126 | 2018-05-10 21:30 | 2018-05-11 21:30 | 2d | 79.63d | 0d | TEAM_2Shift_Calendar-1 | Radial Drilling Machine; Driller | 20h | 687.5 | 687.5 |
| 128 | 7.5.2.4 | Edge Trimming | 8h | 2018-06-11 13:30 | 2018-06-11 21:30 | 127 | 2018-05-11 21:30 | 2018-05-14 13:30 | 8h | 79.63d | 0d | TEAM_2Shift_Calendar-1 | Grinding Machine; Grinder | 16h | 450 | 450 |
| 129 | 7.5.2.5 | Grinding | 8h | 2018-06-11 21:30 | 2018-06-12 13:30 | 128 | 2018-05-14 13:30 | 2018-05-14 21:30 | 8h | 79.63d | 0d | TEAM_2Shift_Calendar-1 | Grinding Machine; Grinder | 16h | 450 | 450 |
| 130 | 7.5.2.6 | Stacking Type A&B | 7h | 2018-06-12 13:30 | 2018-06-12 20:30 | 129 | 2018-05-14 21:30 | 2018-05-15 12:30 | 7h | 79.63d | 0d | TEAM_2Shift_Calendar-1 | Fitter; Helper | 14h | 831.25 | 831.25 |
| 131 | 7.5.2.7 | Through Hole Check | 1d | 2018-06-12 20:30 | 2018-06-13 12:30 | 130 | 2018-05-15 12:30 | 2018-05-15 20:30 | 1d | 79.63d | 0d | TEAM_2Shift_Calendar-1 | Helper; Fitter | 16h | 950 | 950 |
| 132 | 7.5.2.8 | Redrill If Required | 3d | 2018-06-13 12:30 | 2018-06-14 20:30 | 131 | 2018-05-15 20:30 | 2018-05-17 12:30 | 3d | 79.63d | 0d | TEAM_2Shift_Calendar-1 | Radial Drilling Machine; Driller | 48h | 1,650 | 1,650 |
| 133 | 7.5.2.9 | OD Machining | 2d | 2018-06-14 20:30 | 2018-06-15 20:30 | 132 | 2018-05-17 12:30 | 2018-05-18 12:30 | 2d | 79.63d | 0d | TEAM_2Shift_Calendar-1 | SC (Work) | 8h |  |  |
| 134 | 7.5.3 | Destacking | 8h | 2018-06-15 20:30 | 2018-06-16 12:30 | 133 | 2018-05-18 12:30 | 2018-05-18 20:30 | 8h | 79.63d | 0d | TEAM_2Shift_Calendar-1 | Fitter; Helper | 16h | 950 | 950 |
| 135 | 7.5.4 | Cleaning | 6h | 2018-06-16 12:30 | 2018-06-16 18:30 | 134 | 2018-05-18 20:30 | 2018-05-19 10:30 | 6h | 79.63d | 0d | TEAM_2Shift_Calendar-1 | Helper | 6h | 300 | 300 |
| 136 | 7.5.5 | Ready For Assembly | 1d | 2018-06-16 18:30 | 2018-06-18 10:30 | 135 | 2018-05-19 10:30 | 2018-05-19 18:30 | 1d | 79.63d |  | TEAM_2Shift_Calendar-1 |  |  |  |  |
| 137 | 7.6 | **Sealing Strip Fabrication** | 3d | 2018-06-08 16:31 | 2018-06-12 08:31 |  | 2018-05-18 08:31 | 2018-05-19 16:31 | 3d | 89.88d | 29d | TEAM_2Shift_Calendar-1 |  | 42h | 1,787.5 | 1,787.5 |
| 138 | 7.6.1 | Pl Receipt | 1d | 2018-06-08 16:31 | 2018-06-11 08:31 | 48FS+65d | 2018-05-18 08:31 | 2018-05-18 16:31 | 1d | 89.88d | 0d | TEAM_2Shift_Calendar-1 | Plate (Cost) [0.1%]; Helper | 4h | 200 | 200 |
| 139 | 7.6.2 | Sealing Strip Marking | 5h | 2018-06-11 08:31 | 2018-06-11 13:31 | 138 | 2018-05-18 16:31 | 2018-05-18 21:31 | 5h | 89.88d | 0d | TEAM_2Shift_Calendar-1 | Helper; Fitter | 10h | 593.75 | 593.75 |
| 140 | 7.6.3 | Sealing Strip Cutting | 6h | 2018-06-11 13:31 | 2018-06-11 19:31 | 139 | 2018-05-18 21:31 | 2018-05-19 11:31 | 6h | 89.88d | 0d | TEAM_2Shift_Calendar-1 | Gas Cutter; OAGM; Helper | 18h | 712.5 | 712.5 |
| 141 | 7.6.4 | Sealing Strip Grinding | 5h | 2018-06-11 19:31 | 2018-06-12 08:31 | 140 | 2018-05-19 11:31 | 2018-05-19 16:31 | 5h | 89.88d |  | TEAM_2Shift_Calendar-1 | Grinding Machine; Grinder | 10h | 281.25 | 281.25 |
| 142 | 7.7 | **Tie Rod** | 3d | 2018-06-28 08:31 | 2018-06-29 16:31 |  | 2018-08-14 08:31 | 2018-08-16 16:31 | 3d | 60.88d | 0d | TEAM_2Shift_Calendar-1 |  | 47h | 2,526.25 | 2,526.25 |
| 143 | 7.7.1 | Rod Receipt | 1h | 2018-06-28 08:31 | 2018-06-28 09:31 | 42 | 2018-08-14 08:31 | 2018-08-14 09:31 | 1h | 60.88d | 0d | TEAM_2Shift_Calendar-1 | Rod (Cost) [0.1%]; Helper | 1h | 50 | 50 |
| 144 | 7.7.2 | Marking | 3h | 2018-06-28 09:31 | 2018-06-28 12:31 | 143 | 2018-08-14 09:31 | 2018-08-14 12:31 | 3h | 60.88d | 0d | TEAM_2Shift_Calendar-1 | Helper; Fitter | 6h | 356.25 | 356.25 |
| 145 | 7.7.3 | Cutting | 4h | 2018-06-28 12:31 | 2018-06-28 16:31 | 144 | 2018-08-14 12:31 | 2018-08-14 16:31 | 4h | 60.88d | 0d | TEAM_2Shift_Calendar-1 | Helper; Cutting Machine | 8h | 200 | 200 |
| 146 | 7.7.4 | Thread Machining | 2d | 2018-06-28 16:31 | 2018-06-29 16:31 | 145 | 2018-08-14 16:31 | 2018-08-16 16:31 | 2d | 60.88d |  | TEAM_2Shift_Calendar-1 | Lathe; Lathe Operator | 32h | 1,920 | 1,920 |
| 147 | 7.8 | **Spacer Tube** | 3.5d | 2018-06-14 08:31 | 2018-06-15 20:31 |  | 2018-08-14 08:31 | 2018-08-16 20:31 | 3.5d | 82.38d | 21.5d | TEAM_2Shift_Calendar-1 |  | 53h | 2,795 | 2,795 |
| 148 | 7.8.1 | Spacer Tube Marking | 4h | 2018-06-14 08:31 | 2018-06-14 12:31 | 43 | 2018-08-14 08:31 | 2018-08-14 12:31 | 4h | 82.38d | 0d | TEAM_2Shift_Calendar-1 | Helper; Tube (Cost) [0.1%]; Fitter | 8h | 475 | 475 |
| 149 | 7.8.2 | Spacer Tube Cutting | 5h | 2018-06-14 12:31 | 2018-06-14 17:31 | 148 | 2018-08-14 12:31 | 2018-08-14 17:31 | 5h | 82.38d | 0d | TEAM_2Shift_Calendar-1 | Helper; Cutting Machine | 10h | 250 | 250 |
| 150 | 7.8.3 | Spacer Tube M/C | 2d | 2018-06-14 17:31 | 2018-06-15 17:31 | 149 | 2018-08-14 17:31 | 2018-08-16 17:31 | 2d | 82.38d | 0d | TEAM_2Shift_Calendar-1 | Lathe Operator; Lathe | 32h | 1,920 | 1,920 |
| 151 | 7.8.4 | Spacer Cleaning | 3h | 2018-06-15 17:31 | 2018-06-15 20:31 | 150 | 2018-08-16 17:31 | 2018-08-16 20:31 | 3h | 82.38d |  | TEAM_2Shift_Calendar-1 | Helper | 3h | 150 | 150 |

Notes:
- 148: OD =19.5X2.11T

| ID | WBS | Task | Duration | Start | Finish | Predecessors | Complete | Remaining | Baseline start | Baseline finish | Baseline duration | Total slack | Free slack | Calendar | Resources | Work | Actual work | Cost | Baseline cost | Actual cost |
| --- | --- | --- | --- | --- | --- | --- | --- | --- | --- | --- | --- | --- | --- | --- | --- | --- | --- | --- | --- | --- |
| 152 | 7.9 | **Other Components** | 61.12d | 2018-06-19 08:31 | 2018-07-26 17:31 |  |  |  | 2018-06-19 08:31 | 2018-06-20 17:31 | 3.12d | 4.12d | 0d | TEAM_2Shift_Calendar-1 |  | 82h |  | 3,337.5 | 3,337.5 |  |
| 153 | 7.9.1 | **Lifting Lug** | 3.12d | 2018-07-25 08:31 | 2018-07-26 17:31 |  |  |  | 2018-06-19 08:31 | 2018-06-20 17:31 | 3.12d | 4.12d |  | TEAM_2Shift_Calendar-1 |  | 50h |  | 2,256.25 | 2,256.25 |  |
| 154 | 7.9.1.1 | Lifting Lug Marking | 3h | 2018-07-25 08:31 | 2018-07-25 11:31 | 44FS+80d |  |  | 2018-06-19 08:31 | 2018-06-19 11:31 | 3h | 4.12d | 0d | TEAM_2Shift_Calendar-1 | Helper; Plate (Cost) [0.1%]; Fitter | 6h |  | 356.25 | 356.25 |  |
| 155 | 7.9.1.2 | Lifting Lug Cutting | 4h | 2018-07-25 11:31 | 2018-07-25 15:31 | 154 |  |  | 2018-06-19 11:31 | 2018-06-19 15:31 | 4h | 4.12d | 0d | TEAM_2Shift_Calendar-1 | OAGM; Gas Cutter | 8h |  | 275 | 275 |  |
| 156 | 7.9.1.3 | Lifting Lug Pad Marking | 3h | 2018-07-25 15:31 | 2018-07-25 18:31 | 45FS+30d, 155 |  |  | 2018-06-19 15:31 | 2018-06-19 18:31 | 3h | 4.12d | 0d | TEAM_2Shift_Calendar-1 | Helper; Fitter | 6h |  | 356.25 | 356.25 |  |
| 157 | 7.9.1.4 | Lifting Lug Pad Cutting | 4h | 2018-07-25 18:31 | 2018-07-26 06:31 | 156 |  |  | 2018-06-19 18:31 | 2018-06-20 06:31 | 4h | 4.12d | 0d | TEAM_2Shift_Calendar-1 | OAGM; Gas Cutter | 8h |  | 275 | 275 |  |
| 158 | 7.9.1.5 | Lifting Lug Pad Grinding | 5h | 2018-07-26 06:31 | 2018-07-26 11:31 | 157 |  |  | 2018-06-20 06:31 | 2018-06-20 11:31 | 5h | 4.12d | 0d | TEAM_2Shift_Calendar-1 | Grinding Machine; Grinder | 10h |  | 281.25 | 281.25 |  |
| 159 | 7.9.1.6 | Lifting Lug Pad Forming | 6h | 2018-07-26 11:31 | 2018-07-26 17:31 | 158 |  |  | 2018-06-20 11:31 | 2018-06-20 17:31 | 6h | 4.12d |  | TEAM_2Shift_Calendar-1 | Helper; Fitter | 12h |  | 712.5 | 712.5 |  |
| 160 | 7.9.2 | **Insulation Cleat** | 2d | 2018-06-19 08:31 | 2018-06-20 08:31 |  |  |  | 2018-06-19 08:31 | 2018-06-20 08:31 | 2d | 63.25d |  | TEAM_2Shift_Calendar-1 |  | 32h |  | 1,081.25 | 1,081.25 |  |
| 161 | 7.9.2.1 | Insulation Cleat Marking | 2h | 2018-06-19 08:31 | 2018-06-19 10:31 | 48FS+80d |  |  | 2018-06-19 08:31 | 2018-06-19 10:31 | 2h | 63.25d | 0d | TEAM_2Shift_Calendar-1 | Helper; Plate (Cost) [0.1%]; Fitter | 4h |  | 237.5 | 237.5 |  |
| 162 | 7.9.2.2 | Insulation Cleat Cutting | 3h | 2018-06-19 10:31 | 2018-06-19 13:31 | 161 |  |  | 2018-06-19 10:31 | 2018-06-19 13:31 | 3h | 63.25d | 0d | TEAM_2Shift_Calendar-1 | Helper; Cutting Machine | 6h |  | 150 | 150 |  |
| 163 | 7.9.2.3 | Insulation Cleat Grinding | 5h | 2018-06-19 13:31 | 2018-06-19 18:31 | 162 |  |  | 2018-06-19 13:31 | 2018-06-19 18:31 | 5h | 63.25d | 0d | TEAM_2Shift_Calendar-1 | Grinding Machine; Grinder | 10h |  | 281.25 | 281.25 |  |
| 164 | 7.9.2.4 | Insulation Cleat Drilling | 6h | 2018-06-19 18:31 | 2018-06-20 08:31 | 163 |  |  | 2018-06-19 18:31 | 2018-06-20 08:31 | 6h | 63.25d |  | TEAM_2Shift_Calendar-1 | Radial Drilling Machine; Driller | 12h |  | 412.5 | 412.5 |  |
| 165 | 7.10 | **Channel assembly** | 77.62d | 2018-05-04 10:30 A | 2018-06-22 07:30 |  | 11% | 68.92d | 2018-05-04 10:30 | 2018-07-02 14:30 | 92.5d | 89.25d |  | TEAM_2Shift_Calendar-1 |  | 399h | 7h | 17,207.67 | 23,485.09 | 140.62 |
| 166 | 7.10.1 | Inward Inspection | 15h | 2018-05-04 10:30 A | 2018-05-05 09:30 A | 36FS+60d | 100% |  | 2018-05-04 10:30 | 2018-05-05 09:30 | 15h |  |  | TEAM_2Shift_Calendar-1 | Fitter; QC Engineer | 3h | 3h | 140.62 | 140.62 | 140.62 |
| 167 | 7.10.2 | Stamping | 1d | 2018-05-05 09:30 A | 2018-05-05 17:30 A | 166 | 100% |  | 2018-05-05 09:30 | 2018-05-05 17:30 | 1d |  |  | TEAM_2Shift_Calendar-1 | TPI (Cost) [0.1%]; QC Engineer | 4h | 4h |  |  |  |
| 168 | 7.10.3 | Edge Preparation | 5h | 2018-06-07 17:30 | 2018-06-08 06:30 | 167FS+52d |  |  | 2018-05-05 17:30 | 2018-05-07 06:30 | 5h | 89.25d | 0d | TEAM_2Shift_Calendar-1 | Grinding Machine; Grinder | 10h |  | 281.25 | 281.25 |  |
| 169 | 7.10.4 | Channel to dish fit up | 5h | 2018-06-08 06:30 | 2018-06-08 11:30 | 39, 168 |  |  | 2018-05-17 08:31 | 2018-05-17 13:31 | 5h | 89.25d | 0d | TEAM_2Shift_Calendar-1 | Helper; SMAW Welder; SMAW Welding Machine; Fitter | 20h |  | 937.5 | 937.5 |  |
| 170 | 7.10.5 | Inspection | 8h | 2018-06-08 11:30 | 2018-06-08 19:30 | 169 |  |  | 2018-05-17 13:31 | 2018-05-17 16:31 | 3h | 89.25d | 0d | TEAM_2Shift_Calendar-1 | Helper; QC Engineer | 6h |  | 150 | 150 |  |
| 171 | 7.10.6 | welding | 6h | 2018-06-08 19:30 | 2018-06-11 09:30 | 170 |  |  | 2018-05-17 16:31 | 2018-05-18 06:31 | 6h | 89.25d | 0d | TEAM_2Shift_Calendar-1 | SMAW Welder; SMAW Welding Machine; Helper [200%] | 24h |  | 1,012.5 | 1,012.5 |  |
| 172 | 7.10.7 | Inside welding backchip grinding | 3h | 2018-06-11 09:30 | 2018-06-11 12:30 | 171 |  |  | 2018-05-18 06:31 | 2018-05-18 09:31 | 3h | 89.25d | 0d | TEAM_2Shift_Calendar-1 | Grinding Machine; Grinder | 6h |  | 168.75 | 168.75 |  |
| 173 | 7.10.8 | Inside welding | 6h | 2018-06-11 12:30 | 2018-06-11 18:30 | 172 |  |  | 2018-05-18 09:31 | 2018-05-18 15:31 | 6h | 89.25d | 0d | TEAM_2Shift_Calendar-1 | SMAW Welder; SMAW Welding Machine; Helper [200%] | 24h |  | 1,012.5 | 1,012.5 |  |
| 174 | 7.10.9 | DP Check | 4h | 2018-06-11 18:30 | 2018-06-12 06:30 | 173 |  |  | 2018-05-18 15:31 | 2018-05-18 19:31 | 4h | 89.25d | 0d | TEAM_2Shift_Calendar-1 | Fitter | 4h |  | 275 | 275 |  |
| 175 | 7.10.10 | Radiography | 1d | 2018-06-12 06:30 | 2018-06-12 14:30 | 174 |  |  | 2018-05-18 19:31 | 2018-05-19 11:31 | 1d | 89.25d | 0d | TEAM_2Shift_Calendar-1 | SC Radiography (Cost) [0.1%] |  |  |  |  |  |
| 176 | 7.10.11 | Channel flange fit up | 6h | 2018-06-12 14:30 | 2018-06-12 20:30 | 175 |  |  | 2018-05-19 11:31 | 2018-05-19 17:31 | 6h | 89.25d | 0d | TEAM_2Shift_Calendar-1 | Helper; SMAW Welder; SMAW Welding Machine; Forging Non-Std (Cost) [0.1%]; Fitter | 24h |  | 1,125 | 1,125 |  |
| 177 | 7.10.12 | Inspection | 4h | 2018-06-12 20:30 | 2018-06-13 08:30 | 176 |  |  | 2018-05-19 17:31 | 2018-05-19 21:31 | 4h | 89.25d | 0d | TEAM_2Shift_Calendar-1 | Fitter; QC Engineer | 8h |  | 550 | 550 |  |
| 178 | 7.10.13 | welding | 6h | 2018-06-13 08:30 | 2018-06-13 14:30 | 177 |  |  | 2018-05-19 21:31 | 2018-05-21 11:31 | 6h | 89.25d | 0d | TEAM_2Shift_Calendar-1 | SMAW Welder; SMAW Welding Machine; Helper [200%] | 24h |  | 1,012.5 | 1,012.5 |  |
| 179 | 7.10.14 | Inside welding backchip grinding | 4h | 2018-06-13 14:30 | 2018-06-13 18:30 | 178 |  |  | 2018-05-21 11:31 | 2018-05-21 15:31 | 4h | 89.25d | 0d | TEAM_2Shift_Calendar-1 | Grinding Machine; Grinder | 8h |  | 225 | 225 |  |
| 180 | 7.10.15 | Inside welding | 5h | 2018-06-13 18:30 | 2018-06-14 07:30 | 179 |  |  | 2018-05-21 15:31 | 2018-05-21 20:31 | 5h | 89.25d | 0d | TEAM_2Shift_Calendar-1 | SMAW Welder; SMAW Welding Machine; Helper [200%] | 20h |  | 843.75 | 843.75 |  |
| 181 | 7.10.16 | Orientation Marking | 5h | 2018-06-14 07:30 | 2018-06-14 12:30 | 180 |  |  | 2018-05-21 20:31 | 2018-05-22 09:31 | 5h | 89.25d | 0d | TEAM_2Shift_Calendar-1 | Helper; Fitter | 10h |  | 593.75 | 593.75 |  |
| 182 | 7.10.17 | Inspection | 4h | 2018-06-14 12:30 | 2018-06-14 16:30 | 181 |  |  | 2018-05-22 09:31 | 2018-05-22 13:31 | 4h | 89.25d | 0d | TEAM_2Shift_Calendar-1 | Fitter | 4h |  | 275 | 275 |  |
| 183 | 7.10.18 | Nozzle N13A,N14A,N4A,N9-10,N3A opening | 2d | 2018-06-14 16:30 | 2018-06-15 16:30 | 182 |  |  | 2018-05-22 13:31 | 2018-05-23 13:31 | 2d | 89.25d | 0d | TEAM_2Shift_Calendar-1 | OAGM; Helper; Gas Cutter | 24h |  | 950 | 950 |  |
| 184 | 7.10.19 | Edge preparation | 3h | 2018-06-15 16:30 | 2018-06-15 19:30 | 183 |  |  | 2018-05-23 13:31 | 2018-05-23 16:31 | 3h | 89.25d | 0d | TEAM_2Shift_Calendar-1 | Grinding Machine; Grinder | 6h |  | 168.75 | 168.75 |  |
| 185 | 7.10.20 | RF pad and nozzle assembly fitup | 1d | 2018-06-15 19:30 | 2018-06-16 11:30 | 77, 184 |  |  | 2018-06-05 17:30 | 2018-06-06 09:30 | 1d | 89.25d | 0d | TEAM_2Shift_Calendar-1 | Helper; SMAW Welder; SMAW Welding Machine; Fitter | 32h |  | 1,500 | 1,500 |  |
| 186 | 7.10.21 | Inspection | 15h | 2018-06-16 11:30 | 2018-06-18 10:30 | 185 |  |  | 2018-06-06 09:30 | 2018-06-07 08:31 | 15.02h | 89.25d | 0d | TEAM_2Shift_Calendar-1 | Helper; QC Engineer | 6h |  | 204.55 | 204.46 |  |
| 187 | 7.10.22 | RF Pad with Channel Fit up | 5h | 2018-06-18 10:30 | 2018-06-18 15:30 | 186 |  |  | 2018-06-07 08:31 | 2018-06-07 13:31 | 5h | 89.25d | 0d | TEAM_2Shift_Calendar-1 | Helper; SMAW Welder; SMAW Welding Machine; Fitter | 20h |  | 937.5 | 937.5 |  |
| 188 | 7.10.23 | RF pad Noz Asse Welding | 6h | 2018-06-18 15:30 | 2018-06-18 21:30 | 187 |  |  | 2018-06-07 13:31 | 2018-06-07 19:31 | 6h | 89.25d | 0d | TEAM_2Shift_Calendar-1 | SMAW Welder; SMAW Welding Machine; Helper [200%] | 24h |  | 1,012.5 | 1,012.5 |  |
| 189 | 7.10.24 | RF pad with Channel Welding | 7h | 2018-06-18 21:30 | 2018-06-19 12:30 | 188 |  |  | 2018-06-07 19:31 | 2018-06-08 10:31 | 7h | 89.25d | 0d | TEAM_2Shift_Calendar-1 | SMAW Welder; SMAW Welding Machine; Helper [200%] | 28h |  | 1,181.25 | 1,181.25 |  |
| 190 | 7.10.25 | Inside Backchip Grinding | 4h | 2018-06-19 12:30 | 2018-06-19 16:30 | 189 |  |  | 2018-06-08 10:31 | 2018-06-08 14:31 | 4h | 89.25d | 0d | TEAM_2Shift_Calendar-1 | Grinding Machine; Grinder | 8h |  | 225 | 225 |  |
| 191 | 7.10.26 | DP Check | 3h | 2018-06-19 16:30 | 2018-06-19 19:30 | 190 |  |  | 2018-06-08 14:31 | 2018-06-08 17:31 | 3h | 89.25d | 0d | TEAM_2Shift_Calendar-1 | Fitter | 3h |  | 206.25 | 206.25 |  |
| 192 | 7.10.27 | Inside Welding | 6h | 2018-06-19 19:30 | 2018-06-20 09:30 | 191 |  |  | 2018-06-08 17:31 | 2018-06-11 07:31 | 6h | 89.25d | 0d | TEAM_2Shift_Calendar-1 | SMAW Welder; SMAW Welding Machine; Helper [200%] | 24h |  | 1,012.5 | 1,012.5 |  |
| 193 | 7.10.28 | Inside Welding Flush Grinding | 4h | 2018-06-20 09:30 | 2018-06-20 13:30 | 192 |  |  | 2018-06-11 07:31 | 2018-06-11 11:31 | 4h | 89.25d | 0d | TEAM_2Shift_Calendar-1 | Grinding Machine; Grinder | 8h |  | 225 | 225 |  |
| 194 | 7.10.29 | RF pad Air leak test | 2d | 2018-06-20 13:30 | 2018-06-21 13:30 | 193 |  |  | 2018-06-11 11:31 | 2018-06-12 11:31 | 2d | 89.25d | 0d | TEAM_2Shift_Calendar-1 | Helper [200%]; Fitter | 15h |  | 843.75 | 843.75 |  |
| 195 | 7.10.30 | DP Check | 2h | 2018-06-21 13:30 | 2018-06-21 15:30 | 194 |  |  | 2018-06-12 11:31 | 2018-06-12 13:31 | 2h | 89.25d | 0d | TEAM_2Shift_Calendar-1 | Fitter | 2h |  | 137.5 | 137.5 |  |
| 196 | 7.10.31 | Radiography | 1d | 2018-06-21 15:30 | 2018-06-22 07:30 | 195 |  |  | 2018-06-12 13:31 | 2018-06-12 21:31 | 1d | 89.25d | 55.25d | TEAM_2Shift_Calendar-1 | SC Radiography (Cost) [0.1%] |  |  |  |  |  |

Notes:
- 165: 2 Nos

| ID | WBS | Task | Duration | Start | Finish | Predecessors | Complete | Remaining | Baseline start | Baseline finish | Baseline duration | Total slack | Free slack | Calendar | Resources | Work | Actual work | Cost | Baseline cost | Actual cost |
| --- | --- | --- | --- | --- | --- | --- | --- | --- | --- | --- | --- | --- | --- | --- | --- | --- | --- | --- | --- | --- |
| 197 | 7.11 | **Other Components Welding** | 11.75d | 2018-07-26 17:31 | 2018-08-03 15:31 |  |  |  | 2018-06-20 17:31 | 2018-07-02 14:30 | 17.62d | 34d |  | TEAM_2Shift_Calendar-1 |  | 134h |  | 5,159.47 | 6,277.5 |  |
| 198 | 7.11.1 | Ch Lifting Lug Pad Fitup | 4h | 2018-07-26 17:31 | 2018-07-26 21:31 | 152, 196 |  |  | 2018-06-20 17:31 | 2018-06-20 21:31 | 4h | 34d | 0d | TEAM_2Shift_Calendar-1 | Helper; SMAW Welder; SMAW Welding Machine; Fitter | 16h |  | 750 | 750 |  |
| 199 | 7.11.2 | Ch Lifting Lug Pad Weld Arrangement | 2h | 2018-07-26 21:31 | 2018-07-27 07:31 | 198 |  |  | 2018-06-20 21:31 | 2018-06-21 07:31 | 2h | 34d | 0d | TEAM_2Shift_Calendar-1 | Helper [200%]; Fitter | 6h |  | 337.5 | 337.5 |  |
| 200 | 7.11.3 | Ch Lifting Lug Pad Welding | 5h | 2018-07-27 07:31 | 2018-07-27 12:31 | 199 |  |  | 2018-06-21 07:31 | 2018-06-21 12:31 | 5h | 34d | 0d | TEAM_2Shift_Calendar-1 | SMAW Welder; SMAW Welding Machine; Helper [200%] | 20h |  | 843.75 | 843.75 |  |
| 201 | 7.11.4 | Ch Lifting Lug Fitup | 4h | 2018-07-27 12:31 | 2018-07-27 16:31 | 200 |  |  | 2018-06-21 12:31 | 2018-06-21 16:31 | 4h | 34d | 0d | TEAM_2Shift_Calendar-1 | Helper; SMAW Welder; SMAW Welding Machine; Fitter | 16h |  | 750 | 750 |  |
| 202 | 7.11.5 | Ch Lifting Lug Welding | 6h | 2018-07-27 16:31 | 2018-07-30 06:31 | 201 |  |  | 2018-06-21 16:31 | 2018-06-22 06:31 | 6h | 34d | 0d | TEAM_2Shift_Calendar-1 | SMAW Welder; SMAW Welding Machine; Helper [200%] | 24h |  | 1,012.5 | 1,012.5 |  |
| 203 | 7.11.6 | Ch Final Dress Up | 1d | 2018-07-30 06:31 | 2018-07-30 14:31 | 202 |  |  | 2018-06-22 06:31 | 2018-06-22 14:31 | 1d | 34d | 0d | TEAM_2Shift_Calendar-1 | Grinding Machine; Grinder | 16h |  | 450 | 450 |  |
| 204 | 7.11.7 | Ch Dimensional Inspection | 5h | 2018-07-30 14:31 | 2018-07-30 19:31 | 203 |  |  | 2018-06-22 14:31 | 2018-06-26 11:29 | 28.97h | 34d | 0d | TEAM_2Shift_Calendar-1 | Helper [200%]; QC Engineer; Fitter | 6h |  | 281.51 | 843.75 |  |
| 205 | 7.11.8 | Ch Clearance by TPI | 1d | 2018-07-30 19:31 | 2018-07-31 11:31 | 204 |  |  | 2018-06-26 11:29 | 2018-06-27 07:42 | 1.53d | 34.37d | 0d | TEAM_2Shift_Calendar-1 | TPI (Cost) [0.1%]; QC Engineer | 3h |  |  |  |  |
| 206 | 7.11.9 | Ch PWHT | 4d | 2018-07-31 11:31 | 2018-08-02 11:31 | 205 |  |  | 2018-06-27 07:42 | 2018-06-29 07:42 | 4d | 34.37d | 0d | TEAM_2Shift_Calendar-1 | SC Radiography (Cost) [0.1%] |  |  |  |  |  |
| 207 | 7.11.10 | Ch Receipt after PWHT | 4h | 2018-08-02 11:31 | 2018-08-02 15:31 | 206 |  |  | 2018-06-29 07:42 | 2018-06-30 11:30 | 2.48d | 34.37d | 0d | TEAM_2Shift_Calendar-1 | Helper [300%]; QC Engineer; Crane | 9h |  | 284.21 | 840 |  |
| 208 | 7.11.11 | Ch Surface Cleaning & DP Check | 1d | 2018-08-02 15:31 | 2018-08-03 07:31 | 207 |  |  | 2018-06-30 11:30 | 2018-06-30 19:30 | 1d | 34.52d | 0d | TEAM_2Shift_Calendar-1 | Grinding Machine; Grinder | 16h |  | 450 | 450 |  |
| 209 | 7.11.12 | Ch NDE by TPI | 1d | 2018-08-03 07:31 | 2018-08-03 15:31 | 208 |  |  | 2018-06-30 19:30 | 2018-07-02 14:30 | 1.38d | 34.52d |  | TEAM_2Shift_Calendar-1 | TPI (Cost) [0.1%]; QC Engineer | 2h |  |  |  |  |
| 210 | 7.12 | **Shell assembly** | 150.62d | 2018-05-03 11:30 A | 2018-08-06 16:30 |  | 7% | 140.41d | 2018-05-04 11:30 | 2018-06-30 16:30 | 90.62d | 4.13d | 0d | TEAM_2Shift_Calendar-1 |  | 359h | 8h | 16,257.97 | 16,227.2 | 200 |
| 211 | 7.12.1 | Inward Inspection | 1d | 2018-05-03 11:30 A | 2018-05-03 19:30 A | 35FS+58d | 100% |  | 2018-05-04 11:30 | 2018-05-04 19:30 | 1d |  |  | TEAM_2Shift_Calendar-1 | Fitter; Forging Non-Std (Cost) [0.1%]; Pipe (Cost) [0.1%]; QC Engineer | 4h | 4h | 200 | 169.23 | 200 |
| 212 | 7.12.2 | Stamping | 1d | 2018-05-04 19:30 A | 2018-05-05 11:30 A | 211FS+2d | 100% |  | 2018-05-04 19:30 | 2018-05-05 11:30 | 1d |  |  | TEAM_2Shift_Calendar-1 | TPI (Cost) [0.1%]; QC Engineer | 4h | 4h |  |  |  |
| 213 | 7.12.3 | Edge preparation | 7h | 2018-06-08 19:30 | 2018-06-11 10:30 | 212FS+55d |  |  | 2018-05-05 11:30 | 2018-05-05 18:30 | 7h | 94.88d |  | TEAM_2Shift_Calendar-1 | Grinding Machine; Grinder | 14h |  | 393.75 | 393.75 |  |
| 214 | 7.12.4 | **Nozzle Welding** | 10.75d | 2018-06-12 17:30 | 2018-06-19 07:31 |  |  |  | 2018-06-05 17:30 | 2018-06-13 07:31 | 10.75d | 64.62d |  | TEAM_2Shift_Calendar-1 |  | 210h |  | 10,251.72 | 10,251.72 |  |
| 215 | 7.12.4.1 | Nozzle orientation Marking & Inspection | 5h | 2018-06-12 17:30 | 2018-06-13 06:30 | 77, 212 |  |  | 2018-06-05 17:30 | 2018-06-06 06:30 | 5h | 64.62d | 0d | TEAM_2Shift_Calendar-1 | Helper [200%]; Fitter | 15h |  | 843.75 | 843.75 |  |
| 216 | 7.12.4.2 | Sh Nozzle Opening | 1d | 2018-06-13 06:30 | 2018-06-13 14:30 | 215 |  |  | 2018-06-06 06:30 | 2018-06-06 14:30 | 1d | 64.62d | 0d | TEAM_2Shift_Calendar-1 | OAGM; Helper; Gas Cutter | 24h |  | 950 | 950 |  |
| 217 | 7.12.4.3 | Sh Nozzle Opening Edge Preparation | 6h | 2018-06-13 14:30 | 2018-06-13 20:30 | 216 |  |  | 2018-06-06 14:30 | 2018-06-06 20:30 | 6h | 64.62d | 0d | TEAM_2Shift_Calendar-1 | Grinding Machine; Grinder | 12h |  | 337.5 | 337.5 |  |
| 218 | 7.12.4.4 | RF pad and nozzle assembly fitup | 6h | 2018-06-13 20:30 | 2018-06-14 10:30 | 217 |  |  | 2018-06-06 20:30 | 2018-06-07 10:30 | 6h | 64.62d | 0d | TEAM_2Shift_Calendar-1 | Helper; SMAW Welder; SMAW Welding Machine; Fitter | 24h |  | 1,125 | 1,125 |  |
| 219 | 7.12.4.5 | Inspection | 4.02h | 2018-06-14 10:30 | 2018-06-14 14:31 | 218 |  |  | 2018-06-07 10:30 | 2018-06-07 14:31 | 4.02h | 64.62d | 0d | TEAM_2Shift_Calendar-1 | Helper; QC Engineer | 4h |  | 114.22 | 114.22 |  |
| 220 | 7.12.4.6 | RF Pad with Channel Fit up | 5h | 2018-06-14 14:31 | 2018-06-14 19:31 | 219 |  |  | 2018-06-07 14:31 | 2018-06-07 19:31 | 5h | 65.38d | 0d | TEAM_2Shift_Calendar-1 | Helper; TIG Welder; TIG Welding Machine; Fitter | 20h |  | 1,218.75 | 1,218.75 |  |
| 221 | 7.12.4.7 | RF pad Noz Asse Welding | 1d | 2018-06-14 19:31 | 2018-06-15 11:31 | 220 |  |  | 2018-06-07 19:31 | 2018-06-08 11:31 | 1d | 65.38d | 0d | TEAM_2Shift_Calendar-1 | TIG Welder; TIG Welding Machine; Helper | 24h |  | 1,400 | 1,400 |  |
| 222 | 7.12.4.8 | RF pad with Channel Welding | 1d | 2018-06-15 11:31 | 2018-06-15 19:31 | 221 |  |  | 2018-06-08 11:31 | 2018-06-08 19:31 | 1d | 65.38d | 0d | TEAM_2Shift_Calendar-1 | TIG Welder; TIG Welding Machine; Helper | 24h |  | 1,400 | 1,400 |  |
| 223 | 7.12.4.9 | Inside Backchip Grinding | 4h | 2018-06-15 19:31 | 2018-06-16 07:31 | 222 |  |  | 2018-06-08 19:31 | 2018-06-11 07:31 | 4h | 65.38d | 0d | TEAM_2Shift_Calendar-1 | Grinding Machine; Grinder | 8h |  | 225 | 225 |  |
| 224 | 7.12.4.10 | DP Check | 3h | 2018-06-16 07:31 | 2018-06-16 10:31 | 223 |  |  | 2018-06-11 07:31 | 2018-06-11 10:31 | 3h | 65.38d | 0d | TEAM_2Shift_Calendar-1 | Fitter | 3h |  | 206.25 | 206.25 |  |
| 225 | 7.12.4.11 | Inside Welding | 5h | 2018-06-16 10:31 | 2018-06-16 15:31 | 224 |  |  | 2018-06-11 10:31 | 2018-06-11 15:31 | 5h | 65.38d | 0d | TEAM_2Shift_Calendar-1 | SMAW Welder; SMAW Welding Machine; Helper | 15h |  | 593.75 | 593.75 |  |
| 226 | 7.12.4.12 | Inside Welding Flush Grinding | 5h | 2018-06-16 15:31 | 2018-06-16 20:31 | 225 |  |  | 2018-06-11 15:31 | 2018-06-11 20:31 | 5h | 65.38d | 0d | TEAM_2Shift_Calendar-1 | Grinding Machine; Grinder | 10h |  | 281.25 | 281.25 |  |
| 227 | 7.12.4.13 | RF pad Air leak test | 1d | 2018-06-16 20:31 | 2018-06-18 12:31 | 226 |  |  | 2018-06-11 20:31 | 2018-06-12 12:31 | 1d | 65.38d | 0d | TEAM_2Shift_Calendar-1 | Helper [200%]; Fitter | 24h |  | 1,350 | 1,350 |  |
| 228 | 7.12.4.14 | DP Check | 3h | 2018-06-18 12:31 | 2018-06-18 15:31 | 227 |  |  | 2018-06-12 12:31 | 2018-06-12 15:31 | 3h | 65.38d | 0d | TEAM_2Shift_Calendar-1 | Fitter | 3h |  | 206.25 | 206.25 |  |
| 229 | 7.12.4.15 | Radiography | 1d | 2018-06-18 15:31 | 2018-06-19 07:31 | 228 |  |  | 2018-06-12 15:31 | 2018-06-13 07:31 | 1d | 65.38d | 61.25d | TEAM_2Shift_Calendar-1 | SC Radiography (Cost) [0.1%] |  |  |  |  |  |

| ID | WBS | Task | Duration | Start | Finish | Predecessors | Baseline start | Baseline finish | Baseline duration | Total slack | Free slack | Calendar | Resources | Work | Cost | Baseline cost |
| --- | --- | --- | --- | --- | --- | --- | --- | --- | --- | --- | --- | --- | --- | --- | --- | --- |
| 230 | 7.12.5 | **Other Components Welding** | 3.12d | 2018-07-26 17:31 | 2018-07-30 10:31 |  | 2018-06-20 17:31 | 2018-06-22 10:31 | 3.12d | 4.12d |  | TEAM_2Shift_Calendar-1 |  | 86h | 3,806.25 | 3,806.25 |
| 231 | 7.12.5.1 | Sh + Saddle Pad Fitup | 1d | 2018-07-26 17:31 | 2018-07-27 09:31 | 152, 229 | 2018-06-20 17:31 | 2018-06-21 09:31 | 1d | 4.12d | 0d | TEAM_2Shift_Calendar-1 | Helper; SMAW Welder; SMAW Welding Machine; Fitter | 32h | 1,500 | 1,500 |
| 232 | 7.12.5.2 | Sh + Saddle Pad Welding Arrangement | 4h | 2018-07-27 09:31 | 2018-07-27 13:31 | 231 | 2018-06-21 09:31 | 2018-06-21 13:31 | 4h | 4.12d | 0d | TEAM_2Shift_Calendar-1 | Helper [200%]; Fitter | 12h | 675 | 675 |
| 233 | 7.12.5.3 | Sh + Saddle Pad Welding | 1d | 2018-07-27 13:31 | 2018-07-27 21:31 | 232 | 2018-06-21 13:31 | 2018-06-21 21:31 | 1d | 4.12d | 0d | TEAM_2Shift_Calendar-1 | SMAW Welder; SMAW Welding Machine; Helper [200%] | 32h | 1,350 | 1,350 |
| 234 | 7.12.5.4 | Sh Final Dress Up | 5h | 2018-07-27 21:31 | 2018-07-30 10:31 | 233 | 2018-06-21 21:31 | 2018-06-22 10:31 | 5h | 4.12d | 0d | TEAM_2Shift_Calendar-1 | Grinding Machine; Grinder | 10h | 281.25 | 281.25 |
| 235 | 7.12.6 | **Final Works & Inspection** | 12.75d | 2018-07-30 10:31 | 2018-08-06 16:30 |  | 2018-06-22 10:31 | 2018-06-30 16:30 | 12.75d | 4.12d |  | TEAM_2Shift_Calendar-1 |  | 41h | 1,606.25 | 1,606.25 |
| 236 | 7.12.6.1 | Sh Dimensional Inspection | 2.5d | 2018-07-30 10:31 | 2018-07-31 14:30 | 234 | 2018-06-22 10:31 | 2018-06-25 14:30 | 2.5d | 4.12d | 0d | TEAM_2Shift_Calendar-1 | Helper [200%]; QC Engineer; Fitter | 12h | 506.25 | 506.25 |
| 237 | 7.12.6.2 | Sh Clearance by TPI | 1.88d | 2018-07-31 14:30 | 2018-08-01 13:31 | 236 | 2018-06-25 14:30 | 2018-06-26 13:31 | 1.88d | 4.12d | 0d | TEAM_2Shift_Calendar-1 | TPI (Cost) [0.1%]; QC Engineer | 4h |  |  |
| 238 | 7.12.6.3 | Sh PWHT | 4d | 2018-08-01 13:31 | 2018-08-03 13:31 | 237 | 2018-06-26 13:31 | 2018-06-28 13:31 | 4d | 4.12d | 0d | TEAM_2Shift_Calendar-1 | SC (Cost) [0.1%] |  |  |  |
| 239 | 7.12.6.4 | Sh Receipt after PWHT | 1d | 2018-08-03 13:31 | 2018-08-03 21:31 | 238 | 2018-06-28 13:31 | 2018-06-28 21:31 | 1d | 4.12d | 0d | TEAM_2Shift_Calendar-1 | Helper [300%] | 6h | 300 | 300 |
| 240 | 7.12.6.5 | Sh Surface Cleaning | 1d | 2018-08-03 21:31 | 2018-08-04 13:31 | 239 | 2018-06-28 21:31 | 2018-06-29 13:31 | 1d | 4.12d | 0d | TEAM_2Shift_Calendar-1 | Helper [200%] | 16h | 800 | 800 |
| 241 | 7.12.6.6 | Sh NDE by TPI | 2.37d | 2018-08-04 13:31 | 2018-08-06 16:30 | 240 | 2018-06-29 13:31 | 2018-06-30 16:30 | 2.37d | 4.12d |  | TEAM_2Shift_Calendar-1 | QC Engineer; TPI (Cost) [0.1%] | 3h |  |  |
| 242 | 7.13 | **Tube Bundle Assy** | 79.5d | 2018-06-29 16:31 | 2018-08-20 12:30 |  | 2018-08-16 20:31 | 2018-08-31 10:31 | 22.75d | 4.13d | 0d | TEAM_2Shift_Calendar-1 |  | 514.46h | 25,903.74 | 25,903.74 |
| 243 | 7.13.1 | **Preliminary Set up** | 69.12d | 2018-06-29 16:31 | 2018-08-13 09:30 |  | 2018-08-16 20:31 | 2018-08-24 07:31 | 12.38d | 4.13d |  | TEAM_2Shift_Calendar-1 |  | 353.46h | 17,619.37 | 17,619.37 |
| 244 | 7.13.1.1 | Assembly Frame Setup | 10h | 2018-06-29 16:31 | 2018-06-30 10:31 | 142, 147, 112, 117, 137 | 2018-08-16 20:31 | 2018-08-17 14:31 | 10h | 60.88d | 0d | TEAM_2Shift_Calendar-1 | Helper [400%]; Fitter [200%] | 60h | 3,375 | 3,375 |
| 245 | 7.13.1.2 | Skeleton Assembly with Tubesheet | 12h | 2018-06-30 10:31 | 2018-07-02 06:31 | 244 | 2018-08-17 14:31 | 2018-08-18 10:31 | 12h | 60.88d | 0d | TEAM_2Shift_Calendar-1 | Helper [400%]; Fitter [200%] | 72h | 4,050 | 4,050 |
| 246 | 7.13.1.3 | Tie-Rod welding | 4h | 2018-07-02 06:31 | 2018-07-02 10:31 | 245 | 2018-08-18 10:31 | 2018-08-18 14:31 | 4h | 60.88d | 56.75d | TEAM_2Shift_Calendar-1 | TIG Welder; TIG Welding Machine; Helper [200%] | 16h | 900 | 900 |
| 247 | 7.13.1.4 | Shell Fitup with Tubesheet | 6h | 2018-08-06 16:30 | 2018-08-07 06:30 | 246, 210 | 2018-08-18 14:31 | 2018-08-18 20:31 | 6h | 4.13d | 0d | TEAM_2Shift_Calendar-1 | Helper; SMAW Welder; SMAW Welding Machine; Fitter | 24h | 1,125 | 1,125 |
| 248 | 7.13.1.5 | Fitup Inspection | 4h | 2018-08-07 06:30 | 2018-08-07 10:30 | 247 | 2018-08-18 20:31 | 2018-08-20 08:31 | 4h | 4.13d | 0d | TEAM_2Shift_Calendar-1 | Helper; QC Engineer | 5.46h | 271.87 | 271.87 |
| 249 | 7.13.1.6 | Welding | 6h | 2018-08-07 10:30 | 2018-08-07 16:30 | 248 | 2018-08-20 08:31 | 2018-08-20 14:31 | 6h | 4.13d | 0d | TEAM_2Shift_Calendar-1 | SMAW Welder; SMAW Welding Machine; Helper [200%] | 24h | 1,012.5 | 1,012.5 |
| 250 | 7.13.1.7 | Backchip | 5h | 2018-08-07 16:30 | 2018-08-07 21:30 | 249 | 2018-08-20 14:31 | 2018-08-20 19:31 | 5h | 4.13d | 0d | TEAM_2Shift_Calendar-1 | Grinding Machine; Grinder | 10h | 281.25 | 281.25 |
| 251 | 7.13.1.8 | Flush Grinding | 3h | 2018-08-07 21:30 | 2018-08-08 08:30 | 250 | 2018-08-20 19:31 | 2018-08-21 06:31 | 3h | 4.13d | 0d | TEAM_2Shift_Calendar-1 | Grinding Machine; Grinder | 6h | 168.75 | 168.75 |
| 252 | 7.13.1.9 | Shell Fitup with Tubesheet | 6h | 2018-08-08 08:30 | 2018-08-08 14:30 | 251 | 2018-08-21 06:31 | 2018-08-21 12:31 | 6h | 4.13d | 0d | TEAM_2Shift_Calendar-1 | Helper; SMAW Welder; SMAW Welding Machine; Fitter | 24h | 1,125 | 1,125 |
| 253 | 7.13.1.10 | Fitup Inspection | 11h | 2018-08-08 14:30 | 2018-08-09 09:30 | 252 | 2018-08-21 12:31 | 2018-08-22 07:31 | 11h | 4.13d | 0d | TEAM_2Shift_Calendar-1 | Helper; QC Engineer | 12h | 360 | 360 |
| 254 | 7.13.1.11 | Welding | 6h | 2018-08-09 09:30 | 2018-08-09 15:30 | 253 | 2018-08-22 07:31 | 2018-08-22 13:31 | 6h | 4.13d | 0d | TEAM_2Shift_Calendar-1 | SMAW Welder; SMAW Welding Machine; Helper [200%] | 24h | 1,012.5 | 1,012.5 |
| 255 | 7.13.1.12 | Backchip | 5h | 2018-08-09 15:30 | 2018-08-09 20:30 | 254 | 2018-08-22 13:31 | 2018-08-22 18:31 | 5h | 4.13d | 0d | TEAM_2Shift_Calendar-1 | Grinding Machine; Grinder | 10h | 281.25 | 281.25 |
| 256 | 7.13.1.13 | Flush Grinding | 3h | 2018-08-09 20:30 | 2018-08-10 07:30 | 255 | 2018-08-22 18:31 | 2018-08-22 21:31 | 3h | 4.13d | 0d | TEAM_2Shift_Calendar-1 | Grinding Machine; Grinder | 6h | 168.75 | 168.75 |
| 257 | 7.13.1.14 | Tube Insertion | 1d | 2018-08-10 07:30 | 2018-08-10 15:30 | 256 | 2018-08-22 21:31 | 2018-08-23 13:31 | 1d | 4.13d | 0d | TEAM_2Shift_Calendar-1 | Helper [300%]; Fitter [200%] | 40h | 2,300 | 2,300 |
| 258 | 7.13.1.15 | Tube Allignment | 10h | 2018-08-10 15:30 | 2018-08-13 09:30 | 257 | 2018-08-23 13:31 | 2018-08-24 07:31 | 10h | 4.13d | 0d | TEAM_2Shift_Calendar-1 | Helper; Fitter | 20h | 1,187.5 | 1,187.5 |

| ID | WBS | Task | Duration | Start | Finish | Predecessors | Complete | Remaining | Baseline start | Baseline finish | Baseline duration | Total slack | Free slack | Calendar | Resources | Work | Actual work | Cost | Baseline cost | Actual cost |
| --- | --- | --- | --- | --- | --- | --- | --- | --- | --- | --- | --- | --- | --- | --- | --- | --- | --- | --- | --- | --- |
| 259 | 7.13.2 | **Tube Welding & other Works** | 10.38d | 2018-08-13 09:30 | 2018-08-20 12:30 |  |  |  | 2018-08-24 07:31 | 2018-08-31 10:31 | 10.38d | 4.13d |  | TEAM_2Shift_Calendar-1 |  | 161h |  | 8,284.38 | 8,284.38 |  |
| 260 | 7.13.2.1 | Tube / Tubesheet Root Welding | 2d | 2018-08-13 09:30 | 2018-08-14 09:30 | 258 |  |  | 2018-08-24 07:31 | 2018-08-27 07:31 | 2d | 4.13d | 0d | TEAM_2Shift_Calendar-1 | TIG Welder; TIG Welding Machine; Helper | 48h |  | 2,800 | 2,800 |  |
| 261 | 7.13.2.2 | DP Check | 1d | 2018-08-14 09:30 | 2018-08-14 17:30 | 260 |  |  | 2018-08-27 07:31 | 2018-08-27 15:31 | 1d | 4.13d | 0d | TEAM_2Shift_Calendar-1 | Fitter | 8h |  | 550 | 550 |  |
| 262 | 7.13.2.3 | Tube / Tubesheet Final Welding | 2d | 2018-08-14 17:30 | 2018-08-16 17:30 | 261 |  |  | 2018-08-27 15:31 | 2018-08-28 15:31 | 2d | 4.13d | 0d | TEAM_2Shift_Calendar-1 | TIG Welder; TIG Welding Machine; Helper | 48h |  | 2,800 | 2,800 |  |
| 263 | 7.13.2.4 | Tube Trimming | 1d | 2018-08-16 17:30 | 2018-08-17 09:30 | 262 |  |  | 2018-08-28 15:31 | 2018-08-29 07:31 | 1d | 4.13d | 0d | TEAM_2Shift_Calendar-1 | Grinding Machine; Grinder | 16h |  | 450 | 450 |  |
| 264 | 7.13.2.5 | DP Check | 3h | 2018-08-17 09:30 | 2018-08-17 12:30 | 263 |  |  | 2018-08-29 07:31 | 2018-08-29 10:31 | 3h | 4.13d | 0d | TEAM_2Shift_Calendar-1 | Fitter | 3h |  | 206.25 | 206.25 |  |
| 265 | 7.13.2.6 | Expansion | 2d | 2018-08-17 12:30 | 2018-08-18 12:30 | 264 |  |  | 2018-08-29 10:31 | 2018-08-30 10:31 | 2d | 4.13d | 0d | TEAM_2Shift_Calendar-1 | Helper; Expanding Machine; Fitter | 33h |  | 1,306.25 | 1,306.25 |  |
| 266 | 7.13.2.7 | Inspection | 2d | 2018-08-18 12:30 | 2018-08-20 12:30 | 265 |  |  | 2018-08-30 10:31 | 2018-08-31 10:31 | 2d | 4.13d |  | TEAM_2Shift_Calendar-1 | QC Engineer; Fitter | 5h |  | 171.88 | 171.88 |  |
| 267 | 7.14 | **Final Assembly&testing** | 7d | 2018-08-20 12:30 | 2018-08-23 20:30 |  |  |  | 2018-08-31 10:31 | 2018-09-04 21:31 | 7.38d | 4.13d |  | TEAM_2Shift_Calendar-1 |  | 74h |  | 3,857.14 | 3,857.14 |  |
| 268 | 7.14.1 | Shell side Hydro testing | 2d | 2018-08-20 12:30 | 2018-08-21 12:30 | 242, 210 |  |  | 2018-08-31 10:31 | 2018-09-01 10:31 | 2d | 4.13d | 0d | TEAM_2Shift_Calendar-1 | Helper [400%]; Fitter [200%] | 32h |  | 1,800 | 1,800 |  |
| 269 | 7.14.2 | Shell side hydro test TPI inspection | 1d | 2018-08-21 12:30 | 2018-08-21 20:30 | 268 |  |  | 2018-09-01 10:31 | 2018-09-01 21:30 | 1.37d | 4.13d | 0d | TEAM_2Shift_Calendar-1 | TPI (Cost) [0.1%]; QC Engineer | 4h |  |  |  |  |
| 270 | 7.14.3 | Channel side Hydro test | 2d | 2018-08-21 20:30 | 2018-08-22 20:30 | 269, 165 |  |  | 2018-09-01 21:30 | 2018-09-03 21:30 | 2d | 4.37d | 0d | TEAM_2Shift_Calendar-1 | Helper [400%]; Fitter [300%] | 32h |  | 1,857.14 | 1,857.14 |  |
| 271 | 7.14.4 | Channel side Hydro test TPI inspection | 1d | 2018-08-22 20:30 | 2018-08-23 12:30 | 270 |  |  | 2018-09-03 21:30 | 2018-09-04 13:31 | 1d | 4.37d | 0d | TEAM_2Shift_Calendar-1 | TPI (Cost) [0.1%]; QC Engineer | 2h |  |  |  |  |
| 272 | 7.14.5 | De-watering&Drying | 1d | 2018-08-23 12:30 | 2018-08-23 20:30 | 271 |  |  | 2018-09-04 13:31 | 2018-09-04 21:31 | 1d | 4.37d |  | TEAM_2Shift_Calendar-1 | Helper [200%] | 4h |  | 200 | 200 |  |
| 273 | 8 | **Fabrication 4238-103-E-7001N A(N) BEM Type(B)** | 170d | 2018-05-04 18:30 A | 2018-08-21 18:31 |  | 2% | 166.57d | 2018-05-04 10:30 | 2018-09-04 21:31 | 193.38d | 8.62d | 4.25d | TEAM_2Shift_Calendar-1 |  | 2644.48h | 14h | 118,715.91 | 119,752.46 | 323.75 |
| 274 | 8.1 | **Dish Forming** | 32.88d | 2018-06-05 17:30 | 2018-06-27 08:30 |  |  |  | 2018-05-04 17:30 | 2018-05-25 08:30 | 32.88d | 95.87d |  | TEAM_2Shift_Calendar-1 |  | 234h |  | 9,181.25 | 9,181.25 |  |
| 275 | 8.1.1 | Inward Inspection | 2d | 2018-06-05 17:30 | 2018-06-06 17:30 | 37FS+160d |  |  | 2018-05-04 17:30 | 2018-05-05 17:30 | 2d | 95.87d | 0d | TEAM_2Shift_Calendar-1 | QC Engineer; Plate (Cost) [0.1%]; Fitter | 4h |  | 137.5 | 137.5 |  |
| 276 | 8.1.2 | **Dish Preparation** | 20.75d | 2018-06-06 17:30 | 2018-06-20 07:30 |  |  |  | 2018-05-05 17:30 | 2018-05-19 07:30 | 20.75d | 95.87d |  | TEAM_2Shift_Calendar-1 |  | 96h |  | 4,131.25 | 4,131.25 |  |
| 277 | 8.1.2.1 | Dish Blank Marking | 8h | 2018-06-06 17:30 | 2018-06-07 09:30 | 275 |  |  | 2018-05-05 17:30 | 2018-05-07 09:30 | 8h | 95.87d | 0d | TEAM_2Shift_Calendar-1 | Helper; Fitter | 16h |  | 950 | 950 |  |
| 278 | 8.1.2.2 | Dish Blank Mkg Inspection | 3h | 2018-06-07 09:30 | 2018-06-07 12:30 | 277 |  |  | 2018-05-07 09:30 | 2018-05-07 12:30 | 3h | 95.87d | 0d | TEAM_2Shift_Calendar-1 | Fitter | 3h |  | 206.25 | 206.25 |  |
| 279 | 8.1.2.3 | Dish Blank Mkg Stamping | 1d | 2018-06-07 12:30 | 2018-06-07 20:30 | 278 |  |  | 2018-05-07 12:30 | 2018-05-07 20:30 | 1d | 95.87d | 0d | TEAM_2Shift_Calendar-1 | TPI (Cost) [0.1%]; QC Engineer | 2h |  |  |  |  |
| 280 | 8.1.2.4 | Transfer For Cutting | 3h | 2018-06-07 20:30 | 2018-06-08 07:30 | 279 |  |  | 2018-05-07 20:30 | 2018-05-08 07:30 | 3h | 95.87d | 0d | TEAM_2Shift_Calendar-1 | Helper [300%] | 9h |  | 450 | 450 |  |
| 281 | 8.1.2.5 | Dish Blank Cutting | 6h | 2018-06-08 07:30 | 2018-06-08 13:30 | 280 |  |  | 2018-05-08 07:30 | 2018-05-08 13:30 | 6h | 95.87d | 0d | TEAM_2Shift_Calendar-1 | Gas Cutter; OAGM; Helper | 18h |  | 712.5 | 712.5 |  |
| 282 | 8.1.2.6 | Dish Blank OD Grinding | 6h | 2018-06-08 13:30 | 2018-06-08 19:30 | 281 |  |  | 2018-05-08 13:30 | 2018-05-08 19:30 | 6h | 95.87d | 0d | TEAM_2Shift_Calendar-1 | Grinding Machine; Grinder | 12h |  | 337.5 | 337.5 |  |
| 283 | 8.1.2.7 | Dish Blank Offloading For Forming | 4h | 2018-06-08 19:30 | 2018-06-11 07:30 | 282 |  |  | 2018-05-08 19:30 | 2018-05-09 07:30 | 4h | 95.87d | 0d | TEAM_2Shift_Calendar-1 | Helper [300%] | 12h |  | 600 | 600 |  |
| 284 | 8.1.2.8 | Dish Forming | 15d | 2018-06-11 07:30 | 2018-06-19 15:30 | 283 |  |  | 2018-05-09 07:30 | 2018-05-18 15:30 | 15d | 95.87d | 0d | TEAM_2Shift_Calendar-1 | SC (Work) | 8h |  |  |  |  |
| 285 | 8.1.2.9 | Receipt After Forming | 4h | 2018-06-19 15:30 | 2018-06-19 19:30 | 284 |  |  | 2018-05-18 15:30 | 2018-05-18 19:30 | 4h | 95.87d | 0d | TEAM_2Shift_Calendar-1 | Helper [300%] | 12h |  | 600 | 600 |  |
| 286 | 8.1.2.10 | Inward Inspection | 4h | 2018-06-19 19:30 | 2018-06-20 07:30 | 285 |  |  | 2018-05-18 19:30 | 2018-05-19 07:30 | 4h | 95.87d | 0d | TEAM_2Shift_Calendar-1 | Fitter | 4h |  | 275 | 275 |  |

Notes:
- 274: 2 Nos

| ID | WBS | Task | Duration | Start | Finish | Predecessors | Baseline start | Baseline finish | Baseline duration | Total slack | Free slack | Calendar | Resources | Work | Cost | Baseline cost |
| --- | --- | --- | --- | --- | --- | --- | --- | --- | --- | --- | --- | --- | --- | --- | --- | --- |
| 287 | 8.1.3 | **Surface Preparation** | 10.12d | 2018-06-20 07:30 | 2018-06-27 08:30 |  | 2018-05-19 07:30 | 2018-05-25 08:30 | 10.12d | 95.87d |  | TEAM_2Shift_Calendar-1 |  | 134h | 4,912.5 | 4,912.5 |
| 288 | 8.1.3.1 | Surface Grinding | 10h | 2018-06-20 07:30 | 2018-06-20 17:30 | 286 | 2018-05-19 07:30 | 2018-05-19 17:30 | 10h | 95.87d | 0d | TEAM_2Shift_Calendar-1 | Grinding Machine; Grinder | 20h | 562.5 | 562.5 |
| 289 | 8.1.3.2 | Surface DP Check | 4h | 2018-06-20 17:30 | 2018-06-20 21:30 | 288 | 2018-05-19 17:30 | 2018-05-19 21:30 | 4h | 95.87d | 0d | TEAM_2Shift_Calendar-1 | Helper; Fitter | 8h | 475 | 475 |
| 290 | 8.1.3.3 | Spider Set Up For SR | 8h | 2018-06-20 21:30 | 2018-06-21 13:30 | 289 | 2018-05-19 21:30 | 2018-05-21 13:30 | 8h | 95.87d | 0d | TEAM_2Shift_Calendar-1 | Helper; Fitter | 16h | 950 | 950 |
| 291 | 8.1.3.4 | Dish SR | 3d | 2018-06-21 13:30 | 2018-06-22 21:30 | 290 | 2018-05-21 13:30 | 2018-05-22 21:30 | 3d | 95.87d | 0d | TEAM_2Shift_Calendar-1 | SC (Work) | 15h |  |  |
| 292 | 8.1.3.5 | Remove Spider | 6h | 2018-06-22 21:30 | 2018-06-25 11:30 | 291 | 2018-05-22 21:30 | 2018-05-23 11:30 | 6h | 95.87d | 0d | TEAM_2Shift_Calendar-1 | Grinding Machine [200%]; Grinder [200%] | 24h | 675 | 675 |
| 293 | 8.1.3.6 | Surface Cleaning | 5h | 2018-06-25 11:30 | 2018-06-25 16:30 | 292 | 2018-05-23 11:30 | 2018-05-23 16:30 | 5h | 95.87d | 0d | TEAM_2Shift_Calendar-1 | Helper | 5h | 250 | 250 |
| 294 | 8.1.3.7 | SF Marking | 4h | 2018-06-25 16:30 | 2018-06-25 20:30 | 293 | 2018-05-23 16:30 | 2018-05-23 20:30 | 4h | 95.87d | 0d | TEAM_2Shift_Calendar-1 | Helper; Fitter | 8h | 475 | 475 |
| 295 | 8.1.3.8 | SF Cutting | 6h | 2018-06-25 20:30 | 2018-06-26 10:30 | 294 | 2018-05-23 20:30 | 2018-05-24 10:30 | 6h | 95.87d | 0d | TEAM_2Shift_Calendar-1 | Gas Cutter; OAGM; Helper | 18h | 712.5 | 712.5 |
| 296 | 8.1.3.9 | Dish Edge Preparation | 6h | 2018-06-26 10:30 | 2018-06-26 16:30 | 295 | 2018-05-24 10:30 | 2018-05-24 16:30 | 6h | 95.87d | 0d | TEAM_2Shift_Calendar-1 | Grinding Machine; Grinder | 12h | 337.5 | 337.5 |
| 297 | 8.1.3.10 | Final Inspection | 1d | 2018-06-26 16:30 | 2018-06-27 08:30 | 296 | 2018-05-24 16:30 | 2018-05-25 08:30 | 1d | 95.87d |  | TEAM_2Shift_Calendar-1 | Helper; Fitter | 8h | 475 | 475 |
| 298 | 8.2 | **Nozzle Fabrication** | 11.62d | 2018-06-07 19:30 | 2018-06-15 16:30 |  | 2018-05-30 11:30 | 2018-06-05 17:30 | 10.75d | 60.38d | 0d | TEAM_2Shift_Calendar-1 |  | 178h | 8,250 | 8,250 |
| 299 | 8.2.1 | Nozzle Pipe Receipt | 1d | 2018-06-07 19:30 | 2018-06-08 11:30 | 46FS+115d | 2018-05-30 11:30 | 2018-05-30 19:30 | 1d | 60.38d | 0d | TEAM_2Shift_Calendar-1 | Forging Std (Cost) [0.1%]; Pipe (Cost) [0.1%]; Store | 2h |  |  |
| 300 | 8.2.2 | **Nozzle Prep** | 6.25d | 2018-06-08 11:30 | 2018-06-13 13:30 |  | 2018-05-30 19:30 | 2018-06-02 14:30 | 5.38d | 60.38d | 3.38d | TEAM_2Shift_Calendar-1 |  | 106h | 4,793.75 | 4,793.75 |
| 301 | 8.2.2.1 | Nozzle Pipe Marking | 5h | 2018-06-08 11:30 | 2018-06-08 16:30 | 299 | 2018-05-30 19:30 | 2018-05-31 08:30 | 5h | 60.38d | 0d | TEAM_2Shift_Calendar-1 | Helper; Fitter | 10h | 593.75 | 593.75 |
| 302 | 8.2.2.2 | Nozzle Pipe Stamping | 11h | 2018-06-08 16:30 | 2018-06-11 11:30 | 301 | 2018-05-31 08:30 | 2018-05-31 12:30 | 4h | 60.38d | 0d | TEAM_2Shift_Calendar-1 | TPI (Cost) [0.1%]; QC Engineer | 4h |  |  |
| 303 | 8.2.2.3 | Nozzle Pipe Cutting | 7h | 2018-06-11 11:30 | 2018-06-11 18:30 | 302 | 2018-05-31 12:30 | 2018-05-31 19:30 | 7h | 60.38d | 0d | TEAM_2Shift_Calendar-1 | Gas Cutter; OAGM; Helper | 21h | 831.25 | 831.25 |
| 304 | 8.2.2.4 | Nozzle Pipe EP | 5h | 2018-06-11 18:30 | 2018-06-12 07:30 | 303 | 2018-05-31 19:30 | 2018-06-01 08:30 | 5h | 60.38d | 0d | TEAM_2Shift_Calendar-1 | Grinding Machine; Grinder | 10h | 281.25 | 281.25 |
| 305 | 8.2.2.5 | Nozzle Flange +Pipe Fitup | 5h | 2018-06-12 07:30 | 2018-06-12 12:30 | 304 | 2018-06-01 08:30 | 2018-06-01 13:30 | 5h | 60.38d | 0d | TEAM_2Shift_Calendar-1 | Helper; SMAW Welder; SMAW Welding Machine; Fitter | 20h | 937.5 | 937.5 |
| 306 | 8.2.2.6 | Nozzle Flange +Pipe Fitup Inspection | 4h | 2018-06-12 12:30 | 2018-06-12 16:30 | 305 | 2018-06-01 13:30 | 2018-06-01 17:30 | 4h | 60.38d | 0d | TEAM_2Shift_Calendar-1 | Helper; Fitter | 8h | 475 | 475 |
| 307 | 8.2.2.7 | Nozzle Flange +Pipe Root Tig Welding | 5h | 2018-06-12 16:30 | 2018-06-12 21:30 | 306 | 2018-06-01 17:30 | 2018-06-02 06:30 | 5h | 60.38d | 0d | TEAM_2Shift_Calendar-1 | TIG Welder; TIG Welding Machine; Helper | 15h | 875 | 875 |
| 308 | 8.2.2.8 | Nozzle Flange +Pipe Filler Pass Welding | 5h | 2018-06-12 21:30 | 2018-06-13 10:30 | 307 | 2018-06-02 06:30 | 2018-06-02 11:30 | 5h | 60.38d | 0d | TEAM_2Shift_Calendar-1 | SMAW Welder; SMAW Welding Machine; Helper | 15h | 593.75 | 593.75 |
| 309 | 8.2.2.9 | DP Check | 3h | 2018-06-13 10:30 | 2018-06-13 13:30 | 308 | 2018-06-02 11:30 | 2018-06-02 14:30 | 3h | 60.38d | 0d | TEAM_2Shift_Calendar-1 | Fitter | 3h | 206.25 | 206.25 |
| 310 | 8.2.3 | **Nozzle-MP** | 3.38d | 2018-06-13 13:30 | 2018-06-15 08:30 |  | 2018-06-02 14:30 | 2018-06-05 09:30 | 3.38d | 60.38d | 0d | TEAM_2Shift_Calendar-1 |  | 70h | 3,456.25 | 3,456.25 |
| 311 | 8.2.3.1 | MP Conn. Marking | 2h | 2018-06-13 13:30 | 2018-06-13 15:30 | 309 | 2018-06-02 14:30 | 2018-06-02 16:30 | 2h | 60.38d | 0d | TEAM_2Shift_Calendar-1 | Helper; Fitter | 4h | 237.5 | 237.5 |
| 312 | 8.2.3.2 | MP Conn. Openning | 5h | 2018-06-13 15:30 | 2018-06-13 20:30 | 311 | 2018-06-02 16:30 | 2018-06-02 21:30 | 5h | 60.38d | 0d | TEAM_2Shift_Calendar-1 | Gas Cutter; OAGM; Helper | 15h | 593.75 | 593.75 |
| 313 | 8.2.3.3 | MP Conn. EP | 3h | 2018-06-13 20:30 | 2018-06-14 07:30 | 312 | 2018-06-02 21:30 | 2018-06-04 08:30 | 3h | 60.38d | 0d | TEAM_2Shift_Calendar-1 | Grinding Machine; Grinder | 6h | 168.75 | 168.75 |
| 314 | 8.2.3.4 | MP Conn. Nozzle Fitup | 4h | 2018-06-14 07:30 | 2018-06-14 11:30 | 313 | 2018-06-04 08:30 | 2018-06-04 12:30 | 4h | 60.38d | 0d | TEAM_2Shift_Calendar-1 | Helper; TIG Welder; TIG Welding Machine; Fitter | 16h | 975 | 975 |
| 315 | 8.2.3.5 | MP Conn. Nozzle Welding | 6h | 2018-06-14 11:30 | 2018-06-14 17:30 | 314 | 2018-06-04 12:30 | 2018-06-04 18:30 | 6h | 60.38d | 0d | TEAM_2Shift_Calendar-1 | TIG Welder; TIG Welding Machine; Helper | 18h | 1,050 | 1,050 |
| 316 | 8.2.3.6 | MP Conn. Nozzle Welding Flush Grind | 4h | 2018-06-14 17:30 | 2018-06-14 21:30 | 315 | 2018-06-04 18:30 | 2018-06-05 06:30 | 4h | 60.38d | 0d | TEAM_2Shift_Calendar-1 | Grinding Machine; Grinder | 8h | 225 | 225 |
| 317 | 8.2.3.7 | Dp Check | 3h | 2018-06-14 21:30 | 2018-06-15 08:30 | 316 | 2018-06-05 06:30 | 2018-06-05 09:30 | 3h | 60.38d |  | TEAM_2Shift_Calendar-1 | Fitter | 3h | 206.25 | 206.25 |
| 318 | 8.2.4 | Radiography | 1d | 2018-06-15 08:30 | 2018-06-15 16:30 | 300, 310 | 2018-06-05 09:30 | 2018-06-05 17:30 | 1d | 60.38d |  | TEAM_2Shift_Calendar-1 | SC Radiography (Cost) [0.1%] |  |  |  |

Notes:
- 301: N1A,N2A,N3A&N4A= 6''NBX80SCH/THK...
- 311: N9,N6,N10&N5=1.5''X160SCH/THK

| ID | WBS | Task | Duration | Start | Finish | Predecessors | Baseline start | Baseline finish | Baseline duration | Total slack | Free slack | Calendar | Resources | Work | Cost | Baseline cost |
| --- | --- | --- | --- | --- | --- | --- | --- | --- | --- | --- | --- | --- | --- | --- | --- | --- |
| 319 | 8.3 | **Saddle Fabrication** | 13.62d | 2018-06-25 08:31 | 2018-07-02 21:31 |  | 2018-05-18 08:31 | 2018-05-25 21:31 | 13.62d | 86.25d |  | TEAM_2Shift_Calendar-1 |  | 239h | 11,593.75 | 11,593.75 |
| 320 | 8.3.1 | Plate Receipt | 1d | 2018-06-25 08:31 | 2018-06-25 16:31 | 44FS+30d | 2018-05-18 08:31 | 2018-05-18 16:31 | 1d | 86.25d | 0d | TEAM_2Shift_Calendar-1 | Plate (Cost) [0.1%]; Helper | 3h | 150 | 150 |
| 321 | 8.3.2 | Saddle Pl Marking | 5h | 2018-06-25 16:31 | 2018-06-25 21:31 | 320 | 2018-05-18 16:31 | 2018-05-18 21:31 | 5h | 86.25d | 0d | TEAM_2Shift_Calendar-1 | Helper; Fitter | 10h | 593.75 | 593.75 |
| 322 | 8.3.3 | Saddle Pl Mkg Inspection | 4h | 2018-06-25 21:31 | 2018-06-26 09:31 | 321 | 2018-05-18 21:31 | 2018-05-19 09:31 | 4h | 86.25d | 0d | TEAM_2Shift_Calendar-1 | Fitter | 4h | 275 | 275 |
| 323 | 8.3.4 | Saddle Pl Mkg Cutting | 10h | 2018-06-26 09:31 | 2018-06-26 19:31 | 322 | 2018-05-19 09:31 | 2018-05-19 19:31 | 10h | 86.25d | 0d | TEAM_2Shift_Calendar-1 | Gas Cutter; OAGM; Helper | 30h | 1,187.5 | 1,187.5 |
| 324 | 8.3.5 | Grinding | 5h | 2018-06-26 19:31 | 2018-06-27 08:31 | 323 | 2018-05-19 19:31 | 2018-05-21 08:31 | 5h | 86.25d | 0d | TEAM_2Shift_Calendar-1 | Grinding Machine; Grinder | 10h | 281.25 | 281.25 |
| 325 | 8.3.6 | Saddle Base Hole Marking | 3h | 2018-06-27 08:31 | 2018-06-27 11:31 | 324 | 2018-05-21 08:31 | 2018-05-21 11:31 | 3h | 86.25d | 0d | TEAM_2Shift_Calendar-1 | Helper; Fitter | 6h | 356.25 | 356.25 |
| 326 | 8.3.7 | Saddle Base Hole Drilling | 5h | 2018-06-27 11:31 | 2018-06-27 16:31 | 325 | 2018-05-21 11:31 | 2018-05-21 16:31 | 5h | 86.25d | 0d | TEAM_2Shift_Calendar-1 | Radial Drilling Machine; Driller | 10h | 343.75 | 343.75 |
| 327 | 8.3.8 | Saddle Pad Forming | 1d | 2018-06-27 16:31 | 2018-06-28 08:31 | 326, 45 | 2018-05-21 16:31 | 2018-05-22 08:31 | 1d | 86.25d | 0d | TEAM_2Shift_Calendar-1 | Helper; Fitter | 16h | 950 | 950 |
| 328 | 8.3.9 | Saddle Fitup | 18h | 2018-06-28 08:31 | 2018-06-29 10:31 | 327 | 2018-05-22 08:31 | 2018-05-23 10:31 | 18h | 86.25d | 0d | TEAM_2Shift_Calendar-1 | Helper; SMAW Welder; SMAW Welding Machine; Fitter | 72h | 3,375 | 3,375 |
| 329 | 8.3.10 | Saddle Fitup Inspection | 4h | 2018-06-29 10:31 | 2018-06-29 14:31 | 328 | 2018-05-23 10:31 | 2018-05-23 14:31 | 4h | 86.25d | 0d | TEAM_2Shift_Calendar-1 | Fitter | 4h | 275 | 275 |
| 330 | 8.3.11 | Saddle Welding | 25h | 2018-06-29 14:31 | 2018-07-02 07:31 | 329 | 2018-05-23 14:31 | 2018-05-25 07:31 | 25h | 86.25d | 0d | TEAM_2Shift_Calendar-1 | SMAW Welder; Helper | 50h | 2,968.75 | 2,968.75 |
| 331 | 8.3.12 | Saddle Profile Grinding | 10h | 2018-07-02 07:31 | 2018-07-02 17:31 | 330 | 2018-05-25 07:31 | 2018-05-25 17:31 | 10h | 86.25d | 0d | TEAM_2Shift_Calendar-1 | Grinding Machine; Grinder | 20h | 562.5 | 562.5 |
| 332 | 8.3.13 | DP Check | 4h | 2018-07-02 17:31 | 2018-07-02 21:31 | 331 | 2018-05-25 17:31 | 2018-05-25 21:31 | 4h | 86.25d |  | TEAM_2Shift_Calendar-1 | Fitter | 4h | 275 | 275 |
| 333 | 8.4 | **Tubesheet Drilling** | 6.62d | 2018-06-04 08:31 | 2018-06-07 13:31 |  | 2018-06-04 08:31 | 2018-06-07 13:31 | 6.62d | 94.62d | 40.38d | TEAM_2Shift_Calendar-1 |  | 51h | 764.29 | 764.29 |
| 334 | 8.4.1 | Send for drilling | 4h | 2018-06-04 08:31 | 2018-06-04 12:31 | 38 | 2018-06-04 08:31 | 2018-06-04 12:31 | 4h | 94.62d | 0d | TEAM_2Shift_Calendar-1 | Store; Tube Sheet (Cost) [0.1%]; Helper | 8h | 200 | 200 |
| 335 | 8.4.2 | Drilling and Taping | 5d | 2018-06-04 12:31 | 2018-06-06 20:31 | 334 | 2018-06-04 12:31 | 2018-06-06 20:31 | 5d | 94.62d | 0d | TEAM_2Shift_Calendar-1 | SC (Work) | 25h |  |  |
| 336 | 8.4.3 | Drilled T/Sheet Receipt | 5h | 2018-06-06 20:31 | 2018-06-07 09:31 | 335 | 2018-06-06 20:31 | 2018-06-07 09:31 | 5h | 94.62d | 0d | TEAM_2Shift_Calendar-1 | Store; Helper | 10h | 250 | 250 |
| 337 | 8.4.4 | Inspection | 4h | 2018-06-07 09:31 | 2018-06-07 13:31 | 336 | 2018-06-07 09:31 | 2018-06-07 13:31 | 4h | 94.62d |  | TEAM_2Shift_Calendar-1 | Fitter; QC Engineer | 8h | 314.29 | 314.29 |
| 338 | 8.5 | **Baffle Fabrication** | 24.12d | 2018-06-05 17:30 | 2018-06-20 18:30 |  | 2018-05-10 17:30 | 2018-05-25 18:30 | 24.12d | 74.25d | 19.75d | TEAM_2Shift_Calendar-1 |  | 240h | 10,043.75 | 10,043.75 |
| 339 | 8.5.1 | **Preparation** | 3.75d | 2018-06-05 17:30 | 2018-06-07 15:30 |  | 2018-05-10 17:30 | 2018-05-14 15:30 | 3.75d | 74.25d |  | TEAM_2Shift_Calendar-1 |  | 68h | 3,062.5 | 3,062.5 |
| 340 | 8.5.1.1 | Marking | 5h | 2018-06-05 17:30 | 2018-06-06 06:30 | 41FS+160d | 2018-05-10 17:30 | 2018-05-11 06:30 | 5h | 74.25d | 0d | TEAM_2Shift_Calendar-1 | Helper; Plate (Cost) [0.1%]; Fitter | 10h | 593.75 | 593.75 |
| 341 | 8.5.1.2 | Cutting | 8h | 2018-06-06 06:30 | 2018-06-06 14:30 | 340 | 2018-05-11 06:30 | 2018-05-11 14:30 | 8h | 74.25d | 0d | TEAM_2Shift_Calendar-1 | Gas Cutter; OAGM; Helper | 24h | 950 | 950 |
| 342 | 8.5.1.3 | Grinding | 8h | 2018-06-06 14:30 | 2018-06-07 06:30 | 341 | 2018-05-11 14:30 | 2018-05-14 06:30 | 8h | 74.25d | 0d | TEAM_2Shift_Calendar-1 | Grinding Machine; Grinder | 16h | 450 | 450 |
| 343 | 8.5.1.4 | Stacking | 6h | 2018-06-07 06:30 | 2018-06-07 12:30 | 342 | 2018-05-14 06:30 | 2018-05-14 12:30 | 6h | 74.25d | 0d | TEAM_2Shift_Calendar-1 | Fitter; Helper | 12h | 712.5 | 712.5 |
| 344 | 8.5.1.5 | Center Line Marking | 3h | 2018-06-07 12:30 | 2018-06-07 15:30 | 343 | 2018-05-14 12:30 | 2018-05-14 15:30 | 3h | 74.25d | 0d | TEAM_2Shift_Calendar-1 | Helper; Fitter | 6h | 356.25 | 356.25 |

| ID | WBS | Task | Duration | Start | Finish | Predecessors | Baseline start | Baseline finish | Baseline duration | Total slack | Free slack | Calendar | Resources | Work | Cost | Baseline cost |
| --- | --- | --- | --- | --- | --- | --- | --- | --- | --- | --- | --- | --- | --- | --- | --- | --- |
| 345 | 8.5.2 | **Activities for holes** | 17.62d | 2018-06-07 15:30 | 2018-06-19 12:30 |  | 2018-05-14 15:30 | 2018-05-24 12:30 | 17.62d | 74.25d |  | TEAM_2Shift_Calendar-1 |  | 150h | 5,731.25 | 5,731.25 |
| 346 | 8.5.2.1 | Drilling | 6d | 2018-06-07 15:30 | 2018-06-12 15:30 | 344 | 2018-05-14 15:30 | 2018-05-17 15:30 | 6d | 74.25d | 0d | TEAM_2Shift_Calendar-1 | SC (Cost) [0.1%] |  |  |  |
| 347 | 8.5.2.2 | Destacking | 6h | 2018-06-12 15:30 | 2018-06-12 21:30 | 346 | 2018-05-17 15:30 | 2018-05-17 21:30 | 6h | 74.25d | 0d | TEAM_2Shift_Calendar-1 | Fitter; Helper | 12h | 712.5 | 712.5 |
| 348 | 8.5.2.3 | Hole Chamfering | 2d | 2018-06-12 21:30 | 2018-06-13 21:30 | 347 | 2018-05-17 21:30 | 2018-05-18 21:30 | 2d | 74.25d | 0d | TEAM_2Shift_Calendar-1 | Radial Drilling Machine; Driller | 20h | 687.5 | 687.5 |
| 349 | 8.5.2.4 | Edge Trimming | 8h | 2018-06-13 21:30 | 2018-06-14 13:30 | 348 | 2018-05-18 21:30 | 2018-05-19 13:30 | 8h | 74.25d | 0d | TEAM_2Shift_Calendar-1 | Grinding Machine; Grinder | 16h | 450 | 450 |
| 350 | 8.5.2.5 | Grinding | 8h | 2018-06-14 13:30 | 2018-06-14 21:30 | 349 | 2018-05-19 13:30 | 2018-05-19 21:30 | 8h | 74.25d | 0d | TEAM_2Shift_Calendar-1 | Grinding Machine; Grinder | 16h | 450 | 450 |
| 351 | 8.5.2.6 | Stacking Type A&B | 7h | 2018-06-14 21:30 | 2018-06-15 12:30 | 350 | 2018-05-19 21:30 | 2018-05-21 12:30 | 7h | 74.25d | 0d | TEAM_2Shift_Calendar-1 | Fitter; Helper | 14h | 831.25 | 831.25 |
| 352 | 8.5.2.7 | Through Hole Check | 1d | 2018-06-15 12:30 | 2018-06-15 20:30 | 351 | 2018-05-21 12:30 | 2018-05-21 20:30 | 1d | 74.25d | 0d | TEAM_2Shift_Calendar-1 | Helper; Fitter | 16h | 950 | 950 |
| 353 | 8.5.2.8 | Redrill If Required | 3d | 2018-06-15 20:30 | 2018-06-18 12:30 | 352 | 2018-05-21 20:30 | 2018-05-23 12:30 | 3d | 74.25d | 0d | TEAM_2Shift_Calendar-1 | Radial Drilling Machine; Driller | 48h | 1,650 | 1,650 |
| 354 | 8.5.2.9 | OD Machining | 2d | 2018-06-18 12:30 | 2018-06-19 12:30 | 353 | 2018-05-23 12:30 | 2018-05-24 12:30 | 2d | 74.25d | 0d | TEAM_2Shift_Calendar-1 | SC (Work) | 8h |  |  |
| 355 | 8.5.3 | Destacking | 8h | 2018-06-19 12:30 | 2018-06-19 20:30 | 354 | 2018-05-24 12:30 | 2018-05-24 20:30 | 8h | 74.25d | 0d | TEAM_2Shift_Calendar-1 | Fitter; Helper | 16h | 950 | 950 |
| 356 | 8.5.4 | Cleaning | 6h | 2018-06-19 20:30 | 2018-06-20 10:30 | 355 | 2018-05-24 20:30 | 2018-05-25 10:30 | 6h | 74.25d | 0d | TEAM_2Shift_Calendar-1 | Helper | 6h | 300 | 300 |
| 357 | 8.5.5 | Ready For Assembly | 1d | 2018-06-20 10:30 | 2018-06-20 18:30 | 356 | 2018-05-25 10:30 | 2018-05-25 18:30 | 1d | 74.25d |  | TEAM_2Shift_Calendar-1 |  |  |  |  |
| 358 | 8.6 | **Sealing Strip Fabrication** | 3d | 2018-07-02 08:31 | 2018-07-03 16:31 |  | 2018-05-31 08:31 | 2018-06-01 16:31 | 3d | 54.5d | 0d | TEAM_2Shift_Calendar-1 |  | 42h | 1,787.5 | 1,787.5 |
| 359 | 8.6.1 | Pl Receipt | 1d | 2018-07-02 08:31 | 2018-07-02 16:31 | 48FS+100d | 2018-05-31 08:31 | 2018-05-31 16:31 | 1d | 54.5d | 0d | TEAM_2Shift_Calendar-1 | Plate (Cost) [0.1%]; Helper | 4h | 200 | 200 |
| 360 | 8.6.2 | Sealing Strip Marking | 5h | 2018-07-02 16:31 | 2018-07-02 21:31 | 359 | 2018-05-31 16:31 | 2018-05-31 21:31 | 5h | 54.5d | 0d | TEAM_2Shift_Calendar-1 | Helper; Fitter | 10h | 593.75 | 593.75 |
| 361 | 8.6.3 | Sealing Strip Cutting | 6h | 2018-07-02 21:31 | 2018-07-03 11:31 | 360 | 2018-05-31 21:31 | 2018-06-01 11:31 | 6h | 54.5d | 0d | TEAM_2Shift_Calendar-1 | Gas Cutter; OAGM; Helper | 18h | 712.5 | 712.5 |
| 362 | 8.6.4 | Sealing Strip Grinding | 5h | 2018-07-03 11:31 | 2018-07-03 16:31 | 361 | 2018-06-01 11:31 | 2018-06-01 16:31 | 5h | 54.5d |  | TEAM_2Shift_Calendar-1 | Grinding Machine; Grinder | 10h | 281.25 | 281.25 |
| 363 | 8.7 | **Tie Rod** | 3d | 2018-06-28 08:31 | 2018-06-29 16:31 |  | 2018-08-14 08:31 | 2018-08-16 16:31 | 3d | 60.5d | 6d | TEAM_2Shift_Calendar-1 |  | 47h | 2,526.25 | 2,526.25 |
| 364 | 8.7.1 | Rod Receipt | 1h | 2018-06-28 08:31 | 2018-06-28 09:31 | 42 | 2018-08-14 08:31 | 2018-08-14 09:31 | 1h | 60.5d | 0d | TEAM_2Shift_Calendar-1 | Rod (Cost) [0.1%]; Helper | 1h | 50 | 50 |
| 365 | 8.7.2 | Marking | 3h | 2018-06-28 09:31 | 2018-06-28 12:31 | 364 | 2018-08-14 09:31 | 2018-08-14 12:31 | 3h | 60.5d | 0d | TEAM_2Shift_Calendar-1 | Helper; Fitter | 6h | 356.25 | 356.25 |
| 366 | 8.7.3 | Cutting | 4h | 2018-06-28 12:31 | 2018-06-28 16:31 | 365 | 2018-08-14 12:31 | 2018-08-14 16:31 | 4h | 60.5d | 0d | TEAM_2Shift_Calendar-1 | Helper; Cutting Machine | 8h | 200 | 200 |
| 367 | 8.7.4 | Thread Machining | 2d | 2018-06-28 16:31 | 2018-06-29 16:31 | 366 | 2018-08-14 16:31 | 2018-08-16 16:31 | 2d | 60.5d |  | TEAM_2Shift_Calendar-1 | Lathe; Lathe Operator | 32h | 1,920 | 1,920 |
| 368 | 8.8 | **Spacer Tube** | 3.5d | 2018-06-14 08:31 | 2018-06-15 20:31 |  | 2018-08-14 08:31 | 2018-08-16 20:31 | 3.5d | 82d | 27.5d | TEAM_2Shift_Calendar-1 |  | 53h | 2,795 | 2,795 |
| 369 | 8.8.1 | Spacer Tube Marking | 4h | 2018-06-14 08:31 | 2018-06-14 12:31 | 43 | 2018-08-14 08:31 | 2018-08-14 12:31 | 4h | 82d | 0d | TEAM_2Shift_Calendar-1 | Helper; Tube (Cost) [0.1%]; Fitter | 8h | 475 | 475 |
| 370 | 8.8.2 | Spacer Tube Cutting | 5h | 2018-06-14 12:31 | 2018-06-14 17:31 | 369 | 2018-08-14 12:31 | 2018-08-14 17:31 | 5h | 82d | 0d | TEAM_2Shift_Calendar-1 | Helper; Cutting Machine | 10h | 250 | 250 |
| 371 | 8.8.3 | Spacer Tube M/C | 2d | 2018-06-14 17:31 | 2018-06-15 17:31 | 370 | 2018-08-14 17:31 | 2018-08-16 17:31 | 2d | 82d | 0d | TEAM_2Shift_Calendar-1 | Lathe Operator; Lathe | 32h | 1,920 | 1,920 |
| 372 | 8.8.4 | Spacer Cleaning | 3h | 2018-06-15 17:31 | 2018-06-15 20:31 | 371 | 2018-08-16 17:31 | 2018-08-16 20:31 | 3h | 82d |  | TEAM_2Shift_Calendar-1 | Helper | 3h | 150 | 150 |

Notes:
- 369: OD =19.5X2.11T

| ID | WBS | Task | Duration | Start | Finish | Predecessors | Complete | Remaining | Baseline start | Baseline finish | Baseline duration | Total slack | Free slack | Calendar | Resources | Work | Actual work | Cost | Baseline cost | Actual cost |
| --- | --- | --- | --- | --- | --- | --- | --- | --- | --- | --- | --- | --- | --- | --- | --- | --- | --- | --- | --- | --- |
| 373 | 8.9 | **Other Components** | 58.12d | 2018-06-19 08:31 | 2018-07-25 09:31 |  |  |  | 2018-06-13 08:31 | 2018-06-14 17:31 | 3.12d | 8d | 0d | TEAM_2Shift_Calendar-1 |  | 82h |  | 3,337.5 | 3,337.5 |  |
| 374 | 8.9.1 | **Lifting Lug** | 3.12d | 2018-07-23 16:31 | 2018-07-25 09:31 |  |  |  | 2018-06-13 08:31 | 2018-06-14 17:31 | 3.12d | 8d |  | TEAM_2Shift_Calendar-1 |  | 50h |  | 2,256.25 | 2,256.25 |  |
| 375 | 8.9.1.1 | Lifting Lug Marking | 3h | 2018-07-23 16:31 | 2018-07-23 19:31 | 44FS+77d |  |  | 2018-06-13 08:31 | 2018-06-13 11:31 | 3h | 8d | 0d | TEAM_2Shift_Calendar-1 | Helper; Plate (Cost) [0.1%]; Fitter | 6h |  | 356.25 | 356.25 |  |
| 376 | 8.9.1.2 | Lifting Lug Cutting | 4h | 2018-07-23 19:31 | 2018-07-24 07:31 | 375 |  |  | 2018-06-13 11:31 | 2018-06-13 15:31 | 4h | 8d | 0d | TEAM_2Shift_Calendar-1 | OAGM; Gas Cutter | 8h |  | 275 | 275 |  |
| 377 | 8.9.1.3 | Lifting Lug Pad Marking | 3h | 2018-07-24 07:31 | 2018-07-24 10:31 | 376 |  |  | 2018-06-13 15:31 | 2018-06-13 18:31 | 3h | 8d | 0d | TEAM_2Shift_Calendar-1 | Helper; Fitter | 6h |  | 356.25 | 356.25 |  |
| 378 | 8.9.1.4 | Lifting Lug Pad Cutting | 4h | 2018-07-24 10:31 | 2018-07-24 14:31 | 377 |  |  | 2018-06-13 18:31 | 2018-06-14 06:31 | 4h | 8d | 0d | TEAM_2Shift_Calendar-1 | OAGM; Gas Cutter | 8h |  | 275 | 275 |  |
| 379 | 8.9.1.5 | Lifting Lug Pad Grinding | 5h | 2018-07-24 14:31 | 2018-07-24 19:31 | 378 |  |  | 2018-06-14 06:31 | 2018-06-14 11:31 | 5h | 8d | 0d | TEAM_2Shift_Calendar-1 | Grinding Machine; Grinder | 10h |  | 281.25 | 281.25 |  |
| 380 | 8.9.1.6 | Lifting Lug Pad Forming | 6h | 2018-07-24 19:31 | 2018-07-25 09:31 | 379 |  |  | 2018-06-14 11:31 | 2018-06-14 17:31 | 6h | 8d |  | TEAM_2Shift_Calendar-1 | Helper; Fitter | 12h |  | 712.5 | 712.5 |  |
| 381 | 8.9.2 | **Insulation Cleat** | 2d | 2018-06-19 08:31 | 2018-06-20 08:31 |  |  |  | 2018-06-13 08:31 | 2018-06-14 08:31 | 2d | 64.12d |  | TEAM_2Shift_Calendar-1 |  | 32h |  | 1,081.25 | 1,081.25 |  |
| 382 | 8.9.2.1 | Insulation Cleat Marking | 2h | 2018-06-19 08:31 | 2018-06-19 10:31 | 48FS+80d |  |  | 2018-06-13 08:31 | 2018-06-13 10:31 | 2h | 64.12d | 0d | TEAM_2Shift_Calendar-1 | Helper; Plate (Cost) [0.1%]; Fitter | 4h |  | 237.5 | 237.5 |  |
| 383 | 8.9.2.2 | Insulation Cleat Cutting | 3h | 2018-06-19 10:31 | 2018-06-19 13:31 | 382 |  |  | 2018-06-13 10:31 | 2018-06-13 13:31 | 3h | 64.12d | 0d | TEAM_2Shift_Calendar-1 | Helper; Cutting Machine | 6h |  | 150 | 150 |  |
| 384 | 8.9.2.3 | Insulation Cleat Grinding | 5h | 2018-06-19 13:31 | 2018-06-19 18:31 | 383 |  |  | 2018-06-13 13:31 | 2018-06-13 18:31 | 5h | 64.12d | 0d | TEAM_2Shift_Calendar-1 | Grinding Machine; Grinder | 10h |  | 281.25 | 281.25 |  |
| 385 | 8.9.2.4 | Insulation Cleat Drilling | 6h | 2018-06-19 18:31 | 2018-06-20 08:31 | 384 |  |  | 2018-06-13 18:31 | 2018-06-14 08:31 | 6h | 64.12d |  | TEAM_2Shift_Calendar-1 | Radial Drilling Machine; Driller | 12h |  | 412.5 | 412.5 |  |
| 386 | 8.10 | **Channel assembly** | 76.25d | 2018-05-04 18:30 A | 2018-06-21 20:31 |  | 8% | 70.06d | 2018-05-04 10:30 | 2018-06-26 14:30 | 82.5d | 89.62d |  | TEAM_2Shift_Calendar-1 |  | 398h | 6h | 17,190.71 | 23,485.09 | 123.75 |
| 387 | 8.10.1 | Inward Inspection | 8h | 2018-05-04 18:30 A | 2018-05-05 10:30 A | 36FS+61d | 100% |  | 2018-05-04 10:30 | 2018-05-05 09:30 | 15h |  |  | TEAM_2Shift_Calendar-1 | Fitter; Forging Non-Std (Cost) [0.1%]; Pipe (Cost) [0.1%]; QC Engineer | 3h | 3h | 123.75 | 140.62 | 123.75 |
| 388 | 8.10.2 | Stamping | 1d | 2018-05-05 10:30 A | 2018-05-05 18:30 A | 387 | 100% |  | 2018-05-05 09:30 | 2018-05-05 17:30 | 1d |  |  | TEAM_2Shift_Calendar-1 | TPI (Cost) [0.1%]; QC Engineer | 3h | 3h |  |  |  |
| 389 | 8.10.3 | Edge Preparation | 5h | 2018-06-06 18:30 | 2018-06-07 07:30 | 388FS+50d |  |  | 2018-05-05 17:30 | 2018-05-07 06:30 | 5h | 91.25d | 0d | TEAM_2Shift_Calendar-1 | Grinding Machine; Grinder | 10h |  | 281.25 | 281.25 |  |
| 390 | 8.10.4 | Channel to dish fit up | 5h | 2018-06-07 07:30 | 2018-06-07 12:30 | 39, 389 |  |  | 2018-05-17 08:31 | 2018-05-17 13:31 | 5h | 91.25d | 0d | TEAM_2Shift_Calendar-1 | Helper; SMAW Welder; SMAW Welding Machine; Fitter | 20h |  | 937.5 | 937.5 |  |
| 391 | 8.10.5 | Inspection | 7h | 2018-06-07 12:30 | 2018-06-07 19:30 | 390 |  |  | 2018-05-17 13:31 | 2018-05-17 16:31 | 3h | 91.25d | 0d | TEAM_2Shift_Calendar-1 | Helper; QC Engineer | 6h |  | 150 | 150 |  |
| 392 | 8.10.6 | welding | 6h | 2018-06-07 19:30 | 2018-06-08 09:30 | 391 |  |  | 2018-05-17 16:31 | 2018-05-18 06:31 | 6h | 91.25d | 0d | TEAM_2Shift_Calendar-1 | SMAW Welder; SMAW Welding Machine; Helper [200%] | 24h |  | 1,012.5 | 1,012.5 |  |
| 393 | 8.10.7 | Inside welding backchip grinding | 3h | 2018-06-08 09:30 | 2018-06-08 12:30 | 392 |  |  | 2018-05-18 06:31 | 2018-05-18 09:31 | 3h | 91.25d | 0d | TEAM_2Shift_Calendar-1 | Grinding Machine; Grinder | 6h |  | 168.75 | 168.75 |  |
| 394 | 8.10.8 | Inside welding | 6h | 2018-06-08 12:30 | 2018-06-08 18:30 | 393 |  |  | 2018-05-18 09:31 | 2018-05-18 15:31 | 6h | 91.25d | 0d | TEAM_2Shift_Calendar-1 | SMAW Welder; SMAW Welding Machine; Helper [200%] | 24h |  | 1,012.5 | 1,012.5 |  |
| 395 | 8.10.9 | DP Check | 4h | 2018-06-08 18:30 | 2018-06-11 06:30 | 394 |  |  | 2018-05-18 15:31 | 2018-05-18 19:31 | 4h | 91.25d | 0d | TEAM_2Shift_Calendar-1 | Fitter | 4h |  | 275 | 275 |  |
| 396 | 8.10.10 | Radiography | 1d | 2018-06-11 06:30 | 2018-06-11 14:30 | 395 |  |  | 2018-05-18 19:31 | 2018-05-19 11:31 | 1d | 91.25d | 0d | TEAM_2Shift_Calendar-1 | SC Radiography (Cost) [0.1%] |  |  |  |  |  |
| 397 | 8.10.11 | Channel flange fit up | 6h | 2018-06-11 14:30 | 2018-06-11 20:30 | 396 |  |  | 2018-05-19 11:31 | 2018-05-19 17:31 | 6h | 91.25d | 0d | TEAM_2Shift_Calendar-1 | Helper; SMAW Welder; SMAW Welding Machine; Fitter | 24h |  | 1,125 | 1,125 |  |
| 398 | 8.10.12 | Inspection | 4h | 2018-06-11 20:30 | 2018-06-12 08:30 | 397 |  |  | 2018-05-19 17:31 | 2018-05-19 21:31 | 4h | 91.25d | 0d | TEAM_2Shift_Calendar-1 | Fitter; QC Engineer | 8h |  | 550 | 550 |  |
| 399 | 8.10.13 | welding | 6h | 2018-06-12 08:30 | 2018-06-12 14:30 | 398 |  |  | 2018-05-19 21:31 | 2018-05-21 11:31 | 6h | 91.25d | 0d | TEAM_2Shift_Calendar-1 | SMAW Welder; SMAW Welding Machine; Helper [200%] | 24h |  | 1,012.5 | 1,012.5 |  |
| 400 | 8.10.14 | Inside welding backchip grinding | 4h | 2018-06-12 14:30 | 2018-06-12 18:30 | 399 |  |  | 2018-05-21 11:31 | 2018-05-21 15:31 | 4h | 91.25d | 0d | TEAM_2Shift_Calendar-1 | Grinding Machine; Grinder | 8h |  | 225 | 225 |  |
| 401 | 8.10.15 | Inside welding | 5h | 2018-06-12 18:30 | 2018-06-13 07:30 | 400 |  |  | 2018-05-21 15:31 | 2018-05-21 20:31 | 5h | 91.25d | 0d | TEAM_2Shift_Calendar-1 | SMAW Welder; SMAW Welding Machine; Helper [200%] | 20h |  | 843.75 | 843.75 |  |
| 402 | 8.10.16 | Orientation Marking | 5h | 2018-06-13 07:30 | 2018-06-13 12:30 | 401 |  |  | 2018-05-21 20:31 | 2018-05-22 09:31 | 5h | 91.25d | 0d | TEAM_2Shift_Calendar-1 | Helper; Fitter | 10h |  | 593.75 | 593.75 |  |
| 403 | 8.10.17 | Inspection | 4h | 2018-06-13 12:30 | 2018-06-13 16:30 | 402 |  |  | 2018-05-22 09:31 | 2018-05-22 13:31 | 4h | 91.25d | 0d | TEAM_2Shift_Calendar-1 | Fitter | 4h |  | 275 | 275 |  |
| 404 | 8.10.18 | Nozzle N13A,N14A,N4A,N9-10,N3A opening | 2d | 2018-06-13 16:30 | 2018-06-14 16:30 | 403 |  |  | 2018-05-22 13:31 | 2018-05-23 13:31 | 2d | 91.25d | 0d | TEAM_2Shift_Calendar-1 | OAGM; Helper; Gas Cutter | 24h |  | 950 | 950 |  |
| 405 | 8.10.19 | Edge preparation | 3h | 2018-06-14 16:30 | 2018-06-14 19:30 | 404 |  |  | 2018-05-23 13:31 | 2018-05-23 16:31 | 3h | 91.25d | 1.62d | TEAM_2Shift_Calendar-1 | Grinding Machine; Grinder | 6h |  | 168.75 | 168.75 |  |
| 406 | 8.10.20 | RF pad and nozzle assembly fitup | 1d | 2018-06-15 16:30 | 2018-06-16 08:30 | 298, 405 |  |  | 2018-06-05 17:30 | 2018-06-06 09:30 | 1d | 89.62d | 0d | TEAM_2Shift_Calendar-1 | Helper; SMAW Welder; SMAW Welding Machine; Fitter | 32h |  | 1,500 | 1,500 |  |
| 407 | 8.10.21 | Inspection | 15.02h | 2018-06-16 08:30 | 2018-06-18 07:31 | 406 |  |  | 2018-06-06 09:30 | 2018-06-07 08:31 | 15.02h | 89.62d | 0d | TEAM_2Shift_Calendar-1 | Helper; QC Engineer | 6h |  | 204.46 | 204.46 |  |
| 408 | 8.10.22 | RF Pad with Channel Fit up | 5h | 2018-06-18 07:31 | 2018-06-18 12:31 | 407 |  |  | 2018-06-07 08:31 | 2018-06-07 13:31 | 5h | 89.62d | 0d | TEAM_2Shift_Calendar-1 | Helper; SMAW Welder; SMAW Welding Machine; Fitter | 20h |  | 937.5 | 937.5 |  |
| 409 | 8.10.23 | RF pad Noz Asse Welding | 6h | 2018-06-18 12:31 | 2018-06-18 18:31 | 408 |  |  | 2018-06-07 13:31 | 2018-06-07 19:31 | 6h | 89.62d | 0d | TEAM_2Shift_Calendar-1 | SMAW Welder; SMAW Welding Machine; Helper [200%] | 24h |  | 1,012.5 | 1,012.5 |  |
| 410 | 8.10.24 | RF pad with Channel Welding | 7h | 2018-06-18 18:31 | 2018-06-19 09:31 | 409 |  |  | 2018-06-07 19:31 | 2018-06-08 10:31 | 7h | 89.62d | 0d | TEAM_2Shift_Calendar-1 | SMAW Welder; SMAW Welding Machine; Helper [200%] | 28h |  | 1,181.25 | 1,181.25 |  |
| 411 | 8.10.25 | Inside Backchip Grinding | 4h | 2018-06-19 09:31 | 2018-06-19 13:31 | 410 |  |  | 2018-06-08 10:31 | 2018-06-08 14:31 | 4h | 89.62d | 0d | TEAM_2Shift_Calendar-1 | Grinding Machine; Grinder | 8h |  | 225 | 225 |  |
| 412 | 8.10.26 | DP Check | 3h | 2018-06-19 13:31 | 2018-06-19 16:31 | 411 |  |  | 2018-06-08 14:31 | 2018-06-08 17:31 | 3h | 89.62d | 0d | TEAM_2Shift_Calendar-1 | Fitter | 3h |  | 206.25 | 206.25 |  |
| 413 | 8.10.27 | Inside Welding | 6h | 2018-06-19 16:31 | 2018-06-20 06:31 | 412 |  |  | 2018-06-08 17:31 | 2018-06-11 07:31 | 6h | 89.62d | 0d | TEAM_2Shift_Calendar-1 | SMAW Welder; SMAW Welding Machine; Helper [200%] | 24h |  | 1,012.5 | 1,012.5 |  |
| 414 | 8.10.28 | Inside Welding Flush Grinding | 4h | 2018-06-20 06:31 | 2018-06-20 10:31 | 413 |  |  | 2018-06-11 07:31 | 2018-06-11 11:31 | 4h | 89.62d | 0d | TEAM_2Shift_Calendar-1 | Grinding Machine; Grinder | 8h |  | 225 | 225 |  |
| 415 | 8.10.29 | RF pad Air leak test | 2d | 2018-06-20 10:31 | 2018-06-21 10:31 | 414 |  |  | 2018-06-11 11:31 | 2018-06-12 11:31 | 2d | 89.62d | 0d | TEAM_2Shift_Calendar-1 | Helper [200%]; Fitter | 15h |  | 843.75 | 843.75 |  |
| 416 | 8.10.30 | DP Check | 2h | 2018-06-21 10:31 | 2018-06-21 12:31 | 415 |  |  | 2018-06-12 11:31 | 2018-06-12 13:31 | 2h | 89.62d | 0d | TEAM_2Shift_Calendar-1 | Fitter | 2h |  | 137.5 | 137.5 |  |
| 417 | 8.10.31 | Radiography | 1d | 2018-06-21 12:31 | 2018-06-21 20:31 | 416 |  |  | 2018-06-12 13:31 | 2018-06-12 21:31 | 1d | 89.62d | 52.62d | TEAM_2Shift_Calendar-1 | SC Radiography (Cost) [0.1%] |  |  |  |  |  |

Notes:
- 386: 2 Nos

| ID | WBS | Task | Duration | Start | Finish | Predecessors | Complete | Remaining | Baseline start | Baseline finish | Baseline duration | Total slack | Free slack | Calendar | Resources | Work | Actual work | Cost | Baseline cost | Actual cost |
| --- | --- | --- | --- | --- | --- | --- | --- | --- | --- | --- | --- | --- | --- | --- | --- | --- | --- | --- | --- | --- |
| 418 | 8.11 | **Other Components Welding** | 11.88d | 2018-07-25 09:31 | 2018-08-02 08:31 |  |  |  | 2018-06-14 17:31 | 2018-06-26 14:30 | 17.62d | 37d |  | TEAM_2Shift_Calendar-1 |  | 133h |  | 5,215.6 | 6,277.5 |  |
| 419 | 8.11.1 | Ch Lifting Lug Pad Fitup | 4h | 2018-07-25 09:31 | 2018-07-25 13:31 | 373, 417 |  |  | 2018-06-14 17:31 | 2018-06-14 21:31 | 4h | 37d | 0d | TEAM_2Shift_Calendar-1 | Helper; SMAW Welder; SMAW Welding Machine; Fitter | 16h |  | 750 | 750 |  |
| 420 | 8.11.2 | Ch Lifting Lug Pad Weld Arrangement | 2h | 2018-07-25 13:31 | 2018-07-25 15:31 | 419 |  |  | 2018-06-14 21:31 | 2018-06-15 07:31 | 2h | 37d | 0d | TEAM_2Shift_Calendar-1 | Helper [200%]; Fitter | 6h |  | 337.5 | 337.5 |  |
| 421 | 8.11.3 | Ch Lifting Lug Pad Welding | 5h | 2018-07-25 15:31 | 2018-07-25 20:31 | 420 |  |  | 2018-06-15 07:31 | 2018-06-15 12:31 | 5h | 37d | 0d | TEAM_2Shift_Calendar-1 | SMAW Welder; SMAW Welding Machine; Helper [200%] | 20h |  | 843.75 | 843.75 |  |
| 422 | 8.11.4 | Ch Lifting Lug Fitup | 4h | 2018-07-25 20:31 | 2018-07-26 08:31 | 421 |  |  | 2018-06-15 12:31 | 2018-06-15 16:31 | 4h | 37d | 0d | TEAM_2Shift_Calendar-1 | Helper; SMAW Welder; SMAW Welding Machine; Fitter | 16h |  | 750 | 750 |  |
| 423 | 8.11.5 | Ch Lifting Lug Welding | 6h | 2018-07-26 08:31 | 2018-07-26 14:31 | 422 |  |  | 2018-06-15 16:31 | 2018-06-16 06:31 | 6h | 37d | 0d | TEAM_2Shift_Calendar-1 | SMAW Welder; SMAW Welding Machine; Helper [200%] | 24h |  | 1,012.5 | 1,012.5 |  |
| 424 | 8.11.6 | Ch Final Dress Up | 1d | 2018-07-26 14:31 | 2018-07-27 06:31 | 423 |  |  | 2018-06-16 06:31 | 2018-06-16 14:31 | 1d | 37d | 0d | TEAM_2Shift_Calendar-1 | Grinding Machine; Grinder | 16h |  | 450 | 450 |  |
| 425 | 8.11.7 | Ch Dimensional Inspection | 6h | 2018-07-27 06:31 | 2018-07-27 12:31 | 424 |  |  | 2018-06-16 14:31 | 2018-06-19 11:29 | 28.97h | 37d | 0d | TEAM_2Shift_Calendar-1 | Helper [200%]; QC Engineer; Fitter | 7h |  | 322.16 | 843.75 |  |
| 426 | 8.11.8 | Ch Clearance by TPI | 1d | 2018-07-27 12:31 | 2018-07-27 20:31 | 425 |  |  | 2018-06-19 11:29 | 2018-06-20 07:42 | 1.53d | 37.62d | 0d | TEAM_2Shift_Calendar-1 | TPI (Cost) [0.1%]; QC Engineer | 3h |  |  |  |  |
| 427 | 8.11.9 | Ch PWHT | 4d | 2018-07-27 20:31 | 2018-07-31 20:31 | 426 |  |  | 2018-06-20 07:42 | 2018-06-22 07:42 | 4d | 37.62d | 0d | TEAM_2Shift_Calendar-1 | SC Radiography (Cost) [0.1%] |  |  |  |  |  |
| 428 | 8.11.10 | Ch Receipt after PWHT | 4h | 2018-07-31 20:31 | 2018-08-01 08:31 | 427 |  |  | 2018-06-22 07:42 | 2018-06-25 11:30 | 2.48d | 37.62d | 0d | TEAM_2Shift_Calendar-1 | Helper [300%]; QC Engineer; Crane | 8h |  | 299.69 | 840 |  |
| 429 | 8.11.11 | Ch Surface Cleaning & DP Check | 1d | 2018-08-01 08:31 | 2018-08-01 16:31 | 428 |  |  | 2018-06-25 11:30 | 2018-06-25 19:30 | 1d | 37.87d | 0d | TEAM_2Shift_Calendar-1 | Grinding Machine; Grinder | 16h |  | 450 | 450 |  |
| 430 | 8.11.12 | Ch NDE by TPI | 1d | 2018-08-01 16:31 | 2018-08-02 08:31 | 429 |  |  | 2018-06-25 19:30 | 2018-06-26 14:30 | 1.38d | 37.87d |  | TEAM_2Shift_Calendar-1 | TPI (Cost) [0.1%]; QC Engineer | 1h |  |  |  |  |
| 431 | 8.12 | **Shell assembly** | 143d | 2018-05-04 19:30 A | 2018-08-03 11:31 |  | 7% | 132.74d | 2018-05-04 11:30 | 2018-06-25 16:29 | 80.62d | 8.38d | 0d | TEAM_2Shift_Calendar-1 |  | 359.02h | 8h | 16,269.43 | 16,227.2 | 200 |
| 432 | 8.12.1 | Inward Inspection | 1d | 2018-05-04 19:30 A | 2018-05-05 11:30 A | 35FS+61d | 100% |  | 2018-05-04 11:30 | 2018-05-04 19:30 | 1d |  |  | TEAM_2Shift_Calendar-1 | Fitter; Forging Non-Std (Cost) [0.1%]; Pipe (Cost) [0.1%]; QC Engineer | 4h | 4h | 200 | 169.23 | 200 |
| 433 | 8.12.2 | Stamping | 1d | 2018-05-05 11:30 A | 2018-05-05 19:30 A | 432 | 100% |  | 2018-05-04 19:30 | 2018-05-05 11:30 | 1d |  |  | TEAM_2Shift_Calendar-1 | TPI (Cost) [0.1%]; QC Engineer | 4h | 4h |  |  |  |
| 434 | 8.12.3 | Edge preparation | 7h | 2018-06-07 19:30 | 2018-06-08 10:30 | 433FS+52d |  |  | 2018-05-05 11:30 | 2018-05-05 18:30 | 7h | 96.5d |  | TEAM_2Shift_Calendar-1 | Grinding Machine; Grinder | 14h |  | 393.75 | 393.75 |  |
| 435 | 8.12.4 | **Nozzle Welding** | 10.75d | 2018-06-15 16:30 | 2018-06-22 06:30 |  |  |  | 2018-06-05 17:30 | 2018-06-13 07:31 | 10.75d | 60.38d |  | TEAM_2Shift_Calendar-1 |  | 210h |  | 10,251.79 | 10,251.72 |  |
| 436 | 8.12.4.1 | Nozzle orientation Marking & Inspection | 5h | 2018-06-15 16:30 | 2018-06-15 21:30 | 298, 433 |  |  | 2018-06-05 17:30 | 2018-06-06 06:30 | 5h | 60.38d | 0d | TEAM_2Shift_Calendar-1 | Helper [200%]; Fitter | 15h |  | 843.75 | 843.75 |  |
| 437 | 8.12.4.2 | Sh Nozzle Opening | 1d | 2018-06-15 21:30 | 2018-06-16 13:30 | 436 |  |  | 2018-06-06 06:30 | 2018-06-06 14:30 | 1d | 60.38d | 0d | TEAM_2Shift_Calendar-1 | OAGM; Helper; Gas Cutter | 24h |  | 950 | 950 |  |
| 438 | 8.12.4.3 | Sh Nozzle Opening Edge Preparation | 6h | 2018-06-16 13:30 | 2018-06-16 19:30 | 437 |  |  | 2018-06-06 14:30 | 2018-06-06 20:30 | 6h | 60.38d | 0d | TEAM_2Shift_Calendar-1 | Grinding Machine; Grinder | 12h |  | 337.5 | 337.5 |  |
| 439 | 8.12.4.4 | RF pad and nozzle assembly fitup | 6h | 2018-06-16 19:30 | 2018-06-18 09:30 | 438 |  |  | 2018-06-06 20:30 | 2018-06-07 10:30 | 6h | 60.38d | 0d | TEAM_2Shift_Calendar-1 | Helper; SMAW Welder; SMAW Welding Machine; Fitter | 24h |  | 1,125 | 1,125 |  |
| 440 | 8.12.4.5 | Inspection | 4h | 2018-06-18 09:30 | 2018-06-18 13:30 | 439 |  |  | 2018-06-07 10:30 | 2018-06-07 14:31 | 4.02h | 60.38d | 0d | TEAM_2Shift_Calendar-1 | Helper; QC Engineer | 4h |  | 114.29 | 114.22 |  |
| 441 | 8.12.4.6 | RF Pad with Channel Fit up | 5h | 2018-06-18 13:30 | 2018-06-18 18:30 | 440 |  |  | 2018-06-07 14:31 | 2018-06-07 19:31 | 5h | 60.38d | 0d | TEAM_2Shift_Calendar-1 | Helper; TIG Welder; TIG Welding Machine; Fitter | 20h |  | 1,218.75 | 1,218.75 |  |
| 442 | 8.12.4.7 | RF pad Noz Asse Welding | 1d | 2018-06-18 18:30 | 2018-06-19 10:30 | 441 |  |  | 2018-06-07 19:31 | 2018-06-08 11:31 | 1d | 60.38d | 0d | TEAM_2Shift_Calendar-1 | TIG Welder; TIG Welding Machine; Helper | 24h |  | 1,400 | 1,400 |  |
| 443 | 8.12.4.8 | RF pad with Channel Welding | 1d | 2018-06-19 10:30 | 2018-06-19 18:30 | 442 |  |  | 2018-06-08 11:31 | 2018-06-08 19:31 | 1d | 60.38d | 0d | TEAM_2Shift_Calendar-1 | TIG Welder; TIG Welding Machine; Helper | 24h |  | 1,400 | 1,400 |  |
| 444 | 8.12.4.9 | Inside Backchip Grinding | 4h | 2018-06-19 18:30 | 2018-06-20 06:30 | 443 |  |  | 2018-06-08 19:31 | 2018-06-11 07:31 | 4h | 60.38d | 0d | TEAM_2Shift_Calendar-1 | Grinding Machine; Grinder | 8h |  | 225 | 225 |  |
| 445 | 8.12.4.10 | DP Check | 3h | 2018-06-20 06:30 | 2018-06-20 09:30 | 444 |  |  | 2018-06-11 07:31 | 2018-06-11 10:31 | 3h | 60.38d | 0d | TEAM_2Shift_Calendar-1 | Fitter | 3h |  | 206.25 | 206.25 |  |
| 446 | 8.12.4.11 | Inside Welding | 5h | 2018-06-20 09:30 | 2018-06-20 14:30 | 445 |  |  | 2018-06-11 10:31 | 2018-06-11 15:31 | 5h | 60.38d | 0d | TEAM_2Shift_Calendar-1 | SMAW Welder; SMAW Welding Machine; Helper | 15h |  | 593.75 | 593.75 |  |
| 447 | 8.12.4.12 | Inside Welding Flush Grinding | 5h | 2018-06-20 14:30 | 2018-06-20 19:30 | 446 |  |  | 2018-06-11 15:31 | 2018-06-11 20:31 | 5h | 60.38d | 0d | TEAM_2Shift_Calendar-1 | Grinding Machine; Grinder | 10h |  | 281.25 | 281.25 |  |
| 448 | 8.12.4.13 | RF pad Air leak test | 1d | 2018-06-20 19:30 | 2018-06-21 11:30 | 447 |  |  | 2018-06-11 20:31 | 2018-06-12 12:31 | 1d | 60.38d | 0d | TEAM_2Shift_Calendar-1 | Helper [200%]; Fitter | 24h |  | 1,350 | 1,350 |  |
| 449 | 8.12.4.14 | DP Check | 3h | 2018-06-21 11:30 | 2018-06-21 14:30 | 448 |  |  | 2018-06-12 12:31 | 2018-06-12 15:31 | 3h | 60.38d | 0d | TEAM_2Shift_Calendar-1 | Fitter | 3h |  | 206.25 | 206.25 |  |
| 450 | 8.12.4.15 | Radiography | 1d | 2018-06-21 14:30 | 2018-06-22 06:30 | 449 |  |  | 2018-06-12 15:31 | 2018-06-13 07:31 | 1d | 60.38d | 52.38d | TEAM_2Shift_Calendar-1 | SC Radiography (Cost) [0.1%] |  |  |  |  |  |

| ID | WBS | Task | Duration | Start | Finish | Predecessors | Baseline start | Baseline finish | Baseline duration | Total slack | Free slack | Calendar | Resources | Work | Cost | Baseline cost |
| --- | --- | --- | --- | --- | --- | --- | --- | --- | --- | --- | --- | --- | --- | --- | --- | --- |
| 451 | 8.12.5 | **Other Components Welding** | 3.12d | 2018-07-25 09:31 | 2018-07-26 18:31 |  | 2018-06-14 17:31 | 2018-06-16 10:31 | 3.12d | 8d |  | TEAM_2Shift_Calendar-1 |  | 86h | 3,806.25 | 3,806.25 |
| 452 | 8.12.5.1 | Sh + Saddle Pad Fitup | 1d | 2018-07-25 09:31 | 2018-07-25 17:31 | 373, 450 | 2018-06-14 17:31 | 2018-06-15 09:31 | 1d | 8d | 0d | TEAM_2Shift_Calendar-1 | Helper; SMAW Welder; SMAW Welding Machine; Fitter | 32h | 1,500 | 1,500 |
| 453 | 8.12.5.2 | Sh + Saddle Pad Welding Arrangement | 4h | 2018-07-25 17:31 | 2018-07-25 21:31 | 452 | 2018-06-15 09:31 | 2018-06-15 13:31 | 4h | 8d | 0d | TEAM_2Shift_Calendar-1 | Helper [200%]; Fitter | 12h | 675 | 675 |
| 454 | 8.12.5.3 | Sh + Saddle Pad Welding | 1d | 2018-07-25 21:31 | 2018-07-26 13:31 | 453 | 2018-06-15 13:31 | 2018-06-15 21:31 | 1d | 8d | 0d | TEAM_2Shift_Calendar-1 | SMAW Welder; SMAW Welding Machine; Helper [200%] | 32h | 1,350 | 1,350 |
| 455 | 8.12.5.4 | Sh Final Dress Up | 5h | 2018-07-26 13:31 | 2018-07-26 18:31 | 454 | 2018-06-15 21:31 | 2018-06-16 10:31 | 5h | 8d | 0d | TEAM_2Shift_Calendar-1 | Grinding Machine; Grinder | 10h | 281.25 | 281.25 |
| 456 | 8.12.6 | **Final Works & Inspection** | 11.12d | 2018-07-26 18:31 | 2018-08-03 11:31 |  | 2018-06-16 10:31 | 2018-06-25 16:29 | 12.75d | 8d |  | TEAM_2Shift_Calendar-1 |  | 41.02h | 1,617.64 | 1,606.25 |
| 457 | 8.12.6.1 | Sh Dimensional Inspection | 3d | 2018-07-26 18:31 | 2018-07-30 10:31 | 455 | 2018-06-16 10:31 | 2018-06-18 14:30 | 2.5d | 8d | 0d | TEAM_2Shift_Calendar-1 | Helper [200%]; QC Engineer; Fitter | 12h | 517.64 | 506.25 |
| 458 | 8.12.6.2 | Sh Clearance by TPI | 1d | 2018-07-30 10:31 | 2018-07-30 18:31 | 457 | 2018-06-18 14:30 | 2018-06-19 12:30 | 1.75d | 8d | 0d | TEAM_2Shift_Calendar-1 | TPI (Cost) [0.1%]; QC Engineer | 4h |  |  |
| 459 | 8.12.6.3 | Sh PWHT | 4d | 2018-07-30 18:31 | 2018-08-01 18:31 | 458 | 2018-06-19 12:30 | 2018-06-21 12:30 | 4d | 8.38d | 0d | TEAM_2Shift_Calendar-1 | SC (Cost) [0.1%] |  |  |  |
| 460 | 8.12.6.4 | Sh Receipt after PWHT | 1d | 2018-08-01 18:31 | 2018-08-02 10:31 | 459 | 2018-06-21 12:30 | 2018-06-21 20:30 | 1d | 8.38d | 0d | TEAM_2Shift_Calendar-1 | Helper [300%] | 6h | 300 | 300 |
| 461 | 8.12.6.5 | Sh Surface Cleaning | 1d | 2018-08-02 10:31 | 2018-08-02 18:31 | 460 | 2018-06-21 20:30 | 2018-06-22 12:30 | 1d | 8.38d | 0d | TEAM_2Shift_Calendar-1 | Helper [200%] | 16h | 800 | 800 |
| 462 | 8.12.6.6 | Sh NDE by TPI | 9h | 2018-08-02 18:31 | 2018-08-03 11:31 | 461 | 2018-06-22 12:30 | 2018-06-25 16:29 | 2.5d | 8.38d |  | TEAM_2Shift_Calendar-1 | QC Engineer; TPI (Cost) [0.1%] | 3.02h |  |  |
| 463 | 8.13 | **Tube Bundle Assy** | 69.25d | 2018-07-03 16:31 | 2018-08-17 10:31 |  | 2018-08-16 20:31 | 2018-08-31 10:31 | 22.75d | 8.38d | 0d | TEAM_2Shift_Calendar-1 |  | 514.46h | 25,903.74 | 25,903.74 |
| 464 | 8.13.1 | **Preliminary Set up** | 58.88d | 2018-07-03 16:31 | 2018-08-09 07:31 |  | 2018-08-16 20:31 | 2018-08-24 07:31 | 12.38d | 8.38d |  | TEAM_2Shift_Calendar-1 |  | 353.46h | 17,619.37 | 17,619.37 |
| 465 | 8.13.1.1 | Assembly Frame Setup | 10h | 2018-07-03 16:31 | 2018-07-04 10:31 | 333, 338, 358, 363, 368 | 2018-08-16 20:31 | 2018-08-17 14:31 | 10h | 54.5d | 0d | TEAM_2Shift_Calendar-1 | Helper [400%]; Fitter [200%] | 60h | 3,375 | 3,375 |
| 466 | 8.13.1.2 | Skeleton Assembly with Tubesheet | 12h | 2018-07-04 10:31 | 2018-07-05 06:31 | 465 | 2018-08-17 14:31 | 2018-08-18 10:31 | 12h | 54.5d | 0d | TEAM_2Shift_Calendar-1 | Helper [400%]; Fitter [200%] | 72h | 4,050 | 4,050 |
| 467 | 8.13.1.3 | Tie-Rod welding | 4h | 2018-07-05 06:31 | 2018-07-05 10:31 | 466 | 2018-08-18 10:31 | 2018-08-18 14:31 | 4h | 54.5d | 46.12d | TEAM_2Shift_Calendar-1 | TIG Welder; TIG Welding Machine; Helper [200%] | 16h | 900 | 900 |
| 468 | 8.13.1.4 | Shell Fitup with Tubesheet | 6h | 2018-08-03 11:31 | 2018-08-03 17:31 | 431, 467 | 2018-08-18 14:31 | 2018-08-18 20:31 | 6h | 8.38d | 0d | TEAM_2Shift_Calendar-1 | Helper; SMAW Welder; SMAW Welding Machine; Fitter | 24h | 1,125 | 1,125 |
| 469 | 8.13.1.5 | Fitup Inspection | 7h | 2018-08-03 17:31 | 2018-08-04 08:31 | 468 | 2018-08-18 20:31 | 2018-08-20 08:31 | 4h | 8.38d | 0d | TEAM_2Shift_Calendar-1 | Helper; QC Engineer | 5.46h | 271.87 | 271.87 |
| 470 | 8.13.1.6 | Welding | 6h | 2018-08-04 08:31 | 2018-08-04 14:31 | 469 | 2018-08-20 08:31 | 2018-08-20 14:31 | 6h | 8.38d | 0d | TEAM_2Shift_Calendar-1 | SMAW Welder; SMAW Welding Machine; Helper [200%] | 24h | 1,012.5 | 1,012.5 |
| 471 | 8.13.1.7 | Backchip | 5h | 2018-08-04 14:31 | 2018-08-04 19:31 | 470 | 2018-08-20 14:31 | 2018-08-20 19:31 | 5h | 8.38d | 0d | TEAM_2Shift_Calendar-1 | Grinding Machine; Grinder | 10h | 281.25 | 281.25 |
| 472 | 8.13.1.8 | Flush Grinding | 3h | 2018-08-04 19:31 | 2018-08-06 06:31 | 471 | 2018-08-20 19:31 | 2018-08-21 06:31 | 3h | 8.38d | 0d | TEAM_2Shift_Calendar-1 | Grinding Machine; Grinder | 6h | 168.75 | 168.75 |
| 473 | 8.13.1.9 | Shell Fitup with Tubesheet | 6h | 2018-08-06 06:31 | 2018-08-06 12:31 | 472 | 2018-08-21 06:31 | 2018-08-21 12:31 | 6h | 8.38d | 0d | TEAM_2Shift_Calendar-1 | Helper; SMAW Welder; SMAW Welding Machine; Fitter | 24h | 1,125 | 1,125 |
| 474 | 8.13.1.10 | Fitup Inspection | 11h | 2018-08-06 12:31 | 2018-08-07 07:31 | 473 | 2018-08-21 12:31 | 2018-08-22 07:31 | 11h | 8.38d | 0d | TEAM_2Shift_Calendar-1 | Helper; QC Engineer | 12h | 360 | 360 |
| 475 | 8.13.1.11 | Welding | 6h | 2018-08-07 07:31 | 2018-08-07 13:31 | 474 | 2018-08-22 07:31 | 2018-08-22 13:31 | 6h | 8.38d | 0d | TEAM_2Shift_Calendar-1 | SMAW Welder; SMAW Welding Machine; Helper [200%] | 24h | 1,012.5 | 1,012.5 |
| 476 | 8.13.1.12 | Backchip | 5h | 2018-08-07 13:31 | 2018-08-07 18:31 | 475 | 2018-08-22 13:31 | 2018-08-22 18:31 | 5h | 8.38d | 0d | TEAM_2Shift_Calendar-1 | Grinding Machine; Grinder | 10h | 281.25 | 281.25 |
| 477 | 8.13.1.13 | Flush Grinding | 3h | 2018-08-07 18:31 | 2018-08-07 21:31 | 476 | 2018-08-22 18:31 | 2018-08-22 21:31 | 3h | 8.38d | 0d | TEAM_2Shift_Calendar-1 | Grinding Machine; Grinder | 6h | 168.75 | 168.75 |
| 478 | 8.13.1.14 | Tube Insertion | 1d | 2018-08-07 21:31 | 2018-08-08 13:31 | 477 | 2018-08-22 21:31 | 2018-08-23 13:31 | 1d | 8.38d | 0d | TEAM_2Shift_Calendar-1 | Helper [300%]; Fitter [200%] | 40h | 2,300 | 2,300 |
| 479 | 8.13.1.15 | Tube Allignment | 10h | 2018-08-08 13:31 | 2018-08-09 07:31 | 478 | 2018-08-23 13:31 | 2018-08-24 07:31 | 10h | 8.38d | 0d | TEAM_2Shift_Calendar-1 | Helper; Fitter | 20h | 1,187.5 | 1,187.5 |

| ID | WBS | Task | Duration | Start | Finish | Predecessors | Baseline start | Baseline finish | Baseline duration | Total slack | Free slack | Calendar | Resources | Work | Cost | Baseline cost |
| --- | --- | --- | --- | --- | --- | --- | --- | --- | --- | --- | --- | --- | --- | --- | --- | --- |
| 480 | 8.13.2 | **Tube Welding & other Works** | 10.38d | 2018-08-09 07:31 | 2018-08-17 10:31 |  | 2018-08-24 07:31 | 2018-08-31 10:31 | 10.38d | 8.38d |  | TEAM_2Shift_Calendar-1 |  | 161h | 8,284.38 | 8,284.38 |
| 481 | 8.13.2.1 | Tube / Tubesheet Root Welding | 2d | 2018-08-09 07:31 | 2018-08-10 07:31 | 479 | 2018-08-24 07:31 | 2018-08-27 07:31 | 2d | 8.38d | 0d | TEAM_2Shift_Calendar-1 | TIG Welder; TIG Welding Machine; Helper | 48h | 2,800 | 2,800 |
| 482 | 8.13.2.2 | DP Check | 1d | 2018-08-10 07:31 | 2018-08-10 15:31 | 481 | 2018-08-27 07:31 | 2018-08-27 15:31 | 1d | 8.38d | 0d | TEAM_2Shift_Calendar-1 | Fitter | 8h | 550 | 550 |
| 483 | 8.13.2.3 | Tube / Tubesheet Final Welding | 2d | 2018-08-10 15:31 | 2018-08-13 15:31 | 482 | 2018-08-27 15:31 | 2018-08-28 15:31 | 2d | 8.38d | 0d | TEAM_2Shift_Calendar-1 | TIG Welder; TIG Welding Machine; Helper | 48h | 2,800 | 2,800 |
| 484 | 8.13.2.4 | Tube Trimming | 1d | 2018-08-13 15:31 | 2018-08-14 07:31 | 483 | 2018-08-28 15:31 | 2018-08-29 07:31 | 1d | 8.38d | 0d | TEAM_2Shift_Calendar-1 | Grinding Machine; Grinder | 16h | 450 | 450 |
| 485 | 8.13.2.5 | DP Check | 3h | 2018-08-14 07:31 | 2018-08-14 10:31 | 484 | 2018-08-29 07:31 | 2018-08-29 10:31 | 3h | 8.38d | 0d | TEAM_2Shift_Calendar-1 | Fitter | 3h | 206.25 | 206.25 |
| 486 | 8.13.2.6 | Expansion | 2d | 2018-08-14 10:31 | 2018-08-16 10:31 | 485 | 2018-08-29 10:31 | 2018-08-30 10:31 | 2d | 8.38d | 0d | TEAM_2Shift_Calendar-1 | Helper; Expanding Machine; Fitter | 33h | 1,306.25 | 1,306.25 |
| 487 | 8.13.2.7 | Inspection | 2d | 2018-08-16 10:31 | 2018-08-17 10:31 | 486 | 2018-08-30 10:31 | 2018-08-31 10:31 | 2d | 8.38d |  | TEAM_2Shift_Calendar-1 | QC Engineer; Fitter | 5h | 171.88 | 171.88 |
| 488 | 8.14 | **Final Assembly&testing** | 7d | 2018-08-17 10:31 | 2018-08-21 18:31 |  | 2018-08-31 10:31 | 2018-09-04 21:31 | 7.38d | 8.38d |  | TEAM_2Shift_Calendar-1 |  | 74h | 3,857.14 | 3,857.14 |
| 489 | 8.14.1 | Shell side Hydro testing | 2d | 2018-08-17 10:31 | 2018-08-18 10:31 | 431, 463 | 2018-08-31 10:31 | 2018-09-01 10:31 | 2d | 8.38d | 0d | TEAM_2Shift_Calendar-1 | Helper [400%]; Fitter [200%] | 32h | 1,800 | 1,800 |
| 490 | 8.14.2 | Shell side hydro test TPI inspection | 1d | 2018-08-18 10:31 | 2018-08-18 18:31 | 489 | 2018-09-01 10:31 | 2018-09-01 21:30 | 1.37d | 8.38d | 0d | TEAM_2Shift_Calendar-1 | TPI (Cost) [0.1%]; QC Engineer | 4h |  |  |
| 491 | 8.14.3 | Channel side Hydro test | 2d | 2018-08-18 18:31 | 2018-08-20 18:31 | 386, 490 | 2018-09-01 21:30 | 2018-09-03 21:30 | 2d | 8.62d | 0d | TEAM_2Shift_Calendar-1 | Helper [400%]; Fitter [300%] | 32h | 1,857.14 | 1,857.14 |
| 492 | 8.14.4 | Channel side Hydro test TPI inspection | 1d | 2018-08-20 18:31 | 2018-08-21 10:31 | 491 | 2018-09-03 21:30 | 2018-09-04 13:31 | 1d | 8.62d | 0d | TEAM_2Shift_Calendar-1 | TPI (Cost) [0.1%]; QC Engineer | 2h |  |  |
| 493 | 8.14.5 | De-watering&Drying | 1d | 2018-08-21 10:31 | 2018-08-21 18:31 | 492 | 2018-09-04 13:31 | 2018-09-04 21:31 | 1d | 8.62d |  | TEAM_2Shift_Calendar-1 | Helper [200%] | 4h | 200 | 200 |
| 494 | 9 | **Painting&final inspection** | 14d | 2018-08-23 20:30 | 2018-09-01 20:30 |  | 2018-09-04 21:31 | 2018-09-17 13:31 | 17d | 4.37d | 0.5d | TEAM_2Shift_Calendar-1 |  | 99h | 3,458.94 | 3,832.36 |
| 495 | 9.1 | Blast cleaning Arrangement | 1d | 2018-08-23 20:30 | 2018-08-24 12:30 | 52, 273 | 2018-09-04 21:31 | 2018-09-05 13:31 | 1d | 4.37d | 0d | TEAM_2Shift_Calendar-1 | Store | 5h |  |  |
| 496 | 9.2 | Transport for BC | 1d | 2018-08-24 12:30 | 2018-08-24 20:30 | 495 | 2018-09-05 13:31 | 2018-09-05 21:31 | 1d | 4.37d | 0d | TEAM_2Shift_Calendar-1 | Helper [300%] | 6h | 300 | 300 |
| 497 | 9.3 | Blast Cleaning | 2d | 2018-08-24 20:30 | 2018-08-27 20:30 | 496 | 2018-09-05 21:31 | 2018-09-07 13:31 | 3d | 4.37d | 0d | TEAM_2Shift_Calendar-1 | Helper | 16h | 800 | 1,200 |
| 498 | 9.4 | Return from Blast Clean | 1d | 2018-08-27 20:30 | 2018-08-28 12:30 | 497 | 2018-09-07 13:31 | 2018-09-07 21:31 | 1d | 4.37d | 0d | TEAM_2Shift_Calendar-1 | Helper [300%] | 6h | 300 | 300 |
| 499 | 9.5 | Primer Painting | 1d | 2018-08-28 20:30 | 2018-08-29 12:30 | 498FS+1d | 2018-09-10 13:31 | 2018-09-11 13:31 | 2d | 15.5d |  | TEAM_2Shift_Calendar-1 | Painter | 8h |  |  |
| 500 | 9.6 | Top coat painting | 2d | 2018-08-28 12:30 | 2018-08-29 12:30 | 498 | 2018-09-07 21:31 | 2018-09-10 21:31 | 2d | 4.37d | 0d | TEAM_2Shift_Calendar-1 | Painter | 16h |  |  |
| 501 | 9.7 | Painting inspection | 1d | 2018-08-29 12:30 | 2018-08-29 20:30 | 500 | 2018-09-10 21:31 | 2018-09-11 13:31 | 1d | 4.37d | 0d | TEAM_2Shift_Calendar-1 | Helper; QC Engineer | 4h | 159.73 | 133.15 |
| 502 | 9.8 | Stacked assembly(A,B) | 2d | 2018-08-31 12:30 | 2018-09-01 12:30 | 501FS+3d | 2018-09-12 21:31 | 2018-09-15 21:31 | 4d | 4.5d | 0d | TEAM_2Shift_Calendar-1 | Helper; QC Engineer; Fitter | 20h | 950 | 950 |
| 503 | 9.9 | Final Inspection | 1d | 2018-09-01 12:30 | 2018-09-01 20:30 | 502 | 2018-09-15 21:31 | 2018-09-17 13:31 | 1d | 4.5d | 0d | TEAM_2Shift_Calendar-1 | Helper; Fitter; QC Engineer | 18h | 949.21 | 949.21 |

| ID | WBS | Task | Duration | Start | Finish | Predecessors | Baseline start | Baseline finish | Baseline duration | Total slack | Free slack | Calendar | Resources | Work | Cost | Baseline cost |
| --- | --- | --- | --- | --- | --- | --- | --- | --- | --- | --- | --- | --- | --- | --- | --- | --- |
| 504 | 10 | **Dispatch Clearance &Documentation** | 7d | 2018-09-01 20:30 | 2018-09-06 12:30 |  | 2018-09-17 13:31 | 2018-09-20 21:31 | 7d | 4.62d |  | TEAM_2Shift_Calendar-1 |  | 32h | 125 | 125 |
| 505 | 10.1 | Despatch clerance | 1d | 2018-09-01 20:30 | 2018-09-03 12:30 | 503 | 2018-09-17 13:31 | 2018-09-17 21:31 | 1d | 4.62d | 0d | TEAM_2Shift_Calendar-1 | TPI (Cost) [0.1%]; QC Engineer | 5h |  |  |
| 506 | 10.2 | Despatch-4238(B) | 1d | 2018-09-03 12:30 | 2018-09-03 20:30 | 505 | 2018-09-17 21:31 | 2018-09-18 13:31 | 1d | 4.62d | 0d | TEAM_2Shift_Calendar-1 | Helper; Store | 5h | 125 | 125 |
| 507 | 10.3 | Final documentation | 5d | 2018-09-03 20:30 | 2018-09-06 12:30 | 506 | 2018-09-18 13:31 | 2018-09-20 21:31 | 5d | 4.62d |  | TEAM_2Shift_Calendar-1 | QC Engineer | 22h |  |  |
| 508 | 11 | **PBG** | 2d | 2018-09-03 08:30 | 2018-09-04 17:30 |  | 2018-09-17 13:31 | 2018-09-20 13:31 | 3d | 4d |  |  |  | 16h |  |  |
| 509 | 11.1 | PBG Submission (10%) | 2d | 2018-09-03 08:30 | 2018-09-04 17:30 | 494 | 2018-09-17 13:31 | 2018-09-20 13:31 | 3d | 4d |  |  | Finance | 16h |  |  |
