# 4240-RCI

Schedule from MS Project, 2017-12-22 to 2018-07-04, costs in Rs., A marks actual dates.

## Calendars

- TEAM_Stand_Calendar: Mon-Sat 08:30-12:30, 13:30-17:30; Sun off. Exceptions (off unless hours are given): 2017-01-13 to 2023-08-12 (2nd Sat, recurring), 2017-01-26 to 2036-01-26 (Republic Day, recurring), 2017-01-27 to 2023-08-26 (4th Sat, recurring), 2017-05-01 to 2036-05-01 (May Day, recurring), 2017-08-15 to 2036-08-15 (Independence Day, recurring), 2017-10-02 to 2036-10-02 (Gandhi Jayanti, recurring), 2018-01-15 (Thiruvalluvar Day'2018).
- TEAM_2Shift_Calendar-1: Mon-Sat 06:00-22:00; Sun off. Exceptions (off unless hours are given): 2017-01-13 to 2023-02-11 (2nd Sat, recurring), 2017-01-26 to 2036-01-26 (Republic Day, recurring), 2017-01-27 to 2023-08-26 (4th Sat, recurring), 2017-05-01 to 2036-05-01 (May Day, recurring), 2017-08-15 to 2036-08-15 (Indepdence Day, recurring), 2017-10-02 to 2036-10-02 (Gandhi Jayanti, recurring), 2018-01-15 (Thiruvalluvar Day'2018).

## Resources

| Resource | Rate |
| --- | --- |
| Marketing |  |
| PMO Head |  |
| Draftman |  |
| Client |  |
| PPC Engineer |  |
| QC Engineer |  |
| Helper | 50 |
| Store |  |
| PM |  |
| Crane |  |
| Fitter | 68.75 |
| Design Engineer |  |
| Purchase Engineer |  |
| Production Engineer |  |
| Production Department |  |
| Finance |  |
| CNC Lathe |  |
| Consumable - Welding (Cost) |  |
| Consumables (Cost) |  |
| Cutting Machine |  |
| Rolling Machine |  |
| SAW Machine |  |
| SAW Welder | 68.75 |
| SMAW Welder | 68.75 |
| SMAW Welding Machine |  |
| TIG Welder | 125 |
| TIG Welding Machine |  |
| Gas Cutter | 68.75 |
| OAGM |  |
| SC (Cost) |  |
| SC (Work) |  |

## Schedule

| ID | WBS | Task | Duration | Start | Finish | Predecessors | Complete | Remaining | Baseline start | Baseline finish | Baseline duration | Total slack | Free slack | Constraint | Resources | Work | Actual work | Cost | Baseline cost |
| --- | --- | --- | --- | --- | --- | --- | --- | --- | --- | --- | --- | --- | --- | --- | --- | --- | --- | --- | --- |
| 1 | 1 | **Project Initiation** | 5d | 2017-12-22 A | 2017-12-28 A |  | 100% |  | 2017-12-22 | 2017-12-28 | 5d |  |  |  |  | 9h | 9h |  |  |
| 2 | 1.1 | PO Receipt | 1d | 2017-12-22 A | 2017-12-22 A |  | 100% |  | 2017-12-22 | 2017-12-22 | 1d |  |  | start no earlier than 2017-12-22 | Marketing | 2h | 2h |  |  |
| 3 | 1.2 | Work Order | 1d | 2017-12-26 A | 2017-12-26 A | 2FS+1d | 100% |  | 2017-12-26 | 2017-12-26 | 1d |  |  | finish no earlier than 2017-12-26 | Marketing | 4h | 4h |  |  |
| 4 | 1.3 | CRM | 1d | 2017-12-28 A | 2017-12-28 A | 3FS+1d | 100% |  | 2017-12-28 | 2017-12-28 | 1d |  |  |  | Marketing; PM; PMO Head | 3h | 3h |  |  |
| 5 | 2 | **Design** | 1d | 2017-12-30 A | 2017-12-30 A |  | 100% |  | 2017-12-30 | 2017-12-30 | 1d |  |  |  |  | 2h | 2h |  |  |
| 6 | 2.1 | Drawing circulated to internal departments | 1d | 2017-12-30 A | 2017-12-30 A | 4FS+1d | 100% |  | 2017-12-30 | 2017-12-30 | 1d |  |  |  |  | 2h | 2h |  |  |
| 7 | 3 | **MaterialOrdering** | 12d | 2018-03-07 A | 2018-03-21 A |  | 100% |  | 2018-03-07 | 2018-03-21 | 12d |  |  |  |  | 28h | 28h |  |  |
| 8 | 3.1 | **PR Issue** | 12d | 2018-03-07 A | 2018-03-21 A |  | 100% |  | 2018-03-07 | 2018-03-21 | 12d |  |  |  |  | 28h | 28h |  |  |
| 9 | 3.1.1 | Titanium Gr5 Plates 16thk | 1d | 2018-03-07 A | 2018-03-07 A | 6FS+50d | 100% |  | 2018-03-07 | 2018-03-07 | 1d |  |  |  | PPC Engineer | 2h | 2h |  |  |
| 10 | 3.1.2 | Maraging steel plates | 1d | 2018-03-07 A | 2018-03-07 A | 9SS | 100% |  | 2018-03-07 | 2018-03-07 | 1d |  |  |  | PPC Engineer | 2h | 2h |  |  |
| 11 | 3.1.3 | EN24 Rod | 1d | 2018-03-07 A | 2018-03-07 A | 10SS | 100% |  | 2018-03-07 | 2018-03-07 | 1d |  |  |  | PPC Engineer | 8h | 8h |  |  |
| 12 | 3.1.4 | Titanium sheet 3mm thk | 1d | 2018-03-07 A | 2018-03-07 A | 11SS | 100% |  | 2018-03-07 | 2018-03-07 | 1d |  |  |  | PPC Engineer | 8h | 8h |  |  |
| 13 | 3.1.5 | Titanium Gr5 Plates 20thk | 1d | 2018-03-21 A | 2018-03-21 A | 12FS+10d | 100% |  | 2018-03-21 | 2018-03-21 | 1d |  |  |  | PPC Engineer | 8h | 8h |  |  |
| 14 | 4 | **Material Ordering** | 43d | 2018-03-22 A | 2018-05-16 |  | 40% | 25.8d | 2018-03-07 | 2018-03-22 | 12d | 6d |  |  |  | 52h | 16h |  |  |
| 15 | 4.1 | Maraging steel plates | 4d | 2018-05-11 | 2018-05-16 | 10FS+50d |  |  | 2018-03-08 | 2018-03-20 | 10d | 0d |  |  | Purchase Engineer | 20h |  |  |  |
| 16 | 4.2 | EN24 Rod | 3d | 2018-05-09 A | 2018-05-11 A | 11FS+48d | 100% |  | 2018-03-08 | 2018-03-20 | 10d |  |  |  | Purchase Engineer | 12h | 12h |  |  |
| 17 | 4.3 | Titanium sheet 3mm thk | 2d | 2018-05-11 | 2018-05-14 | 12FS+50d |  |  | 2018-03-08 | 2018-03-20 | 10d | 8d | 0d |  | Purchase Engineer | 16h |  |  |  |
| 18 | 4.4 | Titanium Gr5 Plates 20thk | 1d | 2018-03-22 A | 2018-03-22 A | 13 | 100% |  | 2018-03-22 | 2018-03-22 | 1d |  |  |  | Purchase Engineer | 4h | 4h |  |  |
| 19 | 5 | **MaterialReceipt** | 22d | 2018-05-10 | 2018-06-06 |  |  |  | 2018-04-09 | 2018-04-30 | 17d | 6d |  |  |  | 22h |  | 374.93 | 520.71 |
| 20 | 5.1 | Maraging steel plates | 1d | 2018-06-05 | 2018-06-05 | 15FS+15d |  |  | 2018-04-27 | 2018-04-27 | 1d | 0d |  |  | Crane; Helper; Store | 4h |  | 29.41 | 29.41 |
| 21 | 5.2 | EN24 Rod | 1d | 2018-05-25 | 2018-05-25 | 16FS+10d |  |  | 2018-04-25 | 2018-04-25 | 1d | 11d | 0d |  | Helper; Store | 3h |  | 75 | 75 |
| 22 | 5.3 | Titanium sheet 3mm thk | 1d | 2018-06-02 | 2018-06-02 | 17FS+15d |  |  | 2018-04-09 | 2018-04-09 | 1d | 8d | 0d |  | Helper; Store | 4h |  | 100 | 100 |
| 23 | 5.4 | Titanium Gr5 Plates 20thk | 1d | 2018-05-10 | 2018-05-10 | 18FS+37d |  |  | 2018-04-23 | 2018-04-23 | 1d | 17.62d | 0d |  | Crane; Helper; Store | 4h |  | 66.67 | 66.67 |
| 24 | 5.5 | **Raw Material Inspection** | 1d | 2018-06-06 | 2018-06-06 |  |  |  | 2018-04-30 | 2018-04-30 | 1d | 0d |  |  |  | 2h |  | 66.62 | 66.62 |
| 25 | 5.5.1 | Maraging steel plates | 1d | 2018-06-06 | 2018-06-06 | 20 |  |  | 2018-04-30 | 2018-04-30 | 1d | 0d |  |  | QC Engineer; Helper [200%] | 2h |  | 66.62 | 66.62 |
| 26 | 5.6 | EN24 Rod | 1d | 2018-05-28 | 2018-05-28 | 21 |  |  | 2018-04-26 | 2018-04-26 | 1d | 11d | 0d |  | QC Engineer | 1h |  |  |  |
| 27 | 5.7 | Titanium sheet 3mm thk | 1d | 2018-06-04 | 2018-06-04 | 22 |  |  | 2018-04-10 | 2018-04-10 | 1d | 8d | 0d |  | QC Engineer; Helper [200%] | 2h |  | 19.05 | 94.12 |
| 28 | 5.8 | Titanium Gr5 Plates 20thk | 1d | 2018-05-11 | 2018-05-11 | 23 |  |  | 2018-04-24 | 2018-04-24 | 1d | 17.62d | 0d |  | QC Engineer; Helper [200%] | 2h |  | 18.18 | 88.89 |

Notes:
- 17: stock to check

| ID | WBS | Task | Duration | Start | Finish | Predecessors | Baseline start | Baseline finish | Baseline duration | Total slack | Free slack | Resources | Work | Cost |
| --- | --- | --- | --- | --- | --- | --- | --- | --- | --- | --- | --- | --- | --- | --- |
| 29 | 6 | **Fab: 4240-R167** | 12.38d | 2018-05-11 | 2018-05-29 |  | 2018-04-25 | 2018-05-04 | 7d | 17.62d |  |  | 61.75h | 914.06 |
| 30 | 6.1 | **Wing fabrication** | 11.38d | 2018-05-11 | 2018-05-28 |  | 2018-04-25 | 2018-05-03 | 6d | 17.62d |  |  | 53.75h | 914.06 |
| 31 | 6.1.1 | Marking & cutting | 3h | 2018-05-11 | 2018-05-14 | 28 | 2018-04-25 | 2018-04-25 | 1d | 17.62d | 0d | Fitter; Helper; Gas Cutter | 13.75h | 914.06 |
| 32 | 6.1.2 | Machining | 10d | 2018-05-14 | 2018-05-25 | 31 | 2018-04-26 | 2018-05-02 | 4d | 17.62d | 0d | SC (Work) | 32h |  |
| 33 | 6.1.3 | Drilling | 1d | 2018-05-25 | 2018-05-28 | 32 | 2018-05-03 | 2018-05-03 | 1d | 17.62d | 0d | SC (Work) | 8h |  |
| 34 | 6.2 | Inspection | 1d | 2018-05-28 | 2018-05-29 | 33 | 2018-05-04 | 2018-05-04 | 1d | 17.62d |  | QC Engineer | 8h |  |
| 35 | 7 | **Control surface fabrication** | 4d | 2018-06-04 | 2018-06-08 |  | 2018-04-27 | 2018-05-03 | 4d | 8d |  |  | 56h | 2,050 |
| 36 | 7.1 | Marking | 1d | 2018-06-04 | 2018-06-05 | 28FS+2d, 27 | 2018-04-27 | 2018-04-27 | 1d | 8d | 0d | Fitter; Helper; Gas Cutter | 32h | 2,050 |
| 37 | 7.2 | cutting | 1d | 2018-06-05 | 2018-06-06 | 36 | 2018-04-30 | 2018-04-30 | 1d | 8d | 0d | SC (Work) | 8h |  |
| 38 | 7.3 | holes drilling | 1d | 2018-06-06 | 2018-06-07 | 37 | 2018-05-02 | 2018-05-02 | 1d | 8d | 0d | SC (Work) | 8h |  |
| 39 | 7.4 | Inspection | 1d | 2018-06-08 | 2018-06-08 | 38 | 2018-05-03 | 2018-05-03 | 1d | 8d |  | QC Engineer | 8h |  |
| 40 | 8 | **Bracket fabrication** | 17d | 2018-05-29 | 2018-06-19 |  | 2018-04-30 | 2018-05-14 | 11d | 0d |  |  | 136h | 2,450 |
| 41 | 8.1 | Marking | 1d | 2018-06-07 | 2018-06-08 | 25FS+1d | 2018-05-03 | 2018-05-03 | 1d | 0d |  | Fitter; Helper; Gas Cutter | 24h | 1,500 |
| 42 | 8.2 | Cutting | 1d | 2018-06-08 | 2018-06-11 | 41 | 2018-05-04 | 2018-05-04 | 1d | 0d |  | SC (Work) | 8h |  |
| 43 | 8.3 | Machining | 5d | 2018-06-11 | 2018-06-16 | 42 | 2018-05-05 | 2018-05-10 | 5d | 0d |  | SC (Work) | 40h |  |
| 44 | 8.4 | Drilling | 1d | 2018-06-16 | 2018-06-18 | 43 | 2018-05-11 | 2018-05-11 | 1d | 0d |  | SC (Work) | 8h |  |
| 45 | 8.5 | Inspection | 1d | 2018-06-19 | 2018-06-19 | 44 | 2018-05-14 | 2018-05-14 | 1d | 0d |  | QC Engineer | 8h |  |
| 46 | 8.6 | **Rivet fabrication** | 5d | 2018-05-29 | 2018-06-04 |  | 2018-04-30 | 2018-05-05 | 5d | 11d |  |  | 48h | 950 |
| 47 | 8.6.1 | Tapping | 1d | 2018-05-29 | 2018-05-30 | 26FS+1d | 2018-04-30 | 2018-04-30 | 1d | 11d | 0d | Fitter; Helper | 16h | 950 |
| 48 | 8.6.2 | Cutting | 1d | 2018-05-30 | 2018-05-31 | 47 | 2018-05-02 | 2018-05-02 | 1d | 11d | 0d | SC (Work) | 8h |  |
| 49 | 8.6.3 | Machining | 1d | 2018-05-31 | 2018-06-01 | 48 | 2018-05-03 | 2018-05-03 | 1d | 11d | 0d | SC (Work) | 8h |  |
| 50 | 8.6.4 | Drilling | 1d | 2018-06-01 | 2018-06-02 | 49 | 2018-05-04 | 2018-05-04 | 1d | 11d | 0d | SC (Work) | 8h |  |
| 51 | 8.6.5 | Inspection | 1d | 2018-06-04 | 2018-06-04 | 50 | 2018-05-05 | 2018-05-05 | 1d | 11d |  | QC Engineer | 8h |  |
| 52 | 9 | Trial Assembly | 1d | 2018-06-20 | 2018-06-20 | 34, 39, 45, 51FS+1d | 2018-05-15 | 2018-05-15 | 1d | 0d |  |  | 8h |  |

| ID | WBS | Task | Duration | Start | Finish | Predecessors | Baseline start | Baseline finish | Baseline duration | Total slack | Free slack | Calendar | Resources | Work | Cost | Baseline cost |
| --- | --- | --- | --- | --- | --- | --- | --- | --- | --- | --- | --- | --- | --- | --- | --- | --- |
| 53 | 10 | **Final Inspection & Dispatch** | 10.25d | 2018-06-21 | 2018-06-28 |  | 2018-05-16 | 2018-05-22 | 10.25d | 0.62d |  | TEAM_2Shift_Calendar-1 |  | 81h | 447.06 | 447.06 |
| 54 | 10.1 | Final Inspection | 1d | 2018-06-21 | 2018-06-22 | 52FS+2d | 2018-05-16 | 2018-05-17 | 1d | 0.62d | 0d | TEAM_2Shift_Calendar-1 | QC Engineer; Helper; Fitter | 8h | 447.06 | 447.06 |
| 55 | 10.2 | Dispatch Clearance &Documentation | 4d | 2018-06-22 | 2018-06-26 | 54 | 2018-05-17 | 2018-05-19 | 4d | 0.62d | 0d | TEAM_2Shift_Calendar-1 | Marketing; Store | 16h |  |  |
| 56 | 10.3 | Stock Handover to Store | 1d | 2018-06-26 | 2018-06-27 | 55 | 2018-05-19 | 2018-05-21 | 1d | 1.88d |  |  | Production Engineer; QC Engineer; Store | 5h |  |  |
| 57 | 10.4 | Prepare Sale Order | 1d | 2018-06-26 | 2018-06-27 | 55 | 2018-05-19 | 2018-05-21 | 1d | 0.5d | 0d |  | Marketing | 2h |  |  |
| 58 | 10.5 | Prepare DC | 1h | 2018-06-27 | 2018-06-27 | 57 | 2018-05-21 | 2018-05-21 | 1h | 0.5d | 0d |  | Store | 1h |  |  |
| 59 | 10.6 | Prepare Invoice | 1h | 2018-06-27 | 2018-06-27 | 58 | 2018-05-21 | 2018-05-21 | 1h | 0.5d | 0d |  | Finance | 1h |  |  |
| 60 | 10.7 | Transportation : Chennai to Hydrabad | 3d | 2018-06-27 | 2018-06-28 | 59 | 2018-05-21 | 2018-05-22 | 3d | 0.62d |  | TEAM_2Shift_Calendar-1 | Store | 48h |  |  |
| 61 | 11 | **PBG** | 5d | 2018-06-29 | 2018-07-04 |  | 2018-05-23 | 2018-05-29 | 5d | 0d |  |  |  | 40h |  |  |
| 62 | 11.1 | PBG Submission (10%) | 1d | 2018-06-29 | 2018-06-29 | 53 | 2018-05-23 | 2018-05-23 | 1d | 0d |  |  | Finance | 8h |  |  |
| 63 | 11.2 | PBG Approval | 4d | 2018-06-30 | 2018-07-04 | 62 | 2018-05-24 | 2018-05-29 | 4d | 0d |  |  | Finance | 32h |  |  |
