# 4242-KMML

Schedule from MS Project, 2018-01-09 to 2018-03-13, costs in Rs., A marks actual dates.

## Calendars

- TEAM_Stand_Calendar: Mon-Sat 08:30-12:30, 13:30-17:30; Sun off. Exceptions (off unless hours are given): 2017-01-13 to 2023-08-12 (2nd Sat, recurring), 2017-01-26 to 2036-01-26 (Republic Day, recurring), 2017-01-27 to 2023-08-26 (4th Sat, recurring), 2017-05-01 to 2036-05-01 (May Day, recurring), 2017-08-15 to 2036-08-15 (Independence Day, recurring), 2017-10-02 to 2036-10-02 (Gandhi Jayanti, recurring), 2018-01-15 (Thiruvalluvar Day'2018).
- TEAM_2Shift_Calendar-1: Mon-Sat 06:00-22:00; Sun off. Exceptions (off unless hours are given): 2017-01-13 to 2023-02-11 (2nd Sat, recurring), 2017-01-26 to 2036-01-26 (Republic Day, recurring), 2017-01-27 to 2023-08-26 (4th Sat, recurring), 2017-05-01 to 2036-05-01 (May Day, recurring), 2017-08-15 to 2036-08-15 (Indepdence Day, recurring), 2017-10-02 to 2036-10-02 (Gandhi Jayanti, recurring), 2018-01-15 (Thiruvalluvar Day'2018).

## Resources

| Resource | Rate |
| --- | --- |
| Store |  |
| QC Engineer |  |
| Production Department |  |
| PPC Engineer |  |
| PMO Head |  |
| PM |  |
| Marketing |  |
| Cutting Machine |  |
| Design Engineer |  |
| Gas Cutter | 68.75 |
| Grinder | 56.25 |
| Hari @Vedavit |  |
| Helper | 50 |
| OAGM |  |
| Purchase Engineer |  |
| SMAW Welder | 68.75 |
| SMAW Welding Machine |  |
| TIG Welder | 125 |
| TIG Welding Machine |  |
| Fitter | 68.75 |
| Rolling Machine |  |
| Plate Bending Machine |  |
| Grinding Machine |  |
| Finance |  |

## Schedule

| ID | WBS | Task | Duration | Start | Finish | Predecessors | Complete | Baseline start | Baseline finish | Baseline duration | Calendar | Resources | Work | Actual work | Cost | Baseline cost | Actual cost |
| --- | --- | --- | --- | --- | --- | --- | --- | --- | --- | --- | --- | --- | --- | --- | --- | --- | --- |
| 1 | 1 | **Project Initation** | 6d | 2018-01-09 08:30 A | 2018-01-17 17:30 A |  | 100% | 2018-01-09 08:30 | 2018-01-17 14:15 | 5.6d |  |  | 32.65h | 32.65h |  | -0 |  |
| 2 | 1.1 | PO Receipt | 1d | 2018-01-09 08:30 A | 2018-01-09 17:30 A |  | 100% | 2018-01-09 08:30 | 2018-01-09 17:30 | 1d |  | Marketing | 1h | 1h |  |  |  |
| 3 | 1.2 | Work Order | 1d | 2018-01-11 08:30 A | 2018-01-11 17:30 A | 2FS+1d | 100% | 2018-01-11 08:30 | 2018-01-11 17:30 | 1d |  | Marketing | 3h | 3h |  |  |  |
| 4 | 1.3 | CRM | 1d | 2018-01-17 08:30 A | 2018-01-17 17:30 A | 3FS+2d | 100% | 2018-01-17 08:30 | 2018-01-17 14:15 | 0.6d |  | Marketing; PMO Head; PM; PPC Engineer; Production Department; QC Engineer; Design Engineer | 28.64h | 28.64h |  |  |  |
| 5 | 2 | **Design** | 1d | 2018-01-12 08:30 A | 2018-01-12 17:30 A |  | 100% | 2018-01-12 08:30 | 2018-01-12 17:30 | 1d |  |  | 8h | 8h |  | -0 |  |
| 6 | 2.1 | Drawing issue | 1d | 2018-01-12 08:30 A | 2018-01-12 17:30 A | 3 | 100% | 2018-01-12 08:30 | 2018-01-12 17:30 | 1d |  | Design Engineer | 8h | 8h |  |  |  |
| 7 | 3 | **Purchase Requisition** | 0.5d | 2018-01-17 14:15 A | 2018-01-18 09:15 A |  | 100% | 2018-01-17 14:15 | 2018-01-18 09:15 | 0.5d |  |  | 2h | 2h |  | -0 |  |
| 8 | 3.1 | PlateTiGr.7 & Consumables | 0.5d | 2018-01-17 14:15 A | 2018-01-18 09:15 A | 4 | 100% | 2018-01-17 14:15 | 2018-01-18 09:15 | 0.5d |  | PPC Engineer | 2h | 2h |  |  |  |
| 9 | 4 | **Material Ordering** | 2d | 2018-01-18 09:15 A | 2018-01-20 09:15 A |  | 100% | 2018-01-18 09:15 | 2018-01-20 09:15 | 2d |  |  | 16h | 16h |  | -0 |  |
| 10 | 4.1 | Stock Checking request & Confirmation | 2d | 2018-01-18 09:15 A | 2018-01-20 09:15 A | 8 | 100% | 2018-01-18 09:15 | 2018-01-20 09:15 | 2d |  | Purchase Engineer | 16h | 16h |  |  |  |
| 11 | 5 | **QC** | 1d | 2018-01-20 09:15 A | 2018-01-22 09:15 A |  | 100% | 2018-01-20 09:15 | 2018-01-22 09:15 | 1d |  |  | 2h | 2h |  | -0 |  |
| 12 | 5.1 | Stock Material inspection | 1d | 2018-01-20 09:15 A | 2018-01-22 09:15 A | 10 | 100% | 2018-01-20 09:15 | 2018-01-22 09:15 | 1d |  | QC Engineer | 2h | 2h |  |  |  |
| 13 | 6 | **Material Receipt** | 1d | 2018-01-22 09:15 A | 2018-01-23 09:15 A |  | 100% | 2018-01-22 09:15 | 2018-01-23 09:15 | 1d |  |  | 2h | 2h |  | -0 |  |
| 14 | 6.1 | Receipt of Plate & Consumables after stock inspection | 1d | 2018-01-22 09:15 A | 2018-01-23 09:15 A | 12 | 100% | 2018-01-22 09:15 | 2018-01-23 09:15 | 1d |  | Store | 2h | 2h |  |  |  |
| 15 | 7 | **Fabrication** | 11.94d | 2018-02-13 08:00 A | 2018-02-27 17:00 A |  | 100% | 2018-02-13 08:00 | 2018-02-27 17:00 | 11.94d |  |  | 191h | 191h | 8,882.5 | 8,882.5 | 8,882.5 |
| 16 | 7.1 | Segmenting and Prepunching | 2h | 2018-02-13 08:00 A | 2018-02-13 10:00 A | 14FS+1d | 100% | 2018-02-13 08:00 | 2018-02-13 10:00 | 2h | TEAM_2Shift_Calendar-1 | Fitter; Helper; Plate Bending Machine | 4h | 4h | 237.5 | 237.5 | 237.5 |
| 17 | 7.2 | Marking and cutting | 8h | 2018-02-13 08:00 A | 2018-02-13 16:00 A | 16FS+15d | 100% | 2018-02-13 08:00 | 2018-02-13 16:00 | 8h | TEAM_2Shift_Calendar-1 | Gas Cutter; Helper; OAGM | 18h | 18h | 712.5 | 712.5 | 712.5 |
| 18 | 7.3 | Rolling | 5h | 2018-02-14 08:00 A | 2018-02-14 13:00 A | 17FS+1d | 100% | 2018-02-14 08:00 | 2018-02-14 13:00 | 5h | TEAM_2Shift_Calendar-1 | Fitter; Helper; Rolling Machine | 20h | 20h | 826.25 | 826.25 | 826.25 |
| 19 | 7.4 | Fit up | 4h | 2018-02-15 08:00 A | 2018-02-15 12:00 A | 18FS+1d | 100% | 2018-02-15 08:00 | 2018-02-15 12:00 | 4h | TEAM_2Shift_Calendar-1 | Fitter; Helper; SMAW Welder | 12h | 12h | 750 | 750 | 750 |
| 20 | 7.5 | Edge preparation | 3h | 2018-02-16 08:00 A | 2018-02-16 11:00 A | 19FS+1d | 100% | 2018-02-16 08:00 | 2018-02-16 11:00 | 3h | TEAM_2Shift_Calendar-1 | Grinder; Grinding Machine | 6h | 6h | 168.75 | 168.75 | 168.75 |
| 21 | 7.6 | Shell LS welding | 5h | 2018-02-17 08:00 A | 2018-02-17 13:00 A | 20FS+1d | 100% | 2018-02-17 08:00 | 2018-02-17 13:00 | 5h | TEAM_2Shift_Calendar-1 | SMAW Welder; SMAW Welding Machine | 10h | 10h | 343.75 | 343.75 | 343.75 |
| 22 | 7.7 | Shell to flange fit up | 4h | 2018-02-19 08:00 A | 2018-02-19 12:00 A | 21FS+1d | 100% | 2018-02-19 08:00 | 2018-02-19 12:00 | 4h | TEAM_2Shift_Calendar-1 | Fitter; Helper; SMAW Welder | 9h | 9h | 562.5 | 562.5 | 562.5 |
| 23 | 7.8 | Shell to flange welding | 4h | 2018-02-19 08:00 A | 2018-02-19 12:00 A | 22FS+1d | 100% | 2018-02-19 08:00 | 2018-02-19 12:00 | 4h | TEAM_2Shift_Calendar-1 | SMAW Welder; SMAW Welding Machine | 8h | 8h | 275 | 275 | 275 |
| 24 | 7.9 | DP Check | 0.5d | 2018-02-20 08:00 A | 2018-02-20 12:00 A | 23FS+1d | 100% | 2018-02-20 08:00 | 2018-02-20 12:00 | 0.5d | TEAM_2Shift_Calendar-1 | QC Engineer | 4h | 4h |  |  |  |
| 25 | 7.10 | Radiography Test | 1d | 2018-02-20 08:00 A | 2018-02-20 16:00 A | 24FS+1d | 100% | 2018-02-20 08:00 | 2018-02-20 16:00 | 1d | TEAM_2Shift_Calendar-1 | QC Engineer |  |  |  |  |  |
| 26 | 7.11 | pipe stubend Fitup & welding | 25h | 2018-02-22 08:00 A | 2018-02-23 17:00 A | 25FS+1d | 100% | 2018-02-22 08:00 | 2018-02-23 17:00 | 25h | TEAM_2Shift_Calendar-1 | Fitter; Helper; SMAW Welder | 72h | 72h | 4,500 | 4,500 | 4,500 |
| 27 | 7.12 | Dp Check | 0.5d | 2018-02-23 08:00 A | 2018-02-23 12:00 A | 26FS+1d | 100% | 2018-02-23 08:00 | 2018-02-23 12:00 | 0.5d | TEAM_2Shift_Calendar-1 | QC Engineer | 3h | 3h |  |  |  |
| 28 | 7.13 | Dip pipe Final machining | 9h | 2018-02-26 08:00 A | 2018-02-26 17:00 A | 27FS+1d | 100% | 2018-02-26 08:00 | 2018-02-26 17:00 | 9h | TEAM_2Shift_Calendar-1 | Grinder; Grinding Machine | 18h | 18h | 506.25 | 506.25 | 506.25 |
| 29 | 7.14 | Final Inspection | 1.12d | 2018-02-27 08:00 A | 2018-02-27 17:00 A | 28FS+1d | 100% | 2018-02-27 08:00 | 2018-02-27 17:00 | 1.12d | TEAM_2Shift_Calendar-1 | QC Engineer | 7h | 7h |  |  |  |

| ID | WBS | Task | Duration | Start | Finish | Predecessors | Complete | Baseline start | Baseline finish | Baseline duration | Resources | Work | Actual work | Baseline cost |
| --- | --- | --- | --- | --- | --- | --- | --- | --- | --- | --- | --- | --- | --- | --- |
| 30 | 8 | **Project Closure** | 6d | 2018-03-05 17:00 A | 2018-03-13 17:00 A |  | 100% | 2018-03-05 17:00 | 2018-03-13 17:00 | 6d |  | 4h | 4h | -0 |
| 31 | 8.1 | Stock handover to store | 0.5d | 2018-03-05 17:00 A | 2018-03-06 12:00 A | 29FS+5d | 100% | 2018-03-05 17:00 | 2018-03-06 12:00 | 0.5d | Production Department |  |  |  |
| 32 | 8.2 | Final documentation | 3d | 2018-03-07 12:00 A | 2018-03-12 12:00 A | 31FS+1d | 100% | 2018-03-07 12:00 | 2018-03-12 12:00 | 3d | QC Engineer |  |  |  |
| 33 | 8.3 | Invoicing to Customer | 1h | 2018-03-13 12:00 A | 2018-03-13 14:00 A | 32FS+1d | 100% | 2018-03-13 12:00 | 2018-03-13 14:00 | 1h | Finance | 1h | 1h |  |
| 34 | 8.4 | Despatched | 3h | 2018-03-13 14:00 A | 2018-03-13 17:00 A | 33 | 100% | 2018-03-13 14:00 | 2018-03-13 17:00 | 3h | Store | 3h | 3h |  |
