# 4243

Schedule from MS Project, 2018-01-09 to 2018-03-05, costs in Rs., A marks actual dates.

## Calendars

- TEAM_Stand_Calendar: Mon-Sat 08:30-12:30, 13:30-17:30; Sun off. Exceptions (off unless hours are given): 2017-01-13 to 2023-08-12 (2nd Sat, recurring), 2017-01-26 to 2036-01-26 (Republic Day, recurring), 2017-01-27 to 2023-08-26 (4th Sat, recurring), 2017-05-01 to 2036-05-01 (May Day, recurring), 2017-08-15 to 2036-08-15 (Independence Day, recurring), 2017-10-02 to 2036-10-02 (Gandhi Jayanti, recurring), 2018-01-15 (Thiruvalluvar Day'2018).
- TEAM_2Shift_Calendar-1: Mon-Sat 06:00-22:00; Sun off. Exceptions (off unless hours are given): 2017-01-13 to 2023-02-11 (2nd Sat, recurring), 2017-01-26 to 2036-01-26 (Republic Day, recurring), 2017-01-27 to 2023-08-26 (4th Sat, recurring), 2017-05-01 to 2036-05-01 (May Day, recurring), 2017-08-15 to 2036-08-15 (Indepdence Day, recurring), 2017-10-02 to 2036-10-02 (Gandhi Jayanti, recurring), 2018-01-15 (Thiruvalluvar Day'2018).

## Resources

| Resource | Rate |
| --- | --- |
| Store |  |
| QC Engineer |  |
| PPC Engineer |  |
| PMO Head |  |
| PM |  |
| Marketing |  |
| Production Engineer |  |
| Purchase Engineer |  |
| Helper | 50 |
| CNC Lathe |  |
| Lathe Operator | 120 |

## Schedule

| ID | WBS | Task | Duration | Start | Finish | Predecessors | Complete | Baseline start | Baseline finish | Baseline duration | Constraint | Calendar | Resources | Work | Actual work | Cost | Baseline cost | Actual cost |
| --- | --- | --- | --- | --- | --- | --- | --- | --- | --- | --- | --- | --- | --- | --- | --- | --- | --- | --- |
| 1 | 1 | PO Receipt | 1d | 2018-01-09 08:30 A | 2018-01-09 17:30 A |  | 100% | 2018-01-09 08:30 | 2018-01-09 17:30 | 1d |  |  | Marketing | 1h | 1h |  |  |  |
| 2 | 2 | Work Order | 1d | 2018-01-11 08:30 A | 2018-01-11 17:30 A | 1FS+1d | 100% | 2018-01-11 08:30 | 2018-01-11 17:30 | 1d |  |  | Marketing | 3h | 3h |  |  |  |
| 3 | 3 | CRM | 1d | 2018-01-17 08:30 A | 2018-01-17 17:30 A | 2FS+2d | 100% | 2018-01-17 08:30 | 2018-01-17 17:30 | 1d |  |  | PMO Head; PM; Marketing | 6h | 6h |  |  |  |
| 4 | 4 | **Purchase Requisition** | 1d | 2018-01-18 08:30 A | 2018-01-18 17:30 A |  | 100% | 2018-01-18 08:30 | 2018-01-18 17:30 | 1d |  |  |  | 3h | 3h |  |  |  |
| 5 | 4.1 | Rod TiGr.2 | 1d | 2018-01-18 08:30 A | 2018-01-18 17:30 A | 3 | 100% | 2018-01-18 08:30 | 2018-01-18 17:30 | 1d |  |  | PPC Engineer | 3h | 3h |  |  |  |
| 6 | 5 | **Material Ordering** | 3d | 2018-01-20 08:30 A | 2018-01-23 17:30 A |  | 100% | 2018-01-20 08:30 | 2018-01-23 17:30 | 3d |  |  |  | 6h | 6h |  |  |  |
| 7 | 5.1 | Rod TiGr.2 | 3d | 2018-01-20 08:30 A | 2018-01-23 17:30 A | 5 | 100% | 2018-01-20 08:30 | 2018-01-23 17:30 | 3d |  |  | Purchase Engineer | 6h | 6h |  |  |  |
| 8 | 6 | **Material Receipt** | 1.12d | 2018-02-13 17:30 A | 2018-02-15 09:30 A |  | 100% | 2018-02-13 17:30 | 2018-02-15 09:30 | 1.12d |  |  |  | 3h | 3h |  | 50 |  |
| 9 | 6.1 | Rod Material Receipt | 1h | 2018-02-13 17:30 A | 2018-02-14 09:30 A | 7FS+15d | 100% | 2018-02-13 17:30 | 2018-02-14 09:30 | 1h |  |  | Helper; Store | 2h | 2h |  | 50 |  |
| 10 | 6.2 | Raw material inspection | 1h | 2018-02-15 08:30 A | 2018-02-15 09:30 A | 9 | 100% | 2018-02-15 08:30 | 2018-02-15 09:30 | 1h |  |  | QC Engineer | 1h | 1h |  |  |  |
| 11 | 7 | **Fabrication** | 19.44d | 2018-02-16 06:00 A | 2018-02-28 17:30 A |  | 100% | 2018-02-16 06:00 | 2018-02-28 17:30 | 19.44d |  | TEAM_2Shift_Calendar-1 |  | 21h | 21h | 1,238.98 | 1,130 | 1,238.98 |
| 12 | 7.1 | Shaft Machining | 5d | 2018-02-16 06:00 A | 2018-02-19 14:00 A | 10 | 100% | 2018-02-16 06:00 | 2018-02-19 14:00 | 5d |  | TEAM_2Shift_Calendar-1 | Lathe Operator; CNC Lathe | 18h | 18h | 1,188.98 | 1,080 | 1,188.98 |
| 13 | 7.2 | Key way mcahining Receipt | 16h | 2018-02-23 06:00 A | 2018-02-23 22:00 A | 12FS+6d | 100% | 2018-02-23 06:00 | 2018-02-23 22:00 | 16h |  | TEAM_2Shift_Calendar-1 | Helper | 1h | 1h | 50 | 50 | 50 |
| 14 | 7.3 | Final Inspection | 25.5h | 2018-02-27 08:00 A | 2018-02-28 17:30 A | 13 | 100% | 2018-02-27 08:00 | 2018-02-28 17:30 | 25.5h |  | TEAM_2Shift_Calendar-1 | QC Engineer | 2h | 2h |  |  |  |
| 15 | 8 | **Packing & Despatch** | 7.44d | 2018-03-01 06:00 A | 2018-03-05 17:30 A |  | 100% | 2018-03-01 06:00 | 2018-03-05 17:30 | 7.44d |  | TEAM_2Shift_Calendar-1 |  | 9.5h | 9.5h |  |  |  |
| 16 | 8.1 | Stock handover to Store | 3.43h | 2018-03-01 06:00 A | 2018-03-01 09:25 A | 14 | 100% | 2018-03-01 06:00 | 2018-03-01 09:00 | 3h |  | TEAM_2Shift_Calendar-1 | Store; Production Engineer | 3.5h | 3.5h |  |  |  |
| 17 | 8.2 | Final Documentation | 8h | 2018-03-02 08:30 A | 2018-03-02 17:30 A | 16 | 100% | 2018-03-02 08:30 | 2018-03-02 17:30 | 8h |  |  | QC Engineer | 2h | 2h |  |  |  |
| 18 | 8.3 | Packing after payment client payment | 16h | 2018-03-03 08:30 A | 2018-03-05 17:30 A | 17 | 100% | 2018-03-03 08:30 | 2018-03-05 17:30 | 16h |  |  | Store | 2h | 2h |  |  |  |
| 19 | 8.4 | despatch through courier | 8h | 2018-03-05 08:30 A | 2018-03-05 17:30 A | 18 | 100% | 2018-03-05 08:30 | 2018-03-05 17:30 | 8h | start no later than 2018-03-05 08:30 |  | Store | 2h | 2h |  |  |  |

Notes:
- 16: Due to delay in client approval a lag of 11 days has been inserted to start this work
