# 4245-Grasim

Schedule from MS Project, 2018-02-08 to 2018-05-22, costs in Rs., A marks actual dates.

## Calendars

- TEAM_Stand_Calendar: Mon-Sat 08:30-12:30, 13:30-17:30; Sun off. Exceptions (off unless hours are given): 2017-01-13 to 2023-08-12 (2nd Sat, recurring), 2017-01-26 to 2036-01-26 (Republic Day, recurring), 2017-01-27 to 2023-08-26 (4th Sat, recurring), 2017-05-01 to 2036-05-01 (May Day, recurring), 2017-08-15 to 2036-08-15 (Independence Day, recurring), 2017-10-02 to 2036-10-02 (Gandhi Jayanti, recurring).
- TEAM_2Shift_Calendar-1: Mon-Sat 06:00-22:00; Sun off. Exceptions (off unless hours are given): 2017-01-13 to 2023-02-11 (2nd Sat, recurring), 2017-01-26 to 2036-01-26 (Republic Day, recurring), 2017-01-27 to 2023-08-26 (4th Sat, recurring), 2017-05-01 to 2036-05-01 (May Day, recurring), 2017-08-15 to 2036-08-15 (Indepdence Day, recurring), 2017-10-02 to 2036-10-02 (Gandhi Jayanti, recurring).

## Resources

| Resource | Rate |
| --- | --- |
| Client |  |
| CNC Lathe |  |
| Consumable - Welding (Cost) |  |
| Consumables (Cost) |  |
| Crane |  |
| Cutting Machine |  |
| Design Engineer |  |
| Draftman |  |
| Driller | 68.75 |
| Finance |  |
| Fitter | 68.75 |
| Foreman |  |
| Forming Machine |  |
| Gas Cutter | 68.75 |
| Grinder | 56.25 |
| Grinding Machine |  |
| Helper | 50 |
| HOD |  |
| Lathe |  |
| Lathe Operator | 120 |
| Marketing |  |
| OAGM |  |
| Plasma Cutting Machine |  |
| Plate Bending Machine |  |
| Rolling Machine |  |
| SAW Machine |  |
| SAW Welder | 68.75 |
| SMAW Welder | 68.75 |
| SMAW Welding Machine |  |
| Store |  |
| TIG Welder | 125 |
| TIG Welding Machine |  |
| PM |  |
| PMO Head |  |
| Production Engineer |  |
| Purchase Engineer |  |
| QC Engineer |  |
| Radial Drilling Machine |  |
| PPC Engineer |  |

## Schedule

| ID | WBS | Task | Type | Duration | Start | Finish | Predecessors | Complete | Baseline start | Baseline finish | Baseline duration | Constraint | Calendar | Resources | Work | Actual work | Cost | Baseline cost | Actual cost |
| --- | --- | --- | --- | --- | --- | --- | --- | --- | --- | --- | --- | --- | --- | --- | --- | --- | --- | --- | --- |
| 1 | 1 | **Project Initiation** |  | 7d | 2018-02-08 08:30 A | 2018-02-16 17:30 A |  | 100% | 2018-02-08 08:30 | 2018-02-13 17:30 | 4d |  |  |  | 8h | 8h |  |  |  |
| 2 | 1.1 | PO Receipt |  | 1d | 2018-02-08 08:30 A | 2018-02-08 17:30 A |  | 100% | 2018-02-08 08:30 | 2018-02-08 17:30 | 1d | start no earlier than 2018-02-08 08:30 |  | Marketing | 2h | 2h |  |  |  |
| 3 | 1.2 | Work Order |  | 1d | 2018-02-09 08:30 A | 2018-02-09 17:30 A | 2 | 100% | 2018-02-09 08:30 | 2018-02-09 17:30 | 1d |  |  | Marketing | 4h | 4h |  |  |  |
| 4 | 1.3 | CRM |  | 1d | 2018-02-16 08:30 A | 2018-02-16 17:30 A | 3FS+1d | 100% | 2018-02-13 08:30 | 2018-02-13 17:30 | 1d |  |  | HOD; PM; PMO Head | 2h | 2h |  |  |  |
| 5 | 2 | **Design** |  | 1d | 2018-02-19 08:30 A | 2018-02-19 17:30 A |  | 100% | 2018-02-16 08:30 | 2018-02-16 17:30 | 1d |  |  |  | 5h | 5h |  |  |  |
| 6 | 2.1 | Drawing Issue for production |  | 1d | 2018-02-19 08:30 A | 2018-02-19 17:30 A | 4FS+2d | 100% | 2018-02-16 08:30 | 2018-02-16 17:30 | 1d |  |  | Design Engineer | 5h | 5h |  |  |  |
| 7 | 3 | **4245-C1201-MaterialOrdering** |  | 1d | 2018-02-15 08:30 A | 2018-02-15 17:30 A |  | 100% | 2018-02-17 08:30 | 2018-02-20 17:30 | 3d |  |  |  | 6h | 6h |  |  |  |
| 8 | 3.1 | **PR Issue** |  | 1d | 2018-02-15 08:30 A | 2018-02-15 17:30 A |  | 100% | 2018-02-17 08:30 | 2018-02-20 17:30 | 3d |  |  |  | 6h | 6h |  |  |  |
| 9 | 3.1.1 | Plates-Ti- SB265GR2 |  | 1d | 2018-02-15 08:30 A | 2018-02-15 17:30 A | 3FS+3d | 100% | 2018-02-17 08:30 | 2018-02-17 17:30 | 1d |  |  | PPC Engineer | 2h | 2h |  |  |  |
| 10 | 3.1.2 | Rods-Ti-SB348GR2 |  | 1d | 2018-02-15 08:30 A | 2018-02-15 17:30 A | 3FS+3d | 100% | 2018-02-19 08:30 | 2018-02-19 17:30 | 1d |  |  | PPC Engineer | 2h | 2h |  |  |  |
| 11 | 3.1.3 | Filler Wire-Ti-Tigr2 |  | 1d | 2018-02-15 08:30 A | 2018-02-15 17:30 A | 3FS+3d | 100% | 2018-02-20 08:30 | 2018-02-20 17:30 | 1d |  |  | PPC Engineer | 2h | 2h |  |  |  |
| 12 | 3.2 | **Material Ordering** |  | 0d | 2018-02-15 17:30 A | 2018-02-15 17:30 A |  | 100% | 2018-02-17 17:30 | 2018-02-20 17:30 | 2d |  |  |  |  |  |  |  |  |
| 13 | 3.2.1 | Stock Material Plates-Ti- SB265GR2 | milestone | 0d | 2018-02-15 17:30 A | 2018-02-15 17:30 A | 9 | 100% | 2018-02-17 17:30 | 2018-02-17 17:30 | 0d |  |  | Purchase Engineer |  |  |  |  |  |
| 14 | 3.2.2 | Stock material Rods-Ti-SB348GR2 | milestone | 0d | 2018-02-15 17:30 A | 2018-02-15 17:30 A | 10 | 100% | 2018-02-19 17:30 | 2018-02-19 17:30 | 0d |  |  | Purchase Engineer |  |  |  |  |  |
| 15 | 3.2.3 | stock material Filler Wire-Ti-Tigr2 | milestone | 0d | 2018-02-15 17:30 A | 2018-02-15 17:30 A | 11 | 100% | 2018-02-20 17:30 | 2018-02-20 17:30 | 0d |  |  | Purchase Engineer |  |  |  |  |  |
| 16 | 4 | **Raw Material Inspection** |  | 1d | 2018-02-21 08:30 A | 2018-02-21 17:30 A |  | 100% | 2018-02-21 08:30 | 2018-02-21 17:30 | 1d |  |  |  | 8h | 8h |  |  |  |
| 17 | 4.1 | Raw Material Inspection Plates, Rod & Fw |  | 1d | 2018-02-21 08:30 A | 2018-02-21 17:30 A | 15 | 100% | 2018-02-21 08:30 | 2018-02-21 17:30 | 1d |  |  | QC Engineer | 8h | 8h |  |  |  |
| 18 | 5 | **4245-C1201-Fabrication Plan** |  | 44.5d | 2018-02-27 08:30 A | 2018-03-27 12:30 A |  | 100% | 2018-02-21 17:30 | 2018-03-12 09:30 | 13.12d |  | TEAM_2Shift_Calendar-1 |  | 167h | 167h | 9,372.5 | 6,067.5 | 9,372.5 |
| 19 | 5.1 | Plate Marking |  | 3h | 2018-02-27 08:30 A | 2018-02-27 11:30 A | 17 | 100% | 2018-02-21 17:30 | 2018-02-22 11:30 | 3h |  | TEAM_2Shift_Calendar-1 | Fitter; Helper | 6h | 6h | 356.25 | 356.25 | 356.25 |
| 20 | 5.2 | Cutting |  | 9h | 2018-02-28 08:30 A | 2018-02-28 17:30 A | 19 | 100% | 2018-02-22 11:30 | 2018-02-22 17:30 | 5h |  | TEAM_2Shift_Calendar-1 | Gas Cutter; Helper; OAGM | 27h | 27h | 1,068.75 | 593.75 | 1,068.75 |
| 21 | 5.3 | Plate forming |  | 9h | 2018-03-01 08:30 A | 2018-03-01 17:30 A | 20 | 100% | 2018-02-22 17:30 | 2018-02-23 15:30 | 6h |  | TEAM_2Shift_Calendar-1 | Fitter; Helper [200%] | 27h | 27h | 1,518.75 | 1,012.5 | 1,518.75 |
| 22 | 5.4 | Fitup |  | 9h | 2018-03-03 08:30 A | 2018-03-03 17:30 A | 21 | 100% | 2018-02-23 15:30 | 2018-02-26 10:30 | 4h |  | TEAM_2Shift_Calendar-1 | Fitter; TIG Welder; TIG Welding Machine | 22h | 22h | 1,400 | 1,650 | 1,400 |
| 23 | 5.5 | Hub rod marking & cutting | milestone | 0h | 2018-03-06 08:30 A | 2018-03-06 08:30 A | 22 | 100% | 2018-02-26 10:30 | 2018-02-26 12:30 | 2h |  | TEAM_2Shift_Calendar-1 | Fitter; Helper |  |  |  | 237.5 |  |
| 24 | 5.6 | Hub rod machining |  | 9h | 2018-03-09 08:30 A | 2018-03-09 17:30 A | 23 | 100% | 2018-02-26 12:30 | 2018-02-27 09:30 | 5h |  | TEAM_2Shift_Calendar-1 | Lathe; Lathe Operator | 18h | 18h | 1,080 | 600 | 1,080 |
| 25 | 5.7 | Hub rod Fitup with Plate |  | 9h | 2018-03-13 08:30 A | 2018-03-13 17:30 A | 24 | 100% | 2018-02-27 09:30 | 2018-02-27 11:30 | 2h |  | TEAM_2Shift_Calendar-1 | Fitter; TIG Welder; TIG Welding Machine | 27h | 27h | 1,743.75 | 387.5 | 1,743.75 |
| 26 | 5.8 | Final Welding |  | 9h | 2018-03-17 08:30 A | 2018-03-17 17:30 A | 25FS+8d | 100% | 2018-03-08 11:30 | 2018-03-09 09:30 | 6h | finish no earlier than 2018-03-17 17:30 | TEAM_2Shift_Calendar-1 | TIG Welder; TIG Welding Machine | 18h | 18h | 1,125 | 750 | 1,125 |
| 27 | 5.9 | Final Machining |  | 9h | 2018-03-22 08:30 A | 2018-03-22 17:30 A | 26 | 100% | 2018-03-09 09:30 | 2018-03-09 14:30 | 4h |  | TEAM_2Shift_Calendar-1 | Lathe; Lathe Operator | 18h | 18h | 1,080 | 480 | 1,080 |
| 28 | 5.10 | Inspection |  | 4h | 2018-03-27 08:30 A | 2018-03-27 12:30 A | 27 | 100% | 2018-03-09 14:30 | 2018-03-12 09:30 | 4h |  | TEAM_2Shift_Calendar-1 | QC Engineer | 4h | 4h |  |  |  |

Notes:
- 8: Plates -SA 516 GR.60-16THK...
- 12: Plates -SA 516 GR.60-16THK...

| ID | WBS | Task | Duration | Start | Finish | Predecessors | Complete | Remaining | Baseline start | Baseline finish | Baseline duration | Total slack | Resources | Work | Actual work |
| --- | --- | --- | --- | --- | --- | --- | --- | --- | --- | --- | --- | --- | --- | --- | --- |
| 29 | 6 | **Project Closure** | 41.75d | 2018-03-30 08:30 A | 2018-05-22 15:30 |  | 22% | 32.47d | 2018-03-12 09:30 | 2018-03-17 09:30 | 5d | 0d |  | 54h | 12h |
| 30 | 6.1 | Material Handover to Store | 8h | 2018-03-30 08:30 A | 2018-03-30 17:30 A | 28 | 100% |  | 2018-03-12 09:30 | 2018-03-12 11:30 | 2h |  | Production Engineer | 8h | 8h |
| 31 | 6.2 | Final Documentation | 4h | 2018-03-31 08:30 A | 2018-03-31 12:30 A | 30 | 100% |  | 2018-03-12 11:30 | 2018-03-12 16:30 | 4h |  | QC Engineer | 4h | 4h |
| 32 | 6.3 | Invoice to Customer | 2h | 2018-05-16 13:30 | 2018-05-16 15:30 | 31FS+35d |  |  | 2018-03-12 16:30 | 2018-03-13 09:30 | 2h | 0d | Finance | 2h |  |
| 33 | 6.4 | Product Despatch | 5d | 2018-05-16 15:30 | 2018-05-22 15:30 | 32 |  |  | 2018-03-13 09:30 | 2018-03-17 09:30 | 4d | 0d | Store | 40h |  |
