# 4246 SRF

Schedule from MS Project, 2018-01-17 to 2018-11-20, costs in ₹, A marks actual dates.

## Calendars

- TEAM_Stand_Calendar: Mon-Sat 08:30-12:30, 13:30-17:30; Sun off. Exceptions (off unless hours are given): 2017-01-13 to 2023-08-12 (2nd Sat, recurring), 2017-01-26 to 2036-01-26 (Republic Day, recurring), 2017-01-27 to 2023-08-26 (4th Sat, recurring), 2017-05-01 to 2036-05-01 (May Day, recurring), 2017-08-15 to 2036-08-15 (Independence Day, recurring), 2017-10-02 to 2036-10-02 (Gandhi Jayanti, recurring), 2018-09-13 (Vinakaya Chaturthi'2018), 2018-10-18 (Ayudha Pooja'2018), 2018-11-06 to 2018-11-07 (Deepavali'2018).
- TEAM_2Shift_Calendar-1: Mon-Sat 06:00-22:00; Sun off. Exceptions (off unless hours are given): 2017-01-13 to 2023-02-11 (2nd Sat, recurring), 2017-01-26 to 2036-01-26 (Republic Day, recurring), 2017-01-27 to 2023-08-26 (4th Sat, recurring), 2017-05-01 to 2036-05-01 (May Day, recurring), 2017-08-15 to 2036-08-15 (Indepdence Day, recurring), 2017-10-02 to 2036-10-02 (Gandhi Jayanti, recurring), 2018-09-13 (Vinakya Chaturthi'2018), 2018-10-18 (Ayudha Pooja'2018), 2018-11-06 to 2018-11-07 (Deepavali'2018).

## Resources

| Resource | Rate |
| --- | --- |
| Marketing |  |
| PMO Head |  |
| Client |  |
| PM |  |
| Draftman |  |
| Cutting Machine |  |
| Design Engineer |  |
| PPC Engineer |  |
| Purchase Engineer |  |
| Crane |  |
| Helper | 50 |
| Store |  |
| QC Engineer |  |
| SC Transport (Cost) |  |
| Production Engineer |  |
| Fitter | 68.75 |
| Gas Cutter | 68.75 |
| OAGM |  |
| Grinder | 56.25 |
| Grinding Machine |  |
| SMAW Welder | 68.75 |
| SMAW Welding Machine |  |
| TIG Welder | 125 |
| TIG Welding Machine |  |
| Driller | 68.75 |
| Radial Drilling Machine |  |
| SC (Work) |  |
| Lathe Operator | 120 |
| Lathe |  |
| Plate Bending Machine |  |
| Rolling Machine |  |
| Expanding Machine |  |
| Painter |  |
| Consumables (Cost) |  |
| Fastners (Cost) |  |
| Forging Non-Std (Cost) |  |
| Forging Std (Cost) |  |
| Gaskets (Cost) |  |
| Paint (Cost) |  |
| Pipe (Cost) |  |
| Plate (Cost) |  |
| Rod (Cost) |  |
| Tube (Cost) |  |
| Tube Sheet (Cost) |  |
| Finance |  |
| SC (Cost) |  |
| SC Radiography (Cost) |  |
| TPI (Cost) |  |

## Schedule

| ID | WBS | Task | Duration | Start | Finish | Predecessors | Complete | Remaining | Baseline start | Baseline finish | Baseline duration | Total slack | Free slack | Resources | Work | Actual work |
| --- | --- | --- | --- | --- | --- | --- | --- | --- | --- | --- | --- | --- | --- | --- | --- | --- |
| 1 | 1 | **Project Initiation** | 6d | 2018-01-17 08:30 A | 2018-01-23 17:30 A |  | 100% |  | 2018-01-17 08:30 | 2018-01-23 17:30 | 6d |  |  |  | 13h | 13h |
| 2 | 1.1 | Po Receipt | 1d | 2018-01-17 08:30 A | 2018-01-17 17:30 A |  | 100% |  | 2018-01-17 08:30 | 2018-01-17 17:30 | 1d |  |  | Marketing | 3h | 3h |
| 3 | 1.2 | Work Order | 1d | 2018-01-19 08:30 A | 2018-01-19 17:30 A | 2FS+1d | 100% |  | 2018-01-19 08:30 | 2018-01-19 17:30 | 1d |  |  | Marketing | 4h | 4h |
| 4 | 1.3 | CRM | 1d | 2018-01-23 08:30 A | 2018-01-23 17:30 A | 3FS+2d | 100% |  | 2018-01-23 08:30 | 2018-01-23 17:30 | 1d |  |  | PM; PMO Head; Marketing | 6h | 6h |
| 5 | 2 | **Design** | 92.5d | 2018-01-24 08:30 A | 2018-05-23 12:30 |  | 99% | 1.06d | 2018-01-24 08:30 | 2018-03-22 17:30 | 45d | 26d |  |  | 112h | 110h |
| 6 | 2.1 | Forgings details submission | 20d | 2018-01-24 08:30 A | 2018-02-19 17:30 A | 4 | 100% |  | 2018-01-24 08:30 | 2018-02-09 17:30 | 13d |  |  | Design Engineer [153.8%] | 24h | 24h |
| 7 | 2.2 | Prepare Mechanical Design | 5d | 2018-01-24 08:30 A | 2018-01-31 17:30 A | 4 | 100% |  | 2018-01-24 08:30 | 2018-01-31 17:30 | 5d |  |  | Design Engineer | 20h | 20h |
| 8 | 2.3 | Drawing Preperation | 8d | 2018-02-01 08:30 A | 2018-02-09 17:30 A | 7 | 100% |  | 2018-02-01 08:30 | 2018-02-09 17:30 | 8d |  |  | Draftman | 32h | 32h |
| 9 | 2.4 | Checking of Drawing | 2d | 2018-02-12 08:30 A | 2018-02-13 17:30 A | 8 | 100% |  | 2018-02-12 08:30 | 2018-02-13 17:30 | 2d |  |  | Design Engineer | 6h | 6h |
| 10 | 2.5 | Update drawing | 1d | 2018-02-14 08:30 A | 2018-02-14 17:30 A | 9 | 100% |  | 2018-02-14 08:30 | 2018-02-14 17:30 | 1d |  |  | Design Engineer | 4h | 4h |
| 11 | 2.6 | Submission of drawing to LRA | 1d | 2018-02-15 08:30 A | 2018-02-15 17:30 A | 10 | 100% |  | 2018-02-15 08:30 | 2018-02-15 17:30 | 1d |  |  | Design Engineer | 2h | 2h |
| 12 | 2.7 | Drawing Rework | 5d | 2018-03-13 08:30 A | 2018-03-17 17:30 A | 11FS+16d | 100% |  |  |  |  |  |  | Design Engineer | 20h | 20h |
| 13 | 2.8 | Re-Submission of drawing to LRA | 1d | 2018-03-19 08:30 A | 2018-03-19 17:30 A | 12 | 100% |  | 2018-02-15 08:30 | 2018-02-15 17:30 | 1d |  |  | Design Engineer | 2h | 2h |
| 14 | 2.9 | Drawing Approval | 0.5d | 2018-05-23 08:30 | 2018-05-23 12:30 | 13FS+50d |  |  |  |  |  | 26d | 0d | Design Engineer | 2h |  |
| 15 | 3 | **ABG** | 1d | 2018-05-24 13:30 | 2018-05-25 12:30 |  |  |  | 2018-03-23 08:30 | 2018-03-26 17:30 | 2d | 134.96d |  |  | 8h |  |
| 16 | 3.1 | ABG Submission | 1d | 2018-05-24 13:30 | 2018-05-25 12:30 | 14FS+1d |  |  | 2018-03-23 08:30 | 2018-03-23 17:30 | 1d | 134.96d |  | Finance | 8h |  |
| 17 | 4 | **PPC** | 95d | 2018-01-25 08:30 A | 2018-05-28 17:30 |  | 95% | 4.91d | 2018-01-24 08:30 | 2018-03-02 17:30 | 29d | 133.46d |  |  | 73.33h | 63.33h |
| 18 | 4.1 | **Preliminary Details For Enquiry** | 22d | 2018-04-11 08:30 A | 2018-05-09 17:30 A |  | 100% |  | 2018-01-24 08:30 | 2018-02-17 17:30 | 19d |  |  |  | 16h | 16h |
| 19 | 4.1.1 | SB 163 UNS N06600& SA 179N- Tubes&spacer | 1d | 2018-04-11 08:30 A | 2018-04-11 17:30 A | 4FS+60d | 100% |  | 2018-01-24 08:30 | 2018-01-24 17:30 | 1d |  |  | Tube (Cost) [0.1%]; PPC Engineer | 8h | 8h |
| 20 | 4.1.2 | Forgings -SA 266 Gr.2N&SB 564 UNS N06600 | 9d | 2018-04-27 08:30 A | 2018-05-09 17:30 A | 13FS+38d | 100% |  | 2018-02-16 08:30 | 2018-02-17 17:30 | 2d |  |  | Forging Non-Std (Cost) [0.1%]; PPC Engineer | 8h | 8h |
| 21 | 4.2 | **PPC Indenting** | 95d | 2018-01-25 08:30 A | 2018-05-28 17:30 |  | 94% | 5.38d | 2018-01-25 08:30 | 2018-03-02 17:30 | 28d | 133.46d |  |  | 57.33h | 47.33h |
| 22 | 4.2.1 | Tubes | 78d | 2018-01-25 08:30 A | 2018-05-05 17:30 A | 19FS+17d | 100% |  | 2018-01-25 08:30 | 2018-01-25 17:30 | 1d |  |  | Tube (Cost) [0.1%]; PPC Engineer | 4h | 4h |
| 23 | 4.2.2 | Plates | 2d | 2018-05-07 08:30 A | 2018-05-08 17:30 A | 13FS+37d | 100% |  | 2018-02-21 08:30 | 2018-02-22 17:30 | 2d |  |  | Plate (Cost) [0.1%]; PPC Engineer | 8h | 8h |
| 24 | 4.2.3 | Pipes | 2d | 2018-05-07 08:30 A | 2018-05-08 17:30 A | 13FS+37d | 100% |  | 2018-02-21 08:30 | 2018-02-22 17:30 | 2d |  |  | Pipe (Cost) [0.1%]; PPC Engineer | 6h | 6h |
| 25 | 4.2.4 | Rods | 2d | 2018-05-07 08:30 A | 2018-05-08 17:30 A | 13FS+37d | 100% |  | 2018-02-21 08:30 | 2018-02-22 17:30 | 2d |  |  | Rod (Cost) [0.1%]; PPC Engineer | 6h | 6h |
| 26 | 4.2.5 | Forgings(std,Non-std,Blank) | 2d | 2018-05-08 08:30 A | 2018-05-09 17:30 A | 13FS+38d | 100% |  | 2018-02-21 08:30 | 2018-02-22 17:30 | 2d |  |  | Forging Non-Std (Cost) [0.1%]; PPC Engineer | 8h | 8h |
| 27 | 4.2.6 | Gaskets | 4d | 2018-05-23 08:30 | 2018-05-28 17:30 | 13FS+50d |  |  | 2018-02-21 08:30 | 2018-02-22 17:30 | 2d | 133.46d |  | Gaskets (Cost) [0.1%]; PPC Engineer | 4h |  |
| 28 | 4.2.7 | Cosumbales | 2d | 2018-05-23 08:30 | 2018-05-24 17:30 | 13FS+50d |  |  | 2018-02-21 08:30 | 2018-02-26 17:30 | 4d | 135.46d |  | Consumables (Cost) [0.1%]; PPC Engineer | 6h |  |
| 29 | 4.2.8 | Fasteners | 2d | 2018-05-09 08:30 A | 2018-05-10 17:30 A | 13FS+39d | 100% |  | 2018-02-21 08:30 | 2018-02-26 17:30 | 4d |  |  | Fastners (Cost) [0.1%]; PPC Engineer | 4h | 4h |
| 30 | 4.2.9 | Paint | 10d | 2018-05-04 08:30 A | 2018-05-16 17:30 A | 13FS+35d | 100% |  | 2018-02-23 08:30 | 2018-03-02 17:30 | 6d |  |  | Paint (Cost) [0.1%]; PPC Engineer | 6h | 6h |
| 31 | 4.2.10 | N2 Purgings | 2d | 2018-05-11 08:30 A | 2018-05-14 17:30 A | 13FS+41d | 100% |  | 2018-02-21 08:30 | 2018-02-23 17:30 | 3d |  |  | PPC Engineer | 5.33h | 5.33h |

| ID | WBS | Task | Duration | Start | Finish | Predecessors | Complete | Remaining | Baseline start | Baseline finish | Baseline duration | Total slack | Free slack | Resources | Work | Actual work | Cost | Baseline cost |
| --- | --- | --- | --- | --- | --- | --- | --- | --- | --- | --- | --- | --- | --- | --- | --- | --- | --- | --- |
| 32 | 5 | **Material Ordering** | 20.5d | 2018-05-14 08:30 A | 2018-06-07 12:30 |  | 8% | 18.86d | 2018-01-29 08:30 | 2018-03-16 17:30 | 38d | 88.96d |  |  | 74h | 4h |  |  |
| 33 | 5.1 | Tubes | 2d | 2018-05-14 08:30 A | 2018-05-15 17:30 A | 13FS+42d | 100% |  | 2018-01-29 08:30 | 2018-02-12 17:30 | 12d |  |  | Tube (Cost) [0.1%]; Purchase Engineer | 4h | 4h |  |  |
| 34 | 5.2 | Plates | 5d | 2018-05-30 13:30 | 2018-06-05 12:30 | 14FS+5d |  |  | 2018-03-02 08:30 | 2018-03-07 17:30 | 5d | 35.5d | 0d | Plate (Cost) [0.1%]; Purchase Engineer | 10h |  |  |  |
| 35 | 5.3 | Pipes | 3d | 2018-05-30 13:30 | 2018-06-02 12:30 | 14FS+5d |  |  | 2018-03-02 08:30 | 2018-03-05 17:30 | 3d | 44.38d | 0d | Pipe (Cost) [0.1%]; Purchase Engineer | 8h |  |  |  |
| 36 | 5.4 | Rods | 3d | 2018-05-28 13:30 | 2018-05-31 12:30 | 14FS+3d |  |  | 2018-02-28 08:30 | 2018-03-02 17:30 | 3d | 74.88d | 0d | Rod (Cost) [0.1%]; Purchase Engineer | 8h |  |  |  |
| 37 | 5.5 | Forgings(std,Non-std,Blank) | 3d | 2018-05-29 13:30 | 2018-06-01 12:30 | 14FS+4d |  |  | 2018-03-03 08:30 | 2018-03-06 17:30 | 3d | 26d | 0d | Forging Non-Std (Cost) [0.1%]; Purchase Engineer | 12h |  |  |  |
| 38 | 5.6 | Gaskets | 2d | 2018-06-01 13:30 | 2018-06-04 12:30 | 14FS+7d |  |  | 2018-03-05 08:30 | 2018-03-06 17:30 | 2d | 76.96d | 0d | Gaskets (Cost) [0.1%]; Purchase Engineer | 8h |  |  |  |
| 39 | 5.7 | Cosumbales | 2d | 2018-06-01 13:30 | 2018-06-04 12:30 | 14FS+7d |  |  | 2018-03-07 08:30 | 2018-03-08 17:30 | 2d | 91.96d | 0d | Consumables (Cost) [0.1%]; Purchase Engineer | 6h |  |  |  |
| 40 | 5.8 | Fastners | 2d | 2018-06-01 13:30 | 2018-06-04 12:30 | 14FS+7d |  |  | 2018-03-07 08:30 | 2018-03-08 17:30 | 2d | 76.96d | 0d | Fastners (Cost) [0.1%]; Purchase Engineer | 6h |  |  |  |
| 41 | 5.9 | Paint | 1d | 2018-06-05 13:30 | 2018-06-06 12:30 | 14FS+10d |  |  | 2018-03-16 08:30 | 2018-03-16 17:30 | 1d | 34.96d | 0d | Paint (Cost) [0.1%]; Purchase Engineer | 4h |  |  |  |
| 42 | 5.10 | N2 Purgings | 2d | 2018-06-05 13:30 | 2018-06-07 12:30 | 14FS+10d |  |  | 2018-03-09 08:30 | 2018-03-12 17:30 | 2d | 33.96d | 0d | Purchase Engineer | 8h |  |  |  |
| 43 | 6 | **Material Receipt** | 78.5d | 2018-07-07 13:30 | 2018-10-19 17:30 |  |  |  | 2018-04-10 08:30 | 2018-07-10 17:30 | 72d | 22.46d |  |  | 57h |  | 950 | 849.41 |
| 44 | 6.1 | Tubes-SB 163 UNS N06600 | 1d | 2018-10-19 08:30 | 2018-10-19 17:30 | 33FS+24w |  |  | 2018-06-14 08:30 | 2018-06-14 17:30 | 1d | 0d |  | Helper; Store; Tube (Cost) [0.1%]; Crane | 3h |  | 50 | 49.97 |
| 45 | 6.2 | Spacer-SA 179N-(19.05 x 2.11) | 1d | 2018-10-19 08:30 | 2018-10-19 17:30 | 33FS+24w |  |  | 2018-06-14 08:30 | 2018-06-14 17:30 | 1d | 12.58d | 0d | Helper; Store; Tube (Cost) [0.1%]; Crane | 3h |  | 50 | 49.97 |
| 46 | 6.3 | Shell&channel plate-SA 516 Gr.70(12T,10T) | 1d | 2018-08-07 13:30 | 2018-08-08 12:30 | 34FS+50d |  |  | 2018-04-21 08:30 | 2018-04-21 17:30 | 1d | 41.5d | 0d | Helper; Store; Plate (Cost) [0.1%]; Crane | 3h |  | 50 | 49.97 |
| 47 | 6.4 | Inconel clad plate-SB168 UNS N06600(3T) | 1d | 2018-08-07 13:30 | 2018-08-08 12:30 | 34FS+50d |  |  | 2018-04-27 08:30 | 2018-04-27 17:30 | 1d | 40.5d | 0d | Helper; Store; Plate (Cost) [0.1%]; Crane | 3h |  | 50 | 49.97 |
| 48 | 6.5 | Baffle&Pass Partition plate-SA 516Gr.70N,SB 168 (UNS N06600)(10T) | 1d | 2018-08-14 13:30 | 2018-08-16 12:30 | 34FS+55d |  |  | 2018-06-06 08:30 | 2018-06-06 17:30 | 1d | 35.5d | 0d | Helper; Store; Plate (Cost) [0.1%]; Crane | 3h |  | 50 | 49.97 |
| 49 | 6.6 | Tubesheet(Lip type)-SA 266 Gr.2N-(78T) | 1d | 2018-08-17 13:30 | 2018-08-18 12:30 | 37FS+60d |  |  | 2018-05-10 08:30 | 2018-05-10 17:30 | 1d | 37.58d | 0d | Helper; Store; Forging Non-Std (Cost) [0.1%]; Crane | 3h |  | 50 | 49.97 |
| 50 | 6.7 | Clad plate for Tubesheet(Lip type)-SB 168 UNS N06600-(10T) | 1d | 2018-08-21 13:30 | 2018-08-22 12:30 | 34FS+60d |  |  | 2018-05-10 08:30 | 2018-05-10 17:30 | 1d | 37.46d | 0d | Helper; Store; Plate (Cost) [0.1%]; Crane | 3h |  | 50 | 49.97 |
| 51 | 6.8 | Non-Std Forgings(Channel Cover)-SA 266 Gr.2-(60T) | 1d | 2018-08-17 13:30 | 2018-08-18 12:30 | 37FS+60d |  |  | 2018-05-10 08:30 | 2018-05-10 17:30 | 1d | 68.96d |  | Helper; Store; Forging Non-Std (Cost) [0.1%]; Crane | 3h |  | 50 | 49.97 |
| 52 | 6.9 | clad plate for Channel Cover clad-SB 168 UNS NO 6600-(10T) | 1d | 2018-08-21 13:30 | 2018-08-22 12:30 | 34FS+60d |  |  | 2018-05-10 08:30 | 2018-05-10 17:30 | 1d | 65.96d |  | Helper; Store; Plate (Cost) [0.1%]; Crane | 3h |  | 50 | 49.97 |
| 53 | 6.10 | Non-Std Forgings(Channel Flange)-SA 266 Gr.2-(79T) | 2d | 2018-08-17 13:30 | 2018-08-20 12:30 | 37FS+60d |  |  |  |  |  | 26d | 0d | Helper [38%]; Store [38%]; Forging Non-Std (Cost) [0.1%]; Crane [38%] | 3h |  | 50 |  |
| 54 | 6.11 | Std Forgings-SA 105(shell side)(tube side+inconel W.O) | 1d | 2018-08-03 13:30 | 2018-08-04 12:30 | 37FS+50d |  |  | 2018-05-10 08:30 | 2018-05-10 17:30 | 1d | 69.5d | 3.12d | Helper; Store; Forging Std (Cost) [0.1%]; Crane | 3h |  | 50 | 49.97 |
| 55 | 6.12 | Nozzle pipe-SA 106 Gr.B(shell side) | 1d | 2018-08-04 13:30 | 2018-08-06 12:30 | 35FS+50d |  |  | 2018-04-25 08:30 | 2018-04-25 17:30 | 1d | 66.38d | 0d | Helper; Store; Pipe (Cost) [0.1%]; Crane | 3h |  | 50 | 49.97 |
| 56 | 6.13 | SRN nozzle(Tube side) | 1d | 2018-08-04 13:30 | 2018-08-06 12:30 | 35FS+50d |  |  |  |  |  | 44.38d | 0d | Helper; Store; Pipe (Cost) [0.1%]; Crane | 3h |  | 50 |  |
| 57 | 6.14 | Tie Rods-SS 304 | 1d | 2018-07-07 13:30 | 2018-07-09 12:30 | 36FS+30d |  |  | 2018-04-10 08:30 | 2018-04-10 17:30 | 1d | 74.88d | 0d | Helper; Store; Rod (Cost) [0.1%]; Crane | 3h |  | 50 | 49.97 |
| 58 | 6.15 | Gaskets-Inconel 600 spiral wound type | 1d | 2018-08-06 13:30 | 2018-08-07 12:30 | 38FS+50d |  |  | 2018-05-10 08:30 | 2018-05-10 17:30 | 1d | 76.96d |  | Helper; Store; Gaskets (Cost) [0.1%]; Crane | 3h |  | 50 | 49.97 |
| 59 | 6.16 | Fasteners | 1d | 2018-08-06 13:30 | 2018-08-07 12:30 | 40FS+50d |  |  | 2018-05-14 08:30 | 2018-05-14 17:30 | 1d | 76.96d |  | Helper; Store; Fastners (Cost) [0.1%]; Crane | 3h |  | 50 | 49.97 |
| 60 | 6.17 | Consumables-Inconel | 1d | 2018-07-18 13:30 | 2018-07-19 12:30 | 39FS+35d |  |  | 2018-04-23 08:30 | 2018-04-23 17:30 | 1d | 91.96d |  | Helper; Store; Consumables (Cost) [0.1%]; Crane | 3h |  | 50 | 49.97 |
| 61 | 6.18 | Paint | 1d | 2018-10-01 13:30 | 2018-10-03 12:30 | 41FS+90d |  |  | 2018-07-10 08:30 | 2018-07-10 17:30 | 1d | 34.96d |  | Helper; Store; Paint (Cost) [0.1%]; Crane | 3h |  | 50 | 49.97 |
| 62 | 6.19 | N2 Purgings | 1d | 2018-10-03 13:30 | 2018-10-04 12:30 | 42FS+90d |  |  | 2018-07-05 08:30 | 2018-07-05 17:30 | 1d | 33.96d |  | Helper; Store; Crane | 3h |  | 50 | 49.97 |

| ID | WBS | Task | Duration | Start | Finish | Predecessors | Baseline start | Baseline finish | Baseline duration | Total slack | Free slack | Calendar | Resources | Work | Cost | Baseline cost |
| --- | --- | --- | --- | --- | --- | --- | --- | --- | --- | --- | --- | --- | --- | --- | --- | --- |
| 63 | 7 | **Fabrication** | 185.96d | 2018-07-09 12:30 | 2018-11-12 12:10 |  | 2018-04-25 08:30 | 2018-06-28 17:30 | 50d | 0d |  | TEAM_2Shift_Calendar-1 |  | 3007.17h | 133,624.95 |  |
| 64 | 7.1 | **Nozzle Fabrication(Shell side)** | 9.25d | 2018-08-06 12:30 | 2018-08-13 06:30 |  | 2018-02-14 17:30 | 2018-02-17 19:03 | 6.19d | 132.5d |  | TEAM_2Shift_Calendar-1 |  | 90h | 4,462.5 | 6,278.12 |
| 65 | 7.1.1 | Noz Pipe Marking | 1d | 2018-08-06 12:30 | 2018-08-06 20:30 | 55 | 2018-02-15 09:30 | 2018-02-15 13:30 | 4h | 132.5d | 0d | TEAM_2Shift_Calendar-1 | Helper; Pipe (Cost) [0.1%]; Fitter | 8h | 475 | 475 |
| 66 | 7.1.2 | Noz Pipe Stamping | 1.62d | 2018-08-06 20:30 | 2018-08-07 17:30 | 65 | 2018-02-15 13:30 | 2018-02-15 16:31 | 3h | 132.5d | 0d | TEAM_2Shift_Calendar-1 | QC Engineer | 4h |  |  |
| 67 | 7.1.3 | Noz Pipe Cutting | 0.5d | 2018-08-07 17:30 | 2018-08-07 21:30 | 66 | 2018-02-15 16:31 | 2018-02-15 18:31 | 2h | 132.71d | 0d | TEAM_2Shift_Calendar-1 | Gas Cutter; OAGM; Helper | 6h | 237.5 | 237.5 |
| 68 | 7.1.4 | Noz Pipe Ep | 9h | 2018-08-07 21:30 | 2018-08-08 14:30 | 67 | 2018-02-15 18:31 | 2018-02-15 20:31 | 2h | 132.71d | 0d | TEAM_2Shift_Calendar-1 | Grinding Machine; Grinder | 4h | 112.5 | 112.5 |
| 69 | 7.1.5 | Noz Flange+PipeFitUp | 2d | 2018-08-08 14:30 | 2018-08-09 14:30 | 54, 68 | 2018-02-15 20:31 | 2018-02-16 10:31 | 6h | 132.71d | 0d | TEAM_2Shift_Calendar-1 | Helper [200%]; SMAW Welder; SMAW Welding Machine; Forging Std (Cost) [0.1%]; Pipe (Cost) [0.1%]; Fitter | 30h | 1,425 | 1,425 |
| 70 | 7.1.6 | Noz Flange+Pipe Fit Up Inspection | 1d | 2018-08-09 14:30 | 2018-08-10 06:30 | 69 | 2018-02-16 10:31 | 2018-02-16 17:32 | 7h | 132.71d | 0d | TEAM_2Shift_Calendar-1 | Fitter [200%] | 6h | 412.5 | 962.5 |
| 71 | 7.1.7 | Noz Flange+PipeRootTigWelding | 1d | 2018-08-10 06:30 | 2018-08-10 14:30 | 70 | 2018-02-16 17:32 | 2018-02-16 21:32 | 4h | 132.71d | 0d | TEAM_2Shift_Calendar-1 | TIG Welder; TIG Welding Machine; Helper [200%] | 16h | 900 | 900 |
| 72 | 7.1.8 | Noz Flange+PipeFillerPassWelding | 1d | 2018-08-10 14:30 | 2018-08-13 06:30 | 71 | 2018-02-16 21:32 | 2018-02-17 09:32 | 4h | 132.71d |  | TEAM_2Shift_Calendar-1 | TIG Welder; TIG Welding Machine; Helper [200%] | 16h | 900 | 900 |
| 73 | 7.2 | **Nozzle Fabrication(Tube side)** | 8d | 2018-08-06 12:30 | 2018-08-10 12:30 |  | 2018-02-14 17:30 | 2018-02-17 19:03 | 6.19d | 133.96d |  | TEAM_2Shift_Calendar-1 |  | 61h | 3,085 | 6,278.12 |
| 74 | 7.2.1 | Noz Stamping | 2d | 2018-08-06 12:30 | 2018-08-07 12:30 | 56 | 2018-02-15 13:30 | 2018-02-15 16:31 | 3h | 133.96d | 0d | TEAM_2Shift_Calendar-1 | Pipe (Cost) [0.1%]; QC Engineer | 3h |  |  |
| 75 | 7.2.2 | Noz Ep | 1d | 2018-08-07 12:30 | 2018-08-07 20:30 | 74 | 2018-02-15 18:31 | 2018-02-15 20:31 | 2h | 133.96d | 0d | TEAM_2Shift_Calendar-1 | Grinding Machine; Grinder | 4h | 112.5 | 112.5 |
| 76 | 7.2.3 | Noz Flange+PipeFitUp | 1d | 2018-08-07 20:30 | 2018-08-08 12:30 | 75 | 2018-02-15 20:31 | 2018-02-16 10:31 | 6h | 133.96d | 0d | TEAM_2Shift_Calendar-1 | Helper [200%]; SMAW Welder; SMAW Welding Machine; Forging Std (Cost) [0.1%]; Fitter | 16h | 760 | 1,425 |
| 77 | 7.2.4 | Noz Flange+Pipe Fit Up Inspection | 1d | 2018-08-08 12:30 | 2018-08-08 20:30 | 76 | 2018-02-16 10:31 | 2018-02-16 17:32 | 7h | 133.96d | 0d | TEAM_2Shift_Calendar-1 | Fitter [200%] | 6h | 412.5 | 962.5 |
| 78 | 7.2.5 | Noz Flange+PipeRootTigWelding | 2d | 2018-08-08 20:30 | 2018-08-09 20:30 | 77 | 2018-02-16 17:32 | 2018-02-16 21:32 | 4h | 133.96d | 0d | TEAM_2Shift_Calendar-1 | TIG Welder; TIG Welding Machine; Helper [200%] | 16h | 900 | 900 |
| 79 | 7.2.6 | Noz Flange+PipeFillerPassWelding | 1d | 2018-08-09 20:30 | 2018-08-10 12:30 | 78 | 2018-02-16 21:32 | 2018-02-17 09:32 | 4h | 133.96d |  | TEAM_2Shift_Calendar-1 | TIG Welder; TIG Welding Machine; Helper [200%] | 16h | 900 | 900 |
| 80 | 7.3 | **Saddle Fabrication** | 14.62d | 2018-08-08 12:30 | 2018-08-18 17:30 |  | 2018-02-06 17:30 | 2018-02-15 08:36 | 12.88d | 122.96d |  | TEAM_2Shift_Calendar-1 |  | 238h | 10,834.58 | 12,396.88 |
| 81 | 7.3.1 | Saddle Pl Marking | 1d | 2018-08-08 12:30 | 2018-08-08 20:30 | 46 | 2018-02-07 09:30 | 2018-02-07 14:31 | 5h | 122.96d | 0d | TEAM_2Shift_Calendar-1 | Helper; Plate (Cost) [0.1%]; Fitter | 8h | 475 | 950 |
| 82 | 7.3.2 | Saddle Pl Mkg Inspection | 1.62d | 2018-08-08 20:30 | 2018-08-09 17:30 | 81 | 2018-02-07 14:31 | 2018-02-08 08:31 | 10h | 122.96d | 0d | TEAM_2Shift_Calendar-1 | QC Engineer; Fitter | 6h | 206.25 | 446.88 |
| 83 | 7.3.3 | Saddle Pl Mkg Cutting | 1d | 2018-08-09 17:30 | 2018-08-10 09:30 | 82 | 2018-02-08 08:31 | 2018-02-08 13:31 | 5h | 123.33d | 0d | TEAM_2Shift_Calendar-1 | Gas Cutter; OAGM; Helper | 16h | 633.33 | 593.75 |
| 84 | 7.3.4 | Grinding | 1d | 2018-08-10 09:30 | 2018-08-10 17:30 | 83 | 2018-02-08 13:31 | 2018-02-08 21:32 | 8h | 123.33d | 0d | TEAM_2Shift_Calendar-1 | Grinding Machine; Grinder | 8h | 225 | 450 |
| 85 | 7.3.5 | Saddle Base Hole Marking | 1d | 2018-08-10 17:30 | 2018-08-13 09:30 | 84 | 2018-02-08 21:32 | 2018-02-09 08:32 | 3h | 123.33d | 0d | TEAM_2Shift_Calendar-1 | Helper; Fitter | 16h | 950 | 356.25 |
| 86 | 7.3.6 | Saddle BaseHole Drilling | 1d | 2018-08-13 09:30 | 2018-08-13 17:30 | 85 | 2018-02-09 08:32 | 2018-02-09 13:32 | 5h | 123.33d | 0d | TEAM_2Shift_Calendar-1 | Radial Drilling Machine; Driller | 8h | 275 | 343.75 |
| 87 | 7.3.7 | Saddle Pad Forming | 1d | 2018-08-13 17:30 | 2018-08-14 09:30 | 86 | 2018-02-09 13:32 | 2018-02-09 21:33 | 1d | 123.33d | 0d | TEAM_2Shift_Calendar-1 | Helper; Fitter [200%] | 24h | 1,500 | 1,500 |
| 88 | 7.3.8 | Saddle FitUp | 2d | 2018-08-14 09:30 | 2018-08-16 09:30 | 87 | 2018-02-09 21:33 | 2018-02-12 13:33 | 8h | 123.33d | 0d | TEAM_2Shift_Calendar-1 | Helper [200%]; SMAW Welder; SMAW Welding Machine; Fitter | 32h | 1,520 | 1,900 |
| 89 | 7.3.9 | Saddle FitUp Inspection | 1d | 2018-08-16 09:30 | 2018-08-16 17:30 | 88 | 2018-02-12 13:33 | 2018-02-12 18:34 | 5h | 123.33d | 0d | TEAM_2Shift_Calendar-1 | Fitter | 8h | 550 | 343.75 |
| 90 | 7.3.10 | Saddle Welding | 3d | 2018-08-16 17:30 | 2018-08-18 09:30 | 89 | 2018-02-12 18:34 | 2018-02-14 16:36 | 30h | 123.33d | 0d | TEAM_2Shift_Calendar-1 | SMAW Welder; SMAW Welding Machine; Helper [200%] | 96h | 4,050 | 5,062.5 |
| 91 | 7.3.11 | Saddle Profile Grinding | 8h | 2018-08-18 09:30 | 2018-08-18 17:30 | 90 | 2018-02-14 16:36 | 2018-02-15 08:36 | 8h | 123.33d |  | TEAM_2Shift_Calendar-1 | Grinding Machine; Grinder | 16h | 450 | 450 |

Notes:
- 87: SADDLE PAD PL ~585LGx150x12T 2 NOS

| ID | WBS | Task | Duration | Start | Finish | Predecessors | Baseline start | Baseline finish | Baseline duration | Total slack | Free slack | Calendar | Resources | Work | Cost | Baseline cost |
| --- | --- | --- | --- | --- | --- | --- | --- | --- | --- | --- | --- | --- | --- | --- | --- | --- |
| 92 | 7.4 | **BaffleFabrication** | 27.88d | 2018-08-16 12:30 | 2018-09-03 11:30 |  | 2018-01-31 16:30 | 2018-02-22 10:17 | 35.19d | 100.08d |  | TEAM_2Shift_Calendar-1 |  | 226h | 9,356.25 | 12,856.25 |
| 93 | 7.4.1 | Marking | 6h | 2018-08-16 12:30 | 2018-08-16 18:30 | 48 | 2018-02-01 09:00 | 2018-02-01 15:01 | 6h | 100.08d | 0d | TEAM_2Shift_Calendar-1 | Helper; Plate (Cost) [0.1%]; Fitter | 12h | 712.5 | 712.5 |
| 94 | 7.4.2 | Cutting | 8h | 2018-08-16 18:30 | 2018-08-17 10:30 | 93 | 2018-02-01 15:01 | 2018-02-02 07:01 | 8h | 100.08d | 0d | TEAM_2Shift_Calendar-1 | Gas Cutter; OAGM; Helper | 24h | 950 | 950 |
| 95 | 7.4.3 | Grinding | 8h | 2018-08-17 10:30 | 2018-08-17 18:30 | 94 | 2018-02-02 07:01 | 2018-02-02 15:02 | 8h | 100.08d | 0d | TEAM_2Shift_Calendar-1 | Grinding Machine; Grinder | 16h | 450 | 450 |
| 96 | 7.4.4 | Stacking | 6h | 2018-08-17 18:30 | 2018-08-18 08:30 | 95 | 2018-02-02 15:02 | 2018-02-02 21:02 | 6h | 100.08d | 0d | TEAM_2Shift_Calendar-1 | Fitter; Helper | 12h | 712.5 | 712.5 |
| 97 | 7.4.5 | CentreLineMarking | 3h | 2018-08-18 08:30 | 2018-08-18 11:30 | 96 | 2018-02-02 21:02 | 2018-02-03 08:02 | 3h | 100.08d | 0d | TEAM_2Shift_Calendar-1 | Helper; Fitter | 6h | 356.25 | 356.25 |
| 98 | 7.4.6 | Drilling | 10d | 2018-08-18 11:30 | 2018-08-24 11:30 | 97 | 2018-02-03 08:02 | 2018-02-09 08:07 | 10d | 100.08d | 0d | TEAM_2Shift_Calendar-1 |  |  |  |  |
| 99 | 7.4.7 | De Stacking | 6h | 2018-08-24 11:30 | 2018-08-24 17:30 | 98 | 2018-02-09 08:07 | 2018-02-09 14:08 | 6h | 100.08d | 0d | TEAM_2Shift_Calendar-1 | Fitter; Helper | 12h | 712.5 | 712.5 |
| 100 | 7.4.8 | HoleChamfering | 3d | 2018-08-24 17:30 | 2018-08-28 09:30 | 99 | 2018-02-09 14:08 | 2018-02-14 14:11 | 6d | 100.08d | 0d | TEAM_2Shift_Calendar-1 | Radial Drilling Machine; Driller | 18h | 618.75 | 2,750 |
| 101 | 7.4.9 | EdgeTrimming | 7h | 2018-08-28 09:30 | 2018-08-28 16:30 | 100 | 2018-02-14 14:11 | 2018-02-14 21:11 | 7h | 100.08d | 0d | TEAM_2Shift_Calendar-1 | Grinding Machine; Grinder | 14h | 393.75 | 393.75 |
| 102 | 7.4.10 | Grinding | 8h | 2018-08-28 16:30 | 2018-08-29 08:30 | 101 | 2018-02-14 21:11 | 2018-02-15 15:12 | 10h | 100.08d | 0d | TEAM_2Shift_Calendar-1 | Grinding Machine; Grinder | 16h | 450 | 562.5 |
| 103 | 7.4.11 | StackingTypeA&B | 6h | 2018-08-29 08:30 | 2018-08-29 14:30 | 102 | 2018-02-15 15:12 | 2018-02-15 21:12 | 6h | 100.08d | 0d | TEAM_2Shift_Calendar-1 | Fitter; Helper | 12h | 712.5 | 712.5 |
| 104 | 7.4.12 | ThroughHoleCheck | 1d | 2018-08-29 14:30 | 2018-08-30 06:30 | 103 | 2018-02-15 21:12 | 2018-02-16 13:12 | 1d | 100.08d | 0d | TEAM_2Shift_Calendar-1 | Helper; Fitter [200%] | 16h | 1,000 | 1,500 |
| 105 | 7.4.13 | ReDrillIfRequired | 3d | 2018-08-30 06:30 | 2018-08-31 14:30 | 104 | 2018-02-16 13:12 | 2018-02-17 21:14 | 3d | 100.08d | 0d | TEAM_2Shift_Calendar-1 | Radial Drilling Machine; Driller | 26h | 893.75 | 1,650 |
| 106 | 7.4.14 | OD Machining | 2d | 2018-08-31 14:30 | 2018-09-01 14:30 | 105 | 2018-02-17 21:14 | 2018-02-20 21:16 | 4d | 100.08d | 0d | TEAM_2Shift_Calendar-1 | SC (Work) | 16h |  |  |
| 107 | 7.4.15 | DeStacking | 5h | 2018-09-01 14:30 | 2018-09-01 19:30 | 106 | 2018-02-20 21:16 | 2018-02-21 10:16 | 5h | 100.08d | 0d | TEAM_2Shift_Calendar-1 | Fitter; Helper | 10h | 593.75 | 593.75 |
| 108 | 7.4.16 | Cleaning | 8h | 2018-09-01 19:30 | 2018-09-03 11:30 | 107 | 2018-02-21 10:16 | 2018-02-21 18:17 | 8h | 100.08d |  | TEAM_2Shift_Calendar-1 | Helper [200%] | 16h | 800 | 800 |
| 109 | 7.5 | **TubeSheet(LHS & RHS)** | 49d | 2018-08-18 12:30 | 2018-09-19 20:30 |  | 2018-02-14 16:30 | 2018-02-23 21:38 | 16.62d | 74.96d |  | TEAM_2Shift_Calendar-1 |  | 104h | 4,368.75 | 5,236.88 |
| 110 | 7.5.1 | Receipt Of Forging | 1d | 2018-08-18 12:30 | 2018-08-18 20:30 | 49 | 2018-02-14 16:30 | 2018-02-15 08:30 | 1d | 75.58d | 0d | TEAM_2Shift_Calendar-1 | Tube Sheet (Cost) [0.1%]; Helper [200%] | 6h | 300 | 800 |
| 111 | 7.5.2 | Inward Inspection | 1.62d | 2018-08-20 20:30 | 2018-08-21 17:30 | 110FS+2d | 2018-02-15 08:30 | 2018-02-15 12:30 | 4h | 75.58d | 1.38d | TEAM_2Shift_Calendar-1 | QC Engineer; Fitter [200%] | 8h | 366.67 | 550 |
| 112 | 7.5.3 | clad plate marking&cutting | 1d | 2018-08-22 12:30 | 2018-08-22 20:30 | 111, 50 |  |  |  | 74.58d | 0d | TEAM_2Shift_Calendar-1 | Gas Cutter; Helper; Plate (Cost) [0.1%]; Fitter | 8h | 500 |  |
| 113 | 7.5.4 | send for cladding | 1d | 2018-08-22 20:30 | 2018-08-23 12:30 | 112 |  |  |  | 74.58d | 0d | TEAM_2Shift_Calendar-1 | Crane; Helper [200%] | 4h | 133.33 |  |
| 114 | 7.5.5 | Receipt Of cladded tubesheet | 1d | 2018-08-30 12:30 | 2018-08-30 20:30 | 113FS+10d |  |  |  | 74.58d | 0d | TEAM_2Shift_Calendar-1 | Crane; Tube Sheet (Cost) [0.1%]; Helper [200%] | 3h | 100 |  |
| 115 | 7.5.6 | Inward Inspection | 1.62d | 2018-08-30 20:30 | 2018-08-31 17:30 | 114 |  |  |  | 74.58d | 0d | TEAM_2Shift_Calendar-1 | QC Engineer; Fitter | 8h | 275 |  |
| 116 | 7.5.7 | Off Load For Drilling | 4h | 2018-08-31 17:30 | 2018-08-31 21:30 | 115 | 2018-02-15 12:30 | 2018-02-15 16:31 | 4h | 74.96d | 0d | TEAM_2Shift_Calendar-1 | Helper [200%] | 8h | 400 | 400 |
| 117 | 7.5.8 | Drilling Of Tube Holes | 12d | 2018-08-31 21:30 | 2018-09-07 21:30 | 116 | 2018-02-15 16:31 | 2018-02-19 16:34 | 6d | 74.96d | 0d | TEAM_2Shift_Calendar-1 |  |  |  |  |
| 118 | 7.5.9 | Drilling Of Bolt Holes | 27h | 2018-09-07 21:30 | 2018-09-11 16:30 | 117 | 2018-02-19 16:34 | 2018-02-20 12:34 | 12h | 74.96d | 0d | TEAM_2Shift_Calendar-1 | Radial Drilling Machine; Driller | 24h | 825 | 825 |
| 119 | 7.5.10 | Drilling Of TieRod Holes | 13h | 2018-09-11 16:30 | 2018-09-12 13:30 | 118 | 2018-02-20 12:34 | 2018-02-20 17:35 | 5h | 74.96d | 0d | TEAM_2Shift_Calendar-1 | Radial Drilling Machine; Driller | 10h | 343.75 | 343.75 |
| 120 | 7.5.11 | M/C Of PassPartion | 8d | 2018-09-12 13:30 | 2018-09-18 13:30 | 119 | 2018-02-20 17:35 | 2018-02-22 17:37 | 4d | 74.96d | 0d | TEAM_2Shift_Calendar-1 | Plate (Cost) [0.1%] |  |  |  |
| 121 | 7.5.12 | TubeSheet Receipt After Drilling | 4h | 2018-09-18 13:30 | 2018-09-18 17:30 | 120 | 2018-02-22 21:37 | 2018-02-23 10:37 | 5h | 74.96d | 0d | TEAM_2Shift_Calendar-1 | Tube Sheet (Cost) [0.1%]; Helper [200%] | 8h | 400 | 500 |
| 122 | 7.5.13 | Tube Sheet Inspection | 2d | 2018-09-18 17:30 | 2018-09-19 17:30 | 121 | 2018-02-23 10:37 | 2018-02-23 18:38 | 1d | 74.96d | 0d | TEAM_2Shift_Calendar-1 | QC Engineer; Fitter | 8h | 275 | 1,093.12 |
| 123 | 7.5.14 | Tube Sheet Cleaning | 3h | 2018-09-19 17:30 | 2018-09-19 20:30 | 122 | 2018-02-23 18:38 | 2018-02-23 21:38 | 3h | 74.96d |  | TEAM_2Shift_Calendar-1 | Helper [300%] | 9h | 450 | 450 |

Notes:
- 93: 8NOS
- 98: 460NOS,19.05
- 103: 8NOS
- 110: LHS TUBESHEET DIA 639 X 78T RHS TUBESHEET DIA 639 X 78T
- 117: 460NOS,19.05
- 119: 8NOSxØ10

| ID | WBS | Task | Duration | Start | Finish | Predecessors | Baseline start | Baseline finish | Baseline duration | Total slack | Free slack | Calendar | Resources | Work | Cost | Baseline cost |
| --- | --- | --- | --- | --- | --- | --- | --- | --- | --- | --- | --- | --- | --- | --- | --- | --- |
| 124 | 7.6 | **TieRod** | 4.38d | 2018-07-09 12:30 | 2018-07-11 15:30 |  | 2018-03-09 15:30 | 2018-03-12 11:30 | 1.5d | 149.88d | 97.77d | TEAM_2Shift_Calendar-1 |  | 38h | 2,207.5 | 1,247.5 |
| 125 | 7.6.1 | Marking | 2h | 2018-07-09 12:30 | 2018-07-09 14:30 | 57 | 2018-03-09 16:30 | 2018-03-09 18:30 | 2h | 149.88d | 0d | TEAM_2Shift_Calendar-1 | Helper; Rod (Cost) [0.1%]; Fitter | 4h | 237.5 | 237.5 |
| 126 | 7.6.2 | Cutting | 1h | 2018-07-09 14:30 | 2018-07-09 15:30 | 125 | 2018-03-09 18:30 | 2018-03-09 19:30 | 1h | 149.88d | 0d | TEAM_2Shift_Calendar-1 | Helper; Cutting Machine | 2h | 50 | 50 |
| 127 | 7.6.3 | Thread Machining | 4d | 2018-07-09 15:30 | 2018-07-11 15:30 | 126 | 2018-03-09 19:30 | 2018-03-12 11:30 | 1d | 149.88d |  | TEAM_2Shift_Calendar-1 | Lathe; Lathe Operator | 32h | 1,920 | 960 |
| 128 | 7.7 | **SpacerTube** | 5.75d | 2018-10-19 17:30 | 2018-10-23 15:30 |  | 2018-03-09 15:30 | 2018-03-13 13:31 | 3.75d | 25.58d |  | TEAM_2Shift_Calendar-1 |  | 55h | 2,929.38 | 2,929.38 |
| 129 | 7.7.1 | SpacerTubeMarking | 4.5h | 2018-10-19 17:30 | 2018-10-19 22:00 | 45 | 2018-03-09 15:30 | 2018-03-09 20:00 | 4.5h | 25.58d | 0d | TEAM_2Shift_Calendar-1 | Helper; Tube (Cost) [0.1%]; Fitter | 9h | 534.38 | 534.38 |
| 130 | 7.7.2 | SpacerTubeCutting | 4.5h | 2018-10-20 06:00 | 2018-10-20 10:30 | 129 | 2018-03-09 20:00 | 2018-03-12 08:30 | 4.5h | 25.58d | 0d | TEAM_2Shift_Calendar-1 | Helper; Cutting Machine | 9h | 225 | 225 |
| 131 | 7.7.3 | SpacerTubeM/C | 4d | 2018-10-20 10:30 | 2018-10-23 10:30 | 130 | 2018-03-12 08:30 | 2018-03-13 08:31 | 2d | 25.58d | 0d | TEAM_2Shift_Calendar-1 | Lathe; Lathe Operator | 32h | 1,920 | 1,920 |
| 132 | 7.7.4 | SpacerCleaning | 5h | 2018-10-23 10:30 | 2018-10-23 15:30 | 131 | 2018-03-13 08:31 | 2018-03-13 13:31 | 5h | 25.58d |  | TEAM_2Shift_Calendar-1 | Helper | 5h | 250 | 250 |
| 133 | 7.8 | **OtherComponents** | 10.62d | 2018-08-16 12:30 | 2018-08-22 17:30 |  | 2018-02-06 15:30 | 2018-02-13 14:35 | 9.88d | 70.75d | 13.14d | TEAM_2Shift_Calendar-1 |  | 168h | 6,987.5 | 6,670.1 |
| 134 | 7.8.1 | Pass partition plate pre-machinng | 3h | 2018-08-16 12:30 | 2018-08-16 15:30 | 48 | 2018-02-07 07:30 | 2018-02-07 10:30 | 3h | 70.75d | 0d | TEAM_2Shift_Calendar-1 | Grinding Machine; Plate (Cost) [0.1%]; Grinder | 6h | 168.75 | 168.75 |
| 135 | 7.8.2 | Final maching | 3h | 2018-08-16 15:30 | 2018-08-16 18:30 | 134 | 2018-02-07 16:31 | 2018-02-07 19:31 | 3h | 70.75d | 0d | TEAM_2Shift_Calendar-1 | Grinding Machine; Grinder | 6h | 168.75 | 168.75 |
| 136 | 7.8.3 | PassPartion Plate Marking | 3h | 2018-08-16 18:30 | 2018-08-16 21:30 | 135 | 2018-02-07 19:31 | 2018-02-08 06:31 | 3h | 70.75d | 0d | TEAM_2Shift_Calendar-1 | Helper; Fitter | 6h | 356.25 | 356.25 |
| 137 | 7.8.4 | Inspection | 6h | 2018-08-16 21:30 | 2018-08-17 11:30 | 136 | 2018-02-08 06:31 | 2018-02-08 12:31 | 6h | 70.75d | 0d | TEAM_2Shift_Calendar-1 | QC Engineer; Fitter | 6h | 206.25 | 301.35 |
| 138 | 7.8.5 | Cutting | 3h | 2018-08-17 11:30 | 2018-08-17 14:30 | 137 | 2018-02-08 12:31 | 2018-02-08 15:32 | 3h | 70.75d | 0d | TEAM_2Shift_Calendar-1 | OAGM; Gas Cutter | 6h | 206.25 | 206.25 |
| 139 | 7.8.6 | Grinding | 4h | 2018-08-17 14:30 | 2018-08-17 18:30 | 138 | 2018-02-08 15:32 | 2018-02-08 19:32 | 4h | 70.75d | 0d | TEAM_2Shift_Calendar-1 | Grinding Machine; Grinder | 8h | 225 | 225 |
| 140 | 7.8.7 | LiftingLug Marking | 4h | 2018-08-17 18:30 | 2018-08-18 06:30 | 139, 46 | 2018-02-08 19:32 | 2018-02-09 07:32 | 4h | 70.75d | 0d | TEAM_2Shift_Calendar-1 | Helper; Plate (Cost) [0.1%]; Fitter | 8h | 475 | 475 |
| 141 | 7.8.8 | LiftingLug Cutting | 4h | 2018-08-18 06:30 | 2018-08-18 10:30 | 140 | 2018-02-09 07:32 | 2018-02-09 11:32 | 4h | 70.75d | 0d | TEAM_2Shift_Calendar-1 | OAGM; Gas Cutter | 8h | 275 | 275 |
| 142 | 7.8.9 | Lifting LugPad Marking | 3h | 2018-08-18 10:30 | 2018-08-18 13:30 | 141 | 2018-02-09 11:32 | 2018-02-09 14:33 | 3h | 70.75d | 0d | TEAM_2Shift_Calendar-1 | Helper; Fitter | 6h | 356.25 | 356.25 |
| 143 | 7.8.10 | Lifting LugPad Cutting | 2h | 2018-08-18 13:30 | 2018-08-18 15:30 | 142 | 2018-02-09 14:33 | 2018-02-09 16:33 | 2h | 70.75d | 0d | TEAM_2Shift_Calendar-1 | OAGM; Gas Cutter | 4h | 137.5 | 137.5 |
| 144 | 7.8.11 | Lifting LugPad Grinding | 7h | 2018-08-18 15:30 | 2018-08-20 06:30 | 143 | 2018-02-09 16:33 | 2018-02-12 07:33 | 7h | 70.75d | 0d | TEAM_2Shift_Calendar-1 | Grinding Machine; Grinder | 14h | 393.75 | 393.75 |
| 145 | 7.8.12 | LiftingLugPadForming | 1d | 2018-08-20 06:30 | 2018-08-20 14:30 | 144 | 2018-02-12 07:33 | 2018-02-12 15:34 | 1d | 70.75d | 0d | TEAM_2Shift_Calendar-1 | Helper; Fitter [200%] | 12h | 750 | 750 |
| 146 | 7.8.13 | Rf pad Marking | 1d | 2018-08-20 14:30 | 2018-08-21 06:30 | 46, 145 |  |  |  | 70.75d | 0d | TEAM_2Shift_Calendar-1 | Helper; Plate (Cost) [0.1%]; Fitter | 16h | 950 |  |
| 147 | 7.8.14 | Rf pad cutting | 1d | 2018-08-21 06:30 | 2018-08-21 14:30 | 146 |  |  |  | 70.75d | 0d | TEAM_2Shift_Calendar-1 | Gas Cutter; Helper; Cutting Machine | 24h | 950 |  |
| 148 | 7.8.15 | Rf pad Grinding | 1d | 2018-08-21 14:30 | 2018-08-22 06:30 | 147 |  |  |  | 70.75d | 0d | TEAM_2Shift_Calendar-1 | Grinding Machine; Grinder | 16h | 450 |  |
| 149 | 7.8.16 | Ins ring Marking | 4h | 2018-08-22 06:30 | 2018-08-22 10:30 | 148 | 2018-02-12 15:34 | 2018-02-12 19:34 | 4h | 70.75d | 0d | TEAM_2Shift_Calendar-1 | Helper; Fitter | 8h | 475 | 475 |
| 150 | 7.8.17 | Ins ring Cutting | 4h | 2018-08-22 10:30 | 2018-08-22 14:30 | 149 | 2018-02-12 19:34 | 2018-02-13 07:34 | 4h | 70.75d | 0d | TEAM_2Shift_Calendar-1 | OAGM; Gas Cutter | 8h | 275 | 275 |
| 151 | 7.8.18 | Ins ring Grinding | 3h | 2018-08-22 14:30 | 2018-08-22 17:30 | 150 | 2018-02-13 07:34 | 2018-02-13 10:34 | 3h | 70.75d | 18.75d | TEAM_2Shift_Calendar-1 | Grinding Machine; Grinder | 6h | 168.75 | 168.75 |

Notes:
- 129: OD 19.05x2.11T
- 130: 40Nos
- 136: 10T-1NO
- 140: 4nos
- 149: 11Nos

| ID | WBS | Task | Type | Duration | Start | Finish | Predecessors | Baseline start | Baseline finish | Baseline duration | Total slack | Free slack | Calendar | Resources | Work | Cost | Baseline cost |
| --- | --- | --- | --- | --- | --- | --- | --- | --- | --- | --- | --- | --- | --- | --- | --- | --- | --- |
| 152 | 7.9 | **shell fabrication** |  | 47.31d | 2018-08-08 12:30 | 2018-09-10 06:58 |  | 2018-01-31 17:30 | 2018-03-03 07:54 | 48.75d | 90d |  | TEAM_2Shift_Calendar-1 |  | 692h | 28,949.73 | 42,867.5 |
| 153 | 7.9.1 | ShPl.Marking |  | 6h | 2018-08-08 12:30 | 2018-08-08 18:30 | 46 | 2018-02-01 14:01 | 2018-02-01 20:01 | 6h | 90d | 0d | TEAM_2Shift_Calendar-1 | Helper; Plate (Cost) [0.1%]; Fitter | 12h | 712.5 | 712.5 |
| 154 | 7.9.2 | ShPl.Stamping |  | 10h | 2018-08-08 18:30 | 2018-08-09 12:30 | 153 | 2018-02-01 20:01 | 2018-02-02 08:01 | 4h | 90d | 0d | TEAM_2Shift_Calendar-1 | QC Engineer [50%] | 4h |  |  |
| 155 | 7.9.3 | Sh-LS1Cutting(1500MM) |  | 3h | 2018-08-09 12:30 | 2018-08-09 15:30 | 154 | 2018-02-02 08:01 | 2018-02-02 10:31 | 2.5h | 90d | 0d | TEAM_2Shift_Calendar-1 | Gas Cutter; OAGM; Helper | 9h | 356.25 | 356.25 |
| 156 | 7.9.4 | Sh-LS2Cutting(1163MM) |  | 3h | 2018-08-09 15:30 | 2018-08-09 18:30 | 155 | 2018-02-02 10:31 | 2018-02-02 12:31 | 2h | 90d | 0d | TEAM_2Shift_Calendar-1 | Gas Cutter; OAGM; Helper | 9h | 356.25 | 356.25 |
| 157 | 7.9.5 | Sh-LS1E.P |  | 4h | 2018-08-09 18:30 | 2018-08-10 06:30 | 156 | 2018-02-02 15:32 | 2018-02-02 19:32 | 4h | 90d | 0d | TEAM_2Shift_Calendar-1 | Grinding Machine; Grinder | 8h | 225 | 225 |
| 158 | 7.9.6 | Sh-LS2E.P |  | 4h | 2018-08-10 06:30 | 2018-08-10 10:30 | 157 | 2018-02-02 19:32 | 2018-02-03 07:32 | 4h | 90d | 0d | TEAM_2Shift_Calendar-1 | Grinding Machine; Grinder | 8h | 225 | 225 |
| 159 | 7.9.7 | Sh-LS1Pre-Bending |  | 11h | 2018-08-10 10:30 | 2018-08-10 21:30 | 158 | 2018-02-03 11:32 | 2018-02-03 15:33 | 4h | 90d | 0d | TEAM_2Shift_Calendar-1 | Helper; Plate Bending Machine; Fitter [200%] | 16h | 750 | 750 |
| 160 | 7.9.8 | Sh-LS2Pre-Bending |  | 5h | 2018-08-10 21:30 | 2018-08-13 10:30 | 159 | 2018-02-03 15:33 | 2018-02-03 19:33 | 4h | 90d | 0d | TEAM_2Shift_Calendar-1 | Helper; Plate Bending Machine; Fitter [200%] | 16h | 750 | 750 |
| 161 | 7.9.9 | Sh-LS1Pre-BendCut-off |  | 2h | 2018-08-13 10:30 | 2018-08-13 12:30 | 160 | 2018-02-05 07:33 | 2018-02-05 09:33 | 2h | 90d | 0d | TEAM_2Shift_Calendar-1 | OAGM; Gas Cutter | 4h | 137.5 | 137.5 |
| 162 | 7.9.10 | Sh-LS2Pre-BendCut-off |  | 4h | 2018-08-13 12:30 | 2018-08-13 16:30 | 161 | 2018-02-05 09:33 | 2018-02-05 13:33 | 4h | 90d | 0d | TEAM_2Shift_Calendar-1 | OAGM; Gas Cutter | 8h | 275 | 275 |
| 163 | 7.9.11 | Sh-LS1E.P |  | 4h | 2018-08-13 16:30 | 2018-08-13 20:30 | 162 | 2018-02-05 15:34 | 2018-02-05 19:34 | 4h | 90d | 0d | TEAM_2Shift_Calendar-1 | Grinding Machine; Grinder | 8h | 225 | 225 |
| 164 | 7.9.12 | Sh-LS2E.P |  | 3h | 2018-08-13 20:30 | 2018-08-14 07:30 | 163 | 2018-02-05 19:34 | 2018-02-06 06:34 | 3h | 90d | 0d | TEAM_2Shift_Calendar-1 | Grinding Machine; Grinder | 6h | 168.75 | 168.75 |
| 165 | 7.9.13 | Sh-LS1Rolling |  | 12.5h | 2018-08-14 07:30 | 2018-08-14 20:00 | 164 | 2018-02-06 09:34 | 2018-02-06 14:35 | 5h | 90d | 0d | TEAM_2Shift_Calendar-1 | Helper; Rolling Machine; Fitter | 15h | 593.75 | 593.75 |
| 166 | 7.9.14 | Sh-LS2Rolling |  | 6h | 2018-08-14 20:00 | 2018-08-16 10:00 | 165 | 2018-02-06 14:35 | 2018-02-06 19:35 | 5h | 127.9d | 0d | TEAM_2Shift_Calendar-1 | Helper; Rolling Machine; Fitter | 15h | 593.75 | 593.75 |
| 167 | 7.9.15 | Sh-LS1Fitup |  | 3h | 2018-08-14 20:00 | 2018-08-16 07:00 | 165 | 2018-02-06 14:35 | 2018-02-06 17:35 | 3h | 90d | 0d | TEAM_2Shift_Calendar-1 | Helper [200%]; SMAW Welder; SMAW Welding Machine; Fitter | 15h | 712.5 | 712.5 |
| 168 | 7.9.16 | Sh-LS2Fitup |  | 3h | 2018-08-16 10:00 | 2018-08-16 13:00 | 166 | 2018-02-06 19:35 | 2018-02-07 06:35 | 3h | 127.9d |  | TEAM_2Shift_Calendar-1 | Helper [200%]; SMAW Welder; SMAW Welding Machine; Fitter | 15h | 712.5 | 712.5 |
| 169 | 7.9.17 | Sh-LS1,2 Inspection |  | 5h | 2018-08-16 07:00 | 2018-08-16 12:00 | 167 | 2018-02-06 17:35 | 2018-02-07 06:35 | 5h | 90d | 0d | TEAM_2Shift_Calendar-1 | Helper; Fitter | 10h | 593.75 | 593.75 |
| 170 | 7.9.18 | Sh-LS1WeldingArrangement |  | 2h | 2018-08-16 12:00 | 2018-08-16 14:00 | 169 | 2018-02-07 06:35 | 2018-02-07 08:35 | 2h | 90d | 0d | TEAM_2Shift_Calendar-1 | Fitter | 2h | 137.5 | 137.5 |
| 171 | 7.9.19 | Sh-LS2WeldingArrangement |  | 2h | 2018-08-16 12:00 | 2018-08-16 14:00 | 169 | 2018-02-07 06:35 | 2018-02-07 08:35 | 2h | 90d | 0d | TEAM_2Shift_Calendar-1 | Fitter | 2h | 137.5 | 137.5 |
| 172 | 7.9.20 | Sh-LS1Welding |  | 6h | 2018-08-16 14:00 | 2018-08-16 20:00 | 170 | 2018-02-07 08:35 | 2018-02-07 14:36 | 6h | 90d | 0d | TEAM_2Shift_Calendar-1 | SMAW Welder; SMAW Welding Machine; Helper [200%] | 24h | 1,012.5 | 1,012.5 |
| 173 | 7.9.21 | Sh-LS2Welding |  | 6h | 2018-08-16 14:00 | 2018-08-16 20:00 | 171 | 2018-02-07 08:35 | 2018-02-07 14:36 | 6h | 90d | 0d | TEAM_2Shift_Calendar-1 | SMAW Welder; SMAW Welding Machine; Helper [200%] | 24h | 1,012.5 | 1,012.5 |
| 174 | 7.9.22 | Sh-LS1 BackchipGrinding |  | 4h | 2018-08-16 20:00 | 2018-08-17 08:00 | 172 | 2018-02-07 14:36 | 2018-02-07 18:36 | 4h | 90d | 0d | TEAM_2Shift_Calendar-1 | Grinding Machine; Grinder | 8h | 225 | 225 |
| 175 | 7.9.23 | Sh-LS2 BackchipGrinding |  | 4h | 2018-08-16 20:00 | 2018-08-17 08:00 | 173 | 2018-02-07 14:36 | 2018-02-07 18:36 | 4h | 90d | 0d | TEAM_2Shift_Calendar-1 | Grinding Machine; Grinder | 8h | 225 | 225 |
| 176 | 7.9.24 | Sh-LS1 InsideWelding | milestone | 0d | 2018-08-17 08:00 | 2018-08-17 08:00 | 174 | 2018-02-07 18:36 | 2018-02-07 18:36 | 0d | 90d | 0d | TEAM_2Shift_Calendar-1 | SMAW Welder; SMAW Welding Machine; Helper [200%] |  |  |  |
| 177 | 7.9.25 | Sh-LS2 InsideWelding | milestone | 0d | 2018-08-17 08:00 | 2018-08-17 08:00 | 175 | 2018-02-07 18:36 | 2018-02-07 18:36 | 0d | 90d | 0d | TEAM_2Shift_Calendar-1 | SMAW Welder; SMAW Welding Machine; Helper [200%] |  |  |  |
| 178 | 7.9.26 | Sh-LS1 Inside FlushGrinding | milestone | 0d | 2018-08-17 08:00 | 2018-08-17 08:00 | 176 | 2018-02-07 18:36 | 2018-02-07 18:36 | 0d | 90d | 0d | TEAM_2Shift_Calendar-1 | Grinding Machine; Grinder |  |  |  |
| 179 | 7.9.27 | Sh-LS2 Inside FlushGrinding | milestone | 0d | 2018-08-17 08:00 | 2018-08-17 08:00 | 177 | 2018-02-07 18:36 | 2018-02-07 18:36 | 0d | 90d | 0d | TEAM_2Shift_Calendar-1 | Grinding Machine; Grinder |  |  |  |
| 180 | 7.9.28 | Sh-LS1 DPCheck |  | 2h | 2018-08-17 08:00 | 2018-08-17 10:00 | 178 | 2018-02-07 18:36 | 2018-02-07 20:36 | 2h | 90d | 0d | TEAM_2Shift_Calendar-1 | Fitter | 2h | 137.5 | 137.5 |
| 181 | 7.9.29 | Sh-LS2 DPCheck |  | 2h | 2018-08-17 08:00 | 2018-08-17 10:00 | 179 | 2018-02-07 18:36 | 2018-02-07 20:36 | 2h | 90d | 0d | TEAM_2Shift_Calendar-1 | Fitter | 2h | 137.5 | 137.5 |
| 182 | 7.9.30 | Sh-LS1 Re-rolling |  | 3h | 2018-08-17 10:00 | 2018-08-17 13:00 | 180 | 2018-02-07 20:36 | 2018-02-08 07:36 | 3h | 90d | 0d | TEAM_2Shift_Calendar-1 | Helper [200%]; Fitter | 9h | 506.25 | 506.25 |
| 183 | 7.9.31 | Sh-LS2 Re-rolling |  | 3h | 2018-08-17 10:00 | 2018-08-17 13:00 | 181 | 2018-02-07 20:36 | 2018-02-08 07:36 | 3h | 90d | 0d | TEAM_2Shift_Calendar-1 | Helper [200%]; Fitter | 9h | 506.25 | 506.25 |
| 184 | 7.9.32 | Sh-LS1 Radiography |  | 2d | 2018-08-17 13:00 | 2018-08-18 13:00 | 182 | 2018-02-08 07:36 | 2018-02-08 15:37 | 1d | 90d | 0d | TEAM_2Shift_Calendar-1 |  |  |  |  |
| 185 | 7.9.33 | Sh-LS2 Radiography |  | 2d | 2018-08-17 13:00 | 2018-08-18 13:00 | 183 | 2018-02-08 07:36 | 2018-02-08 15:37 | 1d | 90d | 0d | TEAM_2Shift_Calendar-1 |  |  |  |  |
| 186 | 7.9.34 | Sh-LS1 E.P forCir-Seam |  | 5h | 2018-08-18 13:00 | 2018-08-18 18:00 | 184 | 2018-02-08 15:37 | 2018-02-08 20:37 | 5h | 90d | 0d | TEAM_2Shift_Calendar-1 | Grinding Machine; Grinder | 10h | 281.25 | 281.25 |
| 187 | 7.9.35 | Sh-LS2 E.P forCir-seam |  | 5h | 2018-08-18 13:00 | 2018-08-18 18:00 | 185 | 2018-02-08 15:37 | 2018-02-08 20:37 | 5h | 90d | 0d | TEAM_2Shift_Calendar-1 | Grinding Machine; Grinder | 10h | 281.25 | 281.25 |
| 188 | 7.9.36 | Sh-CS1Fitup |  | 3h | 2018-08-18 18:00 | 2018-08-18 21:00 | 186, 187 | 2018-02-08 20:37 | 2018-02-09 07:37 | 3h | 90d | 0d | TEAM_2Shift_Calendar-1 | Helper [200%]; SMAW Welder; SMAW Welding Machine; Fitter | 15h | 712.5 | 712.5 |
| 189 | 7.9.37 | Sh-CS1 Inspection |  | 2.67d | 2018-08-18 21:00 | 2018-08-21 10:24 | 188 | 2018-02-09 07:37 | 2018-02-09 11:37 | 0.5d | 90d | 0d | TEAM_2Shift_Calendar-1 | QC Engineer; Fitter | 4h | 137.5 | 950 |
| 190 | 7.9.38 | Sh-CS1 Welding |  | 3.5h | 2018-08-21 10:24 | 2018-08-21 13:54 | 189 | 2018-02-09 11:37 | 2018-02-09 15:08 | 3.5h | 90d | 0d | TEAM_2Shift_Calendar-1 | SMAW Welder; SMAW Welding Machine; Helper [200%] | 24h | 1,012.5 | 1,012.5 |
| 191 | 7.9.39 | Sh-CS1 BackchipGrinding |  | 4h | 2018-08-21 13:54 | 2018-08-21 17:54 | 190 | 2018-02-09 15:08 | 2018-02-09 19:08 | 4h | 90d | 0d | TEAM_2Shift_Calendar-1 | Grinding Machine; Grinder | 8h | 225 | 225 |
| 192 | 7.9.40 | Sh-CS1 InsideWelding |  | 1d | 2018-08-21 17:54 | 2018-08-22 09:54 | 191 | 2018-02-09 19:08 | 2018-02-09 19:08 | 0d | 90d | 0d | TEAM_2Shift_Calendar-1 | SMAW Welder; SMAW Welding Machine; Helper [200%] | 32h | 1,350 |  |
| 193 | 7.9.41 | Sh-CS1 FlushGrinding |  | 1d | 2018-08-22 09:54 | 2018-08-22 17:54 | 192 | 2018-02-09 19:08 | 2018-02-09 19:08 | 0d | 90d | 0d | TEAM_2Shift_Calendar-1 | Grinding Machine; Grinder | 16h | 450 |  |
| 194 | 7.9.42 | Sh-CS1 DPCheck |  | 2h | 2018-08-22 17:54 | 2018-08-22 19:54 | 193 | 2018-02-09 19:08 | 2018-02-09 21:08 | 2h | 90d | 0d | TEAM_2Shift_Calendar-1 | Fitter | 2h | 137.5 | 137.5 |
| 195 | 7.9.43 | Sh-CS1 Radiography |  | 1.56d | 2018-08-22 19:54 | 2018-08-23 16:24 | 194 | 2018-02-09 21:08 | 2018-02-12 13:08 | 1d | 90d | 0d | TEAM_2Shift_Calendar-1 |  |  |  |  |
| 196 | 7.9.44 | Sh OrienationMkg |  | 4h | 2018-08-23 16:24 | 2018-08-23 20:24 | 195 | 2018-02-14 15:11 | 2018-02-14 19:11 | 4h | 90d | 0d | TEAM_2Shift_Calendar-1 | Helper; Fitter | 8h | 475 | 475 |
| 197 | 7.9.45 | Sh Extra Length Cutting |  | 4h | 2018-08-23 20:24 | 2018-08-24 08:24 | 196 | 2018-02-14 19:11 | 2018-02-15 07:11 | 4h | 90d | 0d | TEAM_2Shift_Calendar-1 | OAGM; Helper; Gas Cutter | 12h | 475 | 475 |
| 198 | 7.9.46 | ShE.P of Cir-SeamSide |  | 4h | 2018-08-24 08:24 | 2018-08-24 12:24 | 197 | 2018-02-15 07:11 | 2018-02-15 11:11 | 4h | 90d | 0d | TEAM_2Shift_Calendar-1 | Grinding Machine; Grinder | 10h | 281.25 | 281.25 |
| 199 | 7.9.47 | ShNozzleOpeningforS1&S2 |  | 2h | 2018-08-24 12:24 | 2018-08-24 14:24 | 198 | 2018-02-19 16:15 | 2018-02-19 18:15 | 2h | 90d | 0d | TEAM_2Shift_Calendar-1 | Gas Cutter; OAGM; Helper | 6h | 237.5 | 237.5 |
| 200 | 7.9.48 | Sh Nozzle Opening E.P |  | 3h | 2018-08-24 14:24 | 2018-08-24 17:24 | 199 | 2018-02-19 18:15 | 2018-02-19 21:15 | 3h | 90d | 0d | TEAM_2Shift_Calendar-1 | Grinding Machine; Grinder | 6h | 168.75 | 168.75 |
| 201 | 7.9.49 | Sh Nozzle Rfpadfitup S1&S2 |  | 1d | 2018-08-24 17:24 | 2018-08-27 09:24 | 200, 146 | 2018-02-19 21:15 | 2018-02-19 21:15 | 0h | 90d | 0d | TEAM_2Shift_Calendar-1 | Helper [200%]; SMAW Welder; SMAW Welding Machine; Fitter | 6h | 285 |  |
| 202 | 7.9.50 | Sh Nozzle RF padfitup INSPN |  | 3h | 2018-08-27 09:24 | 2018-08-27 12:24 | 201 | 2018-02-19 21:15 | 2018-02-20 08:15 | 3h | 90d | 0d | TEAM_2Shift_Calendar-1 | Fitter [200%] | 6h | 412.5 | 412.5 |
| 203 | 7.9.51 | Sh Nozzle RFpad Welding S1&S2 |  | 2h | 2018-08-27 12:24 | 2018-08-27 14:24 | 202 | 2018-02-20 08:15 | 2018-02-20 10:15 | 2h | 90d | 0d | TEAM_2Shift_Calendar-1 | SMAW Welder; SMAW Welding Machine; Helper [200%] | 8h | 337.5 | 337.5 |
| 204 | 7.9.52 | Sh Nozzle RFpad Air leaktest |  | 5h | 2018-08-27 14:24 | 2018-08-27 19:24 | 203 | 2018-02-20 10:15 | 2018-02-20 15:16 | 5h | 90d | 0d | TEAM_2Shift_Calendar-1 | Helper; Fitter | 10h | 593.75 | 593.75 |
| 205 | 7.9.53 | Sh Nozzle (S1,S2) Fitup Inspection |  | 0.5d | 2018-08-27 19:24 | 2018-08-28 07:24 | 204 | 2018-02-20 15:16 | 2018-02-20 19:16 | 0.5d | 90d | 0d | TEAM_2Shift_Calendar-1 | Helper [200%]; SMAW Welder; SMAW Welding Machine; Pipe (Cost) [0.1%]; Fitter | 20h | 950 | 950 |
| 206 | 7.9.54 | Sh Nozzle Welding Arragement |  | 3h | 2018-08-28 07:24 | 2018-08-28 10:24 | 205 | 2018-02-20 19:16 | 2018-02-21 06:16 | 3h | 90d | 0d | TEAM_2Shift_Calendar-1 | Helper; Fitter | 6h | 356.25 | 356.25 |
| 207 | 7.9.55 | Sh Nozzle Welding |  | 4h | 2018-08-28 10:24 | 2018-08-28 14:24 | 206 | 2018-02-21 06:16 | 2018-02-21 10:16 | 4h | 90d | 0d | TEAM_2Shift_Calendar-1 | Helper; SMAW Welder; SMAW Welding Machine; Fitter | 16h | 750 | 750 |
| 208 | 7.9.56 | Sh Nozzle Inside Grinding |  | 3h | 2018-08-28 14:24 | 2018-08-28 17:24 | 207 | 2018-02-21 10:16 | 2018-02-21 13:16 | 3h | 90d | 0d | TEAM_2Shift_Calendar-1 | Grinding Machine; Grinder | 6h | 168.75 | 168.75 |
| 209 | 7.9.57 | Sh Nozzle Inside Welding |  | 4h | 2018-08-28 17:24 | 2018-08-28 21:24 | 208 | 2018-02-21 13:16 | 2018-02-21 17:17 | 4h | 90d | 0d | TEAM_2Shift_Calendar-1 | SMAW Welder; SMAW Welding Machine; Fitter; Helper | 16h | 750 | 750 |
| 210 | 7.9.58 | Sh Nozzle Inside DPcheck |  | 1h | 2018-08-28 21:24 | 2018-08-29 06:24 | 209 | 2018-02-21 17:17 | 2018-02-21 18:17 | 1h | 90d | 0d | TEAM_2Shift_Calendar-1 | Fitter | 1h | 68.75 | 68.75 |
| 211 | 7.9.59 | ShNozzleRadiography |  | 1.53d | 2018-08-29 06:24 | 2018-08-29 18:37 | 210 | 2018-02-22 11:47 | 2018-02-22 19:48 | 1d | 90d | 0d | TEAM_2Shift_Calendar-1 | SC (Work) | 8h |  |  |
| 212 | 7.9.60 | Sh+SaddlePadFitup |  | 9h | 2018-08-29 18:37 | 2018-08-30 11:37 | 211 | 2018-02-22 19:48 | 2018-02-23 12:48 | 9h | 90d | 0d | TEAM_2Shift_Calendar-1 | SMAW Welder; SMAW Welding Machine; Fitter; Plate (Cost) [0.1%]; Helper | 27h | 1,265.62 | 1,265.62 |
| 213 | 7.9.61 | Sh+SaddlePadWeldingArrangement |  | 3h | 2018-08-30 11:37 | 2018-08-30 14:37 | 212 | 2018-02-23 12:48 | 2018-02-23 15:49 | 3h | 90d | 0d | TEAM_2Shift_Calendar-1 | Helper; Fitter | 12h | 712.5 | 712.5 |
| 214 | 7.9.62 | Sh+SaddlePadWelding |  | 12h | 2018-08-30 14:37 | 2018-08-31 10:37 | 213 | 2018-02-23 15:49 | 2018-02-26 11:49 | 12h | 90d | 0d | TEAM_2Shift_Calendar-1 | SMAW Welder; SMAW Welding Machine; Helper | 36h | 1,425 | 1,425 |
| 215 | 7.9.63 | Sh+LiftingLugPadFitup | milestone | 0d | 2018-08-31 10:37 | 2018-08-31 10:37 | 133, 214 | 2018-02-26 11:49 | 2018-02-26 11:49 | 0d | 90d | 0d | TEAM_2Shift_Calendar-1 | SMAW Welder; SMAW Welding Machine; Fitter; Plate (Cost); Helper |  |  |  |
| 216 | 7.9.64 | Sh+LiftingLugPadWeldingArrangement | milestone | 0d | 2018-08-31 10:37 | 2018-08-31 10:37 | 215 | 2018-02-26 11:49 | 2018-02-26 11:49 | 0d | 90d | 0d | TEAM_2Shift_Calendar-1 | Helper; Fitter |  |  |  |
| 217 | 7.9.65 | Sh+LiftingLugPadWelding | milestone | 0d | 2018-08-31 10:37 | 2018-08-31 10:37 | 216 | 2018-02-26 11:49 | 2018-02-26 11:49 | 0d | 90d | 0d | TEAM_2Shift_Calendar-1 | SMAW Welder; SMAW Welding Machine; Helper |  |  |  |
| 218 | 7.9.66 | Sh+LiftingLugFitup | milestone | 0d | 2018-08-31 10:37 | 2018-08-31 10:37 | 217 | 2018-02-26 11:49 | 2018-02-26 11:49 | 0d | 90d | 0d | TEAM_2Shift_Calendar-1 | Fitter; SMAW Welder; SMAW Welding Machine; Helper |  |  |  |
| 219 | 7.9.67 | Sh+LiftingLugWelding | milestone | 0d | 2018-08-31 10:37 | 2018-08-31 10:37 | 218 | 2018-02-26 11:49 | 2018-02-26 11:49 | 0d | 90d | 0d | TEAM_2Shift_Calendar-1 | SMAW Welder; SMAW Welding Machine; Helper |  |  |  |
| 220 | 7.9.68 | Sh+InsulationCleatFitup |  | 3h | 2018-08-31 10:37 | 2018-08-31 13:37 | 219 | 2018-02-26 11:49 | 2018-02-26 14:50 | 3h | 90d | 0d | TEAM_2Shift_Calendar-1 | Fitter; SMAW Welder; SMAW Welding Machine; Plate (Cost) [0.1%]; Helper | 12h | 562.5 | 562.5 |
| 221 | 7.9.69 | Sh+InsulationCleatwelding |  | 3h | 2018-08-31 13:37 | 2018-08-31 16:37 | 220 | 2018-02-26 14:50 | 2018-02-26 17:50 | 3h | 90d | 0d | TEAM_2Shift_Calendar-1 | SMAW Welder; SMAW Welding Machine; Helper | 9h | 356.25 | 356.25 |

Notes:
- 172: 1.64kg/m
- 173: 1.64kg/m
- 199: S1,S2-8"NB SCH 80-2NOS
- 212: 2Nos
- 220: 4Nos

| ID | WBS | Task | Type | Duration | Start | Finish | Predecessors | Baseline start | Baseline finish | Baseline duration | Total slack | Free slack | Calendar | Resources | Work | Cost | Baseline cost |
| --- | --- | --- | --- | --- | --- | --- | --- | --- | --- | --- | --- | --- | --- | --- | --- | --- | --- |
| 222 | 7.9.70 | Sh Final Dress Up |  | 6h | 2018-08-31 16:37 | 2018-09-01 06:37 | 221 | 2018-02-26 17:50 | 2018-02-27 07:50 | 6h | 90d | 0d | TEAM_2Shift_Calendar-1 | Grinding Machine; Grinder | 12h | 337.5 | 337.5 |
| 223 | 7.9.71 | Sh Dimensional Inspection |  | 3h | 2018-09-01 06:37 | 2018-09-01 09:37 | 222 | 2018-02-27 07:50 | 2018-02-27 10:50 | 3h | 90d | 0d | TEAM_2Shift_Calendar-1 | Fitter [200%] | 12h | 825 | 825 |
| 224 | 7.9.72 | Sh Clearance by TPI |  | 1.04d | 2018-09-01 09:37 | 2018-09-01 17:58 | 223 | 2018-02-27 10:50 | 2018-02-27 18:51 | 1d | 90d | 0d | TEAM_2Shift_Calendar-1 | QC Engineer | 5h |  |  |
| 225 | 7.9.73 | Sh PWHT |  | 8d | 2018-09-01 17:58 | 2018-09-06 17:58 | 224 | 2018-02-27 18:51 | 2018-03-01 18:53 | 4d | 90.65d | 0d | TEAM_2Shift_Calendar-1 |  |  |  |  |
| 226 | 7.9.74 | Sh Receiptafter PWHT |  | 5h | 2018-09-06 17:58 | 2018-09-07 06:58 | 225 | 2018-03-01 18:53 | 2018-03-02 07:53 | 5h | 90.65d | 0d | TEAM_2Shift_Calendar-1 | Helper [200%]; Crane [50%]; Store | 12h | 342.86 | 480 |
| 227 | 7.9.75 | Sh Surface Cleaning |  | 1d | 2018-09-07 06:58 | 2018-09-07 14:58 | 226 | 2018-03-02 07:53 | 2018-03-02 15:54 | 1d | 90.65d | 0d | TEAM_2Shift_Calendar-1 | Helper | 16h | 800 | 800 |
| 228 | 7.9.76 | Sh NDE by TPI |  | 1d | 2018-09-07 14:58 | 2018-09-10 06:58 | 227 | 2018-03-02 15:54 | 2018-03-03 07:54 | 1d | 90.65d |  | TEAM_2Shift_Calendar-1 | QC Engineer | 5h |  |  |
| 229 | 7.10 | **Channel Fabrication(LHS&RHS)** |  | 51.27d | 2018-08-08 12:30 | 2018-09-12 06:38 |  | 2018-01-31 17:30 | 2018-03-02 12:11 | 47.29d | 52.11d | 0d | TEAM_2Shift_Calendar-1 |  | 672.17h | 27,612.51 | 21,825 |
| 230 | 7.10.1 | Ch Pl Marking |  | 4.5h | 2018-08-08 12:30 | 2018-08-08 17:00 | 46 | 2018-02-01 14:01 | 2018-02-01 18:31 | 4.5h | 99.88d | 0d | TEAM_2Shift_Calendar-1 | Helper; Plate (Cost) [0.1%]; Fitter | 9h | 534.38 | 534.38 |
| 231 | 7.10.2 | Ch Pl Stamping |  | 10h | 2018-08-08 17:00 | 2018-08-09 11:00 | 230 | 2018-02-01 18:31 | 2018-02-02 08:31 | 6h | 99.88d | 0d | TEAM_2Shift_Calendar-1 | QC Engineer | 3h |  |  |
| 232 | 7.10.3 | Ch-LSCutting |  | 2.5h | 2018-08-09 19:00 | 2018-08-09 21:30 | 231FS+1d | 2018-02-02 08:31 | 2018-02-02 11:01 | 2.5h | 99.88d | 0d | TEAM_2Shift_Calendar-1 | OAGM; Helper; Gas Cutter | 7.5h | 296.88 | 296.88 |
| 233 | 7.10.4 | Ch-LSE.P |  | 3h | 2018-08-09 21:30 | 2018-08-10 08:30 | 232 | 2018-02-02 11:01 | 2018-02-02 14:02 | 3h | 99.88d |  | TEAM_2Shift_Calendar-1 | Grinding Machine; Grinder | 6h | 168.75 | 168.75 |
| 234 | 7.10.5 | Ch-clad Plate Marking |  | 0.5d | 2018-08-08 12:30 | 2018-08-08 16:30 | 47 |  |  |  | 81.46d | 0d | TEAM_2Shift_Calendar-1 | Helper; Plate (Cost) [0.1%]; Fitter | 8h | 475 |  |
| 235 | 7.10.6 | Ch-clad Plate Cutting |  | 1d | 2018-08-08 16:30 | 2018-08-09 08:30 | 234 |  |  |  | 81.46d | 0d | TEAM_2Shift_Calendar-1 | Gas Cutter; Helper; Cutting Machine | 16h | 633.33 |  |
| 236 | 7.10.7 | Ch-clad Plate E.P |  | 0.5d | 2018-08-09 08:30 | 2018-08-09 12:30 | 235 |  |  |  | 81.46d | 0d | TEAM_2Shift_Calendar-1 | Grinding Machine; Grinder | 8h | 225 |  |
| 237 | 7.10.8 | Ch Pl (LHS & RHS) Send for cladding |  | 3h | 2018-08-09 12:30 | 2018-08-09 15:30 | 236 |  |  |  | 81.46d | 0d | TEAM_2Shift_Calendar-1 | Helper; Store; Crane | 9h | 150 |  |
| 238 | 7.10.9 | Cladded plate Receipt |  | 3h | 2018-08-17 15:30 | 2018-08-17 18:30 | 237FS+10d |  |  |  | 81.46d | 0d | TEAM_2Shift_Calendar-1 | Helper; Store; Plate (Cost) [0.1%]; Crane | 9h | 150 |  |
| 239 | 7.10.10 | Inward Inspection |  | 0.83d | 2018-08-17 18:30 | 2018-08-18 11:50 | 238 |  |  |  | 81.46d | 0d | TEAM_2Shift_Calendar-1 | QC Engineer; Helper | 6.67h | 166.67 |  |
| 240 | 7.10.11 | Ch-LS Pre-Bending |  | 5h | 2018-08-18 11:50 | 2018-08-18 16:50 | 239 | 2018-02-02 14:02 | 2018-02-02 18:02 | 4h | 81.58d | 0d | TEAM_2Shift_Calendar-1 | Helper; Plate Bending Machine; Fitter [200%] | 16h | 750 | 750 |
| 241 | 7.10.12 | Ch-LS Pre-Bend Cut-off |  | 2h | 2018-08-18 16:50 | 2018-08-18 18:50 | 240 | 2018-02-02 18:02 | 2018-02-02 20:02 | 2h | 81.58d | 0d | TEAM_2Shift_Calendar-1 | OAGM; Helper; Gas Cutter | 6h | 237.5 | 237.5 |
| 242 | 7.10.13 | Ch-LS E.P |  | 2h | 2018-08-18 18:50 | 2018-08-18 20:50 | 241 | 2018-02-02 20:02 | 2018-02-03 06:02 | 2h | 81.58d | 0d | TEAM_2Shift_Calendar-1 | Grinding Machine; Grinder | 4h | 112.5 | 112.5 |
| 243 | 7.10.14 | Ch-LS Rolling |  | 6.5h | 2018-08-18 20:50 | 2018-08-20 11:20 | 242 | 2018-02-03 06:02 | 2018-02-03 09:02 | 3h | 81.58d | 0d | TEAM_2Shift_Calendar-1 | Helper; Rolling Machine; Fitter | 9h | 356.25 | 356.25 |
| 244 | 7.10.15 | Ch-LS Fitup |  | 5h | 2018-08-20 11:20 | 2018-08-20 16:20 | 243 | 2018-02-03 09:02 | 2018-02-03 14:03 | 5h | 81.58d | 0d | TEAM_2Shift_Calendar-1 | SMAW Welder; SMAW Welding Machine; Fitter; Helper | 20h | 937.5 | 937.5 |
| 245 | 7.10.16 | Ch-LS FitupInspection |  | 0.5d | 2018-08-20 16:20 | 2018-08-20 20:20 | 244 | 2018-02-03 14:03 | 2018-02-03 18:03 | 0.5d | 81.58d | 0d | TEAM_2Shift_Calendar-1 | Helper; Fitter | 8h | 475 | 475 |
| 246 | 7.10.17 | Ch-LS WeldingArrangement |  | 3h | 2018-08-20 20:20 | 2018-08-21 07:20 | 245 | 2018-02-03 18:03 | 2018-02-03 21:03 | 3h | 81.58d | 0d | TEAM_2Shift_Calendar-1 | Helper; Fitter | 6h | 356.25 | 356.25 |
| 247 | 7.10.18 | Ch-LS Welding |  | 2h | 2018-08-21 07:20 | 2018-08-21 09:20 | 246 | 2018-02-03 21:03 | 2018-02-05 07:03 | 2h | 81.58d | 0d | TEAM_2Shift_Calendar-1 | SMAW Welder; SMAW Welding Machine; Helper | 6h | 237.5 | 237.5 |
| 248 | 7.10.19 | Ch-LS BackchipGrinding |  | 2h | 2018-08-21 09:20 | 2018-08-21 11:20 | 247 | 2018-02-05 07:03 | 2018-02-05 09:03 | 2h | 81.58d | 0d | TEAM_2Shift_Calendar-1 | Grinding Machine; Grinder | 4h | 112.5 | 112.5 |
| 249 | 7.10.20 | Ch-LS InsideWelding | milestone | 0d | 2018-08-21 11:20 | 2018-08-21 11:20 | 248 | 2018-02-05 09:03 | 2018-02-05 09:03 | 0d | 81.58d | 0d | TEAM_2Shift_Calendar-1 | SMAW Welder; SMAW Welding Machine; Helper |  |  |  |
| 250 | 7.10.21 | Ch-LS FlushGrinding | milestone | 0d | 2018-08-21 11:20 | 2018-08-21 11:20 | 249 | 2018-02-05 09:03 | 2018-02-05 09:03 | 0d | 81.58d | 0d | TEAM_2Shift_Calendar-1 | Grinding Machine; Grinder |  |  |  |
| 251 | 7.10.22 | Ch-LS DPCheck |  | 1h | 2018-08-21 11:20 | 2018-08-21 12:20 | 250 | 2018-02-05 09:03 | 2018-02-05 10:03 | 1h | 81.58d | 0d | TEAM_2Shift_Calendar-1 | Fitter | 1h | 68.75 | 68.75 |
| 252 | 7.10.23 | Ch-LS Re-rolling |  | 3.5h | 2018-08-21 12:20 | 2018-08-21 15:50 | 251 | 2018-02-05 10:03 | 2018-02-05 13:33 | 3.5h | 81.58d | 0d | TEAM_2Shift_Calendar-1 | Helper [200%]; Fitter [200%] | 14h | 831.25 | 831.25 |
| 253 | 7.10.24 | Ch Radiography |  | 2d | 2018-08-21 15:50 | 2018-08-22 15:50 | 252 | 2018-02-05 13:33 | 2018-02-06 13:34 | 2d | 81.58d | 0d | TEAM_2Shift_Calendar-1 | SC (Work) | 8h |  |  |
| 254 | 7.10.25 | Ch OrinationMkg |  | 4h | 2018-08-22 15:50 | 2018-08-22 19:50 | 253 | 2018-02-06 13:34 | 2018-02-06 17:35 | 4h | 81.58d | 0d | TEAM_2Shift_Calendar-1 | Helper; Fitter | 8h | 475 | 475 |
| 255 | 7.10.26 | Ch ExtraLengthCutting |  | 3h | 2018-08-22 19:50 | 2018-08-23 06:50 | 254 | 2018-02-06 17:35 | 2018-02-06 20:35 | 3h | 81.58d | 0d | TEAM_2Shift_Calendar-1 | OAGM; Helper; Gas Cutter | 9h | 356.25 | 356.25 |
| 256 | 7.10.27 | ChE.PofCirSeamSide |  | 4h | 2018-08-23 06:50 | 2018-08-23 10:50 | 255 | 2018-02-06 20:35 | 2018-02-07 08:35 | 4h | 81.58d |  | TEAM_2Shift_Calendar-1 | Grinding Machine; Grinder | 8h | 225 | 225 |
| 257 | 7.10.28 | ch-front flange weld overlay |  | 6h | 2018-08-20 12:30 | 2018-08-20 18:30 | 53 | 2018-02-14 15:30 | 2018-02-14 21:30 | 6h | 52d | 0d | TEAM_2Shift_Calendar-1 | SMAW Welder; SMAW Welding Machine; Forging Non-Std (Cost) [0.1%]; Helper | 18h | 712.5 | 712.5 |
| 258 | 7.10.29 | pre-machinng |  | 2h | 2018-08-20 18:30 | 2018-08-20 20:30 | 257 | 2018-02-14 21:30 | 2018-02-15 07:30 | 2h | 52d | 0d | TEAM_2Shift_Calendar-1 | Grinding Machine; Grinder | 4h | 112.5 | 112.5 |
| 259 | 7.10.30 | Final maching |  | 3h | 2018-08-20 20:30 | 2018-08-21 07:30 | 258 | 2018-02-15 12:30 | 2018-02-15 15:31 | 3h | 52d | 0d | TEAM_2Shift_Calendar-1 | Grinding Machine; Grinder | 6h | 168.75 | 168.75 |
| 260 | 7.10.31 | ch-frontFlangeFitup(LHS) |  | 5h | 2018-08-21 07:30 | 2018-08-21 12:30 | 259 | 2018-02-15 15:31 | 2018-02-15 20:31 | 5h | 52d | 0d | TEAM_2Shift_Calendar-1 | SMAW Welder; SMAW Welding Machine; Fitter; Forging Non-Std (Cost) [0.1%]; Helper | 20h | 937.5 | 937.5 |
| 261 | 7.10.32 | ch-frontFlangeInspection(LHS) |  | 0.5d | 2018-08-21 12:30 | 2018-08-21 16:30 | 260 | 2018-02-15 20:31 | 2018-02-16 08:31 | 0.5d | 52d | 0d | TEAM_2Shift_Calendar-1 | Helper; Fitter | 8h | 475 | 475 |
| 262 | 7.10.33 | ch-frontFlangeWelding(LHS) |  | 5h | 2018-08-21 16:30 | 2018-08-21 21:30 | 261 | 2018-02-16 08:31 | 2018-02-16 13:31 | 5h | 52d | 0d | TEAM_2Shift_Calendar-1 | SMAW Welder; SMAW Welding Machine; Helper | 15h | 593.75 | 593.75 |
| 263 | 7.10.34 | ch-frontFlangeBackchip(LHS) |  | 4h | 2018-08-21 21:30 | 2018-08-22 09:30 | 262 | 2018-02-16 13:31 | 2018-02-16 17:32 | 4h | 52d | 0d | TEAM_2Shift_Calendar-1 | Grinding Machine; Grinder | 8h | 225 | 225 |
| 264 | 7.10.35 | ch-frontFlangeInsideWelding(LHS) | milestone | 0d | 2018-08-22 09:30 | 2018-08-22 09:30 | 263 | 2018-02-16 17:32 | 2018-02-16 17:32 | 0d | 52d | 0d | TEAM_2Shift_Calendar-1 | SMAW Welder; SMAW Welding Machine; Helper |  |  |  |
| 265 | 7.10.36 | ch-frontFlangeFlushGrinding | milestone | 0d | 2018-08-22 09:30 | 2018-08-22 09:30 | 264 | 2018-02-16 17:32 | 2018-02-16 17:32 | 0d | 52d | 0d | TEAM_2Shift_Calendar-1 | Grinding Machine; Grinder |  |  |  |
| 266 | 7.10.37 | ch-frontFlangeDPCheck |  | 1h | 2018-08-22 09:30 | 2018-08-22 10:30 | 265 | 2018-02-16 17:32 | 2018-02-16 18:32 | 1h | 52d | 0d | TEAM_2Shift_Calendar-1 | Fitter | 1h | 68.75 | 68.75 |
| 267 | 7.10.38 | ch-frontFlangeRadiography |  | 2d | 2018-08-22 10:30 | 2018-08-23 10:30 | 266 | 2018-02-16 18:32 | 2018-02-17 10:32 | 1d | 52d | 0d | TEAM_2Shift_Calendar-1 |  |  |  |  |
| 268 | 7.10.39 | ch-Rear flange weld overlay(RHS) |  | 3d | 2018-08-23 10:30 | 2018-08-24 18:30 | 53, 267 |  |  |  | 52d | 0d | TEAM_2Shift_Calendar-1 | SMAW Welder; SMAW Welding Machine; Forging Non-Std (Cost) [0.1%]; Helper | 72h | 2,850 |  |
| 269 | 7.10.40 | pre-machining |  | 1d | 2018-08-24 18:30 | 2018-08-27 10:30 | 268 |  |  |  | 52d | 0d | TEAM_2Shift_Calendar-1 | Helper; Fitter | 16h | 950 |  |
| 270 | 7.10.41 | Final machining |  | 1d | 2018-08-27 10:30 | 2018-08-27 18:30 | 269 |  |  |  | 52d | 0d | TEAM_2Shift_Calendar-1 | Helper; Fitter | 16h | 950 |  |
| 271 | 7.10.42 | ch-RearFlangeFitup(RHS) |  | 5h | 2018-08-27 18:30 | 2018-08-28 07:30 | 270 | 2018-02-17 10:32 | 2018-02-17 15:33 | 5h | 52d | 0d | TEAM_2Shift_Calendar-1 | SMAW Welder; SMAW Welding Machine; Fitter; Forging Non-Std (Cost) [0.1%]; Helper | 20h | 937.5 | 937.5 |
| 272 | 7.10.43 | ch-RearFlangeInspection(RHS) |  | 0.5d | 2018-08-28 07:30 | 2018-08-28 11:30 | 271 | 2018-02-17 15:33 | 2018-02-17 19:33 | 0.5d | 52d | 0d | TEAM_2Shift_Calendar-1 | Helper; Fitter | 8h | 475 | 475 |
| 273 | 7.10.44 | ch-RearFlangeWelding(RHS) |  | 5h | 2018-08-28 11:30 | 2018-08-28 16:30 | 272 | 2018-02-17 19:33 | 2018-02-19 08:33 | 5h | 52d | 0d | TEAM_2Shift_Calendar-1 | SMAW Welder; SMAW Welding Machine; Helper | 15h | 593.75 | 593.75 |
| 274 | 7.10.45 | ch-RearFlangeBackchip |  | 4h | 2018-08-28 16:30 | 2018-08-28 20:30 | 273 | 2018-02-19 08:33 | 2018-02-19 12:33 | 4h | 52d | 0d | TEAM_2Shift_Calendar-1 | Grinding Machine; Grinder | 8h | 225 | 225 |
| 275 | 7.10.46 | ch-RearFlangeInsideWelding |  | 1d | 2018-08-28 20:30 | 2018-08-29 12:30 | 274 | 2018-02-19 12:33 | 2018-02-19 12:33 | 0d | 52d | 0d | TEAM_2Shift_Calendar-1 | SMAW Welder; SMAW Welding Machine; Helper | 24h | 950 |  |
| 276 | 7.10.47 | ch-RearFlangeFlushGrinding |  | 1d | 2018-08-29 12:30 | 2018-08-29 20:30 | 275 | 2018-02-19 12:33 | 2018-02-19 12:33 | 0d | 52d | 0d | TEAM_2Shift_Calendar-1 | Grinding Machine; Grinder | 4h | 112.5 |  |
| 277 | 7.10.48 | ch-RearFlangeDPCheck |  | 3h | 2018-08-29 20:30 | 2018-08-30 07:30 | 276 | 2018-02-19 12:33 | 2018-02-19 15:34 | 3h | 52d | 0d | TEAM_2Shift_Calendar-1 | Fitter | 3h | 206.25 | 206.25 |
| 278 | 7.10.49 | ch-RearFlangeRadiography |  | 1d | 2018-08-30 07:30 | 2018-08-30 15:30 | 277 | 2018-02-19 15:34 | 2018-02-20 15:35 | 2d | 71d |  | TEAM_2Shift_Calendar-1 |  |  |  |  |
| 279 | 7.10.50 | ChNozzleOpening-T1&T2 |  | 3h | 2018-08-30 07:30 | 2018-08-30 10:30 | 277 | 2018-02-19 15:34 | 2018-02-19 18:34 | 3h | 52d | 0d | TEAM_2Shift_Calendar-1 | OAGM; Helper; Gas Cutter | 9h | 356.25 | 356.25 |
| 280 | 7.10.51 | Ch Nozzle Opening E.P |  | 6h | 2018-08-30 10:30 | 2018-08-30 16:30 | 279 | 2018-02-19 18:34 | 2018-02-20 08:34 | 6h | 52d | 0d | TEAM_2Shift_Calendar-1 | Grinding Machine; Grinder | 12h | 337.5 | 337.5 |
| 281 | 7.10.52 | Ch Nozzle Fitup-T1&T2 |  | 5h | 2018-08-30 16:30 | 2018-08-30 21:30 | 56, 280 | 2018-02-20 08:34 | 2018-02-20 13:34 | 5h | 52d | 0d | TEAM_2Shift_Calendar-1 | SMAW Welder; SMAW Welding Machine; Fitter; Pipe (Cost) [0.1%]; Helper | 20h | 937.5 | 937.5 |
| 282 | 7.10.53 | Ch Nozzle Fitup Inspection |  | 3h | 2018-08-30 21:30 | 2018-08-31 08:30 | 281 | 2018-02-20 13:34 | 2018-02-20 16:35 | 3h | 52d | 0d | TEAM_2Shift_Calendar-1 | Helper; Fitter | 6h | 356.25 | 356.25 |
| 283 | 7.10.54 | Ch Nozzle Welding Arragement |  | 2h | 2018-08-31 08:30 | 2018-08-31 10:30 | 282 | 2018-02-20 16:35 | 2018-02-20 18:35 | 2h | 52d | 0d | TEAM_2Shift_Calendar-1 | Helper; Fitter | 4h | 237.5 | 237.5 |
| 284 | 7.10.55 | Ch Nozzle Welding |  | 6h | 2018-08-31 10:30 | 2018-08-31 16:30 | 283 | 2018-02-20 18:35 | 2018-02-21 08:35 | 6h | 52d | 0d | TEAM_2Shift_Calendar-1 | SMAW Welder; SMAW Welding Machine; Helper | 18h | 712.5 | 712.5 |
| 285 | 7.10.56 | Ch Nozzle Inside Grinding |  | 4h | 2018-08-31 16:30 | 2018-08-31 20:30 | 284 | 2018-02-21 08:35 | 2018-02-21 12:35 | 4h | 52d | 0d | TEAM_2Shift_Calendar-1 | Grinding Machine; Grinder | 8h | 225 | 225 |
| 286 | 7.10.57 | Ch Nozzle Inside Welding |  | 3h | 2018-08-31 20:30 | 2018-09-01 07:30 | 285 | 2018-02-21 12:35 | 2018-02-21 15:36 | 3h | 52d | 0d | TEAM_2Shift_Calendar-1 | SMAW Welder; SMAW Welding Machine; Helper | 9h | 356.25 | 356.25 |
| 287 | 7.10.58 | Ch Nozzle Inside flushGrinding |  | 2h | 2018-09-01 07:30 | 2018-09-01 09:30 | 286 | 2018-02-21 15:36 | 2018-02-21 17:36 | 2h | 52d | 0d | TEAM_2Shift_Calendar-1 | Grinding Machine; Grinder | 4h | 112.5 | 112.5 |
| 288 | 7.10.59 | Dpcheck |  | 1h | 2018-09-01 09:30 | 2018-09-01 10:30 | 287 | 2018-02-21 17:36 | 2018-02-21 18:36 | 1h | 52d | 0d | TEAM_2Shift_Calendar-1 | Fitter | 1h | 68.75 | 68.75 |
| 289 | 7.10.60 | Ch Nozzle Radiography |  | 2d | 2018-09-01 10:30 | 2018-09-03 10:30 | 288 | 2018-02-22 13:36 | 2018-02-22 21:37 | 1d | 52d | 0d | TEAM_2Shift_Calendar-1 |  |  |  |  |
| 290 | 7.10.61 | Ch LiftingLugPad Fitup |  | 3h | 2018-09-03 10:30 | 2018-09-03 13:30 | 289, 145 | 2018-02-22 21:37 | 2018-02-23 08:37 | 3h | 52d | 0d | TEAM_2Shift_Calendar-1 | Helper; SMAW Welder; SMAW Welding Machine; Plate (Cost) [0.1%]; Fitter | 12h | 562.5 | 562.5 |
| 291 | 7.10.62 | Ch Lifting LugPadWeld Arrangement |  | 1h | 2018-09-03 13:30 | 2018-09-03 14:30 | 290 | 2018-02-23 08:37 | 2018-02-23 09:37 | 1h | 52d | 0d | TEAM_2Shift_Calendar-1 | Helper; Fitter | 2h | 118.75 | 118.75 |

Notes:
- 257: SA 266 Gr.2+Inconel 600 W.O
- 279: T1,T2(SRN)-8''
- 290: 2Nos

| ID | WBS | Task | Duration | Start | Finish | Predecessors | Baseline start | Baseline finish | Baseline duration | Total slack | Free slack | Calendar | Resources | Work | Cost | Baseline cost |
| --- | --- | --- | --- | --- | --- | --- | --- | --- | --- | --- | --- | --- | --- | --- | --- | --- |
| 292 | 7.10.63 | Ch Lifting LugPad Welding | 3h | 2018-09-03 14:30 | 2018-09-03 17:30 | 291 | 2018-02-23 09:37 | 2018-02-23 12:37 | 3h | 52d | 0d | TEAM_2Shift_Calendar-1 | SMAW Welding Machine; Helper | 6h | 150 | 150 |
| 293 | 7.10.64 | Ch LiftingLug Fitup | 3h | 2018-09-03 17:30 | 2018-09-03 20:30 | 292 | 2018-02-23 12:37 | 2018-02-23 15:38 | 3h | 52d | 0d | TEAM_2Shift_Calendar-1 | Helper; SMAW Welder; SMAW Welding Machine; Fitter | 12h | 562.5 | 562.5 |
| 294 | 7.10.65 | Ch LiftingLug Welding | 3h | 2018-09-03 20:30 | 2018-09-04 07:30 | 293 | 2018-02-23 15:38 | 2018-02-23 18:38 | 3h | 52d | 0d | TEAM_2Shift_Calendar-1 | SMAW Welder; SMAW Welding Machine; Helper | 9h | 356.25 | 356.25 |
| 295 | 7.10.66 | Ch Insulationring Marking | 2h | 2018-09-04 07:30 | 2018-09-04 09:30 | 294, 151 | 2018-02-23 18:38 | 2018-02-23 20:38 | 2h | 52d | 0d | TEAM_2Shift_Calendar-1 | Helper; Fitter | 4h | 237.5 | 237.5 |
| 296 | 7.10.67 | Ch Insulationring Fitup | 2.5h | 2018-09-04 09:30 | 2018-09-04 12:00 | 295 | 2018-02-23 20:38 | 2018-02-26 07:08 | 2.5h | 52d | 0d | TEAM_2Shift_Calendar-1 | Helper; SMAW Welder; SMAW Welding Machine; Fitter | 10h | 468.75 | 468.75 |
| 297 | 7.10.68 | Ch Insulation ringwelding | 2h | 2018-09-04 12:00 | 2018-09-04 14:00 | 296 | 2018-02-26 07:08 | 2018-02-26 09:08 | 2h | 52d | 0d | TEAM_2Shift_Calendar-1 | SMAW Welder; SMAW Welding Machine; Helper | 6h | 237.5 | 237.5 |
| 298 | 7.10.69 | Ch Final DressUp | 7h | 2018-09-04 14:00 | 2018-09-04 21:00 | 297 | 2018-02-26 09:08 | 2018-02-26 16:09 | 7h | 52d | 0d | TEAM_2Shift_Calendar-1 | Grinding Machine; Grinder | 14h | 393.75 | 393.75 |
| 299 | 7.10.70 | Ch Dimensional Inspection | 4h | 2018-09-04 21:00 | 2018-09-05 09:00 | 298 | 2018-02-26 16:09 | 2018-02-26 20:09 | 4h | 52d | 0d | TEAM_2Shift_Calendar-1 | Fitter [200%] | 8h | 550 | 550 |
| 300 | 7.10.71 | Ch Clearanceby TPI | 1.33d | 2018-09-05 09:00 | 2018-09-05 19:39 | 299 | 2018-02-26 20:09 | 2018-02-27 12:09 | 1d | 52d | 0d | TEAM_2Shift_Calendar-1 | QC Engineer | 3h |  |  |
| 301 | 7.10.72 | Ch PWHT | 4d | 2018-09-05 19:39 | 2018-09-07 19:39 | 300 | 2018-02-27 12:09 | 2018-02-28 12:10 | 2d | 52d | 0d | TEAM_2Shift_Calendar-1 |  |  |  |  |
| 302 | 7.10.73 | Ch Receipt after PWHT | 2d | 2018-09-07 19:39 | 2018-09-10 19:39 | 301 | 2018-02-28 12:10 | 2018-03-01 12:11 | 2d | 52d | 0d | TEAM_2Shift_Calendar-1 | SC (Work) | 8h |  |  |
| 303 | 7.10.74 | Ch Surface Cleaning | 1d | 2018-09-10 19:39 | 2018-09-11 11:39 | 302 | 2018-03-01 12:11 | 2018-03-01 20:12 | 1d | 52d | 0d | TEAM_2Shift_Calendar-1 | Helper | 8h | 400 | 400 |
| 304 | 7.10.75 | Ch NDE by TPI | 1.37d | 2018-09-11 11:39 | 2018-09-12 06:38 | 303 | 2018-03-01 20:12 | 2018-03-02 12:11 | 1d | 52d |  | TEAM_2Shift_Calendar-1 | QC Engineer | 4h |  |  |
| 305 | 7.11 | **TubeBundleAssembly** | 70.36d | 2018-09-12 06:38 | 2018-10-30 09:30 |  | 2018-03-13 13:31 | 2018-03-22 21:40 | 17d | 0d |  | TEAM_2Shift_Calendar-1 |  | 456h | 23,656.25 | 25,831.25 |
| 306 | 7.11.1 | Assembly Frame Setup | 8h | 2018-09-12 06:38 | 2018-09-12 14:38 | 229 | 2018-03-13 13:31 | 2018-03-13 21:32 | 8h | 52.11d | 0d | TEAM_2Shift_Calendar-1 | Helper [400%]; Fitter [200%] | 48h | 2,700 | 2,700 |
| 307 | 7.11.2 | Skeleton Assembly | 15h | 2018-09-12 14:38 | 2018-09-14 13:38 | 306 | 2018-03-13 21:32 | 2018-03-14 20:33 | 15h | 52.11d | 0d | TEAM_2Shift_Calendar-1 | Helper [400%]; Fitter [200%] | 90h | 5,062.5 | 5,062.5 |
| 308 | 7.11.3 | Tie-Rod Welding | 3h | 2018-09-14 13:38 | 2018-09-14 16:38 | 307, 124 | 2018-03-14 20:33 | 2018-03-15 07:33 | 3h | 52.11d |  | TEAM_2Shift_Calendar-1 | SMAW Welder; SMAW Welding Machine; Rod (Cost) [0.1%]; Helper [200%] | 12h | 506.25 | 506.25 |
| 309 | 7.11.4 | Tube Insertion | 10h | 2018-10-19 17:30 | 2018-10-20 11:30 | 308, 44 | 2018-03-15 07:33 | 2018-03-15 17:34 | 10h | 0d |  | TEAM_2Shift_Calendar-1 | Helper [200%]; Tube (Cost) [0.1%]; Fitter | 30h | 1,687.5 | 1,687.5 |
| 310 | 7.11.5 | Tube Allignment | 8h | 2018-10-20 11:30 | 2018-10-20 19:30 | 309 | 2018-03-15 17:34 | 2018-03-16 09:34 | 8h | 0d |  | TEAM_2Shift_Calendar-1 | Helper; Fitter | 16h | 950 | 950 |
| 311 | 7.11.6 | SealingStrip Fitup | 8h | 2018-10-20 19:30 | 2018-10-22 11:30 | 310 | 2018-03-16 09:34 | 2018-03-16 17:35 | 8h | 0d |  | TEAM_2Shift_Calendar-1 | Fitter; TIG Welder; TIG Welding Machine; Plate (Cost) [0.1%]; Helper [200%] | 40h | 2,350 | 2,350 |
| 312 | 7.11.7 | SealingStrip Welding | 8h | 2018-10-22 11:30 | 2018-10-22 19:30 | 311 | 2018-03-16 17:35 | 2018-03-17 09:35 | 8h | 0d |  | TEAM_2Shift_Calendar-1 | TIG Welder; TIG Welding Machine; Helper [200%] | 32h | 1,800 | 1,800 |
| 313 | 7.11.8 | SealingStrip Grinding | 10h | 2018-10-22 19:30 | 2018-10-23 13:30 | 312 | 2018-03-17 09:35 | 2018-03-17 19:36 | 10h | 0d |  | TEAM_2Shift_Calendar-1 | Grinding Machine; Grinder | 20h | 562.5 | 562.5 |
| 314 | 7.11.9 | Tube/TubesheetRootWelding | 12h | 2018-10-23 13:30 | 2018-10-24 09:30 | 313 | 2018-03-17 19:36 | 2018-03-19 15:37 | 12h | 0d |  | TEAM_2Shift_Calendar-1 | TIG Welder; TIG Welding Machine; Helper | 36h | 2,100 | 2,100 |
| 315 | 7.11.10 | DPCheck | 2h | 2018-10-24 09:30 | 2018-10-24 11:30 | 314 | 2018-03-19 15:37 | 2018-03-19 17:37 | 2h | 0d |  | TEAM_2Shift_Calendar-1 | Helper; Fitter | 4h | 237.5 | 237.5 |
| 316 | 7.11.11 | Tube/TubesheetFinalWelding | 8h | 2018-10-24 11:30 | 2018-10-24 19:30 | 315 | 2018-03-19 17:37 | 2018-03-20 09:37 | 8h | 0d |  | TEAM_2Shift_Calendar-1 | TIG Welder; TIG Welding Machine; Helper [200%] | 32h | 1,800 | 1,800 |
| 317 | 7.11.12 | TubeTrimming | 8h | 2018-10-24 19:30 | 2018-10-25 11:30 | 316 | 2018-03-20 09:37 | 2018-03-20 17:38 | 8h | 0d |  | TEAM_2Shift_Calendar-1 | Grinding Machine; Grinder | 16h | 450 | 450 |
| 318 | 7.11.13 | DPCheck | 4h | 2018-10-25 11:30 | 2018-10-25 15:30 | 317 | 2018-03-20 17:38 | 2018-03-20 21:38 | 4h | 0d |  | TEAM_2Shift_Calendar-1 | Helper; Fitter | 8h | 475 | 475 |
| 319 | 7.11.14 | Expansion | 2d | 2018-10-25 15:30 | 2018-10-26 15:30 | 318 | 2018-03-20 21:38 | 2018-03-22 13:39 | 3d | 0d |  | TEAM_2Shift_Calendar-1 | Helper [200%]; Expanding Machine; Fitter | 64h | 2,700 | 4,050 |
| 320 | 7.11.15 | Inspection | 3.25d | 2018-10-26 15:30 | 2018-10-30 09:30 | 319 | 2018-03-22 13:39 | 2018-03-22 21:40 | 1d | 0d |  | TEAM_2Shift_Calendar-1 | QC Engineer; Fitter | 8h | 275 | 1,100 |

Notes:
- 295: 4NOS
- 308: 4NOS
- 309: 460
- 311: 4NOS
- 314: 460 NOS

| ID | WBS | Task | Duration | Start | Finish | Predecessors | Baseline start | Baseline finish | Baseline duration | Total slack | Free slack | Calendar | Resources | Work | Cost | Baseline cost |
| --- | --- | --- | --- | --- | --- | --- | --- | --- | --- | --- | --- | --- | --- | --- | --- | --- |
| 321 | 7.12 | **FinalAssembly&HydrotestTest** | 8.33d | 2018-10-30 09:30 | 2018-11-03 12:10 |  | 2018-03-26 21:42 | 2018-03-30 13:45 | 7d | 0d |  | TEAM_2Shift_Calendar-1 |  | 145h | 8,000 | 16,000 |
| 322 | 7.12.1 | Bundle Insertion | 1d | 2018-10-30 09:30 | 2018-10-30 17:30 | 305 | 2018-03-27 21:43 | 2018-03-28 13:43 | 1d | 0d |  | TEAM_2Shift_Calendar-1 | Helper [200%]; Fitter [200%] | 32h | 1,900 | 3,800 |
| 323 | 7.12.2 | ShellSide Hydrotest | 1d | 2018-10-30 17:30 | 2018-10-31 09:30 | 322 | 2018-03-28 13:43 | 2018-03-28 21:44 | 1d | 0d |  | TEAM_2Shift_Calendar-1 | Helper [200%]; Fitter [200%] | 32h | 1,900 | 3,800 |
| 324 | 7.12.3 | ShellSideHydrotestTPIInspection | 1d | 2018-10-31 09:30 | 2018-10-31 17:30 | 323 | 2018-03-28 21:44 | 2018-03-29 13:44 | 1d | 0d |  | TEAM_2Shift_Calendar-1 | QC Engineer | 3h |  |  |
| 325 | 7.12.4 | TubeSide Hydrotest | 1.33d | 2018-10-31 17:30 | 2018-11-01 12:10 | 324 |  |  |  | 0d |  | TEAM_2Shift_Calendar-1 | Helper [200%]; Fitter [200%] | 32h | 2,000 |  |
| 326 | 7.12.5 | TubeSideHydrotestTPIInspection | 1d | 2018-11-01 12:10 | 2018-11-02 12:10 | 325 |  |  |  | 0d |  | TEAM_2Shift_Calendar-1 | QC Engineer | 8h |  |  |
| 327 | 7.12.6 | Final hydro test | 1d | 2018-11-02 12:10 | 2018-11-02 20:10 | 326 | 2018-03-29 13:44 | 2018-03-29 21:45 | 1d | 0d |  | TEAM_2Shift_Calendar-1 | Helper [400%]; Fitter [400%] | 32h | 1,900 | 3,800 |
| 328 | 7.12.7 | De-watering&Drying | 1d | 2018-11-02 20:10 | 2018-11-03 12:10 | 327 | 2018-03-29 21:45 | 2018-03-30 13:45 | 1d | 0d |  | TEAM_2Shift_Calendar-1 | Helper [200%] | 6h | 300 | 800 |
| 329 | 7.13 | **Cleaning&Painting** | 8d | 2018-11-03 12:10 | 2018-11-12 12:10 |  | 2018-04-02 13:47 | 2018-04-12 09:55 | 17.5d | 0d |  | TEAM_2Shift_Calendar-1 |  | 62h | 1,175 | 6,200 |
| 330 | 7.13.1 | BlastCleaningArrangement | 1d | 2018-11-03 12:10 | 2018-11-03 20:10 | 321 | 2018-04-02 13:47 | 2018-04-03 13:47 | 2d | 0d |  | TEAM_2Shift_Calendar-1 | Store | 8h |  |  |
| 331 | 7.13.2 | Transport for BlastCleaning | 1d | 2018-11-03 20:10 | 2018-11-05 12:10 | 330 | 2018-04-03 13:47 | 2018-04-03 21:48 | 1d | 0d |  | TEAM_2Shift_Calendar-1 | Helper [300%]; Fitter [200%] | 10h | 575 | 2,300 |
| 332 | 7.13.3 | BlastCleaning | 2d | 2018-11-05 12:10 | 2018-11-08 12:10 | 331 | 2018-04-03 21:48 | 2018-04-05 13:49 | 3d | 0d |  | TEAM_2Shift_Calendar-1 | Helper | 12h | 600 | 1,200 |
| 333 | 7.13.4 | PrimerPainting | 1d | 2018-11-08 12:10 | 2018-11-08 20:10 | 332 | 2018-04-05 13:49 | 2018-04-07 13:51 | 4d | 0d |  | TEAM_2Shift_Calendar-1 | Paint (Cost) [0.1%]; SC (Work) | 12h |  |  |
| 334 | 7.13.5 | ReturnFromBlastCleaning | 1d | 2018-11-08 20:10 | 2018-11-09 12:10 | 333 | 2018-04-07 13:51 | 2018-04-07 21:52 | 1d | 0d |  | TEAM_2Shift_Calendar-1 | Painter | 8h |  |  |
| 335 | 7.13.6 | TopCoatPainting | 1d | 2018-11-09 12:10 | 2018-11-09 20:10 | 334 | 2018-04-07 21:52 | 2018-04-09 13:52 | 1d | 0d |  | TEAM_2Shift_Calendar-1 | Painter | 8h |  |  |
| 336 | 7.13.7 | Painting Inspection | 1d | 2018-11-09 20:10 | 2018-11-12 12:10 | 335 | 2018-04-09 13:52 | 2018-04-09 17:53 | 0.5d | 0d |  | TEAM_2Shift_Calendar-1 | Painter | 4h |  |  |
| 337 | 8 | **Project Closure** | 7d | 2018-11-12 12:10 | 2018-11-20 12:10 |  | 2018-06-29 08:30 | 2018-07-11 17:30 | 11d | 0d |  |  |  | 24.12h |  |  |
| 338 | 8.1 | PBG Preperation | 0.5d | 2018-11-12 12:10 | 2018-11-12 17:10 | 63 | 2018-06-29 08:30 | 2018-06-29 17:30 | 1d | 6d | 0d |  | Finance | 2h |  |  |
| 339 | 8.2 | PBG Submission | 0.5d | 2018-11-12 17:10 | 2018-11-13 12:10 | 338 | 2018-06-30 08:30 | 2018-06-30 17:30 | 1d | 6d |  |  | Finance | 1h |  |  |
| 340 | 8.3 | Final Documentation | 2d | 2018-11-12 12:10 | 2018-11-14 12:10 | 63 | 2018-06-29 08:30 | 2018-07-04 17:30 | 5d | 0d |  |  | Marketing [20%]; QC Engineer [80%] | 16h |  |  |
| 341 | 8.4 | Transport to the Site | 4d | 2018-11-14 12:10 | 2018-11-19 12:10 | 340 | 2018-07-05 08:30 | 2018-07-09 17:30 | 4d | 0d |  |  | Store; SC Transport (Cost) [0.1%] | 2h |  |  |
| 342 | 8.5 | Stock handover to Store | 1d | 2018-11-19 12:10 | 2018-11-20 12:10 | 341 | 2018-07-10 08:30 | 2018-07-11 17:30 | 2d | 0d |  |  | Production Engineer; Store | 3.12h |  |  |
