# 4247-SSIS

Schedule from MS Project, 2018-01-30 to 2018-06-18, costs in Rs., A marks actual dates.
Fabrication of Hastelloy hopper

## Calendars

- TEAM_Stand_Calendar: Mon-Sat 08:30-12:30, 13:30-17:30; Sun off. Exceptions (off unless hours are given): 2017-01-13 to 2023-08-12 (2nd Sat, recurring), 2017-01-26 to 2036-01-26 (Republic Day, recurring), 2017-01-27 to 2023-08-26 (4th Sat, recurring), 2017-05-01 to 2036-05-01 (May Day, recurring), 2017-08-15 to 2036-08-15 (Independence Day, recurring), 2017-10-02 to 2036-10-02 (Gandhi Jayanti, recurring).
- TEAM_2Shift_Calendar-1: Mon-Sat 06:00-22:00; Sun off. Exceptions (off unless hours are given): 2017-01-13 to 2023-02-11 (2nd Sat, recurring), 2017-01-26 to 2036-01-26 (Republic Day, recurring), 2017-01-27 to 2023-08-26 (4th Sat, recurring), 2017-05-01 to 2036-05-01 (May Day, recurring), 2017-08-15 to 2036-08-15 (Indepdence Day, recurring), 2017-10-02 to 2036-10-02 (Gandhi Jayanti, recurring).

## Resources

| Resource | Rate |
| --- | --- |
| TPI |  |
| Marketing |  |
| PPC Engineer |  |
| QC Engineer |  |
| Crane |  |
| Helper | 50 |
| Store |  |
| Fitter | 68.75 |
| Gas Cutter | 68.75 |
| Grinder | 56.25 |
| SMAW Welder | 68.75 |
| TIG Welder | 125 |
| Painter |  |
| Grinding Machine |  |
| OAGM |  |
| PM |  |
| SMAW Welding Machine |  |
| TIG Welding Machine |  |
| Rolling Machine |  |
| PMO Head |  |
| SC (Work) |  |
| Purchase Engineer |  |
| TPI (Cost) |  |

## Schedule

| ID | WBS | Task | Duration | Start | Finish | Predecessors | Complete | Remaining | Baseline start | Baseline finish | Baseline duration | Total slack | Free slack | Calendar | Resources | Work | Actual work | Cost | Baseline cost | Actual cost |
| --- | --- | --- | --- | --- | --- | --- | --- | --- | --- | --- | --- | --- | --- | --- | --- | --- | --- | --- | --- | --- |
| 1 | 1 | Receipt of PO | 4h | 2018-01-30 08:30 A | 2018-01-30 12:30 A |  | 100% |  | 2018-01-30 08:30 | 2018-01-30 12:30 | 4h |  |  |  | Marketing | 4h | 4h |  |  |  |
| 2 | 2 | Work Order | 8h | 2018-02-03 08:30 A | 2018-02-03 17:30 A | 1 | 100% |  | 2018-02-03 08:30 | 2018-02-03 17:30 | 8h |  |  |  | Marketing | 1h | 1h |  |  |  |
| 3 | 3 | CRM | 8h | 2018-02-06 08:30 A | 2018-02-06 17:30 A | 2 | 100% |  | 2018-02-06 08:30 | 2018-02-06 17:30 | 8h |  |  |  | PM; PMO Head; Marketing | 9h | 9h |  |  |  |
| 4 | 4 | **Purchase Requisition** | 3d | 2018-04-20 08:30 A | 2018-04-23 17:30 |  | 33% | 2d | 2018-04-20 08:30 | 2018-04-23 17:30 | 3d | 1d |  |  |  | 20h | 4h |  |  |  |
| 5 | 4.1 | Weld Consumables | 1d | 2018-04-20 08:30 A | 2018-04-20 17:30 A | 3FS+57d | 100% |  | 2018-04-20 08:30 | 2018-04-20 17:30 | 1d |  |  |  | PPC Engineer | 4h | 4h |  |  |  |
| 6 | 4.2 | Rod | 1d | 2018-04-23 08:30 | 2018-04-23 17:30 | 3FS+59d |  |  | 2018-04-23 08:30 | 2018-04-23 17:30 | 1d | 1d | 0d |  | PPC Engineer | 8h |  |  |  |  |
| 7 | 4.3 | Nozzle Pipe - SB622 C-276 | 1d | 2018-04-23 08:30 | 2018-04-23 17:30 | 3FS+59d |  |  | 2018-04-23 08:30 | 2018-04-23 17:30 | 1d | 0d |  |  | PPC Engineer | 8h |  |  |  |  |
| 8 | 5 | **Material Ordering** | 4d | 2018-04-21 08:30 A | 2018-04-25 17:30 |  | 20% | 3.2d | 2018-04-21 08:30 | 2018-04-25 17:30 | 4d | 1d |  |  |  | 24h | 8h |  |  |  |
| 9 | 5.1 | Weld Consumables | 1d | 2018-04-21 08:30 A | 2018-04-21 17:30 A | 5 | 100% |  | 2018-04-21 08:30 | 2018-04-21 17:30 | 1d |  |  |  | Purchase Engineer | 8h | 8h |  |  |  |
| 10 | 5.2 | Rod | 2d | 2018-04-24 08:30 | 2018-04-25 17:30 | 6 |  |  | 2018-04-24 08:30 | 2018-04-25 17:30 | 2d | 1d | 0d |  | Purchase Engineer | 8h |  |  |  |  |
| 11 | 5.3 | Nozzle Pipe - SB622 C-276 | 2d | 2018-04-24 08:30 | 2018-04-25 17:30 | 7 |  |  | 2018-04-24 08:30 | 2018-04-25 17:30 | 2d | 0d |  |  | PPC Engineer | 8h |  |  |  |  |
| 12 | 6 | **Material Receipt** | 80d | 2018-02-23 08:30 A | 2018-06-05 17:30 |  | 22% | 62.22d | 2018-02-23 08:30 | 2018-06-05 17:30 | 80d | 10d |  |  |  | 18h | 4h | 299.97 | 299.97 | 66.67 |
| 13 | 6.1 | FIM Plate - SB575 C-276 10T | 1d | 2018-02-23 08:30 A | 2018-02-23 17:30 A | 2FS+15d | 100% |  | 2018-02-23 08:30 | 2018-02-23 17:30 | 1d |  |  |  | Crane; Helper; Store | 2h | 2h | 33.33 | 33.33 | 33.33 |
| 14 | 6.2 | FIM Plate - SB575 C-276 6T | 1d | 2018-02-23 08:30 A | 2018-02-23 17:30 A | 2FS+15d | 100% |  | 2018-02-23 08:30 | 2018-02-23 17:30 | 1d |  |  |  | Crane; Helper; Store | 2h | 2h | 33.33 | 33.33 | 33.33 |
| 15 | 6.3 | FIM Plate - SA 516 GR.70 20T | 1d | 2018-04-27 08:30 | 2018-04-27 17:30 | 2FS+65d |  |  | 2018-04-27 08:30 | 2018-04-27 17:30 | 1d | 31d | 0d |  | Crane; Helper; Store | 2h |  | 33.33 | 33.33 |  |
| 16 | 6.4 | FIM Plate - SA 516 GR.70 12T | 1d | 2018-04-27 08:30 | 2018-04-27 17:30 | 2FS+65d |  |  | 2018-04-27 08:30 | 2018-04-27 17:30 | 1d | 31d | 0d |  | Crane; Helper; Store | 2h |  | 33.33 | 33.33 |  |
| 17 | 6.5 | FIM Plate - SS 304 10T | 1d | 2018-04-27 08:30 | 2018-04-27 17:30 | 2FS+65d |  |  | 2018-04-27 08:30 | 2018-04-27 17:30 | 1d | 31d | 0d |  | Crane; Helper; Store | 2h |  | 33.33 | 33.33 |  |
| 18 | 6.6 | FIM Nozzle Pipe - SB622 C-276 | 1d | 2018-06-05 08:30 | 2018-06-05 17:30 | 11FS+30d |  |  | 2018-06-05 08:30 | 2018-06-05 17:30 | 1d | 0d |  |  | Crane; Helper; Store | 2h |  | 33.33 | 33.33 |  |
| 19 | 6.7 | FIM Nozzle Flange - SB622 C-276 | 1d | 2018-04-27 08:30 | 2018-04-27 17:30 | 2FS+65d |  |  | 2018-04-27 08:30 | 2018-04-27 17:30 | 1d | 39d |  |  | Crane; Helper; Store | 2h |  | 33.33 | 33.33 |  |
| 20 | 6.8 | Weld Consumables | 1d | 2018-04-23 08:30 | 2018-04-23 17:30 | 9 |  |  | 2018-04-23 08:30 | 2018-04-23 17:30 | 1d | 43d |  |  | Crane; Helper; Store | 2h |  | 33.33 | 33.33 |  |
| 21 | 6.9 | Rod | 1d | 2018-06-05 08:30 | 2018-06-05 17:30 | 10FS+30d |  |  | 2018-06-05 08:30 | 2018-06-05 17:30 | 1d | 1d | 0d |  | Crane; Helper; Store | 2h |  | 33.33 | 33.33 |  |
| 22 | 7 | **Fabrication - V - 405** | 71.13d | 2018-04-25 09:30 | 2018-06-11 18:31 |  |  |  | 2018-04-25 09:30 | 2018-06-11 18:31 | 71.13d | 0d |  | TEAM_2Shift_Calendar-1 |  | 909h |  | 37,323.29 | 37,323.29 |  |
| 23 | 7.1 | **Initial Preparation** | 10.75d | 2018-04-25 09:30 | 2018-05-03 15:30 |  |  |  | 2018-04-25 09:30 | 2018-05-03 15:30 | 10.75d | 40.5d | 0d | TEAM_2Shift_Calendar-1 |  | 162h |  | 6,137.5 | 6,137.5 |  |
| 24 | 7.1.1 | Plate Receipt | 2h | 2018-04-25 09:30 | 2018-04-25 11:30 | 14FS+95d |  |  | 2018-04-25 09:30 | 2018-04-25 11:30 | 2h | 40.5d | 0d | TEAM_2Shift_Calendar-1 | Store | 2h |  |  |  |  |
| 25 | 7.1.2 | Inward Inspection | 9h | 2018-04-25 11:30 | 2018-04-25 20:30 | 24 |  |  | 2018-04-25 11:30 | 2018-04-25 20:30 | 9h | 40.5d | 0d | TEAM_2Shift_Calendar-1 | QC Engineer; Fitter | 2h |  | 68.75 | 68.75 |  |
| 26 | 7.1.3 | Sh Pl. Mkg | 1d | 2018-04-25 20:30 | 2018-04-26 12:30 | 25 |  |  | 2018-04-25 20:30 | 2018-04-26 12:30 | 1d | 40.5d | 0d | TEAM_2Shift_Calendar-1 | Helper; Fitter | 3h |  | 178.12 | 178.12 |  |
| 27 | 7.1.4 | Sh Pl. Stamping | 2d | 2018-04-26 12:30 | 2018-04-27 12:30 | 26 |  |  | 2018-04-26 12:30 | 2018-04-27 12:30 | 2d | 40.5d | 0d | TEAM_2Shift_Calendar-1 | QC Engineer; Fitter; TPI (Cost) [0.1%] | 5h |  | 171.88 | 171.88 |  |
| 28 | 7.1.5 | Sh-L1 Cutting | 4h | 2018-04-27 12:30 | 2018-04-27 16:30 | 27 |  |  | 2018-04-27 12:30 | 2018-04-27 16:30 | 4h | 40.5d | 0d | TEAM_2Shift_Calendar-1 | Gas Cutter; OAGM; Helper | 12h |  | 475 | 475 |  |
| 29 | 7.1.6 | Sh-L2 Cutting | 4h | 2018-04-27 16:30 | 2018-04-27 20:30 | 28 |  |  | 2018-04-27 16:30 | 2018-04-27 20:30 | 4h | 40.5d | 0d | TEAM_2Shift_Calendar-1 | Gas Cutter; OAGM; Helper | 12h |  | 475 | 475 |  |
| 30 | 7.1.7 | Sh-L3 Cutting | 4h | 2018-04-27 20:30 | 2018-04-30 08:30 | 29 |  |  | 2018-04-27 20:30 | 2018-04-30 08:30 | 4h | 40.5d | 0d | TEAM_2Shift_Calendar-1 | Gas Cutter; OAGM; Helper | 12h |  | 475 | 475 |  |
| 31 | 7.1.8 | Sh-L1 E.P | 3h | 2018-04-30 08:30 | 2018-04-30 11:30 | 30 |  |  | 2018-04-30 08:30 | 2018-04-30 11:30 | 3h | 40.5d | 0d | TEAM_2Shift_Calendar-1 | Grinding Machine; Grinder | 6h |  | 168.75 | 168.75 |  |
| 32 | 7.1.9 | Sh-L2 E.P | 3h | 2018-04-30 11:30 | 2018-04-30 14:30 | 31 |  |  | 2018-04-30 11:30 | 2018-04-30 14:30 | 3h | 40.5d | 0d | TEAM_2Shift_Calendar-1 | Grinding Machine; Grinder | 6h |  | 168.75 | 168.75 |  |
| 33 | 7.1.10 | Sh-L3 E.P | 3h | 2018-04-30 14:30 | 2018-04-30 17:30 | 32 |  |  | 2018-04-30 14:30 | 2018-04-30 17:30 | 3h | 40.5d | 0d | TEAM_2Shift_Calendar-1 | Grinding Machine; Grinder | 6h |  | 168.75 | 168.75 |  |
| 34 | 7.1.11 | Sh-L1 Pre-Bending | 3h | 2018-04-30 17:30 | 2018-04-30 20:30 | 33 |  |  | 2018-04-30 17:30 | 2018-04-30 20:30 | 3h | 40.5d | 0d | TEAM_2Shift_Calendar-1 | Helper [200%]; Rolling Machine; Fitter | 12h |  | 506.25 | 506.25 |  |
| 35 | 7.1.12 | Sh-L2 Pre-Bending | 3h | 2018-04-30 20:30 | 2018-05-02 07:30 | 34 |  |  | 2018-04-30 20:30 | 2018-05-02 07:30 | 3h | 40.5d | 0d | TEAM_2Shift_Calendar-1 | Helper [200%]; Rolling Machine; Fitter | 12h |  | 506.25 | 506.25 |  |
| 36 | 7.1.13 | Sh-L3 Pre-Bending | 3h | 2018-05-02 07:30 | 2018-05-02 10:30 | 35 |  |  | 2018-05-02 07:30 | 2018-05-02 10:30 | 3h | 40.5d | 0d | TEAM_2Shift_Calendar-1 | Helper [200%]; Rolling Machine; Fitter | 12h |  | 506.25 | 506.25 |  |
| 37 | 7.1.14 | Sh-L1 Pre-Bend Cut-off | 2h | 2018-05-02 10:30 | 2018-05-02 12:30 | 36 |  |  | 2018-05-02 10:30 | 2018-05-02 12:30 | 2h | 40.5d | 0d | TEAM_2Shift_Calendar-1 | OAGM; Gas Cutter | 4h |  | 137.5 | 137.5 |  |
| 38 | 7.1.15 | Sh-L2 Pre-Bend Cut-off | 2h | 2018-05-02 12:30 | 2018-05-02 14:30 | 37 |  |  | 2018-05-02 12:30 | 2018-05-02 14:30 | 2h | 40.5d | 0d | TEAM_2Shift_Calendar-1 | OAGM; Gas Cutter | 4h |  | 137.5 | 137.5 |  |
| 39 | 7.1.16 | Sh-L3 Pre-Bend Cut-off | 2h | 2018-05-02 14:30 | 2018-05-02 16:30 | 38 |  |  | 2018-05-02 14:30 | 2018-05-02 16:30 | 2h | 40.5d | 0d | TEAM_2Shift_Calendar-1 | OAGM; Gas Cutter | 4h |  | 137.5 | 137.5 |  |
| 40 | 7.1.17 | Sh-L1 E.P | 2h | 2018-05-02 16:30 | 2018-05-02 18:30 | 39 |  |  | 2018-05-02 16:30 | 2018-05-02 18:30 | 2h | 40.5d | 0d | TEAM_2Shift_Calendar-1 | Grinding Machine; Grinder | 4h |  | 112.5 | 112.5 |  |
| 41 | 7.1.18 | Sh-L2 E.P | 2h | 2018-05-02 18:30 | 2018-05-02 20:30 | 40 |  |  | 2018-05-02 18:30 | 2018-05-02 20:30 | 2h | 40.5d | 0d | TEAM_2Shift_Calendar-1 | Grinding Machine; Grinder | 4h |  | 112.5 | 112.5 |  |
| 42 | 7.1.19 | Sh-L3 E.P | 2h | 2018-05-02 20:30 | 2018-05-03 06:30 | 41 |  |  | 2018-05-02 20:30 | 2018-05-03 06:30 | 2h | 40.5d | 0d | TEAM_2Shift_Calendar-1 | Grinding Machine; Grinder | 4h |  | 112.5 | 112.5 |  |
| 43 | 7.1.20 | Sh-L1 Rolling | 3h | 2018-05-03 06:30 | 2018-05-03 09:30 | 42 |  |  | 2018-05-03 06:30 | 2018-05-03 09:30 | 3h | 40.5d | 0d | TEAM_2Shift_Calendar-1 | Helper [200%]; Rolling Machine; Fitter | 12h |  | 506.25 | 506.25 |  |
| 44 | 7.1.21 | Sh-L2 Rolling | 3h | 2018-05-03 09:30 | 2018-05-03 12:30 | 43 |  |  | 2018-05-03 09:30 | 2018-05-03 12:30 | 3h | 40.5d | 0d | TEAM_2Shift_Calendar-1 | Helper [200%]; Rolling Machine; Fitter | 12h |  | 506.25 | 506.25 |  |
| 45 | 7.1.22 | Sh-L3 Rolling | 3h | 2018-05-03 12:30 | 2018-05-03 15:30 | 44 |  |  | 2018-05-03 12:30 | 2018-05-03 15:30 | 3h | 40.5d |  | TEAM_2Shift_Calendar-1 | Helper [200%]; Rolling Machine; Fitter | 12h |  | 506.25 | 506.25 |  |

Notes:
- 4: Shell SA 516 Gr.70 10T / Cladding Inconel SB 168 No.6600 Clad 4T / Shell Flange SA 266 Gr.4 + Inconnel 600 Weld Overlay / Gasket / Fastener SA 193 Gr.B16 / SA 194 Gr.16 / Consumables
- 28: 2714 x 2000Lg x 14T
- 29: 2714 x 2000Lg x 14T
- 30: 2714 x 1201Lg x 14T
- 43: Ø878 x 2000Lg x 14T
- 44: Ø878 x 2000Lg x 14T
- 45: Ø878 x 1201Lg x 14T

| ID | WBS | Task | Duration | Start | Finish | Predecessors | Baseline start | Baseline finish | Baseline duration | Total slack | Free slack | Calendar | Resources | Work | Cost | Baseline cost |
| --- | --- | --- | --- | --- | --- | --- | --- | --- | --- | --- | --- | --- | --- | --- | --- | --- |
| 46 | 7.2 | **Fitup & Welding** | 10.61d | 2018-05-03 15:30 | 2018-05-09 20:21 |  | 2018-05-03 15:30 | 2018-05-09 20:21 | 10.61d | 40.5d | 0d | TEAM_2Shift_Calendar-1 |  | 192h | 8,292.04 | 8,292.04 |
| 47 | 7.2.1 | Sh-L1 LS Fitup | 3h | 2018-05-03 15:30 | 2018-05-03 18:30 | 23 | 2018-05-03 15:30 | 2018-05-03 18:30 | 3h | 40.5d | 0d | TEAM_2Shift_Calendar-1 | Helper [200%]; SMAW Welder; SMAW Welding Machine; Fitter | 15h | 712.5 | 712.5 |
| 48 | 7.2.2 | Sh-L2 LS Fitup | 3h | 2018-05-03 18:30 | 2018-05-03 21:30 | 47 | 2018-05-03 18:30 | 2018-05-03 21:30 | 3h | 40.5d | 0d | TEAM_2Shift_Calendar-1 | Helper [200%]; SMAW Welder; SMAW Welding Machine; Fitter | 15h | 712.5 | 712.5 |
| 49 | 7.2.3 | Sh-L3 LS Fitup | 3h | 2018-05-03 21:30 | 2018-05-04 08:30 | 48 | 2018-05-03 21:30 | 2018-05-04 08:30 | 3h | 40.5d | 0d | TEAM_2Shift_Calendar-1 | Helper [200%]; SMAW Welder; SMAW Welding Machine; Fitter | 15h | 712.5 | 712.5 |
| 50 | 7.2.4 | Sh-L1,L2,L3 Inspection | 1.26d | 2018-05-04 08:30 | 2018-05-04 18:34 | 49 | 2018-05-04 08:30 | 2018-05-04 18:34 | 1.26d | 40.5d | 0d | TEAM_2Shift_Calendar-1 | Fitter; QC Engineer | 4h | 210.79 | 210.79 |
| 51 | 7.2.5 | Sh-L1 Welding Arrangement | 2h | 2018-05-04 18:34 | 2018-05-04 20:34 | 50 | 2018-05-04 18:34 | 2018-05-04 20:34 | 2h | 40.5d | 0d | TEAM_2Shift_Calendar-1 | Helper; Fitter | 4h | 237.5 | 237.5 |
| 52 | 7.2.6 | Sh-L2 Welding Arrangement | 2h | 2018-05-04 20:34 | 2018-05-05 06:34 | 51 | 2018-05-04 20:34 | 2018-05-05 06:34 | 2h | 40.5d | 0d | TEAM_2Shift_Calendar-1 | Helper; Fitter | 4h | 237.5 | 237.5 |
| 53 | 7.2.7 | Sh-L3 Welding Arrangement | 2h | 2018-05-05 06:34 | 2018-05-05 08:34 | 52 | 2018-05-05 06:34 | 2018-05-05 08:34 | 2h | 40.5d | 0d | TEAM_2Shift_Calendar-1 | Helper; Fitter | 4h | 237.5 | 237.5 |
| 54 | 7.2.8 | Sh-L1 LS Welding | 5h | 2018-05-05 08:34 | 2018-05-05 13:34 | 53 | 2018-05-05 08:34 | 2018-05-05 13:34 | 5h | 40.5d | 0d | TEAM_2Shift_Calendar-1 | SMAW Welder; SMAW Welding Machine; Helper [200%] | 20h | 843.75 | 843.75 |
| 55 | 7.2.9 | Sh-L2 LS Welding | 5h | 2018-05-05 13:34 | 2018-05-05 18:34 | 54 | 2018-05-05 13:34 | 2018-05-05 18:34 | 5h | 40.5d | 0d | TEAM_2Shift_Calendar-1 | SMAW Welder; SMAW Welding Machine; Helper [200%] | 20h | 843.75 | 843.75 |
| 56 | 7.2.10 | Sh-L3 LS Welding | 5h | 2018-05-05 18:34 | 2018-05-07 07:34 | 55 | 2018-05-05 18:34 | 2018-05-07 07:34 | 5h | 40.5d | 0d | TEAM_2Shift_Calendar-1 | SMAW Welder; SMAW Welding Machine; Helper [200%] | 20h | 843.75 | 843.75 |
| 57 | 7.2.11 | Sh-L1 LS Backchip / DP Check | 2h | 2018-05-07 07:34 | 2018-05-07 09:34 | 56 | 2018-05-07 07:34 | 2018-05-07 09:34 | 2h | 40.5d | 0d | TEAM_2Shift_Calendar-1 | Grinding Machine; Grinder | 4h | 112.5 | 112.5 |
| 58 | 7.2.12 | Sh-L2 LS Backchip / DP Check | 2h | 2018-05-07 09:34 | 2018-05-07 11:34 | 57 | 2018-05-07 09:34 | 2018-05-07 11:34 | 2h | 40.5d | 0d | TEAM_2Shift_Calendar-1 | Grinding Machine; Grinder | 4h | 112.5 | 112.5 |
| 59 | 7.2.13 | Sh-L3 LS Backchip / DP Check | 2h | 2018-05-07 11:34 | 2018-05-07 13:34 | 58 | 2018-05-07 11:34 | 2018-05-07 13:34 | 2h | 40.5d | 0d | TEAM_2Shift_Calendar-1 | Grinding Machine; Grinder | 4h | 112.5 | 112.5 |
| 60 | 7.2.14 | Sh-Backchip Welding L1,L2,L3 | 5h | 2018-05-07 13:34 | 2018-05-07 18:34 | 59 | 2018-05-07 13:34 | 2018-05-07 18:34 | 5h | 40.5d | 0d | TEAM_2Shift_Calendar-1 | SMAW Welder; SMAW Welding Machine; Helper [200%] | 20h | 843.75 | 843.75 |
| 61 | 7.2.15 | Sh-L1 Re-rolling | 3h | 2018-05-07 18:34 | 2018-05-07 21:34 | 60 | 2018-05-07 18:34 | 2018-05-07 21:34 | 3h | 40.5d | 0d | TEAM_2Shift_Calendar-1 | Helper [200%]; Fitter | 9h | 506.25 | 506.25 |
| 62 | 7.2.16 | Sh-L2 Re-rolling | 3h | 2018-05-07 21:34 | 2018-05-08 08:34 | 61 | 2018-05-07 21:34 | 2018-05-08 08:34 | 3h | 40.5d | 0d | TEAM_2Shift_Calendar-1 | Helper [200%]; Fitter | 9h | 506.25 | 506.25 |
| 63 | 7.2.17 | Sh-L3 Re-rolling | 3h | 2018-05-08 08:34 | 2018-05-08 11:34 | 62 | 2018-05-08 08:34 | 2018-05-08 11:34 | 3h | 40.5d | 0d | TEAM_2Shift_Calendar-1 | Helper [200%]; Fitter | 9h | 506.25 | 506.25 |
| 64 | 7.2.18 | Sh-L1 Radiography | 1d | 2018-05-08 11:34 | 2018-05-08 19:34 | 63 | 2018-05-08 11:34 | 2018-05-08 19:34 | 1d | 40.5d | 0d | TEAM_2Shift_Calendar-1 | SC (Work) | 4h |  |  |
| 65 | 7.2.19 | Sh-L2 Radiography | 1.1d | 2018-05-08 19:34 | 2018-05-09 12:21 | 64 | 2018-05-08 19:34 | 2018-05-09 12:21 | 1.1d | 40.5d | 0d | TEAM_2Shift_Calendar-1 | SC (Work) | 4h |  |  |
| 66 | 7.2.20 | Sh-L3 Radiography | 1d | 2018-05-09 12:21 | 2018-05-09 20:21 | 65 | 2018-05-09 12:21 | 2018-05-09 20:21 | 1d | 40.5d | 0d | TEAM_2Shift_Calendar-1 | SC (Work) | 4h |  |  |
| 67 | 7.3 | **Shell CS - Top shell to cone** | 3.38d | 2018-05-09 12:21 | 2018-05-11 07:21 |  | 2018-05-09 12:21 | 2018-05-11 07:21 | 3.38d | 43.77d | 3.27d | TEAM_2Shift_Calendar-1 |  | 62h | 2,418.75 | 2,418.75 |
| 68 | 7.3.1 | E.P for Cir-Seam | 2h | 2018-05-09 12:21 | 2018-05-09 14:21 | 64, 65 | 2018-05-09 12:21 | 2018-05-09 14:21 | 2h | 43.77d | 0d | TEAM_2Shift_Calendar-1 | Grinding Machine; Grinder | 4h | 112.5 | 112.5 |
| 69 | 7.3.2 | CS-1 Fitup | 2h | 2018-05-09 14:21 | 2018-05-09 16:21 | 68 | 2018-05-09 14:21 | 2018-05-09 16:21 | 2h | 43.77d | 0d | TEAM_2Shift_Calendar-1 | Helper [200%]; SMAW Welder; SMAW Welding Machine; Fitter | 10h | 475 | 475 |
| 70 | 7.3.3 | CS-1 Inspection | 2h | 2018-05-09 16:21 | 2018-05-09 18:21 | 69 | 2018-05-09 16:21 | 2018-05-09 18:21 | 2h | 43.77d | 0d | TEAM_2Shift_Calendar-1 | Fitter | 2h | 137.5 | 137.5 |
| 71 | 7.3.4 | CS-1 Welding | 5h | 2018-05-09 18:21 | 2018-05-10 07:21 | 70 | 2018-05-09 18:21 | 2018-05-10 07:21 | 5h | 43.77d | 0d | TEAM_2Shift_Calendar-1 | SMAW Welder; SMAW Welding Machine; Helper [200%] | 20h | 843.75 | 843.75 |
| 72 | 7.3.5 | CS-1 Backchip / DP Check | 2h | 2018-05-10 07:21 | 2018-05-10 09:21 | 71 | 2018-05-10 07:21 | 2018-05-10 09:21 | 2h | 43.77d | 0d | TEAM_2Shift_Calendar-1 | Grinding Machine; Grinder | 4h | 112.5 | 112.5 |
| 73 | 7.3.6 | CS-1 Backchip Welding | 3h | 2018-05-10 09:21 | 2018-05-10 12:21 | 72 | 2018-05-10 09:21 | 2018-05-10 12:21 | 3h | 43.77d | 0d | TEAM_2Shift_Calendar-1 | SMAW Welder; SMAW Welding Machine; Helper [200%] | 12h | 506.25 | 506.25 |
| 74 | 7.3.7 | CS-1 Flush Grinding | 2h | 2018-05-10 12:21 | 2018-05-10 14:21 | 73 | 2018-05-10 12:21 | 2018-05-10 14:21 | 2h | 43.77d | 0d | TEAM_2Shift_Calendar-1 | Grinding Machine; Grinder | 4h | 112.5 | 112.5 |
| 75 | 7.3.8 | CS-1 DP Check | 1h | 2018-05-10 14:21 | 2018-05-10 15:21 | 74 | 2018-05-10 14:21 | 2018-05-10 15:21 | 1h | 43.77d | 0d | TEAM_2Shift_Calendar-1 | Helper; Fitter | 2h | 118.75 | 118.75 |
| 76 | 7.3.9 | CS-1 Radiography | 1d | 2018-05-10 15:21 | 2018-05-11 07:21 | 75 | 2018-05-10 15:21 | 2018-05-11 07:21 | 1d | 43.77d |  | TEAM_2Shift_Calendar-1 | SC (Work) | 4h |  |  |

Notes:
- 54: 1.61kg/m
- 55: 1.61kg/m
- 56: 1.61kg/m
- 71: 1.61kg/m

| ID | WBS | Task | Duration | Start | Finish | Predecessors | Baseline start | Baseline finish | Baseline duration | Total slack | Free slack | Calendar | Resources | Work | Cost | Baseline cost |
| --- | --- | --- | --- | --- | --- | --- | --- | --- | --- | --- | --- | --- | --- | --- | --- | --- |
| 77 | 7.4 | **Shell CS - Cone to bottom shell** | 5.65d | 2018-05-09 20:21 | 2018-05-14 17:31 |  | 2018-05-09 20:21 | 2018-05-14 17:31 | 5.65d | 40.5d | 0d | TEAM_2Shift_Calendar-1 |  | 92h | 3,731.25 | 3,731.25 |
| 78 | 7.4.1 | E.P for Cir-Seam | 2h | 2018-05-09 20:21 | 2018-05-10 06:21 | 65, 66 | 2018-05-09 20:21 | 2018-05-10 06:21 | 2h | 40.5d | 0d | TEAM_2Shift_Calendar-1 | Grinding Machine; Grinder | 4h | 112.5 | 112.5 |
| 79 | 7.4.2 | CS-2 Fitup | 3h | 2018-05-10 06:21 | 2018-05-10 09:21 | 78 | 2018-05-10 06:21 | 2018-05-10 09:21 | 3h | 40.5d | 0d | TEAM_2Shift_Calendar-1 | Helper [200%]; SMAW Welder; SMAW Welding Machine; Fitter | 15h | 712.5 | 712.5 |
| 80 | 7.4.3 | CS-2 Inspection | 2h | 2018-05-10 09:21 | 2018-05-10 11:21 | 79 | 2018-05-10 09:21 | 2018-05-10 11:21 | 2h | 40.5d | 0d | TEAM_2Shift_Calendar-1 | Fitter [200%] | 4h | 275 | 275 |
| 81 | 7.4.4 | CS-2 Welding | 5h | 2018-05-10 11:21 | 2018-05-10 16:21 | 80 | 2018-05-10 11:21 | 2018-05-10 16:21 | 5h | 40.5d | 0d | TEAM_2Shift_Calendar-1 | SMAW Welder; SMAW Welding Machine; Helper [200%] | 20h | 843.75 | 843.75 |
| 82 | 7.4.5 | CS-2 Backchip | 3h | 2018-05-10 16:21 | 2018-05-10 19:21 | 81 | 2018-05-10 16:21 | 2018-05-10 19:21 | 3h | 40.5d | 0d | TEAM_2Shift_Calendar-1 | Grinding Machine; Grinder | 6h | 168.75 | 168.75 |
| 83 | 7.4.6 | CS-2 Backchip Welding | 3h | 2018-05-10 19:21 | 2018-05-11 06:21 | 82 | 2018-05-10 19:21 | 2018-05-11 06:21 | 3h | 40.5d | 0d | TEAM_2Shift_Calendar-1 | SMAW Welder; SMAW Welding Machine; Helper [200%] | 12h | 506.25 | 506.25 |
| 84 | 7.4.7 | CS-2 Flush Grinding | 2h | 2018-05-11 06:21 | 2018-05-11 08:21 | 83 | 2018-05-11 06:21 | 2018-05-11 08:21 | 2h | 40.5d | 0d | TEAM_2Shift_Calendar-1 | Grinding Machine; Grinder | 4h | 112.5 | 112.5 |
| 85 | 7.4.8 | CS-2 DP Check | 2h | 2018-05-11 08:21 | 2018-05-11 10:21 | 84 | 2018-05-11 08:21 | 2018-05-11 10:21 | 2h | 40.5d | 0d | TEAM_2Shift_Calendar-1 | Helper; Fitter | 4h | 237.5 | 237.5 |
| 86 | 7.4.9 | CS-2 Radiography | 1.15d | 2018-05-11 10:21 | 2018-05-11 19:31 | 85 | 2018-05-11 10:21 | 2018-05-11 19:31 | 1.15d | 40.5d | 0d | TEAM_2Shift_Calendar-1 | SC (Work) | 4h |  |  |
| 87 | 7.4.10 | Sh Orienation Mkg | 1d | 2018-05-11 19:31 | 2018-05-14 11:31 | 86 | 2018-05-11 19:31 | 2018-05-14 11:31 | 1d | 40.5d | 0d | TEAM_2Shift_Calendar-1 | Fitter; Helper | 4h | 237.5 | 237.5 |
| 88 | 7.4.11 | Sh Extra Length Cutting | 3h | 2018-05-14 11:31 | 2018-05-14 14:31 | 87 | 2018-05-14 11:31 | 2018-05-14 14:31 | 3h | 40.5d | 0d | TEAM_2Shift_Calendar-1 | Gas Cutter; OAGM; Helper | 9h | 356.25 | 356.25 |
| 89 | 7.4.12 | Sh E.P of Cir-Seam Side | 3h | 2018-05-14 14:31 | 2018-05-14 17:31 | 88 | 2018-05-14 14:31 | 2018-05-14 17:31 | 3h | 40.5d |  | TEAM_2Shift_Calendar-1 | Grinding Machine; Grinder | 6h | 168.75 | 168.75 |
| 90 | 7.5 | **Body Flange Welding (Top & Bottom)** | 3.62d | 2018-05-14 17:31 | 2018-05-16 14:31 |  | 2018-05-14 17:31 | 2018-05-16 14:31 | 3.62d | 40.5d |  | TEAM_2Shift_Calendar-1 |  | 48h | 1,918.75 | 1,918.75 |
| 91 | 7.5.1 | Body Flange-1 Fitup | 2h | 2018-05-14 17:31 | 2018-05-14 19:31 | 67, 77 | 2018-05-14 17:31 | 2018-05-14 19:31 | 2h | 40.5d | 0d | TEAM_2Shift_Calendar-1 | Helper [200%]; SMAW Welder; SMAW Welding Machine; Fitter | 10h | 475 | 475 |
| 92 | 7.5.2 | Body Flange-1 Inspection | 1d | 2018-05-14 19:31 | 2018-05-15 11:31 | 91 | 2018-05-14 19:31 | 2018-05-15 11:31 | 1d | 40.5d | 0d | TEAM_2Shift_Calendar-1 | Fitter [200%] | 2h | 137.5 | 137.5 |
| 93 | 7.5.3 | Body Flange-1 Welding | 5h | 2018-05-15 11:31 | 2018-05-15 16:31 | 92 | 2018-05-15 11:31 | 2018-05-15 16:31 | 5h | 40.5d | 0d | TEAM_2Shift_Calendar-1 | SMAW Welder; SMAW Welding Machine; Helper [200%] | 20h | 843.75 | 843.75 |
| 94 | 7.5.4 | Body Flange-1 Backchip | 2h | 2018-05-15 16:31 | 2018-05-15 18:31 | 93 | 2018-05-15 16:31 | 2018-05-15 18:31 | 2h | 40.5d | 0d | TEAM_2Shift_Calendar-1 | Grinding Machine; Grinder | 4h | 112.5 | 112.5 |
| 95 | 7.5.5 | Body Flange-1 Flush Grinding | 2h | 2018-05-15 18:31 | 2018-05-15 20:31 | 94 | 2018-05-15 18:31 | 2018-05-15 20:31 | 2h | 40.5d | 0d | TEAM_2Shift_Calendar-1 | Grinding Machine; Grinder | 4h | 112.5 | 112.5 |
| 96 | 7.5.6 | Body Flange-1 DP Check | 2h | 2018-05-15 20:31 | 2018-05-16 06:31 | 95 | 2018-05-15 20:31 | 2018-05-16 06:31 | 2h | 40.5d | 0d | TEAM_2Shift_Calendar-1 | Helper; Fitter | 4h | 237.5 | 237.5 |
| 97 | 7.5.7 | Body Flange-1 Radiography | 1d | 2018-05-16 06:31 | 2018-05-16 14:31 | 96 | 2018-05-16 06:31 | 2018-05-16 14:31 | 1d | 40.5d |  | TEAM_2Shift_Calendar-1 | SC (Work) | 4h |  |  |
| 98 | 7.6 | **Nozzle Fabrication** | 49.77d | 2018-05-09 20:21 | 2018-06-11 18:31 |  | 2018-05-09 20:21 | 2018-06-11 18:31 | 49.77d | 0d |  | TEAM_2Shift_Calendar-1 |  | 200h | 8,993.75 | 8,993.75 |
| 99 | 7.6.1 | Nozzle Flange and Pipe Receipt | 1d | 2018-06-05 17:30 | 2018-06-06 09:30 | 18 | 2018-06-05 17:30 | 2018-06-06 09:30 | 1d | 0d |  | TEAM_2Shift_Calendar-1 | Store | 2h |  |  |
| 100 | 7.6.2 | Nozzle Pipe Mkg | 2h | 2018-06-06 09:30 | 2018-06-06 11:30 | 99 | 2018-06-06 09:30 | 2018-06-06 11:30 | 2h | 0d |  | TEAM_2Shift_Calendar-1 | Helper; Fitter | 4h | 237.5 | 237.5 |
| 101 | 7.6.3 | Nozzle Pipe Mkg Inspection | 1d | 2018-06-06 11:30 | 2018-06-06 19:30 | 100 | 2018-06-06 11:30 | 2018-06-06 19:30 | 1d | 0d |  | TEAM_2Shift_Calendar-1 | Fitter | 1h | 68.75 | 68.75 |
| 102 | 7.6.4 | Nozzle Pipe Stamping | 2.88d | 2018-06-06 19:30 | 2018-06-08 10:31 | 101 | 2018-06-06 19:30 | 2018-06-08 10:31 | 2.88d | 0d |  | TEAM_2Shift_Calendar-1 | Fitter; QC Engineer; TPI (Cost) [0.1%] | 4h | 137.5 | 137.5 |
| 103 | 7.6.5 | Nozzle Pipe Cutting | 2h | 2018-06-08 10:31 | 2018-06-08 12:31 | 102 | 2018-06-08 10:31 | 2018-06-08 12:31 | 2h | 0d |  | TEAM_2Shift_Calendar-1 | Gas Cutter; OAGM; Helper | 6h | 237.5 | 237.5 |
| 104 | 7.6.6 | Nozzle Pipe E.P | 2h | 2018-06-08 12:31 | 2018-06-08 14:31 | 103 | 2018-06-08 12:31 | 2018-06-08 14:31 | 2h | 0d |  | TEAM_2Shift_Calendar-1 | Grinding Machine; Grinder | 4h | 112.5 | 112.5 |
| 105 | 7.6.7 | Nozzle Flange + Pipe Fitup | 3h | 2018-06-08 14:31 | 2018-06-08 17:31 | 104 | 2018-06-08 14:31 | 2018-06-08 17:31 | 3h | 0d |  | TEAM_2Shift_Calendar-1 | Helper [200%]; SMAW Welder; SMAW Welding Machine; Fitter | 15h | 712.5 | 712.5 |
| 106 | 7.6.8 | Nozzle Flange + Pipe Fitup Inspection | 1d | 2018-06-08 17:31 | 2018-06-11 09:31 | 105 | 2018-06-08 17:31 | 2018-06-11 09:31 | 1d | 0d |  | TEAM_2Shift_Calendar-1 | Fitter [200%] | 2h | 137.5 | 137.5 |
| 107 | 7.6.9 | Nozzle Flange + Pipe Root Tig Welding | 4h | 2018-06-11 09:31 | 2018-06-11 13:31 | 106 | 2018-06-11 09:31 | 2018-06-11 13:31 | 4h | 0d |  | TEAM_2Shift_Calendar-1 | TIG Welder; TIG Welding Machine; Helper [200%] | 16h | 900 | 900 |
| 108 | 7.6.10 | Nozzle Flange + Pipe Final Welding | 5h | 2018-06-11 13:31 | 2018-06-11 18:31 | 107 | 2018-06-11 13:31 | 2018-06-11 18:31 | 5h | 0d |  | TEAM_2Shift_Calendar-1 | SMAW Welder; SMAW Welding Machine; Helper [200%] | 20h | 843.75 | 843.75 |
| 109 | 7.6.11 | Nozzle orientation Marking & Inspection | 3h | 2018-05-09 20:21 | 2018-05-10 07:21 | 46 | 2018-05-09 20:21 | 2018-05-10 07:21 | 3h | 43.9d | 0d | TEAM_2Shift_Calendar-1 | Fitter | 3h | 206.25 | 206.25 |
| 110 | 7.6.12 | Sh Nozzle Opening - V2 & N6 - 2Nos | 5h | 2018-05-10 07:21 | 2018-05-10 12:21 | 109 | 2018-05-10 07:21 | 2018-05-10 12:21 | 5h | 43.9d | 0d | TEAM_2Shift_Calendar-1 | Gas Cutter; OAGM; Helper | 15h | 593.75 | 593.75 |
| 111 | 7.6.13 | Sh Nozzle Opening E.P | 3h | 2018-05-10 12:21 | 2018-05-10 15:21 | 110 | 2018-05-10 12:21 | 2018-05-10 15:21 | 3h | 43.9d | 0d | TEAM_2Shift_Calendar-1 | Grinding Machine; Grinder | 6h | 168.75 | 168.75 |
| 112 | 7.6.14 | Sh Nozzle Fitup - V2 & N6 - 2Nos | 4h | 2018-05-10 15:21 | 2018-05-10 19:21 | 111 | 2018-05-10 15:21 | 2018-05-10 19:21 | 4h | 43.9d | 0d | TEAM_2Shift_Calendar-1 | Fitter; SMAW Welder; SMAW Welding Machine; Helper [200%] | 20h | 950 | 950 |
| 113 | 7.6.15 | Sh Nozzle Fitup Inspection | 1d | 2018-05-10 19:21 | 2018-05-11 11:21 | 112 | 2018-05-10 19:21 | 2018-05-11 11:21 | 1d | 43.9d | 0d | TEAM_2Shift_Calendar-1 | Fitter [200%] | 4h | 275 | 275 |
| 114 | 7.6.16 | Sh Nozzle Welding Arragement | 2h | 2018-05-11 11:21 | 2018-05-11 13:21 | 113 | 2018-05-11 11:21 | 2018-05-11 13:21 | 2h | 43.9d | 0d | TEAM_2Shift_Calendar-1 | Fitter; Helper | 4h | 237.5 | 237.5 |
| 115 | 7.6.17 | Sh Nozzle Welding | 15h | 2018-05-11 13:21 | 2018-05-14 12:21 | 114 | 2018-05-11 13:21 | 2018-05-14 12:21 | 15h | 43.9d | 0d | TEAM_2Shift_Calendar-1 | SMAW Welding Machine; Helper [200%]; SMAW Welder | 60h | 2,531.25 | 2,531.25 |
| 116 | 7.6.18 | Sh Nozzle Grinding | 3h | 2018-05-14 12:21 | 2018-05-14 15:21 | 115 | 2018-05-14 12:21 | 2018-05-14 15:21 | 3h | 43.9d | 0d | TEAM_2Shift_Calendar-1 | Grinder; Grinding Machine | 6h | 168.75 | 168.75 |
| 117 | 7.6.19 | Sh Nozzle NDE | 4h | 2018-05-14 15:21 | 2018-05-14 19:21 | 116 | 2018-05-14 15:21 | 2018-05-14 19:21 | 4h | 43.9d |  | TEAM_2Shift_Calendar-1 | Fitter; Helper | 8h | 475 | 475 |

Notes:
- 99: N1C,N2C,N4C - 12"NB - 12T - WNRF - 300# N3C - 14"NB - 14T - WNRF - 300#

| ID | WBS | Task | Duration | Start | Finish | Predecessors | Baseline start | Baseline finish | Baseline duration | Total slack | Free slack | Calendar | Resources | Work | Cost | Baseline cost |
| --- | --- | --- | --- | --- | --- | --- | --- | --- | --- | --- | --- | --- | --- | --- | --- | --- |
| 118 | 7.7 | **Bracket Support Fabrication & Welding** | 19.23d | 2018-04-27 17:30 | 2018-05-11 11:21 |  | 2018-04-27 17:30 | 2018-05-11 11:21 | 19.23d | 46.9d |  | TEAM_2Shift_Calendar-1 |  | 75h | 3,031.25 | 3,031.25 |
| 119 | 7.7.1 | Plate Marking (Pad, Base, Gasset, Earthing Lug) | 2h | 2018-04-27 17:30 | 2018-04-27 19:30 | 13, 15, 16, 17 | 2018-04-27 17:30 | 2018-04-27 19:30 | 2h | 62.13d | 0d | TEAM_2Shift_Calendar-1 | Helper; Fitter | 4h | 237.5 | 237.5 |
| 120 | 7.7.2 | Plate Cutting | 5h | 2018-04-27 19:30 | 2018-04-30 08:30 | 119 | 2018-04-27 19:30 | 2018-04-30 08:30 | 5h | 62.13d | 0d | TEAM_2Shift_Calendar-1 | Gas Cutter; OAGM; Helper | 15h | 593.75 | 593.75 |
| 121 | 7.7.3 | Plate E.P | 2h | 2018-04-30 08:30 | 2018-04-30 10:30 | 120 | 2018-04-30 08:30 | 2018-04-30 10:30 | 2h | 62.13d | 15.23d | TEAM_2Shift_Calendar-1 | Grinding Machine; Grinder | 4h | 112.5 | 112.5 |
| 122 | 7.7.4 | Plate Welding | 10h | 2018-05-09 20:21 | 2018-05-10 14:21 | 121, 46 | 2018-05-09 20:21 | 2018-05-10 14:21 | 10h | 46.9d | 0d | TEAM_2Shift_Calendar-1 | SMAW Welding Machine; Helper [200%]; SMAW Welder | 40h | 1,687.5 | 1,687.5 |
| 123 | 7.7.5 | Plate Grinding | 5h | 2018-05-10 14:21 | 2018-05-10 19:21 | 122 | 2018-05-10 14:21 | 2018-05-10 19:21 | 5h | 46.9d | 0d | TEAM_2Shift_Calendar-1 | Grinder; Grinding Machine | 10h | 281.25 | 281.25 |
| 124 | 7.7.6 | DP Check | 1d | 2018-05-10 19:21 | 2018-05-11 11:21 | 123 | 2018-05-10 19:21 | 2018-05-11 11:21 | 1d | 46.9d |  | TEAM_2Shift_Calendar-1 | Helper; Fitter | 2h | 118.75 | 118.75 |
| 125 | 7.8 | **Fastener Fabrication** | 2.38d | 2018-06-05 17:30 | 2018-06-08 11:30 |  | 2018-06-05 17:30 | 2018-06-08 11:30 | 2.38d | 1d |  |  |  | 78h | 2,800 | 2,800 |
| 126 | 7.8.1 | Rod Receipt | 2h | 2018-06-05 17:30 | 2018-06-05 19:30 | 21 | 2018-06-05 17:30 | 2018-06-05 19:30 | 2h | 2.88d | 0d | TEAM_2Shift_Calendar-1 | Store | 2h |  |  |
| 127 | 7.8.2 | Rod Inward Inspection | 4h | 2018-06-05 19:30 | 2018-06-06 07:30 | 126 | 2018-06-05 19:30 | 2018-06-06 07:30 | 4h | 2.88d | 0d | TEAM_2Shift_Calendar-1 | QC Engineer; Fitter | 4h | 275 | 275 |
| 128 | 7.8.3 | Rod Marking | 4h | 2018-06-06 07:30 | 2018-06-06 11:30 | 127 | 2018-06-06 07:30 | 2018-06-06 11:30 | 4h | 2.88d | 0d | TEAM_2Shift_Calendar-1 | Helper; Fitter | 8h | 475 | 475 |
| 129 | 7.8.4 | Rod Cutting | 4h | 2018-06-06 11:30 | 2018-06-06 15:30 | 128 | 2018-06-06 11:30 | 2018-06-06 15:30 | 4h | 2.88d | 0d | TEAM_2Shift_Calendar-1 | Gas Cutter; Helper | 8h | 475 | 475 |
| 130 | 7.8.5 | Rod EP | 4h | 2018-06-06 15:30 | 2018-06-06 19:30 | 129 | 2018-06-06 15:30 | 2018-06-06 19:30 | 4h | 2.88d | 0d | TEAM_2Shift_Calendar-1 | Grinding Machine; Grinder | 8h | 225 | 225 |
| 131 | 7.8.6 | Rod Machining | 3d | 2018-06-06 19:30 | 2018-06-08 11:30 | 130 | 2018-06-06 19:30 | 2018-06-08 11:30 | 3d | 2.88d |  | TEAM_2Shift_Calendar-1 | Grinding Machine; Grinder | 48h | 1,350 | 1,350 |
| 132 | 8 | **Fabrication - V - 505** | 71.13d | 2018-04-25 09:30 | 2018-06-11 18:31 |  | 2018-04-25 09:30 | 2018-06-11 18:31 | 71.13d | 0d |  | TEAM_2Shift_Calendar-1 |  | 909h | 37,323.29 | 37,323.29 |
| 133 | 8.1 | **Initial Preparation** | 10.75d | 2018-04-25 09:30 | 2018-05-03 15:30 |  | 2018-04-25 09:30 | 2018-05-03 15:30 | 10.75d | 40.6d | 0d | TEAM_2Shift_Calendar-1 |  | 162h | 6,137.5 | 6,137.5 |
| 134 | 8.1.1 | Plate Receipt | 2h | 2018-04-25 09:30 | 2018-04-25 11:30 | 14FS+95d | 2018-04-25 09:30 | 2018-04-25 11:30 | 2h | 40.6d | 0d | TEAM_2Shift_Calendar-1 | Store | 2h |  |  |
| 135 | 8.1.2 | Inward Inspection | 9h | 2018-04-25 11:30 | 2018-04-25 20:30 | 134 | 2018-04-25 11:30 | 2018-04-25 20:30 | 9h | 40.6d | 0d | TEAM_2Shift_Calendar-1 | QC Engineer; Fitter | 2h | 68.75 | 68.75 |
| 136 | 8.1.3 | Sh Pl. Mkg | 1d | 2018-04-25 20:30 | 2018-04-26 12:30 | 135 | 2018-04-25 20:30 | 2018-04-26 12:30 | 1d | 40.6d | 0d | TEAM_2Shift_Calendar-1 | Helper; Fitter | 3h | 178.12 | 178.12 |
| 137 | 8.1.4 | Sh Pl. Stamping | 2d | 2018-04-26 12:30 | 2018-04-27 12:30 | 136 | 2018-04-26 12:30 | 2018-04-27 12:30 | 2d | 40.6d | 0d | TEAM_2Shift_Calendar-1 | QC Engineer; Fitter; TPI (Cost) [0.1%] | 5h | 171.88 | 171.88 |
| 138 | 8.1.5 | Sh-L1 Cutting | 4h | 2018-04-27 12:30 | 2018-04-27 16:30 | 137 | 2018-04-27 12:30 | 2018-04-27 16:30 | 4h | 40.6d | 0d | TEAM_2Shift_Calendar-1 | Gas Cutter; OAGM; Helper | 12h | 475 | 475 |
| 139 | 8.1.6 | Sh-L2 Cutting | 4h | 2018-04-27 16:30 | 2018-04-27 20:30 | 138 | 2018-04-27 16:30 | 2018-04-27 20:30 | 4h | 40.6d | 0d | TEAM_2Shift_Calendar-1 | Gas Cutter; OAGM; Helper | 12h | 475 | 475 |
| 140 | 8.1.7 | Sh-L3 Cutting | 4h | 2018-04-27 20:30 | 2018-04-30 08:30 | 139 | 2018-04-27 20:30 | 2018-04-30 08:30 | 4h | 40.6d | 0d | TEAM_2Shift_Calendar-1 | Gas Cutter; OAGM; Helper | 12h | 475 | 475 |
| 141 | 8.1.8 | Sh-L1 E.P | 3h | 2018-04-30 08:30 | 2018-04-30 11:30 | 140 | 2018-04-30 08:30 | 2018-04-30 11:30 | 3h | 40.6d | 0d | TEAM_2Shift_Calendar-1 | Grinding Machine; Grinder | 6h | 168.75 | 168.75 |
| 142 | 8.1.9 | Sh-L2 E.P | 3h | 2018-04-30 11:30 | 2018-04-30 14:30 | 141 | 2018-04-30 11:30 | 2018-04-30 14:30 | 3h | 40.6d | 0d | TEAM_2Shift_Calendar-1 | Grinding Machine; Grinder | 6h | 168.75 | 168.75 |
| 143 | 8.1.10 | Sh-L3 E.P | 3h | 2018-04-30 14:30 | 2018-04-30 17:30 | 142 | 2018-04-30 14:30 | 2018-04-30 17:30 | 3h | 40.6d | 0d | TEAM_2Shift_Calendar-1 | Grinding Machine; Grinder | 6h | 168.75 | 168.75 |
| 144 | 8.1.11 | Sh-L1 Pre-Bending | 3h | 2018-04-30 17:30 | 2018-04-30 20:30 | 143 | 2018-04-30 17:30 | 2018-04-30 20:30 | 3h | 40.6d | 0d | TEAM_2Shift_Calendar-1 | Helper [200%]; Rolling Machine; Fitter | 12h | 506.25 | 506.25 |
| 145 | 8.1.12 | Sh-L2 Pre-Bending | 3h | 2018-04-30 20:30 | 2018-05-02 07:30 | 144 | 2018-04-30 20:30 | 2018-05-02 07:30 | 3h | 40.6d | 0d | TEAM_2Shift_Calendar-1 | Helper [200%]; Rolling Machine; Fitter | 12h | 506.25 | 506.25 |
| 146 | 8.1.13 | Sh-L3 Pre-Bending | 3h | 2018-05-02 07:30 | 2018-05-02 10:30 | 145 | 2018-05-02 07:30 | 2018-05-02 10:30 | 3h | 40.6d | 0d | TEAM_2Shift_Calendar-1 | Helper [200%]; Rolling Machine; Fitter | 12h | 506.25 | 506.25 |
| 147 | 8.1.14 | Sh-L1 Pre-Bend Cut-off | 2h | 2018-05-02 10:30 | 2018-05-02 12:30 | 146 | 2018-05-02 10:30 | 2018-05-02 12:30 | 2h | 40.6d | 0d | TEAM_2Shift_Calendar-1 | OAGM; Gas Cutter | 4h | 137.5 | 137.5 |
| 148 | 8.1.15 | Sh-L2 Pre-Bend Cut-off | 2h | 2018-05-02 12:30 | 2018-05-02 14:30 | 147 | 2018-05-02 12:30 | 2018-05-02 14:30 | 2h | 40.6d | 0d | TEAM_2Shift_Calendar-1 | OAGM; Gas Cutter | 4h | 137.5 | 137.5 |
| 149 | 8.1.16 | Sh-L3 Pre-Bend Cut-off | 2h | 2018-05-02 14:30 | 2018-05-02 16:30 | 148 | 2018-05-02 14:30 | 2018-05-02 16:30 | 2h | 40.6d | 0d | TEAM_2Shift_Calendar-1 | OAGM; Gas Cutter | 4h | 137.5 | 137.5 |
| 150 | 8.1.17 | Sh-L1 E.P | 2h | 2018-05-02 16:30 | 2018-05-02 18:30 | 149 | 2018-05-02 16:30 | 2018-05-02 18:30 | 2h | 40.6d | 0d | TEAM_2Shift_Calendar-1 | Grinding Machine; Grinder | 4h | 112.5 | 112.5 |
| 151 | 8.1.18 | Sh-L2 E.P | 2h | 2018-05-02 18:30 | 2018-05-02 20:30 | 150 | 2018-05-02 18:30 | 2018-05-02 20:30 | 2h | 40.6d | 0d | TEAM_2Shift_Calendar-1 | Grinding Machine; Grinder | 4h | 112.5 | 112.5 |
| 152 | 8.1.19 | Sh-L3 E.P | 2h | 2018-05-02 20:30 | 2018-05-03 06:30 | 151 | 2018-05-02 20:30 | 2018-05-03 06:30 | 2h | 40.6d | 0d | TEAM_2Shift_Calendar-1 | Grinding Machine; Grinder | 4h | 112.5 | 112.5 |
| 153 | 8.1.20 | Sh-L1 Rolling | 3h | 2018-05-03 06:30 | 2018-05-03 09:30 | 152 | 2018-05-03 06:30 | 2018-05-03 09:30 | 3h | 40.6d | 0d | TEAM_2Shift_Calendar-1 | Helper [200%]; Rolling Machine; Fitter | 12h | 506.25 | 506.25 |
| 154 | 8.1.21 | Sh-L2 Rolling | 3h | 2018-05-03 09:30 | 2018-05-03 12:30 | 153 | 2018-05-03 09:30 | 2018-05-03 12:30 | 3h | 40.6d | 0d | TEAM_2Shift_Calendar-1 | Helper [200%]; Rolling Machine; Fitter | 12h | 506.25 | 506.25 |
| 155 | 8.1.22 | Sh-L3 Rolling | 3h | 2018-05-03 12:30 | 2018-05-03 15:30 | 154 | 2018-05-03 12:30 | 2018-05-03 15:30 | 3h | 40.6d |  | TEAM_2Shift_Calendar-1 | Helper [200%]; Rolling Machine; Fitter | 12h | 506.25 | 506.25 |

Notes:
- 138: 2714 x 2000Lg x 14T
- 139: 2714 x 2000Lg x 14T
- 140: 2714 x 1201Lg x 14T
- 153: Ø878 x 2000Lg x 14T
- 154: Ø878 x 2000Lg x 14T
- 155: Ø878 x 1201Lg x 14T

| ID | WBS | Task | Duration | Start | Finish | Predecessors | Baseline start | Baseline finish | Baseline duration | Total slack | Free slack | Calendar | Resources | Work | Cost | Baseline cost |
| --- | --- | --- | --- | --- | --- | --- | --- | --- | --- | --- | --- | --- | --- | --- | --- | --- |
| 156 | 8.2 | **Fitup & Welding** | 10.51d | 2018-05-03 15:30 | 2018-05-09 19:34 |  | 2018-05-03 15:30 | 2018-05-09 19:34 | 10.51d | 40.6d | 0d | TEAM_2Shift_Calendar-1 |  | 192h | 8,292.04 | 8,292.04 |
| 157 | 8.2.1 | Sh-L1 LS Fitup | 3h | 2018-05-03 15:30 | 2018-05-03 18:30 | 133 | 2018-05-03 15:30 | 2018-05-03 18:30 | 3h | 40.6d | 0d | TEAM_2Shift_Calendar-1 | Helper [200%]; SMAW Welder; SMAW Welding Machine; Fitter | 15h | 712.5 | 712.5 |
| 158 | 8.2.2 | Sh-L2 LS Fitup | 3h | 2018-05-03 18:30 | 2018-05-03 21:30 | 157 | 2018-05-03 18:30 | 2018-05-03 21:30 | 3h | 40.6d | 0d | TEAM_2Shift_Calendar-1 | Helper [200%]; SMAW Welder; SMAW Welding Machine; Fitter | 15h | 712.5 | 712.5 |
| 159 | 8.2.3 | Sh-L3 LS Fitup | 3h | 2018-05-03 21:30 | 2018-05-04 08:30 | 158 | 2018-05-03 21:30 | 2018-05-04 08:30 | 3h | 40.6d | 0d | TEAM_2Shift_Calendar-1 | Helper [200%]; SMAW Welder; SMAW Welding Machine; Fitter | 15h | 712.5 | 712.5 |
| 160 | 8.2.4 | Sh-L1,L2,L3 Inspection | 1.26d | 2018-05-04 08:30 | 2018-05-04 18:34 | 159 | 2018-05-04 08:30 | 2018-05-04 18:34 | 1.26d | 40.6d | 0d | TEAM_2Shift_Calendar-1 | Fitter; QC Engineer | 4h | 210.79 | 210.79 |
| 161 | 8.2.5 | Sh-L1 Welding Arrangement | 2h | 2018-05-04 18:34 | 2018-05-04 20:34 | 160 | 2018-05-04 18:34 | 2018-05-04 20:34 | 2h | 40.6d | 0d | TEAM_2Shift_Calendar-1 | Helper; Fitter | 4h | 237.5 | 237.5 |
| 162 | 8.2.6 | Sh-L2 Welding Arrangement | 2h | 2018-05-04 20:34 | 2018-05-05 06:34 | 161 | 2018-05-04 20:34 | 2018-05-05 06:34 | 2h | 40.6d | 0d | TEAM_2Shift_Calendar-1 | Helper; Fitter | 4h | 237.5 | 237.5 |
| 163 | 8.2.7 | Sh-L3 Welding Arrangement | 2h | 2018-05-05 06:34 | 2018-05-05 08:34 | 162 | 2018-05-05 06:34 | 2018-05-05 08:34 | 2h | 40.6d | 0d | TEAM_2Shift_Calendar-1 | Helper; Fitter | 4h | 237.5 | 237.5 |
| 164 | 8.2.8 | Sh-L1 LS Welding | 5h | 2018-05-05 08:34 | 2018-05-05 13:34 | 163 | 2018-05-05 08:34 | 2018-05-05 13:34 | 5h | 40.6d | 0d | TEAM_2Shift_Calendar-1 | SMAW Welder; SMAW Welding Machine; Helper [200%] | 20h | 843.75 | 843.75 |
| 165 | 8.2.9 | Sh-L2 LS Welding | 5h | 2018-05-05 13:34 | 2018-05-05 18:34 | 164 | 2018-05-05 13:34 | 2018-05-05 18:34 | 5h | 40.6d | 0d | TEAM_2Shift_Calendar-1 | SMAW Welder; SMAW Welding Machine; Helper [200%] | 20h | 843.75 | 843.75 |
| 166 | 8.2.10 | Sh-L3 LS Welding | 5h | 2018-05-05 18:34 | 2018-05-07 07:34 | 165 | 2018-05-05 18:34 | 2018-05-07 07:34 | 5h | 40.6d | 0d | TEAM_2Shift_Calendar-1 | SMAW Welder; SMAW Welding Machine; Helper [200%] | 20h | 843.75 | 843.75 |
| 167 | 8.2.11 | Sh-L1 LS Backchip / DP Check | 2h | 2018-05-07 07:34 | 2018-05-07 09:34 | 166 | 2018-05-07 07:34 | 2018-05-07 09:34 | 2h | 40.6d | 0d | TEAM_2Shift_Calendar-1 | Grinding Machine; Grinder | 4h | 112.5 | 112.5 |
| 168 | 8.2.12 | Sh-L2 LS Backchip / DP Check | 2h | 2018-05-07 09:34 | 2018-05-07 11:34 | 167 | 2018-05-07 09:34 | 2018-05-07 11:34 | 2h | 40.6d | 0d | TEAM_2Shift_Calendar-1 | Grinding Machine; Grinder | 4h | 112.5 | 112.5 |
| 169 | 8.2.13 | Sh-L3 LS Backchip / DP Check | 2h | 2018-05-07 11:34 | 2018-05-07 13:34 | 168 | 2018-05-07 11:34 | 2018-05-07 13:34 | 2h | 40.6d | 0d | TEAM_2Shift_Calendar-1 | Grinding Machine; Grinder | 4h | 112.5 | 112.5 |
| 170 | 8.2.14 | Sh-Backchip Welding L1,L2,L3 | 5h | 2018-05-07 13:34 | 2018-05-07 18:34 | 169 | 2018-05-07 13:34 | 2018-05-07 18:34 | 5h | 40.6d | 0d | TEAM_2Shift_Calendar-1 | SMAW Welder; SMAW Welding Machine; Helper [200%] | 20h | 843.75 | 843.75 |
| 171 | 8.2.15 | Sh-L1 Re-rolling | 3h | 2018-05-07 18:34 | 2018-05-07 21:34 | 170 | 2018-05-07 18:34 | 2018-05-07 21:34 | 3h | 40.6d | 0d | TEAM_2Shift_Calendar-1 | Helper [200%]; Fitter | 9h | 506.25 | 506.25 |
| 172 | 8.2.16 | Sh-L2 Re-rolling | 3h | 2018-05-07 21:34 | 2018-05-08 08:34 | 171 | 2018-05-07 21:34 | 2018-05-08 08:34 | 3h | 40.6d | 0d | TEAM_2Shift_Calendar-1 | Helper [200%]; Fitter | 9h | 506.25 | 506.25 |
| 173 | 8.2.17 | Sh-L3 Re-rolling | 3h | 2018-05-08 08:34 | 2018-05-08 11:34 | 172 | 2018-05-08 08:34 | 2018-05-08 11:34 | 3h | 40.6d | 0d | TEAM_2Shift_Calendar-1 | Helper [200%]; Fitter | 9h | 506.25 | 506.25 |
| 174 | 8.2.18 | Sh-L1 Radiography | 1d | 2018-05-08 11:34 | 2018-05-08 19:34 | 173 | 2018-05-08 11:34 | 2018-05-08 19:34 | 1d | 40.6d | 0d | TEAM_2Shift_Calendar-1 | SC (Work) | 4h |  |  |
| 175 | 8.2.19 | Sh-L2 Radiography | 1d | 2018-05-08 19:34 | 2018-05-09 11:34 | 174 | 2018-05-08 19:34 | 2018-05-09 11:34 | 1d | 40.6d | 0d | TEAM_2Shift_Calendar-1 | SC (Work) | 4h |  |  |
| 176 | 8.2.20 | Sh-L3 Radiography | 1d | 2018-05-09 11:34 | 2018-05-09 19:34 | 175 | 2018-05-09 11:34 | 2018-05-09 19:34 | 1d | 40.6d | 0d | TEAM_2Shift_Calendar-1 | SC (Work) | 4h |  |  |
| 177 | 8.3 | **Shell CS - Top shell to cone** | 3.38d | 2018-05-09 11:34 | 2018-05-11 06:34 |  | 2018-05-09 11:34 | 2018-05-11 06:34 | 3.38d | 43.87d | 3.27d | TEAM_2Shift_Calendar-1 |  | 62h | 2,418.75 | 2,418.75 |
| 178 | 8.3.1 | E.P for Cir-Seam | 2h | 2018-05-09 11:34 | 2018-05-09 13:34 | 174, 175 | 2018-05-09 11:34 | 2018-05-09 13:34 | 2h | 43.87d | 0d | TEAM_2Shift_Calendar-1 | Grinding Machine; Grinder | 4h | 112.5 | 112.5 |
| 179 | 8.3.2 | CS-1 Fitup | 2h | 2018-05-09 13:34 | 2018-05-09 15:34 | 178 | 2018-05-09 13:34 | 2018-05-09 15:34 | 2h | 43.87d | 0d | TEAM_2Shift_Calendar-1 | Helper [200%]; SMAW Welder; SMAW Welding Machine; Fitter | 10h | 475 | 475 |
| 180 | 8.3.3 | CS-1 Inspection | 2h | 2018-05-09 15:34 | 2018-05-09 17:34 | 179 | 2018-05-09 15:34 | 2018-05-09 17:34 | 2h | 43.87d | 0d | TEAM_2Shift_Calendar-1 | Fitter | 2h | 137.5 | 137.5 |
| 181 | 8.3.4 | CS-1 Welding | 5h | 2018-05-09 17:34 | 2018-05-10 06:34 | 180 | 2018-05-09 17:34 | 2018-05-10 06:34 | 5h | 43.87d | 0d | TEAM_2Shift_Calendar-1 | SMAW Welder; SMAW Welding Machine; Helper [200%] | 20h | 843.75 | 843.75 |
| 182 | 8.3.5 | CS-1 Backchip / DP Check | 2h | 2018-05-10 06:34 | 2018-05-10 08:34 | 181 | 2018-05-10 06:34 | 2018-05-10 08:34 | 2h | 43.87d | 0d | TEAM_2Shift_Calendar-1 | Grinding Machine; Grinder | 4h | 112.5 | 112.5 |
| 183 | 8.3.6 | CS-1 Backchip Welding | 3h | 2018-05-10 08:34 | 2018-05-10 11:34 | 182 | 2018-05-10 08:34 | 2018-05-10 11:34 | 3h | 43.87d | 0d | TEAM_2Shift_Calendar-1 | SMAW Welder; SMAW Welding Machine; Helper [200%] | 12h | 506.25 | 506.25 |
| 184 | 8.3.7 | CS-1 Flush Grinding | 2h | 2018-05-10 11:34 | 2018-05-10 13:34 | 183 | 2018-05-10 11:34 | 2018-05-10 13:34 | 2h | 43.87d | 0d | TEAM_2Shift_Calendar-1 | Grinding Machine; Grinder | 4h | 112.5 | 112.5 |
| 185 | 8.3.8 | CS-1 DP Check | 1h | 2018-05-10 13:34 | 2018-05-10 14:34 | 184 | 2018-05-10 13:34 | 2018-05-10 14:34 | 1h | 43.87d | 0d | TEAM_2Shift_Calendar-1 | Helper; Fitter | 2h | 118.75 | 118.75 |
| 186 | 8.3.9 | CS-1 Radiography | 1d | 2018-05-10 14:34 | 2018-05-11 06:34 | 185 | 2018-05-10 14:34 | 2018-05-11 06:34 | 1d | 43.87d |  | TEAM_2Shift_Calendar-1 | SC (Work) | 4h |  |  |

Notes:
- 164: 1.61kg/m
- 165: 1.61kg/m
- 166: 1.61kg/m
- 181: 1.61kg/m

| ID | WBS | Task | Duration | Start | Finish | Predecessors | Baseline start | Baseline finish | Baseline duration | Total slack | Free slack | Calendar | Resources | Work | Cost | Baseline cost |
| --- | --- | --- | --- | --- | --- | --- | --- | --- | --- | --- | --- | --- | --- | --- | --- | --- |
| 187 | 8.4 | **Shell CS - Cone to bottom shell** | 5.65d | 2018-05-09 19:34 | 2018-05-14 16:44 |  | 2018-05-09 19:34 | 2018-05-14 16:44 | 5.65d | 40.6d | 0d | TEAM_2Shift_Calendar-1 |  | 92h | 3,731.25 | 3,731.25 |
| 188 | 8.4.1 | E.P for Cir-Seam | 2h | 2018-05-09 19:34 | 2018-05-09 21:34 | 175, 176 | 2018-05-09 19:34 | 2018-05-09 21:34 | 2h | 40.6d | 0d | TEAM_2Shift_Calendar-1 | Grinding Machine; Grinder | 4h | 112.5 | 112.5 |
| 189 | 8.4.2 | CS-2 Fitup | 3h | 2018-05-09 21:34 | 2018-05-10 08:34 | 188 | 2018-05-09 21:34 | 2018-05-10 08:34 | 3h | 40.6d | 0d | TEAM_2Shift_Calendar-1 | Helper [200%]; SMAW Welder; SMAW Welding Machine; Fitter | 15h | 712.5 | 712.5 |
| 190 | 8.4.3 | CS-2 Inspection | 2h | 2018-05-10 08:34 | 2018-05-10 10:34 | 189 | 2018-05-10 08:34 | 2018-05-10 10:34 | 2h | 40.6d | 0d | TEAM_2Shift_Calendar-1 | Fitter [200%] | 4h | 275 | 275 |
| 191 | 8.4.4 | CS-2 Welding | 5h | 2018-05-10 10:34 | 2018-05-10 15:34 | 190 | 2018-05-10 10:34 | 2018-05-10 15:34 | 5h | 40.6d | 0d | TEAM_2Shift_Calendar-1 | SMAW Welder; SMAW Welding Machine; Helper [200%] | 20h | 843.75 | 843.75 |
| 192 | 8.4.5 | CS-2 Backchip | 3h | 2018-05-10 15:34 | 2018-05-10 18:34 | 191 | 2018-05-10 15:34 | 2018-05-10 18:34 | 3h | 40.6d | 0d | TEAM_2Shift_Calendar-1 | Grinding Machine; Grinder | 6h | 168.75 | 168.75 |
| 193 | 8.4.6 | CS-2 Backchip Welding | 3h | 2018-05-10 18:34 | 2018-05-10 21:34 | 192 | 2018-05-10 18:34 | 2018-05-10 21:34 | 3h | 40.6d | 0d | TEAM_2Shift_Calendar-1 | SMAW Welder; SMAW Welding Machine; Helper [200%] | 12h | 506.25 | 506.25 |
| 194 | 8.4.7 | CS-2 Flush Grinding | 2h | 2018-05-10 21:34 | 2018-05-11 07:34 | 193 | 2018-05-10 21:34 | 2018-05-11 07:34 | 2h | 40.6d | 0d | TEAM_2Shift_Calendar-1 | Grinding Machine; Grinder | 4h | 112.5 | 112.5 |
| 195 | 8.4.8 | CS-2 DP Check | 2h | 2018-05-11 07:34 | 2018-05-11 09:34 | 194 | 2018-05-11 07:34 | 2018-05-11 09:34 | 2h | 40.6d | 0d | TEAM_2Shift_Calendar-1 | Helper; Fitter | 4h | 237.5 | 237.5 |
| 196 | 8.4.9 | CS-2 Radiography | 1.15d | 2018-05-11 09:34 | 2018-05-11 18:44 | 195 | 2018-05-11 09:34 | 2018-05-11 18:44 | 1.15d | 40.6d | 0d | TEAM_2Shift_Calendar-1 | SC (Work) | 4h |  |  |
| 197 | 8.4.10 | Sh Orienation Mkg | 1d | 2018-05-11 18:44 | 2018-05-14 10:44 | 196 | 2018-05-11 18:44 | 2018-05-14 10:44 | 1d | 40.6d | 0d | TEAM_2Shift_Calendar-1 | Fitter; Helper | 4h | 237.5 | 237.5 |
| 198 | 8.4.11 | Sh Extra Length Cutting | 3h | 2018-05-14 10:44 | 2018-05-14 13:44 | 197 | 2018-05-14 10:44 | 2018-05-14 13:44 | 3h | 40.6d | 0d | TEAM_2Shift_Calendar-1 | Gas Cutter; OAGM; Helper | 9h | 356.25 | 356.25 |
| 199 | 8.4.12 | Sh E.P of Cir-Seam Side | 3h | 2018-05-14 13:44 | 2018-05-14 16:44 | 198 | 2018-05-14 13:44 | 2018-05-14 16:44 | 3h | 40.6d |  | TEAM_2Shift_Calendar-1 | Grinding Machine; Grinder | 6h | 168.75 | 168.75 |
| 200 | 8.5 | **Body Flange Welding (Top & Bottom)** | 3.62d | 2018-05-14 16:44 | 2018-05-16 13:44 |  | 2018-05-14 16:44 | 2018-05-16 13:44 | 3.62d | 40.6d |  | TEAM_2Shift_Calendar-1 |  | 48h | 1,918.75 | 1,918.75 |
| 201 | 8.5.1 | Body Flange-1 Fitup | 2h | 2018-05-14 16:44 | 2018-05-14 18:44 | 177, 187 | 2018-05-14 16:44 | 2018-05-14 18:44 | 2h | 40.6d | 0d | TEAM_2Shift_Calendar-1 | Helper [200%]; SMAW Welder; SMAW Welding Machine; Fitter | 10h | 475 | 475 |
| 202 | 8.5.2 | Body Flange-1 Inspection | 1d | 2018-05-14 18:44 | 2018-05-15 10:44 | 201 | 2018-05-14 18:44 | 2018-05-15 10:44 | 1d | 40.6d | 0d | TEAM_2Shift_Calendar-1 | Fitter [200%] | 2h | 137.5 | 137.5 |
| 203 | 8.5.3 | Body Flange-1 Welding | 5h | 2018-05-15 10:44 | 2018-05-15 15:44 | 202 | 2018-05-15 10:44 | 2018-05-15 15:44 | 5h | 40.6d | 0d | TEAM_2Shift_Calendar-1 | SMAW Welder; SMAW Welding Machine; Helper [200%] | 20h | 843.75 | 843.75 |
| 204 | 8.5.4 | Body Flange-1 Backchip | 2h | 2018-05-15 15:44 | 2018-05-15 17:44 | 203 | 2018-05-15 15:44 | 2018-05-15 17:44 | 2h | 40.6d | 0d | TEAM_2Shift_Calendar-1 | Grinding Machine; Grinder | 4h | 112.5 | 112.5 |
| 205 | 8.5.5 | Body Flange-1 Flush Grinding | 2h | 2018-05-15 17:44 | 2018-05-15 19:44 | 204 | 2018-05-15 17:44 | 2018-05-15 19:44 | 2h | 40.6d | 0d | TEAM_2Shift_Calendar-1 | Grinding Machine; Grinder | 4h | 112.5 | 112.5 |
| 206 | 8.5.6 | Body Flange-1 DP Check | 2h | 2018-05-15 19:44 | 2018-05-15 21:44 | 205 | 2018-05-15 19:44 | 2018-05-15 21:44 | 2h | 40.6d | 0d | TEAM_2Shift_Calendar-1 | Helper; Fitter | 4h | 237.5 | 237.5 |
| 207 | 8.5.7 | Body Flange-1 Radiography | 1d | 2018-05-15 21:44 | 2018-05-16 13:44 | 206 | 2018-05-15 21:44 | 2018-05-16 13:44 | 1d | 40.6d |  | TEAM_2Shift_Calendar-1 | SC (Work) | 4h |  |  |
| 208 | 8.6 | **Nozzle Fabrication** | 49.87d | 2018-05-09 19:34 | 2018-06-11 18:31 |  | 2018-05-09 19:34 | 2018-06-11 18:31 | 49.87d | 0d |  | TEAM_2Shift_Calendar-1 |  | 200h | 8,993.75 | 8,993.75 |
| 209 | 8.6.1 | Nozzle Flange and Pipe Receipt | 1d | 2018-06-05 17:30 | 2018-06-06 09:30 | 18 | 2018-06-05 17:30 | 2018-06-06 09:30 | 1d | 0d |  | TEAM_2Shift_Calendar-1 | Store | 2h |  |  |
| 210 | 8.6.2 | Nozzle Pipe Mkg | 2h | 2018-06-06 09:30 | 2018-06-06 11:30 | 209 | 2018-06-06 09:30 | 2018-06-06 11:30 | 2h | 0d |  | TEAM_2Shift_Calendar-1 | Helper; Fitter | 4h | 237.5 | 237.5 |
| 211 | 8.6.3 | Nozzle Pipe Mkg Inspection | 1d | 2018-06-06 11:30 | 2018-06-06 19:30 | 210 | 2018-06-06 11:30 | 2018-06-06 19:30 | 1d | 0d |  | TEAM_2Shift_Calendar-1 | Fitter | 1h | 68.75 | 68.75 |
| 212 | 8.6.4 | Nozzle Pipe Stamping | 2.88d | 2018-06-06 19:30 | 2018-06-08 10:31 | 211 | 2018-06-06 19:30 | 2018-06-08 10:31 | 2.88d | 0d |  | TEAM_2Shift_Calendar-1 | Fitter; QC Engineer; TPI (Cost) [0.1%] | 4h | 137.5 | 137.5 |
| 213 | 8.6.5 | Nozzle Pipe Cutting | 2h | 2018-06-08 10:31 | 2018-06-08 12:31 | 212 | 2018-06-08 10:31 | 2018-06-08 12:31 | 2h | 0d |  | TEAM_2Shift_Calendar-1 | Gas Cutter; OAGM; Helper | 6h | 237.5 | 237.5 |
| 214 | 8.6.6 | Nozzle Pipe E.P | 2h | 2018-06-08 12:31 | 2018-06-08 14:31 | 213 | 2018-06-08 12:31 | 2018-06-08 14:31 | 2h | 0d |  | TEAM_2Shift_Calendar-1 | Grinding Machine; Grinder | 4h | 112.5 | 112.5 |
| 215 | 8.6.7 | Nozzle Flange + Pipe Fitup | 3h | 2018-06-08 14:31 | 2018-06-08 17:31 | 214 | 2018-06-08 14:31 | 2018-06-08 17:31 | 3h | 0d |  | TEAM_2Shift_Calendar-1 | Helper [200%]; SMAW Welder; SMAW Welding Machine; Fitter | 15h | 712.5 | 712.5 |
| 216 | 8.6.8 | Nozzle Flange + Pipe Fitup Inspection | 1d | 2018-06-08 17:31 | 2018-06-11 09:31 | 215 | 2018-06-08 17:31 | 2018-06-11 09:31 | 1d | 0d |  | TEAM_2Shift_Calendar-1 | Fitter [200%] | 2h | 137.5 | 137.5 |
| 217 | 8.6.9 | Nozzle Flange + Pipe Root Tig Welding | 4h | 2018-06-11 09:31 | 2018-06-11 13:31 | 216 | 2018-06-11 09:31 | 2018-06-11 13:31 | 4h | 0d |  | TEAM_2Shift_Calendar-1 | TIG Welder; TIG Welding Machine; Helper [200%] | 16h | 900 | 900 |
| 218 | 8.6.10 | Nozzle Flange + Pipe Final Welding | 5h | 2018-06-11 13:31 | 2018-06-11 18:31 | 217 | 2018-06-11 13:31 | 2018-06-11 18:31 | 5h | 0d |  | TEAM_2Shift_Calendar-1 | SMAW Welder; SMAW Welding Machine; Helper [200%] | 20h | 843.75 | 843.75 |
| 219 | 8.6.11 | Nozzle orientation Marking & Inspection | 3h | 2018-05-09 19:34 | 2018-05-10 06:34 | 156 | 2018-05-09 19:34 | 2018-05-10 06:34 | 3h | 43.99d | 0d | TEAM_2Shift_Calendar-1 | Fitter | 3h | 206.25 | 206.25 |
| 220 | 8.6.12 | Sh Nozzle Opening - V2 & N6 - 2Nos | 5h | 2018-05-10 06:34 | 2018-05-10 11:34 | 219 | 2018-05-10 06:34 | 2018-05-10 11:34 | 5h | 43.99d | 0d | TEAM_2Shift_Calendar-1 | Gas Cutter; OAGM; Helper | 15h | 593.75 | 593.75 |
| 221 | 8.6.13 | Sh Nozzle Opening E.P | 3h | 2018-05-10 11:34 | 2018-05-10 14:34 | 220 | 2018-05-10 11:34 | 2018-05-10 14:34 | 3h | 43.99d | 0d | TEAM_2Shift_Calendar-1 | Grinding Machine; Grinder | 6h | 168.75 | 168.75 |
| 222 | 8.6.14 | Sh Nozzle Fitup - V2 & N6 - 2Nos | 4h | 2018-05-10 14:34 | 2018-05-10 18:34 | 221 | 2018-05-10 14:34 | 2018-05-10 18:34 | 4h | 43.99d | 0d | TEAM_2Shift_Calendar-1 | Fitter; SMAW Welder; SMAW Welding Machine; Helper [200%] | 20h | 950 | 950 |
| 223 | 8.6.15 | Sh Nozzle Fitup Inspection | 1d | 2018-05-10 18:34 | 2018-05-11 10:34 | 222 | 2018-05-10 18:34 | 2018-05-11 10:34 | 1d | 43.99d | 0d | TEAM_2Shift_Calendar-1 | Fitter [200%] | 4h | 275 | 275 |
| 224 | 8.6.16 | Sh Nozzle Welding Arragement | 2h | 2018-05-11 10:34 | 2018-05-11 12:34 | 223 | 2018-05-11 10:34 | 2018-05-11 12:34 | 2h | 43.99d | 0d | TEAM_2Shift_Calendar-1 | Fitter; Helper | 4h | 237.5 | 237.5 |
| 225 | 8.6.17 | Sh Nozzle Welding | 15h | 2018-05-11 12:34 | 2018-05-14 11:34 | 224 | 2018-05-11 12:34 | 2018-05-14 11:34 | 15h | 43.99d | 0d | TEAM_2Shift_Calendar-1 | SMAW Welding Machine; Helper [200%]; SMAW Welder | 60h | 2,531.25 | 2,531.25 |
| 226 | 8.6.18 | Sh Nozzle Grinding | 3h | 2018-05-14 11:34 | 2018-05-14 14:34 | 225 | 2018-05-14 11:34 | 2018-05-14 14:34 | 3h | 43.99d | 0d | TEAM_2Shift_Calendar-1 | Grinder; Grinding Machine | 6h | 168.75 | 168.75 |
| 227 | 8.6.19 | Sh Nozzle NDE | 4h | 2018-05-14 14:34 | 2018-05-14 18:34 | 226 | 2018-05-14 14:34 | 2018-05-14 18:34 | 4h | 43.99d |  | TEAM_2Shift_Calendar-1 | Fitter; Helper | 8h | 475 | 475 |

Notes:
- 209: N1C,N2C,N4C - 12"NB - 12T - WNRF - 300# N3C - 14"NB - 14T - WNRF - 300#

| ID | WBS | Task | Duration | Start | Finish | Predecessors | Baseline start | Baseline finish | Baseline duration | Total slack | Free slack | Calendar | Resources | Work | Cost | Baseline cost |
| --- | --- | --- | --- | --- | --- | --- | --- | --- | --- | --- | --- | --- | --- | --- | --- | --- |
| 228 | 8.7 | **Bracket Support Fabrication & Welding** | 19.13d | 2018-04-27 17:30 | 2018-05-11 10:34 |  | 2018-04-27 17:30 | 2018-05-11 10:34 | 19.13d | 46.99d |  | TEAM_2Shift_Calendar-1 |  | 75h | 3,031.25 | 3,031.25 |
| 229 | 8.7.1 | Plate Marking (Pad, Base, Gasset, Earthing Lug) | 2h | 2018-04-27 17:30 | 2018-04-27 19:30 | 13, 15, 16, 17 | 2018-04-27 17:30 | 2018-04-27 19:30 | 2h | 62.13d | 0d | TEAM_2Shift_Calendar-1 | Helper; Fitter | 4h | 237.5 | 237.5 |
| 230 | 8.7.2 | Plate Cutting | 5h | 2018-04-27 19:30 | 2018-04-30 08:30 | 229 | 2018-04-27 19:30 | 2018-04-30 08:30 | 5h | 62.13d | 0d | TEAM_2Shift_Calendar-1 | Gas Cutter; OAGM; Helper | 15h | 593.75 | 593.75 |
| 231 | 8.7.3 | Plate E.P | 2h | 2018-04-30 08:30 | 2018-04-30 10:30 | 230 | 2018-04-30 08:30 | 2018-04-30 10:30 | 2h | 62.13d | 15.13d | TEAM_2Shift_Calendar-1 | Grinding Machine; Grinder | 4h | 112.5 | 112.5 |
| 232 | 8.7.4 | Plate Welding | 10h | 2018-05-09 19:34 | 2018-05-10 13:34 | 231, 156 | 2018-05-09 19:34 | 2018-05-10 13:34 | 10h | 46.99d | 0d | TEAM_2Shift_Calendar-1 | SMAW Welding Machine; Helper [200%]; SMAW Welder | 40h | 1,687.5 | 1,687.5 |
| 233 | 8.7.5 | Plate Grinding | 5h | 2018-05-10 13:34 | 2018-05-10 18:34 | 232 | 2018-05-10 13:34 | 2018-05-10 18:34 | 5h | 46.99d | 0d | TEAM_2Shift_Calendar-1 | Grinder; Grinding Machine | 10h | 281.25 | 281.25 |
| 234 | 8.7.6 | DP Check | 1d | 2018-05-10 18:34 | 2018-05-11 10:34 | 233 | 2018-05-10 18:34 | 2018-05-11 10:34 | 1d | 46.99d |  | TEAM_2Shift_Calendar-1 | Helper; Fitter | 2h | 118.75 | 118.75 |
| 235 | 8.8 | **Fastener Fabrication** | 2.38d | 2018-06-05 17:30 | 2018-06-08 11:30 |  | 2018-06-05 17:30 | 2018-06-08 11:30 | 2.38d | 1d |  |  |  | 78h | 2,800 | 2,800 |
| 236 | 8.8.1 | Rod Receipt | 2h | 2018-06-05 17:30 | 2018-06-05 19:30 | 21 | 2018-06-05 17:30 | 2018-06-05 19:30 | 2h | 2.88d | 0d | TEAM_2Shift_Calendar-1 | Store | 2h |  |  |
| 237 | 8.8.2 | Rod Inward Inspection | 4h | 2018-06-05 19:30 | 2018-06-06 07:30 | 236 | 2018-06-05 19:30 | 2018-06-06 07:30 | 4h | 2.88d | 0d | TEAM_2Shift_Calendar-1 | QC Engineer; Fitter | 4h | 275 | 275 |
| 238 | 8.8.3 | Rod Marking | 4h | 2018-06-06 07:30 | 2018-06-06 11:30 | 237 | 2018-06-06 07:30 | 2018-06-06 11:30 | 4h | 2.88d | 0d | TEAM_2Shift_Calendar-1 | Helper; Fitter | 8h | 475 | 475 |
| 239 | 8.8.4 | Rod Cutting | 4h | 2018-06-06 11:30 | 2018-06-06 15:30 | 238 | 2018-06-06 11:30 | 2018-06-06 15:30 | 4h | 2.88d | 0d | TEAM_2Shift_Calendar-1 | Gas Cutter; Helper | 8h | 475 | 475 |
| 240 | 8.8.5 | Rod EP | 4h | 2018-06-06 15:30 | 2018-06-06 19:30 | 239 | 2018-06-06 15:30 | 2018-06-06 19:30 | 4h | 2.88d | 0d | TEAM_2Shift_Calendar-1 | Grinding Machine; Grinder | 8h | 225 | 225 |
| 241 | 8.8.6 | Rod Machining | 3d | 2018-06-06 19:30 | 2018-06-08 11:30 | 240 | 2018-06-06 19:30 | 2018-06-08 11:30 | 3d | 2.88d |  | TEAM_2Shift_Calendar-1 | Grinding Machine; Grinder | 48h | 1,350 | 1,350 |
| 242 | 9 | **Final Assembly & Hydrotest Test** | 4d | 2018-06-11 18:31 | 2018-06-13 18:31 |  | 2018-06-11 18:31 | 2018-06-13 18:31 | 4d | 0d |  | TEAM_2Shift_Calendar-1 |  | 9h | 396.88 | 396.88 |
| 243 | 9.1 | Hydrotest | 1d | 2018-06-11 18:31 | 2018-06-12 10:31 | 22, 132 | 2018-06-11 18:31 | 2018-06-12 10:31 | 1d | 0d |  | TEAM_2Shift_Calendar-1 | Helper [200%]; Fitter [200%] | 5h | 296.88 | 296.88 |
| 244 | 9.2 | TPI Inspection | 2d | 2018-06-12 10:31 | 2018-06-13 10:31 | 243 | 2018-06-12 10:31 | 2018-06-13 10:31 | 2d | 0d |  | TEAM_2Shift_Calendar-1 | QC Engineer; TPI (Cost) [0.1%] | 2h |  |  |
| 245 | 9.3 | De-watering & Drying | 1d | 2018-06-13 10:31 | 2018-06-13 18:31 | 244 | 2018-06-13 10:31 | 2018-06-13 18:31 | 1d | 0d |  | TEAM_2Shift_Calendar-1 | Helper [200%] | 2h | 100 | 100 |
| 246 | 10 | **Cleaning & Painting** | 8d | 2018-06-13 18:31 | 2018-06-18 18:31 |  | 2018-06-13 18:31 | 2018-06-18 18:31 | 8d | 0d |  | TEAM_2Shift_Calendar-1 |  | 50h | 118.75 | 118.75 |
| 247 | 10.1 | Blast Cleaning Arrangement | 1d | 2018-06-13 18:31 | 2018-06-14 10:31 | 242 | 2018-06-13 18:31 | 2018-06-14 10:31 | 1d | 0d |  | TEAM_2Shift_Calendar-1 | Store | 4h |  |  |
| 248 | 10.2 | Transport for Blast Cleaning | 1d | 2018-06-14 10:31 | 2018-06-14 18:31 | 247 | 2018-06-14 10:31 | 2018-06-14 18:31 | 1d | 0d |  | TEAM_2Shift_Calendar-1 | Fitter [200%]; Helper [200%] | 2h | 118.75 | 118.75 |
| 249 | 10.3 | Blast Cleaning | 1d | 2018-06-14 18:31 | 2018-06-15 10:31 | 248 | 2018-06-14 18:31 | 2018-06-15 10:31 | 1d | 0d |  | TEAM_2Shift_Calendar-1 | SC (Work) | 15h |  |  |
| 250 | 10.4 | Primer Painting | 1d | 2018-06-15 10:31 | 2018-06-15 18:31 | 249 | 2018-06-15 10:31 | 2018-06-15 18:31 | 1d | 0d |  | TEAM_2Shift_Calendar-1 | SC (Work) | 8h |  |  |
| 251 | 10.5 | Return From Blast Cleaning | 1d | 2018-06-15 18:31 | 2018-06-16 10:31 | 250 | 2018-06-15 18:31 | 2018-06-16 10:31 | 1d | 0d |  | TEAM_2Shift_Calendar-1 | Store | 2h |  |  |
| 252 | 10.6 | Top Coat Painting | 1d | 2018-06-16 10:31 | 2018-06-16 18:31 | 251 | 2018-06-16 10:31 | 2018-06-16 18:31 | 1d | 0d |  | TEAM_2Shift_Calendar-1 | Painter | 8h |  |  |
| 253 | 10.7 | Painting Inspection | 1d | 2018-06-16 18:31 | 2018-06-18 10:31 | 252 | 2018-06-16 18:31 | 2018-06-18 10:31 | 1d | 0d |  | TEAM_2Shift_Calendar-1 | Painter | 3h |  |  |
| 254 | 10.8 | Despatch | 1d | 2018-06-18 10:31 | 2018-06-18 18:31 | 253 | 2018-06-18 10:31 | 2018-06-18 18:31 | 1d | 0d |  | TEAM_2Shift_Calendar-1 | Store | 8h |  |  |
