# 4248-KMML

Schedule from MS Project, 2018-02-02 to 2018-05-21, costs in Rs., A marks actual dates.

## Calendars

- TEAM_Stand_Calendar: Mon-Sat 08:30-12:30, 13:30-17:30; Sun off. Exceptions (off unless hours are given): 2017-01-13 to 2023-08-12 (2nd Sat, recurring), 2017-01-26 to 2036-01-26 (Republic Day, recurring), 2017-01-27 to 2023-08-26 (4th Sat, recurring), 2017-05-01 to 2036-05-01 (May Day, recurring), 2017-08-15 to 2036-08-15 (Independence Day, recurring), 2017-10-02 to 2036-10-02 (Gandhi Jayanti, recurring).
- TEAM_2Shift_Calendar-1: Mon-Sat 06:00-22:00; Sun off. Exceptions (off unless hours are given): 2017-01-13 to 2023-02-11 (2nd Sat, recurring), 2017-01-26 to 2036-01-26 (Republic Day, recurring), 2017-01-27 to 2023-08-26 (4th Sat, recurring), 2017-05-01 to 2036-05-01 (May Day, recurring), 2017-08-15 to 2036-08-15 (Indepdence Day, recurring), 2017-10-02 to 2036-10-02 (Gandhi Jayanti, recurring).

## Resources

| Resource | Rate |
| --- | --- |
| Client |  |
| CNC Lathe |  |
| Crane |  |
| Cutting Machine |  |
| Design Engineer |  |
| Draftman |  |
| Driller | 68.75 |
| Finance |  |
| Fitter | 68.75 |
| Foreman |  |
| Forming Machine |  |
| Gas Cutter | 68.75 |
| Grinder | 56.25 |
| Grinding Machine |  |
| Helper | 50 |
| HOD |  |
| Lathe |  |
| Lathe Operator | 120 |
| Marketing |  |
| Milling Machine |  |
| OAGM |  |
| Plate Bending Machine |  |
| PM |  |
| PMO Head |  |
| PPC Engineer |  |
| Production Engineer |  |
| Purchase Engineer |  |
| QC Engineer |  |
| Radial Drilling Machine |  |
| Rolling Machine |  |
| SAW Machine |  |
| SAW Welder | 68.75 |
| SC (Work) |  |
| SMAW Welder | 68.75 |
| SMAW Welding Machine |  |
| Store |  |
| TIG Welder | 125 |
| TIG Welding Machine |  |

## Schedule

| ID | WBS | Task | Duration | Start | Finish | Predecessors | Complete | Remaining | Baseline start | Baseline finish | Baseline duration | Total slack | Calendar | Resources | Work | Actual work | Cost | Baseline cost | Actual cost |
| --- | --- | --- | --- | --- | --- | --- | --- | --- | --- | --- | --- | --- | --- | --- | --- | --- | --- | --- | --- |
| 1 | 1 | **Project Initiation** | 7d | 2018-02-02 08:30 A | 2018-02-09 17:30 A |  | 100% |  | 2018-02-02 08:30 | 2018-02-07 17:30 | 5d |  |  |  | 9h | 9h |  |  |  |
| 2 | 1.1 | PO Receipt | 1d | 2018-02-02 08:30 A | 2018-02-02 17:30 A |  | 100% |  | 2018-02-02 08:30 | 2018-02-02 17:30 | 1d |  |  | Marketing | 2h | 2h |  |  |  |
| 3 | 1.2 | Work Order | 1d | 2018-02-03 08:30 A | 2018-02-03 17:30 A | 2 | 100% |  | 2018-02-03 08:30 | 2018-02-03 17:30 | 1d |  |  | Marketing | 4h | 4h |  |  |  |
| 4 | 1.3 | CRM | 1d | 2018-02-09 08:30 A | 2018-02-09 17:30 A | 3FS+2d | 100% |  | 2018-02-07 08:30 | 2018-02-07 17:30 | 1d |  |  | HOD; PM; PMO Head | 3h | 3h |  |  |  |
| 5 | 2 | **Design** | 25.25d | 2018-02-12 08:30 A | 2018-03-15 10:30 A |  | 100% |  | 2018-02-08 08:30 | 2018-03-22 14:30 | 33.62d |  |  |  | 74h | 74h |  |  |  |
| 6 | 2.1 | Drawing Preparation | 32h | 2018-02-12 08:30 A | 2018-02-15 17:30 A | 4 | 100% |  | 2018-02-08 08:30 | 2018-02-17 17:30 | 64h |  |  | Design Engineer; Draftman | 64h | 64h |  |  |  |
| 7 | 2.2 | Drawing Submission | 8h | 2018-03-08 08:30 A | 2018-03-08 17:30 A | 6FS+15d | 100% |  | 2018-03-09 08:30 | 2018-03-09 12:30 | 4h |  |  | Design Engineer | 8h | 8h |  |  |  |
| 8 | 2.3 | Drawing Approval | 2h | 2018-03-15 08:30 A | 2018-03-15 10:30 A | 7FS+10d | 100% |  | 2018-03-22 13:30 | 2018-03-22 14:30 | 1h |  |  | Client | 2h | 2h |  |  |  |
| 9 | 3 | **4248-Spl flg-MaterialOrdering** | 1.12d | 2018-03-15 10:30 A | 2018-03-16 11:30 A |  | 100% |  | 2018-03-22 14:30 | 2018-03-23 10:30 | 0.62d |  |  |  | 5h | 5h |  |  |  |
| 10 | 3.1 | **PR Issue** | 0.25d | 2018-03-15 10:30 A | 2018-03-15 12:30 A |  | 100% |  | 2018-03-22 14:30 | 2018-03-22 16:30 | 0.25d |  |  |  | 2h | 2h |  |  |  |
| 11 | 3.1.1 | Plates Ti-SB265GR2 | 2h | 2018-03-15 10:30 A | 2018-03-15 12:30 A | 8 | 100% |  | 2018-03-22 14:30 | 2018-03-22 16:30 | 2h |  |  | PPC Engineer | 2h | 2h |  |  |  |
| 12 | 3.2 | **Material Ordering** | 0.38d | 2018-03-16 08:30 A | 2018-03-16 11:30 A |  | 100% |  | 2018-03-22 16:30 | 2018-03-23 10:30 | 0.38d |  |  |  | 3h | 3h |  |  |  |
| 13 | 3.2.1 | Check of stock Plates Ti-SB265GR2 | 3h | 2018-03-16 08:30 A | 2018-03-16 11:30 A | 11 | 100% |  | 2018-03-22 16:30 | 2018-03-23 10:30 | 3h |  |  | Purchase Engineer | 3h | 3h |  |  |  |
| 14 | 4 | **Raw Material Inspection** | 0.25d | 2018-03-17 11:30 A | 2018-03-17 14:30 A |  | 100% |  | 2018-03-26 10:30 | 2018-03-26 12:30 | 0.25d |  |  |  | 2h | 2h |  |  |  |
| 15 | 4.1 | Raw Material Inspection (Plates) | 2h | 2018-03-17 11:30 A | 2018-03-17 14:30 A | 13FS+1d | 100% |  | 2018-03-26 10:30 | 2018-03-26 12:30 | 2h |  |  | QC Engineer | 2h | 2h |  |  |  |
| 16 | 5 | **4248-Spl Flg-Fabrication Plan** | 67.25d | 2018-04-03 06:30 A | 2018-05-16 16:30 |  | 89% | 7.36d | 2018-04-09 20:30 | 2018-04-13 19:30 | 7.88d | 0d | TEAM_2Shift_Calendar-1 |  | 145h | 131h | 12,470 | 2,412.5 | 12,470 |
| 17 | 5.1 | Plate marking | 3h | 2018-04-03 06:30 A | 2018-04-03 09:30 A | 15FS+25d | 100% |  | 2018-04-09 20:30 | 2018-04-10 07:30 | 3h |  | TEAM_2Shift_Calendar-1 | Fitter; Helper | 6h | 6h | 356.25 | 356.25 | 356.25 |
| 18 | 5.2 | Lug piece fitup work | 3h | 2018-04-03 09:30 A | 2018-04-03 12:30 A | 17 | 100% |  | 2018-04-10 07:30 | 2018-04-10 10:30 | 3h |  | TEAM_2Shift_Calendar-1 | Fitter; Helper [200%] | 9h | 9h | 506.25 | 506.25 | 506.25 |
| 19 | 5.3 | Plate cutting | 10h | 2018-04-06 20:30 A | 2018-04-07 14:30 A | 18FS+7d | 100% |  | 2018-04-10 10:30 | 2018-04-10 18:30 | 1d |  | TEAM_2Shift_Calendar-1 | Gas Cutter | 10h | 10h | 687.5 | 550 | 687.5 |
| 20 | 5.4 | Premachining | 16h | 2018-04-09 14:30 A | 2018-04-10 14:30 A | 19FS+2d | 100% |  | 2018-04-10 18:30 | 2018-04-11 10:30 | 1d |  | TEAM_2Shift_Calendar-1 | SC (Work) | 16h | 16h |  |  |  |
| 21 | 5.5 | Lug welding | 24h | 2018-04-12 14:30 A | 2018-04-16 06:30 A | 20FS+4d | 100% |  | 2018-04-11 10:30 | 2018-04-11 18:30 | 8h |  | TEAM_2Shift_Calendar-1 | TIG Welder | 24h | 24h | 3,000 | 1,000 | 3,000 |
| 22 | 5.6 | Holes Drilling | 25h | 2018-04-18 08:30 A | 2018-04-19 17:30 A | 21FS+5d | 100% |  | 2018-04-11 18:30 | 2018-04-12 07:30 | 5h |  | TEAM_2Shift_Calendar-1 | Lathe Operator | 25h | 25h | 3,000 |  | 3,000 |
| 23 | 5.7 | Final Machining(slot, Parting) | 41h | 2018-04-25 08:30 A | 2018-04-27 17:30 A | 22FS+7d | 100% |  | 2018-04-12 07:30 | 2018-04-13 07:30 | 2d |  | TEAM_2Shift_Calendar-1 | Lathe Operator | 41h | 41h | 4,920 |  | 4,920 |
| 24 | 5.8 | Inspection and rework | 15h | 2018-05-15 17:30 | 2018-05-16 16:30 | 23FS+24d |  |  | 2018-04-13 07:30 | 2018-04-13 19:30 | 1.5d | 0d | TEAM_2Shift_Calendar-1 | QC Engineer; Client | 14h |  |  |  |  |

| ID | WBS | Task | Duration | Start | Finish | Predecessors | Baseline start | Baseline finish | Baseline duration | Total slack | Resources | Work |
| --- | --- | --- | --- | --- | --- | --- | --- | --- | --- | --- | --- | --- |
| 25 | 6 | **Project Closure** | 3.88d | 2018-05-16 16:30 | 2018-05-21 15:30 |  | 2018-04-16 08:30 | 2018-04-19 16:30 | 3.88d | 0d |  | 31h |
| 26 | 6.1 | Material Handover to Store | 2h | 2018-05-16 16:30 | 2018-05-17 09:30 | 24 | 2018-04-16 08:30 | 2018-04-16 10:30 | 2h | 0d | Production Engineer | 2h |
| 27 | 6.2 | Final Documentation | 4h | 2018-05-17 09:30 | 2018-05-17 14:30 | 26 | 2018-04-16 10:30 | 2018-04-16 15:30 | 4h | 0d | QC Engineer | 4h |
| 28 | 6.3 | Invoice to Customer | 1h | 2018-05-17 14:30 | 2018-05-17 15:30 | 27 | 2018-04-16 15:30 | 2018-04-16 16:30 | 1h | 0d | Finance | 1h |
| 29 | 6.4 | Product Transportation to Site | 3d | 2018-05-17 15:30 | 2018-05-21 15:30 | 28 | 2018-04-16 16:30 | 2018-04-19 16:30 | 3d | 0d | Store | 24h |
