# 4249-SVCI

Schedule from MS Project, 2018-02-05 to 2018-07-18, costs in Rs., A marks actual dates.

## Calendars

- TEAM_Stand_Calendar: Mon-Sat 08:30-12:30, 13:30-17:30; Sun off. Exceptions (off unless hours are given): 2017-01-13 to 2023-08-12 (2nd Sat, recurring), 2017-01-26 to 2036-01-26 (Republic Day, recurring), 2017-01-27 to 2023-08-26 (4th Sat, recurring), 2017-05-01 to 2036-05-01 (May Day, recurring), 2017-08-15 to 2036-08-15 (Independence Day, recurring), 2017-10-02 to 2036-10-02 (Gandhi Jayanti, recurring).
- TEAM_2Shift_Calendar-1: Mon-Sat 06:00-22:00; Sun off. Exceptions (off unless hours are given): 2017-01-13 to 2023-02-11 (2nd Sat, recurring), 2017-01-26 to 2036-01-26 (Republic Day, recurring), 2017-01-27 to 2023-08-26 (4th Sat, recurring), 2017-05-01 to 2036-05-01 (May Day, recurring), 2017-08-15 to 2036-08-15 (Indepdence Day, recurring), 2017-10-02 to 2036-10-02 (Gandhi Jayanti, recurring).

## Resources

| Resource | Rate |
| --- | --- |
| PMO Support |  |
| Design Engineer |  |
| Marketing |  |
| PM |  |
| PMO Head |  |
| PPC Engineer |  |
| Production Department |  |
| Purchase Engineer |  |
| Draftman |  |
| Client |  |
| Crane |  |
| SC Transport (Cost) |  |
| Helper | 50 |
| Store |  |
| QC Engineer |  |
| Production Engineer |  |
| Pipe (Cost) |  |
| Consumables (Cost) |  |
| Fastners (Cost) |  |
| Forging Non-Std (Cost) |  |
| Forging Std (Cost) |  |
| Plate (Cost) |  |
| Rod (Cost) |  |
| Gaskets (Cost) |  |
| Finance |  |
| Fitter | 68.75 |
| Cutting Machine |  |
| Driller | 68.75 |
| Grinder | 56.25 |
| Grinding Machine |  |
| TIG Welder | 125 |
| TIG Welding Machine |  |
| SC Radiography (Cost) |  |
| Painter |  |

## Schedule

| ID | WBS | Task | Duration | Start | Finish | Predecessors | Complete | Remaining | Baseline start | Baseline finish | Baseline duration | Total slack | Free slack | Resources | Work | Actual work | Baseline cost |
| --- | --- | --- | --- | --- | --- | --- | --- | --- | --- | --- | --- | --- | --- | --- | --- | --- | --- |
| 1 | 1 | **Project Initiation** | 10d | 2018-02-05 A | 2018-02-16 A |  | 100% |  | 2018-02-05 | 2018-02-16 | 10d |  |  |  | 14h | 14h | -0 |
| 2 | 1.1 | PO Receipt | 1d | 2018-02-05 A | 2018-02-05 A |  | 100% |  | 2018-02-05 | 2018-02-05 | 1d |  |  | Marketing | 8h | 8h |  |
| 3 | 1.2 | Work Order | 1d | 2018-02-09 A | 2018-02-09 A | 2FS+3d | 100% |  | 2018-02-09 | 2018-02-09 | 1d |  |  | Marketing | 4h | 4h |  |
| 4 | 1.3 | CRM | 1d | 2018-02-16 A | 2018-02-16 A | 3FS+4d | 100% |  | 2018-02-16 | 2018-02-16 | 1d |  |  | PMO Head; PM | 2h | 2h |  |
| 5 | 2 | **Design** | 25d | 2018-02-17 A | 2018-03-20 A |  | 100% |  | 2018-02-17 | 2018-03-17 | 22.12d |  |  |  | 65h | 65h | -0 |
| 6 | 2.1 | Drawing Preparation | 18.2d | 2018-02-17 A | 2018-03-13 A | 4 | 100% |  | 2018-02-17 | 2018-03-06 | 14d |  |  | Draftman; Design Engineer [130%] | 60h | 60h |  |
| 7 | 2.2 | General Assembly drawings submission | 1d | 2018-03-08 A | 2018-03-08 A | 4FS+8d | 100% |  | 2018-02-28 | 2018-02-28 | 1d |  |  | Design Engineer [25%] | 2h | 2h |  |
| 8 | 2.3 | Fabrication Drawing Submission | 1d | 2018-03-20 A | 2018-03-20 A | 6 | 100% |  | 2018-03-07 | 2018-03-07 | 1d |  |  | Design Engineer | 2h | 2h |  |
| 9 | 2.4 | Drawing Approval | 1h | 2018-03-16 A | 2018-03-16 A | 8FS+7d | 100% |  | 2018-03-17 | 2018-03-17 | 1h |  |  | Client | 1h | 1h |  |
| 10 | 3 | **ABG** | 3d | 2018-05-22 | 2018-05-25 |  |  |  | 2018-03-17 | 2018-03-28 | 8d | 42.38d |  |  | 3h |  | -0 |
| 11 | 3.1 | ABG submission 10% | 1d | 2018-05-22 | 2018-05-23 | 9FS+52d |  |  | 2018-03-17 | 2018-03-20 | 2d | 42.38d | 0d | Finance [25%] | 1h |  |  |
| 12 | 3.2 | ABG approval | 1d | 2018-05-24 | 2018-05-25 | 11FS+1d |  |  | 2018-03-27 | 2018-03-28 | 1d | 42.38d |  | Client [25%] | 2h |  |  |
| 13 | 4 | **PPC** | 6d | 2018-03-26 A | 2018-03-31 A |  | 100% |  | 2018-03-08 | 2018-03-12 | 3d |  |  |  | 28h | 28h | -0 |
| 14 | 4.1 | **PPC Indenting** | 6d | 2018-03-26 A | 2018-03-31 A |  | 100% |  | 2018-03-08 | 2018-03-12 | 3d |  |  |  | 28h | 28h | -0 |
| 15 | 4.1.1 | Plates | 6d | 2018-03-26 A | 2018-03-31 A | 8FS+3d | 100% |  | 2018-03-08 | 2018-03-09 | 2d |  |  | Plate (Cost) [0.1%]; PPC Engineer | 4h | 4h |  |
| 16 | 4.1.2 | Rods | 5d | 2018-03-26 A | 2018-03-30 A | 8FS+3d | 100% |  | 2018-03-08 | 2018-03-09 | 2d |  |  | Rod (Cost) [0.1%]; PPC Engineer | 4h | 4h |  |
| 17 | 4.1.3 | Bearing Housing | 3.12d | 2018-03-28 A | 2018-03-31 A | 8FS+4d | 100% |  | 2018-03-12 | 2018-03-12 | 1d |  |  | PPC Engineer | 5h | 5h |  |
| 18 | 4.1.4 | coupling | 3d | 2018-03-28 A | 2018-03-30 A | 8FS+5d | 100% |  | 2018-03-08 | 2018-03-08 | 1d |  |  | PPC Engineer | 5h | 5h |  |
| 19 | 4.1.5 | Fittings | 2.12d | 2018-03-28 A | 2018-03-30 A | 8FS+6d | 100% |  | 2018-03-09 | 2018-03-09 | 1d |  |  | PPC Engineer | 3h | 3h |  |
| 20 | 4.1.6 | Gaskets | 2.25d | 2018-03-28 A | 2018-03-30 A | 8FS+5d | 100% |  | 2018-03-12 | 2018-03-12 | 1d |  |  | Gaskets (Cost) [0.1%]; PPC Engineer | 2h | 2h |  |
| 21 | 4.1.7 | Consumbales | 2.25d | 2018-03-28 A | 2018-03-30 A | 8FS+5d | 100% |  | 2018-03-12 | 2018-03-12 | 1d |  |  | Consumables (Cost) [0.1%]; PPC Engineer | 3h | 3h |  |
| 22 | 4.1.8 | Fasteners | 2.25d | 2018-03-28 A | 2018-03-30 A | 8FS+5d | 100% |  | 2018-03-12 | 2018-03-12 | 1d |  |  | Fastners (Cost) [0.1%]; PPC Engineer | 2h | 2h |  |
| 23 | 5 | **Material Ordering** | 39d | 2018-04-02 A | 2018-05-21 |  | 98% | 0.81d | 2018-03-29 | 2018-04-02 | 3.75d | 19.75d |  |  | 29h | 21h | -0 |
| 24 | 5.1 | Plates | 216h | 2018-04-04 A | 2018-05-08 A | 15FS+26d | 100% |  | 2018-03-31 | 2018-03-31 | 7h |  |  | Purchase Engineer | 4h | 4h |  |
| 25 | 5.2 | Rods | 46h | 2018-04-26 A | 2018-05-04 A | 16FS+26d | 100% |  | 2018-03-31 | 2018-03-31 | 6h |  |  | Purchase Engineer | 4h | 4h |  |
| 26 | 5.3 | Bearing Housing | 63h | 2018-04-02 A | 2018-04-10 A | 17FS+8d | 100% |  | 2018-03-31 | 2018-03-31 | 6h |  |  | Purchase Engineer | 4h | 4h |  |
| 27 | 5.4 | coupling | 8h | 2018-04-06 A | 2018-04-06 A | 18FS+8d | 100% |  | 2018-04-02 | 2018-04-02 | 6h |  |  | Purchase Engineer | 1h | 1h |  |
| 28 | 5.5 | Fittings | 6h | 2018-05-21 | 2018-05-21 | 19FS+40d |  |  | 2018-04-02 | 2018-04-02 | 6h | 0.38d | 0d | Purchase Engineer | 4h |  |  |
| 29 | 5.6 | Gaskets | 6h | 2018-05-21 | 2018-05-21 | 20FS+40d |  |  | 2018-03-29 | 2018-03-29 | 6h | 19.75d | 0d | Purchase Engineer | 4h |  |  |
| 30 | 5.7 | Consumbales | 228h | 2018-04-02 A | 2018-05-08 A | 21FS+30d | 100% |  | 2018-04-02 | 2018-04-02 | 6h |  |  | Purchase Engineer | 4h | 4h |  |
| 31 | 5.8 | Fasteners | 8h | 2018-04-13 A | 2018-04-13 A | 22FS+16d | 100% |  | 2018-04-02 | 2018-04-02 | 6h |  |  | Purchase Engineer | 4h | 4h |  |

Notes:
- 8: on 03-Mar-2018

| ID | WBS | Task | Duration | Start | Finish | Predecessors | Complete | Remaining | Baseline start | Baseline finish | Baseline duration | Total slack | Free slack | Calendar | Resources | Work | Actual work | Cost | Baseline cost | Actual cost |
| --- | --- | --- | --- | --- | --- | --- | --- | --- | --- | --- | --- | --- | --- | --- | --- | --- | --- | --- | --- | --- |
| 32 | 6 | **Material Receipt** | 56.62d | 2018-04-11 A | 2018-06-22 |  | 59% | 22.97d | 2018-05-04 | 2018-05-24 | 15.75d | 19.88d |  |  |  | 99h | 24.01h | 1,650 | 550 | 400.17 |
| 33 | 6.1 | Plates -Ti-Gr.2,MS Plate | 288.67h | 2018-04-11 A | 2018-05-29 | 24FS+15d | 67% | 96.67h | 2018-05-22 | 2018-05-23 | 6h | 20.92d | 0d |  | Helper; Store; Crane | 9h | 6.01h | 150 | 50 | 100.17 |
| 34 | 6.2 | Rods-SA 479 Gr.316-shaft | 6h | 2018-05-30 | 2018-05-31 | 25FS+20d |  |  | 2018-05-09 | 2018-05-10 | 6h | 25d | 24.5d |  | Helper; Store; Crane | 9h |  | 150 | 50 |  |
| 35 | 6.3 | Bearing Housing | 6h | 2018-05-05 A | 2018-05-05 A | 26FS+18d | 100% |  | 2018-05-22 | 2018-05-23 | 6h |  |  |  | Helper; Store; Crane | 9h | 9h | 150 | 50 | 150 |
| 36 | 6.4 | Lovejoy coupling | 14h | 2018-04-25 A | 2018-04-26 A | 27FS+15d | 100% |  | 2018-05-23 | 2018-05-24 | 6h |  |  |  | Helper; Store; Crane | 9h | 9h | 150 | 50 | 150 |
| 37 | 6.5 | Viton O Ring | 6h | 2018-06-15 | 2018-06-16 | 28FS+20d |  |  | 2018-05-17 | 2018-05-18 | 6h | 24d | 0d |  | Helper; Store; Crane | 9h |  | 150 | 50 |  |
| 38 | 6.6 | Packing rope | 6h | 2018-06-08 | 2018-06-11 | 28FS+15d |  |  | 2018-05-04 | 2018-05-05 | 6h | 29.88d |  |  | Helper; Store; Crane | 9h |  | 150 | 50 |  |
| 39 | 6.7 | oil seal,Adaptor | 6h | 2018-06-21 | 2018-06-22 | 28FS+25d |  |  | 2018-05-04 | 2018-05-05 | 6h | 19d | 0d |  | Helper; Store; Crane | 9h |  | 150 | 50 |  |
| 40 | 6.8 | ISMC Channel,Equal Angle | 6h | 2018-06-21 | 2018-06-22 | 28FS+25d |  |  | 2018-05-04 | 2018-05-05 | 6h | 0.38d | 0d |  | Helper; Store; Crane | 9h |  | 150 | 50 |  |
| 41 | 6.9 | Gaskets-PTFE | 6h | 2018-06-11 | 2018-06-11 | 29FS+15d |  |  | 2018-05-07 | 2018-05-08 | 6h | 29.75d |  |  | Helper; Store; Crane | 9h |  | 150 | 50 |  |
| 42 | 6.10 | Consumbales | 6h | 2018-05-28 | 2018-05-29 | 30FS+15d |  |  | 2018-05-04 | 2018-05-05 | 6h | 40.25d |  |  | Helper; Store; Crane | 9h |  | 150 | 50 |  |
| 43 | 6.11 | Fasteners | 6h | 2018-05-22 | 2018-05-22 | 31FS+28d |  |  | 2018-05-04 | 2018-05-05 | 6h | 44.75d |  |  | Helper; Store; Crane | 9h |  | 150 | 50 |  |
| 44 | 7 | **Fabrication-P-284 A/B** | 130d | 2018-04-25 A | 2018-07-18 |  | 20% | 104.11d | 2018-04-23 | 2018-07-04 | 112.75d | 0.5d |  | TEAM_2Shift_Calendar-1 |  | 1752h | 26h | 84,594.84 | 119,637.34 | 300 |
| 45 | 7.1 | **Receipt of Boughtout materials** | 92.5d | 2018-04-25 A | 2018-06-25 |  | 79% | 19.59d | 2018-04-24 | 2018-05-22 | 41.75d | 38d |  | TEAM_2Shift_Calendar-1 |  | 101h | 26h | 2,662.5 | 2,812.5 | 300 |
| 46 | 7.1.1 | Receipt of bearing Housing | 175.5h | 2018-05-05 A | 2018-05-18 A | 35FS+20d | 100% |  | 2018-04-24 | 2018-04-24 | 6h |  |  | TEAM_2Shift_Calendar-1 | Crane; Helper; Store | 9h | 9h | 150 | 150 | 150 |
| 47 | 7.1.2 | Inward inspection | 1d | 2018-05-18 | 2018-05-19 | 46 |  |  | 2018-04-24 | 2018-04-25 | 1d | 86.75d | 0d | TEAM_2Shift_Calendar-1 | QC Engineer | 10h |  |  |  |  |
| 48 | 7.1.3 | Drilling holes For bolting | 2d | 2018-05-19 | 2018-05-21 | 47 |  |  | 2018-04-25 | 2018-04-26 | 2d | 91.88d |  | TEAM_2Shift_Calendar-1 | Fitter | 30h |  | 2,062.5 | 2,062.5 |  |
| 49 | 7.1.4 | Receipt of Lovejoy coupling | 9h | 2018-04-25 A | 2018-04-25 A | 36 | 100% |  | 2018-04-26 | 2018-04-26 | 6h |  |  | TEAM_2Shift_Calendar-1 | Crane; Helper; Store | 9h | 9h | 150 | 150 | 150 |
| 50 | 7.1.5 | Inward inspection | 1.12d | 2018-04-26 A | 2018-04-26 A | 49 | 100% |  | 2018-04-26 | 2018-04-27 | 1d |  |  | TEAM_2Shift_Calendar-1 | QC Engineer | 8h | 8h |  |  |  |
| 51 | 7.1.6 | Receipt of Adaptor | 6h | 2018-06-22 | 2018-06-22 | 39 |  |  | 2018-05-21 | 2018-05-21 | 6h | 38d | 0d | TEAM_2Shift_Calendar-1 | Crane; Helper; Store | 9h |  | 150 | 150 |  |
| 52 | 7.1.7 | Inward inspection | 1d | 2018-06-22 | 2018-06-25 | 51 |  |  | 2018-05-21 | 2018-05-22 | 1d | 38d |  | TEAM_2Shift_Calendar-1 | QC Engineer | 8h |  |  |  |  |
| 53 | 7.1.8 | Receipt of Viton O Rings | 6h | 2018-06-16 | 2018-06-16 | 37 |  |  | 2018-05-15 | 2018-05-15 | 6h | 48d | 0d | TEAM_2Shift_Calendar-1 | Crane; Helper; Store | 9h |  | 150 | 150 |  |
| 54 | 7.1.9 | Inward inspection | 1d | 2018-06-16 | 2018-06-18 | 53 |  |  | 2018-05-15 | 2018-05-16 | 1d | 48d |  | TEAM_2Shift_Calendar-1 | QC Engineer | 9h |  |  |  |  |
| 55 | 7.2 | **Casing** | 34d | 2018-05-24 | 2018-06-15 |  |  |  | 2018-04-23 | 2018-05-09 | 24d | 42.38d | 38.88d | TEAM_2Shift_Calendar-1 |  | 459h |  | 21,852.09 | 21,852.08 |  |
| 56 | 7.2.1 | Material Receipt | 6h | 2018-06-05 | 2018-06-06 | 33SS+85d |  |  | 2018-04-23 | 2018-04-23 | 6h | 42.38d | 0d | TEAM_2Shift_Calendar-1 | Crane; Helper; Store | 18h |  | 300 | 300 |  |
| 57 | 7.2.2 | Inspection | 0.62d | 2018-06-06 | 2018-06-06 | 56 |  |  | 2018-04-23 | 2018-04-23 | 0.5d | 42.38d | 0d | TEAM_2Shift_Calendar-1 | QC Engineer | 8h |  |  |  |  |
| 58 | 7.2.3 | Plate Marking | 2d | 2018-06-06 | 2018-06-07 | 57 |  |  | 2018-04-23 | 2018-04-24 | 2d | 42.38d | 0d | TEAM_2Shift_Calendar-1 | Fitter; Helper | 30h |  | 1,781.25 | 1,781.25 |  |
| 59 | 7.2.4 | Plate Cutting | 1d | 2018-06-07 | 2018-06-07 | 58 |  |  | 2018-04-24 | 2018-04-25 | 1d | 42.38d | 0d | TEAM_2Shift_Calendar-1 | Cutting Machine; Helper; Fitter | 36h |  | 1,425 | 1,425 |  |
| 60 | 7.2.5 | Edge Preparation | 1d | 2018-06-07 | 2018-06-08 | 59 |  |  | 2018-04-25 | 2018-04-25 | 1d | 42.38d | 0d | TEAM_2Shift_Calendar-1 | Grinder; Grinding Machine | 24h |  | 675 | 675 |  |
| 61 | 7.2.6 | Plate Bending | 1d | 2018-06-08 | 2018-06-08 | 60 |  |  | 2018-04-25 | 2018-04-26 | 1d | 42.38d | 0d | TEAM_2Shift_Calendar-1 | Fitter; Helper | 20h |  | 1,187.5 | 1,187.5 |  |
| 62 | 7.2.7 | Rolling | 1d | 2018-06-08 | 2018-06-11 | 61 |  |  | 2018-04-26 | 2018-04-26 | 1d | 42.38d | 0d | TEAM_2Shift_Calendar-1 | Fitter | 14h |  | 962.5 | 962.5 |  |

| ID | WBS | Task | Duration | Start | Finish | Predecessors | Baseline start | Baseline finish | Baseline duration | Total slack | Free slack | Calendar | Resources | Work | Cost | Baseline cost |
| --- | --- | --- | --- | --- | --- | --- | --- | --- | --- | --- | --- | --- | --- | --- | --- | --- |
| 63 | 7.2.8 | **Nozzle Preparation** | 11.5d | 2018-05-24 | 2018-05-31 |  | 2018-04-25 | 2018-05-04 | 11.5d | 57.25d | 14.88d | TEAM_2Shift_Calendar-1 |  | 206h | 9,981.25 | 9,981.25 |
| 64 | 7.2.8.1 | Nozzle Plate Cutting | 1d | 2018-05-24 | 2018-05-24 | 33SS+66d | 2018-04-25 | 2018-04-26 | 1d | 57.25d | 0d | TEAM_2Shift_Calendar-1 | Cutting Machine; Helper | 24h | 600 | 600 |
| 65 | 7.2.8.2 | Edge Preparation | 1d | 2018-05-24 | 2018-05-25 | 64 | 2018-04-26 | 2018-04-26 | 1d | 57.25d | 0d | TEAM_2Shift_Calendar-1 | Grinder; Grinding Machine | 26h | 731.25 | 731.25 |
| 66 | 7.2.8.3 | Nozzle Plate Rolling | 1d | 2018-05-25 | 2018-05-25 | 65 | 2018-04-26 | 2018-04-27 | 1d | 57.25d | 0d | TEAM_2Shift_Calendar-1 | Fitter; Helper | 24h | 1,425 | 1,425 |
| 67 | 7.2.8.4 | Suction&Discharge head plate marking | 1d | 2018-05-25 | 2018-05-28 | 66 | 2018-04-27 | 2018-04-27 | 1d | 57.25d | 0d | TEAM_2Shift_Calendar-1 | Fitter; Helper | 24h | 1,425 | 1,425 |
| 68 | 7.2.8.5 | Plate cutting | 1d | 2018-05-28 | 2018-05-28 | 67 | 2018-04-27 | 2018-04-30 | 1d | 57.25d | 0d | TEAM_2Shift_Calendar-1 | Cutting Machine; Helper | 24h | 600 | 600 |
| 69 | 7.2.8.6 | Plate Drilling for bolt holes | 2d | 2018-05-28 | 2018-05-29 | 68 | 2018-04-30 | 2018-05-02 | 2d | 57.25d | 0d | TEAM_2Shift_Calendar-1 | Driller | 26h | 1,787.5 | 1,787.5 |
| 70 | 7.2.8.7 | Plate Fitup with Nozzle pipe | 1d | 2018-05-29 | 2018-05-30 | 69 | 2018-05-02 | 2018-05-02 | 1d | 57.25d | 0d | TEAM_2Shift_Calendar-1 | Fitter; Helper | 24h | 1,425 | 1,425 |
| 71 | 7.2.8.8 | Dp | 0.5d | 2018-05-30 | 2018-05-30 | 70 | 2018-05-02 | 2018-05-02 | 0.5d | 57.25d | 0d | TEAM_2Shift_Calendar-1 | Fitter; Helper | 4h | 237.5 | 237.5 |
| 72 | 7.2.8.9 | Welding | 2d | 2018-05-30 | 2018-05-31 | 71 | 2018-05-02 | 2018-05-03 | 2d | 57.25d | 0d | TEAM_2Shift_Calendar-1 | TIG Welder; TIG Welding Machine; Helper | 30h | 1,750 | 1,750 |
| 73 | 7.2.8.10 | Radiography | 1d | 2018-05-31 | 2018-05-31 | 72 | 2018-05-03 | 2018-05-04 | 1d | 57.25d |  | TEAM_2Shift_Calendar-1 | SC Radiography (Cost) [0.1%] |  |  |  |
| 74 | 7.2.9 | **Assembly** | 7.62d | 2018-06-11 | 2018-06-15 |  | 2018-05-04 | 2018-05-09 | 7.5d | 42.38d |  | TEAM_2Shift_Calendar-1 |  | 103h | 5,539.59 | 5,539.58 |
| 75 | 7.2.9.1 | Outlet&Inlet Nozzle fitup with Volute Casing | 1d | 2018-06-11 | 2018-06-11 | 62, 63 | 2018-05-04 | 2018-05-04 | 1d | 42.38d | 0d | TEAM_2Shift_Calendar-1 | Fitter; Helper | 24h | 1,425 | 1,425 |
| 76 | 7.2.9.2 | Inspection | 1.12d | 2018-06-11 | 2018-06-12 | 75 | 2018-05-04 | 2018-05-05 | 1d | 42.38d | 0d | TEAM_2Shift_Calendar-1 | QC Engineer | 6h |  |  |
| 77 | 7.2.9.3 | Dp | 0.5d | 2018-06-12 | 2018-06-12 | 76 | 2018-05-05 | 2018-05-05 | 0.5d | 42.38d | 0d | TEAM_2Shift_Calendar-1 | Fitter; Helper | 6h | 356.25 | 356.25 |
| 78 | 7.2.9.4 | Welding | 2d | 2018-06-12 | 2018-06-13 | 77 | 2018-05-05 | 2018-05-07 | 2d | 42.38d | 0d | TEAM_2Shift_Calendar-1 | Helper; TIG Welder; TIG Welding Machine | 40h | 2,333.34 | 2,333.33 |
| 79 | 7.2.9.5 | Radiography | 1d | 2018-06-13 | 2018-06-14 | 78 | 2018-05-07 | 2018-05-08 | 1d | 42.38d | 0d | TEAM_2Shift_Calendar-1 | SC Radiography (Cost) [0.1%] |  |  |  |
| 80 | 7.2.9.6 | Hydrotest | 1d | 2018-06-14 | 2018-06-14 | 79 | 2018-05-08 | 2018-05-08 | 1d | 42.38d | 0d | TEAM_2Shift_Calendar-1 | Fitter; Helper | 24h | 1,425 | 1,425 |
| 81 | 7.2.9.7 | Inspection | 1d | 2018-06-14 | 2018-06-15 | 80 | 2018-05-08 | 2018-05-09 | 1d | 42.38d |  | TEAM_2Shift_Calendar-1 | QC Engineer | 3h |  |  |
| 82 | 7.3 | **Impeller** | 20d | 2018-05-23 | 2018-06-05 |  | 2018-04-30 | 2018-05-14 | 20d | 58.38d | 54.88d | TEAM_2Shift_Calendar-1 |  | 293h | 14,700 | 14,700 |
| 83 | 7.3.1 | Receipt of Material | 0.5d | 2018-05-23 | 2018-05-23 | 33SS+65d | 2018-04-30 | 2018-04-30 | 0.5d | 58.38d | 0d | TEAM_2Shift_Calendar-1 | Crane; Helper; Store | 3h | 50 | 50 |
| 84 | 7.3.2 | Hub Plate Marking | 1d | 2018-05-23 | 2018-05-24 | 83 | 2018-04-30 | 2018-04-30 | 1d | 58.38d | 0d | TEAM_2Shift_Calendar-1 | Fitter; Helper | 30h | 1,781.25 | 1,781.25 |
| 85 | 7.3.3 | Hub Plate cutting | 1d | 2018-05-24 | 2018-05-24 | 84 | 2018-04-30 | 2018-05-02 | 1d | 58.38d | 0d | TEAM_2Shift_Calendar-1 | Cutting Machine; Fitter; Helper | 36h | 1,425 | 1,425 |
| 86 | 7.3.4 | Edge Preparation | 0.5d | 2018-05-24 | 2018-05-25 | 85 | 2018-05-02 | 2018-05-02 | 0.5d | 58.38d | 0d | TEAM_2Shift_Calendar-1 | Grinder; Grinding Machine; Helper | 16h | 566.67 | 566.67 |

| ID | WBS | Task | Duration | Start | Finish | Predecessors | Baseline start | Baseline finish | Baseline duration | Total slack | Free slack | Calendar | Resources | Work | Cost | Baseline cost |
| --- | --- | --- | --- | --- | --- | --- | --- | --- | --- | --- | --- | --- | --- | --- | --- | --- |
| 87 | 7.3.5 | **Vane Plate Preparation** | 3d | 2018-05-25 | 2018-05-28 |  | 2018-05-02 | 2018-05-04 | 3d | 58.38d | 0d | TEAM_2Shift_Calendar-1 |  | 70h | 3,427.08 | 3,427.08 |
| 88 | 7.3.5.1 | Plate Marking | 0.5d | 2018-05-25 | 2018-05-25 | 86 | 2018-05-02 | 2018-05-02 | 0.5d | 58.38d | 0d | TEAM_2Shift_Calendar-1 | Fitter; Helper | 4h | 237.5 | 237.5 |
| 89 | 7.3.5.2 | Plate cutting | 1d | 2018-05-25 | 2018-05-25 | 88 | 2018-05-02 | 2018-05-03 | 1d | 58.38d | 0d | TEAM_2Shift_Calendar-1 | Cutting Machine; Fitter; Helper | 32h | 1,266.66 | 1,266.67 |
| 90 | 7.3.5.3 | Edge Preparation | 0.5d | 2018-05-25 | 2018-05-28 | 89 | 2018-05-03 | 2018-05-03 | 0.5d | 58.38d | 0d | TEAM_2Shift_Calendar-1 | Grinder; Grinding Machine; Helper | 4h | 141.67 | 141.67 |
| 91 | 7.3.5.4 | Plate Bending | 1d | 2018-05-28 | 2018-05-28 | 90 | 2018-05-03 | 2018-05-04 | 1d | 58.38d |  | TEAM_2Shift_Calendar-1 | Fitter; Helper | 30h | 1,781.25 | 1,781.25 |
| 92 | 7.3.6 | **Assembly** | 14d | 2018-05-28 | 2018-06-05 |  | 2018-05-04 | 2018-05-14 | 14d | 58.38d |  | TEAM_2Shift_Calendar-1 |  | 138h | 7,450 | 7,450 |
| 93 | 7.3.6.1 | vane plates fitup with Hub | 1d | 2018-05-28 | 2018-05-29 | 87 | 2018-05-04 | 2018-05-04 | 1d | 58.38d | 0d | TEAM_2Shift_Calendar-1 | Fitter; Helper | 20h | 1,187.5 | 1,187.5 |
| 94 | 7.3.6.2 | Inspection&DP | 1d | 2018-05-29 | 2018-05-29 | 93 | 2018-05-04 | 2018-05-05 | 1d | 58.38d | 0d | TEAM_2Shift_Calendar-1 | QC Engineer | 6h |  |  |
| 95 | 7.3.6.3 | Welding | 3d | 2018-05-29 | 2018-05-31 | 94 | 2018-05-05 | 2018-05-07 | 3d | 58.38d | 0d | TEAM_2Shift_Calendar-1 | Helper; TIG Welder; TIG Welding Machine | 30h | 1,750 | 1,750 |
| 96 | 7.3.6.4 | Radiography | 1d | 2018-05-31 | 2018-05-31 | 95 | 2018-05-07 | 2018-05-08 | 1d | 58.38d | 0d | TEAM_2Shift_Calendar-1 | SC Radiography (Cost) [0.1%] |  |  |  |
| 97 | 7.3.6.5 | Impeller Eye opening | 1d | 2018-05-31 | 2018-06-01 | 96 | 2018-05-08 | 2018-05-08 | 1d | 58.38d | 0d | TEAM_2Shift_Calendar-1 | Fitter; Helper | 16h | 950 | 950 |
| 98 | 7.3.6.6 | Final Inspection | 1d | 2018-06-01 | 2018-06-01 | 97 | 2018-05-08 | 2018-05-09 | 1d | 58.38d | 0d | TEAM_2Shift_Calendar-1 | QC Engineer | 6h |  |  |
| 99 | 7.3.6.7 | Dynamic Balancing | 3d | 2018-06-01 | 2018-06-04 | 98 | 2018-05-09 | 2018-05-10 | 3d | 58.38d | 0d | TEAM_2Shift_Calendar-1 | Fitter; Helper | 30h | 1,781.25 | 1,781.25 |
| 100 | 7.3.6.8 | Keyway Machining | 3d | 2018-06-04 | 2018-06-05 | 99 | 2018-05-10 | 2018-05-14 | 3d | 58.38d |  | TEAM_2Shift_Calendar-1 | Fitter; Helper | 30h | 1,781.25 | 1,781.25 |
| 101 | 7.4 | **Base Frame** | 13.25d | 2018-06-22 | 2018-07-02 |  | 2018-05-21 | 2018-05-30 | 13d | 0.5d | 0d | TEAM_2Shift_Calendar-1 |  | 248h | 12,631.25 | 12,631.25 |
| 102 | 7.4.1 | Receipt of ISMC Channel | 1d | 2018-06-22 | 2018-06-25 | 40, 33 | 2018-05-21 | 2018-05-22 | 1d | 0.5d | 0d | TEAM_2Shift_Calendar-1 | Crane; Helper; Store | 15h | 250 | 250 |
| 103 | 7.4.2 | Inward inspection | 1d | 2018-06-25 | 2018-06-25 | 102 | 2018-05-22 | 2018-05-22 | 1d | 0.5d | 0d | TEAM_2Shift_Calendar-1 | QC Engineer | 6h |  |  |
| 104 | 7.4.3 | Support Plate Marking | 1d | 2018-06-25 | 2018-06-26 | 103 | 2018-05-22 | 2018-05-23 | 1d | 0.5d | 0d | TEAM_2Shift_Calendar-1 | Fitter; Helper | 24h | 1,425 | 1,425 |
| 105 | 7.4.4 | Support Plate Cutting | 1d | 2018-06-26 | 2018-06-26 | 104 | 2018-05-23 | 2018-05-23 | 1d | 0.5d | 0d | TEAM_2Shift_Calendar-1 | Cutting Machine; Fitter; Helper | 45h | 1,781.25 | 1,781.25 |
| 106 | 7.4.5 | Channel Fitup | 1d | 2018-06-26 | 2018-06-27 | 105 | 2018-05-23 | 2018-05-24 | 1d | 0.5d | 0d | TEAM_2Shift_Calendar-1 | Fitter; Helper | 40h | 2,375 | 2,375 |
| 107 | 7.4.6 | Welding | 3d | 2018-06-27 | 2018-06-28 | 106 | 2018-05-24 | 2018-05-25 | 3d | 0.5d | 0d | TEAM_2Shift_Calendar-1 | Helper; TIG Welder; TIG Welding Machine | 60h | 3,500 | 3,500 |
| 108 | 7.4.7 | Radiography | 1d | 2018-06-28 | 2018-06-29 | 107 | 2018-05-25 | 2018-05-28 | 1d | 0.5d | 0d | TEAM_2Shift_Calendar-1 | SC Radiography (Cost) [0.1%] |  |  |  |
| 109 | 7.4.8 | Slotted & Bolt hole drillings | 3d | 2018-06-29 | 2018-06-30 | 108 | 2018-05-28 | 2018-05-29 | 3d | 0.5d | 0d | TEAM_2Shift_Calendar-1 | Driller | 48h | 3,300 | 3,300 |
| 110 | 7.4.9 | Final Inspection | 1.25d | 2018-06-30 | 2018-07-02 | 109 | 2018-05-29 | 2018-05-30 | 1d | 0.5d |  | TEAM_2Shift_Calendar-1 | QC Engineer | 10h |  |  |

| ID | WBS | Task | Duration | Start | Finish | Predecessors | Baseline start | Baseline finish | Baseline duration | Total slack | Free slack | Calendar | Resources | Work | Cost | Baseline cost |
| --- | --- | --- | --- | --- | --- | --- | --- | --- | --- | --- | --- | --- | --- | --- | --- | --- |
| 111 | 7.5 | **Shaft** | 12.38d | 2018-07-02 | 2018-07-09 |  | 2018-05-30 | 2018-06-06 | 12d | 0.5d | 0d | TEAM_2Shift_Calendar-1 |  | 260h | 14,350 | 14,350 |
| 112 | 7.5.1 | Receipt of Materials | 1d | 2018-07-02 | 2018-07-02 | 34, 101 | 2018-05-30 | 2018-05-30 | 1d | 0.5d | 0d | TEAM_2Shift_Calendar-1 | Crane; Helper; Store | 6h | 100 | 100 |
| 113 | 7.5.2 | Inward inspection | 1.25d | 2018-07-02 | 2018-07-03 | 112 | 2018-05-30 | 2018-05-31 | 1d | 0.5d | 0d | TEAM_2Shift_Calendar-1 | QC Engineer | 6h |  |  |
| 114 | 7.5.3 | Shaft Machining | 3d | 2018-07-03 | 2018-07-04 | 113 | 2018-05-31 | 2018-06-01 | 3d | 0.5d | 0d | TEAM_2Shift_Calendar-1 | Fitter; Helper | 80h | 4,750 | 4,750 |
| 115 | 7.5.4 | Domenut Machining | 3d | 2018-07-04 | 2018-07-06 | 114 | 2018-06-01 | 2018-06-04 | 3d | 0.5d | 0d | TEAM_2Shift_Calendar-1 | Fitter; Helper | 80h | 4,750 | 4,750 |
| 116 | 7.5.5 | Shaft Key Way Machining | 3d | 2018-07-06 | 2018-07-07 | 115 | 2018-06-04 | 2018-06-05 | 3d | 0.5d | 0d | TEAM_2Shift_Calendar-1 | Fitter; Helper | 80h | 4,750 | 4,750 |
| 117 | 7.5.6 | Final Inspection | 1.12d | 2018-07-07 | 2018-07-09 | 116 | 2018-06-05 | 2018-06-06 | 1d | 0.5d |  | TEAM_2Shift_Calendar-1 | QC Engineer | 8h |  |  |
| 118 | 7.6 | **Coupling Guard** | 8d | 2018-07-09 | 2018-07-13 |  | 2018-06-06 | 2018-06-12 | 8d | 0.5d | 0d | TEAM_2Shift_Calendar-1 |  | 218h | 10,322.92 | 10,322.92 |
| 119 | 7.6.1 | Plate Marking | 2d | 2018-07-09 | 2018-07-10 | 33, 111 | 2018-06-06 | 2018-06-07 | 2d | 0.5d | 0d | TEAM_2Shift_Calendar-1 | Fitter; Helper | 60h | 3,562.5 | 3,562.5 |
| 120 | 7.6.2 | Plate Cutting | 2d | 2018-07-10 | 2018-07-11 | 119 | 2018-06-07 | 2018-06-08 | 2d | 0.5d | 0d | TEAM_2Shift_Calendar-1 | Cutting Machine; Fitter; Helper | 60h | 2,375 | 2,375 |
| 121 | 7.6.3 | Edge Preparation | 1d | 2018-07-11 | 2018-07-11 | 120 | 2018-06-08 | 2018-06-08 | 1d | 0.5d | 0d | TEAM_2Shift_Calendar-1 | Grinder; Grinding Machine; Helper | 40h | 1,416.67 | 1,416.67 |
| 122 | 7.6.4 | Plate Bending | 2d | 2018-07-11 | 2018-07-12 | 121 | 2018-06-08 | 2018-06-11 | 2d | 0.5d | 0d | TEAM_2Shift_Calendar-1 | Fitter; Helper | 50h | 2,968.75 | 2,968.75 |
| 123 | 7.6.5 | Final Inspection | 1d | 2018-07-12 | 2018-07-13 | 122 | 2018-06-11 | 2018-06-12 | 1d | 0.5d |  | TEAM_2Shift_Calendar-1 | QC Engineer | 8h |  |  |
| 124 | 7.7 | **Assembly** | 8.5d | 2018-07-09 | 2018-07-13 |  | 2018-06-12 | 2018-06-27 | 25d | 0.5d | 0d | TEAM_2Shift_Calendar-1 |  | 132h | 7,425 | 39,375 |
| 125 | 7.7.1 | Base Frame Setup | 4h | 2018-07-09 | 2018-07-09 | 118SS, 101SS | 2018-06-12 | 2018-06-13 | 2d | 3.5d | 0d | TEAM_2Shift_Calendar-1 | Fitter; Helper [200%] | 12h | 675 | 1,687.5 |
| 126 | 7.7.2 | Casing fitup with frame | 4h | 2018-07-09 | 2018-07-09 | 55, 125 | 2018-06-13 | 2018-06-14 | 3d | 3.5d | 0d | TEAM_2Shift_Calendar-1 | Fitter; Helper [200%] | 12h | 675 | 4,500 |
| 127 | 7.7.3 | Shaft insertion to Casing | 4h | 2018-07-09 | 2018-07-10 | 111, 126 | 2018-06-14 | 2018-06-15 | 2d | 3.5d | 0d | TEAM_2Shift_Calendar-1 | Fitter; Helper [200%] | 12h | 675 | 3,375 |
| 128 | 7.7.4 | Wear ring fitup with impeller | 4h | 2018-07-10 | 2018-07-10 | 82, 127 | 2018-06-15 | 2018-06-16 | 2d | 3.5d | 0d | TEAM_2Shift_Calendar-1 | Fitter; Helper [200%] | 12h | 675 | 3,375 |
| 129 | 7.7.5 | Insertion of Impeller with casing | 4h | 2018-07-10 | 2018-07-10 | 82, 55, 128 | 2018-06-16 | 2018-06-18 | 2d | 3.5d | 0d | TEAM_2Shift_Calendar-1 | Fitter; Helper [200%] | 12h | 675 | 3,375 |
| 130 | 7.7.6 | Backcover fitup with casing | 4h | 2018-07-10 | 2018-07-10 | 129 | 2018-06-18 | 2018-06-19 | 2d | 3.5d | 0d | TEAM_2Shift_Calendar-1 | Fitter; Helper [200%] | 12h | 675 | 3,375 |
| 131 | 7.7.7 | Sleeve& O ring insertion | 4h | 2018-07-10 | 2018-07-11 | 130 | 2018-06-19 | 2018-06-20 | 2d | 3.5d | 0d | TEAM_2Shift_Calendar-1 | Fitter; Helper [200%] | 12h | 675 | 3,375 |
| 132 | 7.7.8 | Bearing Housing Fitup & Bolting | 4h | 2018-07-11 | 2018-07-11 | 47, 131 | 2018-06-20 | 2018-06-21 | 2d | 3.5d | 0d | TEAM_2Shift_Calendar-1 | Fitter; Helper [200%] | 12h | 675 | 3,375 |
| 133 | 7.7.9 | Bearing and O ring Fitup | 4h | 2018-07-11 | 2018-07-11 | 132 | 2018-06-21 | 2018-06-22 | 2d | 3.5d | 0d | TEAM_2Shift_Calendar-1 | Fitter; Helper [200%] | 12h | 675 | 1,687.5 |
| 134 | 7.7.10 | Coupling Fitup& Bolting to shaft | 4h | 2018-07-11 | 2018-07-11 | 50, 133 | 2018-06-22 | 2018-06-26 | 3d | 3.5d | 3d | TEAM_2Shift_Calendar-1 | Fitter; Helper [200%] | 12h | 675 | 5,625 |
| 135 | 7.7.11 | Coupling Guard Fitup&Bolting to Frame | 4h | 2018-07-13 | 2018-07-13 | 118, 134 | 2018-06-26 | 2018-06-27 | 3d | 0.5d |  | TEAM_2Shift_Calendar-1 | Fitter; Helper [200%] | 12h | 675 | 5,625 |

| ID | WBS | Task | Duration | Start | Finish | Predecessors | Complete | Remaining | Baseline start | Baseline finish | Baseline duration | Total slack | Free slack | Calendar | Resources | Work | Actual work | Cost | Baseline cost | Actual cost |
| --- | --- | --- | --- | --- | --- | --- | --- | --- | --- | --- | --- | --- | --- | --- | --- | --- | --- | --- | --- | --- |
| 136 | 7.8 | **Painting&Performance Test** | 3.5d | 2018-07-13 | 2018-07-17 |  |  |  | 2018-06-27 | 2018-06-30 | 6d | 0.5d | 0d | TEAM_2Shift_Calendar-1 |  | 26h |  | 367.74 | 1,826.92 |  |
| 137 | 7.8.1 | Primer coat | 4h | 2018-07-13 | 2018-07-13 | 124 |  |  | 2018-06-27 | 2018-06-28 | 1d | 0.5d | 0d | TEAM_2Shift_Calendar-1 | Painter | 4h |  |  |  |  |
| 138 | 7.8.2 | Final Coat | 4h | 2018-07-13 | 2018-07-16 | 137 |  |  | 2018-06-28 | 2018-06-28 | 1d | 0.5d | 0d | TEAM_2Shift_Calendar-1 | Painter | 8h |  |  |  |  |
| 139 | 7.8.3 | Performance Test | 10h | 2018-07-16 | 2018-07-16 | 138 |  |  | 2018-06-28 | 2018-06-29 | 2d | 0.5d | 0d | TEAM_2Shift_Calendar-1 | Fitter; Helper; Production Engineer; QC Engineer | 12h |  | 367.74 | 1,826.92 |  |
| 140 | 7.8.4 | Final inspection | 10h | 2018-07-16 | 2018-07-17 | 139 |  |  | 2018-06-29 | 2018-06-30 | 2d | 0.5d |  | TEAM_2Shift_Calendar-1 | QC Engineer | 2h |  |  |  |  |
| 141 | 7.9 | **Project Closure** | 1.62d | 2018-07-17 | 2018-07-18 |  |  |  | 2018-06-30 | 2018-07-04 | 6d | 0.5d |  | TEAM_2Shift_Calendar-1 |  | 15h |  | 283.33 | 1,766.67 |  |
| 142 | 7.9.1 | Final Documentation | 5h | 2018-07-17 | 2018-07-17 | 136 |  |  | 2018-06-30 | 2018-07-02 | 1d | 0.5d | 0d | TEAM_2Shift_Calendar-1 | QC Engineer | 2h |  |  |  |  |
| 143 | 7.9.2 | Despatch | 4h | 2018-07-17 | 2018-07-17 | 142 |  |  | 2018-07-02 | 2018-07-02 | 1d | 0.5d | 0d | TEAM_2Shift_Calendar-1 | Crane; Helper; Store | 5h |  | 83.33 | 166.67 |  |
| 144 | 7.9.3 | Transport to the Site | 0.5d | 2018-07-17 | 2018-07-18 | 143 |  |  | 2018-07-02 | 2018-07-04 | 4d | 0.5d |  | TEAM_2Shift_Calendar-1 | SC Transport (Cost) [0.1%]; Crane; Helper | 8h |  | 200 | 1,600 |  |
| 145 | 8 | **Material Receipt** | 45.75d | 2018-04-25 A | 2018-06-22 |  | 14% | 39.51d | 2018-05-04 | 2018-05-24 | 15.75d | 19.75d |  |  |  | 114h | 37.5h | 1,900 | 550 | 625 |
| 146 | 8.1 | Plates -Ti-Gr.2,MS Plate | 150h | 2018-05-11 A | 2018-06-04 | 24FS+20d | 5% | 142h | 2018-05-22 | 2018-05-23 | 6h | 13.25d | 0d |  | Helper; Store; Crane | 9h | 4.5h | 150 | 50 | 75 |
| 147 | 8.2 | Rods-SA 479 Gr.316-shaft | 6h | 2018-06-12 | 2018-06-13 | 25FS+30d |  |  | 2018-05-09 | 2018-05-10 | 6h | 10d | 0d |  | Helper; Store; Crane | 9h |  | 150 | 50 |  |
| 148 | 8.3 | Bearing Housing | 8h | 2018-05-05 A | 2018-05-05 A | 26FS+18d | 100% |  | 2018-05-22 | 2018-05-23 | 6h |  |  |  | Helper; Store; Crane | 24h | 24h | 400 | 50 | 400 |
| 149 | 8.4 | Lovejoy coupling | 14h | 2018-04-25 A | 2018-04-26 A | 27FS+15d | 100% |  | 2018-05-23 | 2018-05-24 | 6h |  |  |  | Helper; Store; Crane | 9h | 9h | 150 | 50 | 150 |
| 150 | 8.5 | Viton O Ring,Wear ring | 6h | 2018-06-15 | 2018-06-16 | 28FS+20d |  |  | 2018-05-17 | 2018-05-18 | 6h | 12.38d | 0d |  | Helper; Store; Crane | 9h |  | 150 | 50 |  |
| 151 | 8.6 | Packing rope | 6h | 2018-06-08 | 2018-06-11 | 28FS+15d |  |  | 2018-05-04 | 2018-05-05 | 6h | 29.88d |  |  | Helper; Store; Crane | 9h |  | 150 | 50 |  |
| 152 | 8.7 | oil seal,Adaptor | 6h | 2018-06-21 | 2018-06-22 | 28FS+25d |  |  | 2018-05-04 | 2018-05-05 | 6h | 19d | 0d |  | Helper; Store; Crane | 9h |  | 150 | 50 |  |
| 153 | 8.8 | ISMC Channel,Equal Angle | 6h | 2018-06-21 | 2018-06-22 | 28FS+25d |  |  | 2018-05-04 | 2018-05-05 | 6h | 10.38d | 0d |  | Helper; Store; Crane | 9h |  | 150 | 50 |  |
| 154 | 8.9 | Gaskets-PTFE | 6h | 2018-06-22 | 2018-06-22 | 29FS+25d |  |  | 2018-05-07 | 2018-05-08 | 6h | 19.75d |  |  | Helper; Store; Crane | 9h |  | 150 | 50 |  |
| 155 | 8.10 | Consumbales | 6h | 2018-06-08 | 2018-06-11 | 30FS+25d |  |  | 2018-05-04 | 2018-05-05 | 6h | 30.25d |  |  | Helper; Store; Crane | 9h |  | 150 | 50 |  |
| 156 | 8.11 | Fasteners | 6h | 2018-05-22 | 2018-05-22 | 31FS+28d |  |  | 2018-05-04 | 2018-05-05 | 6h | 44.75d |  |  | Helper; Store; Crane | 9h |  | 150 | 50 |  |
| 157 | 9 | **Fabrication-P-174 A/B** | 55.5d | 2018-04-25 A | 2018-07-05 |  | 5% | 52.97d | 2018-04-24 | 2018-06-27 | 48.88d | 10d |  |  |  | 2520h | 43h | 120,106.26 | 120,206.25 | 2,112.5 |
| 158 | 9.1 | **Receipt of Boughtout materials** | 92.5d | 2018-04-25 A | 2018-06-25 |  | 52% | 44.24d | 2018-04-24 | 2018-05-22 | 41.75d | 38d |  | TEAM_2Shift_Calendar-1 |  | 86h | 43h | 2,395.83 | 2,495.83 | 2,112.5 |
| 159 | 9.1.1 | Receipt of bearing Housing | 6h | 2018-05-05 A | 2018-05-05 A | 148 | 100% |  | 2018-04-24 | 2018-04-24 | 6h |  |  | TEAM_2Shift_Calendar-1 | Crane; Helper; Store | 3h | 3h | 50 | 50 | 50 |
| 160 | 9.1.2 | Inward inspection | 1d | 2018-05-07 A | 2018-05-07 A | 159 | 100% |  | 2018-04-24 | 2018-04-25 | 1d |  |  | TEAM_2Shift_Calendar-1 | QC Engineer | 10h | 10h |  |  |  |
| 161 | 9.1.3 | Drilling holes For bolting | 2d | 2018-05-07 A | 2018-05-08 A | 160 | 100% |  | 2018-04-25 | 2018-04-26 | 2d |  |  | TEAM_2Shift_Calendar-1 | Fitter | 30h | 30h | 2,062.5 | 2,062.5 | 2,062.5 |
| 162 | 9.1.4 | Receipt of Lovejoy coupling | 9h | 2018-04-25 A | 2018-04-25 A | 149 | 100% |  | 2018-04-26 | 2018-04-26 | 6h |  |  | TEAM_2Shift_Calendar-1 | Crane; Helper; Store |  |  |  | 100 |  |
| 163 | 9.1.5 | Inward inspection | 1.12d | 2018-04-25 A | 2018-04-25 A | 162 | 100% |  | 2018-04-26 | 2018-04-27 | 1.88d |  |  | TEAM_2Shift_Calendar-1 | QC Engineer |  |  |  |  |  |
| 164 | 9.1.6 | Receipt of Adaptor | 6h | 2018-06-22 | 2018-06-22 | 152 |  |  | 2018-05-21 | 2018-05-21 | 6h | 38d | 0d | TEAM_2Shift_Calendar-1 | Crane; Helper; Store | 6h |  | 100 | 100 |  |
| 165 | 9.1.7 | Inward inspection | 1d | 2018-06-22 | 2018-06-25 | 164 |  |  | 2018-05-21 | 2018-05-22 | 1d | 38d |  | TEAM_2Shift_Calendar-1 | QC Engineer | 8h |  |  |  |  |
| 166 | 9.1.8 | Receipt of Viton O Rings | 6h | 2018-06-16 | 2018-06-16 | 150 |  |  | 2018-05-15 | 2018-05-15 | 6h | 41d | 0d | TEAM_2Shift_Calendar-1 | Crane; Helper; Store | 6h |  | 100 | 100 |  |
| 167 | 9.1.9 | Inward inspection | 1d | 2018-06-16 | 2018-06-18 | 166 |  |  | 2018-05-15 | 2018-05-16 | 1d | 48d |  | TEAM_2Shift_Calendar-1 | QC Engineer | 10h |  |  |  |  |
| 168 | 9.1.10 | Receipt of wear ring | 1d | 2018-06-16 | 2018-06-18 | 150 |  |  | 2018-05-15 | 2018-05-16 | 1d | 25.25d | 0d | TEAM_2Shift_Calendar-1 | Crane; Helper; Store | 5h |  | 83.33 | 83.33 |  |
| 169 | 9.1.11 | Inward inspection | 1d | 2018-06-18 | 2018-06-18 | 168 |  |  | 2018-05-16 | 2018-05-16 | 1d | 25.25d | 5.75d | TEAM_2Shift_Calendar-1 | QC Engineer | 8h |  |  |  |  |

| ID | WBS | Task | Duration | Start | Finish | Predecessors | Baseline start | Baseline finish | Baseline duration | Total slack | Free slack | Calendar | Resources | Work | Cost | Baseline cost |
| --- | --- | --- | --- | --- | --- | --- | --- | --- | --- | --- | --- | --- | --- | --- | --- | --- |
| 170 | 9.2 | **Casing** | 19.12d | 2018-06-04 | 2018-06-16 |  | 2018-05-15 | 2018-05-28 | 19d | 26.5d | 6.5d | TEAM_2Shift_Calendar-1 |  | 455h | 21,852.09 | 21,852.08 |
| 171 | 9.2.1 | Material Receipt | 6h | 2018-06-04 | 2018-06-04 | 146 | 2018-05-15 | 2018-05-15 | 6h | 30.25d | 0d | TEAM_2Shift_Calendar-1 | Crane; Helper; Store | 18h | 300 | 300 |
| 172 | 9.2.2 | Inspection | 1d | 2018-06-04 | 2018-06-05 | 171 | 2018-05-15 | 2018-05-16 | 1d | 30.25d | 0d | TEAM_2Shift_Calendar-1 | QC Engineer | 4h |  |  |
| 173 | 9.2.3 | Plate Marking | 2d | 2018-06-05 | 2018-06-06 | 172 | 2018-05-16 | 2018-05-17 | 2d | 30.25d | 0d | TEAM_2Shift_Calendar-1 | Fitter; Helper | 30h | 1,781.25 | 1,781.25 |
| 174 | 9.2.4 | Plate Cutting | 1d | 2018-06-06 | 2018-06-06 | 173 | 2018-05-17 | 2018-05-17 | 1d | 30.25d | 0d | TEAM_2Shift_Calendar-1 | Cutting Machine; Helper; Fitter | 36h | 1,425 | 1,425 |
| 175 | 9.2.5 | Edge Preparation | 1d | 2018-06-06 | 2018-06-07 | 174 | 2018-05-17 | 2018-05-18 | 1d | 30.25d | 0d | TEAM_2Shift_Calendar-1 | Grinder; Grinding Machine | 24h | 675 | 675 |
| 176 | 9.2.6 | Plate Bending | 1d | 2018-06-07 | 2018-06-07 | 175 | 2018-05-18 | 2018-05-18 | 1d | 30.25d | 0d | TEAM_2Shift_Calendar-1 | Fitter; Helper | 20h | 1,187.5 | 1,187.5 |
| 177 | 9.2.7 | Rolling | 1d | 2018-06-07 | 2018-06-08 | 176 | 2018-05-18 | 2018-05-19 | 1d | 30.25d | 3.75d | TEAM_2Shift_Calendar-1 | Fitter | 14h | 962.5 | 962.5 |
| 178 | 9.2.8 | **Nozzle Preparation** | 11.5d | 2018-06-04 | 2018-06-12 |  | 2018-05-15 | 2018-05-22 | 11.5d | 26.5d | 0d | TEAM_2Shift_Calendar-1 |  | 206h | 9,981.25 | 9,981.25 |
| 179 | 9.2.8.1 | Nozzle Plate Cutting | 1d | 2018-06-04 | 2018-06-05 | 146 | 2018-05-15 | 2018-05-16 | 1d | 26.5d | 0d | TEAM_2Shift_Calendar-1 | Cutting Machine; Helper | 24h | 600 | 600 |
| 180 | 9.2.8.2 | Edge Preparation | 1d | 2018-06-05 | 2018-06-05 | 179 | 2018-05-16 | 2018-05-16 | 1d | 26.5d | 0d | TEAM_2Shift_Calendar-1 | Grinder; Grinding Machine | 26h | 731.25 | 731.25 |
| 181 | 9.2.8.3 | Nozzle Plate Rolling | 1d | 2018-06-05 | 2018-06-06 | 180 | 2018-05-16 | 2018-05-17 | 1d | 26.5d | 0d | TEAM_2Shift_Calendar-1 | Fitter; Helper | 24h | 1,425 | 1,425 |
| 182 | 9.2.8.4 | Suction&Discharge head plate marking | 1d | 2018-06-06 | 2018-06-06 | 181 | 2018-05-17 | 2018-05-17 | 1d | 26.5d | 0d | TEAM_2Shift_Calendar-1 | Fitter; Helper | 24h | 1,425 | 1,425 |
| 183 | 9.2.8.5 | Plate cutting | 1d | 2018-06-06 | 2018-06-07 | 182 | 2018-05-17 | 2018-05-18 | 1d | 26.5d | 0d | TEAM_2Shift_Calendar-1 | Cutting Machine; Helper | 24h | 600 | 600 |
| 184 | 9.2.8.6 | Plate Drilling for bolt holes | 2d | 2018-06-07 | 2018-06-08 | 183 | 2018-05-18 | 2018-05-19 | 2d | 26.5d | 0d | TEAM_2Shift_Calendar-1 | Driller | 26h | 1,787.5 | 1,787.5 |
| 185 | 9.2.8.7 | Plate Fitup with Nozzle pipe | 1d | 2018-06-08 | 2018-06-08 | 184 | 2018-05-19 | 2018-05-19 | 1d | 26.5d | 0d | TEAM_2Shift_Calendar-1 | Fitter; Helper | 24h | 1,425 | 1,425 |
| 186 | 9.2.8.8 | Dp | 0.5d | 2018-06-08 | 2018-06-08 | 185 | 2018-05-19 | 2018-05-19 | 0.5d | 26.5d | 0d | TEAM_2Shift_Calendar-1 | Fitter; Helper | 4h | 237.5 | 237.5 |
| 187 | 9.2.8.9 | Welding | 2d | 2018-06-08 | 2018-06-11 | 186 | 2018-05-19 | 2018-05-21 | 2d | 26.5d | 0d | TEAM_2Shift_Calendar-1 | TIG Welder; TIG Welding Machine; Helper | 30h | 1,750 | 1,750 |
| 188 | 9.2.8.10 | Radiography | 1d | 2018-06-11 | 2018-06-12 | 187 | 2018-05-21 | 2018-05-22 | 1d | 26.5d |  | TEAM_2Shift_Calendar-1 | SC Radiography (Cost) [0.1%] |  |  |  |
| 189 | 9.2.9 | **Assembly** | 7.62d | 2018-06-12 | 2018-06-16 |  | 2018-05-22 | 2018-05-28 | 7.5d | 26.5d |  | TEAM_2Shift_Calendar-1 |  | 103h | 5,539.59 | 5,539.58 |
| 190 | 9.2.9.1 | Outlet&Inlet Nozzle fitup with Volute Casing | 1d | 2018-06-12 | 2018-06-12 | 177, 178 | 2018-05-22 | 2018-05-22 | 1d | 26.5d | 0d | TEAM_2Shift_Calendar-1 | Fitter; Helper | 24h | 1,425 | 1,425 |
| 191 | 9.2.9.2 | Inspection | 1d | 2018-06-12 | 2018-06-13 | 190 | 2018-05-22 | 2018-05-23 | 1d | 26.5d | 0d | TEAM_2Shift_Calendar-1 | QC Engineer | 6h |  |  |
| 192 | 9.2.9.3 | Dp | 0.5d | 2018-06-13 | 2018-06-13 | 191 | 2018-05-23 | 2018-05-23 | 0.5d | 26.5d | 0d | TEAM_2Shift_Calendar-1 | Fitter; Helper | 6h | 356.25 | 356.25 |
| 193 | 9.2.9.4 | Welding | 2d | 2018-06-13 | 2018-06-14 | 192 | 2018-05-23 | 2018-05-24 | 2d | 26.5d | 0d | TEAM_2Shift_Calendar-1 | Helper; TIG Welder; TIG Welding Machine | 40h | 2,333.34 | 2,333.33 |
| 194 | 9.2.9.5 | Radiography | 1d | 2018-06-14 | 2018-06-15 | 193 | 2018-05-24 | 2018-05-25 | 1d | 26.5d | 0d | TEAM_2Shift_Calendar-1 | SC Radiography (Cost) [0.1%] |  |  |  |
| 195 | 9.2.9.6 | Hydrotest | 1d | 2018-06-15 | 2018-06-15 | 194 | 2018-05-25 | 2018-05-25 | 1d | 26.5d | 0d | TEAM_2Shift_Calendar-1 | Fitter; Helper | 24h | 1,425 | 1,425 |
| 196 | 9.2.9.7 | Inspection | 1.12d | 2018-06-15 | 2018-06-16 | 195 | 2018-05-25 | 2018-05-28 | 1d | 26.5d |  | TEAM_2Shift_Calendar-1 | QC Engineer | 3h |  |  |

| ID | WBS | Task | Duration | Start | Finish | Predecessors | Baseline start | Baseline finish | Baseline duration | Total slack | Free slack | Calendar | Resources | Work | Cost | Baseline cost |
| --- | --- | --- | --- | --- | --- | --- | --- | --- | --- | --- | --- | --- | --- | --- | --- | --- |
| 197 | 9.3 | **Impeller** | 18.12d | 2018-06-04 | 2018-06-15 |  | 2018-05-15 | 2018-05-25 | 18d | 29.5d | 9.5d | TEAM_2Shift_Calendar-1 |  | 302h | 14,850 | 14,850 |
| 198 | 9.3.1 | Receipt of Material | 0.5d | 2018-06-04 | 2018-06-04 | 146 | 2018-05-15 | 2018-05-15 | 0.5d | 44.62d | 0d | TEAM_2Shift_Calendar-1 | Crane; Helper; Store | 12h | 200 | 200 |
| 199 | 9.3.2 | Hub Plate Marking | 1d | 2018-06-04 | 2018-06-05 | 198 | 2018-05-15 | 2018-05-16 | 1d | 44.62d | 0d | TEAM_2Shift_Calendar-1 | Fitter; Helper | 30h | 1,781.25 | 1,781.25 |
| 200 | 9.3.3 | Hub Plate cutting | 1d | 2018-06-05 | 2018-06-05 | 199 | 2018-05-16 | 2018-05-16 | 1d | 44.62d | 0d | TEAM_2Shift_Calendar-1 | Cutting Machine; Fitter; Helper | 36h | 1,425 | 1,425 |
| 201 | 9.3.4 | Edge Preparation | 0.5d | 2018-06-05 | 2018-06-06 | 200 | 2018-05-16 | 2018-05-17 | 0.5d | 44.62d |  | TEAM_2Shift_Calendar-1 | Grinder; Grinding Machine; Helper | 16h | 566.67 | 566.67 |
| 202 | 9.3.5 | **Vane Plate Preparation** | 3d | 2018-06-04 | 2018-06-06 |  | 2018-05-15 | 2018-05-17 | 3d | 29.5d | 0d | TEAM_2Shift_Calendar-1 |  | 70h | 3,427.08 | 3,427.08 |
| 203 | 9.3.5.1 | Plate Marking | 0.5d | 2018-06-04 | 2018-06-04 | 146 | 2018-05-15 | 2018-05-15 | 0.5d | 29.5d | 0d | TEAM_2Shift_Calendar-1 | Fitter; Helper | 4h | 237.5 | 237.5 |
| 204 | 9.3.5.2 | Plate cutting | 1d | 2018-06-04 | 2018-06-05 | 203 | 2018-05-15 | 2018-05-16 | 1d | 29.5d | 0d | TEAM_2Shift_Calendar-1 | Cutting Machine; Fitter; Helper | 32h | 1,266.66 | 1,266.67 |
| 205 | 9.3.5.3 | Edge Preparation | 0.5d | 2018-06-05 | 2018-06-05 | 204 | 2018-05-16 | 2018-05-16 | 0.5d | 29.5d | 0d | TEAM_2Shift_Calendar-1 | Grinder; Grinding Machine; Helper | 4h | 141.67 | 141.67 |
| 206 | 9.3.5.4 | Plate Bending | 1d | 2018-06-05 | 2018-06-06 | 205 | 2018-05-16 | 2018-05-17 | 1d | 29.5d |  | TEAM_2Shift_Calendar-1 | Fitter; Helper | 30h | 1,781.25 | 1,781.25 |
| 207 | 9.3.6 | **Assembly** | 15.12d | 2018-06-06 | 2018-06-15 |  | 2018-05-17 | 2018-05-25 | 15d | 29.5d |  | TEAM_2Shift_Calendar-1 |  | 138h | 7,450 | 7,450 |
| 208 | 9.3.6.1 | vane plates fitup with Hub | 1d | 2018-06-06 | 2018-06-06 | 202 | 2018-05-17 | 2018-05-17 | 1d | 29.5d | 0d | TEAM_2Shift_Calendar-1 | Fitter; Helper | 20h | 1,187.5 | 1,187.5 |
| 209 | 9.3.6.2 | Inspection&DP | 1.62d | 2018-06-06 | 2018-06-07 | 208 | 2018-05-17 | 2018-05-18 | 1.5d | 29.5d | 0d | TEAM_2Shift_Calendar-1 | QC Engineer | 6h |  |  |
| 210 | 9.3.6.3 | Welding | 3d | 2018-06-07 | 2018-06-08 | 209 | 2018-05-18 | 2018-05-19 | 3d | 29.5d | 0d | TEAM_2Shift_Calendar-1 | Helper; TIG Welder; TIG Welding Machine | 30h | 1,750 | 1,750 |
| 211 | 9.3.6.4 | Radiography | 1d | 2018-06-08 | 2018-06-11 | 210 | 2018-05-19 | 2018-05-21 | 1d | 29.5d | 0d | TEAM_2Shift_Calendar-1 | SC Radiography (Cost) [0.1%] |  |  |  |
| 212 | 9.3.6.5 | Impeller Eye opening | 1d | 2018-06-11 | 2018-06-11 | 211 | 2018-05-21 | 2018-05-21 | 1d | 29.5d | 0d | TEAM_2Shift_Calendar-1 | Fitter; Helper | 16h | 950 | 950 |
| 213 | 9.3.6.6 | Final Inspection | 1.5d | 2018-06-11 | 2018-06-12 | 212 | 2018-05-21 | 2018-05-22 | 1.5d | 29.5d | 0d | TEAM_2Shift_Calendar-1 | QC Engineer | 6h |  |  |
| 214 | 9.3.6.7 | Dynamic Balancing | 3d | 2018-06-12 | 2018-06-14 | 213 | 2018-05-22 | 2018-05-24 | 3d | 29.5d | 0d | TEAM_2Shift_Calendar-1 | Fitter; Helper | 30h | 1,781.25 | 1,781.25 |
| 215 | 9.3.6.8 | Keyway Machining | 3d | 2018-06-14 | 2018-06-15 | 214 | 2018-05-24 | 2018-05-25 | 3d | 29.5d |  | TEAM_2Shift_Calendar-1 | Fitter; Helper | 30h | 1,781.25 | 1,781.25 |
| 216 | 9.4 | **Base Frame** | 13d | 2018-06-22 | 2018-07-02 |  | 2018-05-21 | 2018-05-30 | 13d | 21.25d | 0d | TEAM_2Shift_Calendar-1 |  | 239h | 12,112.5 | 12,112.5 |
| 217 | 9.4.1 | Receipt of ISMC Channel | 1d | 2018-06-22 | 2018-06-25 | 153 | 2018-05-21 | 2018-05-22 | 1d | 21.25d | 0d | TEAM_2Shift_Calendar-1 | Crane; Helper; Store | 15h | 250 | 250 |
| 218 | 9.4.2 | Inward inspection | 1d | 2018-06-25 | 2018-06-25 | 217 | 2018-05-22 | 2018-05-22 | 1d | 21.25d | 0d | TEAM_2Shift_Calendar-1 | QC Engineer | 6h |  |  |
| 219 | 9.4.3 | Support Plate Marking | 1d | 2018-06-25 | 2018-06-26 | 218 | 2018-05-22 | 2018-05-23 | 1d | 21.75d | 0d | TEAM_2Shift_Calendar-1 | Fitter; Helper | 30h | 1,781.25 | 1,781.25 |
| 220 | 9.4.4 | Support Plate Cutting | 1d | 2018-06-26 | 2018-06-26 | 219 | 2018-05-23 | 2018-05-23 | 1d | 21.75d | 0d | TEAM_2Shift_Calendar-1 | Cutting Machine; Fitter; Helper | 45h | 1,781.25 | 1,781.25 |
| 221 | 9.4.5 | Channel Fitup | 1d | 2018-06-26 | 2018-06-27 | 220 | 2018-05-23 | 2018-05-24 | 1d | 21.75d | 0d | TEAM_2Shift_Calendar-1 | Fitter; Helper | 40h | 2,375 | 2,375 |
| 222 | 9.4.6 | Welding | 3d | 2018-06-27 | 2018-06-28 | 221 | 2018-05-24 | 2018-05-25 | 3d | 21.75d | 0d | TEAM_2Shift_Calendar-1 | Helper; TIG Welder; TIG Welding Machine | 45h | 2,625 | 2,625 |
| 223 | 9.4.7 | Radiography | 1d | 2018-06-28 | 2018-06-29 | 222 | 2018-05-25 | 2018-05-28 | 1d | 21.75d | 0d | TEAM_2Shift_Calendar-1 | SC Radiography (Cost) [0.1%] |  |  |  |
| 224 | 9.4.8 | Slotted & Bolt hole drillings | 3d | 2018-06-29 | 2018-06-30 | 223 | 2018-05-28 | 2018-05-29 | 3d | 21.75d | 0d | TEAM_2Shift_Calendar-1 | Driller | 48h | 3,300 | 3,300 |
| 225 | 9.4.9 | Final Inspection | 1d | 2018-06-30 | 2018-07-02 | 224 | 2018-05-29 | 2018-05-30 | 1d | 21.75d |  | TEAM_2Shift_Calendar-1 | QC Engineer | 10h |  |  |

| ID | WBS | Task | Duration | Start | Finish | Predecessors | Baseline start | Baseline finish | Baseline duration | Total slack | Free slack | Calendar | Resources | Work | Cost | Baseline cost |
| --- | --- | --- | --- | --- | --- | --- | --- | --- | --- | --- | --- | --- | --- | --- | --- | --- |
| 226 | 9.5 | **Shaft** | 12d | 2018-06-13 | 2018-06-20 |  | 2018-05-29 | 2018-06-05 | 12d | 20d | 0d | TEAM_2Shift_Calendar-1 |  | 274h | 14,416.67 | 14,416.67 |
| 227 | 9.5.1 | Receipt of Materials | 1d | 2018-06-13 | 2018-06-13 | 147 | 2018-05-29 | 2018-05-29 | 1d | 20d | 0d | TEAM_2Shift_Calendar-1 | Crane; Helper; Store | 10h | 166.67 | 166.67 |
| 228 | 9.5.2 | Inward inspection | 1d | 2018-06-13 | 2018-06-14 | 227 | 2018-05-29 | 2018-05-30 | 1d | 20d | 0d | TEAM_2Shift_Calendar-1 | QC Engineer | 12h |  |  |
| 229 | 9.5.3 | Shaft Machining | 3d | 2018-06-14 | 2018-06-15 | 228 | 2018-05-30 | 2018-05-31 | 3d | 20d | 0d | TEAM_2Shift_Calendar-1 | Fitter; Helper | 80h | 4,750 | 4,750 |
| 230 | 9.5.4 | Domenut Machining | 3d | 2018-06-15 | 2018-06-18 | 229 | 2018-05-31 | 2018-06-02 | 3d | 20d | 0d | TEAM_2Shift_Calendar-1 | Fitter; Helper | 80h | 4,750 | 4,750 |
| 231 | 9.5.5 | Shaft Key Way Machining | 3d | 2018-06-18 | 2018-06-19 | 230 | 2018-06-02 | 2018-06-04 | 3d | 20d | 0d | TEAM_2Shift_Calendar-1 | Fitter; Helper | 80h | 4,750 | 4,750 |
| 232 | 9.5.6 | Final Inspection | 1d | 2018-06-19 | 2018-06-20 | 231 | 2018-06-04 | 2018-06-05 | 1d | 20d |  | TEAM_2Shift_Calendar-1 | QC Engineer | 12h |  |  |
| 233 | 9.6 | **Coupling Guard** | 8d | 2018-06-04 | 2018-06-08 |  | 2018-05-15 | 2018-05-19 | 8d | 58.5d | 34.62d | TEAM_2Shift_Calendar-1 |  | 227h | 10,500 | 10,500 |
| 234 | 9.6.1 | Plate Marking | 2d | 2018-06-04 | 2018-06-05 | 146 | 2018-05-15 | 2018-05-16 | 2d | 58.5d | 0d | TEAM_2Shift_Calendar-1 | Fitter; Helper | 60h | 3,562.5 | 3,562.5 |
| 235 | 9.6.2 | Plate Cutting | 2d | 2018-06-05 | 2018-06-06 | 234 | 2018-05-16 | 2018-05-17 | 2d | 58.5d | 0d | TEAM_2Shift_Calendar-1 | Cutting Machine; Fitter; Helper | 60h | 2,375 | 2,375 |
| 236 | 9.6.3 | Edge Preparation | 1d | 2018-06-06 | 2018-06-07 | 235 | 2018-05-17 | 2018-05-18 | 1d | 58.5d | 0d | TEAM_2Shift_Calendar-1 | Grinder; Grinding Machine; Helper | 45h | 1,593.75 | 1,593.75 |
| 237 | 9.6.4 | Plate Pending | 2d | 2018-06-07 | 2018-06-08 | 236 | 2018-05-18 | 2018-05-19 | 2d | 58.5d | 0d | TEAM_2Shift_Calendar-1 | Fitter; Helper | 50h | 2,968.75 | 2,968.75 |
| 238 | 9.6.5 | Final Inspection | 1d | 2018-06-08 | 2018-06-08 | 237 | 2018-05-19 | 2018-05-19 | 1d | 58.5d |  | TEAM_2Shift_Calendar-1 | QC Engineer | 12h |  |  |
| 239 | 9.7 | **Assembly** | 22.25d | 2018-06-20 | 2018-07-04 |  | 2018-05-30 | 2018-06-18 | 30.75d | 20d |  | TEAM_2Shift_Calendar-1 |  | 730h | 41,062.5 | 41,062.5 |
| 240 | 9.7.1 | Base Frame Setup | 2d | 2018-07-02 | 2018-07-03 | 216 | 2018-05-30 | 2018-05-31 | 2d | 21.75d | 0d | TEAM_2Shift_Calendar-1 | Fitter; Helper [200%] | 30h | 1,687.5 | 1,687.5 |
| 241 | 9.7.2 | Casing fitup with frame | 3d | 2018-07-03 | 2018-07-04 | 170, 216, 240 | 2018-05-31 | 2018-06-01 | 3d | 21.75d |  | TEAM_2Shift_Calendar-1 | Fitter; Helper [200%] | 80h | 4,500 | 4,500 |
| 242 | 9.7.3 | Shaft insertion to Casing | 2d | 2018-06-20 | 2018-06-21 | 226, 170 | 2018-06-05 | 2018-06-06 | 2d | 20d | 0d | TEAM_2Shift_Calendar-1 | Fitter; Helper [200%] | 60h | 3,375 | 3,375 |
| 243 | 9.7.4 | Wear ring fitup with impeller | 2d | 2018-06-21 | 2018-06-22 | 169, 197, 242 | 2018-06-06 | 2018-06-07 | 2d | 20d | 0d | TEAM_2Shift_Calendar-1 | Fitter; Helper [200%] | 60h | 3,375 | 3,375 |
| 244 | 9.7.5 | Insertion of Impeller with casing | 2d | 2018-06-22 | 2018-06-25 | 170, 197, 243 | 2018-06-07 | 2018-06-08 | 2d | 20d | 0d | TEAM_2Shift_Calendar-1 | Fitter; Helper [200%] | 60h | 3,375 | 3,375 |
| 245 | 9.7.6 | Backcover fitup with casing | 2d | 2018-06-25 | 2018-06-26 | 244 | 2018-06-08 | 2018-06-11 | 2d | 20d | 0d | TEAM_2Shift_Calendar-1 | Fitter; Helper [200%] | 60h | 3,375 | 3,375 |
| 246 | 9.7.7 | Sleeve& O ring insertion | 2d | 2018-06-26 | 2018-06-27 | 226, 245 | 2018-06-11 | 2018-06-12 | 2d | 20d | 0d | TEAM_2Shift_Calendar-1 | Fitter; Helper [200%] | 60h | 3,375 | 3,375 |
| 247 | 9.7.8 | Bearing Housing Fitup & Bolting | 2d | 2018-06-27 | 2018-06-28 | 160, 246 | 2018-06-12 | 2018-06-13 | 2d | 20d | 0d | TEAM_2Shift_Calendar-1 | Fitter; Helper [200%] | 60h | 3,375 | 3,375 |
| 248 | 9.7.9 | Bearing and O ring Fitup | 2d | 2018-06-28 | 2018-06-29 | 166, 247 | 2018-06-13 | 2018-06-14 | 2d | 24d | 0d | TEAM_2Shift_Calendar-1 | Fitter; Helper [200%] | 60h | 3,375 | 3,375 |
| 249 | 9.7.10 | Coupling Fitup& Bolting to shaft | 3d | 2018-06-29 | 2018-06-30 | 162, 248 | 2018-06-14 | 2018-06-15 | 3d | 24d | 0d | TEAM_2Shift_Calendar-1 | Fitter; Helper [200%] | 100h | 5,625 | 5,625 |
| 250 | 9.7.11 | Coupling Guard Fitup&Bolting to Frame | 3d | 2018-06-30 | 2018-07-03 | 233, 249 | 2018-06-15 | 2018-06-18 | 3d | 24d |  | TEAM_2Shift_Calendar-1 | Fitter; Helper [200%] | 100h | 5,625 | 5,625 |

| ID | WBS | Task | Duration | Start | Finish | Predecessors | Complete | Remaining | Baseline start | Baseline finish | Baseline duration | Total slack | Free slack | Calendar | Resources | Work | Actual work | Cost | Baseline cost | Actual cost |
| --- | --- | --- | --- | --- | --- | --- | --- | --- | --- | --- | --- | --- | --- | --- | --- | --- | --- | --- | --- | --- |
| 251 | 9.8 | **Painting&Performance Test** | 6d | 2018-06-27 | 2018-06-30 |  |  |  | 2018-06-18 | 2018-06-21 | 6d | 20d | 0d | TEAM_2Shift_Calendar-1 |  | 109h |  | 2,750 | 2,750 |  |
| 252 | 9.8.1 | Primer coat | 1d | 2018-06-27 | 2018-06-27 | 247SS |  |  | 2018-06-18 | 2018-06-18 | 1d | 20d | 0d | TEAM_2Shift_Calendar-1 | Painter | 16h |  |  |  |  |
| 253 | 9.8.2 | Final Coat | 1d | 2018-06-27 | 2018-06-28 | 252 |  |  | 2018-06-18 | 2018-06-19 | 1d | 20d | 0d | TEAM_2Shift_Calendar-1 | Painter | 16h |  |  |  |  |
| 254 | 9.8.3 | Performance Test | 2d | 2018-06-28 | 2018-06-29 | 253 |  |  | 2018-06-19 | 2018-06-20 | 2d | 20d | 0d | TEAM_2Shift_Calendar-1 | Fitter; Helper; Production Engineer; QC Engineer | 55h |  | 2,750 | 2,750 |  |
| 255 | 9.8.4 | Final inspection | 2d | 2018-06-29 | 2018-06-30 | 254 |  |  | 2018-06-20 | 2018-06-21 | 2d | 20d |  | TEAM_2Shift_Calendar-1 | QC Engineer | 22h |  |  |  |  |
| 256 | 9.9 | **Project Closure** | 8d | 2018-06-30 | 2018-07-05 |  |  |  | 2018-06-21 | 2018-06-27 | 8d | 20d |  | TEAM_2Shift_Calendar-1 |  | 98h |  | 166.67 | 166.67 |  |
| 257 | 9.9.1 | Final Documentation | 2d | 2018-06-30 | 2018-07-02 | 251 |  |  | 2018-06-21 | 2018-06-22 | 2d | 20d | 0d | TEAM_2Shift_Calendar-1 | QC Engineer [80%] | 8h |  |  |  |  |
| 258 | 9.9.2 | Despatch | 1d | 2018-07-02 | 2018-07-02 | 257 |  |  | 2018-06-22 | 2018-06-22 | 1d | 20d | 0d | TEAM_2Shift_Calendar-1 | Crane; Helper; Store | 10h |  | 166.67 | 166.67 |  |
| 259 | 9.9.3 | Transport to the Site | 5d | 2018-07-02 | 2018-07-05 | 258 |  |  | 2018-06-22 | 2018-06-27 | 5d | 20d |  | TEAM_2Shift_Calendar-1 | SC Transport (Cost) [0.1%]; Store; Crane | 80h |  |  |  |  |
| 260 | 10 | **Material Receipt** | 45.75d | 2018-04-25 A | 2018-06-22 |  | 13% | 39.87d | 2018-05-04 | 2018-05-24 | 15.75d | 19.75d |  |  |  | 99h | 22.5h | 1,650 | 550 | 375 |
| 261 | 10.1 | Plates -Ti-Gr.2,MS Plate | 150h | 2018-05-11 A | 2018-06-04 | 24FS+20d | 5% | 142h | 2018-05-22 | 2018-05-23 | 6h | 14.25d | 0d |  | Helper; Store; Crane | 9h | 4.5h | 150 | 50 | 75 |
| 262 | 10.2 | Rods-SA 479 Gr.316-shaft | 6h | 2018-06-12 | 2018-06-13 | 25FS+30d |  |  | 2018-05-09 | 2018-05-10 | 6h | 11.5d | 0d |  | Helper; Store; Crane | 9h |  | 150 | 50 |  |
| 263 | 10.3 | Bearing Housing | 6h | 2018-05-05 A | 2018-05-05 A | 26FS+18d | 100% |  | 2018-05-22 | 2018-05-23 | 6h |  |  |  | Helper; Store; Crane | 9h | 9h | 150 | 50 | 150 |
| 264 | 10.4 | Lovejoy coupling | 14h | 2018-04-25 A | 2018-04-26 A | 27FS+15d | 100% |  | 2018-05-23 | 2018-05-24 | 6h |  |  |  | Helper; Store; Crane | 9h | 9h | 150 | 50 | 150 |
| 265 | 10.5 | Viton O Ring | 6h | 2018-06-15 | 2018-06-16 | 28FS+20d |  |  | 2018-05-17 | 2018-05-18 | 6h | 15.38d | 0d |  | Helper; Store; Crane | 9h |  | 150 | 50 |  |
| 266 | 10.6 | Packing rope | 6h | 2018-06-08 | 2018-06-11 | 28FS+15d |  |  | 2018-05-04 | 2018-05-05 | 6h | 29.88d |  |  | Helper; Store; Crane | 9h |  | 150 | 50 |  |
| 267 | 10.7 | oil seal,Adaptor | 6h | 2018-06-21 | 2018-06-22 | 28FS+25d |  |  | 2018-05-04 | 2018-05-05 | 6h | 19d | 0d |  | Helper; Store; Crane | 9h |  | 150 | 50 |  |
| 268 | 10.8 | ISMC Channel,Equal Angle | 6h | 2018-06-21 | 2018-06-22 | 28FS+25d |  |  | 2018-05-04 | 2018-05-05 | 6h | 1.38d | 0d |  | Helper; Store; Crane | 9h |  | 150 | 50 |  |
| 269 | 10.9 | Gaskets-PTFE | 6h | 2018-06-22 | 2018-06-22 | 29FS+25d |  |  | 2018-05-07 | 2018-05-08 | 6h | 19.75d |  |  | Helper; Store; Crane | 9h |  | 150 | 50 |  |
| 270 | 10.10 | Consumbales | 6h | 2018-06-08 | 2018-06-11 | 30FS+25d |  |  | 2018-05-04 | 2018-05-05 | 6h | 30.25d |  |  | Helper; Store; Crane | 9h |  | 150 | 50 |  |
| 271 | 10.11 | Fasteners | 6h | 2018-05-22 | 2018-05-22 | 31FS+28d |  |  | 2018-05-04 | 2018-05-05 | 6h | 44.75d |  |  | Helper; Store; Crane | 9h |  | 150 | 50 |  |
| 272 | 11 | **Fabrication-P-244 A/B** | 130.5d | 2018-04-25 A | 2018-07-18 |  | 5% | 124.01d | 2018-04-24 | 2018-07-05 | 112.38d | 0d |  | TEAM_2Shift_Calendar-1 |  | 2301.25h | 43h | 112,759.78 | 121,279.69 | 2,112.5 |
| 273 | 11.1 | **Receipt of Boughtout materials** | 92.5d | 2018-04-25 A | 2018-06-25 |  | 52% | 44.24d | 2018-04-24 | 2018-05-22 | 41.75d | 38d |  | TEAM_2Shift_Calendar-1 |  | 86h | 43h | 2,395.83 | 2,495.83 | 2,112.5 |
| 274 | 11.1.1 | Receipt of bearing Housing | 6h | 2018-05-05 A | 2018-05-05 A | 263 | 100% |  | 2018-04-24 | 2018-04-24 | 6h |  |  | TEAM_2Shift_Calendar-1 | Crane; Helper; Store | 3h | 3h | 50 | 50 | 50 |
| 275 | 11.1.2 | Inward inspection | 1d | 2018-05-07 A | 2018-05-07 A | 274 | 100% |  | 2018-04-24 | 2018-04-25 | 1d |  |  | TEAM_2Shift_Calendar-1 | QC Engineer | 10h | 10h |  |  |  |
| 276 | 11.1.3 | Drilling holes For bolting | 2d | 2018-05-07 A | 2018-05-08 A | 275 | 100% |  | 2018-04-25 | 2018-04-26 | 2d |  |  | TEAM_2Shift_Calendar-1 | Fitter | 30h | 30h | 2,062.5 | 2,062.5 | 2,062.5 |
| 277 | 11.1.4 | Receipt of Lovejoy coupling | 9h | 2018-04-25 A | 2018-04-25 A | 264 | 100% |  | 2018-04-26 | 2018-04-26 | 6h |  |  | TEAM_2Shift_Calendar-1 | Crane; Helper; Store |  |  |  | 100 |  |
| 278 | 11.1.5 | Inward inspection | 1.12d | 2018-04-25 A | 2018-04-25 A | 277 | 100% |  | 2018-04-26 | 2018-04-27 | 1.88d |  |  | TEAM_2Shift_Calendar-1 | QC Engineer |  |  |  |  |  |
| 279 | 11.1.6 | Receipt of Adaptor | 6h | 2018-06-22 | 2018-06-22 | 267 |  |  | 2018-05-21 | 2018-05-21 | 6h | 38d | 0d | TEAM_2Shift_Calendar-1 | Crane; Helper; Store | 6h |  | 100 | 100 |  |
| 280 | 11.1.7 | Inward inspection | 1d | 2018-06-22 | 2018-06-25 | 279 |  |  | 2018-05-21 | 2018-05-22 | 1d | 38d |  | TEAM_2Shift_Calendar-1 | QC Engineer | 8h |  |  |  |  |
| 281 | 11.1.8 | Receipt of Viton O Rings | 6h | 2018-06-16 | 2018-06-16 | 265 |  |  | 2018-05-15 | 2018-05-15 | 6h | 30.38d | 0d | TEAM_2Shift_Calendar-1 | Crane; Helper; Store | 6h |  | 100 | 100 |  |
| 282 | 11.1.9 | Inward inspection | 1d | 2018-06-16 | 2018-06-18 | 281 |  |  | 2018-05-15 | 2018-05-16 | 1d | 35.25d | 0d | TEAM_2Shift_Calendar-1 | QC Engineer | 10h |  |  |  |  |
| 283 | 11.1.10 | Receipt of wear ring | 1d | 2018-06-18 | 2018-06-18 | 282 |  |  | 2018-05-16 | 2018-05-16 | 1d | 46d | 0d | TEAM_2Shift_Calendar-1 | Crane; Helper; Store | 5h |  | 83.33 | 83.33 |  |
| 284 | 11.1.11 | Inward inspection | 1d | 2018-06-18 | 2018-06-19 | 283 |  |  | 2018-05-16 | 2018-05-17 | 1d | 46d |  | TEAM_2Shift_Calendar-1 | QC Engineer | 8h |  |  |  |  |

| ID | WBS | Task | Duration | Start | Finish | Predecessors | Baseline start | Baseline finish | Baseline duration | Total slack | Free slack | Calendar | Resources | Work | Cost | Baseline cost |
| --- | --- | --- | --- | --- | --- | --- | --- | --- | --- | --- | --- | --- | --- | --- | --- | --- |
| 285 | 11.2 | **Casing** | 19.62d | 2018-06-04 | 2018-06-16 |  | 2018-05-15 | 2018-05-28 | 19.62d | 28.38d | 25.25d | TEAM_2Shift_Calendar-1 |  | 455h | 21,852.09 | 21,852.08 |
| 286 | 11.2.1 | Material Receipt | 6h | 2018-06-04 | 2018-06-04 | 261 | 2018-05-15 | 2018-05-15 | 6h | 40d | 0d | TEAM_2Shift_Calendar-1 | Crane; Helper; Store | 18h | 300 | 300 |
| 287 | 11.2.2 | Inspection | 1.25d | 2018-06-04 | 2018-06-05 | 286 | 2018-05-15 | 2018-05-16 | 1.25d | 40d | 0d | TEAM_2Shift_Calendar-1 | QC Engineer | 4h |  |  |
| 288 | 11.2.3 | Plate Marking | 2d | 2018-06-05 | 2018-06-06 | 287 | 2018-05-16 | 2018-05-17 | 2d | 40d | 0d | TEAM_2Shift_Calendar-1 | Fitter; Helper | 30h | 1,781.25 | 1,781.25 |
| 289 | 11.2.4 | Plate Cutting | 1d | 2018-06-06 | 2018-06-07 | 288 | 2018-05-17 | 2018-05-18 | 1d | 40d | 0d | TEAM_2Shift_Calendar-1 | Cutting Machine; Helper; Fitter | 36h | 1,425 | 1,425 |
| 290 | 11.2.5 | Edge Preparation | 1d | 2018-06-07 | 2018-06-07 | 289 | 2018-05-18 | 2018-05-18 | 1d | 40d | 0d | TEAM_2Shift_Calendar-1 | Grinder; Grinding Machine | 24h | 675 | 675 |
| 291 | 11.2.6 | Plate Bending | 1d | 2018-06-07 | 2018-06-08 | 290 | 2018-05-18 | 2018-05-19 | 1d | 40d | 0d | TEAM_2Shift_Calendar-1 | Fitter; Helper | 20h | 1,187.5 | 1,187.5 |
| 292 | 11.2.7 | Rolling | 1d | 2018-06-08 | 2018-06-08 | 291 | 2018-05-19 | 2018-05-19 | 1d | 40d |  | TEAM_2Shift_Calendar-1 | Fitter | 14h | 962.5 | 962.5 |
| 293 | 11.2.8 | **Nozzle Preparation** | 11.5d | 2018-06-04 | 2018-06-12 |  | 2018-05-15 | 2018-05-22 | 11.5d | 28.38d | 0d | TEAM_2Shift_Calendar-1 |  | 206h | 9,981.25 | 9,981.25 |
| 294 | 11.2.8.1 | Nozzle Plate Cutting | 1d | 2018-06-04 | 2018-06-05 | 261 | 2018-05-15 | 2018-05-16 | 1d | 28.38d | 0d | TEAM_2Shift_Calendar-1 | Cutting Machine; Helper | 24h | 600 | 600 |
| 295 | 11.2.8.2 | Edge Preparation | 1d | 2018-06-05 | 2018-06-05 | 294 | 2018-05-16 | 2018-05-16 | 1d | 28.38d | 0d | TEAM_2Shift_Calendar-1 | Grinder; Grinding Machine | 26h | 731.25 | 731.25 |
| 296 | 11.2.8.3 | Nozzle Plate Rolling | 1d | 2018-06-05 | 2018-06-06 | 295 | 2018-05-16 | 2018-05-17 | 1d | 28.38d | 0d | TEAM_2Shift_Calendar-1 | Fitter; Helper | 24h | 1,425 | 1,425 |
| 297 | 11.2.8.4 | Suction&Discharge head plate marking | 1d | 2018-06-06 | 2018-06-06 | 296 | 2018-05-17 | 2018-05-17 | 1d | 28.38d | 0d | TEAM_2Shift_Calendar-1 | Fitter; Helper | 24h | 1,425 | 1,425 |
| 298 | 11.2.8.5 | Plate cutting | 1d | 2018-06-06 | 2018-06-07 | 297 | 2018-05-17 | 2018-05-18 | 1d | 28.38d | 0d | TEAM_2Shift_Calendar-1 | Cutting Machine; Helper | 24h | 600 | 600 |
| 299 | 11.2.8.6 | Plate Drilling for bolt holes | 2d | 2018-06-07 | 2018-06-08 | 298 | 2018-05-18 | 2018-05-19 | 2d | 28.38d | 0d | TEAM_2Shift_Calendar-1 | Driller | 26h | 1,787.5 | 1,787.5 |
| 300 | 11.2.8.7 | Plate Fitup with Nozzle pipe | 1d | 2018-06-08 | 2018-06-08 | 299 | 2018-05-19 | 2018-05-19 | 1d | 28.38d | 0d | TEAM_2Shift_Calendar-1 | Fitter; Helper | 24h | 1,425 | 1,425 |
| 301 | 11.2.8.8 | Dp | 0.5d | 2018-06-08 | 2018-06-08 | 300 | 2018-05-19 | 2018-05-19 | 0.5d | 28.38d | 0d | TEAM_2Shift_Calendar-1 | Fitter; Helper | 4h | 237.5 | 237.5 |
| 302 | 11.2.8.9 | Welding | 2d | 2018-06-08 | 2018-06-11 | 301 | 2018-05-19 | 2018-05-21 | 2d | 28.38d | 0d | TEAM_2Shift_Calendar-1 | TIG Welder; TIG Welding Machine; Helper | 30h | 1,750 | 1,750 |
| 303 | 11.2.8.10 | Radiography | 1d | 2018-06-11 | 2018-06-12 | 302 | 2018-05-21 | 2018-05-22 | 1d | 28.38d |  | TEAM_2Shift_Calendar-1 | SC Radiography (Cost) [0.1%] |  |  |  |
| 304 | 11.2.9 | **Assembly** | 8.12d | 2018-06-12 | 2018-06-16 |  | 2018-05-22 | 2018-05-28 | 8.12d | 28.38d |  | TEAM_2Shift_Calendar-1 |  | 103h | 5,539.59 | 5,539.58 |
| 305 | 11.2.9.1 | Outlet&Inlet Nozzle fitup with Volute Casing | 1d | 2018-06-12 | 2018-06-12 | 293 | 2018-05-22 | 2018-05-22 | 1d | 28.38d | 0d | TEAM_2Shift_Calendar-1 | Fitter; Helper | 24h | 1,425 | 1,425 |
| 306 | 11.2.9.2 | Inspection | 1.5d | 2018-06-12 | 2018-06-13 | 305 | 2018-05-22 | 2018-05-23 | 1.5d | 28.38d | 0d | TEAM_2Shift_Calendar-1 | QC Engineer | 6h |  |  |
| 307 | 11.2.9.3 | Dp | 0.5d | 2018-06-13 | 2018-06-13 | 306 | 2018-05-23 | 2018-05-23 | 0.5d | 28.38d | 0d | TEAM_2Shift_Calendar-1 | Fitter; Helper | 6h | 356.25 | 356.25 |
| 308 | 11.2.9.4 | Welding | 2d | 2018-06-13 | 2018-06-14 | 307 | 2018-05-23 | 2018-05-24 | 2d | 28.38d | 0d | TEAM_2Shift_Calendar-1 | Helper; TIG Welder; TIG Welding Machine | 40h | 2,333.34 | 2,333.33 |
| 309 | 11.2.9.5 | Radiography | 1d | 2018-06-14 | 2018-06-15 | 308 | 2018-05-24 | 2018-05-25 | 1d | 28.38d | 0d | TEAM_2Shift_Calendar-1 | SC Radiography (Cost) [0.1%] |  |  |  |
| 310 | 11.2.9.6 | Hydrotest | 1d | 2018-06-15 | 2018-06-15 | 309 | 2018-05-25 | 2018-05-25 | 1d | 28.38d | 0d | TEAM_2Shift_Calendar-1 | Fitter; Helper | 24h | 1,425 | 1,425 |
| 311 | 11.2.9.7 | Inspection | 1.12d | 2018-06-15 | 2018-06-16 | 310 | 2018-05-25 | 2018-05-28 | 1.12d | 28.38d |  | TEAM_2Shift_Calendar-1 | QC Engineer | 3h |  |  |

| ID | WBS | Task | Duration | Start | Finish | Predecessors | Baseline start | Baseline finish | Baseline duration | Total slack | Free slack | Calendar | Resources | Work | Cost | Baseline cost |
| --- | --- | --- | --- | --- | --- | --- | --- | --- | --- | --- | --- | --- | --- | --- | --- | --- |
| 312 | 11.3 | **Impeller** | 22d | 2018-06-04 | 2018-06-18 |  | 2018-05-15 | 2018-05-29 | 21.5d | 29d | 25.88d | TEAM_2Shift_Calendar-1 |  | 334h | 16,122.92 | 16,122.92 |
| 313 | 11.3.1 | Receipt of Material | 0.5d | 2018-06-04 | 2018-06-04 | 261 | 2018-05-15 | 2018-05-15 | 0.5d | 29d | 0d | TEAM_2Shift_Calendar-1 | Crane; Helper; Store | 12h | 200 | 200 |
| 314 | 11.3.2 | Hub Plate Marking | 1d | 2018-06-04 | 2018-06-05 | 313 | 2018-05-15 | 2018-05-16 | 1d | 29d | 0d | TEAM_2Shift_Calendar-1 | Fitter; Helper | 30h | 1,781.25 | 1,781.25 |
| 315 | 11.3.3 | Hub Plate cutting | 1d | 2018-06-05 | 2018-06-05 | 314 | 2018-05-16 | 2018-05-16 | 1d | 29d | 0d | TEAM_2Shift_Calendar-1 | Cutting Machine; Fitter; Helper | 45h | 1,781.25 | 1,781.25 |
| 316 | 11.3.4 | Edge Preparation | 0.5d | 2018-06-05 | 2018-06-06 | 315 | 2018-05-16 | 2018-05-17 | 0.5d | 29d | 0d | TEAM_2Shift_Calendar-1 | Grinder; Grinding Machine; Helper | 16h | 566.67 | 566.67 |
| 317 | 11.3.5 | **Vane Plate Preparation** | 3d | 2018-06-06 | 2018-06-07 |  | 2018-05-17 | 2018-05-18 | 3d | 29d | 0d | TEAM_2Shift_Calendar-1 |  | 93h | 4,343.75 | 4,343.75 |
| 318 | 11.3.5.1 | Plate Marking | 0.5d | 2018-06-06 | 2018-06-06 | 261, 316 | 2018-05-17 | 2018-05-17 | 0.5d | 29d | 0d | TEAM_2Shift_Calendar-1 | Fitter; Helper | 6h | 356.25 | 356.25 |
| 319 | 11.3.5.2 | Plate cutting | 1d | 2018-06-06 | 2018-06-06 | 318 | 2018-05-17 | 2018-05-17 | 1d | 29d | 0d | TEAM_2Shift_Calendar-1 | Cutting Machine; Fitter; Helper | 45h | 1,781.25 | 1,781.25 |
| 320 | 11.3.5.3 | Edge Preparation | 0.5d | 2018-06-06 | 2018-06-07 | 319 | 2018-05-17 | 2018-05-18 | 0.5d | 29d | 0d | TEAM_2Shift_Calendar-1 | Grinder; Grinding Machine; Helper | 12h | 425 | 425 |
| 321 | 11.3.5.4 | Plate Bending | 1d | 2018-06-07 | 2018-06-07 | 320 | 2018-05-18 | 2018-05-18 | 1d | 29d |  | TEAM_2Shift_Calendar-1 | Fitter; Helper | 30h | 1,781.25 | 1,781.25 |
| 322 | 11.3.6 | **Assembly** | 16d | 2018-06-07 | 2018-06-18 |  | 2018-05-18 | 2018-05-29 | 15.5d | 29d |  | TEAM_2Shift_Calendar-1 |  | 138h | 7,450 | 7,450 |
| 323 | 11.3.6.1 | vane plates fitup with Hub | 1d | 2018-06-07 | 2018-06-08 | 316, 317 | 2018-05-18 | 2018-05-19 | 1d | 29d | 0d | TEAM_2Shift_Calendar-1 | Fitter; Helper | 20h | 1,187.5 | 1,187.5 |
| 324 | 11.3.6.2 | Inspection&DP | 2d | 2018-06-08 | 2018-06-11 | 323 | 2018-05-19 | 2018-05-19 | 1.5d | 29d | 0d | TEAM_2Shift_Calendar-1 | QC Engineer | 6h |  |  |
| 325 | 11.3.6.3 | Welding | 3d | 2018-06-11 | 2018-06-12 | 324 | 2018-05-19 | 2018-05-22 | 3d | 29d | 0d | TEAM_2Shift_Calendar-1 | Helper; TIG Welder; TIG Welding Machine | 30h | 1,750 | 1,750 |
| 326 | 11.3.6.4 | Radiography | 1d | 2018-06-12 | 2018-06-13 | 325 | 2018-05-22 | 2018-05-22 | 1d | 29d | 0d | TEAM_2Shift_Calendar-1 | SC Radiography (Cost) [0.1%] |  |  |  |
| 327 | 11.3.6.5 | Impeller Eye opening | 1d | 2018-06-13 | 2018-06-13 | 326 | 2018-05-22 | 2018-05-23 | 1d | 29d | 0d | TEAM_2Shift_Calendar-1 | Fitter; Helper | 16h | 950 | 950 |
| 328 | 11.3.6.6 | Final Inspection | 2d | 2018-06-13 | 2018-06-14 | 327 | 2018-05-23 | 2018-05-24 | 2d | 29d | 0d | TEAM_2Shift_Calendar-1 | QC Engineer | 6h |  |  |
| 329 | 11.3.6.7 | Dynamic Balancing | 3d | 2018-06-14 | 2018-06-16 | 328 | 2018-05-24 | 2018-05-25 | 3d | 29d | 0d | TEAM_2Shift_Calendar-1 | Fitter; Helper | 30h | 1,781.25 | 1,781.25 |
| 330 | 11.3.6.8 | Keyway Machining | 3d | 2018-06-16 | 2018-06-18 | 329 | 2018-05-25 | 2018-05-29 | 3d | 29d |  | TEAM_2Shift_Calendar-1 | Fitter; Helper | 30h | 1,781.25 | 1,781.25 |
| 331 | 11.4 | **Base Frame** | 13d | 2018-06-22 | 2018-07-02 |  | 2018-05-21 | 2018-05-30 | 13d | 2.62d | 0d | TEAM_2Shift_Calendar-1 |  | 273h | 13,261.46 | 13,261.46 |
| 332 | 11.4.1 | Receipt of ISMC Channel | 1d | 2018-06-22 | 2018-06-25 | 268 | 2018-05-21 | 2018-05-22 | 1d | 2.62d | 0d | TEAM_2Shift_Calendar-1 | Crane; Helper; Store | 35h | 583.33 | 583.33 |
| 333 | 11.4.2 | Inward inspection | 1d | 2018-06-25 | 2018-06-25 | 332 | 2018-05-22 | 2018-05-22 | 1d | 2.62d | 0d | TEAM_2Shift_Calendar-1 | QC Engineer | 6h |  |  |
| 334 | 11.4.3 | Support Plate Marking | 1d | 2018-06-25 | 2018-06-26 | 333 | 2018-05-22 | 2018-05-23 | 1d | 3.12d | 0d | TEAM_2Shift_Calendar-1 | Fitter; Helper | 24h | 1,425 | 1,425 |
| 335 | 11.4.4 | Support Plate Cutting | 1d | 2018-06-26 | 2018-06-26 | 334 | 2018-05-23 | 2018-05-23 | 1d | 3.12d | 0d | TEAM_2Shift_Calendar-1 | Cutting Machine; Fitter; Helper | 45h | 1,781.25 | 1,781.25 |
| 336 | 11.4.5 | Channel Fitup | 1d | 2018-06-26 | 2018-06-27 | 335 | 2018-05-23 | 2018-05-24 | 1d | 3.12d | 0d | TEAM_2Shift_Calendar-1 | Fitter; Helper | 45h | 2,671.88 | 2,671.88 |
| 337 | 11.4.6 | Welding | 3d | 2018-06-27 | 2018-06-28 | 336 | 2018-05-24 | 2018-05-25 | 3d | 3.12d | 0d | TEAM_2Shift_Calendar-1 | Helper; TIG Welder; TIG Welding Machine | 60h | 3,500 | 3,500 |
| 338 | 11.4.7 | Radiography | 1d | 2018-06-28 | 2018-06-29 | 337 | 2018-05-25 | 2018-05-28 | 1d | 3.12d | 0d | TEAM_2Shift_Calendar-1 | SC Radiography (Cost) [0.1%] |  |  |  |
| 339 | 11.4.8 | Slotted & Bolt hole drillings | 3d | 2018-06-29 | 2018-06-30 | 338 | 2018-05-28 | 2018-05-29 | 3d | 3.12d | 0d | TEAM_2Shift_Calendar-1 | Driller | 48h | 3,300 | 3,300 |
| 340 | 11.4.9 | Final Inspection | 1d | 2018-06-30 | 2018-07-02 | 339 | 2018-05-29 | 2018-05-30 | 1d | 3.12d |  | TEAM_2Shift_Calendar-1 | QC Engineer | 10h |  |  |

| ID | WBS | Task | Duration | Start | Finish | Predecessors | Baseline start | Baseline finish | Baseline duration | Total slack | Free slack | Calendar | Resources | Work | Cost | Baseline cost |
| --- | --- | --- | --- | --- | --- | --- | --- | --- | --- | --- | --- | --- | --- | --- | --- | --- |
| 341 | 11.5 | **Shaft** | 12d | 2018-06-13 | 2018-06-20 |  | 2018-05-29 | 2018-06-05 | 12d | 23.12d | 20.25d | TEAM_2Shift_Calendar-1 |  | 260h | 14,350 | 14,350 |
| 342 | 11.5.1 | Receipt of Materials | 1d | 2018-06-13 | 2018-06-13 | 262 | 2018-05-29 | 2018-05-29 | 1d | 23.12d | 0d | TEAM_2Shift_Calendar-1 | Crane; Helper; Store | 6h | 100 | 100 |
| 343 | 11.5.2 | Inward inspection | 1d | 2018-06-13 | 2018-06-14 | 342 | 2018-05-29 | 2018-05-30 | 1d | 23.12d | 0d | TEAM_2Shift_Calendar-1 | QC Engineer | 6h |  |  |
| 344 | 11.5.3 | Shaft Machining | 3d | 2018-06-14 | 2018-06-15 | 343 | 2018-05-30 | 2018-05-31 | 3d | 23.12d | 0d | TEAM_2Shift_Calendar-1 | Fitter; Helper | 80h | 4,750 | 4,750 |
| 345 | 11.5.4 | Domenut Machining | 3d | 2018-06-15 | 2018-06-18 | 344 | 2018-05-31 | 2018-06-02 | 3d | 23.12d | 0d | TEAM_2Shift_Calendar-1 | Fitter; Helper | 80h | 4,750 | 4,750 |
| 346 | 11.5.5 | Shaft Key Way Machining | 3d | 2018-06-18 | 2018-06-19 | 345 | 2018-06-02 | 2018-06-04 | 3d | 23.12d | 0d | TEAM_2Shift_Calendar-1 | Fitter; Helper | 80h | 4,750 | 4,750 |
| 347 | 11.5.6 | Final Inspection | 1d | 2018-06-19 | 2018-06-20 | 346 | 2018-06-04 | 2018-06-05 | 1d | 23.12d |  | TEAM_2Shift_Calendar-1 | QC Engineer | 8h |  |  |
| 348 | 11.6 | **Coupling Guard** | 8d | 2018-06-04 | 2018-06-08 |  | 2018-05-15 | 2018-05-19 | 8d | 61.12d |  | TEAM_2Shift_Calendar-1 |  | 212h | 9,708.34 | 9,708.33 |
| 349 | 11.6.1 | Plate Marking | 2d | 2018-06-04 | 2018-06-05 | 261 | 2018-05-15 | 2018-05-16 | 2d | 61.12d | 0d | TEAM_2Shift_Calendar-1 | Fitter; Helper | 50h | 2,968.75 | 2,968.75 |
| 350 | 11.6.2 | Plate Cutting | 2d | 2018-06-05 | 2018-06-06 | 349 | 2018-05-16 | 2018-05-17 | 2d | 61.12d | 0d | TEAM_2Shift_Calendar-1 | Cutting Machine; Fitter; Helper | 55h | 2,177.09 | 2,177.08 |
| 351 | 11.6.3 | Edge Preparation | 1d | 2018-06-06 | 2018-06-07 | 350 | 2018-05-17 | 2018-05-18 | 1d | 61.12d | 0d | TEAM_2Shift_Calendar-1 | Grinder; Grinding Machine; Helper | 45h | 1,593.75 | 1,593.75 |
| 352 | 11.6.4 | Plate Pending | 2d | 2018-06-07 | 2018-06-08 | 351 | 2018-05-18 | 2018-05-19 | 2d | 61.12d | 0d | TEAM_2Shift_Calendar-1 | Fitter; Helper | 50h | 2,968.75 | 2,968.75 |
| 353 | 11.6.5 | Final Inspection | 1d | 2018-06-08 | 2018-06-08 | 352 | 2018-05-19 | 2018-05-19 | 1d | 61.12d |  | TEAM_2Shift_Calendar-1 | QC Engineer | 12h |  |  |
| 354 | 11.7 | **Assembly** | 21d | 2018-07-02 | 2018-07-13 |  | 2018-05-30 | 2018-06-18 | 30.75d | 3.12d | 0d | TEAM_2Shift_Calendar-1 |  | 610h | 34,312.5 | 41,062.5 |
| 355 | 11.7.1 | Base Frame Setup | 2d | 2018-07-02 | 2018-07-03 | 331 | 2018-05-30 | 2018-05-31 | 2d | 3.12d | 0d | TEAM_2Shift_Calendar-1 | Fitter; Helper [200%] | 30h | 1,687.5 | 1,687.5 |
| 356 | 11.7.2 | Casing fitup with frame | 1d | 2018-07-03 | 2018-07-03 | 285, 355 | 2018-05-31 | 2018-06-01 | 3d | 3.12d | 0d | TEAM_2Shift_Calendar-1 | Fitter; Helper [200%] | 26.67h | 1,500 | 4,500 |
| 357 | 11.7.3 | Shaft insertion to Casing | 2d | 2018-07-03 | 2018-07-04 | 341, 356 | 2018-06-05 | 2018-06-06 | 2d | 3.12d | 0d | TEAM_2Shift_Calendar-1 | Fitter; Helper [200%] | 60h | 3,375 | 3,375 |
| 358 | 11.7.4 | Wear ring fitup with impeller | 2d | 2018-07-04 | 2018-07-05 | 281, 312, 357 | 2018-06-06 | 2018-06-07 | 2d | 3.12d | 0d | TEAM_2Shift_Calendar-1 | Fitter; Helper [200%] | 60h | 3,375 | 3,375 |
| 359 | 11.7.5 | Insertion of Impeller with casing | 2d | 2018-07-05 | 2018-07-06 | 312, 285, 358 | 2018-06-07 | 2018-06-08 | 2d | 3.12d | 0d | TEAM_2Shift_Calendar-1 | Fitter; Helper [200%] | 60h | 3,375 | 3,375 |
| 360 | 11.7.6 | Backcover fitup with casing | 2d | 2018-07-06 | 2018-07-07 | 359 | 2018-06-08 | 2018-06-11 | 2d | 3.12d | 0d | TEAM_2Shift_Calendar-1 | Fitter; Helper [200%] | 60h | 3,375 | 3,375 |
| 361 | 11.7.7 | Sleeve& O ring insertion | 2d | 2018-07-07 | 2018-07-09 | 282, 360 | 2018-06-11 | 2018-06-12 | 2d | 3.12d | 0d | TEAM_2Shift_Calendar-1 | Fitter; Helper [200%] | 60h | 3,375 | 3,375 |
| 362 | 11.7.8 | Bearing Housing Fitup & Bolting | 2d | 2018-07-09 | 2018-07-10 | 274, 361 | 2018-06-12 | 2018-06-13 | 2d | 3.12d | 0d | TEAM_2Shift_Calendar-1 | Fitter; Helper [200%] | 60h | 3,375 | 3,375 |
| 363 | 11.7.9 | Bearing and O ring Fitup | 2d | 2018-07-10 | 2018-07-11 | 362 | 2018-06-13 | 2018-06-14 | 2d | 3.12d | 0d | TEAM_2Shift_Calendar-1 | Fitter; Helper [200%] | 60h | 3,375 | 3,375 |
| 364 | 11.7.10 | Coupling Fitup& Bolting to shaft | 2d | 2018-07-11 | 2018-07-12 | 278, 363 | 2018-06-14 | 2018-06-15 | 3d | 3.12d | 0d | TEAM_2Shift_Calendar-1 | Fitter; Helper [200%] | 66.67h | 3,750 | 5,625 |
| 365 | 11.7.11 | Coupling Guard Fitup&Bolting to Frame | 2d | 2018-07-12 | 2018-07-13 | 364 | 2018-06-15 | 2018-06-18 | 3d | 3.12d |  | TEAM_2Shift_Calendar-1 | Fitter; Helper [200%] | 66.67h | 3,750 | 5,625 |

| ID | WBS | Task | Duration | Start | Finish | Predecessors | Baseline start | Baseline finish | Baseline duration | Total slack | Free slack | Calendar | Resources | Work | Cost | Baseline cost |
| --- | --- | --- | --- | --- | --- | --- | --- | --- | --- | --- | --- | --- | --- | --- | --- | --- |
| 366 | 11.8 | **Painting&Performance Test** | 2d | 2018-07-13 | 2018-07-16 |  | 2018-06-18 | 2018-06-21 | 6d | 3.12d | 0d | TEAM_2Shift_Calendar-1 |  | 39.25h | 556.64 | 2,226.56 |
| 367 | 11.8.1 | Primer coat | 4h | 2018-07-13 | 2018-07-13 | 354 | 2018-06-18 | 2018-06-18 | 1d | 3.12d | 0d | TEAM_2Shift_Calendar-1 | Painter | 8h |  |  |
| 368 | 11.8.2 | Final Coat | 4h | 2018-07-13 | 2018-07-16 | 367 | 2018-06-18 | 2018-06-19 | 1d | 3.12d | 0d | TEAM_2Shift_Calendar-1 | Painter | 8h |  |  |
| 369 | 11.8.3 | Performance Test | 0.5d | 2018-07-16 | 2018-07-16 | 368 | 2018-06-19 | 2018-06-20 | 2d | 3.12d | 0d | TEAM_2Shift_Calendar-1 | Fitter; Helper; Production Engineer; QC Engineer | 18.75h | 556.64 | 2,226.56 |
| 370 | 11.8.4 | Final inspection | 0.5d | 2018-07-16 | 2018-07-16 | 369 | 2018-06-20 | 2018-06-21 | 2d | 3.75d |  | TEAM_2Shift_Calendar-1 | QC Engineer | 4.5h |  |  |
| 371 | 11.9 | **Project Closure** | 2.88d | 2018-07-13 | 2018-07-18 |  | 2018-06-21 | 2018-07-05 | 11.5d | 0d |  |  |  | 32h | 200 | 200 |
| 372 | 11.9.1 | Final Documentation | 1d | 2018-07-13 | 2018-07-16 | 366SS | 2018-06-21 | 2018-06-26 | 3d | 0.25d | 0d |  | QC Engineer | 8h |  |  |
| 373 | 11.9.2 | Despatch | 1d | 2018-07-16 | 2018-07-17 | 372 | 2018-06-26 | 2018-06-27 | 1d | 0.25d | 0d |  | Crane; Helper; Store | 12h | 200 | 200 |
| 374 | 11.9.3 | Transport to the Site | 1d | 2018-07-17 | 2018-07-18 | 373 | 2018-06-27 | 2018-06-29 | 5d | 0.25d |  | TEAM_2Shift_Calendar-1 | SC Transport (Cost) [0.1%]; Crane | 8h |  |  |
| 375 | 11.9.4 | PBG Submission | 4h | 2018-07-18 | 2018-07-18 | 374 | 2018-07-05 | 2018-07-05 | 1d | 0d |  |  | Finance | 4h |  |  |
