# 4250-Grasim

Schedule from MS Project, 2018-02-08 to 2018-05-15, A marks actual dates.

## Calendars

- TEAM_Stand_Calendar: Mon-Sat 08:30-12:30, 13:30-17:30; Sun off. Exceptions (off unless hours are given): 2017-01-13 to 2023-08-12 (2nd Sat, recurring), 2017-01-26 to 2036-01-26 (Republic Day, recurring), 2017-01-27 to 2023-08-26 (4th Sat, recurring), 2017-05-01 to 2036-05-01 (May Day, recurring), 2017-08-15 to 2036-08-15 (Independence Day, recurring), 2017-10-02 to 2036-10-02 (Gandhi Jayanti, recurring).

## Resources

| Resource | Rate |
| --- | --- |
| Client |  |
| CNC Lathe |  |
| Crane |  |
| Cutting Machine |  |
| Design Engineer |  |
| Draftman |  |
| Driller | 68.75 |
| Finance |  |
| Fitter | 68.75 |
| Foreman |  |
| Forming Machine |  |
| Gas Cutter | 68.75 |
| Grinder | 56.25 |
| Helper | 50 |
| HOD |  |
| Lathe |  |
| Lathe Operator | 120 |
| Marketing |  |
| Milling Operator | 120 |
| OAGM |  |
| Plate Bending Machine |  |
| PM |  |
| PMO Head |  |
| PPC Engineer |  |
| Production Department |  |
| Production Engineer |  |
| Purchase Engineer |  |
| QC Engineer |  |
| Radial Drilling Machine |  |
| Rolling Machine |  |
| SAW Machine |  |
| SAW Welder | 68.75 |
| SC (Work) |  |
| SMAW Welder | 68.75 |
| SMAW Welding Machine |  |
| Store |  |
| TIG Welder | 125 |
| TIG Welding Machine |  |

## Schedule

| ID | WBS | Task | Duration | Start | Finish | Predecessors | Complete | Remaining | Baseline start | Baseline finish | Baseline duration | Total slack | Constraint | Resources | Work | Actual work |
| --- | --- | --- | --- | --- | --- | --- | --- | --- | --- | --- | --- | --- | --- | --- | --- | --- |
| 1 | 1 | **Project Initiation** | 4d | 2018-02-08 A | 2018-02-13 A |  | 100% |  | 2018-02-08 | 2018-02-13 | 4d |  |  |  | 40h | 40h |
| 2 | 1.1 | PO Receipt | 1d | 2018-02-08 A | 2018-02-08 A |  | 100% |  | 2018-02-08 | 2018-02-08 | 1d |  | start no earlier than 2018-02-08 | Marketing | 8h | 8h |
| 3 | 1.2 | Work Order | 1d | 2018-02-09 A | 2018-02-09 A | 2 | 100% |  | 2018-02-09 | 2018-02-09 | 1d |  |  | Marketing | 8h | 8h |
| 4 | 1.3 | CRM | 8h | 2018-02-13 A | 2018-02-13 A | 3FS+1d | 100% |  | 2018-02-13 | 2018-02-13 | 8h |  |  | HOD; PM; PMO Head | 24h | 24h |
| 5 | 2 | **Design** | 16d | 2018-02-14 A | 2018-03-05 A |  | 100% |  | 2018-02-17 | 2018-02-23 | 6d |  |  |  | 72h | 72h |
| 6 | 2.1 | Drawing issue to all internal departments(Pump Casing, shaft) | 12d | 2018-02-14 A | 2018-02-28 A | 4FS+3d | 100% |  | 2018-02-17 | 2018-02-17 | 1d |  |  | Design Engineer | 8h | 8h |
| 7 | 2.2 | Drawing issue to all internal departments(Bearing Housing) | 16d | 2018-02-14 A | 2018-03-05 A | 4FS+8d | 100% |  | 2018-02-23 | 2018-02-23 | 1d |  |  | Design Engineer | 64h | 64h |
| 8 | 3 | **4250-MaterialOrdering** | 12d | 2018-03-02 A | 2018-03-16 A |  | 100% |  | 2018-02-28 | 2018-03-17 | 15d |  |  |  | 176h | 176h |
| 9 | 3.1 | **PR Issue** | 2.5d | 2018-03-02 A | 2018-03-05 A |  | 100% |  | 2018-02-28 | 2018-03-07 | 7d |  |  |  | 5h | 5h |
| 10 | 3.1.1 | Rod SS316 | 1h | 2018-03-02 A | 2018-03-02 A | 6FS+7d | 100% |  | 2018-02-28 | 2018-02-28 | 2h |  |  | PPC Engineer | 1h | 1h |
| 11 | 3.1.2 | Bearing Housing CI | 4h | 2018-03-05 A | 2018-03-05 A | 7FS+2d | 100% |  | 2018-03-06 | 2018-03-07 | 16h |  |  | PPC Engineer | 4h | 4h |
| 12 | 3.2 | **Material Ordering** | 12d | 2018-03-02 A | 2018-03-16 A |  | 100% |  | 2018-02-28 | 2018-03-17 | 14.75d |  |  |  | 171h | 171h |
| 13 | 3.2.1 | Rod SS316 | 12d | 2018-03-02 A | 2018-03-16 A | 10 | 100% |  | 2018-02-28 | 2018-03-09 | 8d |  |  | Purchase Engineer | 95h | 95h |
| 14 | 3.2.2 | Bearing Housing CI | 10d | 2018-03-05 A | 2018-03-16 A | 11 | 100% |  | 2018-03-08 | 2018-03-17 | 8d |  |  | Purchase Engineer | 76h | 76h |
| 15 | 4 | **4250-MaterialReceipt** | 25d | 2018-03-05 A | 2018-04-04 A |  | 100% |  | 2018-03-27 | 2018-04-06 | 9.12d |  |  |  | 13h | 13h |
| 16 | 4.1 | Rod SS316 | 1d | 2018-03-28 A | 2018-03-28 A | 13FS+15d | 100% |  | 2018-03-29 | 2018-03-30 | 1d |  |  |  |  |  |
| 17 | 4.2 | Bearing Housing CI | 1d | 2018-04-02 A | 2018-04-02 A | 14FS+10d | 100% |  | 2018-03-31 | 2018-04-02 | 1d |  |  |  | 3h | 3h |
| 18 | 4.3 | **Raw Material Inspection** | 25d | 2018-03-05 A | 2018-04-04 A |  | 100% |  | 2018-03-29 | 2018-04-06 | 7.12d |  |  |  | 10h | 10h |
| 19 | 4.3.1 | Raw Material Inspection (Plates) | 1d | 2018-03-05 A | 2018-03-05 A | 6FS+3d | 100% |  | 2018-04-05 | 2018-04-06 | 1d |  |  |  | 3h | 3h |
| 20 | 4.3.2 | Raw Material Inspection (Rod) | 1d | 2018-03-30 A | 2018-03-30 A | 16FS+1d | 100% |  |  |  |  |  |  |  | 1h | 1h |
| 21 | 4.3.3 | Raw material Inspection (Bearing Housing) | 1d | 2018-04-04 A | 2018-04-04 A | 17FS+1d | 100% |  | 2018-04-03 | 2018-04-04 | 1d |  |  |  | 4h | 4h |
| 22 | 4.3.4 | Raw Material Inspection (Consumbales) | 1d | 2018-03-07 A | 2018-03-07 A | 6FS+5d | 100% |  | 2018-03-29 | 2018-03-30 | 1d |  |  |  | 2h | 2h |
| 23 | 5 | 4250-Fabrication Plan | 40d | 2018-02-28 A | 2018-04-18 A | 19FS+1d | 100% |  | 2018-04-04 | 2018-04-20 | 13d |  | finish no earlier than 2018-04-13 |  | 312h | 312h |
| 24 | 6 | **Project Closure** | 20d | 2018-04-19 A | 2018-05-15 |  | 11% | 17.78d | 2018-04-20 | 2018-05-04 | 10d | 0d |  |  | 96h | 4h |
| 25 | 6.1 | Material Handover to Store | 1d | 2018-04-19 A | 2018-04-19 A | 23 | 100% |  | 2018-04-20 | 2018-04-21 | 1d |  |  |  | 4h | 4h |
| 26 | 6.2 | Invoice to Customer | 1d | 2018-05-09 | 2018-05-09 | 25FS+14d |  |  | 2018-04-26 | 2018-04-27 | 1d | 0d |  |  | 4h |  |
| 27 | 6.3 | Final Documentation | 3d | 2018-05-10 | 2018-05-14 | 26 |  |  | 2018-04-21 | 2018-04-25 | 3d | 1d |  |  | 24h |  |
| 28 | 6.4 | Product Transportation to Site | 4d | 2018-05-10 | 2018-05-15 | 26 |  |  | 2018-04-27 | 2018-05-04 | 4d | 0d |  |  | 64h |  |

Notes:
- 9: Plates -SA 516 GR.60-16THK...
- 12: Plates -SA 516 GR.60-16THK...
- 16: Ø12X4723Lg
- 17: OD 25.4X2.11TX4877Staight length
