# 4161A-PostMortem-Schedule&Estimation

Schedule from MS Project, 2018-02-14 to 2018-02-22.

## Calendars

- Standard: Mon-Fri 08:00-12:00, 13:00-17:00; Sat-Sun off.

## Resources

| Resource |
| --- |
| T |
| F |
| H |
| C |
| SC |
| G |
| W |
| L |
| RT |
| INS |
| TW |
| P |

## Schedule

| ID | WBS | Task | Duration | Start | Finish | Total slack | Resources | Work |
| --- | --- | --- | --- | --- | --- | --- | --- | --- |
| 1 | 1 | **Dish Forming 10TXOD 404** | 1d? | 2018-02-14 08:00 | 2018-02-14 17:00 | 6d |  | 82h |
| 2 | 1.1 | Bar Dish Blank Issuence | 4h | 2018-02-14 08:00 | 2018-02-14 12:00 | 6.5d | T | 4h |
| 3 | 1.2 | Bar-Dish Blank Marking 10TXOD 404 | 0.5h | 2018-02-14 08:00 | 2018-02-14 08:30 | 6.94d | F; H | 1h |
| 4 | 1.3 | Bar-Dish Blank Marking Inspection | 4h | 2018-02-14 08:00 | 2018-02-14 12:00 | 6.5d | F; H | 8h |
| 5 | 1.4 | Bar-Dish Blank Cutting | 5h | 2018-02-14 08:00 | 2018-02-14 14:00 | 6.38d | C; H | 10h |
| 6 | 1.5 | Bar-Dish Forming | 7h | 2018-02-14 08:00 | 2018-02-14 16:00 | 6.12d | SC | 7h |
| 7 | 1.6 | Profile Insp | 4h | 2018-02-14 08:00 | 2018-02-14 12:00 | 6.5d | F; H | 8h |
| 8 | 1.7 | Heat Treatment Preparation | 1d? | 2018-02-14 08:00 | 2018-02-14 17:00 | 6d | SC | 8h |
| 9 | 1.8 | Stress Releiving- Sub Cont | 1d? | 2018-02-14 08:00 | 2018-02-14 17:00 | 6d | SC | 8h |
| 10 | 1.9 | Removal Of Spiders | 3h | 2018-02-14 08:00 | 2018-02-14 11:00 | 6.62d | F; H | 6h |
| 11 | 1.10 | Surface Preparation | 4h | 2018-02-14 08:00 | 2018-02-14 12:00 | 6.5d | G | 4h |
| 12 | 1.11 | Inspection | 3h | 2018-02-14 08:00 | 2018-02-14 11:00 | 6.62d | F | 3h |
| 13 | 1.12 | TPI Inspection | 4h | 2018-02-14 08:00 | 2018-02-14 12:00 | 6.5d | F | 4h |
| 14 | 1.13 | Sf Marking | 2h | 2018-02-14 08:00 | 2018-02-14 10:00 | 6.75d | F; H | 4h |
| 15 | 1.14 | Sf Cutting | 2h | 2018-02-14 08:00 | 2018-02-14 10:00 | 6.75d | C; H | 4h |
| 16 | 1.15 | Sf Gridning & Ep | 3h | 2018-02-14 08:00 | 2018-02-14 11:00 | 6.62d | G | 3h |
| 17 | 2 | Tube Sheet | 1d? | 2018-02-14 08:00 | 2018-02-14 17:00 | 6d |  |  |
| 18 | 3 | **Tube Sheet Machining 1 off 2** | 1d? | 2018-02-14 08:00 | 2018-02-14 17:00 |  |  | 16h |
| 19 | 3.1 | Inward Inspection | 4h | 2018-02-14 08:00 | 2018-02-14 12:00 | 6.5d |  |  |
| 20 | 3.2 | Tube Sheet M/C 1/2 | 16h | 2018-02-14 08:00 | 2018-02-15 17:00 | 5d | SC | 16h |
| 21 | 4 | **Tube Sheet Drilling 1 off 2** | 1d? | 2018-02-14 08:00 | 2018-02-14 17:00 |  |  | 77h |
| 22 | 4.1 | Tube Sheet Drilling 1/2 | 7d | 2018-02-14 08:00 | 2018-02-22 17:00 | 0d | SC | 56h |
| 23 | 4.2 | Exp Groove+Welding Groove 1/2 | 3h | 2018-02-14 08:00 | 2018-02-14 11:00 | 6.62d | SC | 3h |
| 24 | 4.3 | Tie Rod, Pulling, Lifting Hole 1/2 | 4h | 2018-02-14 08:00 | 2018-02-14 12:00 | 6.5d | SC | 4h |
| 25 | 4.4 | Pass Partition Groove M/C 1/2 | 6h | 2018-02-14 08:00 | 2018-02-14 15:00 | 6.25d | SC | 6h |
| 26 | 4.5 | Cleaning ,Go/No Go Check 1/2 | 2h | 2018-02-14 08:00 | 2018-02-14 10:00 | 6.75d | F; H | 4h |
| 27 | 4.6 | Final Inspection 1/2 | 2h | 2018-02-14 08:00 | 2018-02-14 10:00 | 6.75d | F; H | 4h |

| ID | WBS | Task | Duration | Start | Finish | Total slack | Resources | Work |
| --- | --- | --- | --- | --- | --- | --- | --- | --- |
| 28 | 5 | **Tube Sheet Machining 2 off 2** | 1d? | 2018-02-14 08:00 | 2018-02-14 17:00 |  |  | 16h |
| 29 | 5.1 | Inward Inspection | 4h | 2018-02-14 08:00 | 2018-02-14 12:00 | 6.5d |  |  |
| 30 | 5.2 | Tube Sheet M/C 2/2 | 16h | 2018-02-14 08:00 | 2018-02-15 17:00 | 5d | SC | 16h |
| 31 | 6 | **Tube Sheet Drilling 2 off 2** | 1d? | 2018-02-14 08:00 | 2018-02-14 17:00 |  |  | 168h |
| 32 | 6.1 | Tube Sheet Drilling 2/2 | 7d | 2018-02-14 08:00 | 2018-02-22 17:00 | 0d | SC | 56h |
| 33 | 6.2 | Exp Groove+Welding Groove 2/2 | 3d | 2018-02-14 08:00 | 2018-02-16 17:00 | 4d | SC | 24h |
| 34 | 6.3 | Tie Rod, Pulling, Lifting Hole 2/2 | 4d | 2018-02-14 08:00 | 2018-02-19 17:00 | 3d | SC | 32h |
| 35 | 6.4 | Pass Partition Groove M/C 2/2 | 6d | 2018-02-14 08:00 | 2018-02-21 17:00 | 1d | SC | 48h |
| 36 | 6.5 | Cleaning ,Go/No Go Check 2/2 | 2h | 2018-02-14 08:00 | 2018-02-14 10:00 | 6.75d | F; H | 4h |
| 37 | 6.6 | Final Inspection 2/2 | 2h | 2018-02-14 08:00 | 2018-02-14 10:00 | 6.75d | F; H | 4h |
| 38 | 7 | Nozzle Fab | 1d? | 2018-02-14 08:00 | 2018-02-14 17:00 | 6d |  |  |
| 39 | 8 | **Sh Noz Pipe Marking** | 1d? | 2018-02-14 08:00 | 2018-02-14 17:00 |  |  | 5h |
| 40 | 8.1 | 3"NB- 2 Nos | 1h | 2018-02-14 08:00 | 2018-02-14 09:00 | 6.88d | F; H | 2h |
| 41 | 8.2 | 1.5" NB Mp Con - 2 Nos | 1h | 2018-02-14 08:00 | 2018-02-14 09:00 | 6.88d | F; H | 2h |
| 42 | 8.3 | Inspection | 0.5h | 2018-02-14 08:00 | 2018-02-14 08:30 | 6.94d | F; H | 1h |
| 43 | 9 | **Sh Noz Pipe Cutting** | 1d? | 2018-02-14 08:00 | 2018-02-14 17:00 |  |  | 5h |
| 44 | 9.1 | 3"NB- 2 Nos | 1h | 2018-02-14 08:00 | 2018-02-14 09:00 | 6.88d | C; H | 2h |
| 45 | 9.2 | 1.5" NB Mp Con - 2 Nos | 1h | 2018-02-14 08:00 | 2018-02-14 09:00 | 6.88d | C; H | 2h |
| 46 | 9.3 | Inspection | 0.5h | 2018-02-14 08:00 | 2018-02-14 08:30 | 6.94d | C; H | 1h |
| 47 | 10 | **Sh Noz Pipe Ep** | 1d? | 2018-02-14 08:00 | 2018-02-14 17:00 |  |  | 5h |
| 48 | 10.1 | 3"NB- 2 Nos | 1h | 2018-02-14 08:00 | 2018-02-14 09:00 | 6.88d | C; H | 2h |
| 49 | 10.2 | 1.5" NB Mp Con - 2 Nos | 1h | 2018-02-14 08:00 | 2018-02-14 09:00 | 6.88d | C; H | 2h |
| 50 | 10.3 | Inspection | 0.5h | 2018-02-14 08:00 | 2018-02-14 08:30 | 6.94d | C; H | 1h |
| 51 | 11 | **Sh Noz+Flg Fiitup** | 1d? | 2018-02-14 08:00 | 2018-02-14 17:00 |  |  | 10h |
| 52 | 11.1 | 3"NB- 2 Nos | 1h | 2018-02-14 08:00 | 2018-02-14 09:00 | 6.88d | F [200%]; W; H | 4h |
| 53 | 11.2 | 1.5" NB Mp Con - 2 Nos | 1h | 2018-02-14 08:00 | 2018-02-14 09:00 | 6.88d | F [200%]; W; H | 4h |
| 54 | 11.3 | Inspection | 0.5h | 2018-02-14 08:00 | 2018-02-14 08:30 | 6.94d | F [200%]; W; H | 2h |

| ID | WBS | Task | Duration | Start | Finish | Total slack | Resources | Work |
| --- | --- | --- | --- | --- | --- | --- | --- | --- |
| 55 | 12 | **Sh Noz Pipe+Flg Welding** | 1d? | 2018-02-14 08:00 | 2018-02-14 17:00 |  |  | 11.5h |
| 56 | 12.1 | 3"NB- 2 Nos | 4.5h | 2018-02-14 08:00 | 2018-02-14 13:30 | 6.44d | W; H | 9h |
| 57 | 12.2 | 1.5" NB Mp Con - 2 Nos | 0.75h | 2018-02-14 08:00 | 2018-02-14 08:45 | 6.91d | W; H | 1.5h |
| 58 | 12.3 | Inspection | 0.5h | 2018-02-14 08:00 | 2018-02-14 08:30 | 6.94d | W; H | 1h |
| 59 | 13 | **Sh Noz Pipe Profile Marking** | 1d? | 2018-02-14 08:00 | 2018-02-14 17:00 |  |  | 5h |
| 60 | 13.1 | 3"NB- 2 Nos | 1h | 2018-02-14 08:00 | 2018-02-14 09:00 | 6.88d | F; H | 2h |
| 61 | 13.2 | 1.5" NB Mp Con - 2 Nos | 1h | 2018-02-14 08:00 | 2018-02-14 09:00 | 6.88d | F; H | 2h |
| 62 | 13.3 | Inspection | 0.5h | 2018-02-14 08:00 | 2018-02-14 08:30 | 6.94d | F; H | 1h |
| 63 | 14 | **Sh Nozzle Pipe Profile Cutting** | 1d? | 2018-02-14 08:00 | 2018-02-14 17:00 |  |  | 5h |
| 64 | 14.1 | 3"NB- 2 Nos | 1h | 2018-02-14 08:00 | 2018-02-14 09:00 | 6.88d | G; H | 2h |
| 65 | 14.2 | 1.5" NB Mp Con - 2 Nos | 1h | 2018-02-14 08:00 | 2018-02-14 09:00 | 6.88d | G; H | 2h |
| 66 | 14.3 | Inspection | 0.5h | 2018-02-14 08:00 | 2018-02-14 08:30 | 6.94d | G; H | 1h |
| 67 | 15 | **Sh Nozzle Pipe Profile Ep** | 1d? | 2018-02-14 08:00 | 2018-02-14 17:00 |  |  | 5h |
| 68 | 15.1 | 3"NB- 2 Nos | 1h | 2018-02-14 08:00 | 2018-02-14 09:00 | 6.88d | G; H | 2h |
| 69 | 15.2 | 1.5" NB Mp Con - 2 Nos | 1h | 2018-02-14 08:00 | 2018-02-14 09:00 | 6.88d | G; H | 2h |
| 70 | 15.3 | Inspection | 0.5h | 2018-02-14 08:00 | 2018-02-14 08:30 | 6.94d | G; H | 1h |
| 71 | 16 | **Ch Noz Pipe Marking** | 1d? | 2018-02-14 08:00 | 2018-02-14 17:00 |  |  | 5h |
| 72 | 16.1 | 2"Nb- 2 Nos | 1h | 2018-02-14 08:00 | 2018-02-14 09:00 | 6.88d | F; H | 2h |
| 73 | 16.2 | 1.5" Mp Con - 2 Nos | 0.5h | 2018-02-14 08:00 | 2018-02-14 08:30 | 6.94d | F; H | 1h |
| 74 | 16.3 | Inspection | 1h | 2018-02-14 08:00 | 2018-02-14 09:00 | 6.88d | F; H | 2h |
| 75 | 17 | **Ch Noz Pipe Cutting** | 1d? | 2018-02-14 08:00 | 2018-02-14 17:00 |  |  | 5h |
| 76 | 17.1 | 2"Nb- 2 Nos | 1h | 2018-02-14 08:00 | 2018-02-14 09:00 | 6.88d | C; H | 2h |
| 77 | 17.2 | 1.5" Mp Con - 2 Nos | 0.5h | 2018-02-14 08:00 | 2018-02-14 08:30 | 6.94d | C; H | 1h |
| 78 | 17.3 | Inspection | 1h | 2018-02-14 08:00 | 2018-02-14 09:00 | 6.88d | C; H | 2h |

| ID | WBS | Task | Duration | Start | Finish | Total slack | Resources | Work |
| --- | --- | --- | --- | --- | --- | --- | --- | --- |
| 79 | 18 | **Ch Noz Pipe Ep** | 1d? | 2018-02-14 08:00 | 2018-02-14 17:00 |  |  | 6h |
| 80 | 18.1 | 2"Nb- 2 Nos | 1h | 2018-02-14 08:00 | 2018-02-14 09:00 | 6.88d | G; H | 2h |
| 81 | 18.2 | 1.5" Mp Con - 2 Nos | 1h | 2018-02-14 08:00 | 2018-02-14 09:00 | 6.88d | G; H | 2h |
| 82 | 18.3 | Inspection | 1h | 2018-02-14 08:00 | 2018-02-14 09:00 | 6.88d | G; H | 2h |
| 83 | 19 | **Ch Noz+Flg Fit Up** | 1d? | 2018-02-14 08:00 | 2018-02-14 17:00 |  |  | 12h |
| 84 | 19.1 | 2"Nb- 2 Nos | 1h | 2018-02-14 08:00 | 2018-02-14 09:00 | 6.88d | F [200%]; W; H | 4h |
| 85 | 19.2 | 1.5" Mp Con - 2 Nos | 1h | 2018-02-14 08:00 | 2018-02-14 09:00 | 6.88d | F [200%]; W; H | 4h |
| 86 | 19.3 | Inspection | 1h | 2018-02-14 08:00 | 2018-02-14 09:00 | 6.88d | F [200%]; W; H | 4h |
| 87 | 20 | **Ch Noz Pipe+Flg Welding** | 1d? | 2018-02-14 08:00 | 2018-02-14 17:00 |  |  | 15.5h |
| 88 | 20.1 | 2"Nb- 2 Nos | 6h | 2018-02-14 08:00 | 2018-02-14 15:00 | 6.25d | W; H | 12h |
| 89 | 20.2 | 1.5" Mp Con - 2 Nos | 0.75h | 2018-02-14 08:00 | 2018-02-14 08:45 | 6.91d | W; H | 1.5h |
| 90 | 20.3 | Inspection | 1h | 2018-02-14 08:00 | 2018-02-14 09:00 | 6.88d | W; H | 2h |
| 91 | 21 | **Ch Noz Pipe Profile Marking** | 1d? | 2018-02-14 08:00 | 2018-02-14 17:00 |  |  | 6h |
| 92 | 21.1 | 2"Nb- 2 Nos | 1h | 2018-02-14 08:00 | 2018-02-14 09:00 | 6.88d | F; H | 2h |
| 93 | 21.2 | 1.5" Mp Con - 2 Nos | 1h | 2018-02-14 08:00 | 2018-02-14 09:00 | 6.88d | F; H | 2h |
| 94 | 21.3 | Inspection | 1h | 2018-02-14 08:00 | 2018-02-14 09:00 | 6.88d | F; H | 2h |
| 95 | 22 | **Ch Nozzle Pipe Profile Cutting** | 1d? | 2018-02-14 08:00 | 2018-02-14 17:00 |  |  | 6h |
| 96 | 22.1 | 2"Nb- 2 Nos | 1h | 2018-02-14 08:00 | 2018-02-14 09:00 | 6.88d | F; H | 2h |
| 97 | 22.2 | 1.5" Mp Con - 2 Nos | 1h | 2018-02-14 08:00 | 2018-02-14 09:00 | 6.88d | F; H | 2h |
| 98 | 22.3 | Inspection | 1h | 2018-02-14 08:00 | 2018-02-14 09:00 | 6.88d | F; H | 2h |
| 99 | 23 | **Ch Nozzle Pipe Profile Ep** | 1d? | 2018-02-14 08:00 | 2018-02-14 17:00 |  |  | 6h |
| 100 | 23.1 | 2"Nb- 2 Nos | 1h | 2018-02-14 08:00 | 2018-02-14 09:00 | 6.88d | G; H | 2h |
| 101 | 23.2 | 1.5" Mp Con - 2 Nos | 1h | 2018-02-14 08:00 | 2018-02-14 09:00 | 6.88d | G; H | 2h |
| 102 | 23.3 | Inspection | 1h | 2018-02-14 08:00 | 2018-02-14 09:00 | 6.88d | G; H | 2h |
| 103 | 24 | Saddle & Other | 1d? | 2018-02-14 08:00 | 2018-02-14 17:00 | 6d |  |  |

| ID | WBS | Task | Duration | Start | Finish | Total slack | Resources | Work |
| --- | --- | --- | --- | --- | --- | --- | --- | --- |
| 104 | 25 | **Top Saddle Fabrrication** | 1d? | 2018-02-14 08:00 | 2018-02-14 17:00 |  |  | 2.5h |
| 105 | 25.1 | Plate Issuence | 1h | 2018-02-14 08:00 | 2018-02-14 09:00 | 6.88d |  |  |
| 106 | 25.2 | Base Marking | 0.25h | 2018-02-14 08:00 | 2018-02-14 08:15 | 6.97d | F; H | 0.5h |
| 107 | 25.3 | Web Pl Marking | 0.5h | 2018-02-14 08:00 | 2018-02-14 08:30 | 6.94d | F; H | 1h |
| 108 | 25.4 | Ribs Marking | 0.5h | 2018-02-14 08:00 | 2018-02-14 08:30 | 6.94d | F; H | 1h |
| 109 | 26 | **Top Sadlle Plate Cutting** | 1d? | 2018-02-14 08:00 | 2018-02-14 17:00 |  |  | 5.5h |
| 110 | 26.1 | Base Cutting | 0.75h | 2018-02-14 08:00 | 2018-02-14 08:45 | 6.91d | C; H | 1.5h |
| 111 | 26.2 | Web Pl Cutting | 0.25h | 2018-02-14 08:00 | 2018-02-14 08:15 | 6.97d | C; H | 0.5h |
| 112 | 26.3 | Ribs Cutting | 0.25h | 2018-02-14 08:00 | 2018-02-14 08:15 | 6.97d | C; H | 0.5h |
| 113 | 26.4 | Grinding Of Above | 1.5h | 2018-02-14 08:00 | 2018-02-14 09:30 | 6.81d | G [200%] | 3h |
| 114 | 27 | **Saddle Fit Up & Welding** | 1d? | 2018-02-14 08:00 | 2018-02-14 17:00 |  |  | 161.24h |
| 115 | 27.1 | Base + Web Fit Up | 2.81h | 2018-02-14 08:00 | 2018-02-14 10:48 | 6.65d | F; H [200%]; W | 11.24h |
| 116 | 27.2 | Base + Web Welding | 5h | 2018-02-14 08:00 | 2018-02-14 14:00 | 6.38d | W; H | 10h |
| 117 | 27.3 | Ribs+Web Fit Up | 20h | 2018-02-14 08:00 | 2018-02-16 12:00 | 4.5d | F; H [200%]; W | 80h |
| 118 | 27.4 | Ribs+Web Welding | 15h | 2018-02-14 08:00 | 2018-02-15 16:00 | 5.12d | W [200%]; H [200%] | 60h |
| 119 | 28 | **Davit Pipe Fabrication** | 1d? | 2018-02-14 08:00 | 2018-02-14 17:00 |  |  | 52.3h |
| 120 | 28.1 | Pipe Transfere | 1h | 2018-02-14 08:00 | 2018-02-14 09:00 | 6.88d | H [400%] | 4h |
| 121 | 28.2 | Pipe Marking 6 Nos | 1h | 2018-02-14 08:00 | 2018-02-14 09:00 | 6.88d | F; H | 2h |
| 122 | 28.3 | Support Pl Marking | 0.2h | 2018-02-14 08:00 | 2018-02-14 08:12 | 6.97d | F; H | 0.4h |
| 123 | 28.4 | Gusset Pl Marking | 0.2h | 2018-02-14 08:00 | 2018-02-14 08:12 | 6.97d | F; H | 0.4h |
| 124 | 28.5 | Base Hub Marking | 1h | 2018-02-14 08:00 | 2018-02-14 09:00 | 6.88d | F; H | 2h |
| 125 | 28.6 | Pipe Cutting 6 Nos | 1h | 2018-02-14 08:00 | 2018-02-14 09:00 | 6.88d | C; H | 2h |
| 126 | 28.7 | Support Pl Cutting | 0.25h | 2018-02-14 08:00 | 2018-02-14 08:15 | 6.97d | C; H | 0.5h |
| 127 | 28.8 | Pipe Grinding 6 Nos | 1h | 2018-02-14 08:00 | 2018-02-14 09:00 | 6.88d | F; H | 2h |
| 128 | 28.9 | Support Pl Grinding 10 Nos | 1h | 2018-02-14 08:00 | 2018-02-14 09:00 | 6.88d | G | 1h |
| 129 | 28.10 | Pivot Pl Grinding | 1h | 2018-02-14 08:00 | 2018-02-14 09:00 | 6.88d | G | 1h |
| 130 | 28.11 | Pipe Fit Up 2 Nos | 3h | 2018-02-14 08:00 | 2018-02-14 11:00 | 6.62d | F; H; W | 9h |
| 131 | 28.12 | Pipe Welding 2 Nos | 8h | 2018-02-14 08:00 | 2018-02-14 17:00 | 6d | W; H | 16h |
| 132 | 28.13 | Pivot Pl Welding | 2h | 2018-02-14 08:00 | 2018-02-14 10:00 | 6.75d | W; H | 4h |
| 133 | 28.14 | Support Pl Welding 4 Nos | 4h | 2018-02-14 08:00 | 2018-02-14 12:00 | 6.5d | F; H | 8h |

| ID | WBS | Task | Duration | Start | Finish | Total slack | Resources | Work |
| --- | --- | --- | --- | --- | --- | --- | --- | --- |
| 134 | 29 | **Lifting Lug Pad** | 1d? | 2018-02-14 08:00 | 2018-02-14 17:00 |  |  | 2.1h |
| 135 | 29.1 | Plate Issuence | 8h | 2018-02-14 08:00 | 2018-02-14 17:00 | 6d |  |  |
| 136 | 29.2 | Lifting Lug Pad Marking | 0.3h | 2018-02-14 08:00 | 2018-02-14 08:18 | 6.96d | F; H | 0.6h |
| 137 | 29.3 | Lifting Lug Pad Cutting | 0.25h | 2018-02-14 08:00 | 2018-02-14 08:15 | 6.97d | C; H | 0.5h |
| 138 | 29.4 | Lifting Lugs Pad Grinding | 0.5h | 2018-02-14 08:00 | 2018-02-14 08:30 | 6.94d | G; H | 1h |
| 139 | 30 | **Lifting Lug Preparation** | 1d? | 2018-02-14 08:00 | 2018-02-14 17:00 |  |  | 4.9h |
| 140 | 30.1 | Lifting Lugs Marking | 0.2h | 2018-02-14 08:00 | 2018-02-14 08:12 | 6.97d | F; H | 0.4h |
| 141 | 30.2 | Lifting Lugs Cutting | 0.25h | 2018-02-14 08:00 | 2018-02-14 08:15 | 6.97d | C; H | 0.5h |
| 142 | 30.3 | Lifting Lugs Grinding | 1h | 2018-02-14 08:00 | 2018-02-14 09:00 | 6.88d | G; H | 2h |
| 143 | 30.4 | Lifting Lug Drilling | 1h | 2018-02-14 08:00 | 2018-02-14 09:00 | 6.88d | F; H | 2h |
| 144 | 31 | **Channel Cover Handle Prepataion** | 1d? | 2018-02-14 08:00 | 2018-02-14 17:00 |  |  | 8h |
| 145 | 31.1 | Ch Cover Ring Forming | 2h | 2018-02-14 08:00 | 2018-02-14 10:00 | 6.75d | F; H | 4h |
| 146 | 31.2 | Sliding Sling Forming | 2h | 2018-02-14 08:00 | 2018-02-14 10:00 | 6.75d | F; H | 4h |
| 147 | 32 | **Insulation Ring Prparation** | 1d? | 2018-02-14 08:00 | 2018-02-14 17:00 |  |  | 3.5h |
| 148 | 32.1 | Insulaion Ring Marking | 0.25h | 2018-02-14 08:00 | 2018-02-14 08:15 | 6.97d | F; H | 0.5h |
| 149 | 32.2 | Insulaion Ring Cutting | 0.5h | 2018-02-14 08:00 | 2018-02-14 08:30 | 6.94d | C; H | 1h |
| 150 | 32.3 | Insulaion Ring Hole Marking | 0.5h | 2018-02-14 08:00 | 2018-02-14 08:30 | 6.94d | F; H | 1h |
| 151 | 32.4 | Insulaion Ring Hole Drilling | 0.5h | 2018-02-14 08:00 | 2018-02-14 08:30 | 6.94d | F; H | 1h |
| 152 | 33 | Baffle & Tb Items Fab | 1d? | 2018-02-14 08:00 | 2018-02-14 17:00 | 6d |  |  |
| 153 | 34 | **Baffle Preparation** | 1d? | 2018-02-14 08:00 | 2018-02-14 17:00 |  |  | 10.5h |
| 154 | 34.1 | Baffle Plate Transfer | 4h | 2018-02-14 08:00 | 2018-02-14 12:00 | 6.5d |  |  |
| 155 | 34.2 | Baffle Marking | 2h | 2018-02-14 08:00 | 2018-02-14 10:00 | 6.75d | F; H | 4h |
| 156 | 34.3 | Baffle Profile Cutting | 3.25h | 2018-02-14 08:00 | 2018-02-14 11:15 | 6.59d | C; H | 6.5h |
| 157 | 35 | **Baffle Bend Removal & Stacking** | 1d? | 2018-02-14 08:00 | 2018-02-14 17:00 |  |  | 15.5h |
| 158 | 35.1 | Baffle Pl Bend Removal | 5h | 2018-02-14 08:00 | 2018-02-14 14:00 | 6.38d | F; H [200%] | 15h |
| 159 | 35.2 | Baffle Pl Stacking Per 100mm | 0.25h | 2018-02-14 08:00 | 2018-02-14 08:15 | 6.97d | F; H | 0.5h |

| ID | WBS | Task | Duration | Start | Finish | Total slack | Resources | Work |
| --- | --- | --- | --- | --- | --- | --- | --- | --- |
| 160 | 36 | **Baffle Drilling** | 1d? | 2018-02-14 08:00 | 2018-02-14 17:00 |  |  | 4h |
| 161 | 36.1 | Baffle Drilling | 4h | 2018-02-14 08:00 | 2018-02-14 12:00 | 6.5d | SC | 4h |
| 162 | 37 | **Baffle De Stacking & Chamfering** | 1d? | 2018-02-14 08:00 | 2018-02-14 17:00 |  |  | 1.5h |
| 163 | 37.1 | Baffle De Stacking | 0.25h | 2018-02-14 08:00 | 2018-02-14 08:15 | 6.97d | F; H | 0.5h |
| 164 | 37.2 | Baffle Chamfering (70% of TS Holes*No of Baffles) | 1h | 2018-02-14 08:00 | 2018-02-14 09:00 | 6.88d | F | 1h |
| 165 | 38 | **Baffle Stacking & Thro Hole Check** | 1d? | 2018-02-14 08:00 | 2018-02-14 17:00 |  |  | 23.5h |
| 166 | 38.1 | Stacking | 2h | 2018-02-14 08:00 | 2018-02-14 10:00 | 6.75d | F; H | 4h |
| 167 | 38.2 | Baffle Hole Alingment | 0.25h | 2018-02-14 08:00 | 2018-02-14 08:15 | 6.97d | F; H | 0.5h |
| 168 | 38.3 | Baffle Hole Re Drill (Use 40% of Holes in Qty) | 7h | 2018-02-14 08:00 | 2018-02-14 16:00 | 6.12d | SC | 7h |
| 169 | 38.4 | Baffle Od Machining (100mm L * 700Ø = 3hrs) | 3h | 2018-02-14 08:00 | 2018-02-14 11:00 | 6.62d | SC | 3h |
| 170 | 38.5 | Baffle Cleaning (100mm L * 700Ø = 3hrs) | 3h | 2018-02-14 08:00 | 2018-02-14 11:00 | 6.62d | H [300%] | 9h |
| 171 | 39 | **Support Plate Marking** | 1d? | 2018-02-14 08:00 | 2018-02-14 17:00 |  |  | 0.27h |
| 172 | 39.1 | Support Plate Transfer | 1h | 2018-02-14 08:00 | 2018-02-14 09:00 | 6.88d |  |  |
| 173 | 39.2 | Support Marking | 0.1h | 2018-02-14 08:00 | 2018-02-14 08:06 | 6.99d | SC | 0.1h |
| 174 | 39.3 | Support Profile Cutting | 0.17h | 2018-02-14 08:00 | 2018-02-14 08:10 | 6.98d | SC | 0.17h |
| 175 | 40 | **Support Plate Bend Removal** | 1d? | 2018-02-14 08:00 | 2018-02-14 17:00 |  |  | 2.5h |
| 176 | 40.1 | Support Pl Bend Removal | 0.5h | 2018-02-14 08:00 | 2018-02-14 08:30 | 6.94d | F; H [300%] | 2h |
| 177 | 40.2 | Support Pl Stacking | 0.25h | 2018-02-14 08:00 | 2018-02-14 08:15 | 6.97d | F; H | 0.5h |
| 178 | 41 | **Support Plate Drilling** | 1d? | 2018-02-14 08:00 | 2018-02-14 17:00 |  |  | 4h |
| 179 | 41.1 | Support Drilling | 4h | 2018-02-14 08:00 | 2018-02-14 12:00 | 6.5d | SC | 4h |
| 180 | 42 | **Sup Plate De Stacking & Chamfering** | 1d? | 2018-02-14 08:00 | 2018-02-14 17:00 |  |  | 1h |
| 181 | 42.1 | Support De Stacking | 0.25h | 2018-02-14 08:00 | 2018-02-14 08:15 | 6.97d | F; H | 0.5h |
| 182 | 42.2 | Support Hole Chamfering | 0.5h | 2018-02-14 08:00 | 2018-02-14 08:30 | 6.94d | F | 0.5h |
| 183 | 43 | **Tie Rod Preparation** | 1d? | 2018-02-14 08:00 | 2018-02-14 17:00 |  |  | 13h |
| 184 | 43.1 | Tie Rod Matl Transfere | 0.5h | 2018-02-14 08:00 | 2018-02-14 08:30 | 6.94d |  |  |
| 185 | 43.2 | Rod Cutting | 2h | 2018-02-14 08:00 | 2018-02-14 10:00 | 6.75d | F; H | 4h |
| 186 | 43.3 | Thread Machining. | 3h | 2018-02-14 08:00 | 2018-02-14 11:00 | 6.62d | L | 3h |
| 187 | 43.4 | Joining | 2h | 2018-02-14 08:00 | 2018-02-14 10:00 | 6.75d | W; F; H | 6h |

| ID | WBS | Task | Duration | Start | Finish | Total slack | Resources | Work |
| --- | --- | --- | --- | --- | --- | --- | --- | --- |
| 188 | 44 | **Spacer Tube Preparation** | 1d? | 2018-02-14 08:00 | 2018-02-14 17:00 |  |  | 9h |
| 189 | 44.1 | Spacer Tube Transfere | 0.5h | 2018-02-14 08:00 | 2018-02-14 08:30 | 6.94d |  |  |
| 190 | 44.2 | Length Cutting 63 Nos | 2h | 2018-02-14 08:00 | 2018-02-14 10:00 | 6.75d | F; H | 4h |
| 191 | 44.3 | Length Machining | 2h | 2018-02-14 08:00 | 2018-02-14 10:00 | 6.75d | L | 2h |
| 192 | 44.4 | Cleaninng | 1h | 2018-02-14 08:00 | 2018-02-14 09:00 | 6.88d | H [300%] | 3h |
| 193 | 45 | **Sealing Strip Preparation** | 1d? | 2018-02-14 08:00 | 2018-02-14 17:00 |  |  | 17.4h |
| 194 | 45.1 | Sealing Strip Marking | 0.2h | 2018-02-14 08:00 | 2018-02-14 08:12 | 6.97d | F; H | 0.4h |
| 195 | 45.2 | Sealing Strip Cutting | 3h | 2018-02-14 08:00 | 2018-02-14 11:00 | 6.62d | C; H | 6h |
| 196 | 45.3 | Sealing Strip Bend Removal | 2h | 2018-02-14 08:00 | 2018-02-14 10:00 | 6.75d | F; H [200%] | 6h |
| 197 | 45.4 | Sealing Strip Grinding | 1h | 2018-02-14 08:00 | 2018-02-14 09:00 | 6.88d | G | 1h |
| 198 | 45.5 | Sealing Strip Joining | 1h | 2018-02-14 08:00 | 2018-02-14 09:00 | 6.88d | W; F; H | 3h |
| 199 | 45.6 | Sealing Strip Dress Up | 1h | 2018-02-14 08:00 | 2018-02-14 09:00 | 6.88d | G | 1h |
| 200 | 46 | **Sliding Strip Preparation** | 1d? | 2018-02-14 08:00 | 2018-02-14 17:00 |  |  | 15.4h |
| 201 | 46.1 | Sliding Strip Marking | 0.2h | 2018-02-14 08:00 | 2018-02-14 08:12 | 6.97d | F; H | 0.4h |
| 202 | 46.2 | Sliding Strip Cutting | 2h | 2018-02-14 08:00 | 2018-02-14 10:00 | 6.75d | C; H | 4h |
| 203 | 46.3 | Sliding Strip Bend Removal | 2h | 2018-02-14 08:00 | 2018-02-14 10:00 | 6.75d | F; H [200%] | 6h |
| 204 | 46.4 | Sliding Strip Grinding | 1h | 2018-02-14 08:00 | 2018-02-14 09:00 | 6.88d | G | 1h |
| 205 | 46.5 | Sliding Strip Joining | 1h | 2018-02-14 08:00 | 2018-02-14 09:00 | 6.88d | W; F; H | 3h |
| 206 | 46.6 | Sliding Strip Dress Up | 1h | 2018-02-14 08:00 | 2018-02-14 09:00 | 6.88d | G | 1h |
| 207 | 47 | **Seal Rod Preparation** | 1d? | 2018-02-14 08:00 | 2018-02-14 17:00 |  |  | 13h |
| 208 | 47.1 | Seal Rod Issuenece | 1h | 2018-02-14 08:00 | 2018-02-14 09:00 | 6.88d | T | 1h |
| 209 | 47.2 | Seal Rod Marking | 1h | 2018-02-14 08:00 | 2018-02-14 09:00 | 6.88d | F; H | 2h |
| 210 | 47.3 | Seal Rod Cutting | 2h | 2018-02-14 08:00 | 2018-02-14 10:00 | 6.75d | F; H | 4h |
| 211 | 47.4 | Seal Rod Bend Removal | 2h | 2018-02-14 08:00 | 2018-02-14 10:00 | 6.75d | F; H [200%] | 6h |
| 212 | 48 | Shell Fabrication | 1d? | 2018-02-14 08:00 | 2018-02-14 17:00 | 6d |  |  |

| ID | WBS | Task | Duration | Start | Finish | Total slack | Resources | Work |
| --- | --- | --- | --- | --- | --- | --- | --- | --- |
| 213 | 49 | **Shell Marking & Cutting** | 1d? | 2018-02-14 08:00 | 2018-02-14 17:00 |  |  | 4.75h |
| 214 | 49.1 | Sh Plate Trnasfer | 1h | 2018-02-14 08:00 | 2018-02-14 09:00 | 6.88d | T | 1h |
| 215 | 49.2 | Sh-Marking | 1.25h | 2018-02-14 08:00 | 2018-02-14 09:15 | 6.84d | F; H [200%] | 3.75h |
| 216 | 50 | **Shell Plate Cutting** | 1d? | 2018-02-14 08:00 | 2018-02-14 17:00 |  |  | 3h |
| 217 | 50.1 | Sh-Cutting | 1h | 2018-02-14 08:00 | 2018-02-14 09:00 | 6.88d | C; H [200%] | 3h |
| 218 | 51 | **Sh Pl Side Grinding** | 1d? | 2018-02-14 08:00 | 2018-02-14 17:00 |  |  | 4h |
| 219 | 51.1 | Sh Pl Side Bevel Cutting | 0.25h | 2018-02-14 08:00 | 2018-02-14 08:15 | 6.97d | F; H [300%] | 1h |
| 220 | 51.2 | Sh Pl Side Bevel Cutting | 0.25h | 2018-02-14 08:00 | 2018-02-14 08:15 | 6.97d | F; H [300%] | 1h |
| 221 | 51.3 | Sh Pl Side Bevel Cutting | 0.25h | 2018-02-14 08:00 | 2018-02-14 08:15 | 6.97d | F; H [300%] | 1h |
| 222 | 51.4 | Sh Pl Side Bevel Cutting | 0.25h | 2018-02-14 08:00 | 2018-02-14 08:15 | 6.97d | F; H [300%] | 1h |
| 223 | 52 | **Shell Plate Edge Preparation** | 1d? | 2018-02-14 08:00 | 2018-02-14 17:00 |  |  | 3h |
| 224 | 52.1 | Sh-Bevel Grinding | 0.5h | 2018-02-14 08:00 | 2018-02-14 08:30 | 6.94d | G; H | 1h |
| 225 | 52.2 | Sh-Bevel Grinding | 0.5h | 2018-02-14 08:00 | 2018-02-14 08:30 | 6.94d | G; H | 1h |
| 226 | 52.3 | Sh-Bevel Grinding | 0.5h | 2018-02-14 08:00 | 2018-02-14 08:30 | 6.94d | G; H | 1h |
| 227 | 53 | **Shell Pre Bending** | 1d? | 2018-02-14 08:00 | 2018-02-14 17:00 |  |  | 18h |
| 228 | 53.1 | Sh-Pre Bend | 2h | 2018-02-14 08:00 | 2018-02-14 10:00 | 6.75d | F [200%]; H | 6h |
| 229 | 53.2 | Sh-Pre Bend | 2h | 2018-02-14 08:00 | 2018-02-14 10:00 | 6.75d | F [200%]; H | 6h |
| 230 | 53.3 | Sh-Pre Bend | 2h | 2018-02-14 08:00 | 2018-02-14 10:00 | 6.75d | F [200%]; H | 6h |
| 231 | 54 | **Shell Pl Pre Bend Cut Off** | 1d? | 2018-02-14 08:00 | 2018-02-14 17:00 |  |  | 2.04h |
| 232 | 54.1 | Sh-Pre Bend Cut Off | 0.17h | 2018-02-14 08:00 | 2018-02-14 08:10 | 6.98d | F [200%]; H; C | 0.68h |
| 233 | 54.2 | Sh-Pre Bend Cut Off | 0.17h | 2018-02-14 08:00 | 2018-02-14 08:10 | 6.98d | F [200%]; H; C | 0.68h |
| 234 | 54.3 | Sh-Pre Bend Cut Off | 0.17h | 2018-02-14 08:00 | 2018-02-14 08:10 | 6.98d | F [200%]; H; C | 0.68h |
| 235 | 55 | **Shell Plate Ls Ep** | 1d? | 2018-02-14 08:00 | 2018-02-14 17:00 |  |  | 4h |
| 236 | 55.1 | Sh-Pre Bend Ls Ep | 0.5h | 2018-02-14 08:00 | 2018-02-14 08:30 | 6.94d | F; H | 1h |
| 237 | 55.2 | Sh-Pre Bend Ls Ep | 0.5h | 2018-02-14 08:00 | 2018-02-14 08:30 | 6.94d | F; H | 1h |
| 238 | 55.3 | Sh-Pre Bend Ls Ep | 0.5h | 2018-02-14 08:00 | 2018-02-14 08:30 | 6.94d | F; H | 1h |
| 239 | 55.4 | Sh-Pre Bend Ls Ep | 0.5h | 2018-02-14 08:00 | 2018-02-14 08:30 | 6.94d | F; H | 1h |

| ID | WBS | Task | Duration | Start | Finish | Total slack | Resources | Work |
| --- | --- | --- | --- | --- | --- | --- | --- | --- |
| 240 | 56 | **Shell Rolling** | 1d? | 2018-02-14 08:00 | 2018-02-14 17:00 |  |  | 18h |
| 241 | 56.1 | Sh-Rolling 1/4 | 2h | 2018-02-14 08:00 | 2018-02-14 10:00 | 6.75d | F [200%]; H | 6h |
| 242 | 56.2 | Sh-Rolling | 2h | 2018-02-14 08:00 | 2018-02-14 10:00 | 6.75d | F [200%]; H | 6h |
| 243 | 56.3 | Sh-Rolling | 2h | 2018-02-14 08:00 | 2018-02-14 10:00 | 6.75d | F [200%]; H | 6h |
| 244 | 57 | **Shell Cir Length & Ep Correction** | 1d? | 2018-02-14 08:00 | 2018-02-14 17:00 |  |  | 4.5h |
| 245 | 57.1 | Sh-Ls Correction | 0.5h | 2018-02-14 08:00 | 2018-02-14 08:30 | 6.94d | F; H [200%] | 1.5h |
| 246 | 57.2 | Sh-Ls Correction | 0.5h | 2018-02-14 08:00 | 2018-02-14 08:30 | 6.94d | F; H [200%] | 1.5h |
| 247 | 57.3 | Sh-Ls Correction | 0.5h | 2018-02-14 08:00 | 2018-02-14 08:30 | 6.94d | F; H [200%] | 1.5h |
| 248 | 58 | **Shell Ls Seams Fit Up** | 1d? | 2018-02-14 08:00 | 2018-02-14 17:00 |  |  | 8h |
| 249 | 58.1 | Sh-Ls Fit Up | 1h | 2018-02-14 08:00 | 2018-02-14 09:00 | 6.88d |  |  |
| 250 | 58.2 | Sh-Ls Fit Up | 1h | 2018-02-14 08:00 | 2018-02-14 09:00 | 6.88d | F [200%]; H; W | 4h |
| 251 | 58.3 | Sh-Ls Fit Up | 1h | 2018-02-14 08:00 | 2018-02-14 09:00 | 6.88d | F [200%]; H; W | 4h |
| 252 | 59 | **Sh Ls Welding Arrangement** | 1d? | 2018-02-14 08:00 | 2018-02-14 17:00 |  |  | 3h |
| 253 | 59.1 | Sh-Ls Weld Arrangement | 0.5h | 2018-02-14 08:00 | 2018-02-14 08:30 | 6.94d | F; H | 1h |
| 254 | 59.2 | Sh-Ls Weld Arrangement | 0.5h | 2018-02-14 08:00 | 2018-02-14 08:30 | 6.94d | F; H | 1h |
| 255 | 59.3 | Sh-Ls Weld Arrangement | 0.5h | 2018-02-14 08:00 | 2018-02-14 08:30 | 6.94d | F; H | 1h |
| 256 | 60 | **Shell Long Seam Outer Welding** | 1d? | 2018-02-14 08:00 | 2018-02-14 17:00 |  |  | 4.5h |
| 257 | 60.1 | Sh-Ls Welding- Top Side | 0.75h | 2018-02-14 08:00 | 2018-02-14 08:45 | 6.91d | W; H | 1.5h |
| 258 | 60.2 | Sh-Ls Welding- Top Side | 0.75h | 2018-02-14 08:00 | 2018-02-14 08:45 | 6.91d | W; H | 1.5h |
| 259 | 60.3 | Sh-Ls Welding- Top Side | 0.75h | 2018-02-14 08:00 | 2018-02-14 08:45 | 6.91d | W; H | 1.5h |
| 260 | 61 | **Sh Ls Back Chip** | 1d? | 2018-02-14 08:00 | 2018-02-14 17:00 |  |  | 0.3h |
| 261 | 61.1 | Sh-Ls Welding- Back Chip | 0.1h | 2018-02-14 08:00 | 2018-02-14 08:06 | 6.99d | G | 0.1h |
| 262 | 61.2 | Sh-Ls Welding- Back Chip | 0.1h | 2018-02-14 08:00 | 2018-02-14 08:06 | 6.99d | G | 0.1h |
| 263 | 61.3 | Sh-Ls Welding- Back Chip | 0.1h | 2018-02-14 08:00 | 2018-02-14 08:06 | 6.99d | G | 0.1h |

| ID | WBS | Task | Duration | Start | Finish | Total slack | Resources | Work |
| --- | --- | --- | --- | --- | --- | --- | --- | --- |
| 264 | 62 | **Sh Ls Inner Welding** | 1d? | 2018-02-14 08:00 | 2018-02-14 17:00 |  |  | 4.5h |
| 265 | 62.1 | Sh-Ls Inner Welding | 0.75h | 2018-02-14 08:00 | 2018-02-14 08:45 | 6.91d | W; H | 1.5h |
| 266 | 62.2 | Sh-Ls Inner Welding | 0.75h | 2018-02-14 08:00 | 2018-02-14 08:45 | 6.91d | W; H | 1.5h |
| 267 | 62.3 | Sh-Ls Inner Welding | 0.75h | 2018-02-14 08:00 | 2018-02-14 08:45 | 6.91d | W; H | 1.5h |
| 268 | 63 | **Sh Inner Ls Flush Grinding** | 1d? | 2018-02-14 08:00 | 2018-02-14 17:00 |  |  | 0.75h |
| 269 | 63.1 | Sh Inner Flush Grinding | 0.25h | 2018-02-14 08:00 | 2018-02-14 08:15 | 6.97d | G | 0.25h |
| 270 | 63.2 | Sh Inner Flush Grinding | 0.25h | 2018-02-14 08:00 | 2018-02-14 08:15 | 6.97d | G | 0.25h |
| 271 | 63.3 | Sh Inner Flush Grinding | 0.25h | 2018-02-14 08:00 | 2018-02-14 08:15 | 6.97d | G | 0.25h |
| 272 | 64 | **Sh Ls Radiography** | 1d? | 2018-02-14 08:00 | 2018-02-14 17:00 |  |  | 24h |
| 273 | 64.1 | Sh Ls Welding Rt | 1d | 2018-02-14 08:00 | 2018-02-14 17:00 | 6d | RT | 8h |
| 274 | 64.2 | Sh Ls Welding Rt | 1d | 2018-02-14 08:00 | 2018-02-14 17:00 | 6d | RT | 8h |
| 275 | 64.3 | Sh Ls Welding Rt | 1d | 2018-02-14 08:00 | 2018-02-14 17:00 | 6d | RT | 8h |
| 276 | 65 | **Shell Re Rolling** | 1d? | 2018-02-14 08:00 | 2018-02-14 17:00 |  |  | 18h |
| 277 | 65.1 | Sh Re Rolling | 2h | 2018-02-14 08:00 | 2018-02-14 10:00 | 6.75d | F [200%]; H | 6h |
| 278 | 65.2 | Sh Re Rolling | 2h | 2018-02-14 08:00 | 2018-02-14 10:00 | 6.75d | F [200%]; H | 6h |
| 279 | 65.3 | Sh Re Rolling | 2h | 2018-02-14 08:00 | 2018-02-14 10:00 | 6.75d | F [200%]; H | 6h |
| 280 | 66 | **Sh Plate Cs Ep Correction** | 1d? | 2018-02-14 08:00 | 2018-02-14 17:00 |  |  | 3h |
| 281 | 66.1 | Sh Cir Ep Correction | 0.5h | 2018-02-14 08:00 | 2018-02-14 08:30 | 6.94d | F; H | 1h |
| 282 | 66.2 | Sh Cir Ep Correction | 0.5h | 2018-02-14 08:00 | 2018-02-14 08:30 | 6.94d | F; H | 1h |
| 283 | 66.3 | Sh Cir Ep Correction | 0.5h | 2018-02-14 08:00 | 2018-02-14 08:30 | 6.94d | F; H | 1h |
| 284 | 67 | **Sh Cir Seam First Fit Up** | 1d? | 2018-02-14 08:00 | 2018-02-14 17:00 |  |  | 4.6h |
| 285 | 67.1 | Sh Cs Fit Up [LS1+LS2] | 1h | 2018-02-14 08:00 | 2018-02-14 09:00 | 6.88d | F [200%]; H; W | 4h |
| 286 | 67.2 | Sh Cs Tack Dp Check [LS1+LS2] | 0.3h | 2018-02-14 08:00 | 2018-02-14 08:18 | 6.96d | F; H | 0.6h |
| 287 | 68 | **Sh Cir Seam First Welding** | 1d? | 2018-02-14 08:00 | 2018-02-14 17:00 |  |  | 5.35h |
| 288 | 68.1 | Sh Cs Welding Transfere | 1h | 2018-02-14 08:00 | 2018-02-14 09:00 | 6.88d | F; H | 2h |
| 289 | 68.2 | Sh Cs Welding Outer [LS1+LS2] | 0.75h | 2018-02-14 08:00 | 2018-02-14 08:45 | 6.91d | W; H | 1.5h |
| 290 | 68.3 | Sh Cs Welding Back Chip [LS1+LS2] | 0.1h | 2018-02-14 08:00 | 2018-02-14 08:06 | 6.99d | G | 0.1h |
| 291 | 68.4 | Sh Cs Inner Welding [LS1+LS2] | 0.75h | 2018-02-14 08:00 | 2018-02-14 08:45 | 6.91d | W; H | 1.5h |
| 292 | 68.5 | Sh Cs Flush Grinding [LS1+LS2] | 0.25h | 2018-02-14 08:00 | 2018-02-14 08:15 | 6.97d | G | 0.25h |

| ID | WBS | Task | Duration | Start | Finish | Total slack | Resources | Work |
| --- | --- | --- | --- | --- | --- | --- | --- | --- |
| 293 | 69 | **Sh Cir Seam Second Fitup** | 1d? | 2018-02-14 08:00 | 2018-02-14 17:00 |  |  | 4.2h |
| 294 | 69.1 | Sh Cs Fit Up [LS2+LS3] | 1h | 2018-02-14 08:00 | 2018-02-14 09:00 | 6.88d | F [200%]; H; W | 4h |
| 295 | 69.2 | Sh Cs Tack Dp Check [LS2+LS3] | 0.1h | 2018-02-14 08:00 | 2018-02-14 08:06 | 6.99d | F; H | 0.2h |
| 296 | 70 | **Sh Cir Seam Second Welding** | 1d? | 2018-02-14 08:00 | 2018-02-14 17:00 |  |  | 5.35h |
| 297 | 70.1 | Sh Cs Welding Transfere [LS2+LS3] | 1h | 2018-02-14 08:00 | 2018-02-14 09:00 | 6.88d | F; H | 2h |
| 298 | 70.2 | Sh Cs Welding Outer [LS2+LS3] | 0.75h | 2018-02-14 08:00 | 2018-02-14 08:45 | 6.91d | W; H | 1.5h |
| 299 | 70.3 | Sh Cs Welding Back Chip [LS2+LS3] | 0.1h | 2018-02-14 08:00 | 2018-02-14 08:06 | 6.99d | G | 0.1h |
| 300 | 70.4 | Sh Cs Inner Welding [LS2+LS3] | 0.75h | 2018-02-14 08:00 | 2018-02-14 08:45 | 6.91d | W; H | 1.5h |
| 301 | 70.5 | Sh Cs Flush Grinding [LS2+LS3] | 0.25h | 2018-02-14 08:00 | 2018-02-14 08:15 | 6.97d | G | 0.25h |
| 302 | 71 | **Sh Final Length Correction** | 1d? | 2018-02-14 08:00 | 2018-02-14 17:00 |  |  | 5.34h |
| 303 | 71.1 | Sh Length Marking | 2h | 2018-02-14 08:00 | 2018-02-14 10:00 | 6.75d | F [200%] | 4h |
| 304 | 71.2 | Length Cutting | 0.17h | 2018-02-14 08:00 | 2018-02-14 08:10 | 6.98d | C; H | 0.34h |
| 305 | 71.3 | Grinding & Ep | 0.5h | 2018-02-14 08:00 | 2018-02-14 08:30 | 6.94d | G; H | 1h |
| 306 | 72 | **Sh Cir Seam Fitup Flg1** | 1d? | 2018-02-14 08:00 | 2018-02-14 17:00 |  |  | 4.2h |
| 307 | 72.1 | Sh Cs Fit Up Flg CS1 | 1h | 2018-02-14 08:00 | 2018-02-14 09:00 | 6.88d | F [200%]; H; W | 4h |
| 308 | 72.2 | Sh Cs Tack Dp Check Flg CS1 | 0.1h | 2018-02-14 08:00 | 2018-02-14 08:06 | 6.99d | F; H | 0.2h |
| 309 | 73 | **Sh Cir Seam Welding Flg1** | 1d? | 2018-02-14 08:00 | 2018-02-14 17:00 |  |  | 5.35h |
| 310 | 73.1 | Sh Cs Welding Transfere | 1h | 2018-02-14 08:00 | 2018-02-14 09:00 | 6.88d | F; H | 2h |
| 311 | 73.2 | Sh Cs Welding Outer Flg1 | 0.75h | 2018-02-14 08:00 | 2018-02-14 08:45 | 6.91d | W; H | 1.5h |
| 312 | 73.3 | Sh Cs Welding Back Chip Flg1 | 0.1h | 2018-02-14 08:00 | 2018-02-14 08:06 | 6.99d | G | 0.1h |
| 313 | 73.4 | Sh Cs Inner Welding Flg1 | 0.75h | 2018-02-14 08:00 | 2018-02-14 08:45 | 6.91d | W; H | 1.5h |
| 314 | 73.5 | Sh Cs Flush Grinding Flg1 | 0.25h | 2018-02-14 08:00 | 2018-02-14 08:15 | 6.97d | G | 0.25h |
| 315 | 74 | **Sh Cs Fit Up Flg2** | 1d? | 2018-02-14 08:00 | 2018-02-14 17:00 |  |  | 4.2h |
| 316 | 74.1 | Sh Cs Fit Up Flg2 | 1h | 2018-02-14 08:00 | 2018-02-14 09:00 | 6.88d | F [200%]; H; W | 4h |
| 317 | 74.2 | Sh Cs Tack Dp Check Flg2 | 0.1h | 2018-02-14 08:00 | 2018-02-14 08:06 | 6.99d | F; H | 0.2h |

| ID | WBS | Task | Duration | Start | Finish | Total slack | Resources | Work |
| --- | --- | --- | --- | --- | --- | --- | --- | --- |
| 318 | 75 | **Sh Cs Welding Flg2** | 1d? | 2018-02-14 08:00 | 2018-02-14 17:00 |  |  | 5.35h |
| 319 | 75.1 | Sh Cs Welding Transfere Flg2 | 1h | 2018-02-14 08:00 | 2018-02-14 09:00 | 6.88d | F; H | 2h |
| 320 | 75.2 | Sh Cs Welding Outer Flg2 | 0.75h | 2018-02-14 08:00 | 2018-02-14 08:45 | 6.91d | W; H | 1.5h |
| 321 | 75.3 | Sh Cs Welding Back Chip Flg2 | 0.1h | 2018-02-14 08:00 | 2018-02-14 08:06 | 6.99d | G | 0.1h |
| 322 | 75.4 | Sh Cs Inner Welding Flg2 | 0.75h | 2018-02-14 08:00 | 2018-02-14 08:45 | 6.91d | W; H | 1.5h |
| 323 | 75.5 | Sh Cs Flush Grinding Flg2 | 0.25h | 2018-02-14 08:00 | 2018-02-14 08:15 | 6.97d | G | 0.25h |
| 324 | 76 | **Nozzle Orientation Marking** | 1d? | 2018-02-14 08:00 | 2018-02-14 17:00 |  |  | 34h |
| 325 | 76.1 | Sh-Noz Orientaion Marking | 1d? | 2018-02-14 08:00 | 2018-02-14 17:00 | 6d | F [200%] | 16h |
| 326 | 76.2 | Sh-Noz Marking 3"NB- 2 Nos | 1h | 2018-02-14 08:00 | 2018-02-14 09:00 | 6.88d | F [200%] | 2h |
| 327 | 76.3 | Sh-Noz Marking | 1d? | 2018-02-14 08:00 | 2018-02-14 17:00 | 6d | F [200%] | 16h |
| 328 | 77 | **Sh Nozzle Openning** | 1d? | 2018-02-14 08:00 | 2018-02-14 17:00 |  |  | 34h |
| 329 | 77.1 | 3"NB- 2 Nos | 1h | 2018-02-14 08:00 | 2018-02-14 09:00 | 6.88d | C; H | 2h |
| 331 | 77.2 | Inspection | 1d? | 2018-02-14 08:00 | 2018-02-14 17:00 | 6d | C; H | 16h |
| 332 | 78 | **Sh Nozzle Ep** | 1d? | 2018-02-14 08:00 | 2018-02-14 17:00 |  |  | 9h |
| 333 | 78.1 | 3"NB- 2 Nos | 1h | 2018-02-14 08:00 | 2018-02-14 09:00 | 6.88d | G | 1h |
| 335 | 78.2 | Inspection | 1d? | 2018-02-14 08:00 | 2018-02-14 17:00 | 6d |  |  |
| 336 | 79 | **Sh Nozzzle Fit Up** | 1d? | 2018-02-14 08:00 | 2018-02-14 17:00 |  |  | 36h |
| 337 | 79.1 | 3"NB- 2 Nos | 1h | 2018-02-14 08:00 | 2018-02-14 09:00 | 6.88d | F [200%]; H; W | 4h |
| 339 | 79.2 | Dp Check | 1d? | 2018-02-14 08:00 | 2018-02-14 17:00 | 6d |  |  |
| 340 | 80 | **Sh Nozzle Fit Up Inspection** | 1d? | 2018-02-14 08:00 | 2018-02-14 17:00 |  |  | 20h |
| 341 | 80.1 | 3"NB- 2 Nos | 1h | 2018-02-14 08:00 | 2018-02-14 09:00 | 6.88d | F; H | 2h |
| 343 | 80.2 | Dp Check | 1d? | 2018-02-14 08:00 | 2018-02-14 17:00 | 6d | F; H | 16h |
| 344 | 81 | **Sh Nozzle Welding** | 1d? | 2018-02-14 08:00 | 2018-02-14 17:00 |  |  | 19.6h |
| 345 | 81.1 | Sh Noz Welding Arrangement | 1h | 2018-02-14 08:00 | 2018-02-14 09:00 | 6.88d | T | 1h |
| 346 | 81.2 | Sh-Noz Welding S1 | 2.5h | 2018-02-14 08:00 | 2018-02-14 10:30 | 6.69d | W; H | 5h |
| 347 | 81.3 | Sh-Noz Welding S2 | 2.5h | 2018-02-14 08:00 | 2018-02-14 10:30 | 6.69d | W; H | 5h |
| 348 | 81.4 | Sh Noz Root Dp Check | 0.3h | 2018-02-14 08:00 | 2018-02-14 08:18 | 6.96d | F; H | 0.6h |
| 349 | 81.5 | Sh-Noz Inner Weld S1 | 2h | 2018-02-14 08:00 | 2018-02-14 10:00 | 6.75d | H; W | 4h |
| 350 | 81.6 | Sh-Noz Inner Weld S2 | 2h | 2018-02-14 08:00 | 2018-02-14 10:00 | 6.75d | H; W | 4h |
| 351 | 82 | Sh Saddle Welding | 1d? | 2018-02-14 08:00 | 2018-02-14 17:00 | 6d |  |  |
| 352 | 83 | Sh-Saddle Pad Fit Up | 6h | 2018-02-14 08:00 | 2018-02-14 15:00 | 6.25d | F [200%]; W; H | 24h |
| 353 | 84 | Sh-Saddle Pad Welding | 13h | 2018-02-14 08:00 | 2018-02-15 14:00 | 5.38d | W [200%]; H [200%] | 52h |
| 354 | 85 | Sh-Saddle Matching | 4h | 2018-02-14 08:00 | 2018-02-14 12:00 | 6.5d | F [200%]; G [200%] | 16h |
| 355 | 86 | Sh-Saddle Fit Up | 5h | 2018-02-14 08:00 | 2018-02-14 14:00 | 6.38d | W; F [200%]; H | 20h |
| 356 | 87 | Sh-Saddle Welding | 12h | 2018-02-14 08:00 | 2018-02-15 12:00 | 5.5d | W [200%]; H [200%] | 48h |
| 357 | 88 | Sh-Saddle Dress Up | 3h | 2018-02-14 08:00 | 2018-02-14 11:00 | 6.62d | G [200%] | 6h |
| 358 | 89 | Sh Davit Arm Welding | 1d? | 2018-02-14 08:00 | 2018-02-14 17:00 | 6d |  |  |
| 359 | 90 | Sh-Davit Arm Arm Match | 2h | 2018-02-14 08:00 | 2018-02-14 10:00 | 6.75d | F; G | 4h |
| 360 | 91 | Sh-Davit Arm Fit Up | 3.5h | 2018-02-14 08:00 | 2018-02-14 11:30 | 6.56d | F; H; W | 10.5h |
| 361 | 92 | Sh-Davit Arm Welding | 6h | 2018-02-14 08:00 | 2018-02-14 15:00 | 6.25d | W; H | 12h |

| ID | WBS | Task | Type | Duration | Start | Finish | Total slack | Resources | Work |
| --- | --- | --- | --- | --- | --- | --- | --- | --- | --- |
| 362 | 93 | **Sh Nde Clearence** |  | 1d? | 2018-02-14 08:00 | 2018-02-14 17:00 |  |  | 16h |
| 363 | 93.1 | Sh-Sh Nde Clearence |  | 4h | 2018-02-14 08:00 | 2018-02-14 12:00 | 6.5d | F; H | 8h |
| 364 | 93.2 | Tpi Inspection |  | 4h | 2018-02-14 08:00 | 2018-02-14 12:00 | 6.5d | F; H | 8h |
| 365 | 94 | Channel Fabrication |  | 1d? | 2018-02-14 08:00 | 2018-02-14 17:00 | 6d |  |  |
| 366 | 95 | **Channel Shell Ls Welding** |  | 1d? | 2018-02-14 08:00 | 2018-02-14 17:00 |  |  | 4.39h |
| 367 | 95.1 | Ch Plate Trasnfer |  | 1h | 2018-02-14 08:00 | 2018-02-14 09:00 | 6.88d | T | 1h |
| 368 | 95.2 | Ch-Marking |  | 0.1h | 2018-02-14 08:00 | 2018-02-14 08:06 | 6.99d | F; H [200%] | 0.3h |
| 369 | 95.3 | Ch-Cutting |  | 0.17h | 2018-02-14 08:00 | 2018-02-14 08:10 | 6.98d | C; H | 0.34h |
| 370 | 95.4 | Ch Pl Side Grinding |  | 0.25h | 2018-02-14 08:00 | 2018-02-14 08:15 | 6.97d | G | 0.25h |
| 371 | 95.5 | Ch-Bevelling Cir Side |  | 0.5h | 2018-02-14 08:00 | 2018-02-14 08:30 | 6.94d | F; H [300%] | 2h |
| 372 | 95.6 | Ch Ep Grinding |  | 0.5h | 2018-02-14 08:00 | 2018-02-14 08:30 | 6.94d | G | 0.5h |
| 373 | 96 | **Channel Sh Rolling** |  | 1d? | 2018-02-14 08:00 | 2018-02-14 17:00 |  |  | 13h |
| 374 | 96.1 | Ch-Pre Bend |  | 2h | 2018-02-14 08:00 | 2018-02-14 10:00 | 6.75d | F [200%]; H | 6h |
| 375 | 96.2 | Ch-Pre Bend Cut Off | milestone | 0h | 2018-02-14 08:00 | 2018-02-14 08:00 | 7d | F [200%]; C |  |
| 376 | 96.3 | Ch Ls Beveling |  | 0.5h | 2018-02-14 08:00 | 2018-02-14 08:30 | 6.94d | F [200%] | 1h |
| 377 | 96.4 | Ch-Rolling |  | 2h | 2018-02-14 08:00 | 2018-02-14 10:00 | 6.75d | F [200%]; H | 6h |
| 378 | 97 | **Ch Shell Ls Fit Up** |  | 1d? | 2018-02-14 08:00 | 2018-02-14 17:00 |  |  | 5h |
| 379 | 97.1 | Ch-Ls Correction |  | 0.5h | 2018-02-14 08:00 | 2018-02-14 08:30 | 6.94d | F [200%] | 1h |
| 380 | 97.2 | Ch-Ls Fit Up |  | 1h | 2018-02-14 08:00 | 2018-02-14 09:00 | 6.88d | F [200%]; W; H | 4h |
| 381 | 98 | **Ch Shell Ls Welding** |  | 1d? | 2018-02-14 08:00 | 2018-02-14 17:00 |  |  | 14.75h |
| 382 | 98.1 | Ch-Ls Weld Arrangement |  | 0.5h | 2018-02-14 08:00 | 2018-02-14 08:30 | 6.94d | F; H [200%] | 1.5h |
| 383 | 98.2 | Ch-Ls Welding- Top Side |  | 1.75h | 2018-02-14 08:00 | 2018-02-14 09:45 | 6.78d | W; H | 3.5h |
| 384 | 98.3 | Ch-Ls Welding- Back Chip | milestone | 0h | 2018-02-14 08:00 | 2018-02-14 08:00 | 7d | G; H |  |
| 385 | 98.4 | Ch-Ls Inner Welding |  | 1.75h | 2018-02-14 08:00 | 2018-02-14 09:45 | 6.78d | W; H | 3.5h |
| 386 | 98.5 | Ch-Ls Innner Flush Grind |  | 0.25h | 2018-02-14 08:00 | 2018-02-14 08:15 | 6.97d | G | 0.25h |
| 387 | 98.6 | Ch Re Rolling |  | 2h | 2018-02-14 08:00 | 2018-02-14 10:00 | 6.75d | F [200%]; H | 6h |

| ID | WBS | Task | Type | Duration | Start | Finish | Total slack | Resources | Work |
| --- | --- | --- | --- | --- | --- | --- | --- | --- | --- |
| 388 | 99 | **Ch Ls Welding Radiography** |  | 1d? | 2018-02-14 08:00 | 2018-02-14 17:00 |  |  | 8h |
| 389 | 99.1 | Ch Ls Welding Rt |  | 1d | 2018-02-14 08:00 | 2018-02-14 17:00 | 6d | RT | 8h |
| 390 | 100 | **Ch Cs Fit Up Flg1** |  | 1d? | 2018-02-14 08:00 | 2018-02-14 17:00 |  |  | 5h |
| 391 | 100.1 | Ch Cir Ep Correction |  | 0.5h | 2018-02-14 08:00 | 2018-02-14 08:30 | 6.94d | F [200%] | 1h |
| 392 | 100.2 | Ch Cs Fit Up Flg1 |  | 1h | 2018-02-14 08:00 | 2018-02-14 09:00 | 6.88d | F [200%]; W; H | 4h |
| 393 | 100.3 | Ch Cs Tack Dp Check Flg1 | milestone | 0h | 2018-02-14 08:00 | 2018-02-14 08:00 | 7d | F; H |  |
| 394 | 101 | **Ch Cs Welding Flg1** |  | 1d? | 2018-02-14 08:00 | 2018-02-14 17:00 |  |  | 10.5h |
| 395 | 101.1 | Ch Cs Welding Transfere |  | 1h | 2018-02-14 08:00 | 2018-02-14 09:00 | 6.88d | F; H [200%] | 3h |
| 396 | 101.2 | Ch Cs Welding Outer Flg1 |  | 1.75h | 2018-02-14 08:00 | 2018-02-14 09:45 | 6.78d | W; H | 3.5h |
| 397 | 101.3 | Ch Cs Welding Back Chip Flg1 |  | 0.25h | 2018-02-14 08:00 | 2018-02-14 08:15 | 6.97d | G | 0.25h |
| 398 | 101.4 | Ch Cs Inner Welding Flg1 |  | 1.75h | 2018-02-14 08:00 | 2018-02-14 09:45 | 6.78d | W; H | 3.5h |
| 399 | 101.5 | Ch Cs Flush Grinding Flg1 |  | 0.25h | 2018-02-14 08:00 | 2018-02-14 08:15 | 6.97d | G | 0.25h |
| 400 | 102 | **Ch Cs Fit Up Flg2** |  | 1d? | 2018-02-14 08:00 | 2018-02-14 17:00 |  |  | 5.44h |
| 401 | 102.1 | Ch Length Cutting |  | 0.17h | 2018-02-14 08:00 | 2018-02-14 08:10 | 6.98d | C; H | 0.34h |
| 402 | 102.2 | Ch Cir Ep Correction |  | 0.5h | 2018-02-14 08:00 | 2018-02-14 08:30 | 6.94d | F; H | 1h |
| 403 | 102.3 | Ch Cs Fit Up Flg2 |  | 1h | 2018-02-14 08:00 | 2018-02-14 09:00 | 6.88d | F [200%]; W; H | 4h |
| 404 | 102.4 | Ch Cs Tack Dp Check Flg2 |  | 0.1h | 2018-02-14 08:00 | 2018-02-14 08:06 | 6.99d | F | 0.1h |
| 405 | 103 | **Ch Cs Flg 2 Welding** |  | 1d? | 2018-02-14 08:00 | 2018-02-14 17:00 |  |  | 10.5h |
| 406 | 103.1 | Ch Cs Welding Transfere Flg2 |  | 1h | 2018-02-14 08:00 | 2018-02-14 09:00 | 6.88d | F; H [200%] | 3h |
| 407 | 103.2 | Ch Cs Welding Outer Flg2 |  | 1.75h | 2018-02-14 08:00 | 2018-02-14 09:45 | 6.78d | W; H | 3.5h |
| 408 | 103.3 | Ch Cs Welding Back Chip Flg2 |  | 0.25h | 2018-02-14 08:00 | 2018-02-14 08:15 | 6.97d | G | 0.25h |
| 409 | 103.4 | Ch Cs Inner Welding Flg2 |  | 1.75h | 2018-02-14 08:00 | 2018-02-14 09:45 | 6.78d | W; H | 3.5h |
| 410 | 103.5 | Ch Cs Flush Grinding Flg2 |  | 0.25h | 2018-02-14 08:00 | 2018-02-14 08:15 | 6.97d | G | 0.25h |
| 411 | 104 | **Ch Cs Welding Rt Flg1 & 2** |  | 1d? | 2018-02-14 08:00 | 2018-02-14 17:00 |  |  | 8h |
| 412 | 104.1 | Ch Cs Welding Rt |  | 1d | 2018-02-14 08:00 | 2018-02-14 17:00 | 6d | RT | 8h |

| ID | WBS | Task | Duration | Start | Finish | Total slack | Resources | Work |
| --- | --- | --- | --- | --- | --- | --- | --- | --- |
| 413 | 105 | **Channel Noz Marking** | 1d? | 2018-02-14 08:00 | 2018-02-14 17:00 |  |  | 18h |
| 414 | 105.1 | Ch- Noz orientation | 1d? | 2018-02-14 08:00 | 2018-02-14 17:00 | 6d | F; H | 16h |
| 415 | 105.2 | Ch-Noz Marking 2"Nb- 2 Nos | 1h | 2018-02-14 08:00 | 2018-02-14 09:00 | 6.88d | F; H | 2h |
| 416 | 106 | **Ch Noz Opening** | 1d? | 2018-02-14 08:00 | 2018-02-14 17:00 |  |  | 4h |
| 417 | 106.1 | Ch-Noz Openning-Top N4 | 1h | 2018-02-14 08:00 | 2018-02-14 09:00 | 6.88d | C; H | 2h |
| 418 | 106.2 | Ch-Noz Openning-Bottom N3 | 1h | 2018-02-14 08:00 | 2018-02-14 09:00 | 6.88d | C; H | 2h |
| 419 | 107 | **Ch Noz Open Ep** | 1d? | 2018-02-14 08:00 | 2018-02-14 17:00 |  |  | 4h |
| 420 | 107.1 | Ch-Noz Ep N4 | 1h | 2018-02-14 08:00 | 2018-02-14 09:00 | 6.88d | G; H | 2h |
| 421 | 107.2 | Ch-Noz Ep N3 | 1h | 2018-02-14 08:00 | 2018-02-14 09:00 | 6.88d | G; H | 2h |
| 422 | 108 | **Ch Noz Fit Up** | 1d? | 2018-02-14 08:00 | 2018-02-14 17:00 |  |  | 16h |
| 423 | 108.1 | Ch-Noz Fit Up N4 | 2h | 2018-02-14 08:00 | 2018-02-14 10:00 | 6.75d | F [200%]; W; H | 8h |
| 424 | 108.2 | Ch-Noz Fit Up N3 | 2h | 2018-02-14 08:00 | 2018-02-14 10:00 | 6.75d | F [200%]; W; H | 8h |
| 425 | 109 | **Ch Noz Fit Up Insp** | 1d? | 2018-02-14 08:00 | 2018-02-14 17:00 |  |  | 4h |
| 426 | 109.1 | Ch-Noz Inspn N4 | 1h | 2018-02-14 08:00 | 2018-02-14 09:00 | 6.88d | F; H | 2h |
| 427 | 109.2 | Ch-Noz Inspn N3 | 1h | 2018-02-14 08:00 | 2018-02-14 09:00 | 6.88d | F; H | 2h |
| 428 | 110 | **Ch Noz Welding** | 1d? | 2018-02-14 08:00 | 2018-02-14 17:00 |  |  | 65.6h |
| 429 | 110.1 | Ch Noz Welding Arrangement | 1d? | 2018-02-14 08:00 | 2018-02-14 17:00 | 6d | F; H [200%] | 24h |
| 430 | 110.2 | Ch-Noz Welding N4 | 3h | 2018-02-14 08:00 | 2018-02-14 11:00 | 6.62d | W; H | 6h |
| 431 | 110.3 | Ch-Noz Welding N3 | 3h | 2018-02-14 08:00 | 2018-02-14 11:00 | 6.62d | W; H | 6h |
| 432 | 110.4 | Ch Noz Root Dp Check | 0.3h | 2018-02-14 08:00 | 2018-02-14 08:18 | 6.96d | W; H | 0.6h |
| 433 | 110.5 | Ch-Noz Inner Weld N4 | 3h | 2018-02-14 08:00 | 2018-02-14 11:00 | 6.62d | W; H | 6h |
| 434 | 110.6 | Ch-Noz Inner Weld N5 | 3h | 2018-02-14 08:00 | 2018-02-14 11:00 | 6.62d | W; H | 6h |
| 435 | 110.7 | Rf Pad Fit Up & Nozzle Fit Up | 4h | 2018-02-14 08:00 | 2018-02-14 12:00 | 6.5d | W; H | 8h |
| 436 | 110.8 | Rf Pad Fit Up Welding | 4h | 2018-02-14 08:00 | 2018-02-14 12:00 | 6.5d | G; H | 8h |
| 437 | 110.9 | Noz Welding Flush Grind 12''NB | 1h | 2018-02-14 08:00 | 2018-02-14 09:00 | 6.88d | G | 1h |

| ID | WBS | Task | Duration | Start | Finish | Total slack | Resources | Work |
| --- | --- | --- | --- | --- | --- | --- | --- | --- |
| 438 | 111 | **Channel Pp Plate Fit Up** | 1d? | 2018-02-14 08:00 | 2018-02-14 17:00 |  |  | 18h |
| 439 | 111.1 | Ch- Pp Plate Fit Up | 4h | 2018-02-14 08:00 | 2018-02-14 12:00 | 6.5d | F [200%]; H; W | 16h |
| 440 | 111.2 | Ch- Pp Plate Fit Up Insp | 1h | 2018-02-14 08:00 | 2018-02-14 09:00 | 6.88d | F; H | 2h |
| 441 | 112 | **Ch Pp Plate Welding** | 1d? | 2018-02-14 08:00 | 2018-02-14 17:00 |  |  | 12.5h |
| 442 | 112.1 | Ch- Pp Plate Welding | 6h | 2018-02-14 08:00 | 2018-02-14 15:00 | 6.25d | W; H | 12h |
| 443 | 112.2 | Ch- Pp Plate Face Grinding | 0.25h | 2018-02-14 08:00 | 2018-02-14 08:15 | 6.97d | G; H | 0.5h |
| 444 | 113 | **Channel Davit Arm Welding** | 1d? | 2018-02-14 08:00 | 2018-02-14 17:00 |  |  | 12h |
| 445 | 113.1 | Ch-Davit Arm Arm Match | 1h | 2018-02-14 08:00 | 2018-02-14 09:00 | 6.88d | F; H | 2h |
| 446 | 113.2 | Ch-Davit Arm Fit Up | 2h | 2018-02-14 08:00 | 2018-02-14 10:00 | 6.75d | F; W; H | 6h |
| 447 | 113.3 | Ch-Davit Arm Welding | 2h | 2018-02-14 08:00 | 2018-02-14 10:00 | 6.75d | W; H | 4h |
| 448 | 114 | **Channel Nde & Pwht** | 1d? | 2018-02-14 08:00 | 2018-02-14 17:00 |  |  | 6h |
| 449 | 114.1 | Ch All Welding Dressup & Dp Check | 2h | 2018-02-14 08:00 | 2018-02-14 10:00 | 6.75d | G [200%] | 4h |
| 450 | 114.2 | Ch-Ch Nde Clearence | 2h | 2018-02-14 08:00 | 2018-02-14 10:00 | 6.75d | F | 2h |
| 451 | 115 | Barrel Fabrication | 1d? | 2018-02-14 08:00 | 2018-02-14 17:00 | 6d |  |  |
| 452 | 116 | **Barrel Sh Plate Cutting & Ep** | 1d? | 2018-02-14 08:00 | 2018-02-14 17:00 |  |  | 23h |
| 453 | 116.1 | Barrel Plate Transfer | 1h | 2018-02-14 08:00 | 2018-02-14 09:00 | 6.88d | T | 1h |
| 454 | 116.2 | Barrel-Marking | 2h | 2018-02-14 08:00 | 2018-02-14 10:00 | 6.75d | F; H [200%] | 6h |
| 455 | 116.3 | Barrel-Cutting | 3h | 2018-02-14 08:00 | 2018-02-14 11:00 | 6.62d | C; H | 6h |
| 456 | 116.4 | Barrel Pl Side Grinding | 1h | 2018-02-14 08:00 | 2018-02-14 09:00 | 6.88d | G | 1h |
| 457 | 116.5 | Barrel-Bevelling Cir Side | 2h | 2018-02-14 08:00 | 2018-02-14 10:00 | 6.75d | F; H [300%] | 8h |
| 458 | 116.6 | Ch Ep Grinding | 1h | 2018-02-14 08:00 | 2018-02-14 09:00 | 6.88d | G | 1h |
| 459 | 117 | **Bar Shell Rolling** | 1d? | 2018-02-14 08:00 | 2018-02-14 17:00 |  |  | 16h |
| 460 | 117.1 | Barrel-Pre Bend | 2h | 2018-02-14 08:00 | 2018-02-14 10:00 | 6.75d | F [200%]; H | 6h |
| 461 | 117.2 | Barrel-Pre Bend Cut Off | 1h | 2018-02-14 08:00 | 2018-02-14 09:00 | 6.88d | F [200%]; C | 3h |
| 462 | 117.3 | Barrel -Pre Ls Ep | 0.5h | 2018-02-14 08:00 | 2018-02-14 08:30 | 6.94d | F [200%] | 1h |
| 463 | 117.4 | Barrel-Rolling | 2h | 2018-02-14 08:00 | 2018-02-14 10:00 | 6.75d | F [200%]; H | 6h |

| ID | WBS | Task | Type | Duration | Start | Finish | Total slack | Resources | Work |
| --- | --- | --- | --- | --- | --- | --- | --- | --- | --- |
| 464 | 118 | **Barrel Shell Ls Fit Up** |  | 1d? | 2018-02-14 08:00 | 2018-02-14 17:00 |  |  | 5h |
| 465 | 118.1 | Barrel-Ls Correction |  | 0.5h | 2018-02-14 08:00 | 2018-02-14 08:30 | 6.94d | F [200%] | 1h |
| 466 | 118.2 | Barrel-Ls Fit Up |  | 1h | 2018-02-14 08:00 | 2018-02-14 09:00 | 6.88d | F [200%]; W; H | 4h |
| 467 | 119 | **Barrel Shell Ls Welding** |  | 1d? | 2018-02-14 08:00 | 2018-02-14 17:00 |  |  | 15.5h |
| 468 | 119.1 | Barrel-Ls Weld Arrangement |  | 0.5h | 2018-02-14 08:00 | 2018-02-14 08:30 | 6.94d | F; H [200%] | 1.5h |
| 469 | 119.2 | Barrel-Ls Welding- Top Side |  | 1.25h | 2018-02-14 08:00 | 2018-02-14 09:15 | 6.84d | W; H | 2.5h |
| 470 | 119.3 | Barrel-Ls Welding- Back Chip |  | 1h | 2018-02-14 08:00 | 2018-02-14 09:00 | 6.88d | G; H | 2h |
| 471 | 119.4 | Barrel-Ls Inner Welding |  | 1.25h | 2018-02-14 08:00 | 2018-02-14 09:15 | 6.84d | W; H | 2.5h |
| 472 | 119.5 | Barrel-Ls Innner Flush Grind |  | 1h | 2018-02-14 08:00 | 2018-02-14 09:00 | 6.88d | G | 1h |
| 473 | 119.6 | Barrel Re Rolling |  | 2h | 2018-02-14 08:00 | 2018-02-14 10:00 | 6.75d | F [200%]; H | 6h |
| 474 | 120 | **Barrel Ls Welding Rt** |  | 1d? | 2018-02-14 08:00 | 2018-02-14 17:00 |  |  | 8h |
| 475 | 120.1 | Bar Ls Welding Rt |  | 1d | 2018-02-14 08:00 | 2018-02-14 17:00 | 6d | RT | 8h |
| 476 | 121 | **Barrel Shell Cs Flg 1 Fit Up** |  | 1d? | 2018-02-14 08:00 | 2018-02-14 17:00 |  |  | 5h |
| 477 | 121.1 | Barrel Cir Ep Correction |  | 0.5h | 2018-02-14 08:00 | 2018-02-14 08:30 | 6.94d | F [200%] | 1h |
| 478 | 121.2 | Barrel Cs Fit Up Flg1 |  | 1h | 2018-02-14 08:00 | 2018-02-14 09:00 | 6.88d | F [200%]; W; H | 4h |
| 479 | 121.3 | Barrel Cs Tack Dp Check Flg1 | milestone | 0h | 2018-02-14 08:00 | 2018-02-14 08:00 | 7d | F; H |  |
| 480 | 122 | **Barrel Sh Cs Flg1 Welding** |  | 1d? | 2018-02-14 08:00 | 2018-02-14 17:00 |  |  | 8.5h |
| 481 | 122.1 | Barrel Cs Welding Transfere |  | 1h | 2018-02-14 08:00 | 2018-02-14 09:00 | 6.88d | F; H [200%] | 3h |
| 482 | 122.2 | Barrel Cs Welding Outer Flg1 |  | 1.25h | 2018-02-14 08:00 | 2018-02-14 09:15 | 6.84d | W; H | 2.5h |
| 483 | 122.3 | Barrel Cs Welding Back Chip Flg1 |  | 0.25h | 2018-02-14 08:00 | 2018-02-14 08:15 | 6.97d | G | 0.25h |
| 484 | 122.4 | Barrel Cs Inner Welding Flg1 |  | 1.25h | 2018-02-14 08:00 | 2018-02-14 09:15 | 6.84d | W; H | 2.5h |
| 485 | 122.5 | Barrel Cs Flush Grinding Flg1 |  | 0.25h | 2018-02-14 08:00 | 2018-02-14 08:15 | 6.97d | G | 0.25h |
| 486 | 123 | **Barrel Cs Fit Up With Dish** |  | 1d? | 2018-02-14 08:00 | 2018-02-14 17:00 |  |  | 5h |
| 487 | 123.1 | Barrel Length Cutting | milestone | 0h | 2018-02-14 08:00 | 2018-02-14 08:00 | 7d | C; H |  |
| 488 | 123.2 | Barrel Ep |  | 0.5h | 2018-02-14 08:00 | 2018-02-14 08:30 | 6.94d | F; H | 1h |
| 489 | 123.3 | Barrel Cs Fit Up Dish |  | 1h | 2018-02-14 08:00 | 2018-02-14 09:00 | 6.88d | F [200%]; W; H | 4h |
| 490 | 123.4 | Barrel Cs Tack Dp Check Dish | milestone | 0h | 2018-02-14 08:00 | 2018-02-14 08:00 | 7d | F |  |

| ID | WBS | Task | Duration | Start | Finish | Total slack | Resources | Work |
| --- | --- | --- | --- | --- | --- | --- | --- | --- |
| 491 | 124 | **Barrel Cs Welding With Dish** | 1d? | 2018-02-14 08:00 | 2018-02-14 17:00 |  |  | 8.5h |
| 492 | 124.1 | Barrel Cs Welding Transfere Dish | 1h | 2018-02-14 08:00 | 2018-02-14 09:00 | 6.88d | F; H [200%] | 3h |
| 493 | 124.2 | Barrel Cs Welding Outer Dish | 1.25h | 2018-02-14 08:00 | 2018-02-14 09:15 | 6.84d | W; H | 2.5h |
| 494 | 124.3 | Barrel Cs Welding Back Chip Dish | 0.25h | 2018-02-14 08:00 | 2018-02-14 08:15 | 6.97d | G | 0.25h |
| 495 | 124.4 | Barrel Cs Inner Welding Dish | 1.25h | 2018-02-14 08:00 | 2018-02-14 09:15 | 6.84d | W; H | 2.5h |
| 496 | 124.5 | Barrel Cs Flush Grinding Dish | 0.25h | 2018-02-14 08:00 | 2018-02-14 08:15 | 6.97d | G | 0.25h |
| 497 | 125 | **Barrel Cs & Dish Welding Rt Flg1** | 1d? | 2018-02-14 08:00 | 2018-02-14 17:00 |  |  | 8h |
| 498 | 125.1 | Barrel Cs Welding Rt | 1d | 2018-02-14 08:00 | 2018-02-14 17:00 | 6d | RT | 8h |
| 499 | 126 | **Barrel Noz Oreination Marking** | 1d? | 2018-02-14 08:00 | 2018-02-14 17:00 |  |  | 4h |
| 500 | 126.1 | Barrel- Noz Orientation Mkg | 1h | 2018-02-14 08:00 | 2018-02-14 09:00 | 6.88d | F; H | 2h |
| 501 | 126.2 | Barrel-Noz Marking 1.5"NB-2Nos | 1h | 2018-02-14 08:00 | 2018-02-14 09:00 | 6.88d | F; H | 2h |
| 502 | 127 | **Barrel Nozzle Oppening** | 1d? | 2018-02-14 08:00 | 2018-02-14 17:00 |  |  | 2h |
| 503 | 127.1 | Barrel-Noz Openning 1.5"NB-2Nos | 0.5h | 2018-02-14 08:00 | 2018-02-14 08:30 | 6.94d | C; H | 1h |
| 504 | 127.2 | Barrel-Noz Openning 1.5"NB-2Nos | 0.5h | 2018-02-14 08:00 | 2018-02-14 08:30 | 6.94d | C; H | 1h |
| 505 | 128 | **Barrel Noz Edge Preparation** | 1d? | 2018-02-14 08:00 | 2018-02-14 17:00 |  |  | 2h |
| 506 | 128.1 | Barrel-Noz Openning 1.5"NB-2Nos | 0.5h | 2018-02-14 08:00 | 2018-02-14 08:30 | 6.94d | G; H | 1h |
| 507 | 128.2 | Barrel-Noz Openning 1.5"NB-2Nos | 0.5h | 2018-02-14 08:00 | 2018-02-14 08:30 | 6.94d | G; H | 1h |
| 508 | 129 | **Barrel Nozzzle Fit Up** | 1d? | 2018-02-14 08:00 | 2018-02-14 17:00 |  |  | 8h |
| 509 | 129.1 | Barrel-Noz Fit Up N5 | 1h | 2018-02-14 08:00 | 2018-02-14 09:00 | 6.88d | F [200%]; W; H | 4h |
| 510 | 129.2 | Barrel-Noz Fit Up N6 | 1h | 2018-02-14 08:00 | 2018-02-14 09:00 | 6.88d | F [200%]; W; H | 4h |
| 511 | 130 | **Barrel Noz Fit Up Inspection** | 1d? | 2018-02-14 08:00 | 2018-02-14 17:00 |  |  | 1h |
| 512 | 130.1 | Barrel-Noz Inspn N5 | 0.5h | 2018-02-14 08:00 | 2018-02-14 08:30 | 6.94d | INS | 0.5h |
| 513 | 130.2 | Barrel-Noz Inspn N6 | 0.5h | 2018-02-14 08:00 | 2018-02-14 08:30 | 6.94d | INS | 0.5h |
| 514 | 131 | **Barrel Nozzle Welding** | 1d? | 2018-02-14 08:00 | 2018-02-14 17:00 |  |  | 20.5h |
| 515 | 131.1 | Barrel Noz Welding Arrangement | 0.5h | 2018-02-14 08:00 | 2018-02-14 08:30 | 6.94d | T | 0.5h |
| 516 | 131.2 | Barrel-Noz Welding N5 | 0.5h | 2018-02-14 08:00 | 2018-02-14 08:30 | 6.94d | W; H | 1h |
| 517 | 131.3 | Barrel-Noz Welding N6 | 0.5h | 2018-02-14 08:00 | 2018-02-14 08:30 | 6.94d | W; H | 1h |
| 518 | 131.4 | Barrel Noz Root Dp | 1d? | 2018-02-14 08:00 | 2018-02-14 17:00 | 6d | F; H | 16h |
| 519 | 131.5 | Barrel-Noz Inner Welding N5 | 0.5h | 2018-02-14 08:00 | 2018-02-14 08:30 | 6.94d | W; H | 1h |
| 520 | 131.6 | Barrel-Noz Inner Welding N6 | 0.5h | 2018-02-14 08:00 | 2018-02-14 08:30 | 6.94d | W; H | 1h |

| ID | WBS | Task | Duration | Start | Finish | Total slack | Resources | Work |
| --- | --- | --- | --- | --- | --- | --- | --- | --- |
| 521 | 132 | **Barrel Noz Inner Weld Flush Grind** | 1d? | 2018-02-14 08:00 | 2018-02-14 17:00 |  |  | 3h |
| 522 | 132.1 | Barrel All Welding Dressup & Dp | 1h | 2018-02-14 08:00 | 2018-02-14 09:00 | 6.88d | G [200%] | 2h |
| 523 | 132.2 | Barrel-Barrel Nde Clearence | 1h | 2018-02-14 08:00 | 2018-02-14 09:00 | 6.88d | F | 1h |
| 524 | 133 | Fl Head Fabrication | 1d? | 2018-02-14 08:00 | 2018-02-14 17:00 | 6d |  |  |
| 525 | 134 | **Flaoting Head Dish Forming** | 1d? | 2018-02-14 08:00 | 2018-02-14 17:00 |  |  | 7.3h |
| 526 | 134.1 | Fl Head Dish Pl Issue | 4h | 2018-02-14 08:00 | 2018-02-14 12:00 | 6.5d | T | 4h |
| 527 | 134.2 | Fl Head Pl Marking | 0.5h | 2018-02-14 08:00 | 2018-02-14 08:30 | 6.94d | F; H | 1h |
| 528 | 134.3 | Fl Head Pl Stamping | 0.5h | 2018-02-14 08:00 | 2018-02-14 08:30 | 6.94d | F; H | 1h |
| 529 | 134.4 | Fl Head Pl Cutting | 0.5h | 2018-02-14 08:00 | 2018-02-14 08:30 | 6.94d | C; H | 1h |
| 530 | 134.5 | Fl Head Pl Grinding | 0.3h | 2018-02-14 08:00 | 2018-02-14 08:18 | 6.96d | G | 0.3h |
| 531 | 135 | **Fl Head Formig** | 1d? | 2018-02-14 08:00 | 2018-02-14 17:00 |  |  | 32h |
| 532 | 135.1 | Fl Head Forming | 16h | 2018-02-14 08:00 | 2018-02-15 17:00 | 5d | SC | 16h |
| 533 | 135.2 | Fl Head Profile Check | 1d? | 2018-02-14 08:00 | 2018-02-14 17:00 | 6d | F; H | 16h |
| 534 | 136 | **Fl Head Cutting** | 1d? | 2018-02-14 08:00 | 2018-02-14 17:00 |  |  | 0.54h |
| 535 | 136.1 | Fl Head Marking | 0.1h | 2018-02-14 08:00 | 2018-02-14 08:06 | 6.99d | F; H | 0.2h |
| 536 | 136.2 | Fl Head Cutting | 0.17h | 2018-02-14 08:00 | 2018-02-14 08:10 | 6.98d | C; H | 0.34h |
| 537 | 137 | **Fl Head Ep** | 1d? | 2018-02-14 08:00 | 2018-02-14 17:00 |  |  | 0.6h |
| 538 | 137.1 | Fl Head Grinding | 0.3h | 2018-02-14 08:00 | 2018-02-14 08:18 | 6.96d | G; H | 0.6h |
| 539 | 138 | **Fl Head Fit Up** | 1d? | 2018-02-14 08:00 | 2018-02-14 17:00 |  |  | 4h |
| 540 | 138.1 | Fl Head Fit Up | 1h | 2018-02-14 08:00 | 2018-02-14 09:00 | 6.88d | F [200%]; W; H | 4h |
| 541 | 139 | **Fl Head Welding** | 1d? | 2018-02-14 08:00 | 2018-02-14 17:00 |  |  | 45h |
| 542 | 139.1 | Fl Head Welding | 8h | 2018-02-14 08:00 | 2018-02-14 17:00 | 6d | W; H | 16h |
| 543 | 139.2 | Fl Head Pp Plate Fit Up | 2.5h | 2018-02-14 08:00 | 2018-02-14 10:30 | 6.69d | F [200%]; H; W | 10h |
| 544 | 139.3 | Fl Head Pp Pl Welding | 5h | 2018-02-14 08:00 | 2018-02-14 14:00 | 6.38d | W; H | 10h |
| 545 | 139.4 | Fl Head Pp Pl Level Grinding | 3h | 2018-02-14 08:00 | 2018-02-14 11:00 | 6.62d | F; H | 6h |
| 546 | 139.5 | Fl Head Inspection | 3h | 2018-02-14 08:00 | 2018-02-14 11:00 | 6.62d | F | 3h |

| ID | WBS | Task | Duration | Start | Finish | Total slack | Resources | Work |
| --- | --- | --- | --- | --- | --- | --- | --- | --- |
| 547 | 140 | **Fl Head Sr & Machining** | 1d? | 2018-02-14 08:00 | 2018-02-14 17:00 |  |  | 22h |
| 548 | 140.1 | Fl Head Sr | 1d? | 2018-02-14 08:00 | 2018-02-14 17:00 | 6d | SC | 8h |
| 549 | 140.2 | Fl Head Final Machining | 1d? | 2018-02-14 08:00 | 2018-02-14 17:00 | 6d | SC | 8h |
| 550 | 140.3 | Fl Head Hole Marking | 1h | 2018-02-14 08:00 | 2018-02-14 09:00 | 6.88d | F; H | 2h |
| 551 | 140.4 | Fl Head Hole Drilling | 2h | 2018-02-14 08:00 | 2018-02-14 10:00 | 6.75d | SC | 2h |
| 552 | 140.5 | Fl Head Final Inspection | 1h | 2018-02-14 08:00 | 2018-02-14 09:00 | 6.88d | F; H | 2h |
| 553 | 141 | Tube Bundle Fabrication | 1d? | 2018-02-14 08:00 | 2018-02-14 17:00 | 6d |  |  |
| 554 | 142 | **Tube Bundle Assy** | 1d? | 2018-02-14 08:00 | 2018-02-14 17:00 |  |  | 76h |
| 555 | 142.1 | Frame Set Up & Tube Sht Set Up | 12h | 2018-02-14 08:00 | 2018-02-15 12:00 | 5.5d | F [200%]; W | 36h |
| 556 | 142.2 | Skeliton Assy 30Baffles | 8h | 2018-02-14 08:00 | 2018-02-14 17:00 | 6d | F [200%]; H [300%] | 40h |
| 557 | 143 | **Tube Insert** | 1d? | 2018-02-14 08:00 | 2018-02-14 17:00 |  |  | 57.5h |
| 558 | 143.1 | Tube Insert | 2.5h | 2018-02-14 08:00 | 2018-02-14 10:30 | 6.69d | F; H [400%] | 12.5h |
| 559 | 143.2 | Seal Rod Insert & Weld | 1h | 2018-02-14 08:00 | 2018-02-14 09:00 | 6.88d | F [200%]; W; H [200%] | 5h |
| 560 | 143.3 | Tube Insert | 1d? | 2018-02-14 08:00 | 2018-02-14 17:00 | 6d | F; H [400%] | 40h |
| 561 | 144 | **Sliding Strip Fit Up Welding** | 1d? | 2018-02-14 08:00 | 2018-02-14 17:00 |  |  | 40h |
| 562 | 144.1 | Sealing Strip Fit Up | 1d? | 2018-02-14 08:00 | 2018-02-14 17:00 | 6d | F; H | 16h |
| 563 | 144.2 | Sliding Strip Welding | 1d? | 2018-02-14 08:00 | 2018-02-14 17:00 | 6d | W; H | 16h |
| 564 | 144.3 | Seal/Slid Trip Weld Grind | 1d? | 2018-02-14 08:00 | 2018-02-14 17:00 | 6d | G | 8h |
| 565 | 145 | **Tube Bundle Insert** | 1d? | 2018-02-14 08:00 | 2018-02-14 17:00 |  |  | 236h |
| 566 | 145.1 | Tube Bundle Insert In Shell | 16h | 2018-02-14 08:00 | 2018-02-15 17:00 | 5d | F [300%]; H [800%] | 176h |
| 567 | 145.2 | Fl Head Tube Sht Fixing | 4h | 2018-02-14 08:00 | 2018-02-14 12:00 | 6.5d | F [200%]; H [400%] | 24h |
| 568 | 145.3 | Test Flg & Gland Assy | 4h | 2018-02-14 08:00 | 2018-02-14 12:00 | 6.5d | F [300%]; H [600%] | 36h |
| 569 | 146 | **Tube Expansion In Grooves** | 1d? | 2018-02-14 08:00 | 2018-02-14 17:00 |  |  | 8h |
| 570 | 146.1 | Tube Exp - St Side 1 Stage | 0.5h | 2018-02-14 08:00 | 2018-02-14 08:30 | 6.94d | F; H [200%] | 1.5h |
| 571 | 146.2 | Tube Exp - Fl Side 1 Stage | 0.5h | 2018-02-14 08:00 | 2018-02-14 08:30 | 6.94d | F; H [200%] | 1.5h |
| 572 | 146.3 | Tube Trimming Fl Side | 1.5h | 2018-02-14 08:00 | 2018-02-14 09:30 | 6.81d | F; H | 3h |
| 573 | 146.4 | Tube Exp Both Side 4 Stage | 0.5h | 2018-02-14 08:00 | 2018-02-14 08:30 | 6.94d | F [200%]; H [200%] | 2h |

| ID | WBS | Task | Duration | Start | Finish | Total slack | Resources | Work |
| --- | --- | --- | --- | --- | --- | --- | --- | --- |
| 574 | 147 | **Tube Exp- Pnuematic Test** | 1d? | 2018-02-14 08:00 | 2018-02-14 17:00 |  |  | 62h |
| 575 | 147.1 | Tube Exp Pnuematic Test | 12h | 2018-02-14 08:00 | 2018-02-15 12:00 | 5.5d | F [200%]; H [200%] | 48h |
| 576 | 147.2 | Pnuematic Test Tpi Witness | 3h | 2018-02-14 08:00 | 2018-02-14 11:00 | 6.62d | F; H | 6h |
| 577 | 147.3 | Cleaning | 2h | 2018-02-14 08:00 | 2018-02-14 10:00 | 6.75d | F; H [300%] | 8h |
| 578 | 148 | **Tube Tube Sheet Welding- Ft Side** | 1d? | 2018-02-14 08:00 | 2018-02-14 17:00 |  |  | 19h |
| 579 | 148.1 | Tube Welding - St Side Root | 2.5h | 2018-02-14 08:00 | 2018-02-14 10:30 | 6.69d | TW; H | 5h |
| 580 | 148.2 | Tube Welding - St Side Root Dp | 2.5h | 2018-02-14 08:00 | 2018-02-14 10:30 | 6.69d | F; H | 5h |
| 581 | 148.3 | Tube Welding - St Side Final Weld | 2.5h | 2018-02-14 08:00 | 2018-02-14 10:30 | 6.69d | TW; H | 5h |
| 582 | 148.4 | Tube Welding - St Side Final Dp | 2h | 2018-02-14 08:00 | 2018-02-14 10:00 | 6.75d | F; H | 4h |
| 583 | 149 | **Tube To Tube Sheet Welding - Fl Head Side** | 1d? | 2018-02-14 08:00 | 2018-02-14 17:00 |  |  | 19h |
| 584 | 149.1 | Tube Welding - Flh Side Root | 2.5h | 2018-02-14 08:00 | 2018-02-14 10:30 | 6.69d | TW; H | 5h |
| 585 | 149.2 | Tube Welding - Flh Side Root Dp | 2.5h | 2018-02-14 08:00 | 2018-02-14 10:30 | 6.69d | F; H | 5h |
| 586 | 149.3 | Tube Welding - Flh Side Final Weld | 2.5h | 2018-02-14 08:00 | 2018-02-14 10:30 | 6.69d | TW; H | 5h |
| 587 | 149.4 | Tube Welding - Flh Side Final Dp | 2h | 2018-02-14 08:00 | 2018-02-14 10:00 | 6.75d | F; H | 4h |
| 588 | 150 | **Shell Side Hydro** | 1d? | 2018-02-14 08:00 | 2018-02-14 17:00 |  |  | 88h |
| 589 | 150.1 | Shell Side Hydro | 12h | 2018-02-14 08:00 | 2018-02-15 12:00 | 5.5d | F [200%]; H [200%] | 48h |
| 590 | 150.2 | Shell Side Tpi Witness | 5h | 2018-02-14 08:00 | 2018-02-14 14:00 | 6.38d | F [200%] | 10h |
| 591 | 150.3 | De Watering & Dismantle Of Gland | 5h | 2018-02-14 08:00 | 2018-02-14 14:00 | 6.38d | F [200%]; H [400%] | 30h |
| 592 | 151 | **Channel Side Hydro** | 1d? | 2018-02-14 08:00 | 2018-02-14 17:00 |  |  | 88h |
| 593 | 151.1 | Shell Side Hydro | 12h | 2018-02-14 08:00 | 2018-02-15 12:00 | 5.5d | F [200%]; H [200%] | 48h |
| 594 | 151.2 | Shell Side Tpi Witness | 5h | 2018-02-14 08:00 | 2018-02-14 14:00 | 6.38d | F [200%] | 10h |
| 595 | 151.3 | De Watering & Dismantle Of Gland | 5h | 2018-02-14 08:00 | 2018-02-14 14:00 | 6.38d | F [200%]; H [400%] | 30h |
| 596 | 152 | **Barrel Side Hydro** | 1d? | 2018-02-14 08:00 | 2018-02-14 17:00 |  |  | 104h |
| 597 | 152.1 | Shell Side Hydro | 16h | 2018-02-14 08:00 | 2018-02-15 17:00 | 5d | F [200%]; H [200%] | 64h |
| 598 | 152.2 | Shell Side Tpi Witness | 5h | 2018-02-14 08:00 | 2018-02-14 14:00 | 6.38d | F [200%] | 10h |
| 599 | 152.3 | De Watering & Dismantle Of Gland | 5h | 2018-02-14 08:00 | 2018-02-14 14:00 | 6.38d | F [200%]; H [400%] | 30h |

| ID | WBS | Task | Duration | Start | Finish | Total slack | Resources | Work |
| --- | --- | --- | --- | --- | --- | --- | --- | --- |
| 600 | 153 | **Nitrogen Purging** | 1d? | 2018-02-14 08:00 | 2018-02-14 17:00 |  |  |  |
| 601 | 153.1 | Blind & Nitrogen Purging | 1d? | 2018-02-14 08:00 | 2018-02-14 17:00 | 6d |  |  |
| 602 | 154 | **Painting** | 1d? | 2018-02-14 08:00 | 2018-02-14 17:00 |  | F; H [200%] | 96h |
| 603 | 154.1 | Primer | 1d? | 2018-02-14 08:00 | 2018-02-14 17:00 | 6d | P [300%] | 24h |
| 604 | 154.2 | Top Coat 1 | 1d? | 2018-02-14 08:00 | 2018-02-14 17:00 | 6d | P [300%] | 24h |
| 605 | 154.3 | Top Coat 2 | 1d? | 2018-02-14 08:00 | 2018-02-14 17:00 | 6d | P [300%] | 24h |
