# 4161B-PostMortem-Estimation

Schedule from MS Project, 2018-02-14 to 2018-03-05.

## Calendars

- Standard: Mon-Fri 08:00-12:00, 13:00-17:00; Sat-Sun off.

## Resources

| Resource |
| --- |
| T |
| F |
| H |
| C |
| SC |
| G |
| W |
| L |
| RT |
| INS |
| TW |
| P |

## Schedule

| ID | WBS | Task | Duration | Start | Finish | Total slack | Resources | Work | Text1 |
| --- | --- | --- | --- | --- | --- | --- | --- | --- | --- |
| 1 | 1 | **Dish Forming** | 14d? | 2018-02-14 08:00 | 2018-03-05 17:00 | 0d |  | 180.5h | No |
| 2 | 1.1 | Bar Dish Blank Issuence | 8h | 2018-02-14 08:00 | 2018-02-14 17:00 | 13d | T | 8h | Yes |
| 3 | 1.2 | Bar-Dish Blank Marking 20TXOD 1150 | 0.5h | 2018-02-14 08:00 | 2018-02-14 08:30 | 13.94d | F; H | 1h | Yes |
| 4 | 1.3 | Bar-Dish Blank Marking Inspection | 0.5h | 2018-02-14 08:00 | 2018-02-14 08:30 | 13.94d | F; H | 1h | Yes |
| 5 | 1.4 | Bar-Dish Blank Cutting | 1.25h | 2018-02-14 08:00 | 2018-02-14 09:15 | 13.84d | C; H | 2.5h | Yes |
| 6 | 1.5 | Bar-Dish Forming | 14d | 2018-02-14 08:00 | 2018-03-05 17:00 | 0d | SC | 112h | Yes |
| 7 | 1.6 | Profile Insp | 4h | 2018-02-14 08:00 | 2018-02-14 12:00 | 13.5d | F; H | 8h | Yes |
| 8 | 1.7 | Heat Treatment Preparation | 1d? | 2018-02-14 08:00 | 2018-02-14 17:00 | 13d | SC | 8h | NA |
| 9 | 1.8 | Stress Releiving- Sub Cont | 1d? | 2018-02-14 08:00 | 2018-02-14 17:00 | 13d | SC | 8h | NA |
| 10 | 1.9 | Removal Of Spiders | 3h | 2018-02-14 08:00 | 2018-02-14 11:00 | 13.62d | F; H | 6h | Yes |
| 11 | 1.10 | Surface Preparation | 7h | 2018-02-14 08:00 | 2018-02-14 16:00 | 13.12d | G | 7h | Yes |
| 12 | 1.11 | Inspection | 4h | 2018-02-14 08:00 | 2018-02-14 12:00 | 13.5d | F | 4h | Yes |
| 13 | 1.12 | TPI Inspection | 4h | 2018-02-14 08:00 | 2018-02-14 12:00 | 13.5d | F | 4h | Yes |
| 14 | 1.13 | Sf Marking | 2h | 2018-02-14 08:00 | 2018-02-14 10:00 | 13.75d | F; H | 4h | Yes |
| 15 | 1.14 | Sf Cutting | 2h | 2018-02-14 08:00 | 2018-02-14 10:00 | 13.75d | C; H | 4h | Yes |
| 16 | 1.15 | Sf Gridning & Ep | 3h | 2018-02-14 08:00 | 2018-02-14 11:00 | 13.62d | G | 3h | Yes |
| 17 | 2 | Tube Sheet | 1d? | 2018-02-14 08:00 | 2018-02-14 17:00 | 13d |  |  | No |
| 18 | 3 | **Tube Sheet Machining 1 off 2** | 1d | 2018-02-14 08:00 | 2018-02-14 17:00 | 13d |  | 8h | No |
| 19 | 3.1 | Inward Inspection | 2h | 2018-02-14 08:00 | 2018-02-14 10:00 | 13.75d |  |  | Yes |
| 20 | 3.2 | Tube Sheet M/C 1/2 | 8h | 2018-02-14 08:00 | 2018-02-14 17:00 | 13d | SC | 8h | Yes |
| 21 | 4 | **Tube Sheet Drilling 1 off 2** | 1d? | 2018-02-14 08:00 | 2018-02-14 17:00 | 13d |  | 38h | No |
| 22 | 4.1 | Tube Sheet Drilling 1/2 | 1d? | 2018-02-14 08:00 | 2018-02-14 17:00 | 13d | SC | 8h | No |
| 23 | 4.2 | Exp Groove+Welding Groove 1/2 | 1d? | 2018-02-14 08:00 | 2018-02-14 17:00 | 13d | SC | 8h | No |
| 24 | 4.3 | Tie Rod, Pulling, Lifting Hole 1/2 | 1d? | 2018-02-14 08:00 | 2018-02-14 17:00 | 13d | SC | 8h | No |
| 25 | 4.4 | Pass Partition Groove M/C 1/2 | 1d? | 2018-02-14 08:00 | 2018-02-14 17:00 | 13d | SC | 8h | No |
| 26 | 4.5 | Cleaning ,Go/No Go Check 1/2 | 2h | 2018-02-14 08:00 | 2018-02-14 10:00 | 13.75d | F; H | 4h | Yes |
| 27 | 4.6 | Final Inspection 1/2 | 1h | 2018-02-14 08:00 | 2018-02-14 09:00 | 13.88d | F; H | 2h | Yes |

| ID | WBS | Task | Duration | Start | Finish | Total slack | Resources | Work | Text1 |
| --- | --- | --- | --- | --- | --- | --- | --- | --- | --- |
| 28 | 5 | **Tube Sheet Machining 2 off 2** | 1d | 2018-02-14 08:00 | 2018-02-14 17:00 | 13d |  | 8h | No |
| 29 | 5.1 | Inward Inspection | 2h | 2018-02-14 08:00 | 2018-02-14 10:00 | 13.75d |  |  | Yes |
| 30 | 5.2 | Tube Sheet M/C 2/2 | 8h | 2018-02-14 08:00 | 2018-02-14 17:00 | 13d | SC | 8h | Yes |
| 31 | 6 | **Tube Sheet Drilling 2 off 2** | 3.5d? | 2018-02-14 08:00 | 2018-02-19 12:00 | 10.5d |  | 59.5h | No |
| 32 | 6.1 | Tube Sheet Drilling 2/2 | 3.5d | 2018-02-14 08:00 | 2018-02-19 12:00 | 10.5d | SC | 28h | Yes |
| 33 | 6.2 | Exp Groove+Welding Groove 2/2 | 1d? | 2018-02-14 08:00 | 2018-02-14 17:00 | 13d | SC | 8h | NA |
| 34 | 6.3 | Tie Rod, Pulling, Lifting Hole 2/2 | 1d? | 2018-02-14 08:00 | 2018-02-14 17:00 | 13d | SC | 8h | No |
| 35 | 6.4 | Pass Partition Groove M/C 2/2 | 9.5h | 2018-02-14 08:00 | 2018-02-15 09:30 | 12.81d | SC | 9.5h | Yes |
| 36 | 6.5 | Cleaning ,Go/No Go Check 2/2 | 2h | 2018-02-14 08:00 | 2018-02-14 10:00 | 13.75d | F; H | 4h | Yes |
| 37 | 6.6 | Final Inspection 2/2 | 1h | 2018-02-14 08:00 | 2018-02-14 09:00 | 13.88d | F; H | 2h | Yes |
| 38 | 7 | Nozzle Fab | 1d? | 2018-02-14 08:00 | 2018-02-14 17:00 | 13d |  |  | No |
| 39 | 8 | **Sh Noz Pipe Marking** | 0.25d | 2018-02-14 08:00 | 2018-02-14 10:00 | 13.75d |  | 9h | No |
| 40 | 8.1 | 3"NB- 4 Nos | 2h | 2018-02-14 08:00 | 2018-02-14 10:00 | 13.75d | F; H | 4h | Yes |
| 41 | 8.2 | 1.5" NB Mp Con - 4 Nos | 2h | 2018-02-14 08:00 | 2018-02-14 10:00 | 13.75d | F; H | 4h | Yes |
| 42 | 8.3 | Inspection of Marking | 0.5h | 2018-02-14 08:00 | 2018-02-14 08:30 | 13.94d | F; H | 1h | Yes |
| 43 | 9 | **Sh Noz Pipe Cutting** | 0.25d | 2018-02-14 08:00 | 2018-02-14 10:00 | 13.75d |  | 9h | No |
| 44 | 9.1 | 3"NB- 4 Nos | 2h | 2018-02-14 08:00 | 2018-02-14 10:00 | 13.75d | C; H | 4h | Yes |
| 45 | 9.2 | 1.5" NB Mp Con - 4 Nos | 2h | 2018-02-14 08:00 | 2018-02-14 10:00 | 13.75d | C; H | 4h | Yes |
| 46 | 9.3 | Inspection | 0.5h | 2018-02-14 08:00 | 2018-02-14 08:30 | 13.94d | C; H | 1h | Yes |
| 47 | 10 | **Sh Noz Pipe Ep** | 0.25d | 2018-02-14 08:00 | 2018-02-14 10:00 | 13.75d |  | 10h | No |
| 48 | 10.1 | 3"NB- 4 Nos | 2h | 2018-02-14 08:00 | 2018-02-14 10:00 | 13.75d | C; H | 4h | Yes |
| 49 | 10.2 | 1.5" NB Mp Con - 4 Nos | 2h | 2018-02-14 08:00 | 2018-02-14 10:00 | 13.75d | C; H | 4h | Yes |
| 50 | 10.3 | Inspection | 1h | 2018-02-14 08:00 | 2018-02-14 09:00 | 13.88d | C; H | 2h | Yes |
| 51 | 11 | **Sh Noz+Flg Fiitup** | 0.25d | 2018-02-14 08:00 | 2018-02-14 10:00 | 13.75d |  | 20h | No |
| 52 | 11.1 | 3"NB- 4 Nos | 2h | 2018-02-14 08:00 | 2018-02-14 10:00 | 13.75d | F [200%]; W; H | 8h | Yes |
| 53 | 11.2 | 1.5" NB Mp Con - 4 Nos | 2h | 2018-02-14 08:00 | 2018-02-14 10:00 | 13.75d | F [200%]; W; H | 8h | Yes |
| 54 | 11.3 | Inspection | 1h | 2018-02-14 08:00 | 2018-02-14 09:00 | 13.88d | F [200%]; W; H | 4h | Yes |

| ID | WBS | Task | Duration | Start | Finish | Total slack | Resources | Work | Text1 |
| --- | --- | --- | --- | --- | --- | --- | --- | --- | --- |
| 55 | 12 | **Sh Noz Pipe+Flg Welding** | 0.25d | 2018-02-14 08:00 | 2018-02-14 10:00 | 13.75d |  | 8h | No |
| 56 | 12.1 | 3"NB- 4 Nos | 2h | 2018-02-14 08:00 | 2018-02-14 10:00 | 13.75d | W; H | 4h | Yes |
| 57 | 12.2 | 1.5" NB Mp Con - 4 Nos | 1h | 2018-02-14 08:00 | 2018-02-14 09:00 | 13.88d | W; H | 2h | Yes |
| 58 | 12.3 | Inspection | 1h | 2018-02-14 08:00 | 2018-02-14 09:00 | 13.88d | W; H | 2h | Yes |
| 59 | 13 | **Sh Noz Pipe Profile Marking** | 0.5d | 2018-02-14 08:00 | 2018-02-14 12:00 | 13.5d |  | 14h | No |
| 60 | 13.1 | 3"NB- 4 Nos | 4h | 2018-02-14 08:00 | 2018-02-14 12:00 | 13.5d | F; H | 8h | Yes |
| 61 | 13.2 | 1.5" NB Mp Con - 4 Nos | 2h | 2018-02-14 08:00 | 2018-02-14 10:00 | 13.75d | F; H | 4h | Yes |
| 62 | 13.3 | Inspection | 1h | 2018-02-14 08:00 | 2018-02-14 09:00 | 13.88d | F; H | 2h | Yes |
| 63 | 14 | **Sh Nozzle Pipe Profile Cutting** | 0.5d | 2018-02-14 08:00 | 2018-02-14 12:00 | 13.5d |  | 14h | No |
| 64 | 14.1 | 3"NB- 4 Nos | 4h | 2018-02-14 08:00 | 2018-02-14 12:00 | 13.5d | G; H | 8h | Yes |
| 65 | 14.2 | 1.5" NB Mp Con - 4 Nos | 2h | 2018-02-14 08:00 | 2018-02-14 10:00 | 13.75d | G; H | 4h | Yes |
| 66 | 14.3 | Inspection | 1h | 2018-02-14 08:00 | 2018-02-14 09:00 | 13.88d | G; H | 2h | Yes |
| 67 | 15 | **Sh Nozzle Pipe Profile Ep** | 0.5d | 2018-02-14 08:00 | 2018-02-14 12:00 | 13.5d |  | 14h | No |
| 68 | 15.1 | 3"NB- 4 Nos | 4h | 2018-02-14 08:00 | 2018-02-14 12:00 | 13.5d | G; H | 8h | Yes |
| 69 | 15.2 | 1.5" NB Mp Con - 4 Nos | 2h | 2018-02-14 08:00 | 2018-02-14 10:00 | 13.75d | G; H | 4h | Yes |
| 70 | 15.3 | Inspection | 1h | 2018-02-14 08:00 | 2018-02-14 09:00 | 13.88d | G; H | 2h | Yes |
| 71 | 16 | **Ch Noz Pipe Marking** | 0.12d | 2018-02-14 08:00 | 2018-02-14 09:00 | 13.88d |  | 5h | No |
| 72 | 16.1 | 6"NB- 4 Nos | 1h | 2018-02-14 08:00 | 2018-02-14 09:00 | 13.88d | F; H | 2h | Yes |
| 73 | 16.2 | 1.5" NB Mp Con - 4 Nos | 0.5h | 2018-02-14 08:00 | 2018-02-14 08:30 | 13.94d | F; H | 1h | Yes |
| 74 | 16.3 | Inspection | 1h | 2018-02-14 08:00 | 2018-02-14 09:00 | 13.88d | F; H | 2h | Yes |
| 75 | 17 | **Ch Noz Pipe Cutting** | 0.25d | 2018-02-14 08:00 | 2018-02-14 10:00 | 13.75d |  | 10h | No |
| 76 | 17.1 | 6"Nb- 4Nos | 2h | 2018-02-14 08:00 | 2018-02-14 10:00 | 13.75d | C; H | 4h | Yes |
| 77 | 17.2 | 1.5" Mp Con - 4 Nos | 2h | 2018-02-14 08:00 | 2018-02-14 10:00 | 13.75d | C; H | 4h | Yes |
| 78 | 17.3 | Inspection | 1h | 2018-02-14 08:00 | 2018-02-14 09:00 | 13.88d | C; H | 2h | Yes |

| ID | WBS | Task | Duration | Start | Finish | Total slack | Resources | Work | Text1 |
| --- | --- | --- | --- | --- | --- | --- | --- | --- | --- |
| 79 | 18 | **Ch Noz Pipe Ep** | 0.5d | 2018-02-14 08:00 | 2018-02-14 12:00 | 13.5d |  | 14h | No |
| 80 | 18.1 | 6"Nb- 4 Nos | 4h | 2018-02-14 08:00 | 2018-02-14 12:00 | 13.5d | G; H | 8h | Yes |
| 81 | 18.2 | 1.5" Mp Con - 4Nos | 2h | 2018-02-14 08:00 | 2018-02-14 10:00 | 13.75d | G; H | 4h | Yes |
| 82 | 18.3 | Inspection | 1h | 2018-02-14 08:00 | 2018-02-14 09:00 | 13.88d | G; H | 2h | Yes |
| 83 | 19 | **Ch Noz+Flg Fit Up** | 0.5d | 2018-02-14 08:00 | 2018-02-14 12:00 | 13.5d |  | 24h | No |
| 84 | 19.1 | 6"Nb- 4Nos | 4h | 2018-02-14 08:00 | 2018-02-14 12:00 | 13.5d | F [200%]; W; H | 16h | Yes |
| 85 | 19.2 | 1.5" Mp Con - 4 Nos | 1h | 2018-02-14 08:00 | 2018-02-14 09:00 | 13.88d | F [200%]; W; H | 4h | Yes |
| 86 | 19.3 | Inspection | 1h | 2018-02-14 08:00 | 2018-02-14 09:00 | 13.88d | F [200%]; W; H | 4h | Yes |
| 87 | 20 | **Ch Noz Pipe+Flg Welding** | 1d? | 2018-02-14 08:00 | 2018-02-14 17:00 | 13d |  | 29h | No |
| 88 | 20.1 | 6"Nb- 4Nos | 5.5h | 2018-02-14 08:00 | 2018-02-14 14:30 | 13.31d | W; H | 11h | Yes |
| 89 | 20.2 | 1.5" Mp Con - 4 Nos | 1h | 2018-02-14 08:00 | 2018-02-14 09:00 | 13.88d | W; H | 2h | Yes |
| 90 | 20.3 | Inspection | 1d? | 2018-02-14 08:00 | 2018-02-14 17:00 | 13d | W; H | 16h | No |
| 91 | 21 | **Ch Noz Pipe Profile Marking** | 1d? | 2018-02-14 08:00 | 2018-02-14 17:00 | 13d |  | 48h | No |
| 92 | 21.1 | 6"Nb- 4Nos | 1d? | 2018-02-14 08:00 | 2018-02-14 17:00 | 13d | F; H | 16h | No |
| 93 | 21.2 | 1.5" Mp Con - 4 Nos | 1d? | 2018-02-14 08:00 | 2018-02-14 17:00 | 13d | F; H | 16h | No |
| 94 | 21.3 | Inspection | 1d? | 2018-02-14 08:00 | 2018-02-14 17:00 | 13d | F; H | 16h | No |
| 95 | 22 | **Ch Nozzle Pipe Profile Cutting** | 1d? | 2018-02-14 08:00 | 2018-02-14 17:00 | 13d |  | 48h | No |
| 96 | 22.1 | 6"Nb- 4Nos | 1d? | 2018-02-14 08:00 | 2018-02-14 17:00 | 13d | F; H | 16h | No |
| 97 | 22.2 | 1.5" Mp Con - 4 Nos | 1d? | 2018-02-14 08:00 | 2018-02-14 17:00 | 13d | F; H | 16h | No |
| 98 | 22.3 | Inspection | 1d? | 2018-02-14 08:00 | 2018-02-14 17:00 | 13d | F; H | 16h | No |
| 99 | 23 | **Ch Nozzle Pipe Profile Ep** | 1d? | 2018-02-14 08:00 | 2018-02-14 17:00 | 13d |  | 48h | No |
| 100 | 23.1 | 6"Nb- 4Nos | 1d? | 2018-02-14 08:00 | 2018-02-14 17:00 | 13d | G; H | 16h | No |
| 101 | 23.2 | 1.5" Mp Con - 4 Nos | 1d? | 2018-02-14 08:00 | 2018-02-14 17:00 | 13d | G; H | 16h | No |
| 102 | 23.3 | Inspection | 1d? | 2018-02-14 08:00 | 2018-02-14 17:00 | 13d | G; H | 16h | No |
| 103 | 24 | Saddle & Other | 1d? | 2018-02-14 08:00 | 2018-02-14 17:00 | 13d |  |  | No |

| ID | WBS | Task | Duration | Start | Finish | Total slack | Resources | Work | Text1 |
| --- | --- | --- | --- | --- | --- | --- | --- | --- | --- |
| 104 | 25 | **Top Saddle Fabrrication** | 0.25d | 2018-02-14 08:00 | 2018-02-14 10:00 | 13.75d |  | 3.2h | No |
| 105 | 25.1 | Plate Issuence | 2h | 2018-02-14 08:00 | 2018-02-14 10:00 | 13.75d |  |  | Yes |
| 106 | 25.2 | Base Marking | 0.6h | 2018-02-14 08:00 | 2018-02-14 08:36 | 13.93d | F; H | 1.2h | Yes |
| 107 | 25.3 | Web Pl Marking | 0.4h | 2018-02-14 08:00 | 2018-02-14 08:24 | 13.95d | F; H | 0.8h | Yes |
| 108 | 25.4 | Ribs Marking | 0.6h | 2018-02-14 08:00 | 2018-02-14 08:36 | 13.93d | F; H | 1.2h | Yes |
| 109 | 26 | **Top Sadldle Plate Cutting** | 0.25d | 2018-02-14 08:00 | 2018-02-14 10:00 | 13.75d |  | 9.44h | No |
| 110 | 26.1 | Base Cutting | 1.02h | 2018-02-14 08:00 | 2018-02-14 09:01 | 13.87d | C; H | 2.04h | Yes |
| 111 | 26.2 | Web Pl Cutting | 0.68h | 2018-02-14 08:00 | 2018-02-14 08:40 | 13.91d | C; H | 1.36h | Yes |
| 112 | 26.3 | Ribs Cutting | 1.02h | 2018-02-14 08:00 | 2018-02-14 09:01 | 13.87d | C; H | 2.04h | Yes |
| 113 | 26.4 | Grinding Of Above | 2h | 2018-02-14 08:00 | 2018-02-14 10:00 | 13.75d | G [200%] | 4h | Yes |
| 114 | 27 | **Saddle Fit Up & Welding** | 1.38d | 2018-02-14 08:00 | 2018-02-15 11:00 | 12.62d |  | 104h | No |
| 115 | 27.1 | Base + Web Fit Up | 5h | 2018-02-14 08:00 | 2018-02-14 14:00 | 13.38d | F; H [200%]; W | 20h | Yes |
| 116 | 27.2 | Base + Web Welding | 10h | 2018-02-14 08:00 | 2018-02-15 10:00 | 12.75d | W; H | 20h | Yes |
| 117 | 27.3 | Ribs+Web Fit Up | 5h | 2018-02-14 08:00 | 2018-02-14 14:00 | 13.38d | F; H [200%]; W | 20h | Yes |
| 118 | 27.4 | Ribs+Web Welding | 11h | 2018-02-14 08:00 | 2018-02-15 11:00 | 12.62d | W [200%]; H [200%] | 44h | Yes |
| 119 | 28 | **Davit Pipe Fabrication** | 1d | 2018-02-14 08:00 | 2018-02-14 17:00 | 13d |  | 82h | No |
| 120 | 28.1 | Pipe Transfere | 1h | 2018-02-14 08:00 | 2018-02-14 09:00 | 13.88d | H [400%] | 4h | Yes |
| 121 | 28.2 | Pipe Marking 8 Nos | 4h | 2018-02-14 08:00 | 2018-02-14 12:00 | 13.5d | F; H | 8h | Yes |
| 122 | 28.3 | Support Pl Marking | 0.25h | 2018-02-14 08:00 | 2018-02-14 08:15 | 13.97d | F; H | 0.5h | Yes |
| 123 | 28.4 | Gusset Pl Marking | 0.25h | 2018-02-14 08:00 | 2018-02-14 08:15 | 13.97d | F; H | 0.5h | Yes |
| 124 | 28.5 | Base Hub Marking | 3h | 2018-02-14 08:00 | 2018-02-14 11:00 | 13.62d | F; H | 6h | Yes |
| 125 | 28.6 | Pipe Cutting 6 Nos | 4h | 2018-02-14 08:00 | 2018-02-14 12:00 | 13.5d | C; H | 8h | Yes |
| 126 | 28.7 | Support Pl Cutting | 0.5h | 2018-02-14 08:00 | 2018-02-14 08:30 | 13.94d | C; H | 1h | Yes |
| 127 | 28.8 | Pipe Grinding 6 Nos | 4h | 2018-02-14 08:00 | 2018-02-14 12:00 | 13.5d | F; H | 8h | Yes |
| 128 | 28.9 | Support Pl Grinding 10 Nos | 1h | 2018-02-14 08:00 | 2018-02-14 09:00 | 13.88d | G | 1h | Yes |
| 129 | 28.10 | Pivot Pl Grinding | 1h | 2018-02-14 08:00 | 2018-02-14 09:00 | 13.88d | G | 1h | Yes |
| 130 | 28.11 | Pipe Fit Up | 4h | 2018-02-14 08:00 | 2018-02-14 12:00 | 13.5d | F; H; W | 12h | Yes |
| 131 | 28.12 | Pipe Welding 6Nos | 8h | 2018-02-14 08:00 | 2018-02-14 17:00 | 13d | W; H | 16h | Yes |
| 132 | 28.13 | Pivot Pl Welding | 4h | 2018-02-14 08:00 | 2018-02-14 12:00 | 13.5d | W; H | 8h | Yes |
| 133 | 28.14 | Support Pl Welding 4 Nos | 4h | 2018-02-14 08:00 | 2018-02-14 12:00 | 13.5d | F; H | 8h | Yes |

| ID | WBS | Task | Duration | Start | Finish | Total slack | Resources | Work | Text1 |
| --- | --- | --- | --- | --- | --- | --- | --- | --- | --- |
| 134 | 29 | **Lifting Lug Pad** | 0.31d | 2018-02-14 08:00 | 2018-02-14 10:30 | 13.69d |  | 10h | No |
| 135 | 29.1 | Plate Issuence | 1h | 2018-02-14 08:00 | 2018-02-14 09:00 | 13.88d |  |  | Yes |
| 136 | 29.2 | Lifting Lug Pad Marking | 1h | 2018-02-14 08:00 | 2018-02-14 09:00 | 13.88d | F; H | 2h | Yes |
| 137 | 29.3 | Lifting Lug Pad Cutting | 1.5h | 2018-02-14 08:00 | 2018-02-14 09:30 | 13.81d | C; H | 3h | Yes |
| 138 | 29.4 | Lifting Lugs Pad Grinding | 2.5h | 2018-02-14 08:00 | 2018-02-14 10:30 | 13.69d | G; H | 5h | Yes |
| 139 | 30 | **Lifting Lug Preparation** | 0.31d | 2018-02-14 08:00 | 2018-02-14 10:30 | 13.69d |  | 14.34h | No |
| 140 | 30.1 | Lifting Lugs Marking | 1h | 2018-02-14 08:00 | 2018-02-14 09:00 | 13.88d | F; H | 2h | Yes |
| 141 | 30.2 | Lifting Lugs Cutting | 1.67h | 2018-02-14 08:00 | 2018-02-14 09:40 | 13.79d | C; H | 3.34h | Yes |
| 142 | 30.3 | Lifting Lugs Grinding | 2.5h | 2018-02-14 08:00 | 2018-02-14 10:30 | 13.69d | G; H | 5h | Yes |
| 143 | 30.4 | Lifting Lug Drilling | 2h | 2018-02-14 08:00 | 2018-02-14 10:00 | 13.75d | F; H | 4h | Yes |
| 144 | 31 | **Channel Cover Handle Prepataion** | 0.5d | 2018-02-14 08:00 | 2018-02-14 12:00 | 13.5d |  | 12h | No |
| 145 | 31.1 | Ch Cover Ring Forming | 4h | 2018-02-14 08:00 | 2018-02-14 12:00 | 13.5d | F; H | 8h | Yes |
| 146 | 31.2 | Sliding Sling Forming | 2h | 2018-02-14 08:00 | 2018-02-14 10:00 | 13.75d | F; H | 4h | Yes |
| 147 | 32 | **Insulation Ring Prparation** | 0.5d | 2018-02-14 08:00 | 2018-02-14 12:00 | 13.5d |  | 11.06h | No |
| 148 | 32.1 | Insulaion Ring Marking | 0.2h | 2018-02-14 08:00 | 2018-02-14 08:12 | 13.97d | F; H | 0.4h | Yes |
| 149 | 32.2 | Insulaion Ring Cutting | 0.33h | 2018-02-14 08:00 | 2018-02-14 08:19 | 13.96d | C; H | 0.66h | Yes |
| 150 | 32.3 | Insulaion Ring Hole Marking | 1h | 2018-02-14 08:00 | 2018-02-14 09:00 | 13.88d | F; H | 2h | Yes |
| 151 | 32.4 | Insulaion Ring Hole Drilling | 4h | 2018-02-14 08:00 | 2018-02-14 12:00 | 13.5d | F; H | 8h | Yes |
| 152 | 33 | Baffle & Tb Items Fab | 1d? | 2018-02-14 08:00 | 2018-02-14 17:00 | 13d |  |  | No |
| 153 | 34 | **Baffle Preparation** | 1.09d | 2018-02-14 08:00 | 2018-02-15 08:45 | 12.91d |  | 32h | No |
| 154 | 34.1 | Baffle Plate Transfer | 6h | 2018-02-14 08:00 | 2018-02-14 15:00 | 13.25d |  |  | Yes |
| 155 | 34.2 | Baffle Marking | 8.75h | 2018-02-14 08:00 | 2018-02-15 08:45 | 12.91d | F; H | 17.5h | Yes |
| 156 | 34.3 | Baffle Profile Cutting | 7.25h | 2018-02-14 08:00 | 2018-02-14 16:15 | 13.09d | C; H | 14.5h | Yes |
| 157 | 35 | **Baffle Bend Removal & Stacking** | 2.75d | 2018-02-14 08:00 | 2018-02-16 15:00 | 11.25d |  | 82h | No |
| 158 | 35.1 | Baffle Pl Bend Removal | 22h | 2018-02-14 08:00 | 2018-02-16 15:00 | 11.25d | F; H [200%] | 66h | Yes |
| 159 | 35.2 | Baffle Pl Stacking Per 100mm | 8h | 2018-02-14 08:00 | 2018-02-14 17:00 | 13d | F; H | 16h | Yes |

| ID | WBS | Task | Duration | Start | Finish | Total slack | Resources | Work | Text1 |
| --- | --- | --- | --- | --- | --- | --- | --- | --- | --- |
| 160 | 36 | **Baffle Drilling** | 3.88d | 2018-02-14 08:00 | 2018-02-19 16:00 | 10.12d |  | 31h | No |
| 161 | 36.1 | Baffle Drilling | 31h | 2018-02-14 08:00 | 2018-02-19 16:00 | 10.12d | SC | 31h | Yes |
| 162 | 37 | **Baffle De Stacking & Chamfering** | 1d | 2018-02-14 08:00 | 2018-02-14 17:00 | 13d |  | 16.41h | No |
| 163 | 37.1 | Baffle De Stacking | 8h | 2018-02-14 08:00 | 2018-02-14 17:00 | 13d | F; H | 16h | Yes |
| 164 | 37.2 | Baffle Chamfering (70% of TS Holes*No of Baffles) | 0.41h | 2018-02-14 08:00 | 2018-02-14 08:24 | 13.95d | F | 0.41h | Yes |
| 165 | 38 | **Baffle Stacking & Thro Hole Check** | 4.95d | 2018-02-14 08:00 | 2018-02-20 16:36 | 9.05d |  | 119.1h | No |
| 166 | 38.1 | Stacking | 0.5h | 2018-02-14 08:00 | 2018-02-14 08:30 | 13.94d | F; H | 1h | Yes |
| 167 | 38.2 | Baffle Hole Alingment | 26.25h | 2018-02-14 08:00 | 2018-02-19 10:15 | 10.72d | F; H | 52.5h | Yes |
| 168 | 38.3 | Baffle Hole Re Drill (Use 40% of Holes in Qty) | 14h | 2018-02-14 08:00 | 2018-02-15 15:00 | 12.25d | SC | 14h | Yes |
| 169 | 38.4 | Baffle Od Machining (100mm L * 700Ø = 3hrs) | 39.6h | 2018-02-14 08:00 | 2018-02-20 16:36 | 9.05d | SC | 39.6h | Yes |
| 170 | 38.5 | Baffle Cleaning (100mm L * 700Ø = 3hrs) | 4h | 2018-02-14 08:00 | 2018-02-14 12:00 | 13.5d | H [300%] | 12h | Yes |
| 171 | 39 | **Support Plate Marking** | 0.25d | 2018-02-14 08:00 | 2018-02-14 10:00 | 13.75d |  | 0.53h | No |
| 172 | 39.1 | Support Plate Transfer | 2h | 2018-02-14 08:00 | 2018-02-14 10:00 | 13.75d |  |  | Yes |
| 173 | 39.2 | Support Marking | 0.2h | 2018-02-14 08:00 | 2018-02-14 08:12 | 13.97d | SC | 0.2h | Yes |
| 174 | 39.3 | Support Profile Cutting | 0.33h | 2018-02-14 08:00 | 2018-02-14 08:19 | 13.96d | SC | 0.33h | Yes |
| 175 | 40 | **Support Plate Bend Removal** | 0.25d | 2018-02-14 08:00 | 2018-02-14 10:00 | 13.75d |  | 9h | No |
| 176 | 40.1 | Support Pl Bend Removal | 2h | 2018-02-14 08:00 | 2018-02-14 10:00 | 13.75d | F; H [300%] | 8h | Yes |
| 177 | 40.2 | Support Pl Stacking | 0.5h | 2018-02-14 08:00 | 2018-02-14 08:30 | 13.94d | F; H | 1h | Yes |
| 178 | 41 | **Support Plate Drlinng** | 1.25d | 2018-02-14 08:00 | 2018-02-15 10:00 | 12.75d |  | 10h | No |
| 179 | 41.1 | Support Drilling | 10h | 2018-02-14 08:00 | 2018-02-15 10:00 | 12.75d | SC | 10h | Yes |
| 180 | 42 | **Sup Plate De Stacking & Chamfering** | 0.03d | 2018-02-14 08:00 | 2018-02-14 08:15 | 13.97d |  | 0.75h | No |
| 181 | 42.1 | Support De Stacking | 0.25h | 2018-02-14 08:00 | 2018-02-14 08:15 | 13.97d | F; H | 0.5h | Yes |
| 182 | 42.2 | Support Hole Chamfering | 0.25h | 2018-02-14 08:00 | 2018-02-14 08:15 | 13.97d | F | 0.25h | Yes |
| 183 | 43 | **Tie Rod Preparation** | 1d? | 2018-02-14 08:00 | 2018-02-14 17:00 | 13d |  | 33h | No |
| 184 | 43.1 | Tie Rod Matl Transfere | 0.5h | 2018-02-14 08:00 | 2018-02-14 08:30 | 13.94d |  |  | Yes |
| 185 | 43.2 | Rod Cutting | 0.5h | 2018-02-14 08:00 | 2018-02-14 08:30 | 13.94d | F; H | 1h | Yes |
| 186 | 43.3 | Thread Machining. | 1d? | 2018-02-14 08:00 | 2018-02-14 17:00 | 13d | L | 8h | No |
| 187 | 43.4 | Joining | 1d? | 2018-02-14 08:00 | 2018-02-14 17:00 | 13d | W; F; H | 24h | No |

| ID | WBS | Task | Duration | Start | Finish | Total slack | Resources | Work | Text1 |
| --- | --- | --- | --- | --- | --- | --- | --- | --- | --- |
| 188 | 44 | **Spacer Tube Preparation** | 1d? | 2018-02-14 08:00 | 2018-02-14 17:00 | 13d |  | 13h | No |
| 189 | 44.1 | Spacer Tube Transfere | 1h | 2018-02-14 08:00 | 2018-02-14 09:00 | 13.88d |  |  | Yes |
| 190 | 44.2 | Length Cutting 75 NOS | 1h | 2018-02-14 08:00 | 2018-02-14 09:00 | 13.88d | F; H | 2h | Yes |
| 191 | 44.3 | Length Machining | 1d? | 2018-02-14 08:00 | 2018-02-14 17:00 | 13d | L | 8h | No |
| 192 | 44.4 | Cleaninng | 1h | 2018-02-14 08:00 | 2018-02-14 09:00 | 13.88d | H [300%] | 3h | Yes |
| 193 | 45 | **Sealing Strip Preparation** | 0.25d | 2018-02-14 08:00 | 2018-02-14 10:00 | 13.75d |  | 18h | No |
| 194 | 45.1 | Sealing Strip Marking | 0.75h | 2018-02-14 08:00 | 2018-02-14 08:45 | 13.91d | F; H | 1.5h | Yes |
| 195 | 45.2 | Sealing Strip Cutting | 1.25h | 2018-02-14 08:00 | 2018-02-14 09:15 | 13.84d | C; H | 2.5h | Yes |
| 196 | 45.3 | Sealing Strip Bend Removal | 2h | 2018-02-14 08:00 | 2018-02-14 10:00 | 13.75d | F; H [200%] | 6h | Yes |
| 197 | 45.4 | Sealing Strip Grinding | 1h | 2018-02-14 08:00 | 2018-02-14 09:00 | 13.88d | G | 1h | Yes |
| 198 | 45.5 | Sealing Strip Joining | 2h | 2018-02-14 08:00 | 2018-02-14 10:00 | 13.75d | W; F; H | 6h | Yes |
| 199 | 45.6 | Sealing Strip Dress Up | 1h | 2018-02-14 08:00 | 2018-02-14 09:00 | 13.88d | G | 1h | Yes |
| 200 | 46 | **Sliding Strip Preparation** | 1d? | 2018-02-14 08:00 | 2018-02-14 17:00 | 13d |  | 96h | No |
| 201 | 46.1 | Sliding Strip Marking | 1d? | 2018-02-14 08:00 | 2018-02-14 17:00 | 13d | F; H | 16h | No |
| 202 | 46.2 | Sliding Strip Cutting | 1d? | 2018-02-14 08:00 | 2018-02-14 17:00 | 13d | C; H | 16h | No |
| 203 | 46.3 | Sliding Strip Bend Removal | 1d? | 2018-02-14 08:00 | 2018-02-14 17:00 | 13d | F; H [200%] | 24h | No |
| 204 | 46.4 | Sliding Strip Grinding | 1d? | 2018-02-14 08:00 | 2018-02-14 17:00 | 13d | G | 8h | No |
| 205 | 46.5 | Sliding Strip Joining | 1d? | 2018-02-14 08:00 | 2018-02-14 17:00 | 13d | W; F; H | 24h | No |
| 206 | 46.6 | Sliding Strip Dress Up | 1d? | 2018-02-14 08:00 | 2018-02-14 17:00 | 13d | G | 8h | No |
| 207 | 47 | **Seal Rod Preparation** | 1d? | 2018-02-14 08:00 | 2018-02-14 17:00 | 13d |  | 64h | No |
| 208 | 47.1 | Seal Rod Issuenece | 1d? | 2018-02-14 08:00 | 2018-02-14 17:00 | 13d | T | 8h | No |
| 209 | 47.2 | Seal Rod Marking | 1d? | 2018-02-14 08:00 | 2018-02-14 17:00 | 13d | F; H | 16h | No |
| 210 | 47.3 | Seal Rod Cutting | 1d? | 2018-02-14 08:00 | 2018-02-14 17:00 | 13d | F; H | 16h | No |
| 211 | 47.4 | Seal Rod Bend Removal | 1d? | 2018-02-14 08:00 | 2018-02-14 17:00 | 13d | F; H [200%] | 24h | No |
| 212 | 48 | Shell Fabrication | 1d? | 2018-02-14 08:00 | 2018-02-14 17:00 | 13d |  |  | No |

| ID | WBS | Task | Duration | Start | Finish | Total slack | Resources | Work | Text1 |
| --- | --- | --- | --- | --- | --- | --- | --- | --- | --- |
| 213 | 49 | **Shell Marking & Cutting** | 1d? | 2018-02-14 08:00 | 2018-02-14 17:00 | 13d |  | 32h | No |
| 214 | 49.1 | Sh Plate Trnasfer | 1d? | 2018-02-14 08:00 | 2018-02-14 17:00 | 13d | T | 8h | No |
| 215 | 49.2 | Sh-Marking | 1d? | 2018-02-14 08:00 | 2018-02-14 17:00 | 13d | F; H [200%] | 24h | No |
| 216 | 50 | **Shell Plate Cutting** | 1d? | 2018-02-14 08:00 | 2018-02-14 17:00 | 13d |  | 24h | No |
| 217 | 50.1 | Sh-Cutting | 1d? | 2018-02-14 08:00 | 2018-02-14 17:00 | 13d | C; H [200%] | 24h | No |
| 218 | 51 | **Sh Pl Side Grinding** | 1d? | 2018-02-14 08:00 | 2018-02-14 17:00 | 13d |  | 128h | No |
| 219 | 51.1 | Sh Pl Side Bevel Cutting | 1d? | 2018-02-14 08:00 | 2018-02-14 17:00 | 13d | F; H [300%] | 32h | No |
| 220 | 51.2 | Sh Pl Side Bevel Cutting | 1d? | 2018-02-14 08:00 | 2018-02-14 17:00 | 13d | F; H [300%] | 32h | No |
| 221 | 51.3 | Sh Pl Side Bevel Cutting | 1d? | 2018-02-14 08:00 | 2018-02-14 17:00 | 13d | F; H [300%] | 32h | No |
| 222 | 51.4 | Sh Pl Side Bevel Cutting | 1d? | 2018-02-14 08:00 | 2018-02-14 17:00 | 13d | F; H [300%] | 32h | No |
| 223 | 52 | **Shell Plate Edge Preparation** | 1d? | 2018-02-14 08:00 | 2018-02-14 17:00 | 13d |  | 48h | No |
| 224 | 52.1 | Sh-Bevel Grinding | 1d? | 2018-02-14 08:00 | 2018-02-14 17:00 | 13d | G; H | 16h | No |
| 225 | 52.2 | Sh-Bevel Grinding | 1d? | 2018-02-14 08:00 | 2018-02-14 17:00 | 13d | G; H | 16h | No |
| 226 | 52.3 | Sh-Bevel Grinding | 1d? | 2018-02-14 08:00 | 2018-02-14 17:00 | 13d | G; H | 16h | No |
| 227 | 53 | **Shell Pre Bending** | 1d? | 2018-02-14 08:00 | 2018-02-14 17:00 | 13d |  | 72h | No |
| 228 | 53.1 | Sh-Pre Bend | 1d? | 2018-02-14 08:00 | 2018-02-14 17:00 | 13d | F [200%]; H | 24h | No |
| 229 | 53.2 | Sh-Pre Bend | 1d? | 2018-02-14 08:00 | 2018-02-14 17:00 | 13d | F [200%]; H | 24h | No |
| 230 | 53.3 | Sh-Pre Bend | 1d? | 2018-02-14 08:00 | 2018-02-14 17:00 | 13d | F [200%]; H | 24h | No |
| 231 | 54 | **Shell Pl Pre Bend Cut Off** | 1d? | 2018-02-14 08:00 | 2018-02-14 17:00 | 13d |  | 96h | No |
| 232 | 54.1 | Sh-Pre Bend Cut Off | 1d? | 2018-02-14 08:00 | 2018-02-14 17:00 | 13d | F [200%]; H; C | 32h | No |
| 233 | 54.2 | Sh-Pre Bend Cut Off | 1d? | 2018-02-14 08:00 | 2018-02-14 17:00 | 13d | F [200%]; H; C | 32h | No |
| 234 | 54.3 | Sh-Pre Bend Cut Off | 1d? | 2018-02-14 08:00 | 2018-02-14 17:00 | 13d | F [200%]; H; C | 32h | No |
| 235 | 55 | **Shell Plate Ls Ep** | 1d? | 2018-02-14 08:00 | 2018-02-14 17:00 | 13d |  | 64h | No |
| 236 | 55.1 | Sh-Pre Bend Ls Ep | 1d? | 2018-02-14 08:00 | 2018-02-14 17:00 | 13d | F; H | 16h | No |
| 237 | 55.2 | Sh-Pre Bend Ls Ep | 1d? | 2018-02-14 08:00 | 2018-02-14 17:00 | 13d | F; H | 16h | No |
| 238 | 55.3 | Sh-Pre Bend Ls Ep | 1d? | 2018-02-14 08:00 | 2018-02-14 17:00 | 13d | F; H | 16h | No |
| 239 | 55.4 | Sh-Pre Bend Ls Ep | 1d? | 2018-02-14 08:00 | 2018-02-14 17:00 | 13d | F; H | 16h | No |

| ID | WBS | Task | Duration | Start | Finish | Total slack | Resources | Work | Text1 |
| --- | --- | --- | --- | --- | --- | --- | --- | --- | --- |
| 240 | 56 | **Shell Rolling** | 1d? | 2018-02-14 08:00 | 2018-02-14 17:00 | 13d |  | 72h | No |
| 241 | 56.1 | Sh-Rolling 1/4 | 1d? | 2018-02-14 08:00 | 2018-02-14 17:00 | 13d | F [200%]; H | 24h | No |
| 242 | 56.2 | Sh-Rolling | 1d? | 2018-02-14 08:00 | 2018-02-14 17:00 | 13d | F [200%]; H | 24h | No |
| 243 | 56.3 | Sh-Rolling | 1d? | 2018-02-14 08:00 | 2018-02-14 17:00 | 13d | F [200%]; H | 24h | No |
| 244 | 57 | **Shell Cir Length & Ep Correction** | 1d? | 2018-02-14 08:00 | 2018-02-14 17:00 | 13d |  | 72h | No |
| 245 | 57.1 | Sh-Ls Correction | 1d? | 2018-02-14 08:00 | 2018-02-14 17:00 | 13d | F; H [200%] | 24h | No |
| 246 | 57.2 | Sh-Ls Correction | 1d? | 2018-02-14 08:00 | 2018-02-14 17:00 | 13d | F; H [200%] | 24h | No |
| 247 | 57.3 | Sh-Ls Correction | 1d? | 2018-02-14 08:00 | 2018-02-14 17:00 | 13d | F; H [200%] | 24h | No |
| 248 | 58 | **Shell Ls Seams Fit Up** | 1d? | 2018-02-14 08:00 | 2018-02-14 17:00 | 13d |  | 64h | No |
| 249 | 58.1 | Sh-Ls Fit Up | 1d? | 2018-02-14 08:00 | 2018-02-14 17:00 | 13d |  |  | No |
| 250 | 58.2 | Sh-Ls Fit Up | 1d? | 2018-02-14 08:00 | 2018-02-14 17:00 | 13d | F [200%]; H; W | 32h | No |
| 251 | 58.3 | Sh-Ls Fit Up | 1d? | 2018-02-14 08:00 | 2018-02-14 17:00 | 13d | F [200%]; H; W | 32h | No |
| 252 | 59 | **Sh Ls Welding Arrangement** | 1d? | 2018-02-14 08:00 | 2018-02-14 17:00 | 13d |  | 48h | No |
| 253 | 59.1 | Sh-Ls Weld Arrangement | 1d? | 2018-02-14 08:00 | 2018-02-14 17:00 | 13d | F; H | 16h | No |
| 254 | 59.2 | Sh-Ls Weld Arrangement | 1d? | 2018-02-14 08:00 | 2018-02-14 17:00 | 13d | F; H | 16h | No |
| 255 | 59.3 | Sh-Ls Weld Arrangement | 1d? | 2018-02-14 08:00 | 2018-02-14 17:00 | 13d | F; H | 16h | No |
| 256 | 60 | **Shell Long Seam Outer Welding** | 1d? | 2018-02-14 08:00 | 2018-02-14 17:00 | 13d |  | 48h | No |
| 257 | 60.1 | Sh-Ls Welding- Top Side | 1d? | 2018-02-14 08:00 | 2018-02-14 17:00 | 13d | W; H | 16h | No |
| 258 | 60.2 | Sh-Ls Welding- Top Side | 1d? | 2018-02-14 08:00 | 2018-02-14 17:00 | 13d | W; H | 16h | No |
| 259 | 60.3 | Sh-Ls Welding- Top Side | 1d? | 2018-02-14 08:00 | 2018-02-14 17:00 | 13d | W; H | 16h | No |
| 260 | 61 | **Sh Ls Back Chip** | 1d? | 2018-02-14 08:00 | 2018-02-14 17:00 | 13d |  | 24h | No |
| 261 | 61.1 | Sh-Ls Welding- Back Chip | 1d? | 2018-02-14 08:00 | 2018-02-14 17:00 | 13d | G | 8h | No |
| 262 | 61.2 | Sh-Ls Welding- Back Chip | 1d? | 2018-02-14 08:00 | 2018-02-14 17:00 | 13d | G | 8h | No |
| 263 | 61.3 | Sh-Ls Welding- Back Chip | 1d? | 2018-02-14 08:00 | 2018-02-14 17:00 | 13d | G | 8h | No |

| ID | WBS | Task | Duration | Start | Finish | Total slack | Resources | Work | Text1 |
| --- | --- | --- | --- | --- | --- | --- | --- | --- | --- |
| 264 | 62 | **Sh Ls Inner Welding** | 1d? | 2018-02-14 08:00 | 2018-02-14 17:00 | 13d |  | 48h | No |
| 265 | 62.1 | Sh-Ls Inner Welding | 1d? | 2018-02-14 08:00 | 2018-02-14 17:00 | 13d | W; H | 16h | No |
| 266 | 62.2 | Sh-Ls Inner Welding | 1d? | 2018-02-14 08:00 | 2018-02-14 17:00 | 13d | W; H | 16h | No |
| 267 | 62.3 | Sh-Ls Inner Welding | 1d? | 2018-02-14 08:00 | 2018-02-14 17:00 | 13d | W; H | 16h | No |
| 268 | 63 | **Sh Inner Ls Flush Grinding** | 1d? | 2018-02-14 08:00 | 2018-02-14 17:00 | 13d |  | 24h | No |
| 269 | 63.1 | Sh Inner Flush Grinding | 1d? | 2018-02-14 08:00 | 2018-02-14 17:00 | 13d | G | 8h | No |
| 270 | 63.2 | Sh Inner Flush Grinding | 1d? | 2018-02-14 08:00 | 2018-02-14 17:00 | 13d | G | 8h | No |
| 271 | 63.3 | Sh Inner Flush Grinding | 1d? | 2018-02-14 08:00 | 2018-02-14 17:00 | 13d | G | 8h | No |
| 272 | 64 | **Sh Ls Radiography** | 1d? | 2018-02-14 08:00 | 2018-02-14 17:00 | 13d |  | 24h | No |
| 273 | 64.1 | Sh Ls Welding Rt | 1d? | 2018-02-14 08:00 | 2018-02-14 17:00 | 13d | RT | 8h | No |
| 274 | 64.2 | Sh Ls Welding Rt | 1d? | 2018-02-14 08:00 | 2018-02-14 17:00 | 13d | RT | 8h | No |
| 275 | 64.3 | Sh Ls Welding Rt | 1d? | 2018-02-14 08:00 | 2018-02-14 17:00 | 13d | RT | 8h | No |
| 276 | 65 | **Shell Re Rolling** | 1d? | 2018-02-14 08:00 | 2018-02-14 17:00 | 13d |  | 72h | No |
| 277 | 65.1 | Sh Re Rolling | 1d? | 2018-02-14 08:00 | 2018-02-14 17:00 | 13d | F [200%]; H | 24h | No |
| 278 | 65.2 | Sh Re Rolling | 1d? | 2018-02-14 08:00 | 2018-02-14 17:00 | 13d | F [200%]; H | 24h | No |
| 279 | 65.3 | Sh Re Rolling | 1d? | 2018-02-14 08:00 | 2018-02-14 17:00 | 13d | F [200%]; H | 24h | No |
| 280 | 66 | **Sh Plate Cs Ep Correction** | 1d? | 2018-02-14 08:00 | 2018-02-14 17:00 | 13d |  | 48h | No |
| 281 | 66.1 | Sh Cir Ep Correction | 1d? | 2018-02-14 08:00 | 2018-02-14 17:00 | 13d | F; H | 16h | No |
| 282 | 66.2 | Sh Cir Ep Correction | 1d? | 2018-02-14 08:00 | 2018-02-14 17:00 | 13d | F; H | 16h | No |
| 283 | 66.3 | Sh Cir Ep Correction | 1d? | 2018-02-14 08:00 | 2018-02-14 17:00 | 13d | F; H | 16h | No |
| 284 | 67 | **Sh Cir Seam First Fit Up** | 1d? | 2018-02-14 08:00 | 2018-02-14 17:00 | 13d |  | 48h | No |
| 285 | 67.1 | Sh Cs Fit Up [LS1+LS2] | 1d? | 2018-02-14 08:00 | 2018-02-14 17:00 | 13d | F [200%]; H; W | 32h | No |
| 286 | 67.2 | Sh Cs Tack Dp Check [LS1+LS2] | 1d? | 2018-02-14 08:00 | 2018-02-14 17:00 | 13d | F; H | 16h | No |
| 287 | 68 | **Sh Cir Seam First Welding** | 1d? | 2018-02-14 08:00 | 2018-02-14 17:00 | 13d |  | 64h | No |
| 288 | 68.1 | Sh Cs Welding Transfere | 1d? | 2018-02-14 08:00 | 2018-02-14 17:00 | 13d | F; H | 16h | No |
| 289 | 68.2 | Sh Cs Welding Outer [LS1+LS2] | 1d? | 2018-02-14 08:00 | 2018-02-14 17:00 | 13d | W; H | 16h | No |
| 290 | 68.3 | Sh Cs Welding Back Chip [LS1+LS2] | 1d? | 2018-02-14 08:00 | 2018-02-14 17:00 | 13d | G | 8h | No |
| 291 | 68.4 | Sh Cs Inner Welding [LS1+LS2] | 1d? | 2018-02-14 08:00 | 2018-02-14 17:00 | 13d | W; H | 16h | No |
| 292 | 68.5 | Sh Cs Flush Grinding [LS1+LS2] | 1d? | 2018-02-14 08:00 | 2018-02-14 17:00 | 13d | G | 8h | No |

| ID | WBS | Task | Duration | Start | Finish | Total slack | Resources | Work | Text1 |
| --- | --- | --- | --- | --- | --- | --- | --- | --- | --- |
| 293 | 69 | **Sh Cir Seam Second Fitup** | 1d? | 2018-02-14 08:00 | 2018-02-14 17:00 | 13d |  | 48h | No |
| 294 | 69.1 | Sh Cs Fit Up [LS2+LS3] | 1d? | 2018-02-14 08:00 | 2018-02-14 17:00 | 13d | F [200%]; H; W | 32h | No |
| 295 | 69.2 | Sh Cs Tack Dp Check [LS2+LS3] | 1d? | 2018-02-14 08:00 | 2018-02-14 17:00 | 13d | F; H | 16h | No |
| 296 | 70 | **Sh Cir Seam Second Welding** | 1d? | 2018-02-14 08:00 | 2018-02-14 17:00 | 13d |  | 64h | No |
| 297 | 70.1 | Sh Cs Welding Transfere [LS2+LS3] | 1d? | 2018-02-14 08:00 | 2018-02-14 17:00 | 13d | F; H | 16h | No |
| 298 | 70.2 | Sh Cs Welding Outer [LS2+LS3] | 1d? | 2018-02-14 08:00 | 2018-02-14 17:00 | 13d | W; H | 16h | No |
| 299 | 70.3 | Sh Cs Welding Back Chip [LS2+LS3] | 1d? | 2018-02-14 08:00 | 2018-02-14 17:00 | 13d | G | 8h | No |
| 300 | 70.4 | Sh Cs Inner Welding [LS2+LS3] | 1d? | 2018-02-14 08:00 | 2018-02-14 17:00 | 13d | W; H | 16h | No |
| 301 | 70.5 | Sh Cs Flush Grinding [LS2+LS3] | 1d? | 2018-02-14 08:00 | 2018-02-14 17:00 | 13d | G | 8h | No |
| 302 | 71 | **Sh Final Length Correction** | 1d? | 2018-02-14 08:00 | 2018-02-14 17:00 | 13d |  | 48h | No |
| 303 | 71.1 | Sh Length Marking | 1d? | 2018-02-14 08:00 | 2018-02-14 17:00 | 13d | F [200%] | 16h | No |
| 304 | 71.2 | Length Cutting | 1d? | 2018-02-14 08:00 | 2018-02-14 17:00 | 13d | C; H | 16h | No |
| 305 | 71.3 | Grinding & Ep | 1d? | 2018-02-14 08:00 | 2018-02-14 17:00 | 13d | G; H | 16h | No |
| 306 | 72 | **Sh Cir Seam Fitup Flg1** | 1d? | 2018-02-14 08:00 | 2018-02-14 17:00 | 13d |  | 48h | No |
| 307 | 72.1 | Sh Cs Fit Up Flg CS1 | 1d? | 2018-02-14 08:00 | 2018-02-14 17:00 | 13d | F [200%]; H; W | 32h | No |
| 308 | 72.2 | Sh Cs Tack Dp Check Flg CS1 | 1d? | 2018-02-14 08:00 | 2018-02-14 17:00 | 13d | F; H | 16h | No |
| 309 | 73 | **Sh Cir Seam Welding Flg1** | 1d? | 2018-02-14 08:00 | 2018-02-14 17:00 | 13d |  | 64h | No |
| 310 | 73.1 | Sh Cs Welding Transfere | 1d? | 2018-02-14 08:00 | 2018-02-14 17:00 | 13d | F; H | 16h | No |
| 311 | 73.2 | Sh Cs Welding Outer Flg1 | 1d? | 2018-02-14 08:00 | 2018-02-14 17:00 | 13d | W; H | 16h | No |
| 312 | 73.3 | Sh Cs Welding Back Chip Flg1 | 1d? | 2018-02-14 08:00 | 2018-02-14 17:00 | 13d | G | 8h | No |
| 313 | 73.4 | Sh Cs Inner Welding Flg1 | 1d? | 2018-02-14 08:00 | 2018-02-14 17:00 | 13d | W; H | 16h | No |
| 314 | 73.5 | Sh Cs Flush Grinding Flg1 | 1d? | 2018-02-14 08:00 | 2018-02-14 17:00 | 13d | G | 8h | No |
| 315 | 74 | **Sh Cs Fit Up Flg2** | 1d? | 2018-02-14 08:00 | 2018-02-14 17:00 | 13d |  | 48h | No |
| 316 | 74.1 | Sh Cs Fit Up Flg2 | 1d? | 2018-02-14 08:00 | 2018-02-14 17:00 | 13d | F [200%]; H; W | 32h | No |
| 317 | 74.2 | Sh Cs Tack Dp Check Flg2 | 1d? | 2018-02-14 08:00 | 2018-02-14 17:00 | 13d | F; H | 16h | No |

| ID | WBS | Task | Duration | Start | Finish | Total slack | Resources | Work | Text1 |
| --- | --- | --- | --- | --- | --- | --- | --- | --- | --- |
| 318 | 75 | **Sh Cs Welding Flg2** | 1d? | 2018-02-14 08:00 | 2018-02-14 17:00 | 13d |  | 64h | No |
| 319 | 75.1 | Sh Cs Welding Transfere Flg2 | 1d? | 2018-02-14 08:00 | 2018-02-14 17:00 | 13d | F; H | 16h | No |
| 320 | 75.2 | Sh Cs Welding Outer Flg2 | 1d? | 2018-02-14 08:00 | 2018-02-14 17:00 | 13d | W; H | 16h | No |
| 321 | 75.3 | Sh Cs Welding Back Chip Flg2 | 1d? | 2018-02-14 08:00 | 2018-02-14 17:00 | 13d | G | 8h | No |
| 322 | 75.4 | Sh Cs Inner Welding Flg2 | 1d? | 2018-02-14 08:00 | 2018-02-14 17:00 | 13d | W; H | 16h | No |
| 323 | 75.5 | Sh Cs Flush Grinding Flg2 | 1d? | 2018-02-14 08:00 | 2018-02-14 17:00 | 13d | G | 8h | No |
| 324 | 76 | **Nozzle Orientation Marking** | 1d? | 2018-02-14 08:00 | 2018-02-14 17:00 | 13d |  | 48h | No |
| 325 | 76.1 | Sh-Noz Orientaion Marking | 1d? | 2018-02-14 08:00 | 2018-02-14 17:00 | 13d | F [200%] | 16h | No |
| 326 | 76.2 | Sh-Noz Marking N1 10" | 1d? | 2018-02-14 08:00 | 2018-02-14 17:00 | 13d | F [200%] | 16h | No |
| 327 | 76.3 | Sh-Noz Marking | 1d? | 2018-02-14 08:00 | 2018-02-14 17:00 | 13d | F [200%] | 16h | No |
| 328 | 77 | **Sh Nozzle Openning** | 1d? | 2018-02-14 08:00 | 2018-02-14 17:00 | 13d |  | 48h | No |
| 329 | 77.1 | 250 NB NOZ N1 - 1 NO | 1d? | 2018-02-14 08:00 | 2018-02-14 17:00 | 13d | C; H | 16h | No |
| 330 | 77.2 | 250 NB NOZ N2 - 1 NO | 1d? | 2018-02-14 08:00 | 2018-02-14 17:00 | 13d | C; H | 16h | No |
| 331 | 77.3 | Inspection | 1d? | 2018-02-14 08:00 | 2018-02-14 17:00 | 13d | C; H | 16h | No |
| 332 | 78 | **Sh Nozzle Ep** | 1d? | 2018-02-14 08:00 | 2018-02-14 17:00 | 13d |  | 16h | No |
| 333 | 78.1 | 250 NB NOZ N1 - 1 NO | 1d? | 2018-02-14 08:00 | 2018-02-14 17:00 | 13d | G | 8h | No |
| 334 | 78.2 | 250 NB NOZ N2 - 1 NO | 1d? | 2018-02-14 08:00 | 2018-02-14 17:00 | 13d | G | 8h | No |
| 335 | 78.3 | Inspection | 1d? | 2018-02-14 08:00 | 2018-02-14 17:00 | 13d |  |  | No |
| 336 | 79 | **Sh Nozzzle Fit Up** | 1d? | 2018-02-14 08:00 | 2018-02-14 17:00 | 13d |  | 64h | No |
| 337 | 79.1 | 250 NB NOZ N1 - 1 NO | 1d? | 2018-02-14 08:00 | 2018-02-14 17:00 | 13d | F [200%]; H; W | 32h | No |
| 338 | 79.2 | 250 NB NOZ N2 - 1 NO | 1d? | 2018-02-14 08:00 | 2018-02-14 17:00 | 13d | F [200%]; H; W | 32h | No |
| 339 | 79.3 | Dp Check | 1d? | 2018-02-14 08:00 | 2018-02-14 17:00 | 13d |  |  | No |
| 340 | 80 | **Sh Nozzle Fit Up Inspection** | 1d? | 2018-02-14 08:00 | 2018-02-14 17:00 | 13d |  | 48h | No |
| 341 | 80.1 | 250 NB NOZ N1 - 1 NO | 1d? | 2018-02-14 08:00 | 2018-02-14 17:00 | 13d | F; H | 16h | No |
| 342 | 80.2 | 250 NB NOZ N2 - 1 NO | 1d? | 2018-02-14 08:00 | 2018-02-14 17:00 | 13d | F; H | 16h | No |
| 343 | 80.3 | Dp Check | 1d? | 2018-02-14 08:00 | 2018-02-14 17:00 | 13d | F; H | 16h | No |

| ID | WBS | Task | Duration | Start | Finish | Total slack | Resources | Work | Text1 |
| --- | --- | --- | --- | --- | --- | --- | --- | --- | --- |
| 344 | 81 | **Sh Nozzle Welding** | 1d? | 2018-02-14 08:00 | 2018-02-14 17:00 | 13d |  | 88h | No |
| 345 | 81.1 | Sh Noz Welding Arrangement | 1d? | 2018-02-14 08:00 | 2018-02-14 17:00 | 13d | T | 8h | No |
| 346 | 81.2 | Sh-Noz Welding N1 | 1d? | 2018-02-14 08:00 | 2018-02-14 17:00 | 13d | W; H | 16h | No |
| 347 | 81.3 | Sh-Noz Welding N2 | 1d? | 2018-02-14 08:00 | 2018-02-14 17:00 | 13d | W; H | 16h | No |
| 348 | 81.4 | Sh Noz Root Dp Check | 1d? | 2018-02-14 08:00 | 2018-02-14 17:00 | 13d | F; H | 16h | No |
| 349 | 81.5 | Sh-Noz Inner Weld N1 | 1d? | 2018-02-14 08:00 | 2018-02-14 17:00 | 13d | H; W | 16h | No |
| 350 | 81.6 | Sh-Noz Inner Weld N2 | 1d? | 2018-02-14 08:00 | 2018-02-14 17:00 | 13d | H; W | 16h | No |
| 351 | 82 | **Sh Saddle Welding** | 1d? | 2018-02-14 08:00 | 2018-02-14 17:00 | 13d |  | 176h | No |
| 352 | 82.1 | Sh-Saddle Pad Fit Up | 1d? | 2018-02-14 08:00 | 2018-02-14 17:00 | 13d | F [200%]; W; H | 32h | No |
| 353 | 82.2 | Sh-Saddle Pad Welding | 1d? | 2018-02-14 08:00 | 2018-02-14 17:00 | 13d | W [200%]; H [200%] | 32h | No |
| 354 | 82.3 | Sh-Saddle Matching | 1d? | 2018-02-14 08:00 | 2018-02-14 17:00 | 13d | F [200%]; G [200%] | 32h | No |
| 355 | 82.4 | Sh-Saddle Fit Up | 1d? | 2018-02-14 08:00 | 2018-02-14 17:00 | 13d | W; F [200%]; H | 32h | No |
| 356 | 82.5 | Sh-Saddle Welding | 1d? | 2018-02-14 08:00 | 2018-02-14 17:00 | 13d | W [200%]; H [200%] | 32h | No |
| 357 | 82.6 | Sh-Saddle Dress Up | 1d? | 2018-02-14 08:00 | 2018-02-14 17:00 | 13d | G [200%] | 16h | No |
| 358 | 83 | **Sh Davit Arm Welding** | 1d? | 2018-02-14 08:00 | 2018-02-14 17:00 | 13d |  | 56h | No |
| 359 | 83.1 | Sh-Davit Arm Arm Match | 1d? | 2018-02-14 08:00 | 2018-02-14 17:00 | 13d | F; G | 16h | No |
| 360 | 83.2 | Sh-Davit Arm Fit Up | 1d? | 2018-02-14 08:00 | 2018-02-14 17:00 | 13d | F; H; W | 24h | No |
| 361 | 83.3 | Sh-Davit Arm Welding | 1d? | 2018-02-14 08:00 | 2018-02-14 17:00 | 13d | W; H | 16h | No |
| 362 | 84 | **Sh Nde Clearence** | 1d? | 2018-02-14 08:00 | 2018-02-14 17:00 | 13d |  | 32h | No |
| 363 | 84.1 | Sh-Sh Nde Clearence | 1d? | 2018-02-14 08:00 | 2018-02-14 17:00 | 13d | F; H | 16h | No |
| 364 | 84.2 | Tpi Inspection | 1d? | 2018-02-14 08:00 | 2018-02-14 17:00 | 13d | F; H | 16h | No |
| 365 | 85 | Channel Fabrication | 1d? | 2018-02-14 08:00 | 2018-02-14 17:00 | 13d |  |  | No |
| 366 | 86 | **Channel Shell Ls Welding** | 1d? | 2018-02-14 08:00 | 2018-02-14 17:00 | 13d |  | 96h | No |
| 367 | 86.1 | Ch Plate Trasnfer | 1d? | 2018-02-14 08:00 | 2018-02-14 17:00 | 13d | T | 8h | No |
| 368 | 86.2 | Ch-Marking | 1d? | 2018-02-14 08:00 | 2018-02-14 17:00 | 13d | F; H [200%] | 24h | No |
| 369 | 86.3 | Ch-Cutting | 1d? | 2018-02-14 08:00 | 2018-02-14 17:00 | 13d | C; H | 16h | No |
| 370 | 86.4 | Ch Pl Side Grinding | 1d? | 2018-02-14 08:00 | 2018-02-14 17:00 | 13d | G | 8h | No |
| 371 | 86.5 | Ch-Bevelling Cir Side | 1d? | 2018-02-14 08:00 | 2018-02-14 17:00 | 13d | F; H [300%] | 32h | No |
| 372 | 86.6 | Ch Ep Grinding | 1d? | 2018-02-14 08:00 | 2018-02-14 17:00 | 13d | G | 8h | No |

| ID | WBS | Task | Duration | Start | Finish | Total slack | Resources | Work | Text1 |
| --- | --- | --- | --- | --- | --- | --- | --- | --- | --- |
| 373 | 87 | **Channel Sh Rolling** | 1d? | 2018-02-14 08:00 | 2018-02-14 17:00 | 13d |  | 88h | No |
| 374 | 87.1 | Ch-Pre Bend | 1d? | 2018-02-14 08:00 | 2018-02-14 17:00 | 13d | F [200%]; H | 24h | No |
| 375 | 87.2 | Ch-Pre Bend Cut Off | 1d? | 2018-02-14 08:00 | 2018-02-14 17:00 | 13d | F [200%]; C | 24h | No |
| 376 | 87.3 | Ch Ls Beveling | 1d? | 2018-02-14 08:00 | 2018-02-14 17:00 | 13d | F [200%] | 16h | No |
| 377 | 87.4 | Ch-Rolling | 1d? | 2018-02-14 08:00 | 2018-02-14 17:00 | 13d | F [200%]; H | 24h | No |
| 378 | 88 | **Ch Shell Ls Fit Up** | 1d? | 2018-02-14 08:00 | 2018-02-14 17:00 | 13d |  | 48h | No |
| 379 | 88.1 | Ch-Ls Correction | 1d? | 2018-02-14 08:00 | 2018-02-14 17:00 | 13d | F [200%] | 16h | No |
| 380 | 88.2 | Ch-Ls Fit Up | 1d? | 2018-02-14 08:00 | 2018-02-14 17:00 | 13d | F [200%]; W; H | 32h | No |
| 381 | 89 | **Ch Shell Ls Welding** | 1d? | 2018-02-14 08:00 | 2018-02-14 17:00 | 13d |  | 104h | No |
| 382 | 89.1 | Ch-Ls Weld Arrangement | 1d? | 2018-02-14 08:00 | 2018-02-14 17:00 | 13d | F; H [200%] | 24h | No |
| 383 | 89.2 | Ch-Ls Welding- Top Side | 1d? | 2018-02-14 08:00 | 2018-02-14 17:00 | 13d | W; H | 16h | No |
| 384 | 89.3 | Ch-Ls Welding- Back Chip | 1d? | 2018-02-14 08:00 | 2018-02-14 17:00 | 13d | G; H | 16h | No |
| 385 | 89.4 | Ch-Ls Inner Welding | 1d? | 2018-02-14 08:00 | 2018-02-14 17:00 | 13d | W; H | 16h | No |
| 386 | 89.5 | Ch-Ls Innner Flush Grind | 1d? | 2018-02-14 08:00 | 2018-02-14 17:00 | 13d | G | 8h | No |
| 387 | 89.6 | Ch Re Rolling | 1d? | 2018-02-14 08:00 | 2018-02-14 17:00 | 13d | F [200%]; H | 24h | No |
| 388 | 90 | **Ch Ls Welding Radiography** | 1d? | 2018-02-14 08:00 | 2018-02-14 17:00 | 13d |  | 8h | No |
| 389 | 90.1 | Ch Ls Welding Rt | 1d? | 2018-02-14 08:00 | 2018-02-14 17:00 | 13d | RT | 8h | No |
| 390 | 91 | **Ch Cs Fit Up Flg1** | 1d? | 2018-02-14 08:00 | 2018-02-14 17:00 | 13d |  | 64h | No |
| 391 | 91.1 | Ch Cir Ep Correction | 1d? | 2018-02-14 08:00 | 2018-02-14 17:00 | 13d | F [200%] | 16h | No |
| 392 | 91.2 | Ch Cs Fit Up Flg1 | 1d? | 2018-02-14 08:00 | 2018-02-14 17:00 | 13d | F [200%]; W; H | 32h | No |
| 393 | 91.3 | Ch Cs Tack Dp Check Flg1 | 1d? | 2018-02-14 08:00 | 2018-02-14 17:00 | 13d | F; H | 16h | No |
| 394 | 92 | **Ch Cs Welding Flg1** | 1d? | 2018-02-14 08:00 | 2018-02-14 17:00 | 13d |  | 72h | No |
| 395 | 92.1 | Ch Cs Welding Transfere | 1d? | 2018-02-14 08:00 | 2018-02-14 17:00 | 13d | F; H [200%] | 24h | No |
| 396 | 92.2 | Ch Cs Welding Outer Flg1 | 1d? | 2018-02-14 08:00 | 2018-02-14 17:00 | 13d | W; H | 16h | No |
| 397 | 92.3 | Ch Cs Welding Back Chip Flg1 | 1d? | 2018-02-14 08:00 | 2018-02-14 17:00 | 13d | G | 8h | No |
| 398 | 92.4 | Ch Cs Inner Welding Flg1 | 1d? | 2018-02-14 08:00 | 2018-02-14 17:00 | 13d | W; H | 16h | No |
| 399 | 92.5 | Ch Cs Flush Grinding Flg1 | 1d? | 2018-02-14 08:00 | 2018-02-14 17:00 | 13d | G | 8h | No |

| ID | WBS | Task | Duration | Start | Finish | Total slack | Resources | Work | Text1 |
| --- | --- | --- | --- | --- | --- | --- | --- | --- | --- |
| 400 | 93 | **Ch Cs Fit Up Flg2** | 1d? | 2018-02-14 08:00 | 2018-02-14 17:00 | 13d |  | 72h | No |
| 401 | 93.1 | Ch Length Cutting | 1d? | 2018-02-14 08:00 | 2018-02-14 17:00 | 13d | C; H | 16h | No |
| 402 | 93.2 | Ch Cir Ep Correction | 1d? | 2018-02-14 08:00 | 2018-02-14 17:00 | 13d | F; H | 16h | No |
| 403 | 93.3 | Ch Cs Fit Up Flg2 | 1d? | 2018-02-14 08:00 | 2018-02-14 17:00 | 13d | F [200%]; W; H | 32h | No |
| 404 | 93.4 | Ch Cs Tack Dp Check Flg2 | 1d? | 2018-02-14 08:00 | 2018-02-14 17:00 | 13d | F | 8h | No |
| 405 | 94 | **Ch Cs Flg 2 Welding** | 1d? | 2018-02-14 08:00 | 2018-02-14 17:00 | 13d |  | 72h | No |
| 406 | 94.1 | Ch Cs Welding Transfere Flg2 | 1d? | 2018-02-14 08:00 | 2018-02-14 17:00 | 13d | F; H [200%] | 24h | No |
| 407 | 94.2 | Ch Cs Welding Outer Flg2 | 1d? | 2018-02-14 08:00 | 2018-02-14 17:00 | 13d | W; H | 16h | No |
| 408 | 94.3 | Ch Cs Welding Back Chip Flg2 | 1d? | 2018-02-14 08:00 | 2018-02-14 17:00 | 13d | G | 8h | No |
| 409 | 94.4 | Ch Cs Inner Welding Flg2 | 1d? | 2018-02-14 08:00 | 2018-02-14 17:00 | 13d | W; H | 16h | No |
| 410 | 94.5 | Ch Cs Flush Grinding Flg2 | 1d? | 2018-02-14 08:00 | 2018-02-14 17:00 | 13d | G | 8h | No |
| 411 | 95 | **Ch Cs Welding Rt Flg1 & 2** | 1d? | 2018-02-14 08:00 | 2018-02-14 17:00 | 13d |  | 8h | No |
| 412 | 95.1 | Ch Cs Welding Rt | 1d? | 2018-02-14 08:00 | 2018-02-14 17:00 | 13d | RT | 8h | No |
| 413 | 96 | **Channel Noz Marking** | 1d? | 2018-02-14 08:00 | 2018-02-14 17:00 | 13d |  | 32h | No |
| 414 | 96.1 | Ch- Noz orientation | 1d? | 2018-02-14 08:00 | 2018-02-14 17:00 | 13d | F; H | 16h | No |
| 415 | 96.2 | Ch-Noz Marking 6'' - 4 Nos | 1d? | 2018-02-14 08:00 | 2018-02-14 17:00 | 13d | F; H | 16h | No |
| 416 | 97 | **Ch Noz Opening** | 1d? | 2018-02-14 08:00 | 2018-02-14 17:00 | 13d |  | 32h | No |
| 417 | 97.1 | Ch-Noz Openning-Top 6'' - 4 Nos | 1d? | 2018-02-14 08:00 | 2018-02-14 17:00 | 13d | C; H | 16h | No |
| 418 | 97.2 | Ch-Noz Openning-Bottom 6'' - 4 Nos | 1d? | 2018-02-14 08:00 | 2018-02-14 17:00 | 13d | C; H | 16h | No |
| 419 | 98 | **Ch Noz Open Ep** | 1d? | 2018-02-14 08:00 | 2018-02-14 17:00 | 13d |  | 32h | No |
| 420 | 98.1 | Ch-Noz Ep 6'' - 4 Nos | 1d? | 2018-02-14 08:00 | 2018-02-14 17:00 | 13d | G; H | 16h | No |
| 421 | 98.2 | Ch-Noz Ep | 1d? | 2018-02-14 08:00 | 2018-02-14 17:00 | 13d | G; H | 16h | No |
| 422 | 99 | **Ch Noz Fit Up** | 1d? | 2018-02-14 08:00 | 2018-02-14 17:00 | 13d |  | 64h | No |
| 423 | 99.1 | Ch-Noz Fit Up | 1d? | 2018-02-14 08:00 | 2018-02-14 17:00 | 13d | F [200%]; W; H | 32h | No |
| 424 | 99.2 | Ch-Noz Fit Up | 1d? | 2018-02-14 08:00 | 2018-02-14 17:00 | 13d | F [200%]; W; H | 32h | No |

| ID | WBS | Task | Duration | Start | Finish | Total slack | Resources | Work | Text1 |
| --- | --- | --- | --- | --- | --- | --- | --- | --- | --- |
| 425 | 100 | **Ch Noz Fit Up Insp** | 1d? | 2018-02-14 08:00 | 2018-02-14 17:00 | 13d |  | 32h | No |
| 426 | 100.1 | Ch-Noz Inspn N4 | 1d? | 2018-02-14 08:00 | 2018-02-14 17:00 | 13d | F; H | 16h | No |
| 427 | 100.2 | Ch-Noz Inspn N3 | 1d? | 2018-02-14 08:00 | 2018-02-14 17:00 | 13d | F; H | 16h | No |
| 428 | 101 | **Ch Noz Welding** | 1d? | 2018-02-14 08:00 | 2018-02-14 17:00 | 13d |  | 128h | No |
| 429 | 101.1 | Ch Noz Welding Arrangement | 1d? | 2018-02-14 08:00 | 2018-02-14 17:00 | 13d | F; H [200%] | 24h | No |
| 430 | 101.2 | Ch-Noz Welding 6'' - 4 Nos | 1d? | 2018-02-14 08:00 | 2018-02-14 17:00 | 13d | W; H | 16h | No |
| 431 | 101.3 | Ch-Noz Welding N3 | 1d? | 2018-02-14 08:00 | 2018-02-14 17:00 | 13d | W; H | 16h | No |
| 432 | 101.4 | Ch Noz Root Dp Check | 1d? | 2018-02-14 08:00 | 2018-02-14 17:00 | 13d | W; H | 16h | No |
| 433 | 101.5 | Ch-Noz Inner Weld N4 | 1d? | 2018-02-14 08:00 | 2018-02-14 17:00 | 13d | W; H | 16h | No |
| 434 | 101.6 | Ch-Noz Inner Weld | 1d? | 2018-02-14 08:00 | 2018-02-14 17:00 | 13d |  |  | No |
| 435 | 101.7 | Rf Pad Fit Up & Nozzle Fit Up | 1d? | 2018-02-14 08:00 | 2018-02-14 17:00 | 13d | W; H | 16h | No |
| 436 | 101.8 | Rf Pad Fit Up Welding | 1d? | 2018-02-14 08:00 | 2018-02-14 17:00 | 13d | G; H | 16h | No |
| 437 | 101.9 | Noz Welding Flush Grind 12''NB | 1d? | 2018-02-14 08:00 | 2018-02-14 17:00 | 13d | G | 8h | No |
| 438 | 102 | **Channel Pp Plate Fit Up** | 1d? | 2018-02-14 08:00 | 2018-02-14 17:00 | 13d |  | 48h | No |
| 439 | 102.1 | Ch- Pp Plate Fit Up | 1d? | 2018-02-14 08:00 | 2018-02-14 17:00 | 13d | F [200%]; H; W | 32h | No |
| 440 | 102.2 | Ch- Pp Plate Fit Up Insp | 1d? | 2018-02-14 08:00 | 2018-02-14 17:00 | 13d | F; H | 16h | No |
| 441 | 103 | **Ch Pp Plate Welding** | 1d? | 2018-02-14 08:00 | 2018-02-14 17:00 | 13d |  | 32h | No |
| 442 | 103.1 | Ch- Pp Plate Welding | 1d? | 2018-02-14 08:00 | 2018-02-14 17:00 | 13d | W; H | 16h | No |
| 443 | 103.2 | Ch- Pp Plate Face Grinding | 1d? | 2018-02-14 08:00 | 2018-02-14 17:00 | 13d | G; H | 16h | No |
| 444 | 104 | **Channel Davit Arm Welding** | 1d? | 2018-02-14 08:00 | 2018-02-14 17:00 | 13d |  | 56h | No |
| 445 | 104.1 | Ch-Davit Arm Arm Match | 1d? | 2018-02-14 08:00 | 2018-02-14 17:00 | 13d | F; H | 16h | No |
| 446 | 104.2 | Ch-Davit Arm Fit Up | 1d? | 2018-02-14 08:00 | 2018-02-14 17:00 | 13d | F; W; H | 24h | No |
| 447 | 104.3 | Ch-Davit Arm Welding | 1d? | 2018-02-14 08:00 | 2018-02-14 17:00 | 13d | W; H | 16h | No |
| 448 | 105 | **Channel Nde & Pwht** | 1d? | 2018-02-14 08:00 | 2018-02-14 17:00 | 13d |  | 24h | No |
| 449 | 105.1 | Ch All Welding Dressup & Dp Check | 1d? | 2018-02-14 08:00 | 2018-02-14 17:00 | 13d | G [200%] | 16h | No |
| 450 | 105.2 | Ch-Ch Nde Clearence | 1d? | 2018-02-14 08:00 | 2018-02-14 17:00 | 13d | F | 8h | No |
| 451 | 106 | Barrel Fabrication | 1d? | 2018-02-14 08:00 | 2018-02-14 17:00 | 13d |  |  | No |

| ID | WBS | Task | Type | Duration | Start | Finish | Total slack | Resources | Work | Text1 |
| --- | --- | --- | --- | --- | --- | --- | --- | --- | --- | --- |
| 452 | 107 | **Barrel Sh Plate Cutting & Ep** |  | 0.25d | 2018-02-14 08:00 | 2018-02-14 10:00 | 13.75d |  | 8.6h | No |
| 453 | 107.1 | Barrel Plate Transfer |  | 2h | 2018-02-14 08:00 | 2018-02-14 10:00 | 13.75d | T | 2h | Yes |
| 454 | 107.2 | Barrel-Marking |  | 0.2h | 2018-02-14 08:00 | 2018-02-14 08:12 | 13.97d | F; H [200%] | 0.6h | Yes |
| 455 | 107.3 | Barrel-Cutting |  | 0.25h | 2018-02-14 08:00 | 2018-02-14 08:15 | 13.97d | C; H | 0.5h | Yes |
| 456 | 107.4 | Barrel Pl Side Grinding |  | 0.5h | 2018-02-14 08:00 | 2018-02-14 08:30 | 13.94d | G | 0.5h | Yes |
| 457 | 107.5 | Barrel-Bevelling Cir Side |  | 1h | 2018-02-14 08:00 | 2018-02-14 09:00 | 13.88d | F; H [300%] | 4h | Yes |
| 458 | 107.6 | Ch Ep Grinding |  | 1h | 2018-02-14 08:00 | 2018-02-14 09:00 | 13.88d | G | 1h | Yes |
| 459 | 108 | **Bar Shell Rolling** |  | 0.5d | 2018-02-14 08:00 | 2018-02-14 12:00 | 13.5d |  | 26.75h | No |
| 460 | 108.1 | Barrel-Pre Bend |  | 4h | 2018-02-14 08:00 | 2018-02-14 12:00 | 13.5d | F [200%]; H | 12h | Yes |
| 461 | 108.2 | Barrel-Pre Bend Cut Off |  | 0.25h | 2018-02-14 08:00 | 2018-02-14 08:15 | 13.97d | F [200%]; C | 0.75h | Yes |
| 462 | 108.3 | Barrel -Pre Ls Ep |  | 1h | 2018-02-14 08:00 | 2018-02-14 09:00 | 13.88d | F [200%] | 2h | Yes |
| 463 | 108.4 | Barrel-Rolling |  | 4h | 2018-02-14 08:00 | 2018-02-14 12:00 | 13.5d | F [200%]; H | 12h | Yes |
| 464 | 109 | **Barrel Shell Ls Fit Up** |  | 0.25d | 2018-02-14 08:00 | 2018-02-14 10:00 | 13.75d |  | 10h | No |
| 465 | 109.1 | Barrel-Ls Correction |  | 1h | 2018-02-14 08:00 | 2018-02-14 09:00 | 13.88d | F [200%] | 2h | Yes |
| 466 | 109.2 | Barrel-Ls Fit Up |  | 2h | 2018-02-14 08:00 | 2018-02-14 10:00 | 13.75d | F [200%]; W; H | 8h | Yes |
| 467 | 110 | **Barrel Shell Ls Welding** |  | 0.5d | 2018-02-14 08:00 | 2018-02-14 12:00 | 13.5d |  | 25.5h | No |
| 468 | 110.1 | Barrel-Ls Weld Arrangement |  | 1h | 2018-02-14 08:00 | 2018-02-14 09:00 | 13.88d | F; H [200%] | 3h | Yes |
| 469 | 110.2 | Barrel-Ls Welding- Top Side |  | 2.5h | 2018-02-14 08:00 | 2018-02-14 10:30 | 13.69d | W; H | 5h | Yes |
| 470 | 110.3 | Barrel-Ls Welding- Back Chip | milestone | 0h | 2018-02-14 08:00 | 2018-02-14 08:00 | 14d | G; H |  | Yes |
| 471 | 110.4 | Barrel-Ls Inner Welding |  | 2.5h | 2018-02-14 08:00 | 2018-02-14 10:30 | 13.69d | W; H | 5h | Yes |
| 472 | 110.5 | Barrel-Ls Innner Flush Grind |  | 0.5h | 2018-02-14 08:00 | 2018-02-14 08:30 | 13.94d | G | 0.5h | Yes |
| 473 | 110.6 | Barrel Re Rolling |  | 4h | 2018-02-14 08:00 | 2018-02-14 12:00 | 13.5d | F [200%]; H | 12h | Yes |
| 474 | 111 | **Barrel Ls Welding Rt** |  | 0.25d | 2018-02-14 08:00 | 2018-02-14 10:00 | 13.75d |  | 2h | No |
| 475 | 111.1 | Bar Ls Welding Rt |  | 2h | 2018-02-14 08:00 | 2018-02-14 10:00 | 13.75d | RT | 2h | Yes |

| ID | WBS | Task | Type | Duration | Start | Finish | Total slack | Resources | Work | Text1 |
| --- | --- | --- | --- | --- | --- | --- | --- | --- | --- | --- |
| 476 | 112 | **Barrel Shell Cs Flg 1 Fit Up** |  | 0.25d | 2018-02-14 08:00 | 2018-02-14 10:00 | 13.75d |  | 10.4h | No |
| 477 | 112.1 | Barrel Cir Ep Correction |  | 1h | 2018-02-14 08:00 | 2018-02-14 09:00 | 13.88d | F [200%] | 2h | Yes |
| 478 | 112.2 | Barrel Cs Fit Up Flg1 |  | 2h | 2018-02-14 08:00 | 2018-02-14 10:00 | 13.75d | F [200%]; W; H | 8h | Yes |
| 479 | 112.3 | Barrel Cs Tack Dp Check Flg1 |  | 0.2h | 2018-02-14 08:00 | 2018-02-14 08:12 | 13.97d | F; H | 0.4h | Yes |
| 480 | 113 | **Barrel Sh Cs Flg1 Welding** |  | 0.31d | 2018-02-14 08:00 | 2018-02-14 10:30 | 13.69d |  | 17h | No |
| 481 | 113.1 | Barrel Cs Welding Transfere |  | 2h | 2018-02-14 08:00 | 2018-02-14 10:00 | 13.75d | F; H [200%] | 6h | Yes |
| 482 | 113.2 | Barrel Cs Welding Outer Flg1 |  | 2.5h | 2018-02-14 08:00 | 2018-02-14 10:30 | 13.69d | W; H | 5h | Yes |
| 483 | 113.3 | Barrel Cs Welding Back Chip Flg1 |  | 0.5h | 2018-02-14 08:00 | 2018-02-14 08:30 | 13.94d | G | 0.5h | Yes |
| 484 | 113.4 | Barrel Cs Inner Welding Flg1 |  | 2.5h | 2018-02-14 08:00 | 2018-02-14 10:30 | 13.69d | W; H | 5h | Yes |
| 485 | 113.5 | Barrel Cs Flush Grinding Flg1 |  | 0.5h | 2018-02-14 08:00 | 2018-02-14 08:30 | 13.94d | G | 0.5h | Yes |
| 486 | 114 | **Barrel Cs Fit Up With Dish** |  | 0.25d | 2018-02-14 08:00 | 2018-02-14 10:00 | 13.75d |  | 10.5h | No |
| 487 | 114.1 | Barrel Length Cutting |  | 0.25h | 2018-02-14 08:00 | 2018-02-14 08:15 | 13.97d | C; H | 0.5h | Yes |
| 488 | 114.2 | Barrel Ep |  | 1h | 2018-02-14 08:00 | 2018-02-14 09:00 | 13.88d | F; H | 2h | Yes |
| 489 | 114.3 | Barrel Cs Fit Up Dish |  | 2h | 2018-02-14 08:00 | 2018-02-14 10:00 | 13.75d | F [200%]; W; H | 8h | Yes |
| 490 | 114.4 | Barrel Cs Tack Dp Check Dish | milestone | 0h | 2018-02-14 08:00 | 2018-02-14 08:00 | 14d | F |  | Yes |
| 491 | 115 | **Barrel Cs Welding With Dish** |  | 0.31d | 2018-02-14 08:00 | 2018-02-14 10:30 | 13.69d |  | 17h | No |
| 492 | 115.1 | Barrel Cs Welding Transfere Dish |  | 2h | 2018-02-14 08:00 | 2018-02-14 10:00 | 13.75d | F; H [200%] | 6h | Yes |
| 493 | 115.2 | Barrel Cs Welding Outer Dish |  | 2.5h | 2018-02-14 08:00 | 2018-02-14 10:30 | 13.69d | W; H | 5h | Yes |
| 494 | 115.3 | Barrel Cs Welding Back Chip Dish |  | 0.5h | 2018-02-14 08:00 | 2018-02-14 08:30 | 13.94d | G | 0.5h | Yes |
| 495 | 115.4 | Barrel Cs Inner Welding Dish |  | 2.5h | 2018-02-14 08:00 | 2018-02-14 10:30 | 13.69d | W; H | 5h | Yes |
| 496 | 115.5 | Barrel Cs Flush Grinding Dish |  | 0.5h | 2018-02-14 08:00 | 2018-02-14 08:30 | 13.94d | G | 0.5h | Yes |
| 497 | 116 | **Barrel Cs & Dish Welding Rt Flg1** |  | 1d | 2018-02-14 08:00 | 2018-02-14 17:00 | 13d |  | 8h | No |
| 498 | 116.1 | Barrel Cs Welding Rt |  | 8h | 2018-02-14 08:00 | 2018-02-14 17:00 | 13d | RT | 8h | Yes |
| 499 | 117 | **Barrel Noz Oreination Marking** |  | 0.25d | 2018-02-14 08:00 | 2018-02-14 10:00 | 13.75d |  | 8h | No |
| 500 | 117.1 | Barrel- Noz Orientation Mkg |  | 2h | 2018-02-14 08:00 | 2018-02-14 10:00 | 13.75d | F; H | 4h | Yes |
| 501 | 117.2 | Barrel-Noz Marking 4 Nos |  | 2h | 2018-02-14 08:00 | 2018-02-14 10:00 | 13.75d | F; H | 4h | Yes |

| ID | WBS | Task | Duration | Start | Finish | Total slack | Resources | Work | Text1 |
| --- | --- | --- | --- | --- | --- | --- | --- | --- | --- |
| 502 | 118 | **Barrel Nozzle Oppening** | 1d? | 2018-02-14 08:00 | 2018-02-14 17:00 | 13d |  | 20h | No |
| 503 | 118.1 | Barrel-Noz Openning 40 Nb - WN | 2h | 2018-02-14 08:00 | 2018-02-14 10:00 | 13.75d | C; H | 4h | Yes |
| 504 | 118.2 | Barrel-Noz Openning | 1d? | 2018-02-14 08:00 | 2018-02-14 17:00 | 13d | C; H | 16h | No |
| 505 | 119 | **Barrel Noz Edge Preparation** | 1d? | 2018-02-14 08:00 | 2018-02-14 17:00 | 13d |  | 20h | No |
| 506 | 119.1 | Barrel-Noz Openning 40 Nb - WN | 2h | 2018-02-14 08:00 | 2018-02-14 10:00 | 13.75d | G; H | 4h | Yes |
| 507 | 119.2 | Barrel-Noz Openning | 1d? | 2018-02-14 08:00 | 2018-02-14 17:00 | 13d | G; H | 16h | No |
| 508 | 120 | **Barrel Nozzzle Fit Up** | 1d? | 2018-02-14 08:00 | 2018-02-14 17:00 | 13d |  | 48h | No |
| 509 | 120.1 | Barrel-Noz Fit Up | 4h | 2018-02-14 08:00 | 2018-02-14 12:00 | 13.5d | F [200%]; W; H | 16h | Yes |
| 510 | 120.2 | Barrel-Noz Fit Up | 1d? | 2018-02-14 08:00 | 2018-02-14 17:00 | 13d | F [200%]; W; H | 32h | No |
| 511 | 121 | **Barrel Noz Fit Up Inspection** | 0.06d | 2018-02-14 08:00 | 2018-02-14 08:30 | 13.94d |  | 1h | No |
| 512 | 121.1 | Barrel-Noz Inspn N5A,N5B,N6A,N6B | 0.5h | 2018-02-14 08:00 | 2018-02-14 08:30 | 13.94d | INS | 0.5h | Yes |
| 513 | 121.2 | Barrel-Noz Inspn N5A,N5B,N6A,N6B | 0.5h | 2018-02-14 08:00 | 2018-02-14 08:30 | 13.94d | INS | 0.5h | Yes |
| 514 | 122 | **Barrel Nozzle Welding** | 1d? | 2018-02-14 08:00 | 2018-02-14 17:00 | 13d |  | 35.62h | No |
| 515 | 122.1 | Barrel Noz Welding Arrangement | 0.5h | 2018-02-14 08:00 | 2018-02-14 08:30 | 13.94d | T | 0.5h | Yes |
| 516 | 122.2 | Barrel-Noz Welding N5A,N5B,N6A,N6B | 0.71h | 2018-02-14 08:00 | 2018-02-14 08:42 | 13.91d | W; H | 1.42h | Yes |
| 517 | 122.3 | Barrel-Noz Welding N5A,N5B,N6A,N6B | 0.5h | 2018-02-14 08:00 | 2018-02-14 08:30 | 13.94d | W; H | 1h | Yes |
| 518 | 122.4 | Barrel Noz Root Dp N5A,N5B,N6A,N6B | 1d? | 2018-02-14 08:00 | 2018-02-14 17:00 | 13d | F; H | 16h | Yes |
| 519 | 122.5 | Barrel-Noz Inner Welding N5A,N5B,N6A,N6B | 0.35h | 2018-02-14 08:00 | 2018-02-14 08:21 | 13.96d | W; H | 0.7h | Yes |
| 520 | 122.6 | Barrel-Noz Inner Welding N5A,N5B,N6A,N6B | 1d? | 2018-02-14 08:00 | 2018-02-14 17:00 | 13d | W; H | 16h | No |
| 521 | 123 | **Barrel Noz Inner Weld Flush Grind** | 0.25d | 2018-02-14 08:00 | 2018-02-14 10:00 | 13.75d |  | 6h | No |
| 522 | 123.1 | Barrel All Welding Dressup & Dp | 2h | 2018-02-14 08:00 | 2018-02-14 10:00 | 13.75d | G [200%] | 4h | Yes |
| 523 | 123.2 | Barrel-Barrel Nde Clearence | 2h | 2018-02-14 08:00 | 2018-02-14 10:00 | 13.75d | F | 2h | Yes |
| 524 | 124 | Fl Head Fabrication | 1d? | 2018-02-14 08:00 | 2018-02-14 17:00 | 13d |  |  | No |
| 525 | 125 | **Flaoting Head Dish Forming** | 0.25d | 2018-02-14 08:00 | 2018-02-14 10:00 | 13.75d |  | 8.66h | No |
| 526 | 125.1 | Fl Head Dish Pl Issue | 2h | 2018-02-14 08:00 | 2018-02-14 10:00 | 13.75d | T | 2h | Yes |
| 527 | 125.2 | Fl Head Pl Marking | 2h | 2018-02-14 08:00 | 2018-02-14 10:00 | 13.75d | F; H | 4h | Yes |
| 528 | 125.3 | Fl Head Pl Stamping | 0.5h | 2018-02-14 08:00 | 2018-02-14 08:30 | 13.94d | F; H | 1h | Yes |
| 529 | 125.4 | Fl Head Pl Cutting | 0.33h | 2018-02-14 08:00 | 2018-02-14 08:19 | 13.96d | C; H | 0.66h | Yes |
| 530 | 125.5 | Fl Head Pl Grinding | 1h | 2018-02-14 08:00 | 2018-02-14 09:00 | 13.88d | G | 1h | Yes |

| ID | WBS | Task | Duration | Start | Finish | Total slack | Resources | Work | Text1 |
| --- | --- | --- | --- | --- | --- | --- | --- | --- | --- |
| 531 | 126 | **Fl Head Formig** | 14d | 2018-02-14 08:00 | 2018-03-05 17:00 | 0d |  | 122h | No |
| 532 | 126.1 | Fl Head Forming | 14d | 2018-02-14 08:00 | 2018-03-05 17:00 | 0d | SC | 112h | Yes |
| 533 | 126.2 | Fl Head Profile Check | 5h | 2018-02-14 08:00 | 2018-02-14 14:00 | 13.38d | F; H | 10h | Yes |
| 534 | 127 | **Fl Head Cutting** | 0.38d | 2018-02-14 08:00 | 2018-02-14 11:00 | 13.62d |  | 12h | No |
| 535 | 127.1 | Fl Head Marking | 3h | 2018-02-14 08:00 | 2018-02-14 11:00 | 13.62d | F; H | 6h | Yes |
| 536 | 127.2 | Fl Head Cutting | 3h | 2018-02-14 08:00 | 2018-02-14 11:00 | 13.62d | C; H | 6h | Yes |
| 537 | 128 | **Fl Head Ep** | 0.25d | 2018-02-14 08:00 | 2018-02-14 10:00 | 13.75d |  | 4h | No |
| 538 | 128.1 | Fl Head Grinding | 2h | 2018-02-14 08:00 | 2018-02-14 10:00 | 13.75d | G; H | 4h | Yes |
| 539 | 129 | **Fl Head Fit Up** | 0.5d | 2018-02-14 08:00 | 2018-02-14 12:00 | 13.5d |  | 16h | No |
| 540 | 129.1 | Fl Head Fit Up with flange | 4h | 2018-02-14 08:00 | 2018-02-14 12:00 | 13.5d | F [200%]; W; H | 16h | Yes |
| 541 | 130 | **Fl Head Welding** | 1d? | 2018-02-14 08:00 | 2018-02-14 17:00 | 13d |  | 80h | No |
| 542 | 130.1 | Fl Head Welding | 4h | 2018-02-14 08:00 | 2018-02-14 12:00 | 13.5d | W; H | 8h | Yes |
| 543 | 130.2 | Fl Head Pp Plate Fit Up | 1d? | 2018-02-14 08:00 | 2018-02-14 17:00 | 13d | F [200%]; H; W | 32h | No |
| 544 | 130.3 | Fl Head Pp Pl Welding | 1d? | 2018-02-14 08:00 | 2018-02-14 17:00 | 13d | W; H | 16h | No |
| 545 | 130.4 | Fl Head Pp Pl Level Grinding | 1d? | 2018-02-14 08:00 | 2018-02-14 17:00 | 13d | F; H | 16h | No |
| 546 | 130.5 | Fl Head Inspection | 1d? | 2018-02-14 08:00 | 2018-02-14 17:00 | 13d | F | 8h | No |
| 547 | 131 | **Fl Head Sr & Machining** | 1d? | 2018-02-14 08:00 | 2018-02-14 17:00 | 13d |  | 26h | No |
| 548 | 131.1 | Fl Head Sr | 1d? | 2018-02-14 08:00 | 2018-02-14 17:00 | 13d | SC | 8h | Yes |
| 549 | 131.2 | Fl Head Final Machining | 4h | 2018-02-14 08:00 | 2018-02-14 12:00 | 13.5d | SC | 4h | Yes |
| 550 | 131.3 | Fl Head Hole Marking | 2h | 2018-02-14 08:00 | 2018-02-14 10:00 | 13.75d | F; H | 4h | Yes |
| 551 | 131.4 | Fl Head Hole Drilling | 4h | 2018-02-14 08:00 | 2018-02-14 12:00 | 13.5d | SC | 4h | Yes |
| 552 | 131.5 | Fl Head Final Inspection | 3h | 2018-02-14 08:00 | 2018-02-14 11:00 | 13.62d | F; H | 6h | Yes |
| 553 | 132 | Tube Bundle Fabrication | 1d? | 2018-02-14 08:00 | 2018-02-14 17:00 | 13d |  |  | No |
| 554 | 133 | **Tube Bundle Assy** | 1.5d | 2018-02-14 08:00 | 2018-02-15 12:00 | 12.5d |  | 56h | No |
| 555 | 133.1 | Frame Set Up & Tube Sht Set Up | 12h | 2018-02-14 08:00 | 2018-02-15 12:00 | 12.5d | F [200%]; W | 36h | Yes |
| 556 | 133.2 | Skeliton Assy | 4h | 2018-02-14 08:00 | 2018-02-14 12:00 | 13.5d | F [200%]; H [300%] | 20h | Yes |

| ID | WBS | Task | Duration | Start | Finish | Total slack | Resources | Work | Text1 |
| --- | --- | --- | --- | --- | --- | --- | --- | --- | --- |
| 557 | 134 | **Tube Insert** | 2.19d? | 2018-02-14 08:00 | 2018-02-16 09:30 | 11.81d |  | 167.5h | No |
| 558 | 134.1 | Tube Insert 210NOS | 17.5h | 2018-02-14 08:00 | 2018-02-16 09:30 | 11.81d | F; H [400%] | 87.5h | Yes |
| 559 | 134.2 | Seal Rod Insert & Weld | 1d? | 2018-02-14 08:00 | 2018-02-14 17:00 | 13d | F [200%]; W; H [200%] | 40h | No |
| 560 | 134.3 | Tube Insert | 1d? | 2018-02-14 08:00 | 2018-02-14 17:00 | 13d | F; H [400%] | 40h | No |
| 561 | 135 | **Sliding Strip Fit Up Welding** | 3.1d | 2018-02-14 08:00 | 2018-02-19 08:48 | 10.9d |  | 78.4h | No |
| 562 | 135.1 | Sealing Strip Fit Up | 12.4h | 2018-02-14 08:00 | 2018-02-15 13:24 | 12.45d | F; H | 24.8h | Yes |
| 563 | 135.2 | Sliding Strip Welding | 24.8h | 2018-02-14 08:00 | 2018-02-19 08:48 | 10.9d | W; H | 49.6h | Yes |
| 564 | 135.3 | Seal/Slid Trip Weld Grind | 4h | 2018-02-14 08:00 | 2018-02-14 12:00 | 13.5d | G | 4h | Yes |
| 565 | 136 | **Tube Bundle Insert** | 1d | 2018-02-14 08:00 | 2018-02-14 17:00 | 13d |  | 148h | No |
| 566 | 136.1 | Tube Bundle Insert In Shell | 8h | 2018-02-14 08:00 | 2018-02-14 17:00 | 13d | F [300%]; H [800%] | 88h | Yes |
| 567 | 136.2 | Fl Head Tube Sht Fixing | 4h | 2018-02-14 08:00 | 2018-02-14 12:00 | 13.5d | F [200%]; H [400%] | 24h | Yes |
| 568 | 136.3 | Test Flg & Gland Assy | 4h | 2018-02-14 08:00 | 2018-02-14 12:00 | 13.5d | F [300%]; H [600%] | 36h | Yes |
| 569 | 137 | **Tube Expansion In Grooves** | 0.09d | 2018-02-14 08:00 | 2018-02-14 08:45 | 13.91d |  | 6.72h | No |
| 570 | 137.1 | Tube Exp - St Side 1 Stage-210NOS | 0.75h | 2018-02-14 08:00 | 2018-02-14 08:45 | 13.91d | F; H [200%] | 2.25h | Yes |
| 571 | 137.2 | Tube Exp - Fl Side 1 Stage-210NOS | 0.75h | 2018-02-14 08:00 | 2018-02-14 08:45 | 13.91d | F; H [200%] | 2.25h | Yes |
| 572 | 137.3 | Tube Trimming Fl Side | 0.37h | 2018-02-14 08:00 | 2018-02-14 08:22 | 13.95d | F; H | 0.74h | Yes |
| 573 | 137.4 | Tube Exp Both Side 4 Stage | 0.37h | 2018-02-14 08:00 | 2018-02-14 08:22 | 13.95d | F [200%]; H [200%] | 1.48h | Yes |
| 574 | 138 | **Tube Exp- Pnuematic Test** | 1d? | 2018-02-14 08:00 | 2018-02-14 17:00 | 13d |  | 80h | No |
| 575 | 138.1 | Tube Exp Pnuematic Test | 1d? | 2018-02-14 08:00 | 2018-02-14 17:00 | 13d | F [200%]; H [200%] | 32h | No |
| 576 | 138.2 | Pnuematic Test Tpi Witness | 1d? | 2018-02-14 08:00 | 2018-02-14 17:00 | 13d | F; H | 16h | No |
| 577 | 138.3 | Cleaning | 1d? | 2018-02-14 08:00 | 2018-02-14 17:00 | 13d | F; H [300%] | 32h | No |
| 578 | 139 | **Tube Tube Sheet Welding- st Side** | 2.19d | 2018-02-14 08:00 | 2018-02-16 09:30 | 11.81d |  | 76.5h | No |
| 579 | 139.1 | Tube Welding - St Side Root | 17.5h | 2018-02-14 08:00 | 2018-02-16 09:30 | 11.81d | TW; H | 35h | Yes |
| 580 | 139.2 | Tube Welding - St Side Root Dp | 8h | 2018-02-14 08:00 | 2018-02-14 17:00 | 13d | F; H | 16h | Yes |
| 581 | 139.3 | Tube Welding - St Side Final Weld | 8.75h | 2018-02-14 08:00 | 2018-02-15 08:45 | 12.91d | TW; H | 17.5h | Yes |
| 582 | 139.4 | Tube Welding - St Side Final Dp | 4h | 2018-02-14 08:00 | 2018-02-14 12:00 | 13.5d | F; H | 8h | Yes |

| ID | WBS | Task | Duration | Start | Finish | Total slack | Resources | Work | Text1 |
| --- | --- | --- | --- | --- | --- | --- | --- | --- | --- |
| 583 | 140 | **Tube To Tube Sheet Welding - Fl Head Side** | 2.19d | 2018-02-14 08:00 | 2018-02-16 09:30 | 11.81d |  | 76.5h | No |
| 584 | 140.1 | Tube Welding - Flh Side Root | 17.5h | 2018-02-14 08:00 | 2018-02-16 09:30 | 11.81d | TW; H | 35h | Yes |
| 585 | 140.2 | Tube Welding - Flh Side Root Dp | 8h | 2018-02-14 08:00 | 2018-02-14 17:00 | 13d | F; H | 16h | Yes |
| 586 | 140.3 | Tube Welding - Flh Side Final Weld | 8.75h | 2018-02-14 08:00 | 2018-02-15 08:45 | 12.91d | TW; H | 17.5h | Yes |
| 587 | 140.4 | Tube Welding - Flh Side Final Dp | 4h | 2018-02-14 08:00 | 2018-02-14 12:00 | 13.5d | F; H | 8h | Yes |
| 588 | 141 | **Shell Side Hydro** | 1.5d | 2018-02-14 08:00 | 2018-02-15 12:00 | 12.5d |  | 74h | No |
| 589 | 141.1 | Shell Side Hydro | 12h | 2018-02-14 08:00 | 2018-02-15 12:00 | 12.5d | F [200%]; H [200%] | 48h | Yes |
| 590 | 141.2 | Shell Side Tpi Witness | 4h | 2018-02-14 08:00 | 2018-02-14 12:00 | 13.5d | F [200%] | 8h | Yes |
| 591 | 141.3 | De Watering & Dismantle Of Gland | 3h | 2018-02-14 08:00 | 2018-02-14 11:00 | 13.62d | F [200%]; H [400%] | 18h | Yes |
| 592 | 142 | **Channel Side Hydro** | 1.5d | 2018-02-14 08:00 | 2018-02-15 12:00 | 12.5d |  | 74h | No |
| 593 | 142.1 | Shell Side Hydro | 12h | 2018-02-14 08:00 | 2018-02-15 12:00 | 12.5d | F [200%]; H [200%] | 48h | Yes |
| 594 | 142.2 | Shell Side Tpi Witness | 4h | 2018-02-14 08:00 | 2018-02-14 12:00 | 13.5d | F [200%] | 8h | Yes |
| 595 | 142.3 | De Watering & Dismantle Of Gland | 3h | 2018-02-14 08:00 | 2018-02-14 11:00 | 13.62d | F [200%]; H [400%] | 18h | Yes |
| 596 | 143 | **Barrel Side Hydro** | 1.5d | 2018-02-14 08:00 | 2018-02-15 12:00 | 12.5d |  | 74h | No |
| 597 | 143.1 | Shell Side Hydro | 12h | 2018-02-14 08:00 | 2018-02-15 12:00 | 12.5d | F [200%]; H [200%] | 48h | Yes |
| 598 | 143.2 | Shell Side Tpi Witness | 4h | 2018-02-14 08:00 | 2018-02-14 12:00 | 13.5d | F [200%] | 8h | Yes |
| 599 | 143.3 | De Watering & Dismantle Of Gland | 3h | 2018-02-14 08:00 | 2018-02-14 11:00 | 13.62d | F [200%]; H [400%] | 18h | Yes |
| 600 | 144 | **Nitrogen Purging** | 1d? | 2018-02-14 08:00 | 2018-02-14 17:00 | 13d |  |  | No |
| 601 | 144.1 | Blind & Nitrogen Purging | 1d? | 2018-02-14 08:00 | 2018-02-14 17:00 | 13d |  |  | No |
| 602 | 145 | **Painting** | 1d? | 2018-02-14 08:00 | 2018-02-14 17:00 | 13d | F; H [200%] | 96h | No |
| 603 | 145.1 | Primer | 1d? | 2018-02-14 08:00 | 2018-02-14 17:00 | 13d | P [300%] | 24h | No |
| 604 | 145.2 | Top Coat 1 | 1d? | 2018-02-14 08:00 | 2018-02-14 17:00 | 13d | P [300%] | 24h | No |
| 605 | 145.3 | Top Coat 2 | 1d? | 2018-02-14 08:00 | 2018-02-14 17:00 | 13d | P [300%] | 24h | No |
