# 4169-PostMortem-Estimation

Schedule from MS Project, 2018-02-14 to 2018-03-20.

## Calendars

- Standard: Mon-Fri 08:00-12:00, 13:00-17:00; Sat-Sun off.

## Resources

| Resource |
| --- |
| T |
| F |
| H |
| C |
| SC |
| G |
| W |
| L |
| RT |
| INS |
| TW |
| P |

## Schedule

| ID | WBS | Task | Duration | Start | Finish | Total slack | Resources | Work | Text1 |
| --- | --- | --- | --- | --- | --- | --- | --- | --- | --- |
| 1 | 1 | **Dish Forming - 16T x 832 OD - 02 Nos** | 7d? | 2018-02-14 08:00 | 2018-02-22 17:00 | 18d |  | 115h |  |
| 2 | 1.1 | Bar Dish Blank Issuence (channel & shell) | 4h | 2018-02-14 08:00 | 2018-02-14 12:00 | 24.5d | T | 4h |  |
| 3 | 1.2 | Bar-Dish Blank Marking 20TXOD 1150 | 1h | 2018-02-14 08:00 | 2018-02-14 09:00 | 24.88d | F; H | 2h |  |
| 4 | 1.3 | Bar-Dish Blank Marking Inspection | 1h | 2018-02-14 08:00 | 2018-02-14 09:00 | 24.88d | F; H | 2h |  |
| 5 | 1.4 | Bar-Dish Blank Cutting | 2h | 2018-02-14 08:00 | 2018-02-14 10:00 | 24.75d | C; H | 4h |  |
| 6 | 1.5 | Bar-Dish Forming | 7d | 2018-02-14 08:00 | 2018-02-22 17:00 | 18d | SC | 56h |  |
| 7 | 1.6 | Profile Insp | 1h | 2018-02-14 08:00 | 2018-02-14 09:00 | 24.88d | F; H | 2h |  |
| 8 | 1.7 | Heat Treatment Preparation | 1d? | 2018-02-14 08:00 | 2018-02-14 17:00 | 24d | SC | 8h | NA |
| 9 | 1.8 | Stress Releiving- Sub Cont | 1d? | 2018-02-14 08:00 | 2018-02-14 17:00 | 24d | SC | 8h | NA |
| 10 | 1.9 | Removal Of Spiders | 3h | 2018-02-14 08:00 | 2018-02-14 11:00 | 24.62d | F; H | 6h | No |
| 11 | 1.10 | Surface Preparation | 7h | 2018-02-14 08:00 | 2018-02-14 16:00 | 24.12d | G | 7h |  |
| 12 | 1.11 | Inspection | 1h | 2018-02-14 08:00 | 2018-02-14 09:00 | 24.88d | F | 1h |  |
| 13 | 1.12 | TPI Inspection | 4h | 2018-02-14 08:00 | 2018-02-14 12:00 | 24.5d | F | 4h |  |
| 14 | 1.13 | Sf Marking | 2h | 2018-02-14 08:00 | 2018-02-14 10:00 | 24.75d | F; H | 4h |  |
| 15 | 1.14 | Sf Cutting | 2h | 2018-02-14 08:00 | 2018-02-14 10:00 | 24.75d | C; H | 4h |  |
| 16 | 1.15 | Sf Gridning & Ep | 3h | 2018-02-14 08:00 | 2018-02-14 11:00 | 24.62d | G | 3h |  |
| 17 | 2 | Tube Sheet | 1d? | 2018-02-14 08:00 | 2018-02-14 17:00 | 24d |  |  |  |
| 18 | 3 | **Tube Sheet Machining 1 of 2** | 2d | 2018-02-14 08:00 | 2018-02-15 17:00 | 23d |  | 16h |  |
| 19 | 3.1 | Inward Inspection | 4h | 2018-02-14 08:00 | 2018-02-14 12:00 | 24.5d |  |  |  |
| 20 | 3.2 | Tube Sheet M/C 1/2 | 2d | 2018-02-14 08:00 | 2018-02-15 17:00 | 23d | SC | 16h |  |
| 21 | 4 | **Tube Sheet Drilling 1 of 2** | 20.75d | 2018-02-14 08:00 | 2018-03-14 15:00 | 4.25d |  | 235h |  |
| 22 | 4.1 | Tube Sheet Drilling 1/2 | 166h | 2018-02-14 08:00 | 2018-03-14 15:00 | 4.25d | SC | 166h |  |
| 23 | 4.2 | Exp Groove + Welding Groove 1/2 - 5 min / hole | 48h | 2018-02-14 08:00 | 2018-02-21 17:00 | 19d | SC | 48h |  |
| 24 | 4.3 | Tie Rod, Pulling, Lifting Hole 1/2 | 3h | 2018-02-14 08:00 | 2018-02-14 11:00 | 24.62d | SC | 3h |  |
| 25 | 4.4 | Pass Partition Groove M/C 1/2 | 12h | 2018-02-14 08:00 | 2018-02-15 12:00 | 23.5d | SC | 12h |  |
| 26 | 4.5 | Cleaning , Go/No Go Check 1/2 | 2h | 2018-02-14 08:00 | 2018-02-14 10:00 | 24.75d | F; H | 4h |  |
| 27 | 4.6 | Final Inspection 1/2 | 1h | 2018-02-14 08:00 | 2018-02-14 09:00 | 24.88d | F; H | 2h |  |

| ID | WBS | Task | Duration | Start | Finish | Total slack | Resources | Work | Text1 |
| --- | --- | --- | --- | --- | --- | --- | --- | --- | --- |
| 28 | 5 | **Tube Sheet Machining 2 of 2** | 1d? | 2018-02-14 08:00 | 2018-02-14 17:00 | 24d |  | 8h | No |
| 29 | 5.1 | Inward Inspection | 1d? | 2018-02-14 08:00 | 2018-02-14 17:00 | 24d |  |  | No |
| 30 | 5.2 | Tube Sheet M/C 2/2 | 1d? | 2018-02-14 08:00 | 2018-02-14 17:00 | 24d | SC | 8h | No |
| 31 | 6 | **Tube Sheet Drilling 2 of 2** | 1d? | 2018-02-14 08:00 | 2018-02-14 17:00 | 24d |  | 64h | No |
| 32 | 6.1 | Tube Sheet Drilling 2/2 | 1d? | 2018-02-14 08:00 | 2018-02-14 17:00 | 24d | SC | 8h | No |
| 33 | 6.2 | Exp Groove+Welding Groove 2/2 | 1d? | 2018-02-14 08:00 | 2018-02-14 17:00 | 24d | SC | 8h | No |
| 34 | 6.3 | Tie Rod, Pulling, Lifting Hole 2/2 | 1d? | 2018-02-14 08:00 | 2018-02-14 17:00 | 24d | SC | 8h | No |
| 35 | 6.4 | Pass Partition Groove M/C 2/2 | 1d? | 2018-02-14 08:00 | 2018-02-14 17:00 | 24d | SC | 8h | No |
| 36 | 6.5 | Cleaning ,Go/No Go Check 2/2 | 1d? | 2018-02-14 08:00 | 2018-02-14 17:00 | 24d | F; H | 16h | No |
| 37 | 6.6 | Final Inspection 2/2 | 1d? | 2018-02-14 08:00 | 2018-02-14 17:00 | 24d | F; H | 16h | No |
| 38 | 7 | Nozzle Fabrication | 1d? | 2018-02-14 08:00 | 2018-02-14 17:00 | 24d |  |  |  |
| 39 | 8 | **Sh Noz Pipe Marking** | 0.12d | 2018-02-14 08:00 | 2018-02-14 09:00 | 24.88d |  | 4.5h |  |
| 40 | 8.1 | 6"NB - 2 Nos | 0.75h | 2018-02-14 08:00 | 2018-02-14 08:45 | 24.91d | F; H | 1.5h |  |
| 41 | 8.2 | 2" NB Mp Con - 2 Nos | 1h | 2018-02-14 08:00 | 2018-02-14 09:00 | 24.88d | F; H | 2h |  |
| 42 | 8.3 | Inspection of Marking | 0.5h | 2018-02-14 08:00 | 2018-02-14 08:30 | 24.94d | F; H | 1h |  |
| 43 | 9 | **Sh Noz Pipe Cutting** | 1.25d | 2018-02-14 08:00 | 2018-02-15 10:00 | 23.75d |  | 23h |  |
| 44 | 9.1 | 6"NB - 2 Nos | 10h | 2018-02-14 08:00 | 2018-02-15 10:00 | 23.75d | C; H | 20h |  |
| 45 | 9.2 | 2" NB Mp Con - 2 Nos | 1h | 2018-02-14 08:00 | 2018-02-14 09:00 | 24.88d | C; H | 2h |  |
| 46 | 9.3 | Inspection | 0.5h | 2018-02-14 08:00 | 2018-02-14 08:30 | 24.94d | C; H | 1h |  |
| 47 | 10 | **Sh Noz Pipe Ep** | 0.25d | 2018-02-14 08:00 | 2018-02-14 10:00 | 24.75d |  | 8h |  |
| 48 | 10.1 | 6"NB - 2 Nos | 2h | 2018-02-14 08:00 | 2018-02-14 10:00 | 24.75d | C; H | 4h |  |
| 49 | 10.2 | 2" NB Mp Con - 2 Nos | 1h | 2018-02-14 08:00 | 2018-02-14 09:00 | 24.88d | C; H | 2h |  |
| 50 | 10.3 | Inspection | 1h | 2018-02-14 08:00 | 2018-02-14 09:00 | 24.88d | C; H | 2h |  |
| 51 | 11 | **Sh Noz+Flg Fitup** | 0.25d | 2018-02-14 08:00 | 2018-02-14 10:00 | 24.75d |  | 16h |  |
| 52 | 11.1 | 6"NB - 2 Nos | 2h | 2018-02-14 08:00 | 2018-02-14 10:00 | 24.75d | F [200%]; W; H | 8h |  |
| 53 | 11.2 | 2" NB Mp Con - 2 Nos | 1h | 2018-02-14 08:00 | 2018-02-14 09:00 | 24.88d | F [200%]; W; H | 4h |  |
| 54 | 11.3 | Inspection | 1h | 2018-02-14 08:00 | 2018-02-14 09:00 | 24.88d | F [200%]; W; H | 4h |  |

| ID | WBS | Task | Duration | Start | Finish | Total slack | Resources | Work |
| --- | --- | --- | --- | --- | --- | --- | --- | --- |
| 55 | 12 | **Sh Noz Pipe+Flg Welding** | 0.56d | 2018-02-14 08:00 | 2018-02-14 13:30 | 24.44d |  | 12.5h |
| 56 | 12.1 | 6"NB - 2 Nos | 4.5h | 2018-02-14 08:00 | 2018-02-14 13:30 | 24.44d | W; H | 9h |
| 57 | 12.2 | 2" NB Mp Con - 2 Nos | 0.75h | 2018-02-14 08:00 | 2018-02-14 08:45 | 24.91d | W; H | 1.5h |
| 58 | 12.3 | Inspection | 1h | 2018-02-14 08:00 | 2018-02-14 09:00 | 24.88d | W; H | 2h |
| 59 | 13 | **Sh Noz Pipe Profile Marking** | 0.25d | 2018-02-14 08:00 | 2018-02-14 10:00 | 24.75d |  | 8h |
| 60 | 13.1 | 6"NB - 2 Nos | 2h | 2018-02-14 08:00 | 2018-02-14 10:00 | 24.75d | F; H | 4h |
| 61 | 13.2 | 2" NB Mp Con - 2 Nos | 1h | 2018-02-14 08:00 | 2018-02-14 09:00 | 24.88d | F; H | 2h |
| 62 | 13.3 | Inspection | 1h | 2018-02-14 08:00 | 2018-02-14 09:00 | 24.88d | F; H | 2h |
| 63 | 14 | **Sh Nozzle Pipe Profile Cutting** | 0.25d | 2018-02-14 08:00 | 2018-02-14 10:00 | 24.75d |  | 8h |
| 64 | 14.1 | 6"NB - 2 Nos | 2h | 2018-02-14 08:00 | 2018-02-14 10:00 | 24.75d | G; H | 4h |
| 65 | 14.2 | 2" NB Mp Con - 2 Nos | 1h | 2018-02-14 08:00 | 2018-02-14 09:00 | 24.88d | G; H | 2h |
| 66 | 14.3 | Inspection | 1h | 2018-02-14 08:00 | 2018-02-14 09:00 | 24.88d | G; H | 2h |
| 67 | 15 | **Sh Nozzle Pipe Profile Ep** | 0.25d | 2018-02-14 08:00 | 2018-02-14 10:00 | 24.75d |  | 8h |
| 68 | 15.1 | 6"NB - 2 Nos | 2h | 2018-02-14 08:00 | 2018-02-14 10:00 | 24.75d | G; H | 4h |
| 69 | 15.2 | 2" NB Mp Con - 2 Nos | 1h | 2018-02-14 08:00 | 2018-02-14 09:00 | 24.88d | G; H | 2h |
| 70 | 15.3 | Inspection | 1h | 2018-02-14 08:00 | 2018-02-14 09:00 | 24.88d | G; H | 2h |
| 71 | 16 | **Ch Noz Pipe Marking** | 0.12d | 2018-02-14 08:00 | 2018-02-14 09:00 | 24.88d |  | 5h |
| 72 | 16.1 | 6"NB - 2 Nos | 1h | 2018-02-14 08:00 | 2018-02-14 09:00 | 24.88d | F; H | 2h |
| 73 | 16.2 | 2" NB Mp Con - 2 Nos | 0.5h | 2018-02-14 08:00 | 2018-02-14 08:30 | 24.94d | F; H | 1h |
| 74 | 16.3 | Inspection | 1h | 2018-02-14 08:00 | 2018-02-14 09:00 | 24.88d | F; H | 2h |
| 75 | 17 | **Ch Noz Pipe Cutting** | 1.25d | 2018-02-14 08:00 | 2018-02-15 10:00 | 23.75d |  | 24h |
| 76 | 17.1 | 6"NB - 2 Nos | 10h | 2018-02-14 08:00 | 2018-02-15 10:00 | 23.75d | C; H | 20h |
| 77 | 17.2 | 2" NB Mp Con - 2 Nos | 1h | 2018-02-14 08:00 | 2018-02-14 09:00 | 24.88d | C; H | 2h |
| 78 | 17.3 | Inspection | 1h | 2018-02-14 08:00 | 2018-02-14 09:00 | 24.88d | C; H | 2h |

| ID | WBS | Task | Duration | Start | Finish | Total slack | Resources | Work |
| --- | --- | --- | --- | --- | --- | --- | --- | --- |
| 79 | 18 | **Ch Noz Pipe Ep** | 0.25d | 2018-02-14 08:00 | 2018-02-14 10:00 | 24.75d |  | 8h |
| 80 | 18.1 | 6"NB - 2 Nos | 2h | 2018-02-14 08:00 | 2018-02-14 10:00 | 24.75d | G; H | 4h |
| 81 | 18.2 | 2" NB Mp Con - 2 Nos | 1h | 2018-02-14 08:00 | 2018-02-14 09:00 | 24.88d | G; H | 2h |
| 82 | 18.3 | Inspection | 1h | 2018-02-14 08:00 | 2018-02-14 09:00 | 24.88d | G; H | 2h |
| 83 | 19 | **Ch Noz+Flg Fit Up** | 0.25d | 2018-02-14 08:00 | 2018-02-14 10:00 | 24.75d |  | 16h |
| 84 | 19.1 | 6"NB - 2 Nos | 2h | 2018-02-14 08:00 | 2018-02-14 10:00 | 24.75d | F [200%]; W; H | 8h |
| 85 | 19.2 | 2" NB Mp Con - 2 Nos | 1h | 2018-02-14 08:00 | 2018-02-14 09:00 | 24.88d | F [200%]; W; H | 4h |
| 86 | 19.3 | Inspection | 1h | 2018-02-14 08:00 | 2018-02-14 09:00 | 24.88d | F [200%]; W; H | 4h |
| 87 | 20 | **Ch Noz Pipe+Flg Welding** | 0.75d | 2018-02-14 08:00 | 2018-02-14 15:00 | 24.25d |  | 15.5h |
| 88 | 20.1 | 6"NB - 2 Nos | 6h | 2018-02-14 08:00 | 2018-02-14 15:00 | 24.25d | W; H | 12h |
| 89 | 20.2 | 2" NB Mp Con - 2 Nos | 0.75h | 2018-02-14 08:00 | 2018-02-14 08:45 | 24.91d | W; H | 1.5h |
| 90 | 20.3 | Inspection | 1h | 2018-02-14 08:00 | 2018-02-14 09:00 | 24.88d | W; H | 2h |
| 91 | 21 | **Ch Noz Pipe Profile Marking** | 0.25d | 2018-02-14 08:00 | 2018-02-14 10:00 | 24.75d |  | 8h |
| 92 | 21.1 | 6"NB - 2 Nos | 2h | 2018-02-14 08:00 | 2018-02-14 10:00 | 24.75d | F; H | 4h |
| 93 | 21.2 | 2" NB Mp Con - 2 Nos | 1h | 2018-02-14 08:00 | 2018-02-14 09:00 | 24.88d | F; H | 2h |
| 94 | 21.3 | Inspection | 1h | 2018-02-14 08:00 | 2018-02-14 09:00 | 24.88d | F; H | 2h |
| 95 | 22 | **Ch Nozzle Pipe Profile Cutting** | 0.25d | 2018-02-14 08:00 | 2018-02-14 10:00 | 24.75d |  | 8h |
| 96 | 22.1 | 6"NB - 2 Nos | 2h | 2018-02-14 08:00 | 2018-02-14 10:00 | 24.75d | F; H | 4h |
| 97 | 22.2 | 2" NB Mp Con - 2 Nos | 1h | 2018-02-14 08:00 | 2018-02-14 09:00 | 24.88d | F; H | 2h |
| 98 | 22.3 | Inspection | 1h | 2018-02-14 08:00 | 2018-02-14 09:00 | 24.88d | F; H | 2h |
| 99 | 23 | **Ch Nozzle Pipe Profile Ep** | 0.25d | 2018-02-14 08:00 | 2018-02-14 10:00 | 24.75d |  | 7h |
| 100 | 23.1 | 6"NB - 2 Nos | 2h | 2018-02-14 08:00 | 2018-02-14 10:00 | 24.75d | G; H | 4h |
| 101 | 23.2 | 2" NB Mp Con - 2 Nos | 1h | 2018-02-14 08:00 | 2018-02-14 09:00 | 24.88d | G; H | 2h |
| 102 | 23.3 | Inspection | 0.5h | 2018-02-14 08:00 | 2018-02-14 08:30 | 24.94d | G; H | 1h |
| 103 | 24 | Saddle & Other | 1d | 2018-02-14 08:00 | 2018-02-14 17:00 | 24d |  |  |

| ID | WBS | Task | Duration | Start | Finish | Total slack | Resources | Work | Text1 |
| --- | --- | --- | --- | --- | --- | --- | --- | --- | --- |
| 104 | 25 | **Top Saddle Fabrrication** | 0.12d | 2018-02-14 08:00 | 2018-02-14 09:00 | 24.88d |  | 3.5h |  |
| 105 | 25.1 | Plate Issuence | 1h | 2018-02-14 08:00 | 2018-02-14 09:00 | 24.88d |  |  |  |
| 106 | 25.2 | Base Marking | 0.25h | 2018-02-14 08:00 | 2018-02-14 08:15 | 24.97d | F; H | 0.5h |  |
| 107 | 25.3 | Web Pl Marking | 0.75h | 2018-02-14 08:00 | 2018-02-14 08:45 | 24.91d | F; H | 1.5h |  |
| 108 | 25.4 | Ribs Marking | 0.75h | 2018-02-14 08:00 | 2018-02-14 08:45 | 24.91d | F; H | 1.5h |  |
| 109 | 26 | **Top Sadlle Plate Cutting** | 0.41d | 2018-02-14 08:00 | 2018-02-14 11:15 | 24.59d |  | 10h |  |
| 110 | 26.1 | Base Cutting | 0.5h | 2018-02-14 08:00 | 2018-02-14 08:30 | 24.94d | C; H | 1h |  |
| 111 | 26.2 | Web Pl Cutting | 0.75h | 2018-02-14 08:00 | 2018-02-14 08:45 | 24.91d | C; H | 1.5h |  |
| 112 | 26.3 | Ribs Cutting | 0.5h | 2018-02-14 08:00 | 2018-02-14 08:30 | 24.94d | C; H | 1h |  |
| 113 | 26.4 | Grinding Of Above | 3.25h | 2018-02-14 08:00 | 2018-02-14 11:15 | 24.59d | G [200%] | 6.5h |  |
| 114 | 27 | **Saddle Fit Up & Welding** | 0.88d | 2018-02-14 08:00 | 2018-02-14 16:00 | 24.12d |  | 50h |  |
| 115 | 27.1 | Base + Web Fit Up | 2h | 2018-02-14 08:00 | 2018-02-14 10:00 | 24.75d | F; H [200%]; W | 8h |  |
| 116 | 27.2 | Base + Web Welding | 7h | 2018-02-14 08:00 | 2018-02-14 16:00 | 24.12d | W; H | 14h |  |
| 117 | 27.3 | Ribs+Web Fit Up | 2h | 2018-02-14 08:00 | 2018-02-14 10:00 | 24.75d | F; H [200%]; W | 8h |  |
| 118 | 27.4 | Ribs+Web Welding | 5h | 2018-02-14 08:00 | 2018-02-14 14:00 | 24.38d | W [200%]; H [200%] | 20h |  |
| 119 | 28 | **Davit Pipe Fabrication** | 1.06d? | 2018-02-14 08:00 | 2018-02-15 08:30 | 23.94d |  | 97.5h |  |
| 120 | 28.1 | Pipe Transfere | 2h | 2018-02-14 08:00 | 2018-02-14 10:00 | 24.75d | H [400%] | 8h |  |
| 121 | 28.2 | Pipe Marking 6 Nos | 0.75h | 2018-02-14 08:00 | 2018-02-14 08:45 | 24.91d | F; H | 1.5h |  |
| 122 | 28.3 | Support Pl Marking | 1h | 2018-02-14 08:00 | 2018-02-14 09:00 | 24.88d | F; H | 2h |  |
| 123 | 28.4 | Gusset Pl Marking | 1h | 2018-02-14 08:00 | 2018-02-14 09:00 | 24.88d | F; H | 2h |  |
| 124 | 28.5 | Base Hub Marking | 1d? | 2018-02-14 08:00 | 2018-02-14 17:00 | 24d | F; H | 16h | ?? |
| 125 | 28.6 | Pipe Cutting 6 Nos | 1.5h | 2018-02-14 08:00 | 2018-02-14 09:30 | 24.81d | C; H | 3h |  |
| 126 | 28.7 | Support Pl Cutting | 0.25h | 2018-02-14 08:00 | 2018-02-14 08:15 | 24.97d | C; H | 0.5h |  |
| 127 | 28.8 | Pipe Grinding 6 Nos | 1.5h | 2018-02-14 08:00 | 2018-02-14 09:30 | 24.81d | F; H | 3h |  |
| 128 | 28.9 | Support Pl Grinding 10 Nos | 0.5h | 2018-02-14 08:00 | 2018-02-14 08:30 | 24.94d | G | 0.5h |  |
| 129 | 28.10 | Pivot Pl Grinding | 1d? | 2018-02-14 08:00 | 2018-02-14 17:00 | 24d | G | 8h | ?? |
| 130 | 28.11 | Pipe Fit Up 2 Nos | 4h | 2018-02-14 08:00 | 2018-02-14 12:00 | 24.5d | F; H; W | 12h |  |
| 131 | 28.12 | Pipe Welding 2 Nos | 8.5h | 2018-02-14 08:00 | 2018-02-15 08:30 | 23.94d | W; H | 17h |  |
| 132 | 28.13 | Pivot Pl Welding | 1d? | 2018-02-14 08:00 | 2018-02-14 17:00 | 24d | W; H | 16h | ?? |
| 133 | 28.14 | Support Pl Welding 4 Nos | 4h | 2018-02-14 08:00 | 2018-02-14 12:00 | 24.5d | F; H | 8h |  |

| ID | WBS | Task | Duration | Start | Finish | Total slack | Resources | Work | Text1 |
| --- | --- | --- | --- | --- | --- | --- | --- | --- | --- |
| 134 | 29 | **Lifting Lug Pad** | 0.31d | 2018-02-14 08:00 | 2018-02-14 10:30 | 24.69d |  | 11h |  |
| 135 | 29.1 | Plate Issuence | 1h | 2018-02-14 08:00 | 2018-02-14 09:00 | 24.88d |  |  |  |
| 136 | 29.2 | Lifting Lug Pad Marking | 1h | 2018-02-14 08:00 | 2018-02-14 09:00 | 24.88d | F; H | 2h |  |
| 137 | 29.3 | Lifting Lug Pad Cutting | 2.5h | 2018-02-14 08:00 | 2018-02-14 10:30 | 24.69d | C; H | 5h |  |
| 138 | 29.4 | Lifting Lugs Pad Grinding | 2h | 2018-02-14 08:00 | 2018-02-14 10:00 | 24.75d | G; H | 4h |  |
| 139 | 30 | **Lifting Lug Preparation** | 0.25d | 2018-02-14 08:00 | 2018-02-14 10:00 | 24.75d |  | 14h |  |
| 140 | 30.1 | Lifting Lugs Marking | 1h | 2018-02-14 08:00 | 2018-02-14 09:00 | 24.88d | F; H | 2h |  |
| 141 | 30.2 | Lifting Lugs Cutting | 2h | 2018-02-14 08:00 | 2018-02-14 10:00 | 24.75d | C; H | 4h |  |
| 142 | 30.3 | Lifting Lugs Grinding | 2h | 2018-02-14 08:00 | 2018-02-14 10:00 | 24.75d | G; H | 4h |  |
| 143 | 30.4 | Lifting Lug Drilling | 2h | 2018-02-14 08:00 | 2018-02-14 10:00 | 24.75d | F; H | 4h |  |
| 144 | 31 | **Channel Cover Handle Prepataion** | 1d | 2018-02-14 08:00 | 2018-02-14 17:00 | 24d |  | 22h |  |
| 145 | 31.1 | Ch Cover Ring Forming | 8h | 2018-02-14 08:00 | 2018-02-14 17:00 | 24d | F; H | 16h | ?? |
| 146 | 31.2 | Sliding Sling Forming | 3h | 2018-02-14 08:00 | 2018-02-14 11:00 | 24.62d | F; H | 6h |  |
| 147 | 32 | **Insulation Ring Prparation** | 1d? | 2018-02-14 08:00 | 2018-02-14 17:00 | 24d |  | 64h | No |
| 148 | 32.1 | Insulaion Ring Marking | 8h | 2018-02-14 08:00 | 2018-02-14 17:00 | 24d | F; H | 16h | No |
| 149 | 32.2 | Insulaion Ring Cutting | 8h | 2018-02-14 08:00 | 2018-02-14 17:00 | 24d | C; H | 16h | No |
| 150 | 32.3 | Insulaion Ring Hole Marking | 1d? | 2018-02-14 08:00 | 2018-02-14 17:00 | 24d | F; H | 16h | No |
| 151 | 32.4 | Insulaion Ring Hole Drilling | 8h | 2018-02-14 08:00 | 2018-02-14 17:00 | 24d | F; H | 16h | No |
| 152 | 33 | Baffle & Tb Items Fab | 1d | 2018-02-14 08:00 | 2018-02-14 17:00 | 24d |  |  |  |
| 153 | 34 | **Baffle Preparation** | 1.25d | 2018-02-14 08:00 | 2018-02-15 10:00 | 23.75d |  | 36h |  |
| 154 | 34.1 | Baffle Plate Transfer | 4h | 2018-02-14 08:00 | 2018-02-14 12:00 | 24.5d |  |  |  |
| 155 | 34.2 | Baffle Marking | 10h | 2018-02-14 08:00 | 2018-02-15 10:00 | 23.75d | F; H | 20h |  |
| 156 | 34.3 | Baffle Profile Cutting | 8h | 2018-02-14 08:00 | 2018-02-14 17:00 | 24d | C; H | 16h |  |
| 157 | 35 | **Baffle Bend Removal & Stacking** | 1d | 2018-02-14 08:00 | 2018-02-14 17:00 | 24d |  | 32h |  |
| 158 | 35.1 | Baffle Pl Bend Removal | 8h | 2018-02-14 08:00 | 2018-02-14 17:00 | 24d | F; H [200%] | 24h |  |
| 159 | 35.2 | Baffle Pl Stacking Per 100mm | 4h | 2018-02-14 08:00 | 2018-02-14 12:00 | 24.5d | F; H | 8h |  |

| ID | WBS | Task | Duration | Start | Finish | Total slack | Resources | Work | Text1 |
| --- | --- | --- | --- | --- | --- | --- | --- | --- | --- |
| 160 | 36 | **Baffle Drilling** | 25d | 2018-02-14 08:00 | 2018-03-20 17:00 | 0d |  | 200h |  |
| 161 | 36.1 | Baffle Drilling | 200h | 2018-02-14 08:00 | 2018-03-20 17:00 | 0d | SC | 200h |  |
| 162 | 37 | **Baffle De Stacking & Chamfering** | 2.5d | 2018-02-14 08:00 | 2018-02-16 12:00 | 22.5d |  | 28h |  |
| 163 | 37.1 | Baffle De Stacking | 4h | 2018-02-14 08:00 | 2018-02-14 12:00 | 24.5d | F; H | 8h |  |
| 164 | 37.2 | Baffle Chamfering (70% of TS Holes * No of Baffles) | 20h | 2018-02-14 08:00 | 2018-02-16 12:00 | 22.5d | F | 20h |  |
| 165 | 38 | **Baffle Stacking & Through Hole Check** | 4.78d | 2018-02-14 08:00 | 2018-02-20 15:15 | 20.22d |  | 52.75h |  |
| 166 | 38.1 | Stacking | 0.5h | 2018-02-14 08:00 | 2018-02-14 08:30 | 24.94d | F; H | 1h |  |
| 167 | 38.2 | Baffle Hole Alingment | 0.25h | 2018-02-14 08:00 | 2018-02-14 08:15 | 24.97d | F; H | 0.5h |  |
| 168 | 38.3 | Baffle Hole Re Drill (Use 40% of Holes in Qty) | 38.25h | 2018-02-14 08:00 | 2018-02-20 15:15 | 20.22d | SC | 38.25h |  |
| 169 | 38.4 | Baffle Od Machining (100mm L * 700Ø = 3hrs) | 4h | 2018-02-14 08:00 | 2018-02-14 12:00 | 24.5d | SC | 4h |  |
| 170 | 38.5 | Baffle Cleaning (100mm L * 700Ø = 3hrs) | 3h | 2018-02-14 08:00 | 2018-02-14 11:00 | 24.62d | H [300%] | 9h |  |
| 171 | 39 | **Support Plate Marking** | 0.12d | 2018-02-14 08:00 | 2018-02-14 09:00 | 24.88d |  | 1.5h |  |
| 172 | 39.1 | Support Plate Transfer | 1h | 2018-02-14 08:00 | 2018-02-14 09:00 | 24.88d |  |  |  |
| 173 | 39.2 | Support Marking | 1h | 2018-02-14 08:00 | 2018-02-14 09:00 | 24.88d | SC | 1h |  |
| 174 | 39.3 | Support Profile Cutting | 0.5h | 2018-02-14 08:00 | 2018-02-14 08:30 | 24.94d | SC | 0.5h |  |
| 175 | 40 | **Support Plate Bend Removal** | 0.12d | 2018-02-14 08:00 | 2018-02-14 09:00 | 24.88d |  | 4.5h |  |
| 176 | 40.1 | Support Pl Bend Removal | 1h | 2018-02-14 08:00 | 2018-02-14 09:00 | 24.88d | F; H [300%] | 4h |  |
| 177 | 40.2 | Support Pl Stacking | 0.25h | 2018-02-14 08:00 | 2018-02-14 08:15 | 24.97d | F; H | 0.5h |  |
| 178 | 41 | **Support Plate Drilling** | 1.88d | 2018-02-14 08:00 | 2018-02-15 16:00 | 23.12d |  | 15h |  |
| 179 | 41.1 | Support Drilling | 15h | 2018-02-14 08:00 | 2018-02-15 16:00 | 23.12d | SC | 15h |  |
| 180 | 42 | **Sup Plate De Stacking & Chamfering** | 0.31d | 2018-02-14 08:00 | 2018-02-14 10:30 | 24.69d |  | 3h |  |
| 181 | 42.1 | Support De Stacking | 0.25h | 2018-02-14 08:00 | 2018-02-14 08:15 | 24.97d | F; H | 0.5h |  |
| 182 | 42.2 | Support Hole Chamfering | 2.5h | 2018-02-14 08:00 | 2018-02-14 10:30 | 24.69d | F | 2.5h |  |
| 183 | 43 | **Tie Rod Preparation** | 1d | 2018-02-14 08:00 | 2018-02-14 17:00 | 24d |  | 33h |  |
| 184 | 43.1 | Tie Rod Matl Transfere | 1h | 2018-02-14 08:00 | 2018-02-14 09:00 | 24.88d |  |  |  |
| 185 | 43.2 | Rod Cutting | 2h | 2018-02-14 08:00 | 2018-02-14 10:00 | 24.75d | F; H | 4h |  |
| 186 | 43.3 | Thread Machining | 5h | 2018-02-14 08:00 | 2018-02-14 14:00 | 24.38d | L | 5h |  |
| 187 | 43.4 | Joining | 8h | 2018-02-14 08:00 | 2018-02-14 17:00 | 24d | W; F; H | 24h | ?? |

| ID | WBS | Task | Duration | Start | Finish | Total slack | Resources | Work | Text1 |
| --- | --- | --- | --- | --- | --- | --- | --- | --- | --- |
| 188 | 44 | **Spacer Tube Preparation** | 0.38d | 2018-02-14 08:00 | 2018-02-14 11:00 | 24.62d |  | 15h |  |
| 189 | 44.1 | Spacer Tube Transfere | 1h | 2018-02-14 08:00 | 2018-02-14 09:00 | 24.88d |  |  |  |
| 190 | 44.2 | Length Cutting 237 Nos | 3h | 2018-02-14 08:00 | 2018-02-14 11:00 | 24.62d | F; H | 6h |  |
| 191 | 44.3 | Length Machining | 3h | 2018-02-14 08:00 | 2018-02-14 11:00 | 24.62d | L | 3h |  |
| 192 | 44.4 | Cleaninng | 2h | 2018-02-14 08:00 | 2018-02-14 10:00 | 24.75d | H [300%] | 6h |  |
| 193 | 45 | **Sealing Strip Preparation** | 0.5d | 2018-02-14 08:00 | 2018-02-14 12:00 | 24.5d |  | 34h |  |
| 194 | 45.1 | Sealing Strip Marking | 2h | 2018-02-14 08:00 | 2018-02-14 10:00 | 24.75d | F; H | 4h |  |
| 195 | 45.2 | Sealing Strip Cutting | 3.5h | 2018-02-14 08:00 | 2018-02-14 11:30 | 24.56d | C; H | 7h |  |
| 196 | 45.3 | Sealing Strip Bend Removal | 2h | 2018-02-14 08:00 | 2018-02-14 10:00 | 24.75d | F; H [200%] | 6h |  |
| 197 | 45.4 | Sealing Strip Grinding | 3h | 2018-02-14 08:00 | 2018-02-14 11:00 | 24.62d | G | 3h |  |
| 198 | 45.5 | Sealing Strip Joining | 4h | 2018-02-14 08:00 | 2018-02-14 12:00 | 24.5d | W; F; H | 12h |  |
| 199 | 45.6 | Sealing Strip Dress Up | 2h | 2018-02-14 08:00 | 2018-02-14 10:00 | 24.75d | G | 2h |  |
| 200 | 46 | **Sliding Strip Preparation** | 0.5d | 2018-02-14 08:00 | 2018-02-14 12:00 | 24.5d |  | 35h |  |
| 201 | 46.1 | Sliding Strip Marking | 2h | 2018-02-14 08:00 | 2018-02-14 10:00 | 24.75d | F; H | 4h |  |
| 202 | 46.2 | Sliding Strip Cutting | 3.5h | 2018-02-14 08:00 | 2018-02-14 11:30 | 24.56d | C; H | 7h |  |
| 203 | 46.3 | Sliding Strip Bend Removal | 2h | 2018-02-14 08:00 | 2018-02-14 10:00 | 24.75d | F; H [200%] | 6h |  |
| 204 | 46.4 | Sliding Strip Grinding | 4h | 2018-02-14 08:00 | 2018-02-14 12:00 | 24.5d | G | 4h |  |
| 205 | 46.5 | Sliding Strip Joining | 4h | 2018-02-14 08:00 | 2018-02-14 12:00 | 24.5d | W; F; H | 12h |  |
| 206 | 46.6 | Sliding Strip Dress Up | 2h | 2018-02-14 08:00 | 2018-02-14 10:00 | 24.75d | G | 2h |  |
| 207 | 47 | **Seal Rod Preparation** | 1d | 2018-02-14 08:00 | 2018-02-14 17:00 | 24d |  | 64h | No |
| 208 | 47.1 | Seal Rod Issuenece | 8h | 2018-02-14 08:00 | 2018-02-14 17:00 | 24d | T | 8h | No |
| 209 | 47.2 | Seal Rod Marking | 8h | 2018-02-14 08:00 | 2018-02-14 17:00 | 24d | F; H | 16h | No |
| 210 | 47.3 | Seal Rod Cutting | 8h | 2018-02-14 08:00 | 2018-02-14 17:00 | 24d | F; H | 16h | No |
| 211 | 47.4 | Seal Rod Bend Removal | 8h | 2018-02-14 08:00 | 2018-02-14 17:00 | 24d | F; H [200%] | 24h | No |
| 212 | 48 | Shell Fabrication | 8h | 2018-02-14 08:00 | 2018-02-14 17:00 | 24d |  |  |  |

| ID | WBS | Task | Duration | Start | Finish | Total slack | Resources | Work | Text1 |
| --- | --- | --- | --- | --- | --- | --- | --- | --- | --- |
| 213 | 49 | **Shell Marking & Cutting** | 0.19d | 2018-02-14 08:00 | 2018-02-14 09:30 | 24.81d |  | 5.5h |  |
| 214 | 49.1 | Sh Plate Trnasfer | 1h | 2018-02-14 08:00 | 2018-02-14 09:00 | 24.88d | T | 1h |  |
| 215 | 49.2 | Sh-Marking | 1.5h | 2018-02-14 08:00 | 2018-02-14 09:30 | 24.81d | F; H [200%] | 4.5h |  |
| 216 | 50 | **Shell Plate Cutting** | 0.34d | 2018-02-14 08:00 | 2018-02-14 10:45 | 24.66d |  | 8.25h |  |
| 217 | 50.1 | Sh-Cutting | 2.75h | 2018-02-14 08:00 | 2018-02-14 10:45 | 24.66d | C; H [200%] | 8.25h |  |
| 218 | 51 | **Sh Pl Side Grinding** | 1d | 2018-02-14 08:00 | 2018-02-14 17:00 | 24d |  | 56h |  |
| 219 | 51.1 | Sh Pl Side Bevel Cutting | 2h | 2018-02-14 08:00 | 2018-02-14 10:00 | 24.75d | F; H [300%] | 8h |  |
| 220 | 51.2 | Sh Pl Side Bevel Cutting | 2h | 2018-02-14 08:00 | 2018-02-14 10:00 | 24.75d | F; H [300%] | 8h |  |
| 221 | 51.3 | Sh Pl Side Bevel Cutting | 2h | 2018-02-14 08:00 | 2018-02-14 10:00 | 24.75d | F; H [300%] | 8h |  |
| 222 | 51.4 | Sh Pl Side Bevel Cutting | 8h | 2018-02-14 08:00 | 2018-02-14 17:00 | 24d | F; H [300%] | 32h | No |
| 223 | 52 | **Shell Plate Edge Preparation** | 0.56d | 2018-02-14 08:00 | 2018-02-14 13:30 | 24.44d |  | 26.5h |  |
| 224 | 52.1 | Sh-Bevel Grinding | 4.5h | 2018-02-14 08:00 | 2018-02-14 13:30 | 24.44d | G; H | 9h |  |
| 225 | 52.2 | Sh-Bevel Grinding | 4.5h | 2018-02-14 08:00 | 2018-02-14 13:30 | 24.44d | G; H | 9h |  |
| 226 | 52.3 | Sh-Bevel Grinding | 4.25h | 2018-02-14 08:00 | 2018-02-14 13:15 | 24.47d | G; H | 8.5h |  |
| 227 | 53 | **Shell Pre Bending** | 0.25d | 2018-02-14 08:00 | 2018-02-14 10:00 | 24.75d |  | 18h |  |
| 228 | 53.1 | Sh-Pre Bend | 2h | 2018-02-14 08:00 | 2018-02-14 10:00 | 24.75d | F [200%]; H | 6h |  |
| 229 | 53.2 | Sh-Pre Bend | 2h | 2018-02-14 08:00 | 2018-02-14 10:00 | 24.75d | F [200%]; H | 6h |  |
| 230 | 53.3 | Sh-Pre Bend | 2h | 2018-02-14 08:00 | 2018-02-14 10:00 | 24.75d | F [200%]; H | 6h |  |
| 231 | 54 | **Shell Pl Pre Bend Cut of** | 0.12d | 2018-02-14 08:00 | 2018-02-14 09:00 | 24.88d |  | 12h |  |
| 232 | 54.1 | Sh-Pre Bend Cut of | 1h | 2018-02-14 08:00 | 2018-02-14 09:00 | 24.88d | F [200%]; H; C | 4h |  |
| 233 | 54.2 | Sh-Pre Bend Cut of | 1h | 2018-02-14 08:00 | 2018-02-14 09:00 | 24.88d | F [200%]; H; C | 4h |  |
| 234 | 54.3 | Sh-Pre Bend Cut of | 1h | 2018-02-14 08:00 | 2018-02-14 09:00 | 24.88d | F [200%]; H; C | 4h |  |
| 235 | 55 | **Shell Plate Ls Ep** | 1d? | 2018-02-14 08:00 | 2018-02-14 17:00 | 24d |  | 27h |  |
| 236 | 55.1 | Sh-Pre Bend Ls Ep | 2h | 2018-02-14 08:00 | 2018-02-14 10:00 | 24.75d | F; H | 4h |  |
| 237 | 55.2 | Sh-Pre Bend Ls Ep | 2h | 2018-02-14 08:00 | 2018-02-14 10:00 | 24.75d | F; H | 4h |  |
| 238 | 55.3 | Sh-Pre Bend Ls Ep | 1.5h | 2018-02-14 08:00 | 2018-02-14 09:30 | 24.81d | F; H | 3h |  |
| 239 | 55.4 | Sh-Pre Bend Ls Ep | 1d? | 2018-02-14 08:00 | 2018-02-14 17:00 | 24d | F; H | 16h | No |

| ID | WBS | Task | Duration | Start | Finish | Total slack | Resources | Work |
| --- | --- | --- | --- | --- | --- | --- | --- | --- |
| 240 | 56 | **Shell Rolling** | 0.38d | 2018-02-14 08:00 | 2018-02-14 11:00 | 24.62d |  | 27h |
| 241 | 56.1 | Sh-Rolling 1/4 | 3h | 2018-02-14 08:00 | 2018-02-14 11:00 | 24.62d | F [200%]; H | 9h |
| 242 | 56.2 | Sh-Rolling | 3h | 2018-02-14 08:00 | 2018-02-14 11:00 | 24.62d | F [200%]; H | 9h |
| 243 | 56.3 | Sh-Rolling | 3h | 2018-02-14 08:00 | 2018-02-14 11:00 | 24.62d | F [200%]; H | 9h |
| 244 | 57 | **Shell Cir Length & Ep Correction** | 0.12d | 2018-02-14 08:00 | 2018-02-14 09:00 | 24.88d |  | 8.25h |
| 245 | 57.1 | Sh-Ls Correction | 1h | 2018-02-14 08:00 | 2018-02-14 09:00 | 24.88d | F; H [200%] | 3h |
| 246 | 57.2 | Sh-Ls Correction | 1h | 2018-02-14 08:00 | 2018-02-14 09:00 | 24.88d | F; H [200%] | 3h |
| 247 | 57.3 | Sh-Ls Correction | 0.75h | 2018-02-14 08:00 | 2018-02-14 08:45 | 24.91d | F; H [200%] | 2.25h |
| 248 | 58 | **Shell Ls Seams Fit Up** | 0.25d | 2018-02-14 08:00 | 2018-02-14 10:00 | 24.75d |  | 14h |
| 249 | 58.1 | Sh-Ls Fit Up | 2h | 2018-02-14 08:00 | 2018-02-14 10:00 | 24.75d |  |  |
| 250 | 58.2 | Sh-Ls Fit Up | 2h | 2018-02-14 08:00 | 2018-02-14 10:00 | 24.75d | F [200%]; H; W | 8h |
| 251 | 58.3 | Sh-Ls Fit Up | 1.5h | 2018-02-14 08:00 | 2018-02-14 09:30 | 24.81d | F [200%]; H; W | 6h |
| 252 | 59 | **Sh Ls Welding Arrangement** | 0.12d | 2018-02-14 08:00 | 2018-02-14 09:00 | 24.88d |  | 5.5h |
| 253 | 59.1 | Sh-Ls Weld Arrangement | 1h | 2018-02-14 08:00 | 2018-02-14 09:00 | 24.88d | F; H | 2h |
| 254 | 59.2 | Sh-Ls Weld Arrangement | 1h | 2018-02-14 08:00 | 2018-02-14 09:00 | 24.88d | F; H | 2h |
| 255 | 59.3 | Sh-Ls Weld Arrangement | 0.75h | 2018-02-14 08:00 | 2018-02-14 08:45 | 24.91d | F; H | 1.5h |
| 256 | 60 | **Shell Long Seam Outer Welding** | 0.62d | 2018-02-14 08:00 | 2018-02-14 14:00 | 24.38d |  | 28h |
| 257 | 60.1 | Sh-Ls Welding- Top Side | 5h | 2018-02-14 08:00 | 2018-02-14 14:00 | 24.38d | W; H | 10h |
| 258 | 60.2 | Sh-Ls Welding- Top Side | 5h | 2018-02-14 08:00 | 2018-02-14 14:00 | 24.38d | W; H | 10h |
| 259 | 60.3 | Sh-Ls Welding- Top Side | 4h | 2018-02-14 08:00 | 2018-02-14 12:00 | 24.5d | W; H | 8h |
| 260 | 61 | **Sh Ls Back Chip** | 0.03d | 2018-02-14 08:00 | 2018-02-14 08:15 | 24.97d |  | 0.75h |
| 261 | 61.1 | Sh-Ls Welding- Back Chip | 0.25h | 2018-02-14 08:00 | 2018-02-14 08:15 | 24.97d | G | 0.25h |
| 262 | 61.2 | Sh-Ls Welding- Back Chip | 0.25h | 2018-02-14 08:00 | 2018-02-14 08:15 | 24.97d | G | 0.25h |
| 263 | 61.3 | Sh-Ls Welding- Back Chip | 0.25h | 2018-02-14 08:00 | 2018-02-14 08:15 | 24.97d | G | 0.25h |

| ID | WBS | Task | Duration | Start | Finish | Total slack | Resources | Work | Text1 |
| --- | --- | --- | --- | --- | --- | --- | --- | --- | --- |
| 264 | 62 | **Sh Ls Inner Welding** | 1d | 2018-02-14 08:00 | 2018-02-14 17:00 | 24d |  | 48h | No |
| 265 | 62.1 | Sh-Ls Inner Welding | 8h | 2018-02-14 08:00 | 2018-02-14 17:00 | 24d | W; H | 16h | No |
| 266 | 62.2 | Sh-Ls Inner Welding | 8h | 2018-02-14 08:00 | 2018-02-14 17:00 | 24d | W; H | 16h | No |
| 267 | 62.3 | Sh-Ls Inner Welding | 8h | 2018-02-14 08:00 | 2018-02-14 17:00 | 24d | W; H | 16h | No |
| 268 | 63 | **Sh Inner Ls Flush Grinding** | 1d | 2018-02-14 08:00 | 2018-02-14 17:00 | 24d |  | 24h | No |
| 269 | 63.1 | Sh Inner Flush Grinding | 8h | 2018-02-14 08:00 | 2018-02-14 17:00 | 24d | G | 8h | No |
| 270 | 63.2 | Sh Inner Flush Grinding | 8h | 2018-02-14 08:00 | 2018-02-14 17:00 | 24d | G | 8h | No |
| 271 | 63.3 | Sh Inner Flush Grinding | 8h | 2018-02-14 08:00 | 2018-02-14 17:00 | 24d | G | 8h | No |
| 272 | 64 | **Sh Ls Radiography** | 2d | 2018-02-14 08:00 | 2018-02-15 17:00 | 23d |  | 44h |  |
| 273 | 64.1 | Sh Ls Welding Rt | 2d | 2018-02-14 08:00 | 2018-02-15 17:00 | 23d | RT | 16h |  |
| 274 | 64.2 | Sh Ls Welding Rt | 2d | 2018-02-14 08:00 | 2018-02-15 17:00 | 23d | RT | 16h |  |
| 275 | 64.3 | Sh Ls Welding Rt | 1.5d | 2018-02-14 08:00 | 2018-02-15 12:00 | 23.5d | RT | 12h |  |
| 276 | 65 | **Shell Re Rolling** | 0.38d | 2018-02-14 08:00 | 2018-02-14 11:00 | 24.62d |  | 27h |  |
| 277 | 65.1 | Sh Re Rolling | 3h | 2018-02-14 08:00 | 2018-02-14 11:00 | 24.62d | F [200%]; H | 9h |  |
| 278 | 65.2 | Sh Re Rolling | 3h | 2018-02-14 08:00 | 2018-02-14 11:00 | 24.62d | F [200%]; H | 9h |  |
| 279 | 65.3 | Sh Re Rolling | 3h | 2018-02-14 08:00 | 2018-02-14 11:00 | 24.62d | F [200%]; H | 9h |  |
| 280 | 66 | **Sh Plate Cs Ep Correction** | 0.16d | 2018-02-14 08:00 | 2018-02-14 09:15 | 24.84d |  | 7.5h |  |
| 281 | 66.1 | Sh Cir Ep Correction | 1.25h | 2018-02-14 08:00 | 2018-02-14 09:15 | 24.84d | F; H | 2.5h |  |
| 282 | 66.2 | Sh Cir Ep Correction | 1.25h | 2018-02-14 08:00 | 2018-02-14 09:15 | 24.84d | F; H | 2.5h |  |
| 283 | 66.3 | Sh Cir Ep Correction | 1.25h | 2018-02-14 08:00 | 2018-02-14 09:15 | 24.84d | F; H | 2.5h |  |
| 284 | 67 | **Sh Cir Seam First Fit Up** | 0.31d | 2018-02-14 08:00 | 2018-02-14 10:30 | 24.69d |  | 10.5h |  |
| 285 | 67.1 | Sh Cs Fit Up [LS1+LS2] | 2.5h | 2018-02-14 08:00 | 2018-02-14 10:30 | 24.69d | F [200%]; H; W | 10h |  |
| 286 | 67.2 | Sh Cs Tack Dp Check [LS1+LS2] | 0.25h | 2018-02-14 08:00 | 2018-02-14 08:15 | 24.97d | F; H | 0.5h |  |
| 287 | 68 | **Sh Cir Seam First Welding** | 1d | 2018-02-14 08:00 | 2018-02-14 17:00 | 24d |  | 39h |  |
| 288 | 68.1 | Sh Cs Welding Transfere | 1h | 2018-02-14 08:00 | 2018-02-14 09:00 | 24.88d | F; H | 2h |  |
| 289 | 68.2 | Sh Cs Welding Outer [LS1+LS2] | 6.25h | 2018-02-14 08:00 | 2018-02-14 15:15 | 24.22d | W; H | 12.5h |  |
| 290 | 68.3 | Sh Cs Welding Back Chip [LS1+LS2] | 0.5h | 2018-02-14 08:00 | 2018-02-14 08:30 | 24.94d | G | 0.5h |  |
| 291 | 68.4 | Sh Cs Inner Welding [LS1+LS2] | 8h | 2018-02-14 08:00 | 2018-02-14 17:00 | 24d | W; H | 16h | No |
| 292 | 68.5 | Sh Cs Flush Grinding [LS1+LS2] | 8h | 2018-02-14 08:00 | 2018-02-14 17:00 | 24d | G | 8h | No |

| ID | WBS | Task | Duration | Start | Finish | Total slack | Resources | Work | Text1 |
| --- | --- | --- | --- | --- | --- | --- | --- | --- | --- |
| 293 | 69 | **Sh Cir Seam Second Fitup** | 0.31d | 2018-02-14 08:00 | 2018-02-14 10:30 | 24.69d |  | 10.5h |  |
| 294 | 69.1 | Sh Cs Fit Up [LS2+LS3] | 2.5h | 2018-02-14 08:00 | 2018-02-14 10:30 | 24.69d | F [200%]; H; W | 10h |  |
| 295 | 69.2 | Sh Cs Tack Dp Check [LS2+LS3] | 0.25h | 2018-02-14 08:00 | 2018-02-14 08:15 | 24.97d | F; H | 0.5h |  |
| 296 | 70 | **Sh Cir Seam Second Welding** | 1d? | 2018-02-14 08:00 | 2018-02-14 17:00 | 24d |  | 39h |  |
| 297 | 70.1 | Sh Cs Welding Transfere [LS2+LS3] | 1h | 2018-02-14 08:00 | 2018-02-14 09:00 | 24.88d | F; H | 2h |  |
| 298 | 70.2 | Sh Cs Welding Outer [LS2+LS3] | 6.25h | 2018-02-14 08:00 | 2018-02-14 15:15 | 24.22d | W; H | 12.5h |  |
| 299 | 70.3 | Sh Cs Welding Back Chip [LS2+LS3] | 0.5h | 2018-02-14 08:00 | 2018-02-14 08:30 | 24.94d | G | 0.5h |  |
| 300 | 70.4 | Sh Cs Inner Welding [LS2+LS3] | 8h | 2018-02-14 08:00 | 2018-02-14 17:00 | 24d | W; H | 16h | No |
| 301 | 70.5 | Sh Cs Flush Grinding [LS2+LS3] | 1d? | 2018-02-14 08:00 | 2018-02-14 17:00 | 24d | G | 8h | No |
| 302 | 71 | **Sh Final Length Correction** | 0.38d | 2018-02-14 08:00 | 2018-02-14 11:00 | 24.62d |  | 13h |  |
| 303 | 71.1 | Sh Length Marking | 3h | 2018-02-14 08:00 | 2018-02-14 11:00 | 24.62d | F [200%] | 6h |  |
| 304 | 71.2 | Length Cutting | 0.75h | 2018-02-14 08:00 | 2018-02-14 08:45 | 24.91d | C; H | 1.5h |  |
| 305 | 71.3 | Grinding & Ep | 2.75h | 2018-02-14 08:00 | 2018-02-14 10:45 | 24.66d | G; H | 5.5h |  |
| 306 | 72 | **Sh Cir Seam Fitup Flg1** | 0.12d | 2018-02-14 08:00 | 2018-02-14 09:00 | 24.88d |  | 4.5h |  |
| 307 | 72.1 | Sh Cs Fit Up Flg CS1 | 1h | 2018-02-14 08:00 | 2018-02-14 09:00 | 24.88d | F [200%]; H; W | 4h |  |
| 308 | 72.2 | Sh Cs Tack Dp Check Flg CS1 | 0.25h | 2018-02-14 08:00 | 2018-02-14 08:15 | 24.97d | F; H | 0.5h |  |
| 309 | 73 | **Sh Cir Seam Welding Flg1** | 1d | 2018-02-14 08:00 | 2018-02-14 17:00 | 24d |  | 39h |  |
| 310 | 73.1 | Sh Cs Welding Transfere | 1h | 2018-02-14 08:00 | 2018-02-14 09:00 | 24.88d | F; H | 2h |  |
| 311 | 73.2 | Sh Cs Welding Outer Flg1 | 6.25h | 2018-02-14 08:00 | 2018-02-14 15:15 | 24.22d | W; H | 12.5h |  |
| 312 | 73.3 | Sh Cs Welding Back Chip Flg1 | 0.5h | 2018-02-14 08:00 | 2018-02-14 08:30 | 24.94d | G | 0.5h |  |
| 313 | 73.4 | Sh Cs Inner Welding Flg1 | 8h | 2018-02-14 08:00 | 2018-02-14 17:00 | 24d | W; H | 16h | No |
| 314 | 73.5 | Sh Cs Flush Grinding Flg1 | 8h | 2018-02-14 08:00 | 2018-02-14 17:00 | 24d | G | 8h | No |
| 315 | 74 | **Sh Cs Fit Up Flg2** | 1d | 2018-02-14 08:00 | 2018-02-14 17:00 | 24d |  | 48h | No |
| 316 | 74.1 | Sh Cs Fit Up Flg2 | 8h | 2018-02-14 08:00 | 2018-02-14 17:00 | 24d | F [200%]; H; W | 32h | No |
| 317 | 74.2 | Sh Cs Tack Dp Check Flg2 | 8h | 2018-02-14 08:00 | 2018-02-14 17:00 | 24d | F; H | 16h | No |

| ID | WBS | Task | Duration | Start | Finish | Total slack | Resources | Work | Text1 |
| --- | --- | --- | --- | --- | --- | --- | --- | --- | --- |
| 318 | 75 | **Sh Cs Welding Flg2** | 1d | 2018-02-14 08:00 | 2018-02-14 17:00 | 24d |  | 64h | No |
| 319 | 75.1 | Sh Cs Welding Transfere Flg2 | 8h | 2018-02-14 08:00 | 2018-02-14 17:00 | 24d | F; H | 16h | No |
| 320 | 75.2 | Sh Cs Welding Outer Flg2 | 8h | 2018-02-14 08:00 | 2018-02-14 17:00 | 24d | W; H | 16h | No |
| 321 | 75.3 | Sh Cs Welding Back Chip Flg2 | 8h | 2018-02-14 08:00 | 2018-02-14 17:00 | 24d | G | 8h | No |
| 322 | 75.4 | Sh Cs Inner Welding Flg2 | 8h | 2018-02-14 08:00 | 2018-02-14 17:00 | 24d | W; H | 16h | No |
| 323 | 75.5 | Sh Cs Flush Grinding Flg2 | 8h | 2018-02-14 08:00 | 2018-02-14 17:00 | 24d | G | 8h | No |
| 324 | 76 | **Nozzle Orientation Marking** | 1d? | 2018-02-14 08:00 | 2018-02-14 17:00 | 24d |  | 17h |  |
| 325 | 76.1 | Sh-Noz Orientaion Marking | 1d? | 2018-02-14 08:00 | 2018-02-14 17:00 | 24d | F [200%] | 16h | No |
| 326 | 76.2 | Sh-Noz Marking N1 10" | 0.25h | 2018-02-14 08:00 | 2018-02-14 08:15 | 24.97d | F [200%] | 0.5h |  |
| 327 | 76.3 | Sh-Noz Marking | 0.25h | 2018-02-14 08:00 | 2018-02-14 08:15 | 24.97d | F [200%] | 0.5h |  |
| 328 | 77 | **Sh Nozzle Openning** | 0.12d | 2018-02-14 08:00 | 2018-02-14 09:00 | 24.88d |  | 6h |  |
| 329 | 77.1 | 150 NB NOZ N1 - 1 NO | 1h | 2018-02-14 08:00 | 2018-02-14 09:00 | 24.88d | C; H | 2h |  |
| 330 | 77.2 | 150 NB NOZ N1 - 1 NO | 1h | 2018-02-14 08:00 | 2018-02-14 09:00 | 24.88d | C; H | 2h |  |
| 331 | 77.3 | Inspection | 1h | 2018-02-14 08:00 | 2018-02-14 09:00 | 24.88d | C; H | 2h |  |
| 332 | 78 | **Sh Nozzle Ep** | 0.12d | 2018-02-14 08:00 | 2018-02-14 09:00 | 24.88d |  | 2h |  |
| 333 | 78.1 | 150 NB NOZ N1 - 1 NO | 1h | 2018-02-14 08:00 | 2018-02-14 09:00 | 24.88d | G | 1h |  |
| 334 | 78.2 | 150 NB NOZ N1 - 1 NO | 1h | 2018-02-14 08:00 | 2018-02-14 09:00 | 24.88d | G | 1h |  |
| 335 | 78.3 | Inspection | 1h | 2018-02-14 08:00 | 2018-02-14 09:00 | 24.88d |  |  |  |
| 336 | 79 | **Sh Nozzzle Fit Up** | 0.12d | 2018-02-14 08:00 | 2018-02-14 09:00 | 24.88d |  | 8h |  |
| 337 | 79.1 | 150 NB NOZ N1 - 1 NO | 1h | 2018-02-14 08:00 | 2018-02-14 09:00 | 24.88d | F [200%]; H; W | 4h |  |
| 338 | 79.2 | 150 NB NOZ N1 - 1 NO | 1h | 2018-02-14 08:00 | 2018-02-14 09:00 | 24.88d | F [200%]; H; W | 4h |  |
| 339 | 79.3 | Dp Check | 1h | 2018-02-14 08:00 | 2018-02-14 09:00 | 24.88d |  |  |  |
| 340 | 80 | **Sh Nozzle Fit Up Inspection** | 0.12d | 2018-02-14 08:00 | 2018-02-14 09:00 | 24.88d |  | 6h |  |
| 341 | 80.1 | 150 NB NOZ N1 - 1 NO | 1h | 2018-02-14 08:00 | 2018-02-14 09:00 | 24.88d | F; H | 2h |  |
| 342 | 80.2 | 150 NB NOZ N1 - 1 NO | 1h | 2018-02-14 08:00 | 2018-02-14 09:00 | 24.88d | F; H | 2h |  |
| 343 | 80.3 | Dp Check | 1h | 2018-02-14 08:00 | 2018-02-14 09:00 | 24.88d | F; H | 2h |  |

| ID | WBS | Task | Type | Duration | Start | Finish | Total slack | Resources | Work | Text1 |
| --- | --- | --- | --- | --- | --- | --- | --- | --- | --- | --- |
| 344 | 81 | **Sh Nozzle Welding** |  | 0.31d | 2018-02-14 08:00 | 2018-02-14 10:30 | 24.69d |  | 13h |  |
| 345 | 81.1 | Sh Noz Welding Arrangement |  | 1h | 2018-02-14 08:00 | 2018-02-14 09:00 | 24.88d | T | 1h |  |
| 346 | 81.2 | Sh-Noz Welding N1 |  | 2.5h | 2018-02-14 08:00 | 2018-02-14 10:30 | 24.69d | W; H | 5h |  |
| 347 | 81.3 | Sh-Noz Welding N2 |  | 2.5h | 2018-02-14 08:00 | 2018-02-14 10:30 | 24.69d | W; H | 5h |  |
| 348 | 81.4 | Sh Noz Root Dp Check |  | 1h | 2018-02-14 08:00 | 2018-02-14 09:00 | 24.88d | F; H | 2h |  |
| 349 | 81.5 | Sh-Noz Inner Weld N1 | milestone | 0h | 2018-02-14 08:00 | 2018-02-14 08:00 | 25d | H; W |  | No |
| 350 | 81.6 | Sh-Noz Inner Weld N2 | milestone | 0h | 2018-02-14 08:00 | 2018-02-14 08:00 | 25d | H; W |  | No |
| 351 | 82 | **Sh Saddle Welding** |  | 0.56d | 2018-02-14 08:00 | 2018-02-14 13:30 | 24.44d |  | 52h |  |
| 352 | 82.1 | Sh-Saddle Pad Fit Up |  | 2h | 2018-02-14 08:00 | 2018-02-14 10:00 | 24.75d | F [200%]; W; H | 8h |  |
| 353 | 82.2 | Sh-Saddle Pad Welding |  | 4.5h | 2018-02-14 08:00 | 2018-02-14 13:30 | 24.44d | W [200%]; H [200%] | 18h |  |
| 354 | 82.3 | Sh-Saddle Matching |  | 1h | 2018-02-14 08:00 | 2018-02-14 09:00 | 24.88d | F [200%]; G [200%] | 4h |  |
| 355 | 82.4 | Sh-Saddle Fit Up |  | 1.5h | 2018-02-14 08:00 | 2018-02-14 09:30 | 24.81d | W; F [200%]; H | 6h |  |
| 356 | 82.5 | Sh-Saddle Welding |  | 3h | 2018-02-14 08:00 | 2018-02-14 11:00 | 24.62d | W [200%]; H [200%] | 12h |  |
| 357 | 82.6 | Sh-Saddle Dress Up |  | 2h | 2018-02-14 08:00 | 2018-02-14 10:00 | 24.75d | G [200%] | 4h |  |
| 358 | 83 | **Sh Davit Arm Welding** |  | 0d | 2018-02-14 08:00 | 2018-02-14 08:00 | 25d |  |  | No |
| 359 | 83.1 | Sh-Davit Arm Match | milestone | 0h | 2018-02-14 08:00 | 2018-02-14 08:00 | 25d | F; G |  | No |
| 360 | 83.2 | Sh-Davit Arm Fit Up | milestone | 0h | 2018-02-14 08:00 | 2018-02-14 08:00 | 25d | F; H; W |  | No |
| 361 | 83.3 | Sh-Davit Arm Welding | milestone | 0h | 2018-02-14 08:00 | 2018-02-14 08:00 | 25d | W; H |  | No |
| 362 | 84 | **Sh Nde Clearence** |  | 0.25d | 2018-02-14 08:00 | 2018-02-14 10:00 | 24.75d |  | 8h |  |
| 363 | 84.1 | Sh-Sh Nde Clearence |  | 2h | 2018-02-14 08:00 | 2018-02-14 10:00 | 24.75d | F; H | 4h |  |
| 364 | 84.2 | Tpi Inspection |  | 2h | 2018-02-14 08:00 | 2018-02-14 10:00 | 24.75d | F; H | 4h |  |
| 365 | 85 | Channel Fabrication |  | 1d? | 2018-02-14 08:00 | 2018-02-14 17:00 | 24d |  |  |  |
| 366 | 86 | **Channel Shell Ls Welding** |  | 0.19d | 2018-02-14 08:00 | 2018-02-14 09:30 | 24.81d |  | 12.25h |  |
| 367 | 86.1 | Ch Plate Trasnfer |  | 1h | 2018-02-14 08:00 | 2018-02-14 09:00 | 24.88d | T | 1h |  |
| 368 | 86.2 | Ch-Marking |  | 0.5h | 2018-02-14 08:00 | 2018-02-14 08:30 | 24.94d | F; H [200%] | 1.5h |  |
| 369 | 86.3 | Ch-Cutting |  | 1h | 2018-02-14 08:00 | 2018-02-14 09:00 | 24.88d | C; H | 2h |  |
| 370 | 86.4 | Ch Pl Side Grinding |  | 1.5h | 2018-02-14 08:00 | 2018-02-14 09:30 | 24.81d | G | 1.5h |  |
| 371 | 86.5 | Ch-Bevelling Cir Side |  | 1.25h | 2018-02-14 08:00 | 2018-02-14 09:15 | 24.84d | F; H [300%] | 5h |  |
| 372 | 86.6 | Ch Ep Grinding |  | 1.25h | 2018-02-14 08:00 | 2018-02-14 09:15 | 24.84d | G | 1.25h |  |

| ID | WBS | Task | Type | Duration | Start | Finish | Total slack | Resources | Work | Text1 |
| --- | --- | --- | --- | --- | --- | --- | --- | --- | --- | --- |
| 373 | 87 | **Channel Sh Rolling** |  | 0.38d | 2018-02-14 08:00 | 2018-02-14 11:00 | 24.62d |  | 19h |  |
| 374 | 87.1 | Ch-Pre Bend |  | 2h | 2018-02-14 08:00 | 2018-02-14 10:00 | 24.75d | F [200%]; H | 6h |  |
| 375 | 87.2 | Ch-Pre Bend Cut of |  | 1h | 2018-02-14 08:00 | 2018-02-14 09:00 | 24.88d | F [200%]; C | 3h |  |
| 376 | 87.3 | Ch Ls Beveling |  | 0.5h | 2018-02-14 08:00 | 2018-02-14 08:30 | 24.94d | F [200%] | 1h |  |
| 377 | 87.4 | Ch-Rolling |  | 3h | 2018-02-14 08:00 | 2018-02-14 11:00 | 24.62d | F [200%]; H | 9h |  |
| 378 | 88 | **Ch Shell Ls Fit Up** |  | 0.12d | 2018-02-14 08:00 | 2018-02-14 09:00 | 24.88d |  | 5h |  |
| 379 | 88.1 | Ch-Ls Correction |  | 0.5h | 2018-02-14 08:00 | 2018-02-14 08:30 | 24.94d | F [200%] | 1h |  |
| 380 | 88.2 | Ch-Ls Fit Up |  | 1h | 2018-02-14 08:00 | 2018-02-14 09:00 | 24.88d | F [200%]; W; H | 4h |  |
| 381 | 89 | **Ch Shell Ls Welding** |  | 0.38d | 2018-02-14 08:00 | 2018-02-14 11:00 | 24.62d |  | 17.5h |  |
| 382 | 89.1 | Ch-Ls Weld Arrangement |  | 0.5h | 2018-02-14 08:00 | 2018-02-14 08:30 | 24.94d | F; H [200%] | 1.5h |  |
| 383 | 89.2 | Ch-Ls Welding- Top Side |  | 3h | 2018-02-14 08:00 | 2018-02-14 11:00 | 24.62d | W; H | 6h |  |
| 384 | 89.3 | Ch-Ls Welding- Back Chip |  | 0.5h | 2018-02-14 08:00 | 2018-02-14 08:30 | 24.94d | G; H | 1h |  |
| 385 | 89.4 | Ch-Ls Inner Welding | milestone | 0h | 2018-02-14 08:00 | 2018-02-14 08:00 | 25d | W; H |  | No |
| 386 | 89.5 | Ch-Ls Innner Flush Grind | milestone | 0h | 2018-02-14 08:00 | 2018-02-14 08:00 | 25d | G |  | No |
| 387 | 89.6 | Ch Re Rolling |  | 3h | 2018-02-14 08:00 | 2018-02-14 11:00 | 24.62d | F [200%]; H | 9h |  |
| 388 | 90 | **Ch Ls Welding Radiography** |  | 1d | 2018-02-14 08:00 | 2018-02-14 17:00 | 24d |  | 8h |  |
| 389 | 90.1 | Ch Ls Welding Rt |  | 1d | 2018-02-14 08:00 | 2018-02-14 17:00 | 24d | RT | 8h |  |
| 390 | 91 | **Ch Cs Fit Up Flg1** |  | 0.31d | 2018-02-14 08:00 | 2018-02-14 10:30 | 24.69d |  | 13.5h |  |
| 391 | 91.1 | Ch Cir Ep Correction |  | 1.25h | 2018-02-14 08:00 | 2018-02-14 09:15 | 24.84d | F [200%] | 2.5h |  |
| 392 | 91.2 | Ch Cs Fit Up Flg1 |  | 2.5h | 2018-02-14 08:00 | 2018-02-14 10:30 | 24.69d | F [200%]; W; H | 10h |  |
| 393 | 91.3 | Ch Cs Tack Dp Check Flg1 |  | 0.5h | 2018-02-14 08:00 | 2018-02-14 08:30 | 24.94d | F; H | 1h |  |
| 394 | 92 | **Ch Cs Welding Flg1** |  | 1d | 2018-02-14 08:00 | 2018-02-14 17:00 | 24d |  | 43.5h |  |
| 395 | 92.1 | Ch Cs Welding Transfere |  | 1h | 2018-02-14 08:00 | 2018-02-14 09:00 | 24.88d | F; H [200%] | 3h |  |
| 396 | 92.2 | Ch Cs Welding Outer Flg1 |  | 8h | 2018-02-14 08:00 | 2018-02-14 17:00 | 24d | W; H | 16h |  |
| 397 | 92.3 | Ch Cs Welding Back Chip Flg1 |  | 0.5h | 2018-02-14 08:00 | 2018-02-14 08:30 | 24.94d | G | 0.5h |  |
| 398 | 92.4 | Ch Cs Inner Welding Flg1 |  | 8h | 2018-02-14 08:00 | 2018-02-14 17:00 | 24d | W; H | 16h | No |
| 399 | 92.5 | Ch Cs Flush Grinding Flg1 |  | 8h | 2018-02-14 08:00 | 2018-02-14 17:00 | 24d | G | 8h | No |

| ID | WBS | Task | Duration | Start | Finish | Total slack | Resources | Work |
| --- | --- | --- | --- | --- | --- | --- | --- | --- |
| 400 | 93 | **Ch Cs Fit Up Flg2 (dish)** | 0.31d | 2018-02-14 08:00 | 2018-02-14 10:30 | 24.69d |  | 15h |
| 401 | 93.1 | Ch Length Cutting | 1h | 2018-02-14 08:00 | 2018-02-14 09:00 | 24.88d | C; H | 2h |
| 402 | 93.2 | Ch Cir Ep Correction | 1.25h | 2018-02-14 08:00 | 2018-02-14 09:15 | 24.84d | F; H | 2.5h |
| 403 | 93.3 | Ch Cs Fit Up Flg2 | 2.5h | 2018-02-14 08:00 | 2018-02-14 10:30 | 24.69d | F [200%]; W; H | 10h |
| 404 | 93.4 | Ch Cs Tack Dp Check Flg2 | 0.5h | 2018-02-14 08:00 | 2018-02-14 08:30 | 24.94d | F | 0.5h |
| 405 | 94 | **Ch Cs Flg 2 Welding** | 0.38d | 2018-02-14 08:00 | 2018-02-14 11:00 | 24.62d |  | 15.5h |
| 406 | 94.1 | Ch Cs Welding Transfere Flg2 | 1h | 2018-02-14 08:00 | 2018-02-14 09:00 | 24.88d | F; H [200%] | 3h |
| 407 | 94.2 | Ch Cs Welding Outer Flg2 | 3h | 2018-02-14 08:00 | 2018-02-14 11:00 | 24.62d | W; H | 6h |
| 408 | 94.3 | Ch Cs Welding Back Chip Flg2 | 0.25h | 2018-02-14 08:00 | 2018-02-14 08:15 | 24.97d | G | 0.25h |
| 409 | 94.4 | Ch Cs Inner Welding Flg2 | 3h | 2018-02-14 08:00 | 2018-02-14 11:00 | 24.62d | W; H | 6h |
| 410 | 94.5 | Ch Cs Flush Grinding Flg2 | 0.25h | 2018-02-14 08:00 | 2018-02-14 08:15 | 24.97d | G | 0.25h |
| 411 | 95 | **Ch Cs Welding Rt Flg1 & 2** | 1d | 2018-02-14 08:00 | 2018-02-14 17:00 | 24d |  | 8h |
| 412 | 95.1 | Ch Cs Welding Rt | 1d | 2018-02-14 08:00 | 2018-02-14 17:00 | 24d | RT | 8h |
| 413 | 96 | **Channel Noz Marking** | 1d | 2018-02-14 08:00 | 2018-02-14 17:00 | 24d |  | 17.5h |
| 414 | 96.1 | Ch- Noz orientation | 8h | 2018-02-14 08:00 | 2018-02-14 17:00 | 24d | F; H | 16h |
| 415 | 96.2 | Ch-Noz Marking 12''Nb - 2 Nos | 0.75h | 2018-02-14 08:00 | 2018-02-14 08:45 | 24.91d | F; H | 1.5h |
| 416 | 97 | **Ch Noz Opening** | 0.12d | 2018-02-14 08:00 | 2018-02-14 09:00 | 24.88d |  | 4h |
| 417 | 97.1 | Ch-Noz Openning-Top N4 | 1h | 2018-02-14 08:00 | 2018-02-14 09:00 | 24.88d | C; H | 2h |
| 418 | 97.2 | Ch-Noz Openning-Bottom N3 | 1h | 2018-02-14 08:00 | 2018-02-14 09:00 | 24.88d | C; H | 2h |
| 419 | 98 | **Ch Noz Open Ep** | 0.12d | 2018-02-14 08:00 | 2018-02-14 09:00 | 24.88d |  | 4h |
| 420 | 98.1 | Ch-Noz Ep N4 | 1h | 2018-02-14 08:00 | 2018-02-14 09:00 | 24.88d | G; H | 2h |
| 421 | 98.2 | Ch-Noz Ep N3 | 1h | 2018-02-14 08:00 | 2018-02-14 09:00 | 24.88d | G; H | 2h |
| 422 | 99 | **Ch Noz Fit Up** | 0.25d | 2018-02-14 08:00 | 2018-02-14 10:00 | 24.75d |  | 16h |
| 423 | 99.1 | Ch-Noz Fit Up N4 | 2h | 2018-02-14 08:00 | 2018-02-14 10:00 | 24.75d | F [200%]; W; H | 8h |
| 424 | 99.2 | Ch-Noz Fit Up N3 | 2h | 2018-02-14 08:00 | 2018-02-14 10:00 | 24.75d | F [200%]; W; H | 8h |

| ID | WBS | Task | Type | Duration | Start | Finish | Total slack | Resources | Work | Text1 |
| --- | --- | --- | --- | --- | --- | --- | --- | --- | --- | --- |
| 425 | 100 | **Ch Noz Fit Up Insp** |  | 0.12d | 2018-02-14 08:00 | 2018-02-14 09:00 | 24.88d |  | 4h |  |
| 426 | 100.1 | Ch-Noz Inspn N4 |  | 1h | 2018-02-14 08:00 | 2018-02-14 09:00 | 24.88d | F; H | 2h |  |
| 427 | 100.2 | Ch-Noz Inspn N3 |  | 1h | 2018-02-14 08:00 | 2018-02-14 09:00 | 24.88d | F; H | 2h |  |
| 428 | 101 | **Ch Noz Welding** |  | 0.5d | 2018-02-14 08:00 | 2018-02-14 12:00 | 24.5d |  | 27h |  |
| 429 | 101.1 | Ch Noz Welding Arrangement |  | 1h | 2018-02-14 08:00 | 2018-02-14 09:00 | 24.88d | F; H [200%] | 3h |  |
| 430 | 101.2 | Ch-Noz Welding N4 |  | 3h | 2018-02-14 08:00 | 2018-02-14 11:00 | 24.62d | W; H | 6h |  |
| 431 | 101.3 | Ch-Noz Welding N3 |  | 3h | 2018-02-14 08:00 | 2018-02-14 11:00 | 24.62d | W; H | 6h |  |
| 432 | 101.4 | Ch Noz Root Dp Check |  | 1h | 2018-02-14 08:00 | 2018-02-14 09:00 | 24.88d | W; H | 2h |  |
| 433 | 101.5 | Ch-Noz Inner Weld N4 | milestone | 0h | 2018-02-14 08:00 | 2018-02-14 08:00 | 25d | W; H |  | No |
| 434 | 101.6 | Ch-Noz Inner Weld N5 | milestone | 0h | 2018-02-14 08:00 | 2018-02-14 08:00 | 25d | W; H |  | No |
| 435 | 101.7 | Rf Pad Fit Up & Nozzle Fit Up |  | 4h | 2018-02-14 08:00 | 2018-02-14 12:00 | 24.5d | W; H | 8h |  |
| 436 | 101.8 | Rf Pad Fit Up Welding | milestone | 0h | 2018-02-14 08:00 | 2018-02-14 08:00 | 25d | G; H |  | No |
| 437 | 101.9 | Noz Welding Flush Grind 12''NB |  | 2h | 2018-02-14 08:00 | 2018-02-14 10:00 | 24.75d | G | 2h |  |
| 438 | 102 | **Channel Pp Plate Fit Up** |  | 0.38d | 2018-02-14 08:00 | 2018-02-14 11:00 | 24.62d |  | 14h |  |
| 439 | 102.1 | Ch- Pp Plate Fit Up |  | 3h | 2018-02-14 08:00 | 2018-02-14 11:00 | 24.62d | F [200%]; H; W | 12h |  |
| 440 | 102.2 | Ch- Pp Plate Fit Up Insp |  | 1h | 2018-02-14 08:00 | 2018-02-14 09:00 | 24.88d | F; H | 2h |  |
| 441 | 103 | **Ch Pp Plate Welding** |  | 3d | 2018-02-14 08:00 | 2018-02-16 17:00 | 22d |  | 54h |  |
| 442 | 103.1 | Ch- Pp Plate Welding |  | 24h | 2018-02-14 08:00 | 2018-02-16 17:00 | 22d | W; H | 48h |  |
| 443 | 103.2 | Ch- Pp Plate Face Grinding |  | 3h | 2018-02-14 08:00 | 2018-02-14 11:00 | 24.62d | G; H | 6h |  |
| 444 | 104 | **Channel Davit Arm Welding** |  | 0.25d | 2018-02-14 08:00 | 2018-02-14 10:00 | 24.75d |  | 10.5h |  |
| 445 | 104.1 | Ch-Davit Arm Arm Match |  | 1h | 2018-02-14 08:00 | 2018-02-14 09:00 | 24.88d | F; H | 2h |  |
| 446 | 104.2 | Ch-Davit Arm Fit Up |  | 1.5h | 2018-02-14 08:00 | 2018-02-14 09:30 | 24.81d | F; W; H | 4.5h |  |
| 447 | 104.3 | Ch-Davit Arm Welding |  | 2h | 2018-02-14 08:00 | 2018-02-14 10:00 | 24.75d | W; H | 4h |  |
| 448 | 105 | **Channel Nde & Pwht** |  | 0.38d | 2018-02-14 08:00 | 2018-02-14 11:00 | 24.62d |  | 8h |  |
| 449 | 105.1 | Ch All Welding Dressup & Dp Check |  | 3h | 2018-02-14 08:00 | 2018-02-14 11:00 | 24.62d | G [200%] | 6h |  |
| 450 | 105.2 | Ch-Ch Nde Clearence |  | 2h | 2018-02-14 08:00 | 2018-02-14 10:00 | 24.75d | F | 2h |  |
| 451 | 106 | Barrel Fabrication |  | 8h | 2018-02-14 08:00 | 2018-02-14 17:00 | 24d |  |  |  |

| ID | WBS | Task | Type | Duration | Start | Finish | Total slack | Resources | Text1 |
| --- | --- | --- | --- | --- | --- | --- | --- | --- | --- |
| 452 | 107 | **Barrel Sh Plate Cutting & Ep** |  | 0d | 2018-02-14 08:00 | 2018-02-14 08:00 | 25d |  | No |
| 453 | 107.1 | Barrel Plate Transfer | milestone | 0h | 2018-02-14 08:00 | 2018-02-14 08:00 | 25d | T | No |
| 454 | 107.2 | Barrel-Marking | milestone | 0h | 2018-02-14 08:00 | 2018-02-14 08:00 | 25d | F; H [200%] | No |
| 455 | 107.3 | Barrel-Cutting | milestone | 0h | 2018-02-14 08:00 | 2018-02-14 08:00 | 25d | C; H | No |
| 456 | 107.4 | Barrel Pl Side Grinding | milestone | 0h | 2018-02-14 08:00 | 2018-02-14 08:00 | 25d | G | No |
| 457 | 107.5 | Barrel-Bevelling Cir Side | milestone | 0h | 2018-02-14 08:00 | 2018-02-14 08:00 | 25d | F; H [300%] | No |
| 458 | 107.6 | Ch Ep Grinding | milestone | 0h | 2018-02-14 08:00 | 2018-02-14 08:00 | 25d | G | No |
| 459 | 108 | **Bar Shell Rolling** |  | 0d | 2018-02-14 08:00 | 2018-02-14 08:00 | 25d |  | No |
| 460 | 108.1 | Barrel-Pre Bend | milestone | 0h | 2018-02-14 08:00 | 2018-02-14 08:00 | 25d | F [200%]; H | No |
| 461 | 108.2 | Barrel-Pre Bend Cut of | milestone | 0h | 2018-02-14 08:00 | 2018-02-14 08:00 | 25d | F [200%]; C | No |
| 462 | 108.3 | Barrel -Pre Ls Ep | milestone | 0h | 2018-02-14 08:00 | 2018-02-14 08:00 | 25d | F [200%] | No |
| 463 | 108.4 | Barrel-Rolling | milestone | 0h | 2018-02-14 08:00 | 2018-02-14 08:00 | 25d | F [200%]; H | No |
| 464 | 109 | **Barrel Shell Ls Fit Up** |  | 0d | 2018-02-14 08:00 | 2018-02-14 08:00 | 25d |  | No |
| 465 | 109.1 | Barrel-Ls Correction | milestone | 0h | 2018-02-14 08:00 | 2018-02-14 08:00 | 25d | F [200%] | No |
| 466 | 109.2 | Barrel-Ls Fit Up | milestone | 0h | 2018-02-14 08:00 | 2018-02-14 08:00 | 25d | F [200%]; W; H | No |
| 467 | 110 | **Barrel Shell Ls Welding** |  | 0d | 2018-02-14 08:00 | 2018-02-14 08:00 | 25d |  | No |
| 468 | 110.1 | Barrel-Ls Weld Arrangement | milestone | 0h | 2018-02-14 08:00 | 2018-02-14 08:00 | 25d | F; H [200%] | No |
| 469 | 110.2 | Barrel-Ls Welding- Top Side | milestone | 0h | 2018-02-14 08:00 | 2018-02-14 08:00 | 25d | W; H | No |
| 470 | 110.3 | Barrel-Ls Welding- Back Chip | milestone | 0h | 2018-02-14 08:00 | 2018-02-14 08:00 | 25d | G; H | No |
| 471 | 110.4 | Barrel-Ls Inner Welding | milestone | 0h | 2018-02-14 08:00 | 2018-02-14 08:00 | 25d | W; H | No |
| 472 | 110.5 | Barrel-Ls Innner Flush Grind | milestone | 0h | 2018-02-14 08:00 | 2018-02-14 08:00 | 25d | G | No |
| 473 | 110.6 | Barrel Re Rolling | milestone | 0h | 2018-02-14 08:00 | 2018-02-14 08:00 | 25d | F [200%]; H | No |
| 474 | 111 | **Barrel Ls Welding Rt** |  | 0d | 2018-02-14 08:00 | 2018-02-14 08:00 | 25d |  | No |
| 475 | 111.1 | Bar Ls Welding Rt | milestone | 0d | 2018-02-14 08:00 | 2018-02-14 08:00 | 25d | RT | No |

| ID | WBS | Task | Type | Duration | Start | Finish | Total slack | Resources | Work | Text1 |
| --- | --- | --- | --- | --- | --- | --- | --- | --- | --- | --- |
| 476 | 112 | **Barrel Shell Cs Flg 1 Fit Up** |  | 0d | 2018-02-14 08:00 | 2018-02-14 08:00 | 25d |  |  | No |
| 477 | 112.1 | Barrel Cir Ep Correction | milestone | 0h | 2018-02-14 08:00 | 2018-02-14 08:00 | 25d | F [200%] |  | No |
| 478 | 112.2 | Barrel Cs Fit Up Flg1 | milestone | 0h | 2018-02-14 08:00 | 2018-02-14 08:00 | 25d | F [200%]; W; H |  | No |
| 479 | 112.3 | Barrel Cs Tack Dp Check Flg1 | milestone | 0h | 2018-02-14 08:00 | 2018-02-14 08:00 | 25d | F; H |  | No |
| 480 | 113 | **Barrel Sh Cs Flg1 Welding** |  | 0d | 2018-02-14 08:00 | 2018-02-14 08:00 | 25d |  |  | No |
| 481 | 113.1 | Barrel Cs Welding Transfere | milestone | 0h | 2018-02-14 08:00 | 2018-02-14 08:00 | 25d | F; H [200%] |  | No |
| 482 | 113.2 | Barrel Cs Welding Outer Flg1 | milestone | 0h | 2018-02-14 08:00 | 2018-02-14 08:00 | 25d | W; H |  | No |
| 483 | 113.3 | Barrel Cs Welding Back Chip Flg1 | milestone | 0h | 2018-02-14 08:00 | 2018-02-14 08:00 | 25d | G |  | No |
| 484 | 113.4 | Barrel Cs Inner Welding Flg1 | milestone | 0h | 2018-02-14 08:00 | 2018-02-14 08:00 | 25d | W; H |  | No |
| 485 | 113.5 | Barrel Cs Flush Grinding Flg1 | milestone | 0h | 2018-02-14 08:00 | 2018-02-14 08:00 | 25d | G |  | No |
| 486 | 114 | **Shell Cs Fit Up With Dish** |  | 0.31d | 2018-02-14 08:00 | 2018-02-14 10:30 | 24.69d |  | 14.25h |  |
| 487 | 114.1 | Barrel Length Cutting |  | 0.75h | 2018-02-14 08:00 | 2018-02-14 08:45 | 24.91d | C; H | 1.5h |  |
| 488 | 114.2 | Barrel Ep |  | 1.25h | 2018-02-14 08:00 | 2018-02-14 09:15 | 24.84d | F; H | 2.5h |  |
| 489 | 114.3 | Barrel Cs Fit Up Dish |  | 2.5h | 2018-02-14 08:00 | 2018-02-14 10:30 | 24.69d | F [200%]; W; H | 10h |  |
| 490 | 114.4 | Barrel Cs Tack Dp Check Dish |  | 0.25h | 2018-02-14 08:00 | 2018-02-14 08:15 | 24.97d | F | 0.25h |  |
| 491 | 115 | **Barrel Cs Welding With Dish** |  | 1.81d | 2018-02-14 08:00 | 2018-02-15 15:30 | 23.19d |  | 32.5h |  |
| 492 | 115.1 | Barrel Cs Welding Transfere Dish |  | 1h | 2018-02-14 08:00 | 2018-02-14 09:00 | 24.88d | F; H [200%] | 3h |  |
| 493 | 115.2 | Barrel Cs Welding Outer Dish |  | 14.5h | 2018-02-14 08:00 | 2018-02-15 15:30 | 23.19d | W; H | 29h |  |
| 494 | 115.3 | Barrel Cs Welding Back Chip Dish |  | 0.5h | 2018-02-14 08:00 | 2018-02-14 08:30 | 24.94d | G | 0.5h |  |
| 495 | 115.4 | Barrel Cs Inner Welding Dish | milestone | 0h | 2018-02-14 08:00 | 2018-02-14 08:00 | 25d | W; H |  | No |
| 496 | 115.5 | Barrel Cs Flush Grinding Dish | milestone | 0h | 2018-02-14 08:00 | 2018-02-14 08:00 | 25d | G |  | No |
| 497 | 116 | **Barrel Cs & Dish Welding Rt Flg1** |  | 1d | 2018-02-14 08:00 | 2018-02-14 17:00 | 24d |  | 8h |  |
| 498 | 116.1 | Barrel Cs Welding Rt |  | 1d | 2018-02-14 08:00 | 2018-02-14 17:00 | 24d | RT | 8h |  |
| 499 | 117 | **Barrel Noz Oreination Marking** |  | 0d | 2018-02-14 08:00 | 2018-02-14 08:00 | 25d |  |  | No |
| 500 | 117.1 | Barrel- Noz Orientation Mkg | milestone | 0h | 2018-02-14 08:00 | 2018-02-14 08:00 | 25d | F; H |  | No |
| 501 | 117.2 | Barrel-Noz Marking 2 Nos | milestone | 0h | 2018-02-14 08:00 | 2018-02-14 08:00 | 25d | F; H |  | No |

| ID | WBS | Task | Type | Duration | Start | Finish | Total slack | Resources | Work | Text1 |
| --- | --- | --- | --- | --- | --- | --- | --- | --- | --- | --- |
| 502 | 118 | **Barrel Nozzle Oppening** |  | 0d | 2018-02-14 08:00 | 2018-02-14 08:00 | 25d |  |  | No |
| 503 | 118.1 | Barrel-Noz Openning 40 Nb - WN | milestone | 0h | 2018-02-14 08:00 | 2018-02-14 08:00 | 25d | C; H |  | No |
| 504 | 118.2 | Barrel-Noz Openning 40 Nb - WN | milestone | 0h | 2018-02-14 08:00 | 2018-02-14 08:00 | 25d | C; H |  | No |
| 505 | 119 | **Barrel Noz Edge Preparation** |  | 0d | 2018-02-14 08:00 | 2018-02-14 08:00 | 25d |  |  | No |
| 506 | 119.1 | Barrel-Noz Openning 40 Nb - WN | milestone | 0h | 2018-02-14 08:00 | 2018-02-14 08:00 | 25d | G; H |  | No |
| 507 | 119.2 | Barrel-Noz Openning 40 Nb - WN | milestone | 0h | 2018-02-14 08:00 | 2018-02-14 08:00 | 25d | G; H |  | No |
| 508 | 120 | **Barrel Nozzzle Fit Up** |  | 0d | 2018-02-14 08:00 | 2018-02-14 08:00 | 25d |  |  | No |
| 509 | 120.1 | Barrel-Noz Fit Up N5 | milestone | 0h | 2018-02-14 08:00 | 2018-02-14 08:00 | 25d | F [200%]; W; H |  | No |
| 510 | 120.2 | Barrel-Noz Fit Up N6 | milestone | 0h | 2018-02-14 08:00 | 2018-02-14 08:00 | 25d | F [200%]; W; H |  | No |
| 511 | 121 | **Barrel Noz Fit Up Inspection** |  | 0d | 2018-02-14 08:00 | 2018-02-14 08:00 | 25d |  |  | No |
| 512 | 121.1 | Barrel-Noz Inspn N5 | milestone | 0h | 2018-02-14 08:00 | 2018-02-14 08:00 | 25d | INS |  | No |
| 513 | 121.2 | Barrel-Noz Inspn N6 | milestone | 0h | 2018-02-14 08:00 | 2018-02-14 08:00 | 25d | INS |  | No |
| 514 | 122 | **Barrel Nozzle Welding** |  | 0d | 2018-02-14 08:00 | 2018-02-14 08:00 | 25d |  |  | No |
| 515 | 122.1 | Barrel Noz Welding Arrangement | milestone | 0h | 2018-02-14 08:00 | 2018-02-14 08:00 | 25d | T |  | No |
| 516 | 122.2 | Barrel-Noz Welding N5 | milestone | 0h | 2018-02-14 08:00 | 2018-02-14 08:00 | 25d | W; H |  | No |
| 517 | 122.3 | Barrel-Noz Welding N6 | milestone | 0h | 2018-02-14 08:00 | 2018-02-14 08:00 | 25d | W; H |  | No |
| 518 | 122.4 | Barrel Noz Root Dp | milestone | 0h | 2018-02-14 08:00 | 2018-02-14 08:00 | 25d | F; H |  | No |
| 519 | 122.5 | Barrel-Noz Inner Welding N5 | milestone | 0h | 2018-02-14 08:00 | 2018-02-14 08:00 | 25d | W; H |  | No |
| 520 | 122.6 | Barrel-Noz Inner Welding N6 | milestone | 0h | 2018-02-14 08:00 | 2018-02-14 08:00 | 25d | W; H |  | No |
| 521 | 123 | **Barrel Noz Inner Weld Flush Grind** |  | 0.25d | 2018-02-14 08:00 | 2018-02-14 10:00 | 24.75d |  | 5h | No |
| 522 | 123.1 | Barrel All Welding Dressup & Dp |  | 2h | 2018-02-14 08:00 | 2018-02-14 10:00 | 24.75d | G [200%] | 4h | No |
| 523 | 123.2 | Barrel-Barrel Nde Clearence |  | 1h | 2018-02-14 08:00 | 2018-02-14 09:00 | 24.88d | F | 1h | No |
| 524 | 124 | Fl Head Fabrication |  | 8h | 2018-02-14 08:00 | 2018-02-14 17:00 | 24d |  |  | No |
| 525 | 125 | **Flaoting Head Dish Forming** |  | 0d | 2018-02-14 08:00 | 2018-02-14 08:00 | 25d |  |  | No |
| 526 | 125.1 | Fl Head Dish Pl Issue | milestone | 0h | 2018-02-14 08:00 | 2018-02-14 08:00 | 25d | T |  | No |
| 527 | 125.2 | Fl Head Pl Marking | milestone | 0h | 2018-02-14 08:00 | 2018-02-14 08:00 | 25d | F; H |  | No |
| 528 | 125.3 | Fl Head Pl Stamping | milestone | 0h | 2018-02-14 08:00 | 2018-02-14 08:00 | 25d | F; H |  | No |
| 529 | 125.4 | Fl Head Pl Cutting | milestone | 0h | 2018-02-14 08:00 | 2018-02-14 08:00 | 25d | C; H |  | No |
| 530 | 125.5 | Fl Head Pl Grinding | milestone | 0h | 2018-02-14 08:00 | 2018-02-14 08:00 | 25d | G |  | No |

| ID | WBS | Task | Type | Duration | Start | Finish | Total slack | Resources | Work | Text1 |
| --- | --- | --- | --- | --- | --- | --- | --- | --- | --- | --- |
| 531 | 126 | **Fl Head Formig** |  | 0d | 2018-02-14 08:00 | 2018-02-14 08:00 | 25d |  |  | No |
| 532 | 126.1 | Fl Head Forming | milestone | 0h | 2018-02-14 08:00 | 2018-02-14 08:00 | 25d | SC |  | No |
| 533 | 126.2 | Fl Head Profile Check | milestone | 0h | 2018-02-14 08:00 | 2018-02-14 08:00 | 25d | F; H |  | No |
| 534 | 127 | **Fl Head Cutting** |  | 0d | 2018-02-14 08:00 | 2018-02-14 08:00 | 25d |  |  | No |
| 535 | 127.1 | Fl Head Marking | milestone | 0h | 2018-02-14 08:00 | 2018-02-14 08:00 | 25d | F; H |  | No |
| 536 | 127.2 | Fl Head Cutting | milestone | 0h | 2018-02-14 08:00 | 2018-02-14 08:00 | 25d | C; H |  | No |
| 537 | 128 | **Fl Head Ep** |  | 0d | 2018-02-14 08:00 | 2018-02-14 08:00 | 25d |  |  | No |
| 538 | 128.1 | Fl Head Grinding | milestone | 0h | 2018-02-14 08:00 | 2018-02-14 08:00 | 25d | G; H |  | No |
| 539 | 129 | **Fl Head Fit Up** |  | 0d | 2018-02-14 08:00 | 2018-02-14 08:00 | 25d |  |  | No |
| 540 | 129.1 | Fl Head Fit Up | milestone | 0h | 2018-02-14 08:00 | 2018-02-14 08:00 | 25d | F [200%]; W; H |  | No |
| 541 | 130 | **Fl Head Welding** |  | 0d | 2018-02-14 08:00 | 2018-02-14 08:00 | 25d |  |  | No |
| 542 | 130.1 | Fl Head Welding | milestone | 0h | 2018-02-14 08:00 | 2018-02-14 08:00 | 25d | W; H |  | No |
| 543 | 130.2 | Fl Head Pp Plate Fit Up | milestone | 0h | 2018-02-14 08:00 | 2018-02-14 08:00 | 25d | F [200%]; H; W |  | No |
| 544 | 130.3 | Fl Head Pp Pl Welding | milestone | 0h | 2018-02-14 08:00 | 2018-02-14 08:00 | 25d | W; H |  | No |
| 545 | 130.4 | Fl Head Pp Pl Level Grinding | milestone | 0h | 2018-02-14 08:00 | 2018-02-14 08:00 | 25d | F; H |  | No |
| 546 | 130.5 | Fl Head Inspection | milestone | 0h | 2018-02-14 08:00 | 2018-02-14 08:00 | 25d | F |  | No |
| 547 | 131 | **Fl Head Sr & Machining** |  | 0d | 2018-02-14 08:00 | 2018-02-14 08:00 | 25d |  |  | No |
| 548 | 131.1 | Fl Head Sr | milestone | 0h | 2018-02-14 08:00 | 2018-02-14 08:00 | 25d | SC |  | No |
| 549 | 131.2 | Fl Head Final Machining | milestone | 0h | 2018-02-14 08:00 | 2018-02-14 08:00 | 25d | SC |  | No |
| 550 | 131.3 | Fl Head Hole Marking | milestone | 0h | 2018-02-14 08:00 | 2018-02-14 08:00 | 25d | F; H |  | No |
| 551 | 131.4 | Fl Head Hole Drilling | milestone | 0h | 2018-02-14 08:00 | 2018-02-14 08:00 | 25d | SC |  | No |
| 552 | 131.5 | Fl Head Final Inspection | milestone | 0h | 2018-02-14 08:00 | 2018-02-14 08:00 | 25d | F; H |  | No |
| 553 | 132 | Tube Bundle Fabrication |  | 8h | 2018-02-14 08:00 | 2018-02-14 17:00 | 24d |  |  |  |
| 554 | 133 | **Tube Bundle Assy** |  | 1.5d | 2018-02-14 08:00 | 2018-02-15 12:00 | 23.5d |  | 61h |  |
| 555 | 133.1 | Frame Set Up & Tube Sht Set Up |  | 12h | 2018-02-14 08:00 | 2018-02-15 12:00 | 23.5d | F [200%]; W | 36h |  |
| 556 | 133.2 | Skeliton Assy 19 Baffles |  | 5h | 2018-02-14 08:00 | 2018-02-14 14:00 | 24.38d | F [200%]; H [300%] | 25h |  |

| ID | WBS | Task | Type | Duration | Start | Finish | Total slack | Resources | Work | Text1 |
| --- | --- | --- | --- | --- | --- | --- | --- | --- | --- | --- |
| 557 | 134 | **Tube Insert** |  | 2d | 2018-02-14 08:00 | 2018-02-15 17:00 | 23d |  | 80h |  |
| 558 | 134.1 | Tube Insert |  | 16h | 2018-02-14 08:00 | 2018-02-15 17:00 | 23d | F; H [400%] | 80h |  |
| 559 | 134.2 | Seal Rod Insert & Weld | milestone | 0h | 2018-02-14 08:00 | 2018-02-14 08:00 | 25d | F [200%]; W; H [200%] |  | No |
| 560 | 134.3 | Tube Insert | milestone | 0h | 2018-02-14 08:00 | 2018-02-14 08:00 | 25d | F; H [400%] |  | No |
| 561 | 135 | **Sliding Strip Fit Up Welding** |  | 1.5d | 2018-02-14 08:00 | 2018-02-15 12:00 | 23.5d |  | 32h |  |
| 562 | 135.1 | Sealing Strip Fit Up |  | 4h | 2018-02-14 08:00 | 2018-02-14 12:00 | 24.5d | F; H | 8h |  |
| 563 | 135.2 | Sliding Strip Welding |  | 12h | 2018-02-14 08:00 | 2018-02-15 12:00 | 23.5d | W; H | 24h |  |
| 564 | 135.3 | Seal/Slid Trip Weld Grind | milestone | 0h | 2018-02-14 08:00 | 2018-02-14 08:00 | 25d | G |  | No |
| 565 | 136 | **Tube Bundle Insert** |  | 1d | 2018-02-14 08:00 | 2018-02-14 17:00 | 24d |  | 124h |  |
| 566 | 136.1 | Tube Bundle Insert In Shell |  | 1d | 2018-02-14 08:00 | 2018-02-14 17:00 | 24d | F [300%]; H [800%] | 88h |  |
| 567 | 136.2 | Fl Head Tube Sht Fixing | milestone | 0h | 2018-02-14 08:00 | 2018-02-14 08:00 | 25d | F [200%]; H [400%] |  | No |
| 568 | 136.3 | Test Flg & Gland Assy |  | 4h | 2018-02-14 08:00 | 2018-02-14 12:00 | 24.5d | F [300%]; H [600%] | 36h |  |
| 569 | 137 | **Tube Expansion In Grooves** |  | 1d | 2018-02-14 08:00 | 2018-02-14 17:00 | 24d |  | 40h |  |
| 570 | 137.1 | Tube Exp - St Side 1 Stage |  | 8h | 2018-02-14 08:00 | 2018-02-14 17:00 | 24d | F; H [200%] | 24h | ?? |
| 571 | 137.2 | Tube Exp - Fl Side 1 Stage | milestone | 0h | 2018-02-14 08:00 | 2018-02-14 08:00 | 25d | F; H [200%] |  | No |
| 572 | 137.3 | Tube Trimming Fl Side |  | 1d | 2018-02-14 08:00 | 2018-02-14 17:00 | 24d | F; H | 16h |  |
| 573 | 137.4 | Tube Exp Both Side 4 Stage | milestone | 0h | 2018-02-14 08:00 | 2018-02-14 08:00 | 25d | F [200%]; H [200%] |  | No |
| 574 | 138 | **Tube Exp- Pnuematic Test** |  | 1d | 2018-02-14 08:00 | 2018-02-14 17:00 | 24d |  | 80h |  |
| 575 | 138.1 | Tube Exp Pnuematic Test |  | 1d | 2018-02-14 08:00 | 2018-02-14 17:00 | 24d | F [200%]; H [200%] | 32h | ?? |
| 576 | 138.2 | Pnuematic Test Tpi Witness |  | 8h | 2018-02-14 08:00 | 2018-02-14 17:00 | 24d | F; H | 16h | ?? |
| 577 | 138.3 | Cleaning |  | 8h | 2018-02-14 08:00 | 2018-02-14 17:00 | 24d | F; H [300%] | 32h | ?? |
| 578 | 139 | **Tube Tube Sheet Welding- Ft Side** |  | 5.97d | 2018-02-14 08:00 | 2018-02-21 16:45 | 19.03d |  | 159.5h |  |
| 579 | 139.1 | Tube Welding - St Side Root |  | 47.75h | 2018-02-14 08:00 | 2018-02-21 16:45 | 19.03d | TW; H | 95.5h |  |
| 580 | 139.2 | Tube Welding - St Side Root Dp |  | 4h | 2018-02-14 08:00 | 2018-02-14 12:00 | 24.5d | F; H | 8h |  |
| 581 | 139.3 | Tube Welding - St Side Final Weld |  | 24h | 2018-02-14 08:00 | 2018-02-16 17:00 | 22d | TW; H | 48h |  |
| 582 | 139.4 | Tube Welding - St Side Final Dp |  | 4h | 2018-02-14 08:00 | 2018-02-14 12:00 | 24.5d | F; H | 8h |  |

| ID | WBS | Task | Type | Duration | Start | Finish | Total slack | Resources | Work | Text1 |
| --- | --- | --- | --- | --- | --- | --- | --- | --- | --- | --- |
| 583 | 140 | **Tube To Tube Sheet Welding - Fl Head Side** |  | 0d | 2018-02-14 08:00 | 2018-02-14 08:00 | 25d |  |  | No |
| 584 | 140.1 | Tube Welding - Flh Side Root | milestone | 0h | 2018-02-14 08:00 | 2018-02-14 08:00 | 25d | TW; H |  | No |
| 585 | 140.2 | Tube Welding - Flh Side Root Dp | milestone | 0h | 2018-02-14 08:00 | 2018-02-14 08:00 | 25d | F; H |  | No |
| 586 | 140.3 | Tube Welding - Flh Side Final Weld | milestone | 0h | 2018-02-14 08:00 | 2018-02-14 08:00 | 25d | TW; H |  | No |
| 587 | 140.4 | Tube Welding - Flh Side Final Dp | milestone | 0h | 2018-02-14 08:00 | 2018-02-14 08:00 | 25d | F; H |  | No |
| 588 | 141 | **Shell Side Hydro** |  | 1.5d | 2018-02-14 08:00 | 2018-02-15 12:00 | 23.5d |  | 80h |  |
| 589 | 141.1 | Shell Side Hydro |  | 12h | 2018-02-14 08:00 | 2018-02-15 12:00 | 23.5d | F [200%]; H [200%] | 48h |  |
| 590 | 141.2 | Shell Side Tpi Witness |  | 4h | 2018-02-14 08:00 | 2018-02-14 12:00 | 24.5d | F [200%] | 8h |  |
| 591 | 141.3 | De Watering & Dismantle Of Gland |  | 4h | 2018-02-14 08:00 | 2018-02-14 12:00 | 24.5d | F [200%]; H [400%] | 24h |  |
| 592 | 142 | **Channel Side Hydro** |  | 1.5d | 2018-02-14 08:00 | 2018-02-15 12:00 | 23.5d |  | 80h |  |
| 593 | 142.1 | Shell Side Hydro |  | 12h | 2018-02-14 08:00 | 2018-02-15 12:00 | 23.5d | F [200%]; H [200%] | 48h |  |
| 594 | 142.2 | Shell Side Tpi Witness |  | 4h | 2018-02-14 08:00 | 2018-02-14 12:00 | 24.5d | F [200%] | 8h |  |
| 595 | 142.3 | De Watering & Dismantle Of Gland |  | 4h | 2018-02-14 08:00 | 2018-02-14 12:00 | 24.5d | F [200%]; H [400%] | 24h |  |
| 596 | 143 | **Barrel Side Hydro** |  | 0d | 2018-02-14 08:00 | 2018-02-14 08:00 | 25d |  |  | No |
| 597 | 143.1 | Shell Side Hydro | milestone | 0h | 2018-02-14 08:00 | 2018-02-14 08:00 | 25d | F [200%]; H [200%] |  | No |
| 598 | 143.2 | Shell Side Tpi Witness | milestone | 0h | 2018-02-14 08:00 | 2018-02-14 08:00 | 25d | F [200%] |  | No |
| 599 | 143.3 | De Watering & Dismantle Of Gland | milestone | 0h | 2018-02-14 08:00 | 2018-02-14 08:00 | 25d | F [200%]; H [400%] |  | No |
| 600 | 144 | **Nitrogen Purging** |  | 1d | 2018-02-14 08:00 | 2018-02-14 17:00 | 24d |  |  |  |
| 601 | 144.1 | Blind & Nitrogen Purging |  | 8h | 2018-02-14 08:00 | 2018-02-14 17:00 | 24d |  |  | ?? |
| 602 | 145 | **Painting** |  | 1d? | 2018-02-14 08:00 | 2018-02-14 17:00 | 24d | F; H [200%] | 96h |  |
| 603 | 145.1 | Primer |  | 1d? | 2018-02-14 08:00 | 2018-02-14 17:00 | 24d | P [300%] | 24h | ?? |
| 604 | 145.2 | Top Coat 1 |  | 1d? | 2018-02-14 08:00 | 2018-02-14 17:00 | 24d | P [300%] | 24h | ?? |
| 605 | 145.3 | Top Coat 2 |  | 1d? | 2018-02-14 08:00 | 2018-02-14 17:00 | 24d | P [300%] | 24h | ?? |
