# Develop-Schedule

Schedule from MS Project, 2010-04-12 to 2010-07-08, costs in $, A marks actual dates.
Aurovision

## Calendars

- Standard: Mon-Fri 08:00-12:00, 13:00-17:00; Sat-Sun off.

## Resources

| Resource | Unit | Rate |
| --- | --- | --- |
| PM |  | 15 |
| Team |  | 10 |
| Arch |  | 15 |
| ProcurementTeam |  |  |
| SystemsTeam |  |  |
| TravelCost |  |  |
| BoardingLodingCost |  |  |
| UIExpert |  | 12 |
| DBA |  | 12 |
| Sr.Dev |  | 10 |
| Jr.Dev |  | 5 |
| TL |  | 8 |
| Tester |  | 8 |
| Client |  |  |
| ConfigManager |  | 8 |
| HR |  |  |
| Laptop | Units | 500 |
| Desktop | Units | 400 |
| Leaseline | Mbps | 3000 |
| Softwares |  |  |
| Servers | Units | 2000 |
| RewardRecognition |  |  |
| Party |  |  |

## Schedule

| ID | WBS | Task | Type | Duration | Start | Finish | Predecessors | Complete | Remaining | Baseline start | Baseline finish | Baseline duration | Total slack | Resources | Work | Actual work | Cost | Baseline cost | Actual cost |
| --- | --- | --- | --- | --- | --- | --- | --- | --- | --- | --- | --- | --- | --- | --- | --- | --- | --- | --- | --- |
| 1 | 1 | **DemoProject** |  | 63.07d? | 2010-04-12 A | 2010-07-08 |  | 78% | 13.59d? | 2010-04-12 | 2010-06-30 | 57.17d? | 0d |  | 1454.37h | 1126.37h | 90,452.61 | 91,664.4 | 36,188.61 |
| 2 | 1.1 | Project Kickoff Meeting |  | 1d | 2010-04-12 A | 2010-04-13 A |  | 100% |  | 2010-04-12 | 2010-04-13 | 1d |  | PM; Team [400%] | 40h | 40h | 440 | 440 | 440 |
| 3 | 1.2 | **Resource Identification** |  | 7.5d | 2010-04-13 A | 2010-04-22 A |  | 100% |  | 2010-04-13 | 2010-04-21 | 6d |  |  | 296h | 296h | 3,972.2 | 4,320 | 3,972.2 |
| 4 | 1.2.1 | Identify software & tools requirment |  | 6.92d | 2010-04-13 A | 2010-04-22 A | 2 | 100% |  | 2010-04-13 | 2010-04-21 | 6d |  | Arch | 60h | 60h | 830.77 | 720 | 830.77 |
| 5 | 1.2.2 | Identify hardware requirment |  | 7.5d | 2010-04-13 A | 2010-04-22 A | 2 | 100% |  | 2010-04-13 | 2010-04-21 | 6d |  | Arch | 70h | 70h | 900 | 720 | 900 |
| 6 | 1.2.3 | Identify Team |  | 6.43d | 2010-04-13 A | 2010-04-21 A | 2 | 100% |  | 2010-04-13 | 2010-04-21 | 6d |  | Arch | 60h | 60h | 771.43 | 720 | 771.43 |
| 7 | 1.2.4 | Identify Org resource useful project |  | 6d | 2010-04-13 A | 2010-04-21 A | 2 | 100% |  | 2010-04-13 | 2010-04-21 | 6d |  | Arch | 56h | 56h | 720 | 720 | 720 |
| 8 | 1.2.5 | Read org Process/Policies |  | 6.25d | 2010-04-13 A | 2010-04-21 A | 2 | 100% |  | 2010-04-13 | 2010-04-21 | 6d |  | PM | 50h | 50h | 750 | 720 | 750 |
| 9 | 1.2.6 | Resource Identification Complete | milestone | 0d | 2010-04-13 A | 2010-04-13 A | 2 | 100% |  | 2010-04-13 | 2010-04-21 | 6d |  | PM |  |  |  | 720 |  |
| 10 | 1.3 | **Develop PMP** |  | 3.08d | 2010-04-22 A | 2010-04-27 A |  | 100% |  | 2010-04-21 | 2010-04-23 | 2d |  |  | 108h | 108h | 1,550 | 1,568 | 1,550 |
| 11 | 1.3.1 | Develop Communication Plan |  | 2.5d | 2010-04-22 A | 2010-04-27 A | 3 | 100% |  | 2010-04-21 | 2010-04-23 | 2d |  | PM | 20h | 20h | 300 | 240 | 300 |
| 12 | 1.3.2 | Develop Quality Mgmt Plan |  | 2.5d | 2010-04-22 A | 2010-04-27 A | 3 | 100% |  | 2010-04-21 | 2010-04-23 | 2d |  | PM | 20h | 20h | 300 | 240 | 300 |
| 13 | 1.3.3 | Develop & Baseline Schedule |  | 2.5d | 2010-04-22 A | 2010-04-27 A | 3 | 100% |  | 2010-04-21 | 2010-04-23 | 2d |  | PM | 20h | 20h | 300 | 240 | 300 |
| 14 | 1.3.4 | Develop & Baseline Estimates |  | 1.25d | 2010-04-22 A | 2010-04-23 A | 4 | 100% |  | 2010-04-21 | 2010-04-23 | 2d |  | PM | 10h | 10h | 150 | 240 | 150 |
| 15 | 1.3.5 | Develop Conf Mgmt Plan |  | 1.25d | 2010-04-22 A | 2010-04-23 A | 3 | 100% |  | 2010-04-21 | 2010-04-23 | 2d |  | ConfigManager | 10h | 10h | 80 | 128 | 80 |
| 16 | 1.3.6 | Develop Procurement Plan |  | 2.25d | 2010-04-22 A | 2010-04-26 A | 3 | 100% |  | 2010-04-21 | 2010-04-23 | 2d |  | PM | 18h | 18h | 270 | 240 | 270 |
| 17 | 1.3.7 | Develop Reward Reco Plan |  | 2d | 2010-04-22 A | 2010-04-26 A | 3 | 100% |  | 2010-04-21 | 2010-04-23 | 2d |  | HR [0%] | 0h | 0h |  |  |  |
| 18 | 1.3.8 | Develop Ground Rule Presentation |  | 1.25d | 2010-04-22 A | 2010-04-23 A | 3 | 100% |  | 2010-04-21 | 2010-04-23 | 2d |  | PM | 10h | 10h | 150 | 240 | 150 |
| 19 | 1.3.9 | PMP Reviwed & Signed Off | milestone | 0d | 2010-04-22 A | 2010-04-22 A | 3 | 100% |  | 2010-04-21 | 2010-04-21 | 0d |  | PM |  |  |  |  |  |
| 20 | 1.4 | **Procurement** |  | 24.5d | 2010-04-22 A | 2010-05-26 A |  | 100% |  | 2010-04-20 | 2010-05-20 | 22d |  |  | 430h | 430h | 65,142.86 | 66,000 | 15,142.86 |
| 21 | 1.4.1 | Procure Laptop |  | 12.5d | 2010-04-27 A | 2010-05-26 A | 16 | 100% |  | 2010-04-23 | 2010-05-20 | 10d |  | ProcurementTeam; Laptop [10 Units] | 100h | 100h | 5,000 | 5,000 | 5,000 |
| 22 | 1.4.2 | Procure Desktop, Servers |  | 15.62d | 2010-04-27 A | 2010-05-18 A | 16 | 100% |  | 2010-04-23 | 2010-05-13 | 14d |  | ProcurementTeam; Desktop [10 Units]; Servers [2 Units] | 125h | 125h | 8,000 | 8,000 | 8,000 |
| 23 | 1.4.3 | Procure Leaseline |  | 10d | 2010-04-22 A | 2010-05-05 A | 16FS-3d | 100% |  | 2010-04-20 | 2010-05-10 | 14d |  | ProcurementTeam; Leaseline [0.71 Mbps] | 80h | 80h | 2,142.86 | 3,000 | 2,142.86 |
| 24 | 1.4.4 | Procure software & tools required |  | 15.62d | 2010-04-27 A | 2010-05-18 A | 16 | 100% |  | 2010-04-23 | 2010-05-13 | 14d |  | ProcurementTeam; Softwares [62.5%] | 125h | 125h | 50,000 | 50,000 |  |
| 25 | 1.4.5 | Procurement Complete | milestone | 0d | 2010-04-26 A | 2010-04-26 A | 16 | 100% |  | 2010-04-23 | 2010-04-23 | 0d |  | PM |  |  |  |  |  |

| ID | WBS | Task | Type | Duration | Start | Finish | Predecessors | Complete | Baseline start | Baseline finish | Baseline duration | Total slack | Resources | Work | Actual work | Cost | Baseline cost | Actual cost |
| --- | --- | --- | --- | --- | --- | --- | --- | --- | --- | --- | --- | --- | --- | --- | --- | --- | --- | --- |
| 26 | 1.5 | **Setup & Training** |  | 8.65d | 2010-05-26 A | 2010-06-08 A |  | 100% | 2010-05-20 | 2010-05-31 | 7d |  |  | 227h | 227h | 1,703.15 | 1,692 | 1,703.15 |
| 27 | 1.5.1 | Setup Development Environment |  | 5d | 2010-05-26 A | 2010-06-02 A | 20 | 100% | 2010-05-20 | 2010-05-26 | 4d |  | SystemsTeam | 40h | 40h |  |  |  |
| 28 | 1.5.2 | Setup Project Management System |  | 3.12d | 2010-05-26 A | 2010-05-31 A | 20 | 100% | 2010-05-20 | 2010-05-26 | 4d |  | PM | 25h | 25h | 375 | 480 | 375 |
| 29 | 1.5.3 | Team Kickoff Meeting |  | 1.3d | 2010-06-02 A | 2010-06-03 A | 27, 28 | 100% | 2010-05-26 | 2010-05-27 | 1d |  | Team [1500%] | 12h | 12h | 15.65 | 12 | 15.65 |
| 30 | 1.5.4 | Train Team on Process & Systems |  | 1.09d | 2010-06-03 A | 2010-06-04 A | 29 | 100% | 2010-05-27 | 2010-05-28 | 1d |  | Team [1500%] | 140h | 140h | 1,312.5 | 1,200 | 1,312.5 |
| 31 | 1.5.5 | Provide Access on Systems & tools to team |  | 1.25d | 2010-06-04 A | 2010-06-08 A | 30 | 100% | 2010-05-28 | 2010-05-31 | 1d |  | SystemsTeam | 10h | 10h |  |  |  |
| 32 | 1.5.6 | Setup & Training Complete | milestone | 0d | 2010-06-04 A | 2010-06-04 A | 30 | 100% | 2010-05-28 | 2010-05-28 | 0d |  | PM |  |  |  |  |  |
| 33 | 1.6 | **Requirment Detailing** |  | 13.67d | 2010-06-08 A | 2010-06-25 A |  | 100% | 2010-05-31 | 2010-06-17 | 13.67d |  |  |  |  | 13,000 | 13,000 | 13,000 |
| 34 | 1.6.1 | Send 3 People onsite |  | 13.67d | 2010-06-08 A | 2010-06-25 A | 26 | 100% | 2010-05-31 | 2010-06-17 | 13.67d |  | TravelCost [0.3%] |  |  | 3,000 | 3,000 | 3,000 |
| 35 | 1.6.2 | Requirement Collection by onsite People |  | 13.67d | 2010-06-08 A | 2010-06-25 A | 26 | 100% | 2010-05-31 | 2010-06-17 | 13.67d |  | BoardingLodingCost [0.9%] |  |  | 10,000 | 10,000 | 10,000 |
| 36 | 1.7 | **Intial Architecture Knowledge Transfer from SME to Team** |  | 3.17d | 2010-06-08 A | 2010-06-11 A |  | 100% | 2010-05-31 | 2010-06-03 | 3.17d |  |  | 25.36h | 25.36h | 380.4 | 380.4 | 380.4 |
| 37 | 1.7.1 | Define High Level Architecture |  | 3.17d | 2010-06-08 A | 2010-06-11 A | 26 | 100% | 2010-05-31 | 2010-06-03 | 3.17d |  | Arch | 25.36h | 25.36h | 380.4 | 380.4 | 380.4 |
| 38 | 1.8 | **Developemnt** |  | 63.07d? | 2010-04-12 | 2010-07-08 |  |  | 2010-04-12 | 2010-06-30 | 57.17d? | 0d |  | 328h |  | 4,264 | 4,264 |  |
| 39 | 1.8.1 | **Client Management (15-Jan)** |  | 19d | 2010-06-11 | 2010-07-08 |  |  | 2010-06-03 | 2010-06-30 | 19d | 0d |  | 328h |  | 4,264 | 4,264 |  |
| 40 | 1.8.1.1 | Develop Wireframe & UI |  | 6d | 2010-06-11 | 2010-06-21 | 36 |  | 2010-06-03 | 2010-06-11 | 6d | 13d | UIExpert | 48h |  | 576 | 576 |  |
| 41 | 1.8.1.2 | Create Schema |  | 3d | 2010-06-11 | 2010-06-16 | 36 |  | 2010-06-03 | 2010-06-08 | 3d | 0d | DBA | 24h |  | 288 | 288 |  |
| 42 | 1.8.1.3 | Develop Data Layer |  | 3d | 2010-06-16 | 2010-06-21 | 41 |  | 2010-06-08 | 2010-06-11 | 3d | 0d | DBA | 24h |  | 288 | 288 |  |
| 43 | 1.8.1.4 | Develop Business Layer |  | 5d | 2010-06-21 | 2010-06-28 | 42 |  | 2010-06-11 | 2010-06-18 | 5d | 0d | Sr.Dev [400%] | 160h |  | 1,600 | 1,600 |  |
| 44 | 1.8.1.5 | Execute Unit Test Cases |  | 1d | 2010-06-28 | 2010-06-29 | 43 |  | 2010-06-18 | 2010-06-21 | 1d | 0d | Jr.Dev [300%] | 24h |  | 120 | 120 |  |
| 45 | 1.8.1.6 | Built |  | 1d | 2010-06-29 | 2010-06-30 | 44 |  | 2010-06-21 | 2010-06-22 | 1d | 0d | TL | 8h |  | 64 | 64 |  |
| 46 | 1.8.1.7 | Validation Testing |  | 1d | 2010-06-30 | 2010-07-01 | 45 |  | 2010-06-22 | 2010-06-23 | 1d | 5d | Jr.Dev | 8h |  | 40 | 40 |  |
| 47 | 1.8.1.8 | Usability Testing |  | 1d | 2010-06-30 | 2010-07-01 | 45 |  | 2010-06-22 | 2010-06-23 | 1d | 5d | UIExpert | 8h |  | 96 | 96 |  |
| 48 | 1.8.1.9 | Functionality Testing |  | 1d | 2010-06-30 | 2010-07-01 | 45 |  | 2010-06-22 | 2010-06-23 | 1d | 0d | Tester | 8h |  | 64 | 64 |  |
| 49 | 1.8.1.10 | Interation Testing |  | 1d | 2010-07-01 | 2010-07-02 | 48 |  | 2010-06-23 | 2010-06-24 | 1d | 0d | Tester | 8h |  | 64 | 64 |  |
| 50 | 1.8.1.11 | System Testing |  | 1d | 2010-07-02 | 2010-07-05 | 49 |  | 2010-06-24 | 2010-06-25 | 1d | 0d | Tester | 8h |  | 64 | 64 |  |
| 51 | 1.8.1.12 | UAT of "Client Management" |  | 3d | 2010-07-05 | 2010-07-08 | 50 |  | 2010-06-25 | 2010-06-30 | 3d | 0d | Client [0%] |  |  |  |  |  |
| 52 | 1.8.1.13 | Client Management Module Compelete | milestone | 0d | 2010-07-08 | 2010-07-08 | 51 |  | 2010-06-30 | 2010-06-30 | 0d | 0d | PM |  |  |  |  |  |
| 53 | 1.8.1.14 | Celebrate Milestone | milestone | 0d | 2010-07-08 | 2010-07-08 | 52 |  | 2010-06-30 | 2010-06-30 | 0d | 0d | Party [0.3%]; RewardRecognition [0.3%] |  |  | 1,000 | 1,000 |  |

| ID | WBS | Task | Duration | Start | Finish | Total slack |
| --- | --- | --- | --- | --- | --- | --- |
| 54 | 1.8.2 | **Account Opening (10-Feb)** | 1d? | 2010-04-12 | 2010-04-13 | 56.17d |
| 55 | 1.8.2.1 | Develop Wireframe & UI | 1d? | 2010-04-12 | 2010-04-13 | 56.17d |
| 56 | 1.8.2.2 | Create Schema | 1d? | 2010-04-12 | 2010-04-13 | 56.17d |
| 57 | 1.8.2.3 | Develop Data Layer | 1d? | 2010-04-12 | 2010-04-13 | 56.17d |
| 58 | 1.8.2.4 | Develop Business Layer | 1d? | 2010-04-12 | 2010-04-13 | 56.17d |
| 59 | 1.8.2.5 | Execute Unit Test Cases | 1d? | 2010-04-12 | 2010-04-13 | 56.17d |
| 60 | 1.8.2.6 | Built | 1d? | 2010-04-12 | 2010-04-13 | 56.17d |
| 61 | 1.8.2.7 | Validation Testing | 1d? | 2010-04-12 | 2010-04-13 | 56.17d |
| 62 | 1.8.2.8 | Usability Testing | 1d? | 2010-04-12 | 2010-04-13 | 56.17d |
| 63 | 1.8.2.9 | Functionality Testing | 1d? | 2010-04-12 | 2010-04-13 | 56.17d |
| 64 | 1.8.2.10 | Interation Testing | 1d? | 2010-04-12 | 2010-04-13 | 56.17d |
| 65 | 1.8.2.11 | System Testing | 1d? | 2010-04-12 | 2010-04-13 | 56.17d |
| 66 | 1.8.2.12 | UAT of "Account Opening" | 1d? | 2010-04-12 | 2010-04-13 | 56.17d |
| 67 | 1.8.2.13 | Account Opening Module Complete | 1d? | 2010-04-12 | 2010-04-13 | 56.17d |
