# Develop-Schedule

Schedule from MS Project, 2010-04-12 to 2010-06-30, costs in $.
Aurovision

## Calendars

- Standard: Mon-Fri 08:00-12:00, 13:00-17:00; Sat-Sun off.

## Resources

| Resource | Unit | Rate |
| --- | --- | --- |
| PM |  | 15 |
| Team |  | 10 |
| Arch |  | 15 |
| ProcurementTeam |  |  |
| SystemsTeam |  |  |
| TravelCost |  |  |
| BoardingLodingCost |  |  |
| UIExpert |  | 12 |
| DBA |  | 12 |
| Sr.Dev |  | 10 |
| Jr.Dev |  | 5 |
| TL |  | 8 |
| Tester |  | 8 |
| Client |  |  |
| ConfigManager |  | 8 |
| HR |  |  |
| Laptop | Units | 500 |
| Desktop | Units | 400 |
| Leaseline | Mbps | 3000 |
| Softwares |  |  |
| Servers | Units | 2000 |
| RewardRecognition |  |  |
| Party |  |  |

## Schedule

| ID | WBS | Task | Type | Duration | Start | Finish | Predecessors | Baseline start | Baseline finish | Baseline duration | Total slack | Resources | Work | Cost | Baseline cost |
| --- | --- | --- | --- | --- | --- | --- | --- | --- | --- | --- | --- | --- | --- | --- | --- |
| 1 | 1 | **DemoProject** |  | 57.17d? | 2010-04-12 | 2010-06-30 |  | 2010-04-12 | 2010-06-30 | 57.17d? | 0d |  | 1446.57h | 91,664.4 | 91,664.4 |
| 2 | 1.1 | Project Kickoff Meeting |  | 1d | 2010-04-12 | 2010-04-13 |  | 2010-04-12 | 2010-04-13 | 1d | 0d | PM; Team [400%] | 40h | 440 | 440 |
| 3 | 1.2 | **Resource Identification** |  | 6d | 2010-04-13 | 2010-04-21 |  | 2010-04-13 | 2010-04-21 | 6d | 0d |  | 316h | 4,320 | 4,320 |
| 4 | 1.2.1 | Identify software & tools requirment |  | 6d | 2010-04-13 | 2010-04-21 | 2 | 2010-04-13 | 2010-04-21 | 6d | 0d | Arch | 52h | 720 | 720 |
| 5 | 1.2.2 | Identify hardware requirment |  | 6d | 2010-04-13 | 2010-04-21 | 2 | 2010-04-13 | 2010-04-21 | 6d | 0d | Arch | 56h | 720 | 720 |
| 6 | 1.2.3 | Identify Team |  | 6d | 2010-04-13 | 2010-04-21 | 2 | 2010-04-13 | 2010-04-21 | 6d | 0d | Arch | 56h | 720 | 720 |
| 7 | 1.2.4 | Identify Org resource useful project |  | 6d | 2010-04-13 | 2010-04-21 | 2 | 2010-04-13 | 2010-04-21 | 6d | 0d | Arch | 56h | 720 | 720 |
| 8 | 1.2.5 | Read org Process/Policies |  | 6d | 2010-04-13 | 2010-04-21 | 2 | 2010-04-13 | 2010-04-21 | 6d | 0d | PM | 48h | 720 | 720 |
| 9 | 1.2.6 | Resource Identification Complete |  | 6d | 2010-04-13 | 2010-04-21 | 2 | 2010-04-13 | 2010-04-21 | 6d | 0d | PM | 48h | 720 | 720 |
| 10 | 1.3 | **Develop PMP** |  | 2d | 2010-04-21 | 2010-04-23 |  | 2010-04-21 | 2010-04-23 | 2d | 0d |  | 112h | 1,568 | 1,568 |
| 11 | 1.3.1 | Develop Communication Plan |  | 2d | 2010-04-21 | 2010-04-23 | 3 | 2010-04-21 | 2010-04-23 | 2d | 48.17d | PM | 16h | 240 | 240 |
| 12 | 1.3.2 | Develop Quality Mgmt Plan |  | 2d | 2010-04-21 | 2010-04-23 | 3 | 2010-04-21 | 2010-04-23 | 2d | 48.17d | PM | 16h | 240 | 240 |
| 13 | 1.3.3 | Develop & Baseline Schedule |  | 2d | 2010-04-21 | 2010-04-23 | 3 | 2010-04-21 | 2010-04-23 | 2d | 48.17d | PM | 16h | 240 | 240 |
| 14 | 1.3.4 | Develop & Baseline Estimates |  | 2d | 2010-04-21 | 2010-04-23 | 4 | 2010-04-21 | 2010-04-23 | 2d | 48.17d | PM | 16h | 240 | 240 |
| 15 | 1.3.5 | Develop Conf Mgmt Plan |  | 2d | 2010-04-21 | 2010-04-23 | 3 | 2010-04-21 | 2010-04-23 | 2d | 48.17d | ConfigManager | 16h | 128 | 128 |
| 16 | 1.3.6 | Develop Procurement Plan |  | 2d | 2010-04-21 | 2010-04-23 | 3 | 2010-04-21 | 2010-04-23 | 2d | 0d | PM | 16h | 240 | 240 |
| 17 | 1.3.7 | Develop Reward Reco Plan |  | 2d | 2010-04-21 | 2010-04-23 | 3 | 2010-04-21 | 2010-04-23 | 2d | 48.17d | HR [0%] | 0h |  |  |
| 18 | 1.3.8 | Develop Ground Rule Presentation |  | 2d | 2010-04-21 | 2010-04-23 | 3 | 2010-04-21 | 2010-04-23 | 2d | 48.17d | PM | 16h | 240 | 240 |
| 19 | 1.3.9 | PMP Reviwed & Signed Off | milestone | 0d | 2010-04-21 | 2010-04-21 | 3 | 2010-04-21 | 2010-04-21 | 0d | 50.17d | PM |  |  |  |
| 20 | 1.4 | **Procurement** |  | 22d | 2010-04-20 | 2010-05-20 |  | 2010-04-20 | 2010-05-20 | 22d | 0d |  | 416h | 66,000 | 66,000 |
| 21 | 1.4.1 | Procure Laptop |  | 10d | 2010-04-23 | 2010-05-20 | 16 | 2010-04-23 | 2010-05-20 | 10d | 0d | ProcurementTeam; Laptop [10 Units] | 80h | 5,000 | 5,000 |
| 22 | 1.4.2 | Procure Desktop, Servers |  | 14d | 2010-04-23 | 2010-05-13 | 16 | 2010-04-23 | 2010-05-13 | 14d | 5d | ProcurementTeam; Desktop [10 Units]; Servers [2 Units] | 112h | 8,000 | 8,000 |
| 23 | 1.4.3 | Procure Leaseline |  | 14d | 2010-04-20 | 2010-05-10 | 16FS-3d | 2010-04-20 | 2010-05-10 | 14d | 8d | ProcurementTeam; Leaseline [1 Mbps] | 112h | 3,000 | 3,000 |
| 24 | 1.4.4 | Procure software & tools required |  | 14d | 2010-04-23 | 2010-05-13 | 16 | 2010-04-23 | 2010-05-13 | 14d | 5d | ProcurementTeam; Softwares [62.5%] | 112h | 50,000 | 50,000 |
| 25 | 1.4.5 | Procurement Complete | milestone | 0d | 2010-04-23 | 2010-04-23 | 16 | 2010-04-23 | 2010-04-23 | 0d | 19d | PM |  |  |  |

| ID | WBS | Task | Type | Duration | Start | Finish | Predecessors | Baseline start | Baseline finish | Baseline duration | Total slack | Resources | Work | Cost | Baseline cost |
| --- | --- | --- | --- | --- | --- | --- | --- | --- | --- | --- | --- | --- | --- | --- | --- |
| 26 | 1.5 | **Setup & Training** |  | 7d | 2010-05-20 | 2010-05-31 |  | 2010-05-20 | 2010-05-31 | 7d | 0d |  | 209.2h | 1,692 | 1,692 |
| 27 | 1.5.1 | Setup Development Environment |  | 4d | 2010-05-20 | 2010-05-26 | 20 | 2010-05-20 | 2010-05-26 | 4d | 0d | SystemsTeam | 32h |  |  |
| 28 | 1.5.2 | Setup Project Management System |  | 4d | 2010-05-20 | 2010-05-26 | 20 | 2010-05-20 | 2010-05-26 | 4d | 0d | PM | 32h | 480 | 480 |
| 29 | 1.5.3 | Team Kickoff Meeting |  | 1d | 2010-05-26 | 2010-05-27 | 27, 28 | 2010-05-26 | 2010-05-27 | 1d | 0d | Team [1500%] | 9.2h | 12 | 12 |
| 30 | 1.5.4 | Train Team on Process & Systems |  | 1d | 2010-05-27 | 2010-05-28 | 29 | 2010-05-27 | 2010-05-28 | 1d | 0d | Team [1500%] | 128h | 1,200 | 1,200 |
| 31 | 1.5.5 | Provide Access on Systems & tools to team |  | 1d | 2010-05-28 | 2010-05-31 | 30 | 2010-05-28 | 2010-05-31 | 1d | 0d | SystemsTeam | 8h |  |  |
| 32 | 1.5.6 | Setup & Training Complete | milestone | 0d | 2010-05-28 | 2010-05-28 | 30 | 2010-05-28 | 2010-05-28 | 0d | 1d | PM |  |  |  |
| 33 | 1.6 | **Requirment Detailing** |  | 13.67d | 2010-05-31 | 2010-06-17 |  | 2010-05-31 | 2010-06-17 | 13.67d | 8.5d |  |  | 13,000 | 13,000 |
| 34 | 1.6.1 | Send 3 People onsite |  | 13.67d | 2010-05-31 | 2010-06-17 | 26 | 2010-05-31 | 2010-06-17 | 13.67d | 8.5d | TravelCost [0.3%] |  | 3,000 | 3,000 |
| 35 | 1.6.2 | Requirement Collection by onsite People |  | 13.67d | 2010-05-31 | 2010-06-17 | 26 | 2010-05-31 | 2010-06-17 | 13.67d | 8.5d | BoardingLodingCost [0.9%] |  | 10,000 | 10,000 |
| 36 | 1.7 | **Intial Architecture Knowledge Transfer from SME to Team** |  | 3.17d | 2010-05-31 | 2010-06-03 |  | 2010-05-31 | 2010-06-03 | 3.17d | 0d |  | 25.36h | 380.4 | 380.4 |
| 37 | 1.7.1 | Define High Level Architecture |  | 3.17d | 2010-05-31 | 2010-06-03 | 26 | 2010-05-31 | 2010-06-03 | 3.17d | 0d | Arch | 25.36h | 380.4 | 380.4 |
| 38 | 1.8 | **Developemnt** |  | 57.17d? | 2010-04-12 | 2010-06-30 |  | 2010-04-12 | 2010-06-30 | 57.17d? | 0d |  | 328h | 4,264 | 4,264 |
| 39 | 1.8.1 | **Client Management (15-Jan)** |  | 19d | 2010-06-03 | 2010-06-30 |  | 2010-06-03 | 2010-06-30 | 19d | 0d |  | 328h | 4,264 | 4,264 |
| 40 | 1.8.1.1 | Develop Wireframe & UI |  | 6d | 2010-06-03 | 2010-06-11 | 36 | 2010-06-03 | 2010-06-11 | 6d | 13d | UIExpert | 48h | 576 | 576 |
| 41 | 1.8.1.2 | Create Schema |  | 3d | 2010-06-03 | 2010-06-08 | 36 | 2010-06-03 | 2010-06-08 | 3d | 0d | DBA | 24h | 288 | 288 |
| 42 | 1.8.1.3 | Develop Data Layer |  | 3d | 2010-06-08 | 2010-06-11 | 41 | 2010-06-08 | 2010-06-11 | 3d | 0d | DBA | 24h | 288 | 288 |
| 43 | 1.8.1.4 | Develop Business Layer |  | 5d | 2010-06-11 | 2010-06-18 | 42 | 2010-06-11 | 2010-06-18 | 5d | 0d | Sr.Dev [400%] | 160h | 1,600 | 1,600 |
| 44 | 1.8.1.5 | Execute Unit Test Cases |  | 1d | 2010-06-18 | 2010-06-21 | 43 | 2010-06-18 | 2010-06-21 | 1d | 0d | Jr.Dev [300%] | 24h | 120 | 120 |
| 45 | 1.8.1.6 | Built |  | 1d | 2010-06-21 | 2010-06-22 | 44 | 2010-06-21 | 2010-06-22 | 1d | 0d | TL | 8h | 64 | 64 |
| 46 | 1.8.1.7 | Validation Testing |  | 1d | 2010-06-22 | 2010-06-23 | 45 | 2010-06-22 | 2010-06-23 | 1d | 5d | Jr.Dev | 8h | 40 | 40 |
| 47 | 1.8.1.8 | Usability Testing |  | 1d | 2010-06-22 | 2010-06-23 | 45 | 2010-06-22 | 2010-06-23 | 1d | 5d | UIExpert | 8h | 96 | 96 |
| 48 | 1.8.1.9 | Functionality Testing |  | 1d | 2010-06-22 | 2010-06-23 | 45 | 2010-06-22 | 2010-06-23 | 1d | 0d | Tester | 8h | 64 | 64 |
| 49 | 1.8.1.10 | Interation Testing |  | 1d | 2010-06-23 | 2010-06-24 | 48 | 2010-06-23 | 2010-06-24 | 1d | 0d | Tester | 8h | 64 | 64 |
| 50 | 1.8.1.11 | System Testing |  | 1d | 2010-06-24 | 2010-06-25 | 49 | 2010-06-24 | 2010-06-25 | 1d | 0d | Tester | 8h | 64 | 64 |
| 51 | 1.8.1.12 | UAT of "Client Management" |  | 3d | 2010-06-25 | 2010-06-30 | 50 | 2010-06-25 | 2010-06-30 | 3d | 0d | Client [0%] |  |  |  |
| 52 | 1.8.1.13 | Client Management Module Compelete | milestone | 0d | 2010-06-30 | 2010-06-30 | 51 | 2010-06-30 | 2010-06-30 | 0d | 0d | PM |  |  |  |
| 53 | 1.8.1.14 | Celebrate Milestone | milestone | 0d | 2010-06-30 | 2010-06-30 | 52 | 2010-06-30 | 2010-06-30 | 0d | 0d | Party [0.3%]; RewardRecognition [0.3%] |  | 1,000 | 1,000 |

| ID | WBS | Task | Duration | Start | Finish | Total slack |
| --- | --- | --- | --- | --- | --- | --- |
| 54 | 1.8.2 | **Account Opening (10-Feb)** | 1d? | 2010-04-12 | 2010-04-13 | 56.17d |
| 55 | 1.8.2.1 | Develop Wireframe & UI | 1d? | 2010-04-12 | 2010-04-13 | 56.17d |
| 56 | 1.8.2.2 | Create Schema | 1d? | 2010-04-12 | 2010-04-13 | 56.17d |
| 57 | 1.8.2.3 | Develop Data Layer | 1d? | 2010-04-12 | 2010-04-13 | 56.17d |
| 58 | 1.8.2.4 | Develop Business Layer | 1d? | 2010-04-12 | 2010-04-13 | 56.17d |
| 59 | 1.8.2.5 | Execute Unit Test Cases | 1d? | 2010-04-12 | 2010-04-13 | 56.17d |
| 60 | 1.8.2.6 | Built | 1d? | 2010-04-12 | 2010-04-13 | 56.17d |
| 61 | 1.8.2.7 | Validation Testing | 1d? | 2010-04-12 | 2010-04-13 | 56.17d |
| 62 | 1.8.2.8 | Usability Testing | 1d? | 2010-04-12 | 2010-04-13 | 56.17d |
| 63 | 1.8.2.9 | Functionality Testing | 1d? | 2010-04-12 | 2010-04-13 | 56.17d |
| 64 | 1.8.2.10 | Interation Testing | 1d? | 2010-04-12 | 2010-04-13 | 56.17d |
| 65 | 1.8.2.11 | System Testing | 1d? | 2010-04-12 | 2010-04-13 | 56.17d |
| 66 | 1.8.2.12 | UAT of "Account Opening" | 1d? | 2010-04-12 | 2010-04-13 | 56.17d |
| 67 | 1.8.2.13 | Account Opening Module Complete | 1d? | 2010-04-12 | 2010-04-13 | 56.17d |
