# MSF Application Development

Schedule from MS Project, 2007-01-01 to 2008-02-15, costs in $, A marks actual dates.

## Calendars

- Standard: Mon-Fri 08:00-12:00, 13:00-17:00; Sat-Sun off.

## Resources

| Resource | Unit | Rate |
| --- | --- | --- |
| Program management |  | 60 |
| Product management |  | 55 |
| Development |  | 45 |
| Testing-Manul |  | 35 |
| Logistics management |  | 30 |
| User education |  | 32 |
| Support organization |  | 30 |
| Customer |  |  |
| Budget Travel |  |  |
| Budget Labor |  |  |
| Budget Materials | $ |  |
| Telerik Software |  |  |
| Dreamweaver |  |  |
| International Travel |  |  |
| Local Travel |  |  |
| National Travel |  |  |
| Food & Beverage |  |  |

## Schedule

| ID | WBS | Task | Type | Duration | Start | Finish | Predecessors | Complete | Remaining | Baseline start | Baseline finish | Baseline duration | Total slack | Free slack | Resources | Work | Actual work | Cost | Baseline cost | Actual cost |
| --- | --- | --- | --- | --- | --- | --- | --- | --- | --- | --- | --- | --- | --- | --- | --- | --- | --- | --- | --- | --- |
| 1 | 1 | **Project Kick-Off** |  | 6d? | 2007-01-01 A | 2007-01-08 A |  | 100% |  | 2007-01-01 | 2007-01-08 | 6d? |  |  | Product management | 158h | 158h | 6,603.75 | 5,590 | 6,603.75 |
| 2 | 1.1 | **Form Team** |  | 6d? | 2007-01-01 A | 2007-01-08 A |  | 100% |  | 2007-01-01 | 2007-01-08 | 6d? |  |  |  | 110h | 110h | 3,963.75 | 2,950 | 3,963.75 |
| 3 | 1.1.1 | PSM Travels Delhi |  | 1d? | 2007-01-01 A | 2007-01-01 A |  | 100% |  | 2007-01-01 | 2007-01-01 | 1d? |  |  | National Travel [0.4%] |  |  | 300 | 300 | 300 |
| 4 | 1.1.2 | Define team roles |  | 3d | 2007-01-01 A | 2007-01-03 A |  | 100% |  | 2007-01-01 | 2007-01-02 | 2d |  |  | Program management; Product management; Development; Testing-Manul; Logistics management | 30h | 30h | 1,013.75 | 662.5 | 1,013.75 |
| 5 | 1.1.3 | Identify required skills |  | 2d | 2007-01-01 A | 2007-01-02 A |  | 100% |  | 2007-01-01 | 2007-01-02 | 2d |  |  | Program management; Product management; Development; Testing-Manul; Logistics management | 20h | 20h | 662.5 | 662.5 | 662.5 |
| 6 | 1.1.4 | Identify resources |  | 4d | 2007-01-03 A | 2007-01-08 A | 5, 4 | 100% |  | 2007-01-03 | 2007-01-04 | 2d |  |  | Program management; Product management; Development; Testing-Manul; Logistics management | 40h | 40h | 1,325 | 662.5 | 1,325 |
| 7 | 1.1.5 | Assign roles to resources |  | 2d | 2007-01-05 A | 2007-01-08 A | 6 | 100% |  | 2007-01-05 | 2007-01-08 | 2d |  |  | Program management; Product management; Development; Testing-Manul; Logistics management | 20h | 20h | 662.5 | 662.5 | 662.5 |
| 8 | 1.1.6 | Team formed | milestone | 0d | 2007-01-08 A | 2007-01-08 A | 7 | 100% |  | 2007-01-08 | 2007-01-08 | 0d |  |  |  |  |  |  |  |  |
| 9 | 2 | **Envisioning** |  | 44.66d? | 2007-01-09 A | 2007-03-12 | 8 | 92% | 3.65d? | 2007-01-09 | 2007-03-12 | 44.16d? | 244.25d |  | Product management | 680.87h | 636.46h | 38,029.6 | 40,019.19 | 35,546.78 |
| 10 | 2.1 | Define preliminary business requirements (ongoing) |  | 29d | 2007-01-09 A | 2007-02-16 A | 8 | 100% |  | 2007-01-09 | 2007-02-16 | 29d |  |  | Product management [50%]; Program management [20%] | 47.73h | 47.73h | 2,857.33 | 2,857.33 | 2,857.33 |
| 11 | 2.2 | Purchase Telerik |  | 1d? | 2007-01-09 | 2007-01-09 |  |  |  | 2007-01-09 | 2007-01-09 | 1d? | 287.91d |  | Telerik Software [0.1%] |  |  |  | 2,000 |  |
| 12 | 2.3 | Purchase Dreamviewer |  | 1d? | 2007-01-09 | 2007-01-09 |  |  |  | 2007-01-09 | 2007-01-09 | 1d? | 287.91d |  | Dreamweaver [0.1%] |  |  |  | 800 |  |
| 13 | 2.4 | Risk management |  | 1d | 2007-01-09 A | 2007-01-09 A | 8 | 100% |  | 2007-01-09 | 2007-01-09 | 1d |  |  |  |  |  |  |  |  |
| 14 | 2.5 | **Define Project Structure** |  | 9d | 2007-01-09 A | 2007-01-19 | 8 | 94% | 0.55d | 2007-01-09 | 2007-01-19 | 9d | 279.91d |  |  | 48.93h | 44.53h | 2,372.04 | 2,372.04 | 2,108.04 |
| 15 | 2.5.1 | Define project tracking process |  | 5d | 2007-01-09 A | 2007-01-15 A |  | 100% |  | 2007-01-09 | 2007-01-15 | 5d |  |  | Program management [3.8%]; Product management [15.4%]; User education [25%]; Testing-Manul [25%]; Development [25%]; Logistics management [25%] | 10.4h | 10.4h | 317.56 | 317.56 | 317.56 |
| 16 | 2.5.2 | Define problem resolution process |  | 4d | 2007-01-09 A | 2007-01-12 A |  | 100% |  | 2007-01-09 | 2007-01-12 | 4d |  |  | Program management [25%]; Development [25%]; Testing-Manul [25%] | 8.4h | 8.4h | 339.2 | 339.2 | 339.2 |
| 17 | 2.5.3 | Define issue tracking process |  | 3d | 2007-01-09 A | 2007-01-11 |  | 63% | 1.1d | 2007-01-09 | 2007-01-11 | 3d | 285.91d |  | Development [25%]; Testing-Manul [25%]; Program management [50%] | 12.4h | 8h | 736.4 | 736.4 | 472.4 |
| 18 | 2.5.4 | Define change control procedures |  | 4d | 2007-01-12 A | 2007-01-17 A | 17 | 100% |  | 2007-01-12 | 2007-01-17 | 4d |  |  | Testing-Manul [25%]; Program management [25%]; Development [25%]; Product management [25%] | 8.4h | 8.4h | 458.88 | 458.88 | 458.88 |
| 19 | 2.5.5 | Define accountability and expectations |  | 2d | 2007-01-18 A | 2007-01-19 A | 18 | 100% |  | 2007-01-18 | 2007-01-19 | 2d |  |  | Program management [50%]; Product management [50%] | 9.33h | 9.33h | 520 | 520 | 520 |
| 20 | 2.5.6 | Project structure determined | milestone | 0d | 2007-01-19 A | 2007-01-19 A | 15, 16, 19 | 100% |  | 2007-01-19 | 2007-01-19 | 0d |  |  |  |  |  |  |  |  |
| 21 | 2.6 | **Research and Gather Assumptions** |  | 25.16d? | 2007-01-09 A | 2007-02-13 |  | 83% | 4.22d? | 2007-01-09 | 2007-02-13 | 25.16d? | 263.75d |  |  | 79.6h | 68.8h | 5,833.64 | 5,833.64 | 5,221.64 |
| 22 | 2.6.1 | Team Travel to US |  | 1d? | 2007-01-09 A | 2007-01-09 A |  | 100% |  | 2007-01-09 | 2007-01-09 | 1d? |  |  | International Travel [2.5%] |  |  | 2,000 | 2,000 | 2,000 |
| 23 | 2.6.2 | Conduct preliminary user interviews |  | 2d | 2007-01-09 A | 2007-01-10 A |  | 100% |  | 2007-01-09 | 2007-01-10 | 2d |  |  | Product management; Program management; Development | 20h | 20h | 950 | 950 | 950 |
| 24 | 2.6.3 | Define usage scenarios |  | 10d | 2007-01-11 A | 2007-01-24 | 23 | 58% | 4.2d | 2007-01-11 | 2007-01-24 | 10d | 275.71d | 0d | Product management [25%]; Development [25%]; Program management [25%] | 20.4h | 12h | 1,218.8 | 1,218.8 | 714.8 |
| 25 | 2.6.4 | Develop preliminary user profile |  | 5d | 2007-01-25 A | 2007-01-31 A | 24 | 100% |  | 2007-01-25 | 2007-01-31 | 5d |  |  | Product management [25%]; User education [25%] | 10.4h | 10.4h | 342 | 342 | 342 |
| 26 | 2.6.5 | Develop preliminary vision statement |  | 1d | 2007-02-01 A | 2007-02-01 A | 25 | 100% |  | 2007-02-01 | 2007-02-01 | 1d |  |  | Product management [25%] | 2h | 2h | 110 | 110 | 110 |
| 27 | 2.6.6 | Establish design goals |  | 8d | 2007-01-25 A | 2007-02-05 | 24 | 85% | 1.2d | 2007-01-25 | 2007-02-05 | 8d | 268.91d |  | Product management [25%]; Program management [25%]; Development [25%] | 16.4h | 14h | 743.6 | 743.6 | 635.6 |
| 28 | 2.6.7 | Develop preliminary solution concept |  | 5.16d | 2007-02-06 A | 2007-02-13 A | 27, 26 | 100% |  | 2007-02-06 | 2007-02-13 | 5.16d |  |  | Program management [25%]; Customer [0.1%]; Development [25%] | 10.4h | 10.4h | 469.24 | 469.24 | 469.24 |

Notes:
- 13: This task should continue to occur throughout the Envisioning phase. One way to represent this is to do a paste link from the start date of task 12 to the start date of this task, and then do a paste link from the finish date of 34 to the finish date of this task. See the template Help file for more details.

| ID | WBS | Task | Type | Duration | Start | Finish | Predecessors | Complete | Remaining | Baseline start | Baseline finish | Baseline duration | Total slack | Free slack | Resources | Work | Actual work | Cost | Baseline cost | Actual cost |
| --- | --- | --- | --- | --- | --- | --- | --- | --- | --- | --- | --- | --- | --- | --- | --- | --- | --- | --- | --- | --- |
| 29 | 2.7 | **Develop Preliminary Project Scope** |  | 19.5d? | 2007-02-13 A | 2007-03-12 A | 28, 26 | 100% |  | 2007-02-13 | 2007-03-12 | 19d? |  |  |  | 147.33h | 147.33h | 7,316.74 | 6,726.33 | 7,316.74 |
| 30 | 2.7.1 | PM Travel to US |  | 1d? | 2007-02-13 A | 2007-02-14 A |  | 100% |  | 2007-02-13 | 2007-02-14 | 1d? |  |  | International Travel [1.2%] |  |  | 1,000 | 1,000 | 1,000 |
| 31 | 2.7.2 | Define critical success factors |  | 2d | 2007-02-13 A | 2007-02-15 A |  | 100% |  | 2007-02-13 | 2007-02-15 | 2d |  |  | Product management | 16h | 16h | 880 | 880 | 880 |
| 32 | 2.7.3 | Define success metrics |  | 1d | 2007-02-15 A | 2007-02-16 A | 31 | 100% |  | 2007-02-15 | 2007-02-16 | 1d |  |  | Product management; Testing-Manul | 16h | 16h | 760 | 760 | 760 |
| 33 | 2.7.4 | Define major deliverables (preliminary) |  | 3d | 2007-02-16 A | 2007-02-21 A | 32 | 100% |  | 2007-02-16 | 2007-02-21 | 3d |  |  | Product management [50%]; Program management [50%] | 13.33h | 13.33h | 793.33 | 793.33 | 793.33 |
| 34 | 2.7.5 | Draft vision/scope |  | 4.29d | 2007-02-21 A | 2007-02-27 A | 33 | 100% |  | 2007-02-21 | 2007-02-26 | 3d |  |  | Program management; Product management; Development; Testing-Manul; Logistics management | 40h | 40h | 1,289.29 | 902.5 | 1,289.29 |
| 35 | 2.7.6 | Review vision/scope |  | 2d | 2007-02-26 A | 2007-02-28 A | 34 | 100% |  | 2007-02-26 | 2007-02-28 | 2d |  |  | Program management; Product management; Development; Testing-Manul; Logistics management; User education | 20h | 20h | 663.25 | 663.25 | 663.25 |
| 36 | 2.7.7 | Update vision/scope |  | 3d | 2007-02-28 A | 2007-03-05 A | 35 | 100% |  | 2007-02-28 | 2007-03-05 | 3d |  |  | Product management | 24h | 24h | 1,320 | 1,320 | 1,320 |
| 37 | 2.7.8 | Buffer |  | 4d | 2007-03-05 A | 2007-03-09 A | 36 | 100% |  | 2007-03-05 | 2007-03-09 | 4d |  |  |  |  |  |  |  |  |
| 38 | 2.7.9 | Perform milestone review |  | 1.5d | 2007-03-09 A | 2007-03-12 A | 36, 37 | 100% |  | 2007-03-09 | 2007-03-12 | 1d |  |  | Program management; Product management; Development; Testing-Manul; Logistics management; User education | 18h | 18h | 610.88 | 407.25 | 610.88 |
| 39 | 2.8 | Vision approved | milestone | 0d | 2007-03-12 A | 2007-03-12 A | 38, 33, 20, 13 | 100% |  | 2007-03-12 | 2007-03-12 | 0d |  |  | Program management; Product management; Development; Testing-Manul; Logistics management |  |  |  |  |  |
| 40 | 3 | **Planning** |  | 58.75d? | 2007-03-12 A | 2007-05-31 | 39 | 96% | 2.57d? | 2007-03-12 | 2007-05-31 | 58.75d? | 186d |  |  | 1443.97h | 1407.09h | 59,537.51 | 55,016.23 | 57,431.82 |
| 41 | 3.1 | Update risk assessment |  | 1d | 2007-03-12 A | 2007-03-13 A | 39 | 100% |  | 2007-03-12 | 2007-03-13 | 1d |  |  | Program management | 8h | 8h | 480 | 480 | 480 |
| 42 | 3.2 | Conduct user interviews |  | 10d | 2007-03-12 A | 2007-03-26 A | 39 | 100% |  | 2007-03-12 | 2007-03-26 | 10d |  |  | Product management [50%]; Development [25%]; Testing-Manul [25%]; Logistics management [25%]; Program management [50%] | 41.33h | 41.33h | 2,445.67 | 2,445.67 | 2,445.66 |
| 43 | 3.3 | **Functional Specification Creation** |  | 32d? | 2007-03-12 A | 2007-04-25 |  | 95% | 1.75d? | 2007-03-12 | 2007-04-25 | 32d? | 212.75d |  |  | 78.84h | 75h | 2,676.57 | 2,563.25 | 2,553.55 |
| 44 | 3.3.1 | BA Travel to Mumbai Office |  | 1d? | 2007-03-12 A | 2007-03-13 A |  | 100% |  | 2007-03-12 | 2007-03-13 | 1d? |  |  | Local Travel [0.1%] |  |  | 100 | 100 | 100 |
| 45 | 3.3.2 | Develop functional specification - drop 0 |  | 5d | 2007-03-13 A | 2007-03-20 | 42FS-9% | 76% | 1.2d | 2007-03-13 | 2007-03-20 | 5d | 238.75d | 0d | Program management [80%]; Product management [30%]; Development [40%]; Testing-Manul [50%]; Logistics management [40%]; User education [40%] | 18.84h | 15h | 615.81 | 615.81 | 492.79 |
| 46 | 3.3.3 | Develop functional specification - drop 1 |  | 5.31d | 2007-03-20 A | 2007-03-27 A | 45 | 100% |  | 2007-03-20 | 2007-03-27 | 5d |  |  | Program management [80%]; Product management [30%]; Development [40%]; Testing-Manul [50%]; Logistics management [40%]; User education [40%] | 20h | 20h | 653.59 | 615.81 | 653.59 |
| 47 | 3.3.4 | Develop functional specification - drop 2 |  | 5.31d | 2007-03-27 A | 2007-04-03 A | 46 | 100% |  | 2007-03-27 | 2007-04-03 | 5d |  |  | Program management [80%]; Product management [30%]; Development [40%]; Testing-Manul [50%]; Logistics management [40%]; User education [40%] | 20h | 20h | 653.59 | 615.81 | 653.59 |
| 48 | 3.3.5 | Develop functional specification - drop n |  | 5.31d | 2007-04-03 A | 2007-04-10 A | 47 | 100% |  | 2007-04-03 | 2007-04-10 | 5d |  |  | Program management [80%]; Product management [30%]; Development [40%]; Testing-Manul [50%]; Logistics management [40%]; User education [40%] | 20h | 20h | 653.59 | 615.81 | 653.59 |
| 49 | 3.3.6 | Functional specification baseline | milestone | 0d | 2007-04-25 A | 2007-04-25 A | 48, 54 | 100% |  | 2007-04-25 | 2007-04-25 | 0d |  |  | Program management |  |  |  |  |  |
| 50 | 3.4 | **Development Plan** |  | 28.25d | 2007-03-16 A | 2007-04-25 |  | 93% | 1.99d | 2007-03-16 | 2007-04-25 | 28.25d | 212.5d |  |  | 86.04h | 83h | 3,837.32 | 3,389.37 | 3,654.68 |
| 51 | 3.4.1 | **Create Development Plan** |  | 28d | 2007-03-16 A | 2007-04-25 |  | 92% | 2.17d | 2007-03-16 | 2007-04-25 | 28d | 212.75d |  |  | 78.04h | 75h | 3,497.32 | 3,049.37 | 3,314.68 |
| 52 | 3.4.1.1 | Conduct conceptual design |  | 13.27d | 2007-03-16 A | 2007-04-04 A | 45SS+3d | 100% |  | 2007-03-16 | 2007-03-30 | 10d |  |  | Development [80%]; Program management [40%]; Testing-Manul [25%]; Product management [20%] | 25h | 25h | 1,340.76 | 1,010.6 | 1,340.76 |
| 53 | 3.4.1.2 | Conduct logical design |  | 16.76d | 2007-03-22 A | 2007-04-13 A | 52SS+4d | 100% |  | 2007-03-22 | 2007-04-12 | 15d |  |  | Development [50%]; Program management [50%]; Testing-Manul [25%]; Logistics management [25%]; User education [25%] | 35h | 35h | 1,124.48 | 1,006.69 | 1,124.48 |
| 54 | 3.4.1.3 | Conduct physical design |  | 19d | 2007-03-29 A | 2007-04-25 | 53SS+5d | 80% | 3.8d | 2007-03-29 | 2007-04-25 | 19d | 212.75d |  | Development [80%]; Testing-Manul [50%]; Program management [10%] | 18.04h | 15h | 1,032.09 | 1,032.09 | 849.44 |
| 55 | 3.4.2 | Develop development schedule |  | 5d | 2007-04-18 A | 2007-04-25 A | 54SS+7.5% | 100% |  | 2007-04-18 | 2007-04-25 | 5d |  |  | Development; Testing-Manul [10%] | 8h | 8h | 340 | 340 | 340 |

Notes:
- 41: This task should continue to occur throughout the Planning phase. One way to represent this is to do a paste link from the start date of task 37 to the start date of this task, and then do a paste link from the finish date of 78 to the finish date of this task. See the template Help file for more details.

| ID | WBS | Task | Type | Duration | Start | Finish | Predecessors | Complete | Remaining | Baseline start | Baseline finish | Baseline duration | Total slack | Resources | Work | Actual work | Cost | Baseline cost | Actual cost |
| --- | --- | --- | --- | --- | --- | --- | --- | --- | --- | --- | --- | --- | --- | --- | --- | --- | --- | --- | --- |
| 56 | 3.5 | **Test Plan** |  | 35d | 2007-03-16 A | 2007-05-04 A |  | 100% |  | 2007-03-16 | 2007-05-04 | 35d |  | Testing-Manul | 352h | 352h | 15,360 | 15,360 | 15,360 |
| 57 | 3.5.1 | Develop test plan |  | 30d | 2007-03-16 A | 2007-04-27 A | 45SS+3d | 100% |  | 2007-03-16 | 2007-04-27 | 30d |  | Testing-Manul; Program management [25%] | 64h | 64h | 3,760 | 3,760 | 3,760 |
| 58 | 3.5.2 | Develop test schedule |  | 5d | 2007-04-27 A | 2007-05-04 A | 57, 49 | 100% |  | 2007-04-27 | 2007-05-04 | 5d |  | Testing-Manul; Program management [10%] | 8h | 8h | 400 | 400 | 400 |
| 59 | 3.6 | **User Education Plan** |  | 20.25d | 2007-03-16 A | 2007-04-13 A |  | 100% |  | 2007-03-16 | 2007-04-13 | 20.25d |  | User education | 198.8h | 198.8h | 6,902.4 | 6,902.4 | 6,902.4 |
| 60 | 3.6.1 | Develop user education plan |  | 17.5d | 2007-03-16 A | 2007-04-10 A | 45SS+3d | 100% |  | 2007-03-16 | 2007-04-10 | 17.5d |  | User education; Testing-Manul [20%]; Product management [10%]; Customer [0.1%] | 28h | 28h | 1,274 | 1,274 | 1,274 |
| 61 | 3.6.2 | Develop user education schedule |  | 2.75d | 2007-04-10 A | 2007-04-13 A | 60 | 100% |  | 2007-04-10 | 2007-04-13 | 2.75d |  | User education; Program management [10%]; Product management [20%]; Customer [0.1%] | 8.8h | 8.8h | 444.4 | 444.4 | 444.4 |
| 62 | 3.7 | **Logistics Plan** |  | 48d | 2007-03-12 A | 2007-05-17 A |  | 100% |  | 2007-03-12 | 2007-05-17 | 48d |  | Logistics management | 414.8h | 414.8h | 12,591.36 | 12,591.36 | 12,591.36 |
| 63 | 3.7.1 | **Develop Logistics Plan** |  | 41d | 2007-03-12 A | 2007-05-08 A |  | 100% |  | 2007-03-12 | 2007-05-08 | 41d |  |  | 30.8h | 30.8h | 1,071.36 | 1,071.36 | 1,071.36 |
| 64 | 3.7.1.1 | Perform infrastructure analysis |  | 15d | 2007-03-12 A | 2007-04-02 A |  | 100% |  | 2007-03-12 | 2007-04-02 | 15d |  |  |  |  |  |  |  |
| 65 | 3.7.1.2 | Develop security plan |  | 2.89d | 2007-03-20 A | 2007-03-23 A | 45 | 100% |  | 2007-03-20 | 2007-03-23 | 2.89d |  | Logistics management; Customer [0%]; Product management [10%] | 5.2h | 5.2h | 213.76 | 213.76 | 213.76 |
| 66 | 3.7.1.3 | Develop deployment plan |  | 16d | 2007-04-03 A | 2007-04-25 A | 45FS-3d, 65, 54SS+3d, 64 | 100% |  | 2007-04-03 | 2007-04-25 | 16d |  | Logistics management; Testing-Manul [20%]; User education [10%]; Customer [0.1%] | 25.6h | 25.6h | 857.6 | 857.6 | 857.6 |
| 67 | 3.7.1.4 | Order components |  | 15d | 2007-04-17 A | 2007-05-08 A | 66SS+10d | 100% |  | 2007-04-17 | 2007-05-08 | 15d |  |  |  |  |  |  |  |
| 68 | 3.7.1.5 | Logistics plan complete | milestone | 0d | 2007-05-08 A | 2007-05-08 A | 65, 67 | 100% |  | 2007-05-08 | 2007-05-08 | 0d |  |  |  |  |  |  |  |
| 69 | 3.7.2 | Create logistics schedule |  | 7d | 2007-05-08 A | 2007-05-17 A | 68 | 100% |  | 2007-05-08 | 2007-05-17 | 7d |  |  |  |  |  |  |  |
| 70 | 3.8 | **Product Management Plan** |  | 18d | 2007-03-12 A | 2007-04-05 A |  | 100% |  | 2007-03-12 | 2007-04-05 | 18d |  |  | 12h | 12h | 700 | 700 | 700 |
| 71 | 3.8.1 | Develop product management plan |  | 14d | 2007-03-16 A | 2007-04-05 A | 45SS+3d | 100% |  | 2007-03-16 | 2007-04-05 | 14d |  |  |  |  |  |  |  |
| 72 | 3.8.2 | Develop product management schedule |  | 5d | 2007-03-12 A | 2007-03-19 A |  | 100% |  | 2007-03-12 | 2007-03-19 | 5d |  | Product management; Program management [20%] | 12h | 12h | 700 | 700 | 700 |
| 73 | 3.9 | **Program Management Plan** |  | 45d | 2007-03-16 A | 2007-05-18 | 45SS+3d | 87% | 5.87d | 2007-03-16 | 2007-05-14 | 41d | 195.75d |  | 230h | 200h | 13,800 | 9,840 | 12,000 |
| 74 | 3.9.1 | Create program management plan |  | 37.5d | 2007-03-16 A | 2007-05-08 A | 45SS+3d | 100% |  | 2007-03-16 | 2007-04-16 | 21d |  | Program management [50%] | 150h | 150h | 9,000 | 5,040 | 9,000 |
| 75 | 3.9.2 | Create program management schedule |  | 20d | 2007-04-16 A | 2007-05-18 | 74 | 63% | 7.5d | 2007-04-16 | 2007-05-14 | 20d | 195.75d | Program management [50%] | 80h | 50h | 4,800 | 4,800 | 3,000 |
| 76 | 3.10 | Project plan baseline established | milestone | 0d | 2007-05-17 A | 2007-05-17 A | 50, 56, 59, 62, 70, 73, 71 | 100% |  | 2007-05-17 | 2007-05-17 | 0d |  | Program management; Product management; Development; Testing-Manul; Logistics management |  |  |  |  |  |
| 77 | 3.11 | **Consolidate Project Plans** |  | 10.75d | 2007-05-17 A | 2007-05-31 A | 76 | 100% |  | 2007-05-17 | 2007-05-31 | 10.75d |  |  | 22.15h | 22.15h | 744.19 | 744.19 | 744.18 |
| 78 | 3.11.1 | Review aggregate plan |  | 4d | 2007-05-17 A | 2007-05-23 A |  | 100% |  | 2007-05-17 | 2007-05-23 | 4d |  | Program management [9.4%]; Product management [30%]; Development [30%]; Testing-Manul [30%]; Logistics management [30%]; User education [30%] | 10.15h | 10.15h | 325.31 | 325.31 | 325.3 |
| 79 | 3.11.2 | Create aggregate schedule |  | 2d | 2007-05-23 A | 2007-05-25 A | 78, 69, 75, 55, 58, 61, 72 | 100% |  | 2007-05-23 | 2007-05-25 | 2d |  |  |  |  |  |  |  |
| 80 | 3.11.3 | Buffer |  | 4d | 2007-05-25 A | 2007-05-31 A | 79 | 100% |  | 2007-05-25 | 2007-05-31 | 4d |  |  |  |  |  |  |  |
| 81 | 3.11.4 | Determine ship date | milestone | 0d | 2007-05-31 A | 2007-05-31 A | 80 | 100% |  | 2007-05-31 | 2007-05-31 | 0d |  | Program management; Product management; Development; Testing-Manul; Logistics management; User education |  |  |  |  |  |
| 82 | 3.11.5 | Vision/scope frozen | milestone | 0d | 2007-05-31 A | 2007-05-31 A | 81 | 100% |  | 2007-05-31 | 2007-05-31 | 0d |  |  |  |  |  |  |  |
| 83 | 3.11.6 | Perform milestone review |  | 0.75d | 2007-05-31 A | 2007-05-31 A | 82 | 100% |  | 2007-05-31 | 2007-05-31 | 0.75d |  | Program management; Product management; Development; Testing-Manul; Logistics management; User education; Customer [0.1%] | 12h | 12h | 418.88 | 418.88 | 418.88 |
| 84 | 3.12 | Project plan approved | milestone | 0d | 2007-05-31 A | 2007-05-31 A | 77, 83, 41 | 100% |  | 2007-05-31 | 2007-05-31 | 0d |  | Program management; Product management; Development; Testing-Manul; Logistics management |  |  |  |  |  |

| ID | WBS | Task | Type | Duration | Start | Finish | Predecessors | Baseline start | Baseline finish | Baseline duration | Total slack | Free slack | Resources | Work | Cost | Baseline cost |
| --- | --- | --- | --- | --- | --- | --- | --- | --- | --- | --- | --- | --- | --- | --- | --- | --- |
| 85 | 4 | **Developing** |  | 81d | 2007-05-31 | 2007-09-21 |  | 2007-05-31 | 2007-09-21 | 81d | 0d |  | Development | 2245.85h | 93,588.13 | 93,588.13 |
| 86 | 4.1 | Update risk assessment |  | 1d | 2007-05-31 | 2007-06-01 | 84 | 2007-05-31 | 2007-06-01 | 1d | 79d |  | Program management [1.2%]; Product management [1.2%]; Development [1.2%]; Testing-Manul [1.2%]; Logistics management [3%]; User education [3%] | 0.25h | 7.88 | 7.88 |
| 87 | 4.2 | Equipment for development/proof of concept arrives | milestone | 0d | 2007-05-31 | 2007-05-31 | 84 | 2007-05-31 | 2007-05-31 | 0d | 0d |  | Logistics management |  |  |  |
| 88 | 4.3 | Set up development environment/lab |  | 5d | 2007-05-31 | 2007-06-07 | 87 | 2007-05-31 | 2007-06-07 | 5d | 0d |  | Logistics management | 40h | 1,200 | 1,200 |
| 89 | 4.4 | **Internal Release #1** |  | 24d | 2007-05-31 | 2007-07-04 |  | 2007-05-31 | 2007-07-04 | 24d | 0d |  | Development | 483.6h | 19,702.5 | 19,702.5 |
| 90 | 4.4.1 | Develop target components |  | 9d | 2007-05-31 | 2007-06-13 | 84 | 2007-05-31 | 2007-06-13 | 9d | 15d |  | Development; Logistics management | 144h | 5,400 | 5,400 |
| 91 | 4.4.2 | Test individual components |  | 5d | 2007-06-07 | 2007-06-14 | 88 | 2007-06-07 | 2007-06-14 | 5d | 0d |  | Testing-Manul; Development [25%] | 14h | 610 | 610 |
| 92 | 4.4.3 | Test integrated application |  | 6d | 2007-06-11 | 2007-06-19 | 91SS+2d | 2007-06-11 | 2007-06-19 | 6d | 0d |  | Testing-Manul; Development [25%] | 16h | 700 | 700 |
| 93 | 4.4.4 | Develop performance enhancement materials |  | 4d | 2007-05-31 | 2007-06-06 | 84 | 2007-05-31 | 2007-06-06 | 4d | 8d | 0d | User education | 32h | 1,024 | 1,024 |
| 94 | 4.4.5 | Test and review materials |  | 3d | 2007-06-06 | 2007-06-11 | 93 | 2007-06-06 | 2007-06-11 | 3d | 8d | 0d | Testing-Manul | 24h | 960 | 960 |
| 95 | 4.4.6 | Develop distribution procedures |  | 9d | 2007-06-11 | 2007-06-22 | 94 | 2007-06-11 | 2007-06-22 | 9d | 8d |  | Logistics management; Testing-Manul [30%] | 25.6h | 984 | 984 |
| 96 | 4.4.7 | Create distribution product |  | 2d | 2007-06-19 | 2007-06-21 | 91, 92 | 2007-06-19 | 2007-06-21 | 2d | 0d |  | Program management; Development; Testing-Manul; Logistics management; User education | 20h | 664.5 | 664.5 |
| 97 | 4.4.8 | Distribute to appropriate parties |  | 1d | 2007-06-21 | 2007-06-22 | 96 | 2007-06-21 | 2007-06-22 | 1d | 0d |  | Program management; Logistics management | 16h | 720 | 720 |
| 98 | 4.4.9 | Buffer |  | 8d | 2007-06-22 | 2007-07-04 | 97 | 2007-06-22 | 2007-07-04 | 8d | 0d |  |  |  |  |  |
| 99 | 4.5 | Internal release #1 complete | milestone | 0d | 2007-07-04 | 2007-07-04 | 89, 98 | 2007-07-04 | 2007-07-04 | 0d | 0d |  | Program management; Product management; Development; Testing-Manul; Logistics management |  |  |  |
| 100 | 4.6 | Review results from internal release |  | 2d | 2007-07-04 | 2007-07-06 | 99 | 2007-07-04 | 2007-07-06 | 2d | 0d |  |  |  |  |  |
| 101 | 4.7 | Perform post-release review |  | 1d | 2007-07-06 | 2007-07-09 | 100 | 2007-07-06 | 2007-07-09 | 1d | 0d |  |  |  |  |  |
| 102 | 4.8 | **Internal Release #n** |  | 24d | 2007-07-04 | 2007-08-07 |  | 2007-07-04 | 2007-08-07 | 24d | 0d |  | Development | 514h | 20,103 | 20,103 |
| 103 | 4.8.1 | Develop target components |  | 10d | 2007-07-04 | 2007-07-18 | 99 | 2007-07-04 | 2007-07-18 | 10d | 3d |  | Development; Testing-Manul [50%]; Logistics management | 122h | 4,090 | 4,090 |
| 104 | 4.8.2 | Test individual components |  | 4d | 2007-07-04 | 2007-07-10 | 99 | 2007-07-04 | 2007-07-10 | 4d | 9d |  | Testing-Manul | 32h | 1,280 | 1,280 |
| 105 | 4.8.3 | Test integrated application |  | 5d | 2007-07-04 | 2007-07-11 | 99 | 2007-07-04 | 2007-07-11 | 5d | 18d |  | Testing-Manul | 40h | 1,600 | 1,600 |
| 106 | 4.8.4 | Develop performance enhancement materials |  | 4d | 2007-07-09 | 2007-07-13 | 101 | 2007-07-09 | 2007-07-13 | 4d | 0d |  | User education | 32h | 1,024 | 1,024 |
| 107 | 4.8.5 | Test and review materials |  | 3d | 2007-07-13 | 2007-07-18 | 106 | 2007-07-13 | 2007-07-18 | 3d | 0d |  | Testing-Manul | 24h | 960 | 960 |
| 108 | 4.8.6 | Develop distribution procedures |  | 3d | 2007-07-18 | 2007-07-23 | 107 | 2007-07-18 | 2007-07-23 | 3d | 0d |  | Logistics management | 24h | 720 | 720 |
| 109 | 4.8.7 | Create distribution product |  | 4d | 2007-07-23 | 2007-07-27 | 104, 103, 108 | 2007-07-23 | 2007-07-27 | 4d | 0d |  | Development; Testing-Manul; Logistics management; User education | 36h | 1,169 | 1,169 |
| 110 | 4.8.8 | Buffer |  | 6d | 2007-07-27 | 2007-08-06 | 109 | 2007-07-27 | 2007-08-06 | 6d | 0d |  |  |  |  |  |
| 111 | 4.8.9 | Distribute to appropriate parties |  | 1d | 2007-08-06 | 2007-08-07 | 105, 110 | 2007-08-06 | 2007-08-07 | 1d | 0d |  | Logistics management; Program management; Product management | 12h | 620 | 620 |
| 112 | 4.9 | Internal release #n complete |  | 1d | 2007-08-07 | 2007-08-08 | 102, 111 | 2007-08-07 | 2007-08-08 | 1d | 0d |  | Program management; Product management; Development; Testing-Manul; Logistics management | 12h | 422.5 | 422.5 |
| 113 | 4.10 | Review results from internal release |  | 2d | 2007-08-08 | 2007-08-10 | 112 | 2007-08-08 | 2007-08-10 | 2d | 0d |  | Program management; Product management; Development; Testing-Manul; Logistics management; User education | 20h | 663.25 | 663.25 |
| 114 | 4.11 | Functional specification freeze |  | 1d | 2007-08-10 | 2007-08-13 | 113 | 2007-08-10 | 2007-08-13 | 1d | 0d |  |  |  |  |  |
| 115 | 4.12 | Final feature development |  | 10d | 2007-08-13 | 2007-08-27 | 114 | 2007-08-13 | 2007-08-27 | 10d | 0d |  | Development; Testing-Manul [50%] | 44h | 1,780 | 1,780 |
| 116 | 4.13 | Final logistics development |  | 9d | 2007-08-13 | 2007-08-24 | 114 | 2007-08-13 | 2007-08-24 | 9d | 1d |  | Logistics management; Testing-Manul [50%] | 40h | 1,560 | 1,560 |
| 117 | 4.14 | Final performance support development |  | 5d | 2007-08-13 | 2007-08-20 | 114 | 2007-08-13 | 2007-08-20 | 5d | 5d |  | User education; Testing-Manul [50%] | 24h | 928 | 928 |
| 118 | 4.15 | Feature complete | milestone | 0d | 2007-08-27 | 2007-08-27 | 115, 117, 116 | 2007-08-27 | 2007-08-27 | 0d | 0d |  |  |  |  |  |

Notes:
- 86: This task should continue to occur throughout the Developing phase. One way to represent this is to do a paste link from the start date of task 81 to the start date of this task, and then do a paste link from the finish date of 122 to the finish date of this task. See the template Help file for more details.

| ID | WBS | Task | Type | Duration | Start | Finish | Predecessors | Baseline start | Baseline finish | Baseline duration | Total slack | Resources | Work | Cost | Baseline cost |
| --- | --- | --- | --- | --- | --- | --- | --- | --- | --- | --- | --- | --- | --- | --- | --- |
| 119 | 4.16 | **Update Plans and Schedules** |  | 13d | 2007-08-27 | 2007-09-13 |  | 2007-08-27 | 2007-09-13 | 13d | 0d | Program management | 360h | 16,056 | 16,056 |
| 120 | 4.16.1 | Update development plan |  | 4d | 2007-08-27 | 2007-08-31 | 118 | 2007-08-27 | 2007-08-31 | 4d | 0d | Development | 32h | 1,440 | 1,440 |
| 121 | 4.16.2 | Update testing plan |  | 3d | 2007-08-27 | 2007-08-30 | 120SS | 2007-08-27 | 2007-08-30 | 3d | 10d | Testing-Manul | 24h | 960 | 960 |
| 122 | 4.16.3 | Update logistics plan |  | 13d | 2007-08-27 | 2007-09-13 | 120SS | 2007-08-27 | 2007-09-13 | 13d | 0d | Logistics management | 104h | 3,120 | 3,120 |
| 123 | 4.16.4 | Update program management plan |  | 3d | 2007-08-27 | 2007-08-30 | 120SS | 2007-08-27 | 2007-08-30 | 3d | 10d | Program management | 24h | 1,440 | 1,440 |
| 124 | 4.16.5 | Update product management plan |  | 3d | 2007-08-27 | 2007-08-30 | 120SS | 2007-08-27 | 2007-08-30 | 3d | 10d | Product management | 24h | 1,320 | 1,320 |
| 125 | 4.16.6 | Update user education plan |  | 6d | 2007-08-27 | 2007-09-04 | 120SS | 2007-08-27 | 2007-09-04 | 6d | 7d | User education | 48h | 1,536 | 1,536 |
| 126 | 4.17 | Buffer |  | 3d | 2007-09-13 | 2007-09-18 | 120, 121, 122, 125, 123, 124 | 2007-09-13 | 2007-09-18 | 3d | 0d | Program management; Product management; Development; Testing-Manul; Logistics management; User education | 28h | 919.25 | 919.25 |
| 127 | 4.18 | Perform milestone review |  | 2d | 2007-09-18 | 2007-09-20 | 126 | 2007-09-18 | 2007-09-20 | 2d | 0d | Program management; Product management; Development; Testing-Manul; Logistics management; User education | 20h | 663.25 | 663.25 |
| 128 | 4.19 | Scope complete |  | 1d | 2007-09-20 | 2007-09-21 | 119, 127, 86 | 2007-09-20 | 2007-09-21 | 1d | 0d | Program management; Product management; Development; Testing-Manul; Logistics management | 12h | 422.5 | 422.5 |
| 129 | 5 | **Stabilizing** |  | 73d | 2007-09-21 | 2008-01-02 |  | 2007-09-21 | 2008-01-02 | 73d | 0d | Logistics management | 1026.87h | 35,616.08 | 35,616.08 |
| 130 | 5.1 | Update risk assessment |  | 0.99d | 2007-09-21 | 2007-09-24 | 128, 109 | 2007-09-21 | 2007-09-24 | 0.99d | 71.01d | Program management [0%]; Product management [0%]; Development [0%]; Testing-Manul [0.3%]; Logistics management [3.3%]; User education [10%]; Support organization [10%]; Customer [0.1%] | 0.87h | 26.33 | 26.33 |
| 131 | 5.2 | **Beta Release 1** |  | 32d | 2007-09-21 | 2007-11-06 |  | 2007-09-21 | 2007-11-06 | 32d | 0d |  | 360h | 14,250 | 14,250 |
| 132 | 5.2.1 | Develop beta plan |  | 3d | 2007-09-21 | 2007-09-26 | 109, 128 | 2007-09-21 | 2007-09-26 | 3d | 0d | Program management; Logistics management | 48h | 2,160 | 2,160 |
| 133 | 5.2.2 | Solicit and select users |  | 2d | 2007-09-26 | 2007-09-28 | 132 | 2007-09-26 | 2007-09-28 | 2d | 0d | Product management; Program management | 32h | 1,840 | 1,840 |
| 134 | 5.2.3 | Prepare beta package |  | 8d | 2007-09-26 | 2007-10-08 | 126, 133SS | 2007-09-26 | 2007-10-08 | 8d | 0d | Program management; Development; Logistics management; Testing-Manul | 68h | 2,725 | 2,725 |
| 135 | 5.2.4 | Begin beta | milestone | 0d | 2007-10-08 | 2007-10-08 | 134 | 2007-10-08 | 2007-10-08 | 0d | 0d |  |  |  |  |
| 136 | 5.2.5 | Provide beta support |  | 8d | 2007-10-08 | 2007-10-18 | 135 | 2007-10-08 | 2007-10-18 | 8d | 0d | Development; Logistics management | 128h | 4,800 | 4,800 |
| 137 | 5.2.6 | Gather user feedback |  | 7d | 2007-10-18 | 2007-10-29 | 136 | 2007-10-18 | 2007-10-29 | 7d | 0d |  |  |  |  |
| 138 | 5.2.7 | Close beta support | milestone | 0d | 2007-10-29 | 2007-10-29 | 137 | 2007-10-29 | 2007-10-29 | 0d | 0d |  |  |  |  |
| 139 | 5.2.8 | Fix bugs |  | 10d | 2007-10-23 | 2007-11-06 | 138FS-4d | 2007-10-23 | 2007-11-06 | 10d | 0d | Development; Program management; Logistics management; User education | 84h | 2,725 | 2,725 |
| 140 | 5.2.9 | End beta | milestone | 0d | 2007-11-06 | 2007-11-06 | 136, 139 | 2007-11-06 | 2007-11-06 | 0d | 0d |  |  |  |  |
| 141 | 5.3 | Beta release n |  | 1d | 2007-11-06 | 2007-11-07 | 140 | 2007-11-06 | 2007-11-07 | 1d | 0d |  |  |  |  |
| 142 | 5.4 | Fix bugs |  | 10d | 2007-11-07 | 2007-11-21 | 141 | 2007-11-07 | 2007-11-21 | 10d | 0d | Development; Testing-Manul; Program management [25%] | 24h | 1,360 | 1,360 |
| 143 | 5.5 | Bug convergence |  | 1d | 2007-11-21 | 2007-11-22 | 142 | 2007-11-21 | 2007-11-22 | 1d | 0d |  |  |  |  |
| 144 | 5.6 | Fix high priority bugs |  | 10d | 2007-11-22 | 2007-12-06 | 143 | 2007-11-22 | 2007-12-06 | 10d | 0d |  |  |  |  |
| 145 | 5.7 | Zero bug release | milestone | 0d | 2007-12-06 | 2007-12-06 | 144 | 2007-12-06 | 2007-12-06 | 0d | 0d | Program management |  |  |  |
| 146 | 5.8 | Perform final bug triage |  | 5d | 2007-12-06 | 2007-12-13 | 145 | 2007-12-06 | 2007-12-13 | 5d | 0d |  |  |  |  |

Notes:
- 130: This task should continue to occur throughout the Stabilizing phase. One way to represent this is to do a paste link from the start date of task 126 to the start date of this task, and then do a paste link from the finish date of 147 to the finish date of this task. See the template Help file for more details.

| ID | WBS | Task | Type | Duration | Start | Finish | Predecessors | Baseline start | Baseline finish | Baseline duration | Total slack | Resources | Work | Cost | Baseline cost |
| --- | --- | --- | --- | --- | --- | --- | --- | --- | --- | --- | --- | --- | --- | --- | --- |
| 147 | 5.9 | **Release Candidate 1** |  | 7d | 2007-12-13 | 2007-12-24 | 146 | 2007-12-13 | 2007-12-24 | 7d | 0d |  | 58h | 2,459.75 | 2,459.75 |
| 148 | 5.9.1 | Development team evaluation |  | 2d | 2007-12-13 | 2007-12-17 |  | 2007-12-13 | 2007-12-17 | 2d | 0d | Development; Logistics management [80%]; Program management [50%]; Product management [30%]; User education [50%]; Testing-Manul [75%] | 16h | 587.75 | 587.75 |
| 149 | 5.9.2 | Customer/user evaluation |  | 2d | 2007-12-17 | 2007-12-19 | 148 | 2007-12-17 | 2007-12-19 | 2d | 0d | Product management; User education | 32h | 1,392 | 1,392 |
| 150 | 5.9.3 | Support evaluation |  | 3d | 2007-12-19 | 2007-12-24 | 149 | 2007-12-19 | 2007-12-24 | 3d | 0d | Support organization; Logistics management [25%]; Program management [25%] | 10h | 480 | 480 |
| 151 | 5.10 | Release candidate n |  | 6d | 2007-12-24 | 2008-01-01 | 150 | 2007-12-24 | 2008-01-01 | 6d | 0d |  |  |  |  |
| 152 | 5.11 | Golden release | milestone | 0d | 2008-01-01 | 2008-01-01 | 151 | 2008-01-01 | 2008-01-01 | 0d | 0d |  |  |  |  |
| 153 | 5.12 | Release |  | 1d | 2008-01-01 | 2008-01-02 | 152, 130 | 2008-01-01 | 2008-01-02 | 1d | 0d |  |  |  |  |
| 154 | 6 | Post project review |  | 2d | 2008-02-13 | 2008-02-15 | 153FS+30d | 2008-02-13 | 2008-02-15 | 2d | 0d |  |  |  |  |
